Schedule from MS Project XML, 2024-05-14 to 2028-11-08.

## Calendars

- Standard: Mon-Fri 08:00-12:00, 13:00-17:00; Sat-Sun off. Exceptions (off unless hours are given): 2024-05-27, 2024-08-26, 2024-12-23 to 2025-01-05, 2025-04-18 to 2025-04-21, 2025-05-05, 2025-05-26, 2025-08-25, 2025-12-22 to 2026-01-04, 2026-03-27 to 2026-03-30, 2026-05-04, 2026-05-23 to 2026-05-25, 2026-08-29 to 2026-08-31, 2026-12-21 to 2027-01-03, 2027-04-16 to 2027-04-19, 2027-05-01 to 2027-05-03, 2027-05-29 to 2027-05-31, 2027-08-30, 2027-12-25 to 2028-01-09, 2028-03-31 to 2028-04-03, 2028-04-29 to 2028-05-01, 2028-05-27 to 2028-05-29, 2028-08-26 to 2028-08-28.
- Indian Calendar: Mon-Sat 08:00-12:00, 13:00-17:00; Sun off. Exceptions (off unless hours are given): 2024-07-01 to 2024-07-06 08:00-10:00, 14:00-17:00, 2024-07-07, 2024-07-08 to 2024-07-13 08:00-10:00, 14:00-17:00, 2024-07-14, 2024-07-15 to 2024-07-20 08:00-10:00, 14:00-17:00, 2024-07-21, 2024-07-22 to 2024-07-27 08:00-10:00, 14:00-17:00, 2024-07-28, 2024-07-29 to 2024-07-31 08:00-10:00, 14:00-17:00, 2024-08-01 to 2024-08-03 08:00-10:00, 11:00-12:00, 13:00-17:00, 2024-08-04, 2024-08-05 to 2024-08-10 08:00-10:00, 11:00-12:00, 13:00-17:00, 2024-08-11, 2024-08-12 to 2024-08-17 08:00-10:00, 11:00-12:00, 13:00-17:00, 2024-08-18, 2024-08-19 to 2024-08-24 08:00-10:00, 11:00-12:00, 13:00-17:00, 2024-08-25, 2024-08-26 to 2024-08-31 08:00-10:00, 11:00-12:00, 13:00-17:00, 2024-09-01, 2024-09-02 to 2024-09-07 08:00-10:00, 11:00-12:00, 13:00-17:00, 2024-09-08, 2024-09-09 to 2024-09-14 08:00-10:00, 11:00-12:00, 13:00-17:00, 2024-09-15, 2024-09-16 to 2024-09-21 08:00-10:00, 11:00-12:00, 13:00-17:00, 2024-09-22, 2024-09-23 to 2024-09-28 08:00-10:00, 11:00-12:00, 13:00-17:00, 2024-09-29, 2024-09-30 08:00-10:00, 11:00-12:00, 13:00-17:00.
- GC1: Mon-Sun 08:30-13:00, 14:00-18:30. Exceptions (off unless hours are given): 2025-11-01 to 2025-12-15, 2026-11-01 to 2026-12-15, 2027-11-01 to 2027-12-15.

## Resources

| Resource |
| --- |
| GPL Revenue |
| GPL Costs & Revenue |
| GPL cost & revenue |
| Riverine |

## Schedule

| ID | WBS | Task | Duration | Start | Finish | Predecessors | Complete | Constraint | Calendar | Unique_Task_ID |
| --- | --- | --- | --- | --- | --- | --- | --- | --- | --- | --- |
| 1 | 37100 | **Jardinia** | 1639.17ed | 2024-05-14 | 2028-11-08 |  | 2% | start no earlier than 2024-05-14 |  | 8805804 |
| 2 | 37100.37400 | **Godrej Jardinia 146** | 1692.44d | 2024-05-14 | 2028-11-08 |  | 2% | start no earlier than 2024-05-14 | GC1 | 8805814 |
| 3 | 37100.37400.37600 | **Phase-1** | 1692.44d | 2024-05-14 | 2028-11-08 |  | 2% | start no earlier than 2024-05-14 | GC1 | 8805824 |
| 4 | 37100.37400.37600.38400 | **Tower 5** | 1673.75d | 2024-05-14 | 2028-10-22 |  | 2% | start no earlier than 2024-05-14 | GC1 | 8805834 |
| 5 | 37100.37400.37600.38400.100300 | **Substructure** | 690.5d | 2024-05-14 | 2026-03-03 |  | 36% | start no earlier than 2024-05-14 | GC1 | 8808094 |
| 6 | 37100.37400.37600.38400.100300.115100 | **Soil Bed Preparation** | 549.88d | 2024-05-14 | 2025-09-14 |  | 74% | start no earlier than 2024-05-14 | GC1 | 8808264 |
| 7 | 37100.37400.37600.38400.100300.115100.197100 | Test Piling | 106.69d | 2024-05-14 | 2024-08-16 |  | 100% | start no earlier than 2024-05-14 | GC1 | 8811934 |
| 8 | 37100.37400.37600.38400.100300.115100.197200 | Excavation | 33.56d | 2024-06-05 | 2024-07-04 | 7SS+22d | 100% | start no earlier than 2024-06-05 | GC1 | 8811944 |
| 9 | 37100.37400.37600.38400.100300.115100.197300 | Main Piling Work | 169.19d | 2024-09-25 | 2025-04-20 | 7FS+35d | 86% | start no earlier than 2024-09-25 | GC1 | 8811954 |
| 10 | 37100.37400.37600.38400.100300.115100.298000 | Anti-termite | 5.62d | 2025-04-17 | 2025-04-22 | 9FF+2d |  |  | GC1 | 8811964 |
| 11 | 37100.37400.37600.38400.100300.115100.298100 | PCC | 4.5d | 2025-04-22 | 2025-04-26 | 10SS+5.62d, 8 |  |  | GC1 | 8811974 |
| 12 | 37100.37400.37600.38400.100300.115100.298200 | Backfilling | 67.5d | 2025-07-16 | 2025-09-14 | 25, 17, 21 |  |  | GC1 | 8811984 |
| 13 | 37100.37400.37600.38400.100300.104900 | **RCC Structure** | 113.62d | 2025-05-01 | 2025-08-10 |  |  | start no earlier than 2025-05-01 | GC1 | 8808174 |
| 14 | 37100.37400.37600.38400.100300.104900.182600 | **Raft Foundation** | 29.25d | 2025-05-01 | 2025-05-27 |  |  | start no earlier than 2025-05-01 | GC1 | 8810464 |
| 15 | 37100.37400.37600.38400.100300.104900.182600.476100 | Reinforcement | 20.25d | 2025-05-01 | 2025-05-19 | 11FS+5.62d |  |  | GC1 | 8815754 |
| 16 | 37100.37400.37600.38400.100300.104900.182600.476200 | Formwork | 13.5d | 2025-05-14 | 2025-05-26 | 15FF+7.88d |  |  | GC1 | 8815764 |
| 17 | 37100.37400.37600.38400.100300.104900.182600.476300 | Concreting | 3.38d | 2025-05-24 | 2025-05-27 | 16FF+1.12d |  |  | GC1 | 8815774 |
| 18 | 37100.37400.37600.38400.100300.104900.182700 | **Basement 1 Slab** | 28.12d | 2025-05-27 | 2025-06-21 |  |  | start no earlier than 2025-05-27 | GC1 | 8810474 |
| 19 | 37100.37400.37600.38400.100300.104900.182700.476400 | Reinforcement | 22.5d | 2025-05-27 | 2025-06-16 | 17 |  |  | GC1 | 8815784 |
| 20 | 37100.37400.37600.38400.100300.104900.182700.476500 | Formwork | 22.5d | 2025-05-28 | 2025-06-17 | 19SS+1.12d |  |  | GC1 | 8815794 |
| 21 | 37100.37400.37600.38400.100300.104900.182700.476600 | Concreting | 4.5d | 2025-06-17 | 2025-06-21 | 20 |  |  | GC1 | 8815804 |
| 22 | 37100.37400.37600.38400.100300.104900.182800 | **Basement 2 Slab/GF** | 28.12d | 2025-06-21 | 2025-07-16 |  |  | start no earlier than 2025-06-21 | GC1 | 8810484 |
| 23 | 37100.37400.37600.38400.100300.104900.182800.476700 | Reinforcement | 22.5d | 2025-06-21 | 2025-07-11 | 21 |  |  | GC1 | 8815814 |
| 24 | 37100.37400.37600.38400.100300.104900.182800.476800 | Formwork | 22.5d | 2025-06-22 | 2025-07-12 | 23SS+1.12d |  |  | GC1 | 8815824 |
| 25 | 37100.37400.37600.38400.100300.104900.182800.476900 | Concreting | 4.5d | 2025-07-12 | 2025-07-16 | 24 |  |  | GC1 | 8815834 |

| ID | WBS | Task | Duration | Start | Finish | Predecessors | Constraint | Calendar | Unique_Task_ID |
| --- | --- | --- | --- | --- | --- | --- | --- | --- | --- |
| 26 | 37100.37400.37600.38400.100300.104900.182900 | **Podium /Ground Floor Slab** | 28.12d | 2025-07-16 | 2025-08-10 |  | start no earlier than 2025-07-16 | GC1 | 8810494 |
| 27 | 37100.37400.37600.38400.100300.104900.182900.477000 | Reinforcement | 22.5d | 2025-07-16 | 2025-08-05 | 25 |  | GC1 | 8815844 |
| 28 | 37100.37400.37600.38400.100300.104900.182900.477100 | Formwork | 22.5d | 2025-07-17 | 2025-08-06 | 27SS+1.12d |  | GC1 | 8815854 |
| 29 | 37100.37400.37600.38400.100300.104900.182900.477200 | Concreting | 4.5d | 2025-08-06 | 2025-08-10 | 28 |  | GC1 | 8815864 |
| 30 | 37100.37400.37600.38400.100300.129400 | **Substructure Finishing** | 146.25d | 2025-09-09 | 2026-03-03 |  | start no earlier than 2025-09-09 | GC1 | 8808464 |
| 31 | 37100.37400.37600.38400.100300.129400.298300 | Masonary work | 50.62d | 2025-09-09 | 2025-10-24 | 29FS+33.75d |  | GC1 | 8811994 |
| 32 | 37100.37400.37600.38400.100300.129400.298400 | Plaster | 45d | 2025-10-24 | 2026-01-17 | 31 |  | GC1 | 8812004 |
| 33 | 37100.37400.37600.38400.100300.129400.298500 | Structural steel | 67.5d | 2025-10-09 | 2026-01-22 | 29FS+67.5d |  | GC1 | 8812014 |
| 34 | 37100.37400.37600.38400.100300.129400.298600 | White Wash | 50.62d | 2026-01-17 | 2026-03-03 | 32 |  | GC1 | 8812024 |
| 35 | 37100.37400.37600.38400.39600 | **Superstructure** | 868.5d | 2025-08-10 | 2028-02-03 |  | start no earlier than 2025-08-10 | GC1 | 8805884 |
| 36 | 37100.37400.37600.38400.39600.43800 | **RCC structure** | 514.12d | 2025-08-10 | 2027-02-08 |  | start no earlier than 2025-08-10 | GC1 | 8806034 |
| 37 | 37100.37400.37600.38400.39600.43800.150800 | **1st floor slab** | 28.12d | 2025-08-10 | 2025-09-04 |  | start no earlier than 2025-08-10 | GC1 | 8810414 |
| 38 | 37100.37400.37600.38400.39600.43800.150800.477300 | Reinforcement | 24.75d | 2025-08-10 | 2025-09-01 | 29 |  | GC1 | 8815874 |
| 39 | 37100.37400.37600.38400.39600.43800.150800.477400 | Wall conduiting | 3.38d | 2025-08-13 | 2025-08-16 | 38SS+3.38d |  | GC1 | 8815884 |
| 40 | 37100.37400.37600.38400.39600.43800.150800.477500 | Formwork | 23.62d | 2025-08-13 | 2025-09-03 | 38SS+3.38d |  | GC1 | 8815894 |
| 41 | 37100.37400.37600.38400.39600.43800.150800.477600 | Concreting | 1.12d | 2025-09-03 | 2025-09-04 | 40 |  | GC1 | 8815904 |
| 42 | 37100.37400.37600.38400.39600.43800.150900 | **2nd floor slab** | 23.62d | 2025-09-04 | 2025-09-25 |  | start no earlier than 2025-09-04 | GC1 | 8810404 |
| 43 | 37100.37400.37600.38400.39600.43800.150900.477700 | Reinforcement | 20.25d | 2025-09-04 | 2025-09-22 | 41 |  | GC1 | 8815914 |
| 44 | 37100.37400.37600.38400.39600.43800.150900.477800 | Wall conduiting | 3.38d | 2025-09-06 | 2025-09-09 | 39FS+0.25d, 43SS+2.25d |  | GC1 | 8815924 |
| 45 | 37100.37400.37600.38400.39600.43800.150900.477900 | Formwork | 19.12d | 2025-09-07 | 2025-09-24 | 43SS+3.38d |  | GC1 | 8815934 |
| 46 | 37100.37400.37600.38400.39600.43800.150900.478000 | Concreting | 1.12d | 2025-09-24 | 2025-09-25 | 45 |  | GC1 | 8815944 |
| 47 | 37100.37400.37600.38400.39600.43800.151000 | **3rd floor slab** | 16.88d | 2025-09-25 | 2025-10-10 |  | start no earlier than 2025-09-25 | GC1 | 8810394 |
| 48 | 37100.37400.37600.38400.39600.43800.151000.478100 | Reinforcement | 12.38d | 2025-09-25 | 2025-10-06 | 46 |  | GC1 | 8815954 |
| 49 | 37100.37400.37600.38400.39600.43800.151000.478200 | Wall conduiting | 3.38d | 2025-09-28 | 2025-10-01 | 44, 48SS+3.38d |  | GC1 | 8815964 |
| 50 | 37100.37400.37600.38400.39600.43800.151000.478300 | Formwork | 11.25d | 2025-09-29 | 2025-10-09 | 48SS+4.5d |  | GC1 | 8815974 |
| 51 | 37100.37400.37600.38400.39600.43800.151000.478400 | Concreting | 1.12d | 2025-10-09 | 2025-10-10 | 50 |  | GC1 | 8815984 |

| ID | WBS | Task | Duration | Start | Finish | Predecessors | Constraint | Calendar | Unique_Task_ID |
| --- | --- | --- | --- | --- | --- | --- | --- | --- | --- |
| 52 | 37100.37400.37600.38400.39600.43800.151100 | **4th floor slab** | 10.12d | 2025-10-10 | 2025-10-19 |  | start no earlier than 2025-10-10 | GC1 | 8810384 |
| 53 | 37100.37400.37600.38400.39600.43800.151100.478500 | Reinforcement | 7.88d | 2025-10-10 | 2025-10-17 | 51 |  | GC1 | 8815994 |
| 54 | 37100.37400.37600.38400.39600.43800.151100.478600 | Wall conduiting | 2.25d | 2025-10-11 | 2025-10-13 | 49, 53SS+1.12d |  | GC1 | 8816004 |
| 55 | 37100.37400.37600.38400.39600.43800.151100.478700 | Formwork | 6.75d | 2025-10-12 | 2025-10-18 | 53SS+2.25d |  | GC1 | 8816014 |
| 56 | 37100.37400.37600.38400.39600.43800.151100.478800 | Concreting | 1.12d | 2025-10-18 | 2025-10-19 | 55 |  | GC1 | 8816024 |
| 57 | 37100.37400.37600.38400.39600.43800.151200 | **5th floor slab** | 10.12d | 2025-10-19 | 2025-10-28 |  | start no earlier than 2025-10-19 | GC1 | 8810374 |
| 58 | 37100.37400.37600.38400.39600.43800.151200.478900 | Reinforcement | 7.88d | 2025-10-19 | 2025-10-26 | 56 |  | GC1 | 8816034 |
| 59 | 37100.37400.37600.38400.39600.43800.151200.479000 | Wall conduiting | 2.25d | 2025-10-20 | 2025-10-22 | 54, 58SS+1.12d |  | GC1 | 8816044 |
| 60 | 37100.37400.37600.38400.39600.43800.151200.479100 | Formwork | 6.75d | 2025-10-21 | 2025-10-27 | 58SS+2.25d |  | GC1 | 8816054 |
| 61 | 37100.37400.37600.38400.39600.43800.151200.479200 | Concreting | 1.12d | 2025-10-27 | 2025-10-28 | 60 |  | GC1 | 8816064 |
| 62 | 37100.37400.37600.38400.39600.43800.151300 | **6th floor slab** | 10.12d | 2025-10-28 | 2025-12-21 |  | start no earlier than 2025-10-28 | GC1 | 8810364 |
| 63 | 37100.37400.37600.38400.39600.43800.151300.479300 | Reinforcement | 7.88d | 2025-10-28 | 2025-12-19 | 61 |  | GC1 | 8816074 |
| 64 | 37100.37400.37600.38400.39600.43800.151300.479400 | Wall conduiting | 2.25d | 2025-10-29 | 2025-10-31 | 59, 63SS+1.12d |  | GC1 | 8816084 |
| 65 | 37100.37400.37600.38400.39600.43800.151300.479500 | Formwork | 6.75d | 2025-10-30 | 2025-12-20 | 63SS+2.25d |  | GC1 | 8816094 |
| 66 | 37100.37400.37600.38400.39600.43800.151300.479600 | Concreting | 1.12d | 2025-12-20 | 2025-12-21 | 65 |  | GC1 | 8816104 |
| 67 | 37100.37400.37600.38400.39600.43800.151400 | **7th floor slab** | 10.12d | 2025-12-21 | 2025-12-30 |  | start no earlier than 2025-12-21 | GC1 | 8810354 |
| 68 | 37100.37400.37600.38400.39600.43800.151400.479700 | Reinforcement | 7.88d | 2025-12-21 | 2025-12-28 | 66 |  | GC1 | 8816114 |
| 69 | 37100.37400.37600.38400.39600.43800.151400.479800 | Wall conduiting | 2.25d | 2025-12-22 | 2025-12-24 | 64, 68SS+1.12d |  | GC1 | 8816124 |
| 70 | 37100.37400.37600.38400.39600.43800.151400.479900 | Formwork | 6.75d | 2025-12-23 | 2025-12-29 | 68SS+2.25d |  | GC1 | 8816134 |
| 71 | 37100.37400.37600.38400.39600.43800.151400.480000 | Concreting | 1.12d | 2025-12-29 | 2025-12-30 | 70 |  | GC1 | 8816144 |
| 72 | 37100.37400.37600.38400.39600.43800.151500 | **8th floor slab** | 13.5d | 2025-12-30 | 2026-01-11 |  | start no earlier than 2025-12-30 | GC1 | 8810344 |
| 73 | 37100.37400.37600.38400.39600.43800.151500.480100 | Reinforcement | 11.25d | 2025-12-30 | 2026-01-09 | 71 |  | GC1 | 8816154 |
| 74 | 37100.37400.37600.38400.39600.43800.151500.480200 | Wall conduiting | 2.25d | 2025-12-31 | 2026-01-02 | 69, 73SS+1.12d |  | GC1 | 8816164 |
| 75 | 37100.37400.37600.38400.39600.43800.151500.480300 | Formwork | 10.12d | 2026-01-01 | 2026-01-10 | 73SS+2.25d |  | GC1 | 8816174 |
| 76 | 37100.37400.37600.38400.39600.43800.151500.480400 | Concreting | 1.12d | 2026-01-10 | 2026-01-11 | 75 |  | GC1 | 8816184 |

| ID | WBS | Task | Duration | Start | Finish | Predecessors | Constraint | Calendar | Unique_Task_ID |
| --- | --- | --- | --- | --- | --- | --- | --- | --- | --- |
| 77 | 37100.37400.37600.38400.39600.43800.151600 | **9th floor slab** | 10.12d | 2026-01-11 | 2026-01-20 |  | start no earlier than 2026-01-11 | GC1 | 8810334 |
| 78 | 37100.37400.37600.38400.39600.43800.151600.480500 | Reinforcement | 7.88d | 2026-01-11 | 2026-01-18 | 76 |  | GC1 | 8816194 |
| 79 | 37100.37400.37600.38400.39600.43800.151600.480600 | Wall conduiting | 2.25d | 2026-01-12 | 2026-01-14 | 74, 78SS+1.12d |  | GC1 | 8816204 |
| 80 | 37100.37400.37600.38400.39600.43800.151600.480700 | Formwork | 6.75d | 2026-01-13 | 2026-01-19 | 78SS+2.25d |  | GC1 | 8816214 |
| 81 | 37100.37400.37600.38400.39600.43800.151600.480800 | Concreting | 1.12d | 2026-01-19 | 2026-01-20 | 80 |  | GC1 | 8816224 |
| 82 | 37100.37400.37600.38400.39600.43800.151700 | **10th floor slab** | 10.12d | 2026-01-20 | 2026-01-29 |  | start no earlier than 2026-01-20 | GC1 | 8810324 |
| 83 | 37100.37400.37600.38400.39600.43800.151700.480900 | Reinforcement | 7.88d | 2026-01-20 | 2026-01-27 | 81 |  | GC1 | 8816234 |
| 84 | 37100.37400.37600.38400.39600.43800.151700.481000 | Wall conduiting | 2.25d | 2026-01-21 | 2026-01-23 | 79, 83SS+1.12d |  | GC1 | 8816244 |
| 85 | 37100.37400.37600.38400.39600.43800.151700.481100 | Formwork | 6.75d | 2026-01-22 | 2026-01-28 | 83SS+2.25d |  | GC1 | 8816254 |
| 86 | 37100.37400.37600.38400.39600.43800.151700.481200 | Concreting | 1.12d | 2026-01-28 | 2026-01-29 | 85 |  | GC1 | 8816264 |
| 87 | 37100.37400.37600.38400.39600.43800.151800 | **11th floor slab** | 10.12d | 2026-01-29 | 2026-02-07 |  | start no earlier than 2026-01-29 | GC1 | 8810314 |
| 88 | 37100.37400.37600.38400.39600.43800.151800.481300 | Reinforcement | 7.88d | 2026-01-29 | 2026-02-05 | 86 |  | GC1 | 8816274 |
| 89 | 37100.37400.37600.38400.39600.43800.151800.481400 | Wall conduiting | 2.25d | 2026-01-30 | 2026-02-01 | 84, 88SS+1.12d |  | GC1 | 8816284 |
| 90 | 37100.37400.37600.38400.39600.43800.151800.481500 | Formwork | 6.75d | 2026-01-31 | 2026-02-06 | 88SS+2.25d |  | GC1 | 8816294 |
| 91 | 37100.37400.37600.38400.39600.43800.151800.481600 | Concreting | 1.12d | 2026-02-06 | 2026-02-07 | 90 |  | GC1 | 8816304 |
| 92 | 37100.37400.37600.38400.39600.43800.151900 | **12th floor slab** | 10.12d | 2026-02-07 | 2026-02-16 |  | start no earlier than 2026-02-07 | GC1 | 8810304 |
| 93 | 37100.37400.37600.38400.39600.43800.151900.481700 | Reinforcement | 7.88d | 2026-02-07 | 2026-02-14 | 91 |  | GC1 | 8816314 |
| 94 | 37100.37400.37600.38400.39600.43800.151900.481800 | Wall conduiting | 2.25d | 2026-02-08 | 2026-02-10 | 89, 93SS+1.12d |  | GC1 | 8816324 |
| 95 | 37100.37400.37600.38400.39600.43800.151900.481900 | Formwork | 6.75d | 2026-02-09 | 2026-02-15 | 93SS+2.25d |  | GC1 | 8816334 |
| 96 | 37100.37400.37600.38400.39600.43800.151900.482000 | Concreting | 1.12d | 2026-02-15 | 2026-02-16 | 95 |  | GC1 | 8816344 |
| 97 | 37100.37400.37600.38400.39600.43800.152000 | **13th floor slab** | 10.12d | 2026-02-16 | 2026-02-25 |  | start no earlier than 2026-02-16 | GC1 | 8810294 |
| 98 | 37100.37400.37600.38400.39600.43800.152000.482100 | Reinforcement | 7.88d | 2026-02-16 | 2026-02-23 | 96 |  | GC1 | 8816354 |
| 99 | 37100.37400.37600.38400.39600.43800.152000.482200 | Wall conduiting | 2.25d | 2026-02-17 | 2026-02-19 | 94, 98SS+1.12d |  | GC1 | 8816364 |
| 100 | 37100.37400.37600.38400.39600.43800.152000.482300 | Formwork | 6.75d | 2026-02-18 | 2026-02-24 | 98SS+2.25d |  | GC1 | 8816374 |
| 101 | 37100.37400.37600.38400.39600.43800.152000.482400 | Concreting | 1.12d | 2026-02-24 | 2026-02-25 | 100 |  | GC1 | 8816384 |

| ID | WBS | Task | Duration | Start | Finish | Predecessors | Constraint | Calendar | Unique_Task_ID |
| --- | --- | --- | --- | --- | --- | --- | --- | --- | --- |
| 102 | 37100.37400.37600.38400.39600.43800.152100 | **14th floor slab** | 10.12d | 2026-02-25 | 2026-03-06 |  | start no earlier than 2026-02-25 | GC1 | 8810284 |
| 103 | 37100.37400.37600.38400.39600.43800.152100.482500 | Reinforcement | 7.88d | 2026-02-25 | 2026-03-04 | 101 |  | GC1 | 8816394 |
| 104 | 37100.37400.37600.38400.39600.43800.152100.482600 | Wall conduiting | 2.25d | 2026-02-26 | 2026-02-28 | 99, 103SS+1.12d |  | GC1 | 8816404 |
| 105 | 37100.37400.37600.38400.39600.43800.152100.482700 | Formwork | 6.75d | 2026-02-27 | 2026-03-05 | 103SS+2.25d |  | GC1 | 8816414 |
| 106 | 37100.37400.37600.38400.39600.43800.152100.482800 | Concreting | 1.12d | 2026-03-05 | 2026-03-06 | 105 |  | GC1 | 8816424 |
| 107 | 37100.37400.37600.38400.39600.43800.152200 | **15th floor slab** | 10.12d | 2026-03-06 | 2026-03-15 |  | start no earlier than 2026-03-06 | GC1 | 8810274 |
| 108 | 37100.37400.37600.38400.39600.43800.152200.482900 | Reinforcement | 7.88d | 2026-03-06 | 2026-03-13 | 106 |  | GC1 | 8816434 |
| 109 | 37100.37400.37600.38400.39600.43800.152200.483000 | Wall conduiting | 2.25d | 2026-03-07 | 2026-03-09 | 104, 108SS+1.12d |  | GC1 | 8816444 |
| 110 | 37100.37400.37600.38400.39600.43800.152200.483100 | Formwork | 6.75d | 2026-03-08 | 2026-03-14 | 108SS+2.25d |  | GC1 | 8816454 |
| 111 | 37100.37400.37600.38400.39600.43800.152200.483200 | Concreting | 1.12d | 2026-03-14 | 2026-03-15 | 110 |  | GC1 | 8816464 |
| 112 | 37100.37400.37600.38400.39600.43800.152300 | **16th floor slab** | 13.5d | 2026-03-15 | 2026-03-27 |  | start no earlier than 2026-03-15 | GC1 | 8810264 |
| 113 | 37100.37400.37600.38400.39600.43800.152300.483300 | Reinforcement | 11.25d | 2026-03-15 | 2026-03-25 | 111 |  | GC1 | 8816474 |
| 114 | 37100.37400.37600.38400.39600.43800.152300.483400 | Wall conduiting | 2.25d | 2026-03-16 | 2026-03-18 | 109, 113SS+1.12d |  | GC1 | 8816484 |
| 115 | 37100.37400.37600.38400.39600.43800.152300.483500 | Formwork | 11.25d | 2026-03-16 | 2026-03-26 | 113SS+1.12d |  | GC1 | 8816494 |
| 116 | 37100.37400.37600.38400.39600.43800.152300.483600 | Concreting | 1.12d | 2026-03-26 | 2026-03-27 | 115 |  | GC1 | 8816504 |
| 117 | 37100.37400.37600.38400.39600.43800.152400 | **17th floor slab** | 11.25d | 2026-03-27 | 2026-04-06 |  | start no earlier than 2026-03-27 | GC1 | 8810254 |
| 118 | 37100.37400.37600.38400.39600.43800.152400.483700 | Reinforcement | 9d | 2026-03-27 | 2026-04-04 | 116 |  | GC1 | 8816514 |
| 119 | 37100.37400.37600.38400.39600.43800.152400.483800 | Wall conduiting | 2.25d | 2026-03-28 | 2026-03-30 | 114, 118SS+1.12d |  | GC1 | 8816524 |
| 120 | 37100.37400.37600.38400.39600.43800.152400.483900 | Formwork | 7.88d | 2026-03-29 | 2026-04-05 | 118SS+2.25d |  | GC1 | 8816534 |
| 121 | 37100.37400.37600.38400.39600.43800.152400.484000 | Concreting | 1.12d | 2026-04-05 | 2026-04-06 | 120 |  | GC1 | 8816544 |
| 122 | 37100.37400.37600.38400.39600.43800.152500 | **18th floor slab** | 11.25d | 2026-04-06 | 2026-04-16 |  | start no earlier than 2026-04-06 | GC1 | 8810244 |
| 123 | 37100.37400.37600.38400.39600.43800.152500.484100 | Reinforcement | 9d | 2026-04-06 | 2026-04-14 | 121 |  | GC1 | 8816554 |
| 124 | 37100.37400.37600.38400.39600.43800.152500.484200 | Wall conduiting | 2.25d | 2026-04-07 | 2026-04-09 | 119, 123SS+1.12d |  | GC1 | 8816564 |
| 125 | 37100.37400.37600.38400.39600.43800.152500.484300 | Formwork | 7.88d | 2026-04-08 | 2026-04-15 | 123SS+2.25d |  | GC1 | 8816574 |
| 126 | 37100.37400.37600.38400.39600.43800.152500.484400 | Concreting | 1.12d | 2026-04-15 | 2026-04-16 | 125 |  | GC1 | 8816584 |

| ID | WBS | Task | Duration | Start | Finish | Predecessors | Constraint | Calendar | Unique_Task_ID |
| --- | --- | --- | --- | --- | --- | --- | --- | --- | --- |
| 127 | 37100.37400.37600.38400.39600.43800.152600 | **19th floor slab** | 11.25d | 2026-04-16 | 2026-04-26 |  | start no earlier than 2026-04-16 | GC1 | 8810234 |
| 128 | 37100.37400.37600.38400.39600.43800.152600.484500 | Reinforcement | 9d | 2026-04-16 | 2026-04-24 | 126 |  | GC1 | 8816594 |
| 129 | 37100.37400.37600.38400.39600.43800.152600.484600 | Wall conduiting | 2.25d | 2026-04-17 | 2026-04-19 | 124, 128SS+1.12d |  | GC1 | 8816604 |
| 130 | 37100.37400.37600.38400.39600.43800.152600.484700 | Formwork | 7.88d | 2026-04-18 | 2026-04-25 | 128SS+2.25d |  | GC1 | 8816614 |
| 131 | 37100.37400.37600.38400.39600.43800.152600.484800 | Concreting | 1.12d | 2026-04-25 | 2026-04-26 | 130 |  | GC1 | 8816624 |
| 132 | 37100.37400.37600.38400.39600.43800.152700 | **20th floor slab** | 11.25d | 2026-04-26 | 2026-05-06 |  | start no earlier than 2026-04-26 | GC1 | 8810224 |
| 133 | 37100.37400.37600.38400.39600.43800.152700.484900 | Reinforcement | 9d | 2026-04-26 | 2026-05-04 | 131 |  | GC1 | 8816634 |
| 134 | 37100.37400.37600.38400.39600.43800.152700.485000 | Wall conduiting | 2.25d | 2026-04-27 | 2026-04-29 | 129, 133SS+1.12d |  | GC1 | 8816644 |
| 135 | 37100.37400.37600.38400.39600.43800.152700.485100 | Formwork | 7.88d | 2026-04-28 | 2026-05-05 | 133SS+2.25d |  | GC1 | 8816654 |
| 136 | 37100.37400.37600.38400.39600.43800.152700.485200 | Concreting | 1.12d | 2026-05-05 | 2026-05-06 | 135 |  | GC1 | 8816664 |
| 137 | 37100.37400.37600.38400.39600.43800.152800 | **21st floor slab** | 11.25d | 2026-05-06 | 2026-05-16 |  | start no earlier than 2026-05-06 | GC1 | 8810214 |
| 138 | 37100.37400.37600.38400.39600.43800.152800.485300 | Reinforcement | 9d | 2026-05-06 | 2026-05-14 | 136 |  | GC1 | 8816674 |
| 139 | 37100.37400.37600.38400.39600.43800.152800.485400 | Wall conduiting | 2.25d | 2026-05-07 | 2026-05-09 | 134, 138SS+1.12d |  | GC1 | 8816684 |
| 140 | 37100.37400.37600.38400.39600.43800.152800.485500 | Formwork | 7.88d | 2026-05-08 | 2026-05-15 | 138SS+2.25d |  | GC1 | 8816694 |
| 141 | 37100.37400.37600.38400.39600.43800.152800.485600 | Concreting | 1.12d | 2026-05-15 | 2026-05-16 | 140 |  | GC1 | 8816704 |
| 142 | 37100.37400.37600.38400.39600.43800.152900 | **22nd floor slab** | 11.25d | 2026-05-16 | 2026-05-26 |  | start no earlier than 2026-05-16 | GC1 | 8810204 |
| 143 | 37100.37400.37600.38400.39600.43800.152900.485700 | Reinforcement | 9d | 2026-05-16 | 2026-05-24 | 141 |  | GC1 | 8816714 |
| 144 | 37100.37400.37600.38400.39600.43800.152900.485800 | Wall conduiting | 2.25d | 2026-05-17 | 2026-05-19 | 139, 143SS+1.12d |  | GC1 | 8816724 |
| 145 | 37100.37400.37600.38400.39600.43800.152900.485900 | Formwork | 7.88d | 2026-05-18 | 2026-05-25 | 143SS+2.25d |  | GC1 | 8816734 |
| 146 | 37100.37400.37600.38400.39600.43800.152900.486000 | Concreting | 1.12d | 2026-05-25 | 2026-05-26 | 145 |  | GC1 | 8816744 |
| 147 | 37100.37400.37600.38400.39600.43800.153000 | **23rd floor slab** | 11.25d | 2026-05-26 | 2026-06-05 |  | start no earlier than 2026-05-26 | GC1 | 8810194 |
| 148 | 37100.37400.37600.38400.39600.43800.153000.486100 | Reinforcement | 9d | 2026-05-26 | 2026-06-03 | 146 |  | GC1 | 8816754 |
| 149 | 37100.37400.37600.38400.39600.43800.153000.486200 | Wall conduiting | 2.25d | 2026-05-27 | 2026-05-29 | 144, 148SS+1.12d |  | GC1 | 8816764 |
| 150 | 37100.37400.37600.38400.39600.43800.153000.486300 | Formwork | 7.88d | 2026-05-28 | 2026-06-04 | 148SS+2.25d |  | GC1 | 8816774 |
| 151 | 37100.37400.37600.38400.39600.43800.153000.486400 | Concreting | 1.12d | 2026-06-04 | 2026-06-05 | 150 |  | GC1 | 8816784 |

| ID | WBS | Task | Duration | Start | Finish | Predecessors | Constraint | Calendar | Unique_Task_ID |
| --- | --- | --- | --- | --- | --- | --- | --- | --- | --- |
| 152 | 37100.37400.37600.38400.39600.43800.153100 | **24th floor slab** | 15.75d | 2026-06-05 | 2026-06-19 |  | start no earlier than 2026-06-05 | GC1 | 8810184 |
| 153 | 37100.37400.37600.38400.39600.43800.153100.486500 | Reinforcement | 12.38d | 2026-06-05 | 2026-06-16 | 151 |  | GC1 | 8816794 |
| 154 | 37100.37400.37600.38400.39600.43800.153100.486600 | Wall conduiting | 2.25d | 2026-06-06 | 2026-06-08 | 149, 153SS+1.12d |  | GC1 | 8816804 |
| 155 | 37100.37400.37600.38400.39600.43800.153100.486700 | Formwork | 12.38d | 2026-06-07 | 2026-06-18 | 153SS+2.25d |  | GC1 | 8816814 |
| 156 | 37100.37400.37600.38400.39600.43800.153100.486800 | Concreting | 1.12d | 2026-06-18 | 2026-06-19 | 155 |  | GC1 | 8816824 |
| 157 | 37100.37400.37600.38400.39600.43800.153200 | **25th floor slab** | 16.88d | 2026-06-19 | 2026-07-04 |  | start no earlier than 2026-06-19 | GC1 | 8810174 |
| 158 | 37100.37400.37600.38400.39600.43800.153200.486900 | Reinforcement | 12.38d | 2026-06-19 | 2026-06-30 | 156 |  | GC1 | 8816834 |
| 159 | 37100.37400.37600.38400.39600.43800.153200.487000 | Wall conduiting | 2.25d | 2026-06-20 | 2026-06-22 | 154, 158SS+1.12d |  | GC1 | 8816844 |
| 160 | 37100.37400.37600.38400.39600.43800.153200.487100 | Formwork | 12.38d | 2026-06-22 | 2026-07-03 | 158SS+3.38d |  | GC1 | 8816854 |
| 161 | 37100.37400.37600.38400.39600.43800.153200.487200 | Concreting | 1.12d | 2026-07-03 | 2026-07-04 | 160 |  | GC1 | 8816864 |
| 162 | 37100.37400.37600.38400.39600.43800.153300 | **26th floor slab** | 11.25d | 2026-07-04 | 2026-07-14 |  | start no earlier than 2026-07-04 | GC1 | 8810164 |
| 163 | 37100.37400.37600.38400.39600.43800.153300.487300 | Reinforcement | 9d | 2026-07-04 | 2026-07-12 | 161 |  | GC1 | 8816874 |
| 164 | 37100.37400.37600.38400.39600.43800.153300.487400 | Wall conduiting | 2.25d | 2026-07-05 | 2026-07-07 | 159, 163SS+1.12d |  | GC1 | 8816884 |
| 165 | 37100.37400.37600.38400.39600.43800.153300.487500 | Formwork | 7.88d | 2026-07-06 | 2026-07-13 | 163SS+2.25d |  | GC1 | 8816894 |
| 166 | 37100.37400.37600.38400.39600.43800.153300.487600 | Concreting | 1.12d | 2026-07-13 | 2026-07-14 | 165 |  | GC1 | 8816904 |
| 167 | 37100.37400.37600.38400.39600.43800.153400 | **27th floor slab** | 11.25d | 2026-07-14 | 2026-07-24 |  | start no earlier than 2026-07-14 | GC1 | 8810154 |
| 168 | 37100.37400.37600.38400.39600.43800.153400.487700 | Reinforcement | 9d | 2026-07-14 | 2026-07-22 | 166 |  | GC1 | 8816914 |
| 169 | 37100.37400.37600.38400.39600.43800.153400.487800 | Wall conduiting | 2.25d | 2026-07-15 | 2026-07-17 | 164, 168SS+1.12d |  | GC1 | 8816924 |
| 170 | 37100.37400.37600.38400.39600.43800.153400.487900 | Formwork | 7.88d | 2026-07-16 | 2026-07-23 | 168SS+2.25d |  | GC1 | 8816934 |
| 171 | 37100.37400.37600.38400.39600.43800.153400.488000 | Concreting | 1.12d | 2026-07-23 | 2026-07-24 | 170 |  | GC1 | 8816944 |
| 172 | 37100.37400.37600.38400.39600.43800.153500 | **28th floor slab** | 11.25d | 2026-07-24 | 2026-08-03 |  | start no earlier than 2026-07-24 | GC1 | 8810144 |
| 173 | 37100.37400.37600.38400.39600.43800.153500.488100 | Reinforcement | 9d | 2026-07-24 | 2026-08-01 | 171 |  | GC1 | 8816954 |
| 174 | 37100.37400.37600.38400.39600.43800.153500.488200 | Wall conduiting | 2.25d | 2026-07-25 | 2026-07-27 | 169, 173SS+1.12d |  | GC1 | 8816964 |
| 175 | 37100.37400.37600.38400.39600.43800.153500.488300 | Formwork | 7.88d | 2026-07-26 | 2026-08-02 | 173SS+2.25d |  | GC1 | 8816974 |
| 176 | 37100.37400.37600.38400.39600.43800.153500.488400 | Concreting | 1.12d | 2026-08-02 | 2026-08-03 | 175 |  | GC1 | 8816984 |

| ID | WBS | Task | Duration | Start | Finish | Predecessors | Constraint | Calendar | Unique_Task_ID |
| --- | --- | --- | --- | --- | --- | --- | --- | --- | --- |
| 177 | 37100.37400.37600.38400.39600.43800.153600 | **29th floor slab** | 11.25d | 2026-08-03 | 2026-08-13 |  | start no earlier than 2026-08-03 | GC1 | 8810134 |
| 178 | 37100.37400.37600.38400.39600.43800.153600.488500 | Reinforcement | 9d | 2026-08-03 | 2026-08-11 | 176 |  | GC1 | 8816994 |
| 179 | 37100.37400.37600.38400.39600.43800.153600.488600 | Wall conduiting | 2.25d | 2026-08-04 | 2026-08-06 | 174, 178SS+1.12d |  | GC1 | 8817004 |
| 180 | 37100.37400.37600.38400.39600.43800.153600.488700 | Formwork | 7.88d | 2026-08-05 | 2026-08-12 | 178SS+2.25d |  | GC1 | 8817014 |
| 181 | 37100.37400.37600.38400.39600.43800.153600.488800 | Concreting | 1.12d | 2026-08-12 | 2026-08-13 | 180 |  | GC1 | 8817024 |
| 182 | 37100.37400.37600.38400.39600.43800.153700 | **30th floor slab** | 11.25d | 2026-08-13 | 2026-08-23 |  | start no earlier than 2026-08-13 | GC1 | 8810124 |
| 183 | 37100.37400.37600.38400.39600.43800.153700.488900 | Reinforcement | 9d | 2026-08-13 | 2026-08-21 | 181 |  | GC1 | 8817034 |
| 184 | 37100.37400.37600.38400.39600.43800.153700.489000 | Wall conduiting | 2.25d | 2026-08-14 | 2026-08-16 | 179, 183SS+1.12d |  | GC1 | 8817044 |
| 185 | 37100.37400.37600.38400.39600.43800.153700.489100 | Formwork | 7.88d | 2026-08-15 | 2026-08-22 | 183SS+2.25d |  | GC1 | 8817054 |
| 186 | 37100.37400.37600.38400.39600.43800.153700.489200 | Concreting | 1.12d | 2026-08-22 | 2026-08-23 | 185 |  | GC1 | 8817064 |
| 187 | 37100.37400.37600.38400.39600.43800.153800 | **31st floor slab** | 13.5d | 2026-08-23 | 2026-09-04 |  | start no earlier than 2026-08-23 | GC1 | 8810114 |
| 188 | 37100.37400.37600.38400.39600.43800.153800.489300 | Reinforcement | 10.12d | 2026-08-23 | 2026-09-01 | 186 |  | GC1 | 8817074 |
| 189 | 37100.37400.37600.38400.39600.43800.153800.489400 | Wall conduiting | 2.25d | 2026-08-24 | 2026-08-26 | 184, 188SS+1.12d |  | GC1 | 8817084 |
| 190 | 37100.37400.37600.38400.39600.43800.153800.489500 | Formwork | 10.12d | 2026-08-25 | 2026-09-03 | 188SS+2.25d |  | GC1 | 8817094 |
| 191 | 37100.37400.37600.38400.39600.43800.153800.489600 | Concreting | 1.12d | 2026-09-03 | 2026-09-04 | 190 |  | GC1 | 8817104 |
| 192 | 37100.37400.37600.38400.39600.43800.153900 | **32nd floor slab** | 14.62d | 2026-09-04 | 2026-09-17 |  | start no earlier than 2026-09-04 | GC1 | 8810104 |
| 193 | 37100.37400.37600.38400.39600.43800.153900.489700 | Reinforcement | 11.25d | 2026-09-04 | 2026-09-14 | 191 |  | GC1 | 8817114 |
| 194 | 37100.37400.37600.38400.39600.43800.153900.489800 | Wall conduiting | 2.25d | 2026-09-05 | 2026-09-07 | 189, 193SS+1.12d |  | GC1 | 8817124 |
| 195 | 37100.37400.37600.38400.39600.43800.153900.489900 | Formwork | 11.25d | 2026-09-06 | 2026-09-16 | 193SS+2.25d |  | GC1 | 8817134 |
| 196 | 37100.37400.37600.38400.39600.43800.153900.490000 | Concreting | 1.12d | 2026-09-16 | 2026-09-17 | 195 |  | GC1 | 8817144 |
| 197 | 37100.37400.37600.38400.39600.43800.154000 | **33rd floor slab** | 14.62d | 2026-09-17 | 2026-09-30 |  | start no earlier than 2026-09-17 | GC1 | 8810094 |
| 198 | 37100.37400.37600.38400.39600.43800.154000.490100 | Reinforcement | 11.25d | 2026-09-17 | 2026-09-27 | 196 |  | GC1 | 8817154 |
| 199 | 37100.37400.37600.38400.39600.43800.154000.490200 | Wall conduiting | 2.25d | 2026-09-18 | 2026-09-20 | 194, 198SS+1.12d |  | GC1 | 8817164 |
| 200 | 37100.37400.37600.38400.39600.43800.154000.490300 | Formwork | 11.25d | 2026-09-19 | 2026-09-29 | 198SS+2.25d |  | GC1 | 8817174 |
| 201 | 37100.37400.37600.38400.39600.43800.154000.490400 | Concreting | 1.12d | 2026-09-29 | 2026-09-30 | 200 |  | GC1 | 8817184 |

| ID | WBS | Task | Duration | Start | Finish | Predecessors | Constraint | Calendar | Unique_Task_ID |
| --- | --- | --- | --- | --- | --- | --- | --- | --- | --- |
| 202 | 37100.37400.37600.38400.39600.43800.154100 | **34th floor slab** | 14.62d | 2026-09-30 | 2026-10-13 |  | start no earlier than 2026-09-30 | GC1 | 8810084 |
| 203 | 37100.37400.37600.38400.39600.43800.154100.490500 | Reinforcement | 11.25d | 2026-09-30 | 2026-10-10 | 201 |  | GC1 | 8817194 |
| 204 | 37100.37400.37600.38400.39600.43800.154100.490600 | Wall conduiting | 2.25d | 2026-10-01 | 2026-10-03 | 199, 203SS+1.12d |  | GC1 | 8817204 |
| 205 | 37100.37400.37600.38400.39600.43800.154100.490700 | Formwork | 11.25d | 2026-10-02 | 2026-10-12 | 203SS+2.25d |  | GC1 | 8817214 |
| 206 | 37100.37400.37600.38400.39600.43800.154100.490800 | Concreting | 1.12d | 2026-10-12 | 2026-10-13 | 205 |  | GC1 | 8817224 |
| 207 | 37100.37400.37600.38400.39600.43800.154200 | **35th floor slab** | 15.75d | 2026-10-13 | 2026-10-27 |  | start no earlier than 2026-10-13 | GC1 | 8810074 |
| 208 | 37100.37400.37600.38400.39600.43800.154200.490900 | Reinforcement | 11.25d | 2026-10-13 | 2026-10-23 | 206 |  | GC1 | 8817234 |
| 209 | 37100.37400.37600.38400.39600.43800.154200.491000 | Wall conduiting | 2.25d | 2026-10-14 | 2026-10-16 | 204, 208SS+1.12d |  | GC1 | 8817244 |
| 210 | 37100.37400.37600.38400.39600.43800.154200.491100 | Formwork | 11.25d | 2026-10-16 | 2026-10-26 | 209SS+2.25d |  | GC1 | 8817254 |
| 211 | 37100.37400.37600.38400.39600.43800.154200.491200 | Concreting | 1.12d | 2026-10-26 | 2026-10-27 | 210 |  | GC1 | 8817264 |
| 212 | 37100.37400.37600.38400.39600.43800.154300 | **Terrace floor slab** | 19.12d | 2026-10-27 | 2026-12-28 |  | start no earlier than 2026-10-27 | GC1 | 8810064 |
| 213 | 37100.37400.37600.38400.39600.43800.154300.491300 | Reinforcement | 14.62d | 2026-10-27 | 2026-12-24 | 211 |  | GC1 | 8817274 |
| 214 | 37100.37400.37600.38400.39600.43800.154300.491400 | Wall conduiting | 2.25d | 2026-10-28 | 2026-10-30 | 209, 213SS+1.12d |  | GC1 | 8817284 |
| 215 | 37100.37400.37600.38400.39600.43800.154300.491500 | Formwork | 14.62d | 2026-10-30 | 2026-12-27 | 213SS+3.38d |  | GC1 | 8817294 |
| 216 | 37100.37400.37600.38400.39600.43800.154300.491600 | Concreting | 1.12d | 2026-12-27 | 2026-12-28 | 215 |  | GC1 | 8817304 |
| 217 | 37100.37400.37600.38400.39600.43800.154400 | **OHT & Mumty** | 47.25d | 2026-12-28 | 2027-02-08 |  | start no earlier than 2026-12-28 | GC1 | 8810054 |
| 218 | 37100.37400.37600.38400.39600.43800.154400.491700 | Reinforcement | 33.75d | 2026-12-28 | 2027-01-27 | 216 |  | GC1 | 8817314 |
| 219 | 37100.37400.37600.38400.39600.43800.154400.491800 | Wall conduiting | 5.62d | 2026-12-29 | 2027-01-03 | 214, 218SS+1.12d |  | GC1 | 8817324 |
| 220 | 37100.37400.37600.38400.39600.43800.154400.491900 | Formwork | 37.12d | 2027-01-03 | 2027-02-05 | 218SS+4.5d, 219 |  | GC1 | 8817334 |
| 221 | 37100.37400.37600.38400.39600.43800.154400.492000 | Concreting | 3.38d | 2027-02-05 | 2027-02-08 | 220 |  | GC1 | 8817344 |
| 222 | 37100.37400.37600.38400.39600.45300 | **Post Pour Activities** | 484.88d | 2025-10-20 | 2027-03-24 |  | start no earlier than 2025-10-20 | GC1 | 8806084 |
| 223 | 37100.37400.37600.38400.39600.45300.298700 | 1st Floor | 12.38d | 2025-10-20 | 2025-10-30 | 56FS+0.25d |  | GC1 | 8812034 |
| 224 | 37100.37400.37600.38400.39600.45300.298800 | 2nd Floor | 12.38d | 2025-10-31 | 2025-12-25 | 223, 61 |  | GC1 | 8812044 |
| 225 | 37100.37400.37600.38400.39600.45300.298900 | 3rd Floor | 12.38d | 2025-12-26 | 2026-01-05 | 224, 66 |  | GC1 | 8812054 |
| 226 | 37100.37400.37600.38400.39600.45300.299000 | 4th Floor | 12.38d | 2026-01-06 | 2026-01-16 | 225, 71 |  | GC1 | 8812064 |
| 227 | 37100.37400.37600.38400.39600.45300.299100 | 5th Floor | 12.38d | 2026-01-17 | 2026-01-27 | 226, 76 |  | GC1 | 8812074 |
| 228 | 37100.37400.37600.38400.39600.45300.299200 | 6th Floor | 12.38d | 2026-01-28 | 2026-02-07 | 227, 81 |  | GC1 | 8812084 |
| 229 | 37100.37400.37600.38400.39600.45300.299300 | 7th Floor | 12.38d | 2026-02-08 | 2026-02-18 | 228, 86 |  | GC1 | 8812094 |
| 230 | 37100.37400.37600.38400.39600.45300.299400 | 8th Floor | 12.38d | 2026-02-19 | 2026-03-01 | 229, 91 |  | GC1 | 8812104 |
| 231 | 37100.37400.37600.38400.39600.45300.299500 | 9th Floor | 12.38d | 2026-03-02 | 2026-03-12 | 230, 96 |  | GC1 | 8812114 |
| 232 | 37100.37400.37600.38400.39600.45300.299600 | 10th Floor | 12.38d | 2026-03-13 | 2026-03-23 | 231, 101 |  | GC1 | 8812124 |
| 233 | 37100.37400.37600.38400.39600.45300.299700 | 11th Floor | 12.38d | 2026-03-24 | 2026-04-03 | 232, 106 |  | GC1 | 8812134 |
| 234 | 37100.37400.37600.38400.39600.45300.299800 | 12th Floor | 12.38d | 2026-04-04 | 2026-04-14 | 233, 111 |  | GC1 | 8812144 |
| 235 | 37100.37400.37600.38400.39600.45300.299900 | 13th Floor | 12.38d | 2026-04-15 | 2026-04-25 | 234, 116 |  | GC1 | 8812154 |
| 236 | 37100.37400.37600.38400.39600.45300.300000 | 14th Floor | 13.5d | 2026-04-26 | 2026-05-07 | 235, 121 |  | GC1 | 8812164 |
| 237 | 37100.37400.37600.38400.39600.45300.300100 | 15th Floor | 13.5d | 2026-05-08 | 2026-05-19 | 236, 126 |  | GC1 | 8812174 |
| 238 | 37100.37400.37600.38400.39600.45300.300200 | 16th Floor | 13.5d | 2026-05-20 | 2026-05-31 | 237, 131 |  | GC1 | 8812184 |
| 239 | 37100.37400.37600.38400.39600.45300.300300 | 17th Floor | 13.5d | 2026-06-01 | 2026-06-12 | 238, 136 |  | GC1 | 8812194 |
| 240 | 37100.37400.37600.38400.39600.45300.300400 | 18th Floor | 13.5d | 2026-06-13 | 2026-06-24 | 239, 141 |  | GC1 | 8812204 |
| 241 | 37100.37400.37600.38400.39600.45300.300500 | 19th Floor | 13.5d | 2026-06-25 | 2026-07-06 | 240, 146 |  | GC1 | 8812214 |
| 242 | 37100.37400.37600.38400.39600.45300.300600 | 20th Floor | 13.5d | 2026-07-07 | 2026-07-18 | 241, 151 |  | GC1 | 8812224 |
| 243 | 37100.37400.37600.38400.39600.45300.300700 | 21st Floor | 13.5d | 2026-07-19 | 2026-07-30 | 242, 156 |  | GC1 | 8812234 |
| 244 | 37100.37400.37600.38400.39600.45300.300800 | 22nd Floor | 13.5d | 2026-07-31 | 2026-08-11 | 243, 161 |  | GC1 | 8812244 |
| 245 | 37100.37400.37600.38400.39600.45300.300900 | 23rd Floor | 13.5d | 2026-08-12 | 2026-08-23 | 244, 166 |  | GC1 | 8812254 |
| 246 | 37100.37400.37600.38400.39600.45300.301000 | 24th Floor | 13.5d | 2026-08-24 | 2026-09-04 | 245, 171 |  | GC1 | 8812264 |
| 247 | 37100.37400.37600.38400.39600.45300.301100 | 25th Floor | 13.5d | 2026-09-05 | 2026-09-16 | 246, 176 |  | GC1 | 8812274 |
| 248 | 37100.37400.37600.38400.39600.45300.301200 | 26th Floor | 13.5d | 2026-09-17 | 2026-09-28 | 247, 181 |  | GC1 | 8812284 |
| 249 | 37100.37400.37600.38400.39600.45300.301300 | 27th Floor | 13.5d | 2026-09-29 | 2026-10-10 | 248, 186 |  | GC1 | 8812294 |
| 250 | 37100.37400.37600.38400.39600.45300.301400 | 28th Floor | 13.5d | 2026-10-11 | 2026-10-22 | 249, 191 |  | GC1 | 8812304 |
| 251 | 37100.37400.37600.38400.39600.45300.301500 | 29th Floor | 13.5d | 2026-10-23 | 2026-12-18 | 250, 201 |  | GC1 | 8812314 |
| 252 | 37100.37400.37600.38400.39600.45300.301600 | 30th Floor | 13.5d | 2026-12-19 | 2026-12-30 | 251, 206 |  | GC1 | 8812324 |
| 253 | 37100.37400.37600.38400.39600.45300.301700 | 31st Floor | 13.5d | 2026-12-31 | 2027-01-11 | 252, 211 |  | GC1 | 8812334 |
| 254 | 37100.37400.37600.38400.39600.45300.301800 | 32nd Flood | 13.5d | 2027-01-12 | 2027-01-23 | 253, 216 |  | GC1 | 8812344 |
| 255 | 37100.37400.37600.38400.39600.45300.301900 | 33rd Floor | 13.5d | 2027-01-24 | 2027-02-04 | 254 |  | GC1 | 8812354 |
| 256 | 37100.37400.37600.38400.39600.45300.302000 | 34th Floor | 13.5d | 2027-02-05 | 2027-02-16 | 255 |  | GC1 | 8812364 |
| 257 | 37100.37400.37600.38400.39600.45300.302100 | 35th Floor | 13.5d | 2027-02-17 | 2027-02-28 | 256 |  | GC1 | 8812374 |
| 258 | 37100.37400.37600.38400.39600.45300.302200 | Terrace | 13.5d | 2027-03-01 | 2027-03-12 | 257 |  | GC1 | 8812384 |
| 259 | 37100.37400.37600.38400.39600.45300.302300 | Mumty & Machine Room | 13.5d | 2027-03-13 | 2027-03-24 | 258 |  | GC1 | 8812394 |

| ID | WBS | Task | Duration | Start | Finish | Predecessors | Constraint | Calendar | Unique_Task_ID |
| --- | --- | --- | --- | --- | --- | --- | --- | --- | --- |
| 260 | 37100.37400.37600.38400.39600.40800 | **Finishing work** | 777.12d | 2025-10-31 | 2028-02-03 |  | start no earlier than 2025-10-31 | GC1 | 8805934 |
| 261 | 37100.37400.37600.38400.39600.40800.41800 | **Flat finishing** | 613.12d | 2025-10-31 | 2027-07-27 |  | start no earlier than 2025-10-31 | GC1 | 8805984 |
| 262 | 37100.37400.37600.38400.39600.40800.41800.94900 | **1st Floor** | 105.75d | 2025-10-31 | 2026-03-18 |  | start no earlier than 2025-10-31 | GC1 | 8806194 |
| 263 | 37100.37400.37600.38400.39600.40800.41800.94900.1074800 | Block Work | 10.12d | 2025-10-31 | 2025-12-23 | 223 |  | GC1 | 8826154 |
| 264 | 37100.37400.37600.38400.39600.40800.41800.94900.1074900 | Door Frame Fixing | 6.75d | 2025-12-24 | 2025-12-29 | 263 |  | GC1 | 8826164 |
| 265 | 37100.37400.37600.38400.39600.40800.41800.94900.1075000 | Internal Plumbing Works | 7.88d | 2025-12-24 | 2025-12-30 | 263 |  | GC1 | 8826174 |
| 266 | 37100.37400.37600.38400.39600.40800.41800.94900.1075100 | Waterproofing | 10.12d | 2025-12-31 | 2026-01-08 | 265 |  | GC1 | 8826184 |
| 267 | 37100.37400.37600.38400.39600.40800.41800.94900.1075200 | Internal Plaster | 5.62d | 2026-01-09 | 2026-01-13 | 264, 265, 266 |  | GC1 | 8826194 |
| 268 | 37100.37400.37600.38400.39600.40800.41800.94900.1075300 | IPS flooring work | 7.88d | 2026-01-09 | 2026-01-15 | 264, 265, 266 |  | GC1 | 8826204 |
| 269 | 37100.37400.37600.38400.39600.40800.41800.94900.1075400 | Toilet dado work | 7.88d | 2026-01-14 | 2026-01-20 | 266, 267 |  | GC1 | 8826214 |
| 270 | 37100.37400.37600.38400.39600.40800.41800.94900.1075500 | Toilet flooring work | 6.75d | 2026-01-21 | 2026-01-26 | 269 |  | GC1 | 8826224 |
| 271 | 37100.37400.37600.38400.39600.40800.41800.94900.1075600 | Living dinning flooring | 10.12d | 2026-01-27 | 2026-02-04 | 264, 270 |  | GC1 | 8826234 |
| 272 | 37100.37400.37600.38400.39600.40800.41800.94900.1075700 | Aluminium door-window fixing | 14.62d | 2026-02-05 | 2026-02-17 | 268, 271 |  | GC1 | 8826244 |
| 273 | 37100.37400.37600.38400.39600.40800.41800.94900.1075800 | Putty primer coat | 6.75d | 2026-02-05 | 2026-02-10 | 271 |  | GC1 | 8826254 |
| 274 | 37100.37400.37600.38400.39600.40800.41800.94900.1075900 | Door shutter fixing | 9d | 2026-02-05 | 2026-02-12 | 271 |  | GC1 | 8826264 |
| 275 | 37100.37400.37600.38400.39600.40800.41800.94900.1076000 | Electrical wiring work | 13.5d | 2026-02-13 | 2026-02-24 | 274 |  | GC1 | 8826274 |
| 276 | 37100.37400.37600.38400.39600.40800.41800.94900.1076100 | Painting 1st coat | 13.5d | 2026-02-25 | 2026-03-08 | 273, 274, 275 |  | GC1 | 8826284 |
| 277 | 37100.37400.37600.38400.39600.40800.41800.94900.1076200 | False Cieling panel fixing | 11.25d | 2026-03-09 | 2026-03-18 | 276 |  | GC1 | 8826294 |
| 278 | 37100.37400.37600.38400.39600.40800.41800.94800 | **2nd Floor** | 108.88d | 2025-12-24 | 2026-03-30 |  | start no earlier than 2025-12-24 | GC1 | 8806204 |
| 279 | 37100.37400.37600.38400.39600.40800.41800.94800.1076300 | Block Work | 10.12d | 2025-12-24 | 2026-01-02 | 263FS+0.25d |  | GC1 | 8826304 |
| 280 | 37100.37400.37600.38400.39600.40800.41800.94800.1076400 | Door Frame Fixing | 6.75d | 2026-01-02 | 2026-01-08 | 264, 279 |  | GC1 | 8826314 |
| 281 | 37100.37400.37600.38400.39600.40800.41800.94800.1076500 | Internal Plumbing Works | 7.88d | 2026-01-02 | 2026-01-09 | 265, 279 |  | GC1 | 8826324 |
| 282 | 37100.37400.37600.38400.39600.40800.41800.94800.1076600 | Waterproofing | 10.12d | 2026-01-09 | 2026-01-18 | 266, 281 |  | GC1 | 8826334 |
| 283 | 37100.37400.37600.38400.39600.40800.41800.94800.1076700 | Internal Plaster | 5.62d | 2026-01-14 | 2026-01-19 | 267FS+0.25d, 280FS+0.25d |  | GC1 | 8826344 |
| 284 | 37100.37400.37600.38400.39600.40800.41800.94800.1076800 | IPS flooring work | 7.88d | 2026-01-18 | 2026-01-25 | 268, 280, 281, 282 |  | GC1 | 8826354 |
| 285 | 37100.37400.37600.38400.39600.40800.41800.94800.1076900 | Toilet dado work | 7.88d | 2026-01-21 | 2026-01-27 | 269, 282, 283 |  | GC1 | 8826364 |
| 286 | 37100.37400.37600.38400.39600.40800.41800.94800.1077000 | Toilet flooring work | 6.75d | 2026-01-28 | 2026-02-02 | 270, 285 |  | GC1 | 8826374 |
| 287 | 37100.37400.37600.38400.39600.40800.41800.94800.1077100 | Living dinning flooring | 10.12d | 2026-02-05 | 2026-02-14 | 271FS+0.25d, 280FS+0.25d |  | GC1 | 8826384 |
| 288 | 37100.37400.37600.38400.39600.40800.41800.94800.1077200 | Aluminium door-window fixing | 14.62d | 2026-02-18 | 2026-03-03 | 272FS+0.25d, 287FS+0.25d |  | GC1 | 8826394 |
| 289 | 37100.37400.37600.38400.39600.40800.41800.94800.1077300 | Putty primer coat | 6.75d | 2026-02-14 | 2026-02-20 | 273, 287 |  | GC1 | 8826404 |
| 290 | 37100.37400.37600.38400.39600.40800.41800.94800.1077400 | Door shutter fixing | 9d | 2026-02-14 | 2026-02-22 | 274, 287 |  | GC1 | 8826414 |
| 291 | 37100.37400.37600.38400.39600.40800.41800.94800.1077500 | Electrical wiring work | 13.5d | 2026-02-25 | 2026-03-08 | 275, 290 |  | GC1 | 8826424 |
| 292 | 37100.37400.37600.38400.39600.40800.41800.94800.1077600 | Painting 1st coat | 13.5d | 2026-03-09 | 2026-03-20 | 276, 289, 290, 291 |  | GC1 | 8826434 |
| 293 | 37100.37400.37600.38400.39600.40800.41800.94800.1077700 | False ceiling | 11.25d | 2026-03-21 | 2026-03-30 | 277, 292 |  | GC1 | 8826444 |

| ID | WBS | Task | Duration | Start | Finish | Predecessors | Constraint | Calendar | Unique_Task_ID |
| --- | --- | --- | --- | --- | --- | --- | --- | --- | --- |
| 294 | 37100.37400.37600.38400.39600.40800.41800.94700 | **3rd Floor** | 112d | 2026-01-02 | 2026-04-11 |  | start no earlier than 2026-01-02 | GC1 | 8806214 |
| 295 | 37100.37400.37600.38400.39600.40800.41800.94700.1077800 | Block Work | 10.12d | 2026-01-02 | 2026-01-11 | 279FS+0.25d |  | GC1 | 8826454 |
| 296 | 37100.37400.37600.38400.39600.40800.41800.94700.1077900 | Door Frame Fixing | 6.75d | 2026-01-11 | 2026-01-17 | 280, 295 |  | GC1 | 8826464 |
| 297 | 37100.37400.37600.38400.39600.40800.41800.94700.1078000 | Internal Plumbing Works | 7.88d | 2026-01-11 | 2026-01-18 | 281, 295 |  | GC1 | 8826474 |
| 298 | 37100.37400.37600.38400.39600.40800.41800.94700.1078100 | Waterproofing | 10.12d | 2026-01-18 | 2026-01-27 | 282, 297 |  | GC1 | 8826484 |
| 299 | 37100.37400.37600.38400.39600.40800.41800.94700.1078200 | Internal Plaster | 5.62d | 2026-01-19 | 2026-01-24 | 283FS+0.25d, 296FS+0.25d |  | GC1 | 8826494 |
| 300 | 37100.37400.37600.38400.39600.40800.41800.94700.1078300 | IPS flooring work | 7.88d | 2026-01-27 | 2026-02-03 | 284, 296, 298, 299 |  | GC1 | 8826504 |
| 301 | 37100.37400.37600.38400.39600.40800.41800.94700.1078400 | Toilet dado work | 7.88d | 2026-01-28 | 2026-02-03 | 285, 298, 299 |  | GC1 | 8826514 |
| 302 | 37100.37400.37600.38400.39600.40800.41800.94700.1078500 | Toilet flooring work | 6.75d | 2026-02-04 | 2026-02-09 | 286, 301 |  | GC1 | 8826524 |
| 303 | 37100.37400.37600.38400.39600.40800.41800.94700.1078600 | Living dinning flooring | 10.12d | 2026-02-14 | 2026-02-23 | 287FS+0.25d, 296FS+0.25d |  | GC1 | 8826534 |
| 304 | 37100.37400.37600.38400.39600.40800.41800.94700.1078700 | Aluminium door-window fixing | 14.62d | 2026-03-03 | 2026-03-16 | 288FS+0.25d, 303FS+0.25d |  | GC1 | 8826544 |
| 305 | 37100.37400.37600.38400.39600.40800.41800.94700.1078800 | Putty primer coat | 6.75d | 2026-02-23 | 2026-03-01 | 289, 303 |  | GC1 | 8826554 |
| 306 | 37100.37400.37600.38400.39600.40800.41800.94700.1078900 | Door shutter fixing | 9d | 2026-02-23 | 2026-03-03 | 290, 303 |  | GC1 | 8826564 |
| 307 | 37100.37400.37600.38400.39600.40800.41800.94700.1079000 | Electrical wiring work | 13.5d | 2026-03-09 | 2026-03-20 | 291, 306 |  | GC1 | 8826574 |
| 308 | 37100.37400.37600.38400.39600.40800.41800.94700.1079100 | Painting 1st coat | 13.5d | 2026-03-21 | 2026-04-01 | 292, 305, 306, 307 |  | GC1 | 8826584 |
| 309 | 37100.37400.37600.38400.39600.40800.41800.94700.1079200 | False ceiling | 11.25d | 2026-04-02 | 2026-04-11 | 293, 308 |  | GC1 | 8826594 |
| 310 | 37100.37400.37600.38400.39600.40800.41800.94600 | **4th Floor** | 115.12d | 2026-01-11 | 2026-04-23 |  | start no earlier than 2026-01-11 | GC1 | 8806224 |
| 311 | 37100.37400.37600.38400.39600.40800.41800.94600.1079300 | Block Work | 10.12d | 2026-01-11 | 2026-01-20 | 295FS+0.25d |  | GC1 | 8826604 |
| 312 | 37100.37400.37600.38400.39600.40800.41800.94600.1079400 | Door Frame Fixing | 6.75d | 2026-01-20 | 2026-01-26 | 296, 311 |  | GC1 | 8826614 |
| 313 | 37100.37400.37600.38400.39600.40800.41800.94600.1079500 | Internal Plumbing Works | 7.88d | 2026-01-20 | 2026-01-27 | 297, 311 |  | GC1 | 8826624 |
| 314 | 37100.37400.37600.38400.39600.40800.41800.94600.1079600 | Waterproofing | 10.12d | 2026-01-27 | 2026-02-05 | 298, 313 |  | GC1 | 8826634 |
| 315 | 37100.37400.37600.38400.39600.40800.41800.94600.1079700 | Internal Plaster | 5.62d | 2026-01-26 | 2026-01-31 | 299FS+0.25d, 312FS+0.25d |  | GC1 | 8826644 |
| 316 | 37100.37400.37600.38400.39600.40800.41800.94600.1079800 | IPS flooring work | 7.88d | 2026-02-05 | 2026-02-12 | 300, 312, 314, 315 |  | GC1 | 8826654 |
| 317 | 37100.37400.37600.38400.39600.40800.41800.94600.1079900 | Toilet dado work | 7.88d | 2026-02-05 | 2026-02-12 | 301, 314, 315 |  | GC1 | 8826664 |
| 318 | 37100.37400.37600.38400.39600.40800.41800.94600.1080000 | Toilet flooring work | 6.75d | 2026-02-12 | 2026-02-18 | 302, 317 |  | GC1 | 8826674 |
| 319 | 37100.37400.37600.38400.39600.40800.41800.94600.1080100 | Living dinning flooring | 6.75d | 2026-02-23 | 2026-03-01 | 303FS+0.25d, 312FS+0.25d |  | GC1 | 8826684 |
| 320 | 37100.37400.37600.38400.39600.40800.41800.94600.1080200 | Aluminium door-window fixing | 14.62d | 2026-03-16 | 2026-03-29 | 304FS+0.25d, 319FS+0.25d |  | GC1 | 8826694 |
| 321 | 37100.37400.37600.38400.39600.40800.41800.94600.1080300 | Putty primer coat | 6.75d | 2026-03-01 | 2026-03-07 | 305, 319 |  | GC1 | 8826704 |
| 322 | 37100.37400.37600.38400.39600.40800.41800.94600.1080400 | Door shutter fixing | 9d | 2026-03-03 | 2026-03-11 | 306, 319 |  | GC1 | 8826714 |
| 323 | 37100.37400.37600.38400.39600.40800.41800.94600.1080500 | Electrical wiring work | 13.5d | 2026-03-21 | 2026-04-01 | 307, 322 |  | GC1 | 8826724 |
| 324 | 37100.37400.37600.38400.39600.40800.41800.94600.1080600 | Painting 1st coat | 13.5d | 2026-04-02 | 2026-04-13 | 308, 321, 322, 323 |  | GC1 | 8826734 |
| 325 | 37100.37400.37600.38400.39600.40800.41800.94600.1080700 | False ceiling | 11.25d | 2026-04-14 | 2026-04-23 | 309, 324 |  | GC1 | 8826744 |

| ID | WBS | Task | Duration | Start | Finish | Predecessors | Constraint | Calendar | Unique_Task_ID |
| --- | --- | --- | --- | --- | --- | --- | --- | --- | --- |
| 326 | 37100.37400.37600.38400.39600.40800.41800.94500 | **5th Floor** | 118.25d | 2026-01-20 | 2026-05-05 |  | start no earlier than 2026-01-20 | GC1 | 8806234 |
| 327 | 37100.37400.37600.38400.39600.40800.41800.94500.1080800 | Block Work | 10.12d | 2026-01-20 | 2026-01-29 | 311FS+0.25d |  | GC1 | 8826754 |
| 328 | 37100.37400.37600.38400.39600.40800.41800.94500.1080900 | Door Frame Fixing | 6.75d | 2026-01-29 | 2026-02-04 | 312, 327 |  | GC1 | 8826764 |
| 329 | 37100.37400.37600.38400.39600.40800.41800.94500.1081000 | Internal Plumbing Works | 7.88d | 2026-01-29 | 2026-02-05 | 313, 327 |  | GC1 | 8826774 |
| 330 | 37100.37400.37600.38400.39600.40800.41800.94500.1081100 | Waterproofing | 10.12d | 2026-02-05 | 2026-02-14 | 314, 329 |  | GC1 | 8826784 |
| 331 | 37100.37400.37600.38400.39600.40800.41800.94500.1081200 | Internal Plaster | 5.62d | 2026-02-05 | 2026-02-10 | 315FS+0.25d, 328FS+0.25d |  | GC1 | 8826794 |
| 332 | 37100.37400.37600.38400.39600.40800.41800.94500.1081300 | IPS flooring work | 7.88d | 2026-02-14 | 2026-02-21 | 316, 328, 330, 331 |  | GC1 | 8826804 |
| 333 | 37100.37400.37600.38400.39600.40800.41800.94500.1081400 | Toilet dado work | 7.88d | 2026-02-14 | 2026-02-21 | 317, 330, 331 |  | GC1 | 8826814 |
| 334 | 37100.37400.37600.38400.39600.40800.41800.94500.1081500 | Toilet flooring work | 6.75d | 2026-02-21 | 2026-02-27 | 318, 333 |  | GC1 | 8826824 |
| 335 | 37100.37400.37600.38400.39600.40800.41800.94500.1081600 | Living dinning flooring | 6.75d | 2026-03-01 | 2026-03-07 | 319FS+0.25d, 328FS+0.25d |  | GC1 | 8826834 |
| 336 | 37100.37400.37600.38400.39600.40800.41800.94500.1081700 | Aluminium door-window fixing | 14.62d | 2026-03-29 | 2026-04-11 | 320FS+0.25d, 335FS+0.25d |  | GC1 | 8826844 |
| 337 | 37100.37400.37600.38400.39600.40800.41800.94500.1081800 | Putty primer coat | 6.75d | 2026-03-07 | 2026-03-13 | 321, 335 |  | GC1 | 8826854 |
| 338 | 37100.37400.37600.38400.39600.40800.41800.94500.1081900 | Door shutter fixing | 9d | 2026-03-11 | 2026-03-19 | 322, 335 |  | GC1 | 8826864 |
| 339 | 37100.37400.37600.38400.39600.40800.41800.94500.1082000 | Electrical wiring work | 13.5d | 2026-04-02 | 2026-04-13 | 323, 338 |  | GC1 | 8826874 |
| 340 | 37100.37400.37600.38400.39600.40800.41800.94500.1082100 | Painting 1st coat | 13.5d | 2026-04-14 | 2026-04-25 | 324, 337, 338, 339 |  | GC1 | 8826884 |
| 341 | 37100.37400.37600.38400.39600.40800.41800.94500.1082200 | False ceiling | 11.25d | 2026-04-26 | 2026-05-05 | 325, 340 |  | GC1 | 8826894 |
| 342 | 37100.37400.37600.38400.39600.40800.41800.94400 | **6th Floor** | 121.38d | 2026-01-30 | 2026-05-17 |  | start no earlier than 2026-01-30 | GC1 | 8806244 |
| 343 | 37100.37400.37600.38400.39600.40800.41800.94400.1082300 | Block Work | 10.12d | 2026-01-30 | 2026-02-08 | 327FS+0.25d |  | GC1 | 8826904 |
| 344 | 37100.37400.37600.38400.39600.40800.41800.94400.1082400 | Door Frame Fixing | 6.75d | 2026-02-04 | 2026-02-10 | 76, 328 |  | GC1 | 8826914 |
| 345 | 37100.37400.37600.38400.39600.40800.41800.94400.1082500 | Internal Plumbing Works | 7.88d | 2026-02-08 | 2026-02-15 | 329, 343 |  | GC1 | 8826924 |
| 346 | 37100.37400.37600.38400.39600.40800.41800.94400.1082600 | Waterproofing | 10.12d | 2026-02-15 | 2026-02-24 | 330, 345 |  | GC1 | 8826934 |
| 347 | 37100.37400.37600.38400.39600.40800.41800.94400.1082700 | Internal Plaster | 5.62d | 2026-02-11 | 2026-02-16 | 331FS+0.25d, 344FS+0.25d |  | GC1 | 8826944 |
| 348 | 37100.37400.37600.38400.39600.40800.41800.94400.1082800 | IPS flooring work | 7.88d | 2026-02-24 | 2026-03-03 | 332, 344, 346, 347 |  | GC1 | 8826954 |
| 349 | 37100.37400.37600.38400.39600.40800.41800.94400.1082900 | Toilet dado work | 7.88d | 2026-02-24 | 2026-03-03 | 333, 346, 347 |  | GC1 | 8826964 |
| 350 | 37100.37400.37600.38400.39600.40800.41800.94400.1083000 | Toilet flooring work | 6.75d | 2026-03-03 | 2026-03-09 | 334, 349 |  | GC1 | 8826974 |
| 351 | 37100.37400.37600.38400.39600.40800.41800.94400.1083100 | Living dinning flooring | 6.75d | 2026-03-08 | 2026-03-14 | 335FS+0.25d, 344FS+0.25d |  | GC1 | 8826984 |
| 352 | 37100.37400.37600.38400.39600.40800.41800.94400.1083200 | Aluminium door-window fixing | 16.88d | 2026-04-12 | 2026-04-27 | 336FS+0.25d, 351FS+0.25d |  | GC1 | 8826994 |
| 353 | 37100.37400.37600.38400.39600.40800.41800.94400.1083300 | Putty primer coat | 6.75d | 2026-03-14 | 2026-03-20 | 337, 351 |  | GC1 | 8827004 |
| 354 | 37100.37400.37600.38400.39600.40800.41800.94400.1083400 | Door shutter fixing | 9d | 2026-03-19 | 2026-03-27 | 338, 351 |  | GC1 | 8827014 |
| 355 | 37100.37400.37600.38400.39600.40800.41800.94400.1083500 | Electrical wiring work | 13.5d | 2026-04-14 | 2026-04-25 | 339, 354 |  | GC1 | 8827024 |
| 356 | 37100.37400.37600.38400.39600.40800.41800.94400.1083600 | Painting 1st coat | 13.5d | 2026-04-26 | 2026-05-07 | 340, 353, 354, 355 |  | GC1 | 8827034 |
| 357 | 37100.37400.37600.38400.39600.40800.41800.94400.1083700 | False ceiling | 11.25d | 2026-05-08 | 2026-05-17 | 341, 356 |  | GC1 | 8827044 |

| ID | WBS | Task | Duration | Start | Finish | Predecessors | Constraint | Calendar | Unique_Task_ID |
| --- | --- | --- | --- | --- | --- | --- | --- | --- | --- |
| 358 | 37100.37400.37600.38400.39600.40800.41800.94300 | **7th Floor** | 124.5d | 2026-02-08 | 2026-05-29 |  | start no earlier than 2026-02-08 | GC1 | 8806254 |
| 359 | 37100.37400.37600.38400.39600.40800.41800.94300.1083800 | Block Work | 10.12d | 2026-02-08 | 2026-02-17 | 343FS+0.25d |  | GC1 | 8827054 |
| 360 | 37100.37400.37600.38400.39600.40800.41800.94300.1083900 | Door Frame Fixing | 6.75d | 2026-02-17 | 2026-02-23 | 344, 359 |  | GC1 | 8827064 |
| 361 | 37100.37400.37600.38400.39600.40800.41800.94300.1084000 | Internal Plumbing Works | 7.88d | 2026-02-17 | 2026-02-24 | 345, 359 |  | GC1 | 8827074 |
| 362 | 37100.37400.37600.38400.39600.40800.41800.94300.1084100 | Waterproofing | 10.12d | 2026-02-24 | 2026-03-05 | 346, 361 |  | GC1 | 8827084 |
| 363 | 37100.37400.37600.38400.39600.40800.41800.94300.1084200 | Internal Plaster | 5.62d | 2026-02-23 | 2026-02-28 | 347FS+0.25d, 360FS+0.25d |  | GC1 | 8827094 |
| 364 | 37100.37400.37600.38400.39600.40800.41800.94300.1084300 | IPS flooring work | 7.88d | 2026-03-05 | 2026-03-12 | 348, 360, 362, 363 |  | GC1 | 8827104 |
| 365 | 37100.37400.37600.38400.39600.40800.41800.94300.1084400 | Toilet dado work | 7.88d | 2026-03-05 | 2026-03-12 | 349, 362, 363 |  | GC1 | 8827114 |
| 366 | 37100.37400.37600.38400.39600.40800.41800.94300.1084500 | Toilet flooring work | 6.75d | 2026-03-12 | 2026-03-18 | 350, 365 |  | GC1 | 8827124 |
| 367 | 37100.37400.37600.38400.39600.40800.41800.94300.1084600 | Living dinning flooring | 6.75d | 2026-03-14 | 2026-03-20 | 351FS+0.25d, 360FS+0.25d |  | GC1 | 8827134 |
| 368 | 37100.37400.37600.38400.39600.40800.41800.94300.1084700 | Aluminium door-window fixing | 16.88d | 2026-04-27 | 2026-05-12 | 352FS+0.25d, 367FS+0.25d |  | GC1 | 8827144 |
| 369 | 37100.37400.37600.38400.39600.40800.41800.94300.1084800 | Putty primer coat | 6.75d | 2026-03-20 | 2026-03-26 | 353, 367 |  | GC1 | 8827154 |
| 370 | 37100.37400.37600.38400.39600.40800.41800.94300.1084900 | Door shutter fixing | 9d | 2026-03-27 | 2026-04-04 | 354, 367 |  | GC1 | 8827164 |
| 371 | 37100.37400.37600.38400.39600.40800.41800.94300.1085000 | Electrical wiring work | 13.5d | 2026-04-26 | 2026-05-07 | 355, 370 |  | GC1 | 8827174 |
| 372 | 37100.37400.37600.38400.39600.40800.41800.94300.1085100 | Painting 1st coat | 13.5d | 2026-05-08 | 2026-05-19 | 356, 369, 370, 371 |  | GC1 | 8827184 |
| 373 | 37100.37400.37600.38400.39600.40800.41800.94300.1085200 | False ceiling | 11.25d | 2026-05-20 | 2026-05-29 | 357, 372 |  | GC1 | 8827194 |
| 374 | 37100.37400.37600.38400.39600.40800.41800.94200 | **8th Floor** | 127.62d | 2026-02-17 | 2026-06-10 |  | start no earlier than 2026-02-17 | GC1 | 8806264 |
| 375 | 37100.37400.37600.38400.39600.40800.41800.94200.1085300 | Block Work | 10.12d | 2026-02-17 | 2026-02-26 | 359FS+0.25d |  | GC1 | 8827204 |
| 376 | 37100.37400.37600.38400.39600.40800.41800.94200.1085400 | Door Frame Fixing | 6.75d | 2026-02-26 | 2026-03-04 | 360, 375 |  | GC1 | 8827214 |
| 377 | 37100.37400.37600.38400.39600.40800.41800.94200.1085500 | Internal Plumbing Works | 7.88d | 2026-02-26 | 2026-03-05 | 361, 375 |  | GC1 | 8827224 |
| 378 | 37100.37400.37600.38400.39600.40800.41800.94200.1085600 | Waterproofing | 10.12d | 2026-03-05 | 2026-03-14 | 362, 377 |  | GC1 | 8827234 |
| 379 | 37100.37400.37600.38400.39600.40800.41800.94200.1085700 | Internal Plaster | 5.62d | 2026-03-04 | 2026-03-09 | 363FS+0.25d, 376FS+0.25d |  | GC1 | 8827244 |
| 380 | 37100.37400.37600.38400.39600.40800.41800.94200.1085800 | IPS flooring work | 7.88d | 2026-03-14 | 2026-03-21 | 364, 376, 378, 379 |  | GC1 | 8827254 |
| 381 | 37100.37400.37600.38400.39600.40800.41800.94200.1085900 | Toilet dado work | 7.88d | 2026-03-14 | 2026-03-21 | 365, 378, 379 |  | GC1 | 8827264 |
| 382 | 37100.37400.37600.38400.39600.40800.41800.94200.1086000 | Toilet flooring work | 6.75d | 2026-03-21 | 2026-03-27 | 366, 381 |  | GC1 | 8827274 |
| 383 | 37100.37400.37600.38400.39600.40800.41800.94200.1086100 | Living dinning flooring | 6.75d | 2026-03-20 | 2026-03-26 | 367FS+0.25d, 376FS+0.25d |  | GC1 | 8827284 |
| 384 | 37100.37400.37600.38400.39600.40800.41800.94200.1086200 | Aluminium door-window fixing | 16.88d | 2026-05-12 | 2026-05-27 | 368FS+0.25d, 383FS+0.25d |  | GC1 | 8827294 |
| 385 | 37100.37400.37600.38400.39600.40800.41800.94200.1086300 | Putty primer coat | 6.75d | 2026-03-26 | 2026-04-01 | 369, 383 |  | GC1 | 8827304 |
| 386 | 37100.37400.37600.38400.39600.40800.41800.94200.1086400 | Door shutter fixing | 9d | 2026-04-04 | 2026-04-12 | 370, 383 |  | GC1 | 8827314 |
| 387 | 37100.37400.37600.38400.39600.40800.41800.94200.1086500 | Electrical wiring work | 13.5d | 2026-05-08 | 2026-05-19 | 371, 386 |  | GC1 | 8827324 |
| 388 | 37100.37400.37600.38400.39600.40800.41800.94200.1086600 | Painting 1st coat | 13.5d | 2026-05-20 | 2026-05-31 | 372, 385, 386, 387 |  | GC1 | 8827334 |
| 389 | 37100.37400.37600.38400.39600.40800.41800.94200.1086700 | False ceiling | 11.25d | 2026-06-01 | 2026-06-10 | 373, 388 |  | GC1 | 8827344 |

| ID | WBS | Task | Duration | Start | Finish | Predecessors | Constraint | Calendar | Unique_Task_ID |
| --- | --- | --- | --- | --- | --- | --- | --- | --- | --- |
| 390 | 37100.37400.37600.38400.39600.40800.41800.94100 | **9th Floor** | 130.75d | 2026-02-26 | 2026-06-22 |  | start no earlier than 2026-02-26 | GC1 | 8806274 |
| 391 | 37100.37400.37600.38400.39600.40800.41800.94100.1086800 | Block Work | 10.12d | 2026-02-26 | 2026-03-07 | 375FS+0.25d |  | GC1 | 8827354 |
| 392 | 37100.37400.37600.38400.39600.40800.41800.94100.1086900 | Door Frame Fixing | 6.75d | 2026-03-07 | 2026-03-13 | 376, 391 |  | GC1 | 8827364 |
| 393 | 37100.37400.37600.38400.39600.40800.41800.94100.1087000 | Internal Plumbing Works | 7.88d | 2026-03-07 | 2026-03-14 | 377, 391 |  | GC1 | 8827374 |
| 394 | 37100.37400.37600.38400.39600.40800.41800.94100.1087100 | Waterproofing | 10.12d | 2026-03-14 | 2026-03-23 | 378, 393 |  | GC1 | 8827384 |
| 395 | 37100.37400.37600.38400.39600.40800.41800.94100.1087200 | Internal Plaster | 5.62d | 2026-03-14 | 2026-03-18 | 379FS+0.25d, 392FS+0.25d |  | GC1 | 8827394 |
| 396 | 37100.37400.37600.38400.39600.40800.41800.94100.1087300 | IPS flooring work | 7.88d | 2026-03-23 | 2026-03-30 | 380, 392, 394, 395 |  | GC1 | 8827404 |
| 397 | 37100.37400.37600.38400.39600.40800.41800.94100.1087400 | Toilet dado work | 7.88d | 2026-03-23 | 2026-03-30 | 381, 394, 395 |  | GC1 | 8827414 |
| 398 | 37100.37400.37600.38400.39600.40800.41800.94100.1087500 | Toilet flooring work | 6.75d | 2026-03-30 | 2026-04-05 | 382, 397 |  | GC1 | 8827424 |
| 399 | 37100.37400.37600.38400.39600.40800.41800.94100.1087600 | Living dinning flooring | 10.12d | 2026-03-26 | 2026-04-04 | 383FS+0.25d, 392FS+0.25d |  | GC1 | 8827434 |
| 400 | 37100.37400.37600.38400.39600.40800.41800.94100.1087700 | Aluminium door-window fixing | 16.88d | 2026-05-27 | 2026-06-11 | 384FS+0.25d, 399FS+0.25d |  | GC1 | 8827444 |
| 401 | 37100.37400.37600.38400.39600.40800.41800.94100.1087800 | Putty primer coat | 6.75d | 2026-04-04 | 2026-04-10 | 385, 399 |  | GC1 | 8827454 |
| 402 | 37100.37400.37600.38400.39600.40800.41800.94100.1087900 | Door shutter fixing | 9d | 2026-04-12 | 2026-04-20 | 386, 399 |  | GC1 | 8827464 |
| 403 | 37100.37400.37600.38400.39600.40800.41800.94100.1088000 | Electrical wiring work | 13.5d | 2026-05-20 | 2026-05-31 | 387, 402 |  | GC1 | 8827474 |
| 404 | 37100.37400.37600.38400.39600.40800.41800.94100.1088100 | Painting 1st coat | 13.5d | 2026-06-01 | 2026-06-12 | 388, 401, 402, 403 |  | GC1 | 8827484 |
| 405 | 37100.37400.37600.38400.39600.40800.41800.94100.1088200 | False ceiling | 11.25d | 2026-06-13 | 2026-06-22 | 389, 404 |  | GC1 | 8827494 |
| 406 | 37100.37400.37600.38400.39600.40800.41800.94000 | **10th Floor** | 133.88d | 2026-03-08 | 2026-07-04 |  | start no earlier than 2026-03-08 | GC1 | 8806284 |
| 407 | 37100.37400.37600.38400.39600.40800.41800.94000.1088300 | Block Work | 10.12d | 2026-03-08 | 2026-03-16 | 391FS+0.25d |  | GC1 | 8827504 |
| 408 | 37100.37400.37600.38400.39600.40800.41800.94000.1088400 | Door Frame Fixing | 6.75d | 2026-03-17 | 2026-03-22 | 392, 407 |  | GC1 | 8827514 |
| 409 | 37100.37400.37600.38400.39600.40800.41800.94000.1088500 | Internal Plumbing Works | 7.88d | 2026-03-17 | 2026-03-23 | 393, 407 |  | GC1 | 8827524 |
| 410 | 37100.37400.37600.38400.39600.40800.41800.94000.1088600 | Waterproofing | 10.12d | 2026-03-24 | 2026-04-01 | 394, 409 |  | GC1 | 8827534 |
| 411 | 37100.37400.37600.38400.39600.40800.41800.94000.1088700 | Internal Plaster | 5.62d | 2026-03-23 | 2026-03-28 | 395FS+0.25d, 408FS+0.25d |  | GC1 | 8827544 |
| 412 | 37100.37400.37600.38400.39600.40800.41800.94000.1088800 | IPS flooring work | 7.88d | 2026-04-02 | 2026-04-08 | 396, 408, 410, 411 |  | GC1 | 8827554 |
| 413 | 37100.37400.37600.38400.39600.40800.41800.94000.1088900 | Toilet dado work | 7.88d | 2026-04-02 | 2026-04-08 | 397, 410, 411 |  | GC1 | 8827564 |
| 414 | 37100.37400.37600.38400.39600.40800.41800.94000.1089000 | Toilet flooring work | 6.75d | 2026-04-09 | 2026-04-14 | 398, 413 |  | GC1 | 8827574 |
| 415 | 37100.37400.37600.38400.39600.40800.41800.94000.1089100 | Living dinning flooring | 10.12d | 2026-04-05 | 2026-04-13 | 399FS+0.25d, 408FS+0.25d |  | GC1 | 8827584 |
| 416 | 37100.37400.37600.38400.39600.40800.41800.94000.1089200 | Aluminium door-window fixing | 16.88d | 2026-06-12 | 2026-06-26 | 400FS+0.25d, 415FS+0.25d |  | GC1 | 8827594 |
| 417 | 37100.37400.37600.38400.39600.40800.41800.94000.1089300 | Putty primer coat | 6.75d | 2026-04-14 | 2026-04-19 | 401, 415 |  | GC1 | 8827604 |
| 418 | 37100.37400.37600.38400.39600.40800.41800.94000.1089400 | Door shutter fixing | 9d | 2026-04-20 | 2026-04-28 | 402, 415 |  | GC1 | 8827614 |
| 419 | 37100.37400.37600.38400.39600.40800.41800.94000.1089500 | Electrical wiring work | 13.5d | 2026-06-01 | 2026-06-12 | 403, 418 |  | GC1 | 8827624 |
| 420 | 37100.37400.37600.38400.39600.40800.41800.94000.1089600 | Painting 1st coat | 13.5d | 2026-06-13 | 2026-06-24 | 404, 417, 418, 419 |  | GC1 | 8827634 |
| 421 | 37100.37400.37600.38400.39600.40800.41800.94000.1089700 | False ceiling | 11.25d | 2026-06-25 | 2026-07-04 | 405, 420 |  | GC1 | 8827644 |

| ID | WBS | Task | Duration | Start | Finish | Predecessors | Constraint | Calendar | Unique_Task_ID |
| --- | --- | --- | --- | --- | --- | --- | --- | --- | --- |
| 422 | 37100.37400.37600.38400.39600.40800.41800.93900 | **11th Floor** | 137d | 2026-03-17 | 2026-07-16 |  | start no earlier than 2026-03-17 | GC1 | 8806294 |
| 423 | 37100.37400.37600.38400.39600.40800.41800.93900.1089800 | Block Work | 10.12d | 2026-03-17 | 2026-03-26 | 407FS+0.25d |  | GC1 | 8827654 |
| 424 | 37100.37400.37600.38400.39600.40800.41800.93900.1089900 | Door Frame Fixing | 4.5d | 2026-03-26 | 2026-03-30 | 408, 423 |  | GC1 | 8827664 |
| 425 | 37100.37400.37600.38400.39600.40800.41800.93900.1090000 | Internal Plumbing Works | 7.88d | 2026-03-26 | 2026-04-02 | 409, 423 |  | GC1 | 8827674 |
| 426 | 37100.37400.37600.38400.39600.40800.41800.93900.1090100 | Waterproofing | 10.12d | 2026-04-02 | 2026-04-11 | 410, 425 |  | GC1 | 8827684 |
| 427 | 37100.37400.37600.38400.39600.40800.41800.93900.1090200 | Internal Plaster | 5.62d | 2026-03-30 | 2026-04-04 | 411FS+0.25d, 424FS+0.25d |  | GC1 | 8827694 |
| 428 | 37100.37400.37600.38400.39600.40800.41800.93900.1090300 | IPS flooring work | 7.88d | 2026-04-11 | 2026-04-18 | 412, 424, 425, 426 |  | GC1 | 8827704 |
| 429 | 37100.37400.37600.38400.39600.40800.41800.93900.1090400 | Toilet dado work | 7.88d | 2026-04-11 | 2026-04-18 | 413, 426, 427 |  | GC1 | 8827714 |
| 430 | 37100.37400.37600.38400.39600.40800.41800.93900.1090500 | Toilet flooring work | 6.75d | 2026-04-18 | 2026-04-24 | 414, 429 |  | GC1 | 8827724 |
| 431 | 37100.37400.37600.38400.39600.40800.41800.93900.1090600 | Living dinning flooring | 10.12d | 2026-04-24 | 2026-05-03 | 415, 424, 430 |  | GC1 | 8827734 |
| 432 | 37100.37400.37600.38400.39600.40800.41800.93900.1090700 | Aluminium door-window fixing | 16.88d | 2026-06-27 | 2026-07-11 | 416, 428, 431 |  | GC1 | 8827744 |
| 433 | 37100.37400.37600.38400.39600.40800.41800.93900.1090800 | Putty primer coat | 6.75d | 2026-05-03 | 2026-05-09 | 417, 431 |  | GC1 | 8827754 |
| 434 | 37100.37400.37600.38400.39600.40800.41800.93900.1090900 | Door shutter fixing | 9d | 2026-05-03 | 2026-05-11 | 418, 431 |  | GC1 | 8827764 |
| 435 | 37100.37400.37600.38400.39600.40800.41800.93900.1091000 | Electrical wiring work | 13.5d | 2026-06-13 | 2026-06-24 | 419, 434 |  | GC1 | 8827774 |
| 436 | 37100.37400.37600.38400.39600.40800.41800.93900.1091100 | Painting 1st coat | 13.5d | 2026-06-25 | 2026-07-06 | 420, 433, 434, 435 |  | GC1 | 8827784 |
| 437 | 37100.37400.37600.38400.39600.40800.41800.93900.1091200 | False ceiling | 11.25d | 2026-07-07 | 2026-07-16 | 421, 436 |  | GC1 | 8827794 |
| 438 | 37100.37400.37600.38400.39600.40800.41800.93800 | **12th Floor** | 140.12d | 2026-03-26 | 2026-07-28 |  | start no earlier than 2026-03-26 | GC1 | 8806304 |
| 439 | 37100.37400.37600.38400.39600.40800.41800.93800.1091300 | Block Work | 10.12d | 2026-03-26 | 2026-04-04 | 423FS+0.25d |  | GC1 | 8827804 |
| 440 | 37100.37400.37600.38400.39600.40800.41800.93800.1091400 | Door Frame Fixing | 6.75d | 2026-04-04 | 2026-04-10 | 424, 439 |  | GC1 | 8827814 |
| 441 | 37100.37400.37600.38400.39600.40800.41800.93800.1091500 | Internal Plumbing Works | 9d | 2026-04-04 | 2026-04-12 | 425, 439 |  | GC1 | 8827824 |
| 442 | 37100.37400.37600.38400.39600.40800.41800.93800.1091600 | Waterproofing | 11.25d | 2026-04-12 | 2026-04-22 | 426, 441 |  | GC1 | 8827834 |
| 443 | 37100.37400.37600.38400.39600.40800.41800.93800.1091700 | Internal Plaster | 9d | 2026-04-22 | 2026-04-30 | 427, 440, 441, 442 |  | GC1 | 8827844 |
| 444 | 37100.37400.37600.38400.39600.40800.41800.93800.1091800 | IPS flooring work | 9d | 2026-04-22 | 2026-04-30 | 428, 440, 441, 442 |  | GC1 | 8827854 |
| 445 | 37100.37400.37600.38400.39600.40800.41800.93800.1091900 | Toilet dado work | 9d | 2026-04-30 | 2026-05-08 | 429, 442, 443 |  | GC1 | 8827864 |
| 446 | 37100.37400.37600.38400.39600.40800.41800.93800.1092000 | Toilet flooring work | 7.88d | 2026-05-08 | 2026-05-15 | 430, 445 |  | GC1 | 8827874 |
| 447 | 37100.37400.37600.38400.39600.40800.41800.93800.1092100 | Living dinning flooring | 11.25d | 2026-05-15 | 2026-05-25 | 431, 440, 446 |  | GC1 | 8827884 |
| 448 | 37100.37400.37600.38400.39600.40800.41800.93800.1092200 | Aluminium door-window fixing | 13.5d | 2026-07-12 | 2026-07-23 | 432, 444, 447 |  | GC1 | 8827894 |
| 449 | 37100.37400.37600.38400.39600.40800.41800.93800.1092300 | Putty primer coat | 6.75d | 2026-05-25 | 2026-05-31 | 433, 447 |  | GC1 | 8827904 |
| 450 | 37100.37400.37600.38400.39600.40800.41800.93800.1092400 | Door shutter fixing | 9d | 2026-05-25 | 2026-06-02 | 434, 447 |  | GC1 | 8827914 |
| 451 | 37100.37400.37600.38400.39600.40800.41800.93800.1092500 | Electrical wiring work | 13.5d | 2026-06-25 | 2026-07-06 | 435, 450 |  | GC1 | 8827924 |
| 452 | 37100.37400.37600.38400.39600.40800.41800.93800.1092600 | Painting 1st coat | 13.5d | 2026-07-07 | 2026-07-18 | 436, 449, 450, 451 |  | GC1 | 8827934 |
| 453 | 37100.37400.37600.38400.39600.40800.41800.93800.1092700 | False ceiling | 11.25d | 2026-07-19 | 2026-07-28 | 437, 452 |  | GC1 | 8827944 |

| ID | WBS | Task | Duration | Start | Finish | Predecessors | Constraint | Calendar | Unique_Task_ID |
| --- | --- | --- | --- | --- | --- | --- | --- | --- | --- |
| 454 | 37100.37400.37600.38400.39600.40800.41800.93700 | **13th Floor** | 120.38d | 2026-04-26 | 2026-08-10 |  | start no earlier than 2026-04-26 | GC1 | 8806314 |
| 455 | 37100.37400.37600.38400.39600.40800.41800.93700.1092800 | Block Work | 4.5d | 2026-04-26 | 2026-04-29 | 235, 439 |  | GC1 | 8827954 |
| 456 | 37100.37400.37600.38400.39600.40800.41800.93700.1092900 | Door Frame Fixing | 10.12d | 2026-04-30 | 2026-05-08 | 440, 455 |  | GC1 | 8827964 |
| 457 | 37100.37400.37600.38400.39600.40800.41800.93700.1093000 | Internal Plumbing Works | 11.25d | 2026-04-30 | 2026-05-09 | 441, 455 |  | GC1 | 8827974 |
| 458 | 37100.37400.37600.38400.39600.40800.41800.93700.1093100 | Waterproofing | 13.5d | 2026-05-10 | 2026-05-21 | 442, 457 |  | GC1 | 8827984 |
| 459 | 37100.37400.37600.38400.39600.40800.41800.93700.1093200 | Internal Plaster | 10.12d | 2026-05-22 | 2026-05-30 | 443, 456, 457, 458 |  | GC1 | 8827994 |
| 460 | 37100.37400.37600.38400.39600.40800.41800.93700.1093300 | IPS flooring work | 10.12d | 2026-05-31 | 2026-06-08 | 444, 456, 458, 459 |  | GC1 | 8828004 |
| 461 | 37100.37400.37600.38400.39600.40800.41800.93700.1093400 | Toilet dado work | 9d | 2026-05-31 | 2026-06-07 | 445, 458, 459 |  | GC1 | 8828014 |
| 462 | 37100.37400.37600.38400.39600.40800.41800.93700.1093500 | Toilet flooring work | 7.88d | 2026-06-08 | 2026-06-14 | 446, 461 |  | GC1 | 8828024 |
| 463 | 37100.37400.37600.38400.39600.40800.41800.93700.1093600 | Living dinning flooring | 16.88d | 2026-06-15 | 2026-06-29 | 447, 456, 462 |  | GC1 | 8828034 |
| 464 | 37100.37400.37600.38400.39600.40800.41800.93700.1093700 | Aluminium door-window fixing | 16.88d | 2026-07-24 | 2026-08-07 | 448, 460, 463 |  | GC1 | 8828044 |
| 465 | 37100.37400.37600.38400.39600.40800.41800.93700.1093800 | Putty primer coat | 6.75d | 2026-06-30 | 2026-07-05 | 449, 463 |  | GC1 | 8828054 |
| 466 | 37100.37400.37600.38400.39600.40800.41800.93700.1093900 | Door shutter fixing | 9d | 2026-06-30 | 2026-07-07 | 450, 463 |  | GC1 | 8828064 |
| 467 | 37100.37400.37600.38400.39600.40800.41800.93700.1094000 | Electrical wiring work | 13.5d | 2026-07-08 | 2026-07-19 | 451, 466 |  | GC1 | 8828074 |
| 468 | 37100.37400.37600.38400.39600.40800.41800.93700.1094100 | Painting 1st coat | 13.5d | 2026-07-20 | 2026-07-31 | 452, 465, 466, 467 |  | GC1 | 8828084 |
| 469 | 37100.37400.37600.38400.39600.40800.41800.93700.1094200 | False ceiling | 11.25d | 2026-08-01 | 2026-08-10 | 453, 468 |  | GC1 | 8828094 |
| 470 | 37100.37400.37600.38400.39600.40800.41800.93600 | **14th Floor** | 123.75d | 2026-05-08 | 2026-08-25 |  | start no earlier than 2026-05-08 | GC1 | 8806324 |
| 471 | 37100.37400.37600.38400.39600.40800.41800.93600.1094300 | Block Work | 4.5d | 2026-05-08 | 2026-05-11 | 236, 455 |  | GC1 | 8828104 |
| 472 | 37100.37400.37600.38400.39600.40800.41800.93600.1094400 | Door Frame Fixing | 10.12d | 2026-05-12 | 2026-05-20 | 456, 471 |  | GC1 | 8828114 |
| 473 | 37100.37400.37600.38400.39600.40800.41800.93600.1094500 | Internal Plumbing Works | 11.25d | 2026-05-12 | 2026-05-21 | 457, 471 |  | GC1 | 8828124 |
| 474 | 37100.37400.37600.38400.39600.40800.41800.93600.1094600 | Waterproofing | 13.5d | 2026-05-22 | 2026-06-02 | 458, 473 |  | GC1 | 8828134 |
| 475 | 37100.37400.37600.38400.39600.40800.41800.93600.1094700 | Internal Plaster | 10.12d | 2026-06-03 | 2026-06-11 | 459, 472, 473, 474 |  | GC1 | 8828144 |
| 476 | 37100.37400.37600.38400.39600.40800.41800.93600.1094800 | IPS flooring work | 10.12d | 2026-06-09 | 2026-06-17 | 460, 472, 473, 474 |  | GC1 | 8828154 |
| 477 | 37100.37400.37600.38400.39600.40800.41800.93600.1094900 | Toilet dado work | 9d | 2026-06-12 | 2026-06-19 | 461, 474, 475 |  | GC1 | 8828164 |
| 478 | 37100.37400.37600.38400.39600.40800.41800.93600.1095000 | Toilet flooring work | 7.88d | 2026-06-20 | 2026-06-26 | 462, 477 |  | GC1 | 8828174 |
| 479 | 37100.37400.37600.38400.39600.40800.41800.93600.1095100 | Living dinning flooring | 16.88d | 2026-06-30 | 2026-07-14 | 463, 472, 478 |  | GC1 | 8828184 |
| 480 | 37100.37400.37600.38400.39600.40800.41800.93600.1095200 | Aluminium door-window fixing | 16.88d | 2026-08-08 | 2026-08-22 | 464, 476, 479 |  | GC1 | 8828194 |
| 481 | 37100.37400.37600.38400.39600.40800.41800.93600.1095300 | Putty primer coat | 6.75d | 2026-07-15 | 2026-07-20 | 465, 479 |  | GC1 | 8828204 |
| 482 | 37100.37400.37600.38400.39600.40800.41800.93600.1095400 | Door shutter fixing | 9d | 2026-07-15 | 2026-07-22 | 466, 479 |  | GC1 | 8828214 |
| 483 | 37100.37400.37600.38400.39600.40800.41800.93600.1095500 | Electrical wiring work | 13.5d | 2026-07-23 | 2026-08-03 | 467, 482 |  | GC1 | 8828224 |
| 484 | 37100.37400.37600.38400.39600.40800.41800.93600.1095600 | Painting 1st coat | 13.5d | 2026-08-04 | 2026-08-15 | 468, 481, 482, 483 |  | GC1 | 8828234 |
| 485 | 37100.37400.37600.38400.39600.40800.41800.93600.1095700 | False ceiling | 11.25d | 2026-08-16 | 2026-08-25 | 469, 484 |  | GC1 | 8828244 |

| ID | WBS | Task | Duration | Start | Finish | Predecessors | Constraint | Calendar | Unique_Task_ID |
| --- | --- | --- | --- | --- | --- | --- | --- | --- | --- |
| 486 | 37100.37400.37600.38400.39600.40800.41800.93500 | **15th Floor** | 123.75d | 2026-05-20 | 2026-09-06 |  | start no earlier than 2026-05-20 | GC1 | 8806334 |
| 487 | 37100.37400.37600.38400.39600.40800.41800.93500.1095800 | Block Work | 9d | 2026-05-20 | 2026-05-27 | 237, 471 |  | GC1 | 8828254 |
| 488 | 37100.37400.37600.38400.39600.40800.41800.93500.1095900 | Door Frame Fixing | 10.12d | 2026-05-28 | 2026-06-05 | 472, 487 |  | GC1 | 8828264 |
| 489 | 37100.37400.37600.38400.39600.40800.41800.93500.1096000 | Internal Plumbing Works | 11.25d | 2026-05-28 | 2026-06-06 | 473, 487 |  | GC1 | 8828274 |
| 490 | 37100.37400.37600.38400.39600.40800.41800.93500.1096100 | Waterproofing | 13.5d | 2026-06-07 | 2026-06-18 | 474, 489 |  | GC1 | 8828284 |
| 491 | 37100.37400.37600.38400.39600.40800.41800.93500.1096200 | Internal Plaster | 10.12d | 2026-06-19 | 2026-06-27 | 475, 488, 489, 490 |  | GC1 | 8828294 |
| 492 | 37100.37400.37600.38400.39600.40800.41800.93500.1096300 | IPS flooring work | 10.12d | 2026-06-19 | 2026-06-27 | 476, 488, 489, 490 |  | GC1 | 8828304 |
| 493 | 37100.37400.37600.38400.39600.40800.41800.93500.1096400 | Toilet dado work | 9d | 2026-06-28 | 2026-07-05 | 477, 490, 491 |  | GC1 | 8828314 |
| 494 | 37100.37400.37600.38400.39600.40800.41800.93500.1096500 | Toilet flooring work | 7.88d | 2026-07-06 | 2026-07-12 | 478, 493 |  | GC1 | 8828324 |
| 495 | 37100.37400.37600.38400.39600.40800.41800.93500.1096600 | Living dinning flooring | 13.5d | 2026-07-15 | 2026-07-26 | 479, 488, 494 |  | GC1 | 8828334 |
| 496 | 37100.37400.37600.38400.39600.40800.41800.93500.1096700 | Aluminium door-window fixing | 13.5d | 2026-08-23 | 2026-09-03 | 480, 492, 495 |  | GC1 | 8828344 |
| 497 | 37100.37400.37600.38400.39600.40800.41800.93500.1096800 | Putty primer coat | 6.75d | 2026-07-27 | 2026-08-01 | 481, 495 |  | GC1 | 8828354 |
| 498 | 37100.37400.37600.38400.39600.40800.41800.93500.1096900 | Door shutter fixing | 9d | 2026-07-27 | 2026-08-03 | 482, 495 |  | GC1 | 8828364 |
| 499 | 37100.37400.37600.38400.39600.40800.41800.93500.1097000 | Electrical wiring work | 13.5d | 2026-08-04 | 2026-08-15 | 483, 498 |  | GC1 | 8828374 |
| 500 | 37100.37400.37600.38400.39600.40800.41800.93500.1097100 | Painting 1st coat | 13.5d | 2026-08-16 | 2026-08-27 | 484, 497, 498, 499 |  | GC1 | 8828384 |
| 501 | 37100.37400.37600.38400.39600.40800.41800.93500.1097200 | False ceiling | 11.25d | 2026-08-28 | 2026-09-06 | 485, 500 |  | GC1 | 8828394 |
| 502 | 37100.37400.37600.38400.39600.40800.41800.93400 | **16th Floor** | 123.75d | 2026-06-01 | 2026-09-18 |  | start no earlier than 2026-06-01 | GC1 | 8806344 |
| 503 | 37100.37400.37600.38400.39600.40800.41800.93400.1097300 | Block Work | 9d | 2026-06-01 | 2026-06-08 | 238, 487 |  | GC1 | 8828404 |
| 504 | 37100.37400.37600.38400.39600.40800.41800.93400.1097400 | Door Frame Fixing | 10.12d | 2026-06-09 | 2026-06-17 | 488, 503 |  | GC1 | 8828414 |
| 505 | 37100.37400.37600.38400.39600.40800.41800.93400.1097500 | Internal Plumbing Works | 11.25d | 2026-06-09 | 2026-06-18 | 489, 503 |  | GC1 | 8828424 |
| 506 | 37100.37400.37600.38400.39600.40800.41800.93400.1097600 | Waterproofing | 13.5d | 2026-06-19 | 2026-06-30 | 490, 505 |  | GC1 | 8828434 |
| 507 | 37100.37400.37600.38400.39600.40800.41800.93400.1097700 | Internal Plaster | 10.12d | 2026-07-01 | 2026-07-09 | 491, 504, 505, 506 |  | GC1 | 8828444 |
| 508 | 37100.37400.37600.38400.39600.40800.41800.93400.1097800 | IPS flooring work | 10.12d | 2026-07-01 | 2026-07-09 | 492, 504, 505, 506 |  | GC1 | 8828454 |
| 509 | 37100.37400.37600.38400.39600.40800.41800.93400.1097900 | Toilet dado work | 9d | 2026-07-10 | 2026-07-17 | 493, 506, 507 |  | GC1 | 8828464 |
| 510 | 37100.37400.37600.38400.39600.40800.41800.93400.1098000 | Toilet flooring work | 7.88d | 2026-07-18 | 2026-07-24 | 494, 509 |  | GC1 | 8828474 |
| 511 | 37100.37400.37600.38400.39600.40800.41800.93400.1098100 | Living dinning flooring | 13.5d | 2026-07-27 | 2026-08-07 | 495, 504, 510 |  | GC1 | 8828484 |
| 512 | 37100.37400.37600.38400.39600.40800.41800.93400.1098200 | Aluminium door-window fixing | 13.5d | 2026-09-04 | 2026-09-15 | 496, 508, 511 |  | GC1 | 8828494 |
| 513 | 37100.37400.37600.38400.39600.40800.41800.93400.1098300 | Putty primer coat | 6.75d | 2026-08-08 | 2026-08-13 | 497, 511 |  | GC1 | 8828504 |
| 514 | 37100.37400.37600.38400.39600.40800.41800.93400.1098400 | Door shutter fixing | 9d | 2026-08-08 | 2026-08-15 | 498, 511 |  | GC1 | 8828514 |
| 515 | 37100.37400.37600.38400.39600.40800.41800.93400.1098500 | Electrical wiring work | 13.5d | 2026-08-16 | 2026-08-27 | 499, 514 |  | GC1 | 8828524 |
| 516 | 37100.37400.37600.38400.39600.40800.41800.93400.1098600 | Painting 1st coat | 13.5d | 2026-08-28 | 2026-09-08 | 500, 513, 514, 515 |  | GC1 | 8828534 |
| 517 | 37100.37400.37600.38400.39600.40800.41800.93400.1098700 | False ceiling | 11.25d | 2026-09-09 | 2026-09-18 | 501, 516 |  | GC1 | 8828544 |

| ID | WBS | Task | Duration | Start | Finish | Predecessors | Constraint | Calendar | Unique_Task_ID |
| --- | --- | --- | --- | --- | --- | --- | --- | --- | --- |
| 518 | 37100.37400.37600.38400.39600.40800.41800.93300 | **17th Floor** | 123.75d | 2026-06-13 | 2026-09-30 |  | start no earlier than 2026-06-13 | GC1 | 8806354 |
| 519 | 37100.37400.37600.38400.39600.40800.41800.93300.1098800 | Block Work | 9d | 2026-06-13 | 2026-06-20 | 239, 503 |  | GC1 | 8828554 |
| 520 | 37100.37400.37600.38400.39600.40800.41800.93300.1098900 | Door Frame Fixing | 10.12d | 2026-06-21 | 2026-06-29 | 504, 519 |  | GC1 | 8828564 |
| 521 | 37100.37400.37600.38400.39600.40800.41800.93300.1099000 | Internal Plumbing Works | 11.25d | 2026-06-21 | 2026-06-30 | 505, 519 |  | GC1 | 8828574 |
| 522 | 37100.37400.37600.38400.39600.40800.41800.93300.1099100 | Waterproofing | 13.5d | 2026-07-01 | 2026-07-12 | 506, 521 |  | GC1 | 8828584 |
| 523 | 37100.37400.37600.38400.39600.40800.41800.93300.1099200 | Internal Plaster | 10.12d | 2026-07-13 | 2026-07-21 | 507, 520, 521, 522 |  | GC1 | 8828594 |
| 524 | 37100.37400.37600.38400.39600.40800.41800.93300.1099300 | IPS flooring work | 10.12d | 2026-07-13 | 2026-07-21 | 508, 520, 521, 522 |  | GC1 | 8828604 |
| 525 | 37100.37400.37600.38400.39600.40800.41800.93300.1099400 | Toilet dado work | 9d | 2026-07-22 | 2026-07-29 | 509, 522, 523 |  | GC1 | 8828614 |
| 526 | 37100.37400.37600.38400.39600.40800.41800.93300.1099500 | Toilet flooring work | 7.88d | 2026-07-30 | 2026-08-05 | 510, 525 |  | GC1 | 8828624 |
| 527 | 37100.37400.37600.38400.39600.40800.41800.93300.1099600 | Living dinning flooring | 13.5d | 2026-08-08 | 2026-08-19 | 511, 520, 526 |  | GC1 | 8828634 |
| 528 | 37100.37400.37600.38400.39600.40800.41800.93300.1099700 | Aluminium door-window fixing | 13.5d | 2026-09-16 | 2026-09-27 | 512, 524, 527 |  | GC1 | 8828644 |
| 529 | 37100.37400.37600.38400.39600.40800.41800.93300.1099800 | Putty primer coat | 6.75d | 2026-08-20 | 2026-08-25 | 513, 527 |  | GC1 | 8828654 |
| 530 | 37100.37400.37600.38400.39600.40800.41800.93300.1099900 | Door shutter fixing | 9d | 2026-08-20 | 2026-08-27 | 514, 527 |  | GC1 | 8828664 |
| 531 | 37100.37400.37600.38400.39600.40800.41800.93300.1100000 | Electrical wiring work | 13.5d | 2026-08-28 | 2026-09-08 | 515, 530 |  | GC1 | 8828674 |
| 532 | 37100.37400.37600.38400.39600.40800.41800.93300.1100100 | Painting 1st coat | 13.5d | 2026-09-09 | 2026-09-20 | 516, 529, 530, 531 |  | GC1 | 8828684 |
| 533 | 37100.37400.37600.38400.39600.40800.41800.93300.1100200 | False ceiling | 11.25d | 2026-09-21 | 2026-09-30 | 517, 532 |  | GC1 | 8828694 |
| 534 | 37100.37400.37600.38400.39600.40800.41800.93200 | **18th Floor** | 123.75d | 2026-06-25 | 2026-10-12 |  | start no earlier than 2026-06-25 | GC1 | 8806364 |
| 535 | 37100.37400.37600.38400.39600.40800.41800.93200.1100300 | Block Work | 9d | 2026-06-25 | 2026-07-02 | 240, 519 |  | GC1 | 8828704 |
| 536 | 37100.37400.37600.38400.39600.40800.41800.93200.1100400 | Door Frame Fixing | 10.12d | 2026-07-03 | 2026-07-11 | 520, 535 |  | GC1 | 8828714 |
| 537 | 37100.37400.37600.38400.39600.40800.41800.93200.1100500 | Internal Plumbing Works | 11.25d | 2026-07-03 | 2026-07-12 | 521, 535 |  | GC1 | 8828724 |
| 538 | 37100.37400.37600.38400.39600.40800.41800.93200.1100600 | Waterproofing | 13.5d | 2026-07-13 | 2026-07-24 | 522, 537 |  | GC1 | 8828734 |
| 539 | 37100.37400.37600.38400.39600.40800.41800.93200.1100700 | Internal Plaster | 10.12d | 2026-07-25 | 2026-08-02 | 523, 536, 537, 538 |  | GC1 | 8828744 |
| 540 | 37100.37400.37600.38400.39600.40800.41800.93200.1100800 | IPS flooring work | 10.12d | 2026-07-25 | 2026-08-02 | 524, 536, 537, 538 |  | GC1 | 8828754 |
| 541 | 37100.37400.37600.38400.39600.40800.41800.93200.1100900 | Toilet dado work | 9d | 2026-08-03 | 2026-08-10 | 525, 538, 539 |  | GC1 | 8828764 |
| 542 | 37100.37400.37600.38400.39600.40800.41800.93200.1101000 | Toilet flooring work | 7.88d | 2026-08-11 | 2026-08-17 | 526, 541 |  | GC1 | 8828774 |
| 543 | 37100.37400.37600.38400.39600.40800.41800.93200.1101100 | Living dinning flooring | 13.5d | 2026-08-20 | 2026-08-31 | 527, 536, 542 |  | GC1 | 8828784 |
| 544 | 37100.37400.37600.38400.39600.40800.41800.93200.1101200 | Aluminium door-window fixing | 13.5d | 2026-09-28 | 2026-10-09 | 528, 540, 543 |  | GC1 | 8828794 |
| 545 | 37100.37400.37600.38400.39600.40800.41800.93200.1101300 | Putty primer coat | 6.75d | 2026-09-01 | 2026-09-06 | 529, 543 |  | GC1 | 8828804 |
| 546 | 37100.37400.37600.38400.39600.40800.41800.93200.1101400 | Door shutter fixing | 9d | 2026-09-01 | 2026-09-08 | 530, 543 |  | GC1 | 8828814 |
| 547 | 37100.37400.37600.38400.39600.40800.41800.93200.1101500 | Electrical wiring work | 13.5d | 2026-09-09 | 2026-09-20 | 531, 546 |  | GC1 | 8828824 |
| 548 | 37100.37400.37600.38400.39600.40800.41800.93200.1101600 | Painting 1st coat | 13.5d | 2026-09-21 | 2026-10-02 | 532, 545, 546, 547 |  | GC1 | 8828834 |
| 549 | 37100.37400.37600.38400.39600.40800.41800.93200.1101700 | False ceiling | 11.25d | 2026-10-03 | 2026-10-12 | 533, 548 |  | GC1 | 8828844 |

| ID | WBS | Task | Duration | Start | Finish | Predecessors | Constraint | Calendar | Unique_Task_ID |
| --- | --- | --- | --- | --- | --- | --- | --- | --- | --- |
| 550 | 37100.37400.37600.38400.39600.40800.41800.93100 | **19th Floor** | 123.75d | 2026-07-07 | 2026-10-24 |  | start no earlier than 2026-07-07 | GC1 | 8806374 |
| 551 | 37100.37400.37600.38400.39600.40800.41800.93100.1101800 | Block Work | 9d | 2026-07-07 | 2026-07-14 | 241, 535 |  | GC1 | 8828854 |
| 552 | 37100.37400.37600.38400.39600.40800.41800.93100.1101900 | Door Frame Fixing | 10.12d | 2026-07-15 | 2026-07-23 | 536, 551 |  | GC1 | 8828864 |
| 553 | 37100.37400.37600.38400.39600.40800.41800.93100.1102000 | Internal Plumbing Works | 11.25d | 2026-07-15 | 2026-07-24 | 537, 551 |  | GC1 | 8828874 |
| 554 | 37100.37400.37600.38400.39600.40800.41800.93100.1102100 | Waterproofing | 13.5d | 2026-07-25 | 2026-08-05 | 538, 553 |  | GC1 | 8828884 |
| 555 | 37100.37400.37600.38400.39600.40800.41800.93100.1102200 | Internal Plaster | 10.12d | 2026-08-06 | 2026-08-14 | 539, 552, 553, 554 |  | GC1 | 8828894 |
| 556 | 37100.37400.37600.38400.39600.40800.41800.93100.1102300 | IPS flooring work | 10.12d | 2026-08-15 | 2026-08-23 | 540, 552, 554, 555 |  | GC1 | 8828904 |
| 557 | 37100.37400.37600.38400.39600.40800.41800.93100.1102400 | Toilet dado work | 9d | 2026-08-15 | 2026-08-22 | 541, 554, 555 |  | GC1 | 8828914 |
| 558 | 37100.37400.37600.38400.39600.40800.41800.93100.1102500 | Toilet flooring work | 7.88d | 2026-08-23 | 2026-08-29 | 542, 557 |  | GC1 | 8828924 |
| 559 | 37100.37400.37600.38400.39600.40800.41800.93100.1102600 | Living dinning flooring | 13.5d | 2026-09-01 | 2026-09-12 | 543, 552, 558 |  | GC1 | 8828934 |
| 560 | 37100.37400.37600.38400.39600.40800.41800.93100.1102700 | Aluminium door-window fixing | 13.5d | 2026-10-10 | 2026-10-21 | 544, 556, 559 |  | GC1 | 8828944 |
| 561 | 37100.37400.37600.38400.39600.40800.41800.93100.1102800 | Putty primer coat | 6.75d | 2026-09-13 | 2026-09-18 | 545, 559 |  | GC1 | 8828954 |
| 562 | 37100.37400.37600.38400.39600.40800.41800.93100.1102900 | Door shutter fixing | 9d | 2026-09-13 | 2026-09-20 | 546, 559 |  | GC1 | 8828964 |
| 563 | 37100.37400.37600.38400.39600.40800.41800.93100.1103000 | Electrical wiring work | 13.5d | 2026-09-21 | 2026-10-02 | 547, 562 |  | GC1 | 8828974 |
| 564 | 37100.37400.37600.38400.39600.40800.41800.93100.1103100 | Painting 1st coat | 13.5d | 2026-10-03 | 2026-10-14 | 548, 561, 562, 563 |  | GC1 | 8828984 |
| 565 | 37100.37400.37600.38400.39600.40800.41800.93100.1103200 | False ceiling | 11.25d | 2026-10-15 | 2026-10-24 | 549, 564 |  | GC1 | 8828994 |
| 566 | 37100.37400.37600.38400.39600.40800.41800.93000 | **20th Floor** | 123.75d | 2026-07-19 | 2026-12-20 |  | start no earlier than 2026-07-19 | GC1 | 8806384 |
| 567 | 37100.37400.37600.38400.39600.40800.41800.93000.1103300 | Block Work | 9d | 2026-07-19 | 2026-07-26 | 242, 551 |  | GC1 | 8829004 |
| 568 | 37100.37400.37600.38400.39600.40800.41800.93000.1103400 | Door Frame Fixing | 10.12d | 2026-07-27 | 2026-08-04 | 552, 567 |  | GC1 | 8829014 |
| 569 | 37100.37400.37600.38400.39600.40800.41800.93000.1103500 | Internal Plumbing Works | 11.25d | 2026-07-27 | 2026-08-05 | 553, 567 |  | GC1 | 8829024 |
| 570 | 37100.37400.37600.38400.39600.40800.41800.93000.1103600 | Waterproofing | 13.5d | 2026-08-06 | 2026-08-17 | 554, 569 |  | GC1 | 8829034 |
| 571 | 37100.37400.37600.38400.39600.40800.41800.93000.1103700 | Internal Plaster | 10.12d | 2026-08-18 | 2026-08-26 | 555, 568, 569, 570 |  | GC1 | 8829044 |
| 572 | 37100.37400.37600.38400.39600.40800.41800.93000.1103800 | IPS flooring work | 10.12d | 2026-08-27 | 2026-09-04 | 556, 568, 570, 571 |  | GC1 | 8829054 |
| 573 | 37100.37400.37600.38400.39600.40800.41800.93000.1103900 | Toilet dado work | 9d | 2026-08-27 | 2026-09-03 | 557, 570, 571 |  | GC1 | 8829064 |
| 574 | 37100.37400.37600.38400.39600.40800.41800.93000.1104000 | Toilet flooring work | 7.88d | 2026-09-04 | 2026-09-10 | 558, 573 |  | GC1 | 8829074 |
| 575 | 37100.37400.37600.38400.39600.40800.41800.93000.1104100 | Living dinning flooring | 13.5d | 2026-09-13 | 2026-09-24 | 559, 568, 574 |  | GC1 | 8829084 |
| 576 | 37100.37400.37600.38400.39600.40800.41800.93000.1104200 | Aluminium door-window fixing | 13.5d | 2026-10-22 | 2026-12-17 | 560, 572, 575 |  | GC1 | 8829094 |
| 577 | 37100.37400.37600.38400.39600.40800.41800.93000.1104300 | Putty primer coat | 6.75d | 2026-09-25 | 2026-09-30 | 561, 575 |  | GC1 | 8829104 |
| 578 | 37100.37400.37600.38400.39600.40800.41800.93000.1104400 | Door shutter fixing | 9d | 2026-09-25 | 2026-10-02 | 562, 575 |  | GC1 | 8829114 |
| 579 | 37100.37400.37600.38400.39600.40800.41800.93000.1104500 | Electrical wiring work | 13.5d | 2026-10-03 | 2026-10-14 | 563, 578 |  | GC1 | 8829124 |
| 580 | 37100.37400.37600.38400.39600.40800.41800.93000.1104600 | Painting 1st coat | 13.5d | 2026-10-15 | 2026-10-26 | 564, 577, 578, 579 |  | GC1 | 8829134 |
| 581 | 37100.37400.37600.38400.39600.40800.41800.93000.1104700 | False ceiling | 11.25d | 2026-10-27 | 2026-12-20 | 565, 580 |  | GC1 | 8829144 |

| ID | WBS | Task | Duration | Start | Finish | Predecessors | Constraint | Calendar | Unique_Task_ID |
| --- | --- | --- | --- | --- | --- | --- | --- | --- | --- |
| 582 | 37100.37400.37600.38400.39600.40800.41800.92900 | **21st Floor** | 123.75d | 2026-07-31 | 2027-01-01 |  | start no earlier than 2026-07-31 | GC1 | 8806394 |
| 583 | 37100.37400.37600.38400.39600.40800.41800.92900.1104800 | Block Work | 9d | 2026-07-31 | 2026-08-07 | 243, 567 |  | GC1 | 8829154 |
| 584 | 37100.37400.37600.38400.39600.40800.41800.92900.1104900 | Door Frame Fixing | 10.12d | 2026-08-08 | 2026-08-16 | 568, 583 |  | GC1 | 8829164 |
| 585 | 37100.37400.37600.38400.39600.40800.41800.92900.1105000 | Internal Plumbing Works | 11.25d | 2026-08-08 | 2026-08-17 | 569, 583 |  | GC1 | 8829174 |
| 586 | 37100.37400.37600.38400.39600.40800.41800.92900.1105100 | Waterproofing | 13.5d | 2026-08-18 | 2026-08-29 | 570, 585 |  | GC1 | 8829184 |
| 587 | 37100.37400.37600.38400.39600.40800.41800.92900.1105200 | Internal Plaster | 10.12d | 2026-08-30 | 2026-09-07 | 571, 584, 585, 586 |  | GC1 | 8829194 |
| 588 | 37100.37400.37600.38400.39600.40800.41800.92900.1105300 | IPS flooring work | 10.12d | 2026-09-08 | 2026-09-16 | 572, 584, 586, 587 |  | GC1 | 8829204 |
| 589 | 37100.37400.37600.38400.39600.40800.41800.92900.1105400 | Toilet dado work | 9d | 2026-09-08 | 2026-09-15 | 573, 586, 587 |  | GC1 | 8829214 |
| 590 | 37100.37400.37600.38400.39600.40800.41800.92900.1105500 | Toilet flooring work | 7.88d | 2026-09-16 | 2026-09-22 | 574, 589 |  | GC1 | 8829224 |
| 591 | 37100.37400.37600.38400.39600.40800.41800.92900.1105600 | Living dinning flooring | 13.5d | 2026-09-25 | 2026-10-06 | 575, 584, 590 |  | GC1 | 8829234 |
| 592 | 37100.37400.37600.38400.39600.40800.41800.92900.1105700 | Aluminium door-window fixing | 13.5d | 2026-12-18 | 2026-12-29 | 576, 588, 591 |  | GC1 | 8829244 |
| 593 | 37100.37400.37600.38400.39600.40800.41800.92900.1105800 | Putty primer coat | 6.75d | 2026-10-07 | 2026-10-12 | 577, 591 |  | GC1 | 8829254 |
| 594 | 37100.37400.37600.38400.39600.40800.41800.92900.1105900 | Door shutter fixing | 9d | 2026-10-07 | 2026-10-14 | 578, 591 |  | GC1 | 8829264 |
| 595 | 37100.37400.37600.38400.39600.40800.41800.92900.1106000 | Electrical wiring work | 13.5d | 2026-10-15 | 2026-10-26 | 579, 594 |  | GC1 | 8829274 |
| 596 | 37100.37400.37600.38400.39600.40800.41800.92900.1106100 | Painting 1st coat | 13.5d | 2026-10-27 | 2026-12-22 | 580, 593, 594, 595 |  | GC1 | 8829284 |
| 597 | 37100.37400.37600.38400.39600.40800.41800.92900.1106200 | False ceiling | 11.25d | 2026-12-23 | 2027-01-01 | 581, 596 |  | GC1 | 8829294 |
| 598 | 37100.37400.37600.38400.39600.40800.41800.92800 | **22nd Floor** | 123.75d | 2026-08-12 | 2027-01-13 |  | start no earlier than 2026-08-12 | GC1 | 8806404 |
| 599 | 37100.37400.37600.38400.39600.40800.41800.92800.1106300 | Block Work | 9d | 2026-08-12 | 2026-08-19 | 244, 583 |  | GC1 | 8829304 |
| 600 | 37100.37400.37600.38400.39600.40800.41800.92800.1106400 | Door Frame Fixing | 10.12d | 2026-08-20 | 2026-08-28 | 584, 599 |  | GC1 | 8829314 |
| 601 | 37100.37400.37600.38400.39600.40800.41800.92800.1106500 | Internal Plumbing Works | 11.25d | 2026-08-20 | 2026-08-29 | 585, 599 |  | GC1 | 8829324 |
| 602 | 37100.37400.37600.38400.39600.40800.41800.92800.1106600 | Waterproofing | 13.5d | 2026-08-30 | 2026-09-10 | 586, 601 |  | GC1 | 8829334 |
| 603 | 37100.37400.37600.38400.39600.40800.41800.92800.1106700 | Internal Plaster | 10.12d | 2026-09-11 | 2026-09-19 | 587, 600, 601, 602 |  | GC1 | 8829344 |
| 604 | 37100.37400.37600.38400.39600.40800.41800.92800.1106800 | IPS flooring work | 10.12d | 2026-09-20 | 2026-09-28 | 588, 600, 602, 603 |  | GC1 | 8829354 |
| 605 | 37100.37400.37600.38400.39600.40800.41800.92800.1106900 | Toilet dado work | 9d | 2026-09-20 | 2026-09-27 | 589, 602, 603 |  | GC1 | 8829364 |
| 606 | 37100.37400.37600.38400.39600.40800.41800.92800.1107000 | Toilet flooring work | 7.88d | 2026-09-28 | 2026-10-04 | 590, 605 |  | GC1 | 8829374 |
| 607 | 37100.37400.37600.38400.39600.40800.41800.92800.1107100 | Living dinning flooring | 13.5d | 2026-10-07 | 2026-10-18 | 591, 600, 606 |  | GC1 | 8829384 |
| 608 | 37100.37400.37600.38400.39600.40800.41800.92800.1107200 | Aluminium door-window fixing | 13.5d | 2026-12-30 | 2027-01-10 | 592, 604, 607 |  | GC1 | 8829394 |
| 609 | 37100.37400.37600.38400.39600.40800.41800.92800.1107300 | Putty primer coat | 6.75d | 2026-10-19 | 2026-10-24 | 593, 607 |  | GC1 | 8829404 |
| 610 | 37100.37400.37600.38400.39600.40800.41800.92800.1107400 | Door shutter fixing | 9d | 2026-10-19 | 2026-10-26 | 594, 607 |  | GC1 | 8829414 |
| 611 | 37100.37400.37600.38400.39600.40800.41800.92800.1107500 | Electrical wiring work | 13.5d | 2026-10-27 | 2026-12-22 | 595, 610 |  | GC1 | 8829424 |
| 612 | 37100.37400.37600.38400.39600.40800.41800.92800.1107600 | Painting 1st coat | 13.5d | 2026-12-23 | 2027-01-03 | 596, 609, 610, 611 |  | GC1 | 8829434 |
| 613 | 37100.37400.37600.38400.39600.40800.41800.92800.1107700 | False ceiling | 11.25d | 2027-01-04 | 2027-01-13 | 597, 612 |  | GC1 | 8829444 |

| ID | WBS | Task | Duration | Start | Finish | Predecessors | Constraint | Calendar | Unique_Task_ID |
| --- | --- | --- | --- | --- | --- | --- | --- | --- | --- |
| 614 | 37100.37400.37600.38400.39600.40800.41800.92700 | **23rd Floor** | 127.12d | 2026-08-24 | 2027-01-28 |  | start no earlier than 2026-08-24 | GC1 | 8806414 |
| 615 | 37100.37400.37600.38400.39600.40800.41800.92700.1107800 | Block Work | 9d | 2026-08-24 | 2026-08-31 | 245, 599 |  | GC1 | 8829454 |
| 616 | 37100.37400.37600.38400.39600.40800.41800.92700.1107900 | Door Frame Fixing | 10.12d | 2026-09-01 | 2026-09-09 | 600, 615 |  | GC1 | 8829464 |
| 617 | 37100.37400.37600.38400.39600.40800.41800.92700.1108000 | Internal Plumbing Works | 11.25d | 2026-09-01 | 2026-09-10 | 601, 615 |  | GC1 | 8829474 |
| 618 | 37100.37400.37600.38400.39600.40800.41800.92700.1108100 | Waterproofing | 13.5d | 2026-09-11 | 2026-09-22 | 602, 617 |  | GC1 | 8829484 |
| 619 | 37100.37400.37600.38400.39600.40800.41800.92700.1108200 | Internal Plaster | 10.12d | 2026-09-23 | 2026-10-01 | 603, 616, 617, 618 |  | GC1 | 8829494 |
| 620 | 37100.37400.37600.38400.39600.40800.41800.92700.1108300 | IPS flooring work | 10.12d | 2026-10-02 | 2026-10-10 | 604, 616, 618, 619 |  | GC1 | 8829504 |
| 621 | 37100.37400.37600.38400.39600.40800.41800.92700.1108400 | Toilet dado work | 9d | 2026-10-02 | 2026-10-09 | 605, 618, 619 |  | GC1 | 8829514 |
| 622 | 37100.37400.37600.38400.39600.40800.41800.92700.1108500 | Toilet flooring work | 7.88d | 2026-10-10 | 2026-10-16 | 606, 621 |  | GC1 | 8829524 |
| 623 | 37100.37400.37600.38400.39600.40800.41800.92700.1108600 | Living dinning flooring | 16.88d | 2026-10-19 | 2026-12-17 | 607, 616, 622 |  | GC1 | 8829534 |
| 624 | 37100.37400.37600.38400.39600.40800.41800.92700.1108700 | Aluminium door-window fixing | 16.88d | 2027-01-11 | 2027-01-25 | 608, 620, 623 |  | GC1 | 8829544 |
| 625 | 37100.37400.37600.38400.39600.40800.41800.92700.1108800 | Putty primer coat | 6.75d | 2026-12-18 | 2026-12-23 | 609, 623 |  | GC1 | 8829554 |
| 626 | 37100.37400.37600.38400.39600.40800.41800.92700.1108900 | Door shutter fixing | 9d | 2026-12-18 | 2026-12-25 | 610, 623 |  | GC1 | 8829564 |
| 627 | 37100.37400.37600.38400.39600.40800.41800.92700.1109000 | Electrical wiring work | 13.5d | 2026-12-26 | 2027-01-06 | 611, 626 |  | GC1 | 8829574 |
| 628 | 37100.37400.37600.38400.39600.40800.41800.92700.1109100 | Painting 1st coat | 13.5d | 2027-01-07 | 2027-01-18 | 612, 625, 626, 627 |  | GC1 | 8829584 |
| 629 | 37100.37400.37600.38400.39600.40800.41800.92700.1109200 | False ceiling | 11.25d | 2027-01-19 | 2027-01-28 | 613, 628 |  | GC1 | 8829594 |
| 630 | 37100.37400.37600.38400.39600.40800.41800.92600 | **24th Floor** | 130.5d | 2026-09-05 | 2027-02-12 |  | start no earlier than 2026-09-05 | GC1 | 8806424 |
| 631 | 37100.37400.37600.38400.39600.40800.41800.92600.1109300 | Block Work | 9d | 2026-09-05 | 2026-09-12 | 246, 615 |  | GC1 | 8829604 |
| 632 | 37100.37400.37600.38400.39600.40800.41800.92600.1109400 | Door Frame Fixing | 10.12d | 2026-09-13 | 2026-09-21 | 616, 631 |  | GC1 | 8829614 |
| 633 | 37100.37400.37600.38400.39600.40800.41800.92600.1109500 | Internal Plumbing Works | 11.25d | 2026-09-13 | 2026-09-22 | 617, 631 |  | GC1 | 8829624 |
| 634 | 37100.37400.37600.38400.39600.40800.41800.92600.1109600 | Waterproofing | 13.5d | 2026-09-23 | 2026-10-04 | 618, 633 |  | GC1 | 8829634 |
| 635 | 37100.37400.37600.38400.39600.40800.41800.92600.1109700 | Internal Plaster | 10.12d | 2026-10-05 | 2026-10-13 | 619, 632, 633, 634 |  | GC1 | 8829644 |
| 636 | 37100.37400.37600.38400.39600.40800.41800.92600.1109800 | IPS flooring work | 10.12d | 2026-10-14 | 2026-10-22 | 620, 632, 634, 635 |  | GC1 | 8829654 |
| 637 | 37100.37400.37600.38400.39600.40800.41800.92600.1109900 | Toilet dado work | 9d | 2026-10-14 | 2026-10-21 | 621, 634, 635 |  | GC1 | 8829664 |
| 638 | 37100.37400.37600.38400.39600.40800.41800.92600.1110000 | Toilet flooring work | 7.88d | 2026-10-22 | 2026-10-28 | 622, 637 |  | GC1 | 8829674 |
| 639 | 37100.37400.37600.38400.39600.40800.41800.92600.1110100 | Living dinning flooring | 16.88d | 2026-12-18 | 2027-01-01 | 623, 632, 638 |  | GC1 | 8829684 |
| 640 | 37100.37400.37600.38400.39600.40800.41800.92600.1110200 | Aluminium door-window fixing | 16.88d | 2027-01-26 | 2027-02-09 | 624, 636, 639 |  | GC1 | 8829694 |
| 641 | 37100.37400.37600.38400.39600.40800.41800.92600.1110300 | Putty primer coat | 6.75d | 2027-01-02 | 2027-01-07 | 625, 639 |  | GC1 | 8829704 |
| 642 | 37100.37400.37600.38400.39600.40800.41800.92600.1110400 | Door shutter fixing | 9d | 2027-01-02 | 2027-01-09 | 626, 639 |  | GC1 | 8829714 |
| 643 | 37100.37400.37600.38400.39600.40800.41800.92600.1110500 | Electrical wiring work | 13.5d | 2027-01-10 | 2027-01-21 | 627, 642 |  | GC1 | 8829724 |
| 644 | 37100.37400.37600.38400.39600.40800.41800.92600.1110600 | Painting 1st coat | 13.5d | 2027-01-22 | 2027-02-02 | 628, 641, 642, 643 |  | GC1 | 8829734 |
| 645 | 37100.37400.37600.38400.39600.40800.41800.92600.1110700 | False ceiling | 11.25d | 2027-02-03 | 2027-02-12 | 629, 644 |  | GC1 | 8829744 |

| ID | WBS | Task | Duration | Start | Finish | Predecessors | Constraint | Calendar | Unique_Task_ID |
| --- | --- | --- | --- | --- | --- | --- | --- | --- | --- |
| 646 | 37100.37400.37600.38400.39600.40800.41800.92500 | **25th Floor** | 133.88d | 2026-09-17 | 2027-02-27 |  | start no earlier than 2026-09-17 | GC1 | 8806434 |
| 647 | 37100.37400.37600.38400.39600.40800.41800.92500.1110800 | Block Work | 9d | 2026-09-17 | 2026-09-24 | 247, 631 |  | GC1 | 8829754 |
| 648 | 37100.37400.37600.38400.39600.40800.41800.92500.1110900 | Door Frame Fixing | 10.12d | 2026-09-25 | 2026-10-03 | 632, 647 |  | GC1 | 8829764 |
| 649 | 37100.37400.37600.38400.39600.40800.41800.92500.1111000 | Internal Plumbing Works | 11.25d | 2026-09-25 | 2026-10-04 | 633, 647 |  | GC1 | 8829774 |
| 650 | 37100.37400.37600.38400.39600.40800.41800.92500.1111100 | Waterproofing | 13.5d | 2026-10-05 | 2026-10-16 | 634, 649 |  | GC1 | 8829784 |
| 651 | 37100.37400.37600.38400.39600.40800.41800.92500.1111200 | Internal Plaster | 10.12d | 2026-10-17 | 2026-10-25 | 635, 648, 649, 650 |  | GC1 | 8829794 |
| 652 | 37100.37400.37600.38400.39600.40800.41800.92500.1111300 | IPS flooring work | 10.12d | 2026-10-26 | 2026-12-18 | 636, 648, 650, 651 |  | GC1 | 8829804 |
| 653 | 37100.37400.37600.38400.39600.40800.41800.92500.1111400 | Toilet dado work | 9d | 2026-10-26 | 2026-12-17 | 637, 650, 651 |  | GC1 | 8829814 |
| 654 | 37100.37400.37600.38400.39600.40800.41800.92500.1111500 | Toilet flooring work | 7.88d | 2026-12-18 | 2026-12-24 | 638, 653 |  | GC1 | 8829824 |
| 655 | 37100.37400.37600.38400.39600.40800.41800.92500.1111600 | Living dinning flooring | 16.88d | 2027-01-02 | 2027-01-16 | 639, 648, 654 |  | GC1 | 8829834 |
| 656 | 37100.37400.37600.38400.39600.40800.41800.92500.1111700 | Aluminium door-window fixing | 16.88d | 2027-02-10 | 2027-02-24 | 640, 652, 655 |  | GC1 | 8829844 |
| 657 | 37100.37400.37600.38400.39600.40800.41800.92500.1111800 | Putty primer coat | 6.75d | 2027-01-17 | 2027-01-22 | 641, 655 |  | GC1 | 8829854 |
| 658 | 37100.37400.37600.38400.39600.40800.41800.92500.1111900 | Door shutter fixing | 9d | 2027-01-17 | 2027-01-24 | 642, 655 |  | GC1 | 8829864 |
| 659 | 37100.37400.37600.38400.39600.40800.41800.92500.1112000 | Electrical wiring work | 13.5d | 2027-01-25 | 2027-02-05 | 643, 658 |  | GC1 | 8829874 |
| 660 | 37100.37400.37600.38400.39600.40800.41800.92500.1112100 | Painting 1st coat | 13.5d | 2027-02-06 | 2027-02-17 | 644, 657, 658, 659 |  | GC1 | 8829884 |
| 661 | 37100.37400.37600.38400.39600.40800.41800.92500.1112200 | False ceiling | 11.25d | 2027-02-18 | 2027-02-27 | 645, 660 |  | GC1 | 8829894 |
| 662 | 37100.37400.37600.38400.39600.40800.41800.92400 | **26th Floor** | 137.25d | 2026-09-29 | 2027-03-14 |  | start no earlier than 2026-09-29 | GC1 | 8806444 |
| 663 | 37100.37400.37600.38400.39600.40800.41800.92400.1112300 | Block Work | 9d | 2026-09-29 | 2026-10-06 | 248, 647 |  | GC1 | 8829904 |
| 664 | 37100.37400.37600.38400.39600.40800.41800.92400.1112400 | Door Frame Fixing | 10.12d | 2026-10-07 | 2026-10-15 | 648, 663 |  | GC1 | 8829914 |
| 665 | 37100.37400.37600.38400.39600.40800.41800.92400.1112500 | Internal Plumbing Works | 11.25d | 2026-10-07 | 2026-10-16 | 649, 663 |  | GC1 | 8829924 |
| 666 | 37100.37400.37600.38400.39600.40800.41800.92400.1112600 | Waterproofing | 13.5d | 2026-10-17 | 2026-10-28 | 650, 665 |  | GC1 | 8829934 |
| 667 | 37100.37400.37600.38400.39600.40800.41800.92400.1112700 | Internal Plaster | 10.12d | 2026-10-29 | 2026-12-21 | 651, 664, 665, 666 |  | GC1 | 8829944 |
| 668 | 37100.37400.37600.38400.39600.40800.41800.92400.1112800 | IPS flooring work | 10.12d | 2026-12-22 | 2026-12-30 | 652, 664, 666, 667 |  | GC1 | 8829954 |
| 669 | 37100.37400.37600.38400.39600.40800.41800.92400.1112900 | Toilet dado work | 9d | 2026-12-22 | 2026-12-29 | 653, 666, 667 |  | GC1 | 8829964 |
| 670 | 37100.37400.37600.38400.39600.40800.41800.92400.1113000 | Toilet flooring work | 7.88d | 2026-12-30 | 2027-01-05 | 654, 669 |  | GC1 | 8829974 |
| 671 | 37100.37400.37600.38400.39600.40800.41800.92400.1113100 | Living dinning flooring | 16.88d | 2027-01-17 | 2027-01-31 | 655, 664, 670 |  | GC1 | 8829984 |
| 672 | 37100.37400.37600.38400.39600.40800.41800.92400.1113200 | Aluminium door-window fixing | 16.88d | 2027-02-25 | 2027-03-11 | 656, 668, 671 |  | GC1 | 8829994 |
| 673 | 37100.37400.37600.38400.39600.40800.41800.92400.1113300 | Putty primer coat | 6.75d | 2027-02-01 | 2027-02-06 | 657, 671 |  | GC1 | 8830004 |
| 674 | 37100.37400.37600.38400.39600.40800.41800.92400.1113400 | Door shutter fixing | 9d | 2027-02-01 | 2027-02-08 | 658, 671 |  | GC1 | 8830014 |
| 675 | 37100.37400.37600.38400.39600.40800.41800.92400.1113500 | Electrical wiring work | 13.5d | 2027-02-09 | 2027-02-20 | 659, 674 |  | GC1 | 8830024 |
| 676 | 37100.37400.37600.38400.39600.40800.41800.92400.1113600 | Painting 1st coat | 13.5d | 2027-02-21 | 2027-03-04 | 660, 673, 674, 675 |  | GC1 | 8830034 |
| 677 | 37100.37400.37600.38400.39600.40800.41800.92400.1113700 | False ceiling | 11.25d | 2027-03-05 | 2027-03-14 | 661, 676 |  | GC1 | 8830044 |

| ID | WBS | Task | Duration | Start | Finish | Predecessors | Constraint | Calendar | Unique_Task_ID |
| --- | --- | --- | --- | --- | --- | --- | --- | --- | --- |
| 678 | 37100.37400.37600.38400.39600.40800.41800.92300 | **27th Floor** | 140.62d | 2026-10-11 | 2027-03-29 |  | start no earlier than 2026-10-11 | GC1 | 8806454 |
| 679 | 37100.37400.37600.38400.39600.40800.41800.92300.1113800 | Block Work | 9d | 2026-10-11 | 2026-10-18 | 249, 663 |  | GC1 | 8830054 |
| 680 | 37100.37400.37600.38400.39600.40800.41800.92300.1113900 | Door Frame Fixing | 10.12d | 2026-10-19 | 2026-10-27 | 664, 679 |  | GC1 | 8830064 |
| 681 | 37100.37400.37600.38400.39600.40800.41800.92300.1114000 | Internal Plumbing Works | 11.25d | 2026-10-19 | 2026-10-28 | 665, 679 |  | GC1 | 8830074 |
| 682 | 37100.37400.37600.38400.39600.40800.41800.92300.1114100 | Waterproofing | 13.5d | 2026-10-29 | 2026-12-24 | 666, 681 |  | GC1 | 8830084 |
| 683 | 37100.37400.37600.38400.39600.40800.41800.92300.1114200 | Internal Plaster | 10.12d | 2026-12-25 | 2027-01-02 | 667, 680, 681, 682 |  | GC1 | 8830094 |
| 684 | 37100.37400.37600.38400.39600.40800.41800.92300.1114300 | IPS flooring work | 10.12d | 2027-01-03 | 2027-01-11 | 668, 680, 682, 683 |  | GC1 | 8830104 |
| 685 | 37100.37400.37600.38400.39600.40800.41800.92300.1114400 | Toilet dado work | 9d | 2027-01-03 | 2027-01-10 | 669, 682, 683 |  | GC1 | 8830114 |
| 686 | 37100.37400.37600.38400.39600.40800.41800.92300.1114500 | Toilet flooring work | 7.88d | 2027-01-11 | 2027-01-17 | 670, 685 |  | GC1 | 8830124 |
| 687 | 37100.37400.37600.38400.39600.40800.41800.92300.1114600 | Living dinning flooring | 16.88d | 2027-02-01 | 2027-02-15 | 671, 680, 686 |  | GC1 | 8830134 |
| 688 | 37100.37400.37600.38400.39600.40800.41800.92300.1114700 | Aluminium door-window fixing | 16.88d | 2027-03-12 | 2027-03-26 | 672, 684, 687 |  | GC1 | 8830144 |
| 689 | 37100.37400.37600.38400.39600.40800.41800.92300.1114800 | Putty primer coat | 6.75d | 2027-02-16 | 2027-02-21 | 673, 687 |  | GC1 | 8830154 |
| 690 | 37100.37400.37600.38400.39600.40800.41800.92300.1114900 | Door shutter fixing | 9d | 2027-02-16 | 2027-02-23 | 674, 687 |  | GC1 | 8830164 |
| 691 | 37100.37400.37600.38400.39600.40800.41800.92300.1115000 | Electrical wiring work | 13.5d | 2027-02-24 | 2027-03-07 | 675, 690 |  | GC1 | 8830174 |
| 692 | 37100.37400.37600.38400.39600.40800.41800.92300.1115100 | Painting 1st coat | 13.5d | 2027-03-08 | 2027-03-19 | 676, 689, 690, 691 |  | GC1 | 8830184 |
| 693 | 37100.37400.37600.38400.39600.40800.41800.92300.1115200 | False ceiling | 11.25d | 2027-03-20 | 2027-03-29 | 677, 692 |  | GC1 | 8830194 |
| 694 | 37100.37400.37600.38400.39600.40800.41800.92200 | **28th Floor** | 144d | 2026-10-23 | 2027-04-13 |  | start no earlier than 2026-10-23 | GC1 | 8806464 |
| 695 | 37100.37400.37600.38400.39600.40800.41800.92200.1115300 | Block Work | 9d | 2026-10-23 | 2026-10-30 | 250, 679 |  | GC1 | 8830204 |
| 696 | 37100.37400.37600.38400.39600.40800.41800.92200.1115400 | Door Frame Fixing | 10.12d | 2026-10-31 | 2026-12-23 | 680, 695 |  | GC1 | 8830214 |
| 697 | 37100.37400.37600.38400.39600.40800.41800.92200.1115500 | Internal Plumbing Works | 11.25d | 2026-10-31 | 2026-12-24 | 681, 695 |  | GC1 | 8830224 |
| 698 | 37100.37400.37600.38400.39600.40800.41800.92200.1115600 | Waterproofing | 13.5d | 2026-12-25 | 2027-01-05 | 682, 697 |  | GC1 | 8830234 |
| 699 | 37100.37400.37600.38400.39600.40800.41800.92200.1115700 | Internal Plaster | 10.12d | 2027-01-06 | 2027-01-14 | 683, 696, 697, 698 |  | GC1 | 8830244 |
| 700 | 37100.37400.37600.38400.39600.40800.41800.92200.1115800 | IPS flooring work | 10.12d | 2027-01-15 | 2027-01-23 | 684, 696, 698, 699 |  | GC1 | 8830254 |
| 701 | 37100.37400.37600.38400.39600.40800.41800.92200.1115900 | Toilet dado work | 9d | 2027-01-15 | 2027-01-22 | 685, 698, 699 |  | GC1 | 8830264 |
| 702 | 37100.37400.37600.38400.39600.40800.41800.92200.1116000 | Toilet flooring work | 7.88d | 2027-01-23 | 2027-01-29 | 686, 701 |  | GC1 | 8830274 |
| 703 | 37100.37400.37600.38400.39600.40800.41800.92200.1116100 | Living dinning flooring | 16.88d | 2027-02-16 | 2027-03-02 | 687, 696, 702 |  | GC1 | 8830284 |
| 704 | 37100.37400.37600.38400.39600.40800.41800.92200.1116200 | Aluminium door-window fixing | 16.88d | 2027-03-27 | 2027-04-10 | 688, 700, 703 |  | GC1 | 8830294 |
| 705 | 37100.37400.37600.38400.39600.40800.41800.92200.1116300 | Putty primer coat | 6.75d | 2027-03-03 | 2027-03-08 | 689, 703 |  | GC1 | 8830304 |
| 706 | 37100.37400.37600.38400.39600.40800.41800.92200.1116400 | Door shutter fixing | 9d | 2027-03-03 | 2027-03-10 | 690, 703 |  | GC1 | 8830314 |
| 707 | 37100.37400.37600.38400.39600.40800.41800.92200.1116500 | Electrical wiring work | 13.5d | 2027-03-11 | 2027-03-22 | 691, 706 |  | GC1 | 8830324 |
| 708 | 37100.37400.37600.38400.39600.40800.41800.92200.1116600 | Painting 1st coat | 13.5d | 2027-03-23 | 2027-04-03 | 692, 705, 706, 707 |  | GC1 | 8830334 |
| 709 | 37100.37400.37600.38400.39600.40800.41800.92200.1116700 | False ceiling | 11.25d | 2027-04-04 | 2027-04-13 | 693, 708 |  | GC1 | 8830344 |

| ID | WBS | Task | Duration | Start | Finish | Predecessors | Constraint | Calendar | Unique_Task_ID |
| --- | --- | --- | --- | --- | --- | --- | --- | --- | --- |
| 710 | 37100.37400.37600.38400.39600.40800.41800.92100 | **29th Floor** | 147.38d | 2026-12-19 | 2027-04-28 |  | start no earlier than 2026-12-19 | GC1 | 8806474 |
| 711 | 37100.37400.37600.38400.39600.40800.41800.92100.1116800 | Block Work | 9d | 2026-12-19 | 2026-12-26 | 251, 695 |  | GC1 | 8830354 |
| 712 | 37100.37400.37600.38400.39600.40800.41800.92100.1116900 | Door Frame Fixing | 10.12d | 2026-12-27 | 2027-01-04 | 696, 711 |  | GC1 | 8830364 |
| 713 | 37100.37400.37600.38400.39600.40800.41800.92100.1117000 | Internal Plumbing Works | 11.25d | 2026-12-27 | 2027-01-05 | 697, 711 |  | GC1 | 8830374 |
| 714 | 37100.37400.37600.38400.39600.40800.41800.92100.1117100 | Waterproofing | 13.5d | 2027-01-06 | 2027-01-17 | 698, 713 |  | GC1 | 8830384 |
| 715 | 37100.37400.37600.38400.39600.40800.41800.92100.1117200 | Internal Plaster | 10.12d | 2027-01-18 | 2027-01-26 | 699, 712, 713, 714 |  | GC1 | 8830394 |
| 716 | 37100.37400.37600.38400.39600.40800.41800.92100.1117300 | IPS flooring work | 10.12d | 2027-01-27 | 2027-02-04 | 700, 712, 714, 715 |  | GC1 | 8830404 |
| 717 | 37100.37400.37600.38400.39600.40800.41800.92100.1117400 | Toilet dado work | 9d | 2027-01-27 | 2027-02-03 | 701, 714, 715 |  | GC1 | 8830414 |
| 718 | 37100.37400.37600.38400.39600.40800.41800.92100.1117500 | Toilet flooring work | 7.88d | 2027-02-04 | 2027-02-10 | 702, 717 |  | GC1 | 8830424 |
| 719 | 37100.37400.37600.38400.39600.40800.41800.92100.1117600 | Living dinning flooring | 16.88d | 2027-03-03 | 2027-03-17 | 703, 712, 718 |  | GC1 | 8830434 |
| 720 | 37100.37400.37600.38400.39600.40800.41800.92100.1117700 | Aluminium door-window fixing | 16.88d | 2027-04-11 | 2027-04-25 | 704, 716, 719 |  | GC1 | 8830444 |
| 721 | 37100.37400.37600.38400.39600.40800.41800.92100.1117800 | Putty primer coat | 6.75d | 2027-03-18 | 2027-03-23 | 705, 719 |  | GC1 | 8830454 |
| 722 | 37100.37400.37600.38400.39600.40800.41800.92100.1117900 | Door shutter fixing | 9d | 2027-03-18 | 2027-03-25 | 706, 719 |  | GC1 | 8830464 |
| 723 | 37100.37400.37600.38400.39600.40800.41800.92100.1118000 | Electrical wiring work | 13.5d | 2027-03-26 | 2027-04-06 | 707, 722 |  | GC1 | 8830474 |
| 724 | 37100.37400.37600.38400.39600.40800.41800.92100.1118100 | Painting 1st coat | 13.5d | 2027-04-07 | 2027-04-18 | 708, 721, 722, 723 |  | GC1 | 8830484 |
| 725 | 37100.37400.37600.38400.39600.40800.41800.92100.1118200 | False ceiling | 11.25d | 2027-04-19 | 2027-04-28 | 709, 724 |  | GC1 | 8830494 |
| 726 | 37100.37400.37600.38400.39600.40800.41800.92000 | **30th Floor** | 157.5d | 2026-12-31 | 2027-05-19 |  | start no earlier than 2026-12-31 | GC1 | 8806484 |
| 727 | 37100.37400.37600.38400.39600.40800.41800.92000.1118300 | Block Work | 9d | 2026-12-31 | 2027-01-07 | 252, 711 |  | GC1 | 8830504 |
| 728 | 37100.37400.37600.38400.39600.40800.41800.92000.1118400 | Door Frame Fixing | 10.12d | 2027-01-08 | 2027-01-16 | 712, 727 |  | GC1 | 8830514 |
| 729 | 37100.37400.37600.38400.39600.40800.41800.92000.1118500 | Internal Plumbing Works | 11.25d | 2027-01-08 | 2027-01-17 | 713, 727 |  | GC1 | 8830524 |
| 730 | 37100.37400.37600.38400.39600.40800.41800.92000.1118600 | Waterproofing | 13.5d | 2027-01-18 | 2027-01-29 | 714, 729 |  | GC1 | 8830534 |
| 731 | 37100.37400.37600.38400.39600.40800.41800.92000.1118700 | Internal Plaster | 10.12d | 2027-01-30 | 2027-02-07 | 715, 728, 729, 730 |  | GC1 | 8830544 |
| 732 | 37100.37400.37600.38400.39600.40800.41800.92000.1118800 | IPS flooring work | 10.12d | 2027-02-08 | 2027-02-16 | 716, 728, 730, 731 |  | GC1 | 8830554 |
| 733 | 37100.37400.37600.38400.39600.40800.41800.92000.1118900 | Toilet dado work | 9d | 2027-02-08 | 2027-02-15 | 717, 730, 731 |  | GC1 | 8830564 |
| 734 | 37100.37400.37600.38400.39600.40800.41800.92000.1119000 | Toilet flooring work | 7.88d | 2027-02-16 | 2027-02-22 | 718, 733 |  | GC1 | 8830574 |
| 735 | 37100.37400.37600.38400.39600.40800.41800.92000.1119100 | Living dinning flooring | 16.88d | 2027-03-18 | 2027-04-01 | 719, 728, 734 |  | GC1 | 8830584 |
| 736 | 37100.37400.37600.38400.39600.40800.41800.92000.1119200 | Aluminium door-window fixing | 16.88d | 2027-04-26 | 2027-05-10 | 720, 732, 735 |  | GC1 | 8830594 |
| 737 | 37100.37400.37600.38400.39600.40800.41800.92000.1119300 | Putty primer coat | 6.75d | 2027-04-02 | 2027-04-07 | 721, 735 |  | GC1 | 8830604 |
| 738 | 37100.37400.37600.38400.39600.40800.41800.92000.1119400 | Door shutter fixing | 9d | 2027-04-02 | 2027-04-09 | 722, 735 |  | GC1 | 8830614 |
| 739 | 37100.37400.37600.38400.39600.40800.41800.92000.1119500 | Electrical wiring work | 16.88d | 2027-04-10 | 2027-04-24 | 723, 738 |  | GC1 | 8830624 |
| 740 | 37100.37400.37600.38400.39600.40800.41800.92000.1119600 | Painting 1st coat | 16.88d | 2027-04-25 | 2027-05-09 | 724, 737, 738, 739 |  | GC1 | 8830634 |
| 741 | 37100.37400.37600.38400.39600.40800.41800.92000.1119700 | False ceiling | 11.25d | 2027-05-10 | 2027-05-19 | 725, 740 |  | GC1 | 8830644 |

| ID | WBS | Task | Duration | Start | Finish | Predecessors | Constraint | Calendar | Unique_Task_ID |
| --- | --- | --- | --- | --- | --- | --- | --- | --- | --- |
| 742 | 37100.37400.37600.38400.39600.40800.41800.91900 | **31st Floor** | 160.88d | 2027-01-12 | 2027-06-03 |  | start no earlier than 2027-01-12 | GC1 | 8806494 |
| 743 | 37100.37400.37600.38400.39600.40800.41800.91900.1119800 | Block Work | 9d | 2027-01-12 | 2027-01-19 | 253, 727 |  | GC1 | 8830654 |
| 744 | 37100.37400.37600.38400.39600.40800.41800.91900.1119900 | Door Frame Fixing | 10.12d | 2027-01-20 | 2027-01-28 | 728, 743 |  | GC1 | 8830664 |
| 745 | 37100.37400.37600.38400.39600.40800.41800.91900.1120000 | Internal Plumbing Works | 11.25d | 2027-01-20 | 2027-01-29 | 729, 743 |  | GC1 | 8830674 |
| 746 | 37100.37400.37600.38400.39600.40800.41800.91900.1120100 | Waterproofing | 13.5d | 2027-01-30 | 2027-02-10 | 730, 745 |  | GC1 | 8830684 |
| 747 | 37100.37400.37600.38400.39600.40800.41800.91900.1120200 | Internal Plaster | 10.12d | 2027-02-11 | 2027-02-19 | 731, 744, 745, 746 |  | GC1 | 8830694 |
| 748 | 37100.37400.37600.38400.39600.40800.41800.91900.1120300 | IPS flooring work | 10.12d | 2027-02-20 | 2027-02-28 | 732, 744, 746, 747 |  | GC1 | 8830704 |
| 749 | 37100.37400.37600.38400.39600.40800.41800.91900.1120400 | Toilet dado work | 9d | 2027-02-20 | 2027-02-27 | 733, 746, 747 |  | GC1 | 8830714 |
| 750 | 37100.37400.37600.38400.39600.40800.41800.91900.1120500 | Toilet flooring work | 7.88d | 2027-02-28 | 2027-03-06 | 734, 749 |  | GC1 | 8830724 |
| 751 | 37100.37400.37600.38400.39600.40800.41800.91900.1120600 | Living dinning flooring | 16.88d | 2027-04-02 | 2027-04-16 | 735, 744, 750 |  | GC1 | 8830734 |
| 752 | 37100.37400.37600.38400.39600.40800.41800.91900.1120700 | Aluminium door-window fixing | 13.5d | 2027-05-11 | 2027-05-22 | 736, 748, 751 |  | GC1 | 8830744 |
| 753 | 37100.37400.37600.38400.39600.40800.41800.91900.1120800 | Putty primer coat | 6.75d | 2027-04-17 | 2027-04-22 | 737, 751 |  | GC1 | 8830754 |
| 754 | 37100.37400.37600.38400.39600.40800.41800.91900.1120900 | Door shutter fixing | 9d | 2027-04-17 | 2027-04-24 | 738, 751 |  | GC1 | 8830764 |
| 755 | 37100.37400.37600.38400.39600.40800.41800.91900.1121000 | Electrical wiring work | 16.88d | 2027-04-25 | 2027-05-09 | 739, 754 |  | GC1 | 8830774 |
| 756 | 37100.37400.37600.38400.39600.40800.41800.91900.1121100 | Painting 1st coat | 16.88d | 2027-05-10 | 2027-05-24 | 740, 753, 754, 755 |  | GC1 | 8830784 |
| 757 | 37100.37400.37600.38400.39600.40800.41800.91900.1121200 | False ceiling | 11.25d | 2027-05-25 | 2027-06-03 | 741, 756 |  | GC1 | 8830794 |
| 758 | 37100.37400.37600.38400.39600.40800.41800.91700 | **32nd Floor** | 164.25d | 2027-01-24 | 2027-06-18 |  | start no earlier than 2027-01-24 | GC1 | 8806504 |
| 759 | 37100.37400.37600.38400.39600.40800.41800.91700.1121300 | Block Work | 9d | 2027-01-24 | 2027-01-31 | 254, 743 |  | GC1 | 8830804 |
| 760 | 37100.37400.37600.38400.39600.40800.41800.91700.1121400 | Door Frame Fixing | 10.12d | 2027-02-01 | 2027-02-09 | 744, 759 |  | GC1 | 8830814 |
| 761 | 37100.37400.37600.38400.39600.40800.41800.91700.1121500 | Internal Plumbing Works | 11.25d | 2027-02-01 | 2027-02-10 | 745, 759 |  | GC1 | 8830824 |
| 762 | 37100.37400.37600.38400.39600.40800.41800.91700.1121600 | Waterproofing | 13.5d | 2027-02-11 | 2027-02-22 | 746, 761 |  | GC1 | 8830834 |
| 763 | 37100.37400.37600.38400.39600.40800.41800.91700.1121700 | Internal Plaster | 10.12d | 2027-02-23 | 2027-03-03 | 747, 760, 761, 762 |  | GC1 | 8830844 |
| 764 | 37100.37400.37600.38400.39600.40800.41800.91700.1121800 | IPS flooring work | 10.12d | 2027-03-04 | 2027-03-12 | 748, 760, 762, 763 |  | GC1 | 8830854 |
| 765 | 37100.37400.37600.38400.39600.40800.41800.91700.1121900 | Toilet dado work | 9d | 2027-03-04 | 2027-03-11 | 749, 762, 763 |  | GC1 | 8830864 |
| 766 | 37100.37400.37600.38400.39600.40800.41800.91700.1122000 | Toilet flooring work | 7.88d | 2027-03-12 | 2027-03-18 | 750, 765 |  | GC1 | 8830874 |
| 767 | 37100.37400.37600.38400.39600.40800.41800.91700.1122100 | Living dinning flooring | 16.88d | 2027-04-17 | 2027-05-01 | 751, 760, 766 |  | GC1 | 8830884 |
| 768 | 37100.37400.37600.38400.39600.40800.41800.91700.1122200 | Aluminium door-window fixing | 13.5d | 2027-05-23 | 2027-06-03 | 752, 764, 767 |  | GC1 | 8830894 |
| 769 | 37100.37400.37600.38400.39600.40800.41800.91700.1122300 | Putty primer coat | 6.75d | 2027-05-02 | 2027-05-07 | 753, 767 |  | GC1 | 8830904 |
| 770 | 37100.37400.37600.38400.39600.40800.41800.91700.1122400 | Door shutter fixing | 9d | 2027-05-02 | 2027-05-09 | 754, 767 |  | GC1 | 8830914 |
| 771 | 37100.37400.37600.38400.39600.40800.41800.91700.1122500 | Electrical wiring work | 16.88d | 2027-05-10 | 2027-05-24 | 755, 770 |  | GC1 | 8830924 |
| 772 | 37100.37400.37600.38400.39600.40800.41800.91700.1122600 | Painting 1st coat | 16.88d | 2027-05-25 | 2027-06-08 | 756, 769, 770, 771 |  | GC1 | 8830934 |
| 773 | 37100.37400.37600.38400.39600.40800.41800.91700.1122700 | False ceiling | 11.25d | 2027-06-09 | 2027-06-18 | 757, 772 |  | GC1 | 8830944 |

| ID | WBS | Task | Duration | Start | Finish | Predecessors | Constraint | Calendar | Unique_Task_ID |
| --- | --- | --- | --- | --- | --- | --- | --- | --- | --- |
| 774 | 37100.37400.37600.38400.39600.40800.41800.91600 | **33rd Floor** | 164.25d | 2027-02-05 | 2027-06-30 |  | start no earlier than 2027-02-05 | GC1 | 8806514 |
| 775 | 37100.37400.37600.38400.39600.40800.41800.91600.1122800 | Block Work | 9d | 2027-02-05 | 2027-02-12 | 255, 759 |  | GC1 | 8830954 |
| 776 | 37100.37400.37600.38400.39600.40800.41800.91600.1122900 | Door Frame Fixing | 10.12d | 2027-02-13 | 2027-02-21 | 760, 775 |  | GC1 | 8830964 |
| 777 | 37100.37400.37600.38400.39600.40800.41800.91600.1123000 | Internal Plumbing Works | 11.25d | 2027-02-13 | 2027-02-22 | 761, 775 |  | GC1 | 8830974 |
| 778 | 37100.37400.37600.38400.39600.40800.41800.91600.1123100 | Waterproofing | 13.5d | 2027-02-23 | 2027-03-06 | 762, 777 |  | GC1 | 8830984 |
| 779 | 37100.37400.37600.38400.39600.40800.41800.91600.1123200 | Internal Plaster | 10.12d | 2027-03-07 | 2027-03-15 | 763, 776, 777, 778 |  | GC1 | 8830994 |
| 780 | 37100.37400.37600.38400.39600.40800.41800.91600.1123300 | IPS flooring work | 10.12d | 2027-03-16 | 2027-03-24 | 764, 776, 778, 779 |  | GC1 | 8831004 |
| 781 | 37100.37400.37600.38400.39600.40800.41800.91600.1123400 | Toilet dado work | 9d | 2027-03-16 | 2027-03-23 | 765, 778, 779 |  | GC1 | 8831014 |
| 782 | 37100.37400.37600.38400.39600.40800.41800.91600.1123500 | Toilet flooring work | 7.88d | 2027-03-24 | 2027-03-30 | 766, 781 |  | GC1 | 8831024 |
| 783 | 37100.37400.37600.38400.39600.40800.41800.91600.1123600 | Living dinning flooring | 16.88d | 2027-05-02 | 2027-05-16 | 767, 776, 782 |  | GC1 | 8831034 |
| 784 | 37100.37400.37600.38400.39600.40800.41800.91600.1123700 | Aluminium door-window fixing | 16.88d | 2027-06-04 | 2027-06-18 | 768, 780, 783 |  | GC1 | 8831044 |
| 785 | 37100.37400.37600.38400.39600.40800.41800.91600.1123800 | Putty primer coat | 6.75d | 2027-05-17 | 2027-05-22 | 769, 783 |  | GC1 | 8831054 |
| 786 | 37100.37400.37600.38400.39600.40800.41800.91600.1123900 | Door shutter fixing | 9d | 2027-05-17 | 2027-05-24 | 770, 783 |  | GC1 | 8831064 |
| 787 | 37100.37400.37600.38400.39600.40800.41800.91600.1124000 | Electrical wiring work | 13.5d | 2027-05-25 | 2027-06-05 | 771, 786 |  | GC1 | 8831074 |
| 788 | 37100.37400.37600.38400.39600.40800.41800.91600.1124100 | Painting 1st coat | 13.5d | 2027-06-09 | 2027-06-20 | 772, 785, 786, 787 |  | GC1 | 8831084 |
| 789 | 37100.37400.37600.38400.39600.40800.41800.91600.1124200 | False ceiling | 11.25d | 2027-06-21 | 2027-06-30 | 773, 788 |  | GC1 | 8831094 |
| 790 | 37100.37400.37600.38400.39600.40800.41800.91500 | **34th Floor** | 164.25d | 2027-02-17 | 2027-07-12 |  | start no earlier than 2027-02-17 | GC1 | 8806524 |
| 791 | 37100.37400.37600.38400.39600.40800.41800.91500.1124300 | Block Work | 9d | 2027-02-17 | 2027-02-24 | 256, 775 |  | GC1 | 8831104 |
| 792 | 37100.37400.37600.38400.39600.40800.41800.91500.1124400 | Door Frame Fixing | 10.12d | 2027-02-25 | 2027-03-05 | 776, 791 |  | GC1 | 8831114 |
| 793 | 37100.37400.37600.38400.39600.40800.41800.91500.1124500 | Internal Plumbing Works | 11.25d | 2027-02-25 | 2027-03-06 | 777, 791 |  | GC1 | 8831124 |
| 794 | 37100.37400.37600.38400.39600.40800.41800.91500.1124600 | Waterproofing | 13.5d | 2027-03-07 | 2027-03-18 | 778, 793 |  | GC1 | 8831134 |
| 795 | 37100.37400.37600.38400.39600.40800.41800.91500.1124700 | Internal Plaster | 10.12d | 2027-03-19 | 2027-03-27 | 779, 792, 793, 794 |  | GC1 | 8831144 |
| 796 | 37100.37400.37600.38400.39600.40800.41800.91500.1124800 | IPS flooring work | 10.12d | 2027-03-28 | 2027-04-05 | 780, 792, 794, 795 |  | GC1 | 8831154 |
| 797 | 37100.37400.37600.38400.39600.40800.41800.91500.1124900 | Toilet dado work | 9d | 2027-03-28 | 2027-04-04 | 781, 794, 795 |  | GC1 | 8831164 |
| 798 | 37100.37400.37600.38400.39600.40800.41800.91500.1125000 | Toilet flooring work | 7.88d | 2027-04-05 | 2027-04-11 | 782, 797 |  | GC1 | 8831174 |
| 799 | 37100.37400.37600.38400.39600.40800.41800.91500.1125100 | Living dinning flooring | 16.88d | 2027-05-17 | 2027-05-31 | 783, 792, 798 |  | GC1 | 8831184 |
| 800 | 37100.37400.37600.38400.39600.40800.41800.91500.1125200 | Aluminium door-window fixing | 16.88d | 2027-06-19 | 2027-07-03 | 784, 796, 799 |  | GC1 | 8831194 |
| 801 | 37100.37400.37600.38400.39600.40800.41800.91500.1125300 | Putty primer coat | 6.75d | 2027-06-01 | 2027-06-06 | 785, 799 |  | GC1 | 8831204 |
| 802 | 37100.37400.37600.38400.39600.40800.41800.91500.1125400 | Door shutter fixing | 9d | 2027-06-01 | 2027-06-08 | 786, 799 |  | GC1 | 8831214 |
| 803 | 37100.37400.37600.38400.39600.40800.41800.91500.1125500 | Electrical wiring work | 13.5d | 2027-06-09 | 2027-06-20 | 787, 802 |  | GC1 | 8831224 |
| 804 | 37100.37400.37600.38400.39600.40800.41800.91500.1125600 | Painting 1st coat | 13.5d | 2027-06-21 | 2027-07-02 | 788, 801, 802, 803 |  | GC1 | 8831234 |
| 805 | 37100.37400.37600.38400.39600.40800.41800.91500.1125700 | False ceiling | 11.25d | 2027-07-03 | 2027-07-12 | 789, 804 |  | GC1 | 8831244 |

| ID | WBS | Task | Duration | Start | Finish | Predecessors | Constraint | Calendar | Unique_Task_ID |
| --- | --- | --- | --- | --- | --- | --- | --- | --- | --- |
| 806 | 37100.37400.37600.38400.39600.40800.41800.91400 | **35th Floor** | 167.62d | 2027-03-01 | 2027-07-27 |  | start no earlier than 2027-03-01 | GC1 | 8806534 |
| 807 | 37100.37400.37600.38400.39600.40800.41800.91400.1125800 | Block Work | 9d | 2027-03-01 | 2027-03-08 | 257, 791 |  | GC1 | 8831254 |
| 808 | 37100.37400.37600.38400.39600.40800.41800.91400.1125900 | Door Frame Fixing | 10.12d | 2027-03-09 | 2027-03-17 | 792, 807 |  | GC1 | 8831264 |
| 809 | 37100.37400.37600.38400.39600.40800.41800.91400.1126000 | Internal Plumbing Works | 11.25d | 2027-03-09 | 2027-03-18 | 793, 807 |  | GC1 | 8831274 |
| 810 | 37100.37400.37600.38400.39600.40800.41800.91400.1126100 | Waterproofing | 13.5d | 2027-03-19 | 2027-03-30 | 794, 809 |  | GC1 | 8831284 |
| 811 | 37100.37400.37600.38400.39600.40800.41800.91400.1126200 | Internal Plaster | 10.12d | 2027-03-31 | 2027-04-08 | 795, 808, 809, 810 |  | GC1 | 8831294 |
| 812 | 37100.37400.37600.38400.39600.40800.41800.91400.1126300 | IPS flooring work | 10.12d | 2027-04-09 | 2027-04-17 | 796, 808, 810, 811 |  | GC1 | 8831304 |
| 813 | 37100.37400.37600.38400.39600.40800.41800.91400.1126400 | Toilet dado work | 9d | 2027-04-09 | 2027-04-16 | 797, 810, 811 |  | GC1 | 8831314 |
| 814 | 37100.37400.37600.38400.39600.40800.41800.91400.1126500 | Toilet flooring work | 7.88d | 2027-04-17 | 2027-04-23 | 798, 813 |  | GC1 | 8831324 |
| 815 | 37100.37400.37600.38400.39600.40800.41800.91400.1126600 | Living dinning flooring | 16.88d | 2027-06-01 | 2027-06-15 | 799, 808 |  | GC1 | 8831334 |
| 816 | 37100.37400.37600.38400.39600.40800.41800.91400.1126700 | Aluminium door-window fixing | 16.88d | 2027-07-04 | 2027-07-18 | 800, 812, 815 |  | GC1 | 8831344 |
| 817 | 37100.37400.37600.38400.39600.40800.41800.91400.1126800 | Putty primer coat | 6.75d | 2027-06-16 | 2027-06-21 | 801, 815 |  | GC1 | 8831354 |
| 818 | 37100.37400.37600.38400.39600.40800.41800.91400.1126900 | Door shutter fixing | 9d | 2027-06-16 | 2027-06-23 | 802, 815 |  | GC1 | 8831364 |
| 819 | 37100.37400.37600.38400.39600.40800.41800.91400.1127000 | Electrical wiring work | 13.5d | 2027-06-24 | 2027-07-05 | 803, 818 |  | GC1 | 8831374 |
| 820 | 37100.37400.37600.38400.39600.40800.41800.91400.1127100 | Painting 1st coat | 13.5d | 2027-07-06 | 2027-07-17 | 804, 817, 818, 819 |  | GC1 | 8831384 |
| 821 | 37100.37400.37600.38400.39600.40800.41800.91400.1127200 | False ceiling | 11.25d | 2027-07-18 | 2027-07-27 | 805, 820 |  | GC1 | 8831394 |
| 822 | 37100.37400.37600.38400.39600.40800.190700 | **Terrace Finishing** | 90d | 2026-12-28 | 2027-03-18 |  | start no earlier than 2026-12-28 | GC1 | 8810714 |
| 823 | 37100.37400.37600.38400.39600.40800.190700.492100 | Terrace waterproofing | 45d | 2026-12-28 | 2027-02-06 | 216 |  | GC1 | 8817354 |
| 824 | 37100.37400.37600.38400.39600.40800.190700.492200 | Terrace finishing | 45d | 2027-02-06 | 2027-03-18 | 823 |  | GC1 | 8817364 |
| 825 | 37100.37400.37600.38400.39600.40800.99200 | **Common Area Finishing** | 354.38d | 2027-02-08 | 2028-02-03 |  | start no earlier than 2027-02-08 | GC1 | 8808074 |
| 826 | 37100.37400.37600.38400.39600.40800.99200.492300 | Block Work | 67.5d | 2027-02-08 | 2027-04-09 | 221 |  | GC1 | 8817374 |
| 827 | 37100.37400.37600.38400.39600.40800.99200.492400 | Internal Plaster | 135d | 2027-04-09 | 2027-08-07 | 832SS+45d |  | GC1 | 8817384 |
| 828 | 37100.37400.37600.38400.39600.40800.99200.492500 | Staircase railing fixing | 168.75d | 2027-07-23 | 2028-02-03 | 830SS+33.75d, 829SS+33.75d |  | GC1 | 8817394 |
| 829 | 37100.37400.37600.38400.39600.40800.99200.492600 | Main staircase flooring | 168.75d | 2027-06-23 | 2028-01-04 | 830SS+16.88d |  | GC1 | 8817404 |
| 830 | 37100.37400.37600.38400.39600.40800.99200.492700 | Fire staircase flooring | 168.75d | 2027-06-08 | 2027-12-20 | 827SS+16.88d, 834SS+33.75d |  | GC1 | 8817414 |
| 831 | 37100.37400.37600.38400.39600.40800.99200.492800 | Fire door work | 67.5d | 2027-07-23 | 2027-09-21 | 829SS+33.75d, 830SS+33.75d |  | GC1 | 8817424 |
| 832 | 37100.37400.37600.38400.39600.40800.99200.492900 | Electrical wiring work | 135d | 2027-02-28 | 2027-06-28 | 826SS+22.5d |  | GC1 | 8817434 |
| 833 | 37100.37400.37600.38400.39600.40800.99200.493000 | Lobby flooring | 168.75d | 2027-03-04 | 2027-08-01 | 832SS+4.12d |  | GC1 | 8817444 |
| 834 | 37100.37400.37600.38400.39600.40800.99200.493100 | Ceiling & wall putty-primer | 123.75d | 2027-05-09 | 2027-08-27 | 827SS+33.75d |  | GC1 | 8817454 |
| 835 | 37100.37400.37600.38400.39600.40800.99200.493200 | Ceiling & wall painting | 112.5d | 2027-05-29 | 2027-09-06 | 834SS+22.5d |  | GC1 | 8817464 |
| 836 | 37100.37400.37600.38400.39600.40800.99200.493300 | Light fixture supply & installation | 50.62d | 2027-07-28 | 2027-09-11 | 835SS+67.5d |  | GC1 | 8817474 |

| ID | WBS | Task | Duration | Start | Finish | Predecessors | Constraint | Calendar | Unique_Task_ID |
| --- | --- | --- | --- | --- | --- | --- | --- | --- | --- |
| 837 | 37100.37400.37600.38400.39600.40800.46200 | **Balcony Glass Railing** | 78.75d | 2027-09-23 | 2028-01-15 |  | start no earlier than 2027-09-23 | GC1 | 8806174 |
| 838 | 37100.37400.37600.38400.39600.40800.46200.493400 | 1st Floor | 2.25d | 2027-09-23 | 2027-09-24 | 906 |  | GC1 | 8817484 |
| 839 | 37100.37400.37600.38400.39600.40800.46200.493500 | 2nd Floor | 2.25d | 2027-09-25 | 2027-09-26 | 838 |  | GC1 | 8817494 |
| 840 | 37100.37400.37600.38400.39600.40800.46200.493600 | 3rd Floor | 2.25d | 2027-09-27 | 2027-09-28 | 839 |  | GC1 | 8817504 |
| 841 | 37100.37400.37600.38400.39600.40800.46200.493700 | 4th Floor | 2.25d | 2027-09-29 | 2027-09-30 | 840 |  | GC1 | 8817514 |
| 842 | 37100.37400.37600.38400.39600.40800.46200.493800 | 5th Floor | 2.25d | 2027-10-01 | 2027-10-02 | 841 |  | GC1 | 8817524 |
| 843 | 37100.37400.37600.38400.39600.40800.46200.493900 | 6th Floor | 2.25d | 2027-10-03 | 2027-10-04 | 842 |  | GC1 | 8817534 |
| 844 | 37100.37400.37600.38400.39600.40800.46200.494000 | 7th Floor | 2.25d | 2027-10-05 | 2027-10-06 | 843 |  | GC1 | 8817544 |
| 845 | 37100.37400.37600.38400.39600.40800.46200.494100 | 8th Floor | 2.25d | 2027-10-07 | 2027-10-08 | 844 |  | GC1 | 8817554 |
| 846 | 37100.37400.37600.38400.39600.40800.46200.494200 | 9th Floor | 2.25d | 2027-10-09 | 2027-10-10 | 845 |  | GC1 | 8817564 |
| 847 | 37100.37400.37600.38400.39600.40800.46200.494300 | 10th Floor | 2.25d | 2027-10-11 | 2027-10-12 | 846 |  | GC1 | 8817574 |
| 848 | 37100.37400.37600.38400.39600.40800.46200.494400 | 11th Floor | 2.25d | 2027-10-13 | 2027-10-14 | 847 |  | GC1 | 8817584 |
| 849 | 37100.37400.37600.38400.39600.40800.46200.494500 | 12th Floor | 2.25d | 2027-10-15 | 2027-10-16 | 848 |  | GC1 | 8817594 |
| 850 | 37100.37400.37600.38400.39600.40800.46200.494600 | 13th Floor | 2.25d | 2027-10-17 | 2027-10-18 | 849 |  | GC1 | 8817604 |
| 851 | 37100.37400.37600.38400.39600.40800.46200.494700 | 14th Floor | 2.25d | 2027-10-19 | 2027-10-20 | 850 |  | GC1 | 8817614 |
| 852 | 37100.37400.37600.38400.39600.40800.46200.494800 | 15th Floor | 2.25d | 2027-10-21 | 2027-10-22 | 851 |  | GC1 | 8817624 |
| 853 | 37100.37400.37600.38400.39600.40800.46200.494900 | 16th Floor | 2.25d | 2027-10-23 | 2027-10-24 | 852 |  | GC1 | 8817634 |
| 854 | 37100.37400.37600.38400.39600.40800.46200.495000 | 17th Floor | 2.25d | 2027-10-25 | 2027-10-26 | 853 |  | GC1 | 8817644 |
| 855 | 37100.37400.37600.38400.39600.40800.46200.495100 | 18th Floor | 2.25d | 2027-10-27 | 2027-10-28 | 854 |  | GC1 | 8817654 |
| 856 | 37100.37400.37600.38400.39600.40800.46200.495200 | 19th Floor | 2.25d | 2027-10-29 | 2027-10-30 | 855 |  | GC1 | 8817664 |
| 857 | 37100.37400.37600.38400.39600.40800.46200.495300 | 20th Floor | 2.25d | 2027-10-31 | 2027-12-16 | 856 |  | GC1 | 8817674 |
| 858 | 37100.37400.37600.38400.39600.40800.46200.495400 | 21st Floor | 2.25d | 2027-12-17 | 2027-12-18 | 857 |  | GC1 | 8817684 |
| 859 | 37100.37400.37600.38400.39600.40800.46200.495500 | 22nd Floor | 2.25d | 2027-12-19 | 2027-12-20 | 858 |  | GC1 | 8817694 |
| 860 | 37100.37400.37600.38400.39600.40800.46200.495600 | 23rd Floor | 2.25d | 2027-12-21 | 2027-12-22 | 859 |  | GC1 | 8817704 |
| 861 | 37100.37400.37600.38400.39600.40800.46200.495700 | 24th Floor | 2.25d | 2027-12-23 | 2027-12-24 | 860 |  | GC1 | 8817714 |
| 862 | 37100.37400.37600.38400.39600.40800.46200.495800 | 25th Floor | 2.25d | 2027-12-25 | 2027-12-26 | 861 |  | GC1 | 8817724 |
| 863 | 37100.37400.37600.38400.39600.40800.46200.495900 | 26th Floor | 2.25d | 2027-12-27 | 2027-12-28 | 862 |  | GC1 | 8817734 |
| 864 | 37100.37400.37600.38400.39600.40800.46200.496000 | 27th Floor | 2.25d | 2027-12-29 | 2027-12-30 | 863 |  | GC1 | 8817744 |
| 865 | 37100.37400.37600.38400.39600.40800.46200.496100 | 28th Floor | 2.25d | 2027-12-31 | 2028-01-01 | 864 |  | GC1 | 8817754 |
| 866 | 37100.37400.37600.38400.39600.40800.46200.496200 | 29th Floor | 2.25d | 2028-01-02 | 2028-01-03 | 865 |  | GC1 | 8817764 |
| 867 | 37100.37400.37600.38400.39600.40800.46200.496300 | 30th Floor | 2.25d | 2028-01-04 | 2028-01-05 | 866 |  | GC1 | 8817774 |
| 868 | 37100.37400.37600.38400.39600.40800.46200.496400 | 31st Floor | 2.25d | 2028-01-06 | 2028-01-07 | 867 |  | GC1 | 8817784 |
| 869 | 37100.37400.37600.38400.39600.40800.46200.496500 | 32nd Floor | 2.25d | 2028-01-08 | 2028-01-09 | 868 |  | GC1 | 8817794 |
| 870 | 37100.37400.37600.38400.39600.40800.46200.496600 | 33rd Floor | 2.25d | 2028-01-10 | 2028-01-11 | 869 |  | GC1 | 8817804 |
| 871 | 37100.37400.37600.38400.39600.40800.46200.496700 | 34th Floor | 2.25d | 2028-01-12 | 2028-01-13 | 870 |  | GC1 | 8817814 |
| 872 | 37100.37400.37600.38400.39600.40800.46200.496800 | 35th Floor | 2.25d | 2028-01-14 | 2028-01-15 | 871 |  | GC1 | 8817824 |

| ID | WBS | Task | Duration | Start | Finish | Predecessors | Constraint | Calendar | Unique_Task_ID |
| --- | --- | --- | --- | --- | --- | --- | --- | --- | --- |
| 873 | 37100.37400.37600.38400.95600 | **MEP work** | 527.62d | 2027-02-06 | 2028-07-04 |  | start no earlier than 2027-02-06 | GC1 | 8807984 |
| 874 | 37100.37400.37600.38400.95600.97700 | **Electrical work** | 376.88d | 2027-02-08 | 2028-02-23 |  | start no earlier than 2027-02-08 | GC1 | 8807994 |
| 875 | 37100.37400.37600.38400.95600.97700.302400 | Cable Tray | 135d | 2027-02-08 | 2027-06-08 | 221 |  | GC1 | 8812404 |
| 876 | 37100.37400.37600.38400.95600.97700.302500 | Cable, main & sub main | 90d | 2027-03-25 | 2027-06-13 | 875SS+50.62d |  | GC1 | 8812414 |
| 877 | 37100.37400.37600.38400.95600.97700.302600 | LT panel & DB | 135d | 2027-06-08 | 2027-10-06 | 875 |  | GC1 | 8812424 |
| 878 | 37100.37400.37600.38400.95600.97700.302700 | Rising main | 135d | 2027-08-07 | 2028-01-19 | 875FS+67.5d |  | GC1 | 8812434 |
| 879 | 37100.37400.37600.38400.95600.97700.302800 | EARTHING Works | 67.5d | 2027-06-23 | 2027-08-22 | 875FS+16.88d |  | GC1 | 8812444 |
| 880 | 37100.37400.37600.38400.95600.97700.302900 | Advance lightening protection | 67.5d | 2027-03-18 | 2027-05-17 | 824 |  | GC1 | 8812454 |
| 881 | 37100.37400.37600.38400.95600.97700.303000 | Inverter | 39.38d | 2028-01-19 | 2028-02-23 | 878, 879, 882 |  | GC1 | 8812464 |
| 882 | 37100.37400.37600.38400.95600.97700.303100 | Energy meter | 67.5d | 2027-06-13 | 2027-08-12 | 876 |  | GC1 | 8812474 |
| 883 | 37100.37400.37600.38400.95600.97700.303200 | Exhaust fan | 67.5d | 2027-05-25 | 2027-07-23 | 816FF+5.62d |  | GC1 | 8812484 |
| 884 | 37100.37400.37600.38400.95600.97700.303300 | FTTH | 67.5d | 2027-08-12 | 2027-10-11 | 879FS-11.25d |  | GC1 | 8812494 |
| 885 | 37100.37400.37600.38400.95600.97700.303400 | Security System - FA & PA | 61.88d | 2027-10-06 | 2028-01-14 | 877, 884FF |  | GC1 | 8812504 |
| 886 | 37100.37400.37600.38400.95600.97700.303500 | Solar water heater | 67.5d | 2027-03-18 | 2027-05-17 | 824 |  | GC1 | 8812514 |
| 887 | 37100.37400.37600.38400.95600.122500 | **Plumbing wrok** | 294.75d | 2027-02-06 | 2027-10-26 |  | start no earlier than 2027-02-06 | GC1 | 8808344 |
| 888 | 37100.37400.37600.38400.95600.122500.303600 | Terrace looping | 50.62d | 2027-02-06 | 2027-03-23 | 823 |  | GC1 | 8812524 |
| 889 | 37100.37400.37600.38400.95600.122500.303700 | Shaft Plumbing | 135d | 2027-03-23 | 2027-07-21 | 34, 888 |  | GC1 | 8812534 |
| 890 | 37100.37400.37600.38400.95600.122500.303800 | CP sanitary fixture supply | 84.38d | 2027-06-23 | 2027-09-05 | 811, 814FS+67.5d |  | GC1 | 8812544 |
| 891 | 37100.37400.37600.38400.95600.122500.303900 | Cold & flushing water supply | 101.25d | 2027-07-08 | 2027-10-06 | 827SS+101.25d |  | GC1 | 8812554 |
| 892 | 37100.37400.37600.38400.95600.122500.304000 | Misc work | 33.75d | 2027-09-26 | 2027-10-26 | 891FS-11.25d |  | GC1 | 8812564 |
| 893 | 37100.37400.37600.38400.95600.129500 | **Fire fighting work** | 373.5d | 2027-02-06 | 2028-02-18 |  | start no earlier than 2027-02-06 | GC1 | 8808474 |
| 894 | 37100.37400.37600.38400.95600.129500.304100 | Fire hydrant work | 101.25d | 2027-06-08 | 2027-09-06 | 827SS+67.5d |  | GC1 | 8812574 |
| 895 | 37100.37400.37600.38400.95600.129500.304200 | Sprinkler & piping work | 101.25d | 2027-10-06 | 2028-02-18 | 894FS+33.75d |  | GC1 | 8812584 |
| 896 | 37100.37400.37600.38400.95600.129500.304300 | Shaft Downtake works | 101.25d | 2027-02-06 | 2027-05-07 | 823 |  | GC1 | 8812594 |
| 897 | 37100.37400.37600.38400.95600.129500.304400 | Connection to pump room | 33.75d | 2027-05-07 | 2027-06-06 | 896 |  | GC1 | 8812604 |

| ID | WBS | Task | Duration | Start | Finish | Predecessors | Complete | Constraint | Calendar | Unique_Task_ID |
| --- | --- | --- | --- | --- | --- | --- | --- | --- | --- | --- |
| 898 | 37100.37400.37600.38400.95600.184300 | **Lift work** | 191.25d | 2027-02-08 | 2027-07-28 |  |  | start no earlier than 2027-02-08 | GC1 | 8810704 |
| 899 | 37100.37400.37600.38400.95600.184300.304500 | Lift Shaft Handover | 45d | 2027-02-08 | 2027-03-20 | 221 |  |  | GC1 | 8812614 |
| 900 | 37100.37400.37600.38400.95600.184300.304600 | Lift installation work | 50.62d | 2027-03-20 | 2027-05-04 | 899 |  |  | GC1 | 8812624 |
| 901 | 37100.37400.37600.38400.95600.184300.304700 | Lift testing and commissioning | 95.62d | 2027-05-04 | 2027-07-28 | 900 |  |  | GC1 | 8812634 |
| 902 | 37100.37400.37600.38400.95600.194400 | **AC work** | 112.5d | 2028-03-26 | 2028-07-04 |  |  | start no earlier than 2028-03-26 | GC1 | 8810874 |
| 903 | 37100.37400.37600.38400.95600.194400.304800 | Split AC | 112.5d | 2028-03-26 | 2028-07-04 | 919FS-33.75d |  |  | GC1 | 8812644 |
| 904 | 37100.37400.37600.38400.126400 | **Tower Completion** | 303.75d | 2027-03-27 | 2028-02-04 |  |  | start no earlier than 2027-03-27 | GC1 | 8808504 |
| 905 | 37100.37400.37600.38400.126400.230200 | SURFACE PREPARATION | 90d | 2027-03-27 | 2027-06-14 | 259FS+2.25d |  |  | GC1 | 8811204 |
| 906 | 37100.37400.37600.38400.126400.230300 | External Painting | 112.5d | 2027-06-15 | 2027-09-22 | 905 |  |  | GC1 | 8811214 |
| 907 | 37100.37400.37600.38400.126400.230400 | Final coat of painting | 101.25d | 2027-09-23 | 2028-02-04 | 906 |  |  | GC1 | 8811224 |
| 908 | 37100.37400.37600.38400.126400.230500 | Misc. work | 67.5d | 2027-09-23 | 2028-01-05 | 906 |  |  | GC1 | 8811234 |
| 909 | 37100.37400.37600.38400.192600 | **Basement lobby** | 135d | 2027-08-01 | 2028-01-13 |  |  | start no earlier than 2027-08-01 | GC1 | 8810854 |
| 910 | 37100.37400.37600.38400.192600.230600 | Basement lobby | 135d | 2027-08-01 | 2028-01-13 | 833 |  |  | GC1 | 8811244 |
| 911 | 37100.37400.37600.38400.111900 | **Post OC activities** | 449.75d | 2027-07-06 | 2028-09-22 |  |  | start no earlier than 2027-07-06 | GC1 | 8808234 |
| 912 | 37100.37400.37600.38400.111900.230700 | Wardrobe installation | 202.5d | 2028-03-26 | 2028-09-22 | 919FS-33.75d |  |  | GC1 | 8811254 |
| 913 | 37100.37400.37600.38400.111900.230800 | CP & SANITARYWARE | 135d | 2028-03-26 | 2028-07-24 | 919FS-33.75d, 890 |  |  | GC1 | 8811264 |
| 914 | 37100.37400.37600.38400.111900.230900 | Wooden Flooring | 202.5d | 2028-03-26 | 2028-09-22 | 919FS-33.75d |  |  | GC1 | 8811274 |
| 915 | 37100.37400.37600.38400.111900.231000 | Electrical Fixtures And Fittings | 135d | 2027-07-06 | 2027-12-17 | 819 |  |  | GC1 | 8811284 |
| 916 | 37100.37400.37600.38400.111900.231100 | Modular Kitchen | 202.5d | 2028-03-26 | 2028-09-22 | 912SS |  |  | GC1 | 8811294 |
| 917 | 37100.37400.37600.38400.111900.231200 | Final Coat Paint | 101.25d | 2028-04-10 | 2028-07-09 | 919FS-16.88d, 836 |  |  | GC1 | 8811304 |
| 918 | 37100.37400.37600.38400.217700 | OC Application/Readiness | 1.12d | 2028-02-23 | 2028-02-24 | 221, 828FS+9d, 901, 33, 821, 831, 872, 880, 881, 883, 885, 886, 889, 892, 895, 897, 908 |  |  | GC1 | 8810954 |
| 919 | 37100.37400.37600.38400.217800 | OC Receipt | 1.12d | 2028-04-24 | 2028-04-25 | 918FS+67.5d, 907, 910 |  |  | GC1 | 8810964 |
| 920 | 37100.37400.37600.38400.217900 | Offer To Possession | 33.75d | 2028-09-22 | 2028-10-22 | 912, 913, 914, 915, 916, 917, 903 |  |  | GC1 | 8810974 |
| 921 | 37100.37400.37600.38500 | **Tower 4** | 1632.38d | 2024-05-14 | 2028-09-15 |  | 2% | start no earlier than 2024-05-14 | GC1 | 8805844 |
| 922 | 37100.37400.37600.38500.100400 | **Substructure** | 661.5d | 2024-05-14 | 2026-02-05 |  | 38% | start no earlier than 2024-05-14 | GC1 | 8808104 |
| 923 | 37100.37400.37600.38500.100400.115600 | **Soil Bed Preparation** | 520.88d | 2024-05-14 | 2025-08-19 |  | 77% | start no earlier than 2024-05-14 | GC1 | 8808224 |
| 924 | 37100.37400.37600.38500.100400.115600.199400 | Test Piling | 106.69d | 2024-05-14 | 2024-08-16 | 7SS | 100% | start no earlier than 2024-05-14 | GC1 | 8812654 |
| 925 | 37100.37400.37600.38500.100400.115600.199500 | Excavation | 33.56d | 2024-06-26 | 2024-07-25 | 924SS+43d | 100% | start no earlier than 2024-06-26 | GC1 | 8812664 |
| 926 | 37100.37400.37600.38500.100400.115600.199600 | Main Piling Work | 168.75d | 2024-09-01 | 2025-04-05 | 924FS+15d | 96% | start no earlier than 2024-09-01 | GC1 | 8812674 |
| 927 | 37100.37400.37600.38500.100400.115600.304900 | Anti-termite | 5.62d | 2025-04-02 | 2025-04-07 | 926FF+2d |  |  | GC1 | 8812684 |
| 928 | 37100.37400.37600.38500.100400.115600.199800 | PCC | 9d | 2025-03-23 | 2025-04-07 | 925FS+0.25d | 12% | start no earlier than 2025-03-23 | GC1 | 8812694 |
| 929 | 37100.37400.37600.38500.100400.115600.305000 | Backfilling | 67.5d | 2025-06-21 | 2025-08-19 | 942 |  |  | GC1 | 8812704 |

| ID | WBS | Task | Duration | Start | Finish | Predecessors | Constraint | Calendar | Unique_Task_ID |
| --- | --- | --- | --- | --- | --- | --- | --- | --- | --- |
| 930 | 37100.37400.37600.38500.100400.104800 | **RCC Structure** | 113.62d | 2025-04-06 | 2025-07-15 |  | start no earlier than 2025-04-06 | GC1 | 8808184 |
| 931 | 37100.37400.37600.38500.100400.104800.184700 | **Raft Foundation** | 29.25d | 2025-04-06 | 2025-05-01 |  | start no earlier than 2025-04-06 | GC1 | 8810504 |
| 932 | 37100.37400.37600.38500.100400.104800.184700.496900 | Reinforcement | 19.12d | 2025-04-06 | 2025-04-22 | 928FS-2.25d |  | GC1 | 8817834 |
| 933 | 37100.37400.37600.38500.100400.104800.184700.497000 | Formwork | 13.5d | 2025-04-18 | 2025-04-29 | 932FF+7.88d |  | GC1 | 8817844 |
| 934 | 37100.37400.37600.38500.100400.104800.184700.497100 | Concreting | 2.25d | 2025-04-30 | 2025-05-01 | 933 |  | GC1 | 8817854 |
| 935 | 37100.37400.37600.38500.100400.104800.184800 | **Basement 1 Slab** | 28.12d | 2025-05-02 | 2025-05-26 |  | start no earlier than 2025-05-02 | GC1 | 8810514 |
| 936 | 37100.37400.37600.38500.100400.104800.184800.497200 | Reinforcement | 22.5d | 2025-05-02 | 2025-05-21 | 934 |  | GC1 | 8817864 |
| 937 | 37100.37400.37600.38500.100400.104800.184800.497300 | Formwork | 22.5d | 2025-05-03 | 2025-05-22 | 936SS+1.12d |  | GC1 | 8817874 |
| 938 | 37100.37400.37600.38500.100400.104800.184800.497400 | Concreting | 4.5d | 2025-05-23 | 2025-05-26 | 937 |  | GC1 | 8817884 |
| 939 | 37100.37400.37600.38500.100400.104800.184900 | **Basement 2 Slab/GF** | 28.12d | 2025-05-27 | 2025-06-20 |  | start no earlier than 2025-05-27 | GC1 | 8810524 |
| 940 | 37100.37400.37600.38500.100400.104800.184900.497500 | Reinforcement | 22.5d | 2025-05-27 | 2025-06-15 | 938 |  | GC1 | 8817894 |
| 941 | 37100.37400.37600.38500.100400.104800.184900.497600 | Formwork | 22.5d | 2025-05-28 | 2025-06-16 | 940SS+1.12d |  | GC1 | 8817904 |
| 942 | 37100.37400.37600.38500.100400.104800.184900.497700 | Concreting | 4.5d | 2025-06-17 | 2025-06-20 | 941 |  | GC1 | 8817914 |
| 943 | 37100.37400.37600.38500.100400.104800.185100 | **Podium /Ground Floor Slab** | 28.12d | 2025-06-21 | 2025-07-15 |  | start no earlier than 2025-06-21 | GC1 | 8810534 |
| 944 | 37100.37400.37600.38500.100400.104800.185100.497800 | Reinforcement | 22.5d | 2025-06-21 | 2025-07-10 | 942 |  | GC1 | 8817924 |
| 945 | 37100.37400.37600.38500.100400.104800.185100.497900 | Formwork | 22.5d | 2025-06-22 | 2025-07-11 | 944SS+1.12d |  | GC1 | 8817934 |
| 946 | 37100.37400.37600.38500.100400.104800.185100.498000 | Concreting | 4.5d | 2025-07-12 | 2025-07-15 | 945 |  | GC1 | 8817944 |
| 947 | 37100.37400.37600.38500.100400.129600 | **Substructure Finishing** | 146.25d | 2025-08-15 | 2026-02-05 |  | start no earlier than 2025-08-15 | GC1 | 8808484 |
| 948 | 37100.37400.37600.38500.100400.129600.305100 | Masonary work | 50.62d | 2025-08-15 | 2025-09-28 | 946FS+33.75d |  | GC1 | 8812714 |
| 949 | 37100.37400.37600.38500.100400.129600.305200 | Plaster | 45d | 2025-09-29 | 2025-12-22 | 948 |  | GC1 | 8812724 |
| 950 | 37100.37400.37600.38500.100400.129600.305300 | Structural steel | 67.5d | 2025-09-14 | 2025-12-27 | 946FS+67.5d |  | GC1 | 8812734 |
| 951 | 37100.37400.37600.38500.100400.129600.305400 | White Wash | 50.62d | 2025-12-23 | 2026-02-05 | 949 |  | GC1 | 8812744 |
| 952 | 37100.37400.37600.38500.39400 | **Superstructure** | 839.25d | 2025-07-16 | 2027-10-29 |  | start no earlier than 2025-07-16 | GC1 | 8805894 |
| 953 | 37100.37400.37600.38500.39400.43900 | **RCC structure** | 496.12d | 2025-07-16 | 2026-12-28 |  | start no earlier than 2025-07-16 | GC1 | 8806044 |
| 954 | 37100.37400.37600.38500.39400.43900.154500 | **1st floor slab** | 28.12d | 2025-07-16 | 2025-08-09 |  | start no earlier than 2025-07-16 | GC1 | 8810044 |
| 955 | 37100.37400.37600.38500.39400.43900.154500.498100 | Reinforcement | 24.75d | 2025-07-16 | 2025-08-06 | 946 |  | GC1 | 8817954 |
| 956 | 37100.37400.37600.38500.39400.43900.154500.498200 | Wall conduiting | 3.38d | 2025-07-19 | 2025-07-21 | 955SS+3.38d |  | GC1 | 8817964 |
| 957 | 37100.37400.37600.38500.39400.43900.154500.498300 | Formwork | 23.62d | 2025-07-19 | 2025-08-08 | 955SS+3.38d |  | GC1 | 8817974 |
| 958 | 37100.37400.37600.38500.39400.43900.154500.498400 | Concreting | 1.12d | 2025-08-09 | 2025-08-09 | 957 |  | GC1 | 8817984 |

| ID | WBS | Task | Duration | Start | Finish | Predecessors | Constraint | Calendar | Unique_Task_ID |
| --- | --- | --- | --- | --- | --- | --- | --- | --- | --- |
| 959 | 37100.37400.37600.38500.39400.43900.154600 | **2nd floor slab** | 23.62d | 2025-08-10 | 2025-08-30 |  | start no earlier than 2025-08-10 | GC1 | 8810034 |
| 960 | 37100.37400.37600.38500.39400.43900.154600.498500 | Reinforcement | 20.25d | 2025-08-10 | 2025-08-27 | 958 |  | GC1 | 8817994 |
| 961 | 37100.37400.37600.38500.39400.43900.154600.498600 | Wall conduiting | 3.38d | 2025-08-12 | 2025-08-14 | 956FS+0.25d, 960SS+2.25d |  | GC1 | 8818004 |
| 962 | 37100.37400.37600.38500.39400.43900.154600.498700 | Formwork | 19.12d | 2025-08-13 | 2025-08-29 | 960SS+3.38d |  | GC1 | 8818014 |
| 963 | 37100.37400.37600.38500.39400.43900.154600.498800 | Concreting | 1.12d | 2025-08-30 | 2025-08-30 | 962 |  | GC1 | 8818024 |
| 964 | 37100.37400.37600.38500.39400.43900.154700 | **3rd floor slab** | 16.88d | 2025-08-31 | 2025-09-14 |  | start no earlier than 2025-08-31 | GC1 | 8810024 |
| 965 | 37100.37400.37600.38500.39400.43900.154700.498900 | Reinforcement | 12.38d | 2025-08-31 | 2025-09-10 | 963 |  | GC1 | 8818034 |
| 966 | 37100.37400.37600.38500.39400.43900.154700.499000 | Wall conduiting | 3.38d | 2025-09-03 | 2025-09-05 | 961, 965SS+3.38d |  | GC1 | 8818044 |
| 967 | 37100.37400.37600.38500.39400.43900.154700.499100 | Formwork | 11.25d | 2025-09-04 | 2025-09-13 | 965SS+4.5d |  | GC1 | 8818054 |
| 968 | 37100.37400.37600.38500.39400.43900.154700.499200 | Concreting | 1.12d | 2025-09-14 | 2025-09-14 | 967 |  | GC1 | 8818064 |
| 969 | 37100.37400.37600.38500.39400.43900.154800 | **4th floor slab** | 10.12d | 2025-09-15 | 2025-09-23 |  | start no earlier than 2025-09-15 | GC1 | 8810014 |
| 970 | 37100.37400.37600.38500.39400.43900.154800.499300 | Reinforcement | 7.88d | 2025-09-15 | 2025-09-21 | 968 |  | GC1 | 8818074 |
| 971 | 37100.37400.37600.38500.39400.43900.154800.499400 | Wall conduiting | 2.25d | 2025-09-16 | 2025-09-17 | 966, 970SS+1.12d |  | GC1 | 8818084 |
| 972 | 37100.37400.37600.38500.39400.43900.154800.499500 | Formwork | 6.75d | 2025-09-17 | 2025-09-22 | 970SS+2.25d |  | GC1 | 8818094 |
| 973 | 37100.37400.37600.38500.39400.43900.154800.499600 | Concreting | 1.12d | 2025-09-23 | 2025-09-23 | 972 |  | GC1 | 8818104 |
| 974 | 37100.37400.37600.38500.39400.43900.154900 | **5th floor slab** | 10.12d | 2025-09-24 | 2025-10-02 |  | start no earlier than 2025-09-24 | GC1 | 8810004 |
| 975 | 37100.37400.37600.38500.39400.43900.154900.499700 | Reinforcement | 7.88d | 2025-09-24 | 2025-09-30 | 973 |  | GC1 | 8818114 |
| 976 | 37100.37400.37600.38500.39400.43900.154900.499800 | Wall conduiting | 2.25d | 2025-09-25 | 2025-09-26 | 971, 975SS+1.12d |  | GC1 | 8818124 |
| 977 | 37100.37400.37600.38500.39400.43900.154900.499900 | Formwork | 6.75d | 2025-09-26 | 2025-10-01 | 975SS+2.25d |  | GC1 | 8818134 |
| 978 | 37100.37400.37600.38500.39400.43900.154900.500000 | Concreting | 1.12d | 2025-10-02 | 2025-10-02 | 977 |  | GC1 | 8818144 |
| 979 | 37100.37400.37600.38500.39400.43900.155000 | **6th floor slab** | 10.12d | 2025-10-03 | 2025-10-11 |  | start no earlier than 2025-10-03 | GC1 | 8809994 |
| 980 | 37100.37400.37600.38500.39400.43900.155000.500100 | Reinforcement | 7.88d | 2025-10-03 | 2025-10-09 | 978 |  | GC1 | 8818154 |
| 981 | 37100.37400.37600.38500.39400.43900.155000.500200 | Wall conduiting | 2.25d | 2025-10-04 | 2025-10-05 | 976, 980SS+1.12d |  | GC1 | 8818164 |
| 982 | 37100.37400.37600.38500.39400.43900.155000.500300 | Formwork | 6.75d | 2025-10-05 | 2025-10-10 | 980SS+2.25d |  | GC1 | 8818174 |
| 983 | 37100.37400.37600.38500.39400.43900.155000.500400 | Concreting | 1.12d | 2025-10-11 | 2025-10-11 | 982 |  | GC1 | 8818184 |

| ID | WBS | Task | Duration | Start | Finish | Predecessors | Constraint | Calendar | Unique_Task_ID |
| --- | --- | --- | --- | --- | --- | --- | --- | --- | --- |
| 984 | 37100.37400.37600.38500.39400.43900.155100 | **7th floor slab** | 10.12d | 2025-10-12 | 2025-10-20 |  | start no earlier than 2025-10-12 | GC1 | 8809984 |
| 985 | 37100.37400.37600.38500.39400.43900.155100.500500 | Reinforcement | 7.88d | 2025-10-12 | 2025-10-18 | 983 |  | GC1 | 8818194 |
| 986 | 37100.37400.37600.38500.39400.43900.155100.500600 | Wall conduiting | 2.25d | 2025-10-13 | 2025-10-14 | 981, 985SS+1.12d |  | GC1 | 8818204 |
| 987 | 37100.37400.37600.38500.39400.43900.155100.500700 | Formwork | 6.75d | 2025-10-14 | 2025-10-19 | 985SS+2.25d |  | GC1 | 8818214 |
| 988 | 37100.37400.37600.38500.39400.43900.155100.500800 | Concreting | 1.12d | 2025-10-20 | 2025-10-20 | 987 |  | GC1 | 8818224 |
| 989 | 37100.37400.37600.38500.39400.43900.155200 | **8th floor slab** | 13.5d | 2025-10-21 | 2025-12-16 |  | start no earlier than 2025-10-21 | GC1 | 8809974 |
| 990 | 37100.37400.37600.38500.39400.43900.155200.500900 | Reinforcement | 11.25d | 2025-10-21 | 2025-10-30 | 988 |  | GC1 | 8818234 |
| 991 | 37100.37400.37600.38500.39400.43900.155200.501000 | Wall conduiting | 2.25d | 2025-10-22 | 2025-10-23 | 986, 990SS+1.12d |  | GC1 | 8818244 |
| 992 | 37100.37400.37600.38500.39400.43900.155200.501100 | Formwork | 10.12d | 2025-10-23 | 2025-10-31 | 990SS+2.25d |  | GC1 | 8818254 |
| 993 | 37100.37400.37600.38500.39400.43900.155200.501200 | Concreting | 1.12d | 2025-12-16 | 2025-12-16 | 992 |  | GC1 | 8818264 |
| 994 | 37100.37400.37600.38500.39400.43900.155300 | **9th floor slab** | 10.12d | 2025-12-17 | 2025-12-25 |  | start no earlier than 2025-12-17 | GC1 | 8809964 |
| 995 | 37100.37400.37600.38500.39400.43900.155300.501300 | Reinforcement | 7.88d | 2025-12-17 | 2025-12-23 | 993 |  | GC1 | 8818274 |
| 996 | 37100.37400.37600.38500.39400.43900.155300.501400 | Wall conduiting | 2.25d | 2025-12-18 | 2025-12-19 | 991, 995SS+1.12d |  | GC1 | 8818284 |
| 997 | 37100.37400.37600.38500.39400.43900.155300.501500 | Formwork | 6.75d | 2025-12-19 | 2025-12-24 | 995SS+2.25d |  | GC1 | 8818294 |
| 998 | 37100.37400.37600.38500.39400.43900.155300.501600 | Concreting | 1.12d | 2025-12-25 | 2025-12-25 | 997 |  | GC1 | 8818304 |
| 999 | 37100.37400.37600.38500.39400.43900.155400 | **10th floor slab** | 10.12d | 2025-12-26 | 2026-01-03 |  | start no earlier than 2025-12-26 | GC1 | 8809954 |
| 1000 | 37100.37400.37600.38500.39400.43900.155400.501700 | Reinforcement | 7.88d | 2025-12-26 | 2026-01-01 | 998 |  | GC1 | 8818314 |
| 1001 | 37100.37400.37600.38500.39400.43900.155400.501800 | Wall conduiting | 2.25d | 2025-12-27 | 2025-12-28 | 996, 1000SS+1.12d |  | GC1 | 8818324 |
| 1002 | 37100.37400.37600.38500.39400.43900.155400.501900 | Formwork | 6.75d | 2025-12-28 | 2026-01-02 | 1000SS+2.25d |  | GC1 | 8818334 |
| 1003 | 37100.37400.37600.38500.39400.43900.155400.502000 | Concreting | 1.12d | 2026-01-03 | 2026-01-03 | 1002 |  | GC1 | 8818344 |
| 1004 | 37100.37400.37600.38500.39400.43900.155500 | **11th floor slab** | 10.12d | 2026-01-04 | 2026-01-12 |  | start no earlier than 2026-01-04 | GC1 | 8809944 |
| 1005 | 37100.37400.37600.38500.39400.43900.155500.502100 | Reinforcement | 7.88d | 2026-01-04 | 2026-01-10 | 1003 |  | GC1 | 8818354 |
| 1006 | 37100.37400.37600.38500.39400.43900.155500.502200 | Wall conduiting | 2.25d | 2026-01-05 | 2026-01-06 | 1001, 1005SS+1.12d |  | GC1 | 8818364 |
| 1007 | 37100.37400.37600.38500.39400.43900.155500.502300 | Formwork | 6.75d | 2026-01-06 | 2026-01-11 | 1005SS+2.25d |  | GC1 | 8818374 |
| 1008 | 37100.37400.37600.38500.39400.43900.155500.502400 | Concreting | 1.12d | 2026-01-12 | 2026-01-12 | 1007 |  | GC1 | 8818384 |

| ID | WBS | Task | Duration | Start | Finish | Predecessors | Constraint | Calendar | Unique_Task_ID |
| --- | --- | --- | --- | --- | --- | --- | --- | --- | --- |
| 1009 | 37100.37400.37600.38500.39400.43900.155600 | **12th floor slab** | 10.12d | 2026-01-13 | 2026-01-21 |  | start no earlier than 2026-01-13 | GC1 | 8809934 |
| 1010 | 37100.37400.37600.38500.39400.43900.155600.502500 | Reinforcement | 7.88d | 2026-01-13 | 2026-01-19 | 1008 |  | GC1 | 8818394 |
| 1011 | 37100.37400.37600.38500.39400.43900.155600.502600 | Wall conduiting | 2.25d | 2026-01-14 | 2026-01-15 | 1006, 1010SS+1.12d |  | GC1 | 8818404 |
| 1012 | 37100.37400.37600.38500.39400.43900.155600.502700 | Formwork | 6.75d | 2026-01-15 | 2026-01-20 | 1010SS+2.25d |  | GC1 | 8818414 |
| 1013 | 37100.37400.37600.38500.39400.43900.155600.502800 | Concreting | 1.12d | 2026-01-21 | 2026-01-21 | 1012 |  | GC1 | 8818424 |
| 1014 | 37100.37400.37600.38500.39400.43900.155700 | **13th floor slab** | 10.12d | 2026-01-22 | 2026-01-30 |  | start no earlier than 2026-01-22 | GC1 | 8809924 |
| 1015 | 37100.37400.37600.38500.39400.43900.155700.502900 | Reinforcement | 7.88d | 2026-01-22 | 2026-01-28 | 1013 |  | GC1 | 8818434 |
| 1016 | 37100.37400.37600.38500.39400.43900.155700.503000 | Wall conduiting | 2.25d | 2026-01-23 | 2026-01-24 | 1011, 1015SS+1.12d |  | GC1 | 8818444 |
| 1017 | 37100.37400.37600.38500.39400.43900.155700.503100 | Formwork | 6.75d | 2026-01-24 | 2026-01-29 | 1015SS+2.25d |  | GC1 | 8818454 |
| 1018 | 37100.37400.37600.38500.39400.43900.155700.503200 | Concreting | 1.12d | 2026-01-30 | 2026-01-30 | 1017 |  | GC1 | 8818464 |
| 1019 | 37100.37400.37600.38500.39400.43900.155800 | **14th floor slab** | 10.12d | 2026-01-31 | 2026-02-08 |  | start no earlier than 2026-01-31 | GC1 | 8809914 |
| 1020 | 37100.37400.37600.38500.39400.43900.155800.503300 | Reinforcement | 7.88d | 2026-01-31 | 2026-02-06 | 1018 |  | GC1 | 8818474 |
| 1021 | 37100.37400.37600.38500.39400.43900.155800.503400 | Wall conduiting | 2.25d | 2026-02-01 | 2026-02-02 | 1016, 1020SS+1.12d |  | GC1 | 8818484 |
| 1022 | 37100.37400.37600.38500.39400.43900.155800.503500 | Formwork | 6.75d | 2026-02-02 | 2026-02-07 | 1020SS+2.25d |  | GC1 | 8818494 |
| 1023 | 37100.37400.37600.38500.39400.43900.155800.503600 | Concreting | 1.12d | 2026-02-08 | 2026-02-08 | 1022 |  | GC1 | 8818504 |
| 1024 | 37100.37400.37600.38500.39400.43900.155900 | **15th floor slab** | 10.12d | 2026-02-09 | 2026-02-17 |  | start no earlier than 2026-02-09 | GC1 | 8809904 |
| 1025 | 37100.37400.37600.38500.39400.43900.155900.503700 | Reinforcement | 7.88d | 2026-02-09 | 2026-02-15 | 1023 |  | GC1 | 8818514 |
| 1026 | 37100.37400.37600.38500.39400.43900.155900.503800 | Wall conduiting | 2.25d | 2026-02-10 | 2026-02-11 | 1021, 1025SS+1.12d |  | GC1 | 8818524 |
| 1027 | 37100.37400.37600.38500.39400.43900.155900.503900 | Formwork | 6.75d | 2026-02-11 | 2026-02-16 | 1025SS+2.25d |  | GC1 | 8818534 |
| 1028 | 37100.37400.37600.38500.39400.43900.155900.504000 | Concreting | 1.12d | 2026-02-17 | 2026-02-17 | 1027 |  | GC1 | 8818544 |
| 1029 | 37100.37400.37600.38500.39400.43900.156000 | **16th floor slab** | 13.5d | 2026-02-18 | 2026-03-01 |  | start no earlier than 2026-02-18 | GC1 | 8809894 |
| 1030 | 37100.37400.37600.38500.39400.43900.156000.504100 | Reinforcement | 10.12d | 2026-02-18 | 2026-02-26 | 1028 |  | GC1 | 8818554 |
| 1031 | 37100.37400.37600.38500.39400.43900.156000.504200 | Wall conduiting | 2.25d | 2026-02-19 | 2026-02-20 | 1026, 1030SS+1.12d |  | GC1 | 8818564 |
| 1032 | 37100.37400.37600.38500.39400.43900.156000.504300 | Formwork | 10.12d | 2026-02-20 | 2026-02-28 | 1030SS+2.25d |  | GC1 | 8818574 |
| 1033 | 37100.37400.37600.38500.39400.43900.156000.504400 | Concreting | 1.12d | 2026-03-01 | 2026-03-01 | 1032 |  | GC1 | 8818584 |

| ID | WBS | Task | Duration | Start | Finish | Predecessors | Constraint | Calendar | Unique_Task_ID |
| --- | --- | --- | --- | --- | --- | --- | --- | --- | --- |
| 1034 | 37100.37400.37600.38500.39400.43900.156100 | **17th floor slab** | 10.12d | 2026-03-02 | 2026-03-10 |  | start no earlier than 2026-03-02 | GC1 | 8809884 |
| 1035 | 37100.37400.37600.38500.39400.43900.156100.504500 | Reinforcement | 7.88d | 2026-03-02 | 2026-03-08 | 1033 |  | GC1 | 8818594 |
| 1036 | 37100.37400.37600.38500.39400.43900.156100.504600 | Wall conduiting | 2.25d | 2026-03-03 | 2026-03-04 | 1031, 1035SS+1.12d |  | GC1 | 8818604 |
| 1037 | 37100.37400.37600.38500.39400.43900.156100.504700 | Formwork | 6.75d | 2026-03-04 | 2026-03-09 | 1035SS+2.25d |  | GC1 | 8818614 |
| 1038 | 37100.37400.37600.38500.39400.43900.156100.504800 | Concreting | 1.12d | 2026-03-10 | 2026-03-10 | 1037 |  | GC1 | 8818624 |
| 1039 | 37100.37400.37600.38500.39400.43900.156200 | **18th floor slab** | 10.12d | 2026-03-11 | 2026-03-19 |  | start no earlier than 2026-03-11 | GC1 | 8809874 |
| 1040 | 37100.37400.37600.38500.39400.43900.156200.504900 | Reinforcement | 7.88d | 2026-03-11 | 2026-03-17 | 1038 |  | GC1 | 8818634 |
| 1041 | 37100.37400.37600.38500.39400.43900.156200.505000 | Wall conduiting | 2.25d | 2026-03-12 | 2026-03-13 | 1036, 1040SS+1.12d |  | GC1 | 8818644 |
| 1042 | 37100.37400.37600.38500.39400.43900.156200.505100 | Formwork | 6.75d | 2026-03-13 | 2026-03-18 | 1040SS+2.25d |  | GC1 | 8818654 |
| 1043 | 37100.37400.37600.38500.39400.43900.156200.505200 | Concreting | 1.12d | 2026-03-19 | 2026-03-19 | 1042 |  | GC1 | 8818664 |
| 1044 | 37100.37400.37600.38500.39400.43900.156300 | **19th floor slab** | 9d | 2026-03-20 | 2026-03-27 |  | start no earlier than 2026-03-20 | GC1 | 8809864 |
| 1045 | 37100.37400.37600.38500.39400.43900.156300.505300 | Reinforcement | 7.88d | 2026-03-20 | 2026-03-26 | 1043 |  | GC1 | 8818674 |
| 1046 | 37100.37400.37600.38500.39400.43900.156300.505400 | Wall conduiting | 2.25d | 2026-03-21 | 2026-03-22 | 1041, 1045SS+1.12d |  | GC1 | 8818684 |
| 1047 | 37100.37400.37600.38500.39400.43900.156300.505500 | Formwork | 6.75d | 2026-03-21 | 2026-03-26 | 1045SS+1.12d |  | GC1 | 8818694 |
| 1048 | 37100.37400.37600.38500.39400.43900.156300.505600 | Concreting | 1.12d | 2026-03-27 | 2026-03-27 | 1047 |  | GC1 | 8818704 |
| 1049 | 37100.37400.37600.38500.39400.43900.156400 | **20th floor slab** | 9d | 2026-03-28 | 2026-04-04 |  | start no earlier than 2026-03-28 | GC1 | 8809854 |
| 1050 | 37100.37400.37600.38500.39400.43900.156400.505700 | Reinforcement | 7.88d | 2026-03-28 | 2026-04-03 | 1048 |  | GC1 | 8818714 |
| 1051 | 37100.37400.37600.38500.39400.43900.156400.505800 | Wall conduiting | 2.25d | 2026-03-29 | 2026-03-30 | 1046, 1050SS+1.12d |  | GC1 | 8818724 |
| 1052 | 37100.37400.37600.38500.39400.43900.156400.505900 | Formwork | 6.75d | 2026-03-29 | 2026-04-03 | 1050SS+1.12d |  | GC1 | 8818734 |
| 1053 | 37100.37400.37600.38500.39400.43900.156400.506000 | Concreting | 1.12d | 2026-04-04 | 2026-04-04 | 1052 |  | GC1 | 8818744 |
| 1054 | 37100.37400.37600.38500.39400.43900.156500 | **21st floor slab** | 11.25d | 2026-04-05 | 2026-04-14 |  | start no earlier than 2026-04-05 | GC1 | 8809844 |
| 1055 | 37100.37400.37600.38500.39400.43900.156500.506100 | Reinforcement | 9d | 2026-04-05 | 2026-04-12 | 1053 |  | GC1 | 8818754 |
| 1056 | 37100.37400.37600.38500.39400.43900.156500.506200 | Wall conduiting | 2.25d | 2026-04-06 | 2026-04-07 | 1051, 1055SS+1.12d |  | GC1 | 8818764 |
| 1057 | 37100.37400.37600.38500.39400.43900.156500.506300 | Formwork | 7.88d | 2026-04-07 | 2026-04-13 | 1055SS+2.25d |  | GC1 | 8818774 |
| 1058 | 37100.37400.37600.38500.39400.43900.156500.506400 | Concreting | 1.12d | 2026-04-14 | 2026-04-14 | 1057 |  | GC1 | 8818784 |

| ID | WBS | Task | Duration | Start | Finish | Predecessors | Constraint | Calendar | Unique_Task_ID |
| --- | --- | --- | --- | --- | --- | --- | --- | --- | --- |
| 1059 | 37100.37400.37600.38500.39400.43900.156600 | **22nd floor slab** | 11.25d | 2026-04-15 | 2026-04-24 |  | start no earlier than 2026-04-15 | GC1 | 8809834 |
| 1060 | 37100.37400.37600.38500.39400.43900.156600.506500 | Reinforcement | 9d | 2026-04-15 | 2026-04-22 | 1058 |  | GC1 | 8818794 |
| 1061 | 37100.37400.37600.38500.39400.43900.156600.506600 | Wall conduiting | 2.25d | 2026-04-16 | 2026-04-17 | 1056, 1060SS+1.12d |  | GC1 | 8818804 |
| 1062 | 37100.37400.37600.38500.39400.43900.156600.506700 | Formwork | 7.88d | 2026-04-17 | 2026-04-23 | 1060SS+2.25d |  | GC1 | 8818814 |
| 1063 | 37100.37400.37600.38500.39400.43900.156600.506800 | Concreting | 1.12d | 2026-04-24 | 2026-04-24 | 1062 |  | GC1 | 8818824 |
| 1064 | 37100.37400.37600.38500.39400.43900.156700 | **23rd floor slab** | 11.25d | 2026-04-25 | 2026-05-04 |  | start no earlier than 2026-04-25 | GC1 | 8809824 |
| 1065 | 37100.37400.37600.38500.39400.43900.156700.506900 | Reinforcement | 9d | 2026-04-25 | 2026-05-02 | 1063 |  | GC1 | 8818834 |
| 1066 | 37100.37400.37600.38500.39400.43900.156700.507000 | Wall conduiting | 2.25d | 2026-04-26 | 2026-04-27 | 1061, 1065SS+1.12d |  | GC1 | 8818844 |
| 1067 | 37100.37400.37600.38500.39400.43900.156700.507100 | Formwork | 7.88d | 2026-04-27 | 2026-05-03 | 1065SS+2.25d |  | GC1 | 8818854 |
| 1068 | 37100.37400.37600.38500.39400.43900.156700.507200 | Concreting | 1.12d | 2026-05-04 | 2026-05-04 | 1067 |  | GC1 | 8818864 |
| 1069 | 37100.37400.37600.38500.39400.43900.156800 | **24th floor slab** | 14.62d | 2026-05-05 | 2026-05-17 |  | start no earlier than 2026-05-05 | GC1 | 8809814 |
| 1070 | 37100.37400.37600.38500.39400.43900.156800.507300 | Reinforcement | 11.25d | 2026-05-05 | 2026-05-14 | 1068 |  | GC1 | 8818874 |
| 1071 | 37100.37400.37600.38500.39400.43900.156800.507400 | Wall conduiting | 2.25d | 2026-05-06 | 2026-05-07 | 1066, 1070SS+1.12d |  | GC1 | 8818884 |
| 1072 | 37100.37400.37600.38500.39400.43900.156800.507500 | Formwork | 11.25d | 2026-05-07 | 2026-05-16 | 1070SS+2.25d |  | GC1 | 8818894 |
| 1073 | 37100.37400.37600.38500.39400.43900.156800.507600 | Concreting | 1.12d | 2026-05-17 | 2026-05-17 | 1072 |  | GC1 | 8818904 |
| 1074 | 37100.37400.37600.38500.39400.43900.156900 | **25th floor slab** | 14.62d | 2026-05-18 | 2026-05-30 |  | start no earlier than 2026-05-18 | GC1 | 8809804 |
| 1075 | 37100.37400.37600.38500.39400.43900.156900.507700 | Reinforcement | 11.25d | 2026-05-18 | 2026-05-27 | 1073 |  | GC1 | 8818914 |
| 1076 | 37100.37400.37600.38500.39400.43900.156900.507800 | Wall conduiting | 2.25d | 2026-05-19 | 2026-05-20 | 1071, 1075SS+1.12d |  | GC1 | 8818924 |
| 1077 | 37100.37400.37600.38500.39400.43900.156900.507900 | Formwork | 11.25d | 2026-05-20 | 2026-05-29 | 1075SS+2.25d |  | GC1 | 8818934 |
| 1078 | 37100.37400.37600.38500.39400.43900.156900.508000 | Concreting | 1.12d | 2026-05-30 | 2026-05-30 | 1077 |  | GC1 | 8818944 |
| 1079 | 37100.37400.37600.38500.39400.43900.157000 | **26th floor slab** | 11.25d | 2026-05-31 | 2026-06-09 |  | start no earlier than 2026-05-31 | GC1 | 8809794 |
| 1080 | 37100.37400.37600.38500.39400.43900.157000.508100 | Reinforcement | 9d | 2026-05-31 | 2026-06-07 | 1078 |  | GC1 | 8818954 |
| 1081 | 37100.37400.37600.38500.39400.43900.157000.508200 | Wall conduiting | 2.25d | 2026-06-01 | 2026-06-02 | 1076, 1080SS+1.12d |  | GC1 | 8818964 |
| 1082 | 37100.37400.37600.38500.39400.43900.157000.508300 | Formwork | 7.88d | 2026-06-02 | 2026-06-08 | 1080SS+2.25d |  | GC1 | 8818974 |
| 1083 | 37100.37400.37600.38500.39400.43900.157000.508400 | Concreting | 1.12d | 2026-06-09 | 2026-06-09 | 1082 |  | GC1 | 8818984 |

| ID | WBS | Task | Duration | Start | Finish | Predecessors | Constraint | Calendar | Unique_Task_ID |
| --- | --- | --- | --- | --- | --- | --- | --- | --- | --- |
| 1084 | 37100.37400.37600.38500.39400.43900.157100 | **27th floor slab** | 11.25d | 2026-06-10 | 2026-06-19 |  | start no earlier than 2026-06-10 | GC1 | 8809784 |
| 1085 | 37100.37400.37600.38500.39400.43900.157100.508500 | Reinforcement | 9d | 2026-06-10 | 2026-06-17 | 1083 |  | GC1 | 8818994 |
| 1086 | 37100.37400.37600.38500.39400.43900.157100.508600 | Wall conduiting | 2.25d | 2026-06-11 | 2026-06-12 | 1081, 1085SS+1.12d |  | GC1 | 8819004 |
| 1087 | 37100.37400.37600.38500.39400.43900.157100.508700 | Formwork | 7.88d | 2026-06-12 | 2026-06-18 | 1085SS+2.25d |  | GC1 | 8819014 |
| 1088 | 37100.37400.37600.38500.39400.43900.157100.508800 | Concreting | 1.12d | 2026-06-19 | 2026-06-19 | 1087 |  | GC1 | 8819024 |
| 1089 | 37100.37400.37600.38500.39400.43900.157200 | **28th floor slab** | 11.25d | 2026-06-20 | 2026-06-29 |  | start no earlier than 2026-06-20 | GC1 | 8809774 |
| 1090 | 37100.37400.37600.38500.39400.43900.157200.508900 | Reinforcement | 9d | 2026-06-20 | 2026-06-27 | 1088 |  | GC1 | 8819034 |
| 1091 | 37100.37400.37600.38500.39400.43900.157200.509000 | Wall conduiting | 2.25d | 2026-06-21 | 2026-06-22 | 1086, 1090SS+1.12d |  | GC1 | 8819044 |
| 1092 | 37100.37400.37600.38500.39400.43900.157200.509100 | Formwork | 7.88d | 2026-06-22 | 2026-06-28 | 1090SS+2.25d |  | GC1 | 8819054 |
| 1093 | 37100.37400.37600.38500.39400.43900.157200.509200 | Concreting | 1.12d | 2026-06-29 | 2026-06-29 | 1092 |  | GC1 | 8819064 |
| 1094 | 37100.37400.37600.38500.39400.43900.157300 | **29th floor slab** | 11.25d | 2026-06-30 | 2026-07-09 |  | start no earlier than 2026-06-30 | GC1 | 8809764 |
| 1095 | 37100.37400.37600.38500.39400.43900.157300.509300 | Reinforcement | 9d | 2026-06-30 | 2026-07-07 | 1093 |  | GC1 | 8819074 |
| 1096 | 37100.37400.37600.38500.39400.43900.157300.509400 | Wall conduiting | 2.25d | 2026-07-01 | 2026-07-02 | 1091, 1095SS+1.12d |  | GC1 | 8819084 |
| 1097 | 37100.37400.37600.38500.39400.43900.157300.509500 | Formwork | 7.88d | 2026-07-02 | 2026-07-08 | 1095SS+2.25d |  | GC1 | 8819094 |
| 1098 | 37100.37400.37600.38500.39400.43900.157300.509600 | Concreting | 1.12d | 2026-07-09 | 2026-07-09 | 1097 |  | GC1 | 8819104 |
| 1099 | 37100.37400.37600.38500.39400.43900.157400 | **30th floor slab** | 11.25d | 2026-07-10 | 2026-07-19 |  | start no earlier than 2026-07-10 | GC1 | 8809754 |
| 1100 | 37100.37400.37600.38500.39400.43900.157400.509700 | Reinforcement | 9d | 2026-07-10 | 2026-07-17 | 1098 |  | GC1 | 8819114 |
| 1101 | 37100.37400.37600.38500.39400.43900.157400.509800 | Wall conduiting | 2.25d | 2026-07-11 | 2026-07-12 | 1096, 1100SS+1.12d |  | GC1 | 8819124 |
| 1102 | 37100.37400.37600.38500.39400.43900.157400.509900 | Formwork | 7.88d | 2026-07-12 | 2026-07-18 | 1100SS+2.25d |  | GC1 | 8819134 |
| 1103 | 37100.37400.37600.38500.39400.43900.157400.510000 | Concreting | 1.12d | 2026-07-19 | 2026-07-19 | 1102 |  | GC1 | 8819144 |
| 1104 | 37100.37400.37600.38500.39400.43900.157500 | **31st floor slab** | 13.5d | 2026-07-20 | 2026-07-31 |  | start no earlier than 2026-07-20 | GC1 | 8809744 |
| 1105 | 37100.37400.37600.38500.39400.43900.157500.510100 | Reinforcement | 10.12d | 2026-07-20 | 2026-07-28 | 1103 |  | GC1 | 8819154 |
| 1106 | 37100.37400.37600.38500.39400.43900.157500.510200 | Wall conduiting | 2.25d | 2026-07-21 | 2026-07-22 | 1101, 1105SS+1.12d |  | GC1 | 8819164 |
| 1107 | 37100.37400.37600.38500.39400.43900.157500.510300 | Formwork | 10.12d | 2026-07-22 | 2026-07-30 | 1105SS+2.25d |  | GC1 | 8819174 |
| 1108 | 37100.37400.37600.38500.39400.43900.157500.510400 | Concreting | 1.12d | 2026-07-31 | 2026-07-31 | 1107 |  | GC1 | 8819184 |

| ID | WBS | Task | Duration | Start | Finish | Predecessors | Constraint | Calendar | Unique_Task_ID |
| --- | --- | --- | --- | --- | --- | --- | --- | --- | --- |
| 1109 | 37100.37400.37600.38500.39400.43900.157600 | **32nd floor slab** | 14.62d | 2026-08-01 | 2026-08-13 |  | start no earlier than 2026-08-01 | GC1 | 8809734 |
| 1110 | 37100.37400.37600.38500.39400.43900.157600.510500 | Reinforcement | 11.25d | 2026-08-01 | 2026-08-10 | 1108 |  | GC1 | 8819194 |
| 1111 | 37100.37400.37600.38500.39400.43900.157600.510600 | Wall conduiting | 2.25d | 2026-08-02 | 2026-08-03 | 1106, 1110SS+1.12d |  | GC1 | 8819204 |
| 1112 | 37100.37400.37600.38500.39400.43900.157600.510700 | Formwork | 11.25d | 2026-08-03 | 2026-08-12 | 1110SS+2.25d |  | GC1 | 8819214 |
| 1113 | 37100.37400.37600.38500.39400.43900.157600.510800 | Concreting | 1.12d | 2026-08-13 | 2026-08-13 | 1112 |  | GC1 | 8819224 |
| 1114 | 37100.37400.37600.38500.39400.43900.157700 | **33rd floor slab** | 13.5d | 2026-08-14 | 2026-08-25 |  | start no earlier than 2026-08-14 | GC1 | 8809724 |
| 1115 | 37100.37400.37600.38500.39400.43900.157700.510900 | Reinforcement | 10.12d | 2026-08-14 | 2026-08-22 | 1113 |  | GC1 | 8819234 |
| 1116 | 37100.37400.37600.38500.39400.43900.157700.511000 | Wall conduiting | 2.25d | 2026-08-15 | 2026-08-16 | 1111, 1115SS+1.12d |  | GC1 | 8819244 |
| 1117 | 37100.37400.37600.38500.39400.43900.157700.511100 | Formwork | 10.12d | 2026-08-16 | 2026-08-24 | 1115SS+2.25d |  | GC1 | 8819254 |
| 1118 | 37100.37400.37600.38500.39400.43900.157700.511200 | Concreting | 1.12d | 2026-08-25 | 2026-08-25 | 1117 |  | GC1 | 8819264 |
| 1119 | 37100.37400.37600.38500.39400.43900.157800 | **34th floor slab** | 14.62d | 2026-08-26 | 2026-09-07 |  | start no earlier than 2026-08-26 | GC1 | 8809714 |
| 1120 | 37100.37400.37600.38500.39400.43900.157800.511300 | Reinforcement | 11.25d | 2026-08-26 | 2026-09-04 | 1118 |  | GC1 | 8819274 |
| 1121 | 37100.37400.37600.38500.39400.43900.157800.511400 | Wall conduiting | 2.25d | 2026-08-27 | 2026-08-28 | 1116, 1120SS+1.12d |  | GC1 | 8819284 |
| 1122 | 37100.37400.37600.38500.39400.43900.157800.511500 | Formwork | 11.25d | 2026-08-28 | 2026-09-06 | 1120SS+2.25d |  | GC1 | 8819294 |
| 1123 | 37100.37400.37600.38500.39400.43900.157800.511600 | Concreting | 1.12d | 2026-09-07 | 2026-09-07 | 1122 |  | GC1 | 8819304 |
| 1124 | 37100.37400.37600.38500.39400.43900.157900 | **35th floor slab** | 13.5d | 2026-09-08 | 2026-09-19 |  | start no earlier than 2026-09-08 | GC1 | 8809704 |
| 1125 | 37100.37400.37600.38500.39400.43900.157900.511700 | Reinforcement | 10.12d | 2026-09-08 | 2026-09-16 | 1123 |  | GC1 | 8819314 |
| 1126 | 37100.37400.37600.38500.39400.43900.157900.511800 | Wall conduiting | 2.25d | 2026-09-09 | 2026-09-10 | 1121, 1125SS+1.12d |  | GC1 | 8819324 |
| 1127 | 37100.37400.37600.38500.39400.43900.157900.511900 | Formwork | 9d | 2026-09-11 | 2026-09-18 | 1126SS+2.25d |  | GC1 | 8819334 |
| 1128 | 37100.37400.37600.38500.39400.43900.157900.512000 | Concreting | 1.12d | 2026-09-19 | 2026-09-19 | 1127 |  | GC1 | 8819344 |
| 1129 | 37100.37400.37600.38500.39400.43900.158000 | **Terrace floor slab** | 16.88d | 2026-09-20 | 2026-10-04 |  | start no earlier than 2026-09-20 | GC1 | 8809694 |
| 1130 | 37100.37400.37600.38500.39400.43900.158000.512100 | Reinforcement | 12.38d | 2026-09-20 | 2026-09-30 | 1128 |  | GC1 | 8819354 |
| 1131 | 37100.37400.37600.38500.39400.43900.158000.512200 | Wall conduiting | 2.25d | 2026-09-21 | 2026-09-22 | 1126, 1130SS+1.12d |  | GC1 | 8819364 |
| 1132 | 37100.37400.37600.38500.39400.43900.158000.512300 | Formwork | 13.5d | 2026-09-22 | 2026-10-03 | 1130SS+2.25d |  | GC1 | 8819374 |
| 1133 | 37100.37400.37600.38500.39400.43900.158000.512400 | Concreting | 1.12d | 2026-10-04 | 2026-10-04 | 1132 |  | GC1 | 8819384 |

| ID | WBS | Task | Duration | Start | Finish | Predecessors | Constraint | Calendar | Unique_Task_ID |
| --- | --- | --- | --- | --- | --- | --- | --- | --- | --- |
| 1134 | 37100.37400.37600.38500.39400.43900.158100 | **OHT & Mumty** | 45d | 2026-10-05 | 2026-12-28 |  | start no earlier than 2026-10-05 | GC1 | 8809684 |
| 1135 | 37100.37400.37600.38500.39400.43900.158100.512500 | Reinforcement | 33.75d | 2026-10-05 | 2026-12-18 | 1133 |  | GC1 | 8819394 |
| 1136 | 37100.37400.37600.38500.39400.43900.158100.512600 | Wall conduiting | 5.62d | 2026-10-06 | 2026-10-10 | 1131, 1135SS+1.12d |  | GC1 | 8819404 |
| 1137 | 37100.37400.37600.38500.39400.43900.158100.512700 | Formwork | 37.12d | 2026-10-09 | 2026-12-25 | 1135SS+4.5d |  | GC1 | 8819414 |
| 1138 | 37100.37400.37600.38500.39400.43900.158100.512800 | Concreting | 3.38d | 2026-12-26 | 2026-12-28 | 1137 |  | GC1 | 8819424 |
| 1139 | 37100.37400.37600.38500.39400.45400 | **Post Pour Activities** | 447.75d | 2025-09-24 | 2027-01-24 |  | start no earlier than 2025-09-24 | GC1 | 8806094 |
| 1140 | 37100.37400.37600.38500.39400.45400.305500 | 1st Floor | 12.38d | 2025-09-24 | 2025-10-04 | 973 |  | GC1 | 8812754 |
| 1141 | 37100.37400.37600.38500.39400.45400.305600 | 2nd Floor | 12.38d | 2025-10-05 | 2025-10-15 | 1140, 978 |  | GC1 | 8812764 |
| 1142 | 37100.37400.37600.38500.39400.45400.305700 | 3rd Floor | 12.38d | 2025-10-16 | 2025-10-26 | 1141, 983 |  | GC1 | 8812774 |
| 1143 | 37100.37400.37600.38500.39400.45400.305800 | 4th Floor | 12.38d | 2025-10-27 | 2025-12-21 | 1142, 988 |  | GC1 | 8812784 |
| 1144 | 37100.37400.37600.38500.39400.45400.305900 | 5th Floor | 12.38d | 2025-12-22 | 2026-01-01 | 1143, 993 |  | GC1 | 8812794 |
| 1145 | 37100.37400.37600.38500.39400.45400.306000 | 6th Floor | 12.38d | 2026-01-02 | 2026-01-12 | 1144, 998 |  | GC1 | 8812804 |
| 1146 | 37100.37400.37600.38500.39400.45400.306100 | 7th Floor | 12.38d | 2026-01-13 | 2026-01-23 | 1145, 1003 |  | GC1 | 8812814 |
| 1147 | 37100.37400.37600.38500.39400.45400.306200 | 8th Floor | 12.38d | 2026-01-24 | 2026-02-03 | 1146, 1008 |  | GC1 | 8812824 |
| 1148 | 37100.37400.37600.38500.39400.45400.306300 | 9th Floor | 12.38d | 2026-02-04 | 2026-02-14 | 1147, 1013 |  | GC1 | 8812834 |
| 1149 | 37100.37400.37600.38500.39400.45400.306400 | 10th Floor | 12.38d | 2026-02-15 | 2026-02-25 | 1148, 1018 |  | GC1 | 8812844 |
| 1150 | 37100.37400.37600.38500.39400.45400.306500 | 11th Floor | 12.38d | 2026-02-26 | 2026-03-08 | 1149, 1023 |  | GC1 | 8812854 |
| 1151 | 37100.37400.37600.38500.39400.45400.306600 | 12th Floor | 12.38d | 2026-03-09 | 2026-03-19 | 1150, 1028 |  | GC1 | 8812864 |
| 1152 | 37100.37400.37600.38500.39400.45400.306700 | 13th Floor | 12.38d | 2026-03-20 | 2026-03-30 | 1151, 1033 |  | GC1 | 8812874 |
| 1153 | 37100.37400.37600.38500.39400.45400.306800 | 14th Floor | 12.38d | 2026-03-31 | 2026-04-10 | 1152, 1038 |  | GC1 | 8812884 |
| 1154 | 37100.37400.37600.38500.39400.45400.306900 | 15th Floor | 12.38d | 2026-04-11 | 2026-04-21 | 1153, 1043 |  | GC1 | 8812894 |
| 1155 | 37100.37400.37600.38500.39400.45400.307000 | 16th Floor | 12.38d | 2026-04-22 | 2026-05-02 | 1154, 1048 |  | GC1 | 8812904 |
| 1156 | 37100.37400.37600.38500.39400.45400.307100 | 17th Floor | 12.38d | 2026-05-03 | 2026-05-13 | 1155, 1053 |  | GC1 | 8812914 |
| 1157 | 37100.37400.37600.38500.39400.45400.307200 | 18th Floor | 12.38d | 2026-05-14 | 2026-05-24 | 1156, 1058 |  | GC1 | 8812924 |
| 1158 | 37100.37400.37600.38500.39400.45400.307300 | 19th Floor | 12.38d | 2026-05-25 | 2026-06-04 | 1157, 1063 |  | GC1 | 8812934 |
| 1159 | 37100.37400.37600.38500.39400.45400.307400 | 20th Floor | 12.38d | 2026-06-05 | 2026-06-15 | 1158, 1068 |  | GC1 | 8812944 |
| 1160 | 37100.37400.37600.38500.39400.45400.307500 | 21st Floor | 12.38d | 2026-06-16 | 2026-06-26 | 1159, 1073 |  | GC1 | 8812954 |
| 1161 | 37100.37400.37600.38500.39400.45400.307600 | 22nd Floor | 12.38d | 2026-06-27 | 2026-07-07 | 1160, 1078 |  | GC1 | 8812964 |
| 1162 | 37100.37400.37600.38500.39400.45400.307700 | 23rd Floor | 12.38d | 2026-07-08 | 2026-07-18 | 1161, 1083 |  | GC1 | 8812974 |
| 1163 | 37100.37400.37600.38500.39400.45400.307800 | 24th Floor | 12.38d | 2026-07-19 | 2026-07-29 | 1162, 1088 |  | GC1 | 8812984 |
| 1164 | 37100.37400.37600.38500.39400.45400.307900 | 25th Floor | 12.38d | 2026-07-30 | 2026-08-09 | 1163, 1093 |  | GC1 | 8812994 |
| 1165 | 37100.37400.37600.38500.39400.45400.308000 | 26th Floor | 12.38d | 2026-08-10 | 2026-08-20 | 1164, 1098 |  | GC1 | 8813004 |
| 1166 | 37100.37400.37600.38500.39400.45400.308100 | 27th Floor | 12.38d | 2026-08-21 | 2026-08-31 | 1165, 1103 |  | GC1 | 8813014 |
| 1167 | 37100.37400.37600.38500.39400.45400.308200 | 28th Floor | 12.38d | 2026-09-01 | 2026-09-11 | 1166, 1108 |  | GC1 | 8813024 |
| 1168 | 37100.37400.37600.38500.39400.45400.308300 | 29th Floor | 12.38d | 2026-09-12 | 2026-09-22 | 1167, 1113 |  | GC1 | 8813034 |
| 1169 | 37100.37400.37600.38500.39400.45400.308400 | 30th Floor | 12.38d | 2026-09-23 | 2026-10-03 | 1168, 1118 |  | GC1 | 8813044 |
| 1170 | 37100.37400.37600.38500.39400.45400.308500 | 31st Floor | 12.38d | 2026-10-04 | 2026-10-14 | 1169, 1123 |  | GC1 | 8813054 |
| 1171 | 37100.37400.37600.38500.39400.45400.308600 | 32nd Flood | 12.38d | 2026-10-15 | 2026-10-25 | 1170, 1128 |  | GC1 | 8813064 |
| 1172 | 37100.37400.37600.38500.39400.45400.308700 | 33rd Floor | 12.38d | 2026-10-26 | 2026-12-20 | 1171 |  | GC1 | 8813074 |
| 1173 | 37100.37400.37600.38500.39400.45400.308800 | 34th Floor | 9d | 2026-12-21 | 2026-12-28 | 1172 |  | GC1 | 8813084 |
| 1174 | 37100.37400.37600.38500.39400.45400.308900 | 35th Floor | 9d | 2026-12-29 | 2027-01-05 | 1173 |  | GC1 | 8813094 |
| 1175 | 37100.37400.37600.38500.39400.45400.309000 | Terrace | 9d | 2027-01-06 | 2027-01-13 | 1174 |  | GC1 | 8813104 |
| 1176 | 37100.37400.37600.38500.39400.45400.309100 | Mumty & Machine Room | 12.38d | 2027-01-14 | 2027-01-24 | 1175 |  | GC1 | 8813114 |

| ID | WBS | Task | Duration | Start | Finish | Predecessors | Constraint | Calendar | Unique_Task_ID |
| --- | --- | --- | --- | --- | --- | --- | --- | --- | --- |
| 1177 | 37100.37400.37600.38500.39400.40900 | **Finishing work** | 747.88d | 2025-10-05 | 2027-10-29 |  | start no earlier than 2025-10-05 | GC1 | 8805944 |
| 1178 | 37100.37400.37600.38500.39400.40900.41900 | **Flat finishing** | 632d | 2025-10-05 | 2027-07-18 |  | start no earlier than 2025-10-05 | GC1 | 8805994 |
| 1179 | 37100.37400.37600.38500.39400.40900.41900.62300 | **1st Floor** | 104.62d | 2025-10-05 | 2026-02-20 |  | start no earlier than 2025-10-05 | GC1 | 8806544 |
| 1180 | 37100.37400.37600.38500.39400.40900.41900.62300.1127300 | Block Work | 11.25d | 2025-10-05 | 2025-10-15 | 1140FS+0.25d |  | GC1 | 8831404 |
| 1181 | 37100.37400.37600.38500.39400.40900.41900.62300.1127400 | Door Frame Fixing | 9d | 2025-10-15 | 2025-10-23 | 1180 |  | GC1 | 8831414 |
| 1182 | 37100.37400.37600.38500.39400.40900.41900.62300.1127500 | Internal Plumbing Works | 11.25d | 2025-10-15 | 2025-10-25 | 1180 |  | GC1 | 8831424 |
| 1183 | 37100.37400.37600.38500.39400.40900.41900.62300.1127600 | Waterproofing | 9d | 2025-10-25 | 2025-12-17 | 1182 |  | GC1 | 8831434 |
| 1184 | 37100.37400.37600.38500.39400.40900.41900.62300.1127700 | Internal Plaster | 6.75d | 2025-10-23 | 2025-10-29 | 1181FS+0.25d |  | GC1 | 8831444 |
| 1185 | 37100.37400.37600.38500.39400.40900.41900.62300.1127800 | IPS flooring work | 10.12d | 2025-12-17 | 2025-12-26 | 1181, 1182, 1183 |  | GC1 | 8831454 |
| 1186 | 37100.37400.37600.38500.39400.40900.41900.62300.1127900 | Toilet dado work | 9d | 2025-12-17 | 2025-12-25 | 1183, 1184 |  | GC1 | 8831464 |
| 1187 | 37100.37400.37600.38500.39400.40900.41900.62300.1128000 | Toilet flooring work | 7.88d | 2025-12-25 | 2026-01-01 | 1186 |  | GC1 | 8831474 |
| 1188 | 37100.37400.37600.38500.39400.40900.41900.62300.1128100 | Living dinning flooring | 9d | 2026-01-01 | 2026-01-09 | 1181, 1187 |  | GC1 | 8831484 |
| 1189 | 37100.37400.37600.38500.39400.40900.41900.62300.1128200 | Aluminium door-window fixing | 13.5d | 2026-01-09 | 2026-01-21 | 1185, 1188 |  | GC1 | 8831494 |
| 1190 | 37100.37400.37600.38500.39400.40900.41900.62300.1128300 | Putty primer coat | 6.75d | 2026-01-09 | 2026-01-15 | 1188 |  | GC1 | 8831504 |
| 1191 | 37100.37400.37600.38500.39400.40900.41900.62300.1128400 | Door shutter fixing | 9d | 2026-01-09 | 2026-01-17 | 1188 |  | GC1 | 8831514 |
| 1192 | 37100.37400.37600.38500.39400.40900.41900.62300.1128500 | Electrical wiring work | 13.5d | 2026-01-17 | 2026-01-29 | 1191 |  | GC1 | 8831524 |
| 1193 | 37100.37400.37600.38500.39400.40900.41900.62300.1128600 | Painting 1st coat | 13.5d | 2026-01-29 | 2026-02-10 | 1190, 1191, 1192 |  | GC1 | 8831534 |
| 1194 | 37100.37400.37600.38500.39400.40900.41900.62300.1128700 | False ceiling | 11.25d | 2026-02-10 | 2026-02-20 | 1193 |  | GC1 | 8831544 |
| 1195 | 37100.37400.37600.38500.39400.40900.41900.62400 | **2nd Floor** | 106.62d | 2025-10-15 | 2026-03-04 |  | start no earlier than 2025-10-15 | GC1 | 8806554 |
| 1196 | 37100.37400.37600.38500.39400.40900.41900.62400.1128800 | Block Work | 11.25d | 2025-10-15 | 2025-10-25 | 1180FS+0.25d |  | GC1 | 8831554 |
| 1197 | 37100.37400.37600.38500.39400.40900.41900.62400.1128900 | Door Frame Fixing | 9d | 2025-10-25 | 2025-12-17 | 1181, 1196 |  | GC1 | 8831564 |
| 1198 | 37100.37400.37600.38500.39400.40900.41900.62400.1129000 | Internal Plumbing Works | 11.25d | 2025-10-25 | 2025-12-19 | 1182, 1196 |  | GC1 | 8831574 |
| 1199 | 37100.37400.37600.38500.39400.40900.41900.62400.1129100 | Waterproofing | 9d | 2025-12-19 | 2025-12-27 | 1183, 1198 |  | GC1 | 8831584 |
| 1200 | 37100.37400.37600.38500.39400.40900.41900.62400.1129200 | Internal Plaster | 6.75d | 2025-12-17 | 2025-12-23 | 1184FS+0.25d, 1197FS+0.25d |  | GC1 | 8831594 |
| 1201 | 37100.37400.37600.38500.39400.40900.41900.62400.1129300 | IPS flooring work | 10.12d | 2025-12-27 | 2026-01-05 | 1185, 1197, 1198, 1199 |  | GC1 | 8831604 |
| 1202 | 37100.37400.37600.38500.39400.40900.41900.62400.1129400 | Toilet dado work | 9d | 2025-12-27 | 2026-01-04 | 1186, 1199, 1200 |  | GC1 | 8831614 |
| 1203 | 37100.37400.37600.38500.39400.40900.41900.62400.1129500 | Toilet flooring work | 7.88d | 2026-01-04 | 2026-01-11 | 1187, 1202 |  | GC1 | 8831624 |
| 1204 | 37100.37400.37600.38500.39400.40900.41900.62400.1129600 | Living dinning flooring | 9d | 2026-01-09 | 2026-01-17 | 1188FS+0.25d, 1197FS+0.25d |  | GC1 | 8831634 |
| 1205 | 37100.37400.37600.38500.39400.40900.41900.62400.1129700 | Aluminium door-window fixing | 13.5d | 2026-01-21 | 2026-02-02 | 1189FS+0.25d, 1204FS+0.25d |  | GC1 | 8831644 |
| 1206 | 37100.37400.37600.38500.39400.40900.41900.62400.1129800 | Putty primer coat | 6.75d | 2026-01-17 | 2026-01-23 | 1190, 1204 |  | GC1 | 8831654 |
| 1207 | 37100.37400.37600.38500.39400.40900.41900.62400.1129900 | Door shutter fixing | 9d | 2026-01-17 | 2026-01-25 | 1191, 1204 |  | GC1 | 8831664 |
| 1208 | 37100.37400.37600.38500.39400.40900.41900.62400.1130000 | Electrical wiring work | 13.5d | 2026-01-29 | 2026-02-10 | 1192, 1207 |  | GC1 | 8831674 |
| 1209 | 37100.37400.37600.38500.39400.40900.41900.62400.1130100 | Painting 1st coat | 13.5d | 2026-02-10 | 2026-02-22 | 1193, 1206, 1207, 1208 |  | GC1 | 8831684 |
| 1210 | 37100.37400.37600.38500.39400.40900.41900.62400.1130200 | False ceiling | 11.25d | 2026-02-22 | 2026-03-04 | 1194, 1209 |  | GC1 | 8831694 |

| ID | WBS | Task | Duration | Start | Finish | Predecessors | Constraint | Calendar | Unique_Task_ID |
| --- | --- | --- | --- | --- | --- | --- | --- | --- | --- |
| 1211 | 37100.37400.37600.38500.39400.40900.41900.62700 | **3rd Floor** | 108.62d | 2025-10-25 | 2026-03-16 |  | start no earlier than 2025-10-25 | GC1 | 8806564 |
| 1212 | 37100.37400.37600.38500.39400.40900.41900.62700.1130300 | Block Work | 11.25d | 2025-10-25 | 2025-12-19 | 1196FS+0.25d |  | GC1 | 8831704 |
| 1213 | 37100.37400.37600.38500.39400.40900.41900.62700.1130400 | Door Frame Fixing | 9d | 2025-12-19 | 2025-12-27 | 1197, 1212 |  | GC1 | 8831714 |
| 1214 | 37100.37400.37600.38500.39400.40900.41900.62700.1130500 | Internal Plumbing Works | 11.25d | 2025-12-19 | 2025-12-29 | 1198, 1212 |  | GC1 | 8831724 |
| 1215 | 37100.37400.37600.38500.39400.40900.41900.62700.1130600 | Waterproofing | 9d | 2025-12-29 | 2026-01-06 | 1199, 1214 |  | GC1 | 8831734 |
| 1216 | 37100.37400.37600.38500.39400.40900.41900.62700.1130700 | Internal Plaster | 6.75d | 2025-12-27 | 2026-01-02 | 1200FS+0.25d, 1213FS+0.25d |  | GC1 | 8831744 |
| 1217 | 37100.37400.37600.38500.39400.40900.41900.62700.1130800 | IPS flooring work | 10.12d | 2026-01-06 | 2026-01-15 | 1201, 1213, 1215, 1216 |  | GC1 | 8831754 |
| 1218 | 37100.37400.37600.38500.39400.40900.41900.62700.1130900 | Toilet dado work | 9d | 2026-01-06 | 2026-01-14 | 1202, 1215, 1216 |  | GC1 | 8831764 |
| 1219 | 37100.37400.37600.38500.39400.40900.41900.62700.1131000 | Toilet flooring work | 7.88d | 2026-01-14 | 2026-01-21 | 1203, 1218 |  | GC1 | 8831774 |
| 1220 | 37100.37400.37600.38500.39400.40900.41900.62700.1131100 | Living dinning flooring | 9d | 2026-01-17 | 2026-01-25 | 1204FS+0.25d, 1213FS+0.25d |  | GC1 | 8831784 |
| 1221 | 37100.37400.37600.38500.39400.40900.41900.62700.1131200 | Aluminium door-window fixing | 13.5d | 2026-02-02 | 2026-02-14 | 1205FS+0.25d, 1220FS+0.25d |  | GC1 | 8831794 |
| 1222 | 37100.37400.37600.38500.39400.40900.41900.62700.1131300 | Putty primer coat | 6.75d | 2026-01-25 | 2026-01-31 | 1206, 1220 |  | GC1 | 8831804 |
| 1223 | 37100.37400.37600.38500.39400.40900.41900.62700.1131400 | Door shutter fixing | 9d | 2026-01-25 | 2026-02-02 | 1207, 1220 |  | GC1 | 8831814 |
| 1224 | 37100.37400.37600.38500.39400.40900.41900.62700.1131500 | Electrical wiring work | 13.5d | 2026-02-10 | 2026-02-22 | 1208, 1223 |  | GC1 | 8831824 |
| 1225 | 37100.37400.37600.38500.39400.40900.41900.62700.1131600 | Painting 1st coat | 13.5d | 2026-02-22 | 2026-03-06 | 1209, 1222, 1223, 1224 |  | GC1 | 8831834 |
| 1226 | 37100.37400.37600.38500.39400.40900.41900.62700.1131700 | False ceiling | 11.25d | 2026-03-06 | 2026-03-16 | 1210, 1225 |  | GC1 | 8831844 |
| 1227 | 37100.37400.37600.38500.39400.40900.41900.62800 | **4th Floor** | 110.62d | 2025-12-19 | 2026-03-28 |  | start no earlier than 2025-12-19 | GC1 | 8806574 |
| 1228 | 37100.37400.37600.38500.39400.40900.41900.62800.1131800 | Block Work | 9d | 2025-12-19 | 2025-12-27 | 1212FS+0.25d |  | GC1 | 8831854 |
| 1229 | 37100.37400.37600.38500.39400.40900.41900.62800.1131900 | Door Frame Fixing | 9d | 2025-12-27 | 2026-01-04 | 1213, 1228 |  | GC1 | 8831864 |
| 1230 | 37100.37400.37600.38500.39400.40900.41900.62800.1132000 | Internal Plumbing Works | 11.25d | 2025-12-29 | 2026-01-08 | 1214, 1228 |  | GC1 | 8831874 |
| 1231 | 37100.37400.37600.38500.39400.40900.41900.62800.1132100 | Waterproofing | 9d | 2026-01-08 | 2026-01-16 | 1215, 1230 |  | GC1 | 8831884 |
| 1232 | 37100.37400.37600.38500.39400.40900.41900.62800.1132200 | Internal Plaster | 6.75d | 2026-01-05 | 2026-01-11 | 1216FS+0.25d, 1229FS+0.25d |  | GC1 | 8831894 |
| 1233 | 37100.37400.37600.38500.39400.40900.41900.62800.1132300 | IPS flooring work | 10.12d | 2026-01-16 | 2026-01-25 | 1217, 1229, 1231, 1232 |  | GC1 | 8831904 |
| 1234 | 37100.37400.37600.38500.39400.40900.41900.62800.1132400 | Toilet dado work | 9d | 2026-01-16 | 2026-01-24 | 1218, 1231, 1232 |  | GC1 | 8831914 |
| 1235 | 37100.37400.37600.38500.39400.40900.41900.62800.1132500 | Toilet flooring work | 7.88d | 2026-01-24 | 2026-01-31 | 1219, 1234 |  | GC1 | 8831924 |
| 1236 | 37100.37400.37600.38500.39400.40900.41900.62800.1132600 | Living dinning flooring | 9d | 2026-01-25 | 2026-02-02 | 1220FS+0.25d, 1229FS+0.25d |  | GC1 | 8831934 |
| 1237 | 37100.37400.37600.38500.39400.40900.41900.62800.1132700 | Aluminium door-window fixing | 13.5d | 2026-02-14 | 2026-02-26 | 1221FS+0.25d, 1236FS+0.25d |  | GC1 | 8831944 |
| 1238 | 37100.37400.37600.38500.39400.40900.41900.62800.1132800 | Putty primer coat | 6.75d | 2026-02-02 | 2026-02-08 | 1222, 1236 |  | GC1 | 8831954 |
| 1239 | 37100.37400.37600.38500.39400.40900.41900.62800.1132900 | Door shutter fixing | 9d | 2026-02-02 | 2026-02-10 | 1223, 1236 |  | GC1 | 8831964 |
| 1240 | 37100.37400.37600.38500.39400.40900.41900.62800.1133000 | Electrical wiring work | 13.5d | 2026-02-22 | 2026-03-06 | 1224, 1239 |  | GC1 | 8831974 |
| 1241 | 37100.37400.37600.38500.39400.40900.41900.62800.1133100 | Painting 1st coat | 13.5d | 2026-03-06 | 2026-03-18 | 1225, 1238, 1239, 1240 |  | GC1 | 8831984 |
| 1242 | 37100.37400.37600.38500.39400.40900.41900.62800.1133200 | False ceiling | 11.25d | 2026-03-18 | 2026-03-28 | 1226, 1241 |  | GC1 | 8831994 |

| ID | WBS | Task | Duration | Start | Finish | Predecessors | Constraint | Calendar | Unique_Task_ID |
| --- | --- | --- | --- | --- | --- | --- | --- | --- | --- |
| 1243 | 37100.37400.37600.38500.39400.40900.41900.62900 | **5th Floor** | 118.25d | 2025-12-28 | 2026-04-12 |  | start no earlier than 2025-12-28 | GC1 | 8806584 |
| 1244 | 37100.37400.37600.38500.39400.40900.41900.62900.1133300 | Block Work | 9d | 2025-12-28 | 2026-01-05 | 1228FS+0.25d |  | GC1 | 8832004 |
| 1245 | 37100.37400.37600.38500.39400.40900.41900.62900.1133400 | Door Frame Fixing | 9d | 2026-01-05 | 2026-01-13 | 1229, 1244 |  | GC1 | 8832014 |
| 1246 | 37100.37400.37600.38500.39400.40900.41900.62900.1133500 | Internal Plumbing Works | 11.25d | 2026-01-08 | 2026-01-18 | 1230, 1244 |  | GC1 | 8832024 |
| 1247 | 37100.37400.37600.38500.39400.40900.41900.62900.1133600 | Waterproofing | 9d | 2026-01-18 | 2026-01-26 | 1231, 1246 |  | GC1 | 8832034 |
| 1248 | 37100.37400.37600.38500.39400.40900.41900.62900.1133700 | Internal Plaster | 6.75d | 2026-01-13 | 2026-01-19 | 1232FS+0.25d, 1245FS+0.25d |  | GC1 | 8832044 |
| 1249 | 37100.37400.37600.38500.39400.40900.41900.62900.1133800 | IPS flooring work | 10.12d | 2026-01-26 | 2026-02-04 | 1233, 1245, 1247, 1248 |  | GC1 | 8832054 |
| 1250 | 37100.37400.37600.38500.39400.40900.41900.62900.1133900 | Toilet dado work | 9d | 2026-01-26 | 2026-02-03 | 1234, 1247, 1248 |  | GC1 | 8832064 |
| 1251 | 37100.37400.37600.38500.39400.40900.41900.62900.1134000 | Toilet flooring work | 7.88d | 2026-02-03 | 2026-02-10 | 1235, 1250 |  | GC1 | 8832074 |
| 1252 | 37100.37400.37600.38500.39400.40900.41900.62900.1134100 | Living dinning flooring | 9d | 2026-02-03 | 2026-02-11 | 1236FS+0.25d, 1245FS+0.25d |  | GC1 | 8832084 |
| 1253 | 37100.37400.37600.38500.39400.40900.41900.62900.1134200 | Aluminium door-window fixing | 13.5d | 2026-02-27 | 2026-03-11 | 1237FS+0.25d, 1252FS+0.25d |  | GC1 | 8832094 |
| 1254 | 37100.37400.37600.38500.39400.40900.41900.62900.1134300 | Putty primer coat | 6.75d | 2026-02-11 | 2026-02-17 | 1238, 1252 |  | GC1 | 8832104 |
| 1255 | 37100.37400.37600.38500.39400.40900.41900.62900.1134400 | Door shutter fixing | 9d | 2026-02-11 | 2026-02-19 | 1239, 1252 |  | GC1 | 8832114 |
| 1256 | 37100.37400.37600.38500.39400.40900.41900.62900.1134500 | Electrical wiring work | 13.5d | 2026-03-06 | 2026-03-18 | 1240, 1255 |  | GC1 | 8832124 |
| 1257 | 37100.37400.37600.38500.39400.40900.41900.62900.1134600 | Painting 1st coat | 16.88d | 2026-03-18 | 2026-04-02 | 1241, 1254, 1255, 1256 |  | GC1 | 8832134 |
| 1258 | 37100.37400.37600.38500.39400.40900.41900.62900.1134700 | False ceiling | 11.25d | 2026-04-02 | 2026-04-12 | 1242, 1257 |  | GC1 | 8832144 |
| 1259 | 37100.37400.37600.38500.39400.40900.41900.63000 | **6th Floor** | 122.5d | 2026-01-05 | 2026-04-24 |  | start no earlier than 2026-01-05 | GC1 | 8806594 |
| 1260 | 37100.37400.37600.38500.39400.40900.41900.63000.1134800 | Block Work | 9d | 2026-01-05 | 2026-01-13 | 1244FS+0.25d |  | GC1 | 8832154 |
| 1261 | 37100.37400.37600.38500.39400.40900.41900.63000.1134900 | Door Frame Fixing | 9d | 2026-01-13 | 2026-01-21 | 993, 1245 |  | GC1 | 8832164 |
| 1262 | 37100.37400.37600.38500.39400.40900.41900.63000.1135000 | Internal Plumbing Works | 11.25d | 2026-01-18 | 2026-01-28 | 1246, 1260 |  | GC1 | 8832174 |
| 1263 | 37100.37400.37600.38500.39400.40900.41900.63000.1135100 | Waterproofing | 9d | 2026-01-28 | 2026-02-05 | 1247, 1262 |  | GC1 | 8832184 |
| 1264 | 37100.37400.37600.38500.39400.40900.41900.63000.1135200 | Internal Plaster | 6.75d | 2026-02-05 | 2026-02-11 | 1248FS+0.25d, 1261FS+0.25d, 1262FS+0.25d, 1263FS+0.25d |  | GC1 | 8832194 |
| 1265 | 37100.37400.37600.38500.39400.40900.41900.63000.1135300 | IPS flooring work | 10.12d | 2026-02-11 | 2026-02-20 | 1249, 1261, 1263, 1264 |  | GC1 | 8832204 |
| 1266 | 37100.37400.37600.38500.39400.40900.41900.63000.1135400 | Toilet dado work | 9d | 2026-02-11 | 2026-02-19 | 1250, 1263, 1264 |  | GC1 | 8832214 |
| 1267 | 37100.37400.37600.38500.39400.40900.41900.63000.1135500 | Toilet flooring work | 7.88d | 2026-02-19 | 2026-02-26 | 1251, 1266 |  | GC1 | 8832224 |
| 1268 | 37100.37400.37600.38500.39400.40900.41900.63000.1135600 | Living dinning flooring | 9d | 2026-02-11 | 2026-02-19 | 1252FS+0.25d, 1261FS+0.25d |  | GC1 | 8832234 |
| 1269 | 37100.37400.37600.38500.39400.40900.41900.63000.1135700 | Aluminium door-window fixing | 13.5d | 2026-03-11 | 2026-03-23 | 1253FS+0.25d, 1268FS+0.25d |  | GC1 | 8832244 |
| 1270 | 37100.37400.37600.38500.39400.40900.41900.63000.1135800 | Putty primer coat | 6.75d | 2026-02-19 | 2026-02-25 | 1254, 1268 |  | GC1 | 8832254 |
| 1271 | 37100.37400.37600.38500.39400.40900.41900.63000.1135900 | Door shutter fixing | 9d | 2026-02-19 | 2026-02-27 | 1255, 1268 |  | GC1 | 8832264 |
| 1272 | 37100.37400.37600.38500.39400.40900.41900.63000.1136000 | Electrical wiring work | 13.5d | 2026-03-18 | 2026-03-30 | 1256, 1271 |  | GC1 | 8832274 |
| 1273 | 37100.37400.37600.38500.39400.40900.41900.63000.1136100 | Painting 1st coat | 13.5d | 2026-04-02 | 2026-04-14 | 1257, 1270, 1271, 1272 |  | GC1 | 8832284 |
| 1274 | 37100.37400.37600.38500.39400.40900.41900.63000.1136200 | False ceiling | 11.25d | 2026-04-14 | 2026-04-24 | 1258, 1273 |  | GC1 | 8832294 |

| ID | WBS | Task | Duration | Start | Finish | Predecessors | Constraint | Calendar | Unique_Task_ID |
| --- | --- | --- | --- | --- | --- | --- | --- | --- | --- |
| 1275 | 37100.37400.37600.38500.39400.40900.41900.63100 | **7th Floor** | 126.75d | 2026-01-13 | 2026-05-06 |  | start no earlier than 2026-01-13 | GC1 | 8806604 |
| 1276 | 37100.37400.37600.38500.39400.40900.41900.63100.1136300 | Block Work | 9d | 2026-01-13 | 2026-01-21 | 1260FS+0.25d |  | GC1 | 8832304 |
| 1277 | 37100.37400.37600.38500.39400.40900.41900.63100.1136400 | Door Frame Fixing | 9d | 2026-01-21 | 2026-01-29 | 1261, 1276 |  | GC1 | 8832314 |
| 1278 | 37100.37400.37600.38500.39400.40900.41900.63100.1136500 | Internal Plumbing Works | 11.25d | 2026-01-28 | 2026-02-07 | 1262, 1276 |  | GC1 | 8832324 |
| 1279 | 37100.37400.37600.38500.39400.40900.41900.63100.1136600 | Waterproofing | 9d | 2026-02-07 | 2026-02-15 | 1263, 1278 |  | GC1 | 8832334 |
| 1280 | 37100.37400.37600.38500.39400.40900.41900.63100.1136700 | Internal Plaster | 6.75d | 2026-02-15 | 2026-02-21 | 1264FS+0.25d, 1277FS+0.25d, 1278FS+0.25d, 1279FS+0.25d |  | GC1 | 8832344 |
| 1281 | 37100.37400.37600.38500.39400.40900.41900.63100.1136800 | IPS flooring work | 10.12d | 2026-02-21 | 2026-03-02 | 1265, 1277, 1279, 1280 |  | GC1 | 8832354 |
| 1282 | 37100.37400.37600.38500.39400.40900.41900.63100.1136900 | Toilet dado work | 9d | 2026-02-21 | 2026-03-01 | 1266, 1279, 1280 |  | GC1 | 8832364 |
| 1283 | 37100.37400.37600.38500.39400.40900.41900.63100.1137000 | Toilet flooring work | 7.88d | 2026-03-01 | 2026-03-08 | 1267, 1282 |  | GC1 | 8832374 |
| 1284 | 37100.37400.37600.38500.39400.40900.41900.63100.1137100 | Living dinning flooring | 9d | 2026-02-19 | 2026-02-27 | 1268FS+0.25d, 1277FS+0.25d |  | GC1 | 8832384 |
| 1285 | 37100.37400.37600.38500.39400.40900.41900.63100.1137200 | Aluminium door-window fixing | 9d | 2026-03-23 | 2026-03-31 | 1269FS+0.25d, 1284FS+0.25d |  | GC1 | 8832394 |
| 1286 | 37100.37400.37600.38500.39400.40900.41900.63100.1137300 | Putty primer coat | 6.75d | 2026-02-27 | 2026-03-05 | 1270, 1284 |  | GC1 | 8832404 |
| 1287 | 37100.37400.37600.38500.39400.40900.41900.63100.1137400 | Door shutter fixing | 9d | 2026-02-27 | 2026-03-07 | 1271, 1284 |  | GC1 | 8832414 |
| 1288 | 37100.37400.37600.38500.39400.40900.41900.63100.1137500 | Electrical wiring work | 13.5d | 2026-03-30 | 2026-04-11 | 1272, 1287 |  | GC1 | 8832424 |
| 1289 | 37100.37400.37600.38500.39400.40900.41900.63100.1137600 | Painting 1st coat | 13.5d | 2026-04-14 | 2026-04-26 | 1273, 1286, 1287, 1288 |  | GC1 | 8832434 |
| 1290 | 37100.37400.37600.38500.39400.40900.41900.63100.1137700 | False ceiling | 11.25d | 2026-04-26 | 2026-05-06 | 1274, 1289 |  | GC1 | 8832444 |
| 1291 | 37100.37400.37600.38500.39400.40900.41900.63200 | **8th Floor** | 131d | 2026-01-21 | 2026-05-18 |  | start no earlier than 2026-01-21 | GC1 | 8806614 |
| 1292 | 37100.37400.37600.38500.39400.40900.41900.63200.1137800 | Block Work | 9d | 2026-01-21 | 2026-01-29 | 1276FS+0.25d |  | GC1 | 8832454 |
| 1293 | 37100.37400.37600.38500.39400.40900.41900.63200.1137900 | Door Frame Fixing | 9d | 2026-01-29 | 2026-02-06 | 1277, 1292 |  | GC1 | 8832464 |
| 1294 | 37100.37400.37600.38500.39400.40900.41900.63200.1138000 | Internal Plumbing Works | 11.25d | 2026-02-07 | 2026-02-17 | 1278, 1292 |  | GC1 | 8832474 |
| 1295 | 37100.37400.37600.38500.39400.40900.41900.63200.1138100 | Waterproofing | 9d | 2026-02-17 | 2026-02-25 | 1279, 1294 |  | GC1 | 8832484 |
| 1296 | 37100.37400.37600.38500.39400.40900.41900.63200.1138200 | Internal Plaster | 6.75d | 2026-02-22 | 2026-02-28 | 1280FS+0.25d, 1293FS+0.25d |  | GC1 | 8832494 |
| 1297 | 37100.37400.37600.38500.39400.40900.41900.63200.1138300 | IPS flooring work | 10.12d | 2026-03-02 | 2026-03-11 | 1281, 1293, 1295, 1296 |  | GC1 | 8832504 |
| 1298 | 37100.37400.37600.38500.39400.40900.41900.63200.1138400 | Toilet dado work | 9d | 2026-03-01 | 2026-03-09 | 1282, 1295, 1296 |  | GC1 | 8832514 |
| 1299 | 37100.37400.37600.38500.39400.40900.41900.63200.1138500 | Toilet flooring work | 7.88d | 2026-03-09 | 2026-03-16 | 1283, 1298 |  | GC1 | 8832524 |
| 1300 | 37100.37400.37600.38500.39400.40900.41900.63200.1138600 | Living dinning flooring | 9d | 2026-02-27 | 2026-03-07 | 1284FS+0.25d, 1293FS+0.25d |  | GC1 | 8832534 |
| 1301 | 37100.37400.37600.38500.39400.40900.41900.63200.1138700 | Aluminium door-window fixing | 13.5d | 2026-03-31 | 2026-04-12 | 1285FS+0.25d, 1300FS+0.25d |  | GC1 | 8832544 |
| 1302 | 37100.37400.37600.38500.39400.40900.41900.63200.1138800 | Putty primer coat | 6.75d | 2026-03-07 | 2026-03-13 | 1286, 1300 |  | GC1 | 8832554 |
| 1303 | 37100.37400.37600.38500.39400.40900.41900.63200.1138900 | Door shutter fixing | 9d | 2026-03-07 | 2026-03-15 | 1287, 1300 |  | GC1 | 8832564 |
| 1304 | 37100.37400.37600.38500.39400.40900.41900.63200.1139000 | Electrical wiring work | 13.5d | 2026-04-11 | 2026-04-23 | 1288, 1303 |  | GC1 | 8832574 |
| 1305 | 37100.37400.37600.38500.39400.40900.41900.63200.1139100 | Painting 1st coat | 13.5d | 2026-04-26 | 2026-05-08 | 1289, 1302, 1303, 1304 |  | GC1 | 8832584 |
| 1306 | 37100.37400.37600.38500.39400.40900.41900.63200.1139200 | False ceiling | 11.25d | 2026-05-08 | 2026-05-18 | 1290, 1305 |  | GC1 | 8832594 |

| ID | WBS | Task | Duration | Start | Finish | Predecessors | Constraint | Calendar | Unique_Task_ID |
| --- | --- | --- | --- | --- | --- | --- | --- | --- | --- |
| 1307 | 37100.37400.37600.38500.39400.40900.41900.63300 | **9th Floor** | 135.25d | 2026-01-30 | 2026-05-30 |  | start no earlier than 2026-01-30 | GC1 | 8806624 |
| 1308 | 37100.37400.37600.38500.39400.40900.41900.63300.1139300 | Block Work | 9d | 2026-01-30 | 2026-02-06 | 1292FS+0.25d |  | GC1 | 8832604 |
| 1309 | 37100.37400.37600.38500.39400.40900.41900.63300.1139400 | Door Frame Fixing | 9d | 2026-02-07 | 2026-02-14 | 1293, 1308 |  | GC1 | 8832614 |
| 1310 | 37100.37400.37600.38500.39400.40900.41900.63300.1139500 | Internal Plumbing Works | 11.25d | 2026-02-17 | 2026-02-27 | 1294, 1308 |  | GC1 | 8832624 |
| 1311 | 37100.37400.37600.38500.39400.40900.41900.63300.1139600 | Waterproofing | 9d | 2026-02-27 | 2026-03-07 | 1295, 1310 |  | GC1 | 8832634 |
| 1312 | 37100.37400.37600.38500.39400.40900.41900.63300.1139700 | Internal Plaster | 6.75d | 2026-02-28 | 2026-03-06 | 1296FS+0.25d, 1309FS+0.25d |  | GC1 | 8832644 |
| 1313 | 37100.37400.37600.38500.39400.40900.41900.63300.1139800 | IPS flooring work | 10.12d | 2026-03-11 | 2026-03-20 | 1297, 1309, 1311, 1312 |  | GC1 | 8832654 |
| 1314 | 37100.37400.37600.38500.39400.40900.41900.63300.1139900 | Toilet dado work | 9d | 2026-03-09 | 2026-03-17 | 1298, 1311, 1312 |  | GC1 | 8832664 |
| 1315 | 37100.37400.37600.38500.39400.40900.41900.63300.1140000 | Toilet flooring work | 7.88d | 2026-03-17 | 2026-03-24 | 1299, 1314 |  | GC1 | 8832674 |
| 1316 | 37100.37400.37600.38500.39400.40900.41900.63300.1140100 | Living dinning flooring | 9d | 2026-03-08 | 2026-03-15 | 1300FS+0.25d, 1309FS+0.25d |  | GC1 | 8832684 |
| 1317 | 37100.37400.37600.38500.39400.40900.41900.63300.1140200 | Aluminium door-window fixing | 13.5d | 2026-04-13 | 2026-04-24 | 1301FS+0.25d, 1316FS+0.25d |  | GC1 | 8832694 |
| 1318 | 37100.37400.37600.38500.39400.40900.41900.63300.1140300 | Putty primer coat | 6.75d | 2026-03-16 | 2026-03-21 | 1302, 1316 |  | GC1 | 8832704 |
| 1319 | 37100.37400.37600.38500.39400.40900.41900.63300.1140400 | Door shutter fixing | 9d | 2026-03-16 | 2026-03-23 | 1303, 1316 |  | GC1 | 8832714 |
| 1320 | 37100.37400.37600.38500.39400.40900.41900.63300.1140500 | Electrical wiring work | 13.5d | 2026-04-23 | 2026-05-05 | 1304, 1319 |  | GC1 | 8832724 |
| 1321 | 37100.37400.37600.38500.39400.40900.41900.63300.1140600 | Painting 1st coat | 13.5d | 2026-05-08 | 2026-05-20 | 1305, 1318, 1319, 1320 |  | GC1 | 8832734 |
| 1322 | 37100.37400.37600.38500.39400.40900.41900.63300.1140700 | False ceiling | 11.25d | 2026-05-20 | 2026-05-30 | 1306, 1321 |  | GC1 | 8832744 |
| 1323 | 37100.37400.37600.38500.39400.40900.41900.63400 | **10th Floor** | 139.5d | 2026-02-07 | 2026-06-11 |  | start no earlier than 2026-02-07 | GC1 | 8806634 |
| 1324 | 37100.37400.37600.38500.39400.40900.41900.63400.1140800 | Block Work | 9d | 2026-02-07 | 2026-02-15 | 1308FS+0.25d |  | GC1 | 8832754 |
| 1325 | 37100.37400.37600.38500.39400.40900.41900.63400.1140900 | Door Frame Fixing | 9d | 2026-02-15 | 2026-02-23 | 1309, 1324 |  | GC1 | 8832764 |
| 1326 | 37100.37400.37600.38500.39400.40900.41900.63400.1141000 | Internal Plumbing Works | 11.25d | 2026-02-27 | 2026-03-09 | 1310, 1324 |  | GC1 | 8832774 |
| 1327 | 37100.37400.37600.38500.39400.40900.41900.63400.1141100 | Waterproofing | 9d | 2026-03-09 | 2026-03-17 | 1311, 1326 |  | GC1 | 8832784 |
| 1328 | 37100.37400.37600.38500.39400.40900.41900.63400.1141200 | Internal Plaster | 6.75d | 2026-03-06 | 2026-03-12 | 1312FS+0.25d, 1325FS+0.25d |  | GC1 | 8832794 |
| 1329 | 37100.37400.37600.38500.39400.40900.41900.63400.1141300 | IPS flooring work | 10.12d | 2026-03-20 | 2026-03-29 | 1313, 1325, 1327, 1328 |  | GC1 | 8832804 |
| 1330 | 37100.37400.37600.38500.39400.40900.41900.63400.1141400 | Toilet dado work | 9d | 2026-03-17 | 2026-03-25 | 1314, 1327, 1328 |  | GC1 | 8832814 |
| 1331 | 37100.37400.37600.38500.39400.40900.41900.63400.1141500 | Toilet flooring work | 7.88d | 2026-03-25 | 2026-04-01 | 1315, 1330 |  | GC1 | 8832824 |
| 1332 | 37100.37400.37600.38500.39400.40900.41900.63400.1141600 | Living dinning flooring | 9d | 2026-03-16 | 2026-03-24 | 1316FS+0.25d, 1325FS+0.25d |  | GC1 | 8832834 |
| 1333 | 37100.37400.37600.38500.39400.40900.41900.63400.1141700 | Aluminium door-window fixing | 13.5d | 2026-04-25 | 2026-05-07 | 1317FS+0.25d, 1332FS+0.25d |  | GC1 | 8832844 |
| 1334 | 37100.37400.37600.38500.39400.40900.41900.63400.1141800 | Putty primer coat | 6.75d | 2026-03-24 | 2026-03-30 | 1318, 1332 |  | GC1 | 8832854 |
| 1335 | 37100.37400.37600.38500.39400.40900.41900.63400.1141900 | Door shutter fixing | 9d | 2026-03-24 | 2026-04-01 | 1319, 1332 |  | GC1 | 8832864 |
| 1336 | 37100.37400.37600.38500.39400.40900.41900.63400.1142000 | Electrical wiring work | 13.5d | 2026-05-05 | 2026-05-17 | 1320, 1335 |  | GC1 | 8832874 |
| 1337 | 37100.37400.37600.38500.39400.40900.41900.63400.1142100 | Painting 1st coat | 13.5d | 2026-05-20 | 2026-06-01 | 1321, 1334, 1335, 1336 |  | GC1 | 8832884 |
| 1338 | 37100.37400.37600.38500.39400.40900.41900.63400.1142200 | False ceiling | 11.25d | 2026-06-01 | 2026-06-11 | 1322, 1337 |  | GC1 | 8832894 |

| ID | WBS | Task | Duration | Start | Finish | Predecessors | Constraint | Calendar | Unique_Task_ID |
| --- | --- | --- | --- | --- | --- | --- | --- | --- | --- |
| 1339 | 37100.37400.37600.38500.39400.40900.41900.63500 | **11th Floor** | 143.75d | 2026-02-15 | 2026-06-23 |  | start no earlier than 2026-02-15 | GC1 | 8806644 |
| 1340 | 37100.37400.37600.38500.39400.40900.41900.63500.1142300 | Block Work | 9d | 2026-02-15 | 2026-02-23 | 1324FS+0.25d |  | GC1 | 8832904 |
| 1341 | 37100.37400.37600.38500.39400.40900.41900.63500.1142400 | Door Frame Fixing | 9d | 2026-02-23 | 2026-03-03 | 1325, 1340 |  | GC1 | 8832914 |
| 1342 | 37100.37400.37600.38500.39400.40900.41900.63500.1142500 | Internal Plumbing Works | 11.25d | 2026-03-09 | 2026-03-19 | 1326, 1340 |  | GC1 | 8832924 |
| 1343 | 37100.37400.37600.38500.39400.40900.41900.63500.1142600 | Waterproofing | 9d | 2026-03-19 | 2026-03-27 | 1327, 1342 |  | GC1 | 8832934 |
| 1344 | 37100.37400.37600.38500.39400.40900.41900.63500.1142700 | Internal Plaster | 6.75d | 2026-03-12 | 2026-03-18 | 1328FS+0.25d, 1341FS+0.25d |  | GC1 | 8832944 |
| 1345 | 37100.37400.37600.38500.39400.40900.41900.63500.1142800 | IPS flooring work | 10.12d | 2026-03-29 | 2026-04-07 | 1329, 1341, 1342, 1343 |  | GC1 | 8832954 |
| 1346 | 37100.37400.37600.38500.39400.40900.41900.63500.1142900 | Toilet dado work | 9d | 2026-03-27 | 2026-04-04 | 1330, 1343, 1344 |  | GC1 | 8832964 |
| 1347 | 37100.37400.37600.38500.39400.40900.41900.63500.1143000 | Toilet flooring work | 7.88d | 2026-04-04 | 2026-04-11 | 1331, 1346 |  | GC1 | 8832974 |
| 1348 | 37100.37400.37600.38500.39400.40900.41900.63500.1143100 | Living dinning flooring | 9d | 2026-03-24 | 2026-04-01 | 1332FS+0.25d, 1341FS+0.25d |  | GC1 | 8832984 |
| 1349 | 37100.37400.37600.38500.39400.40900.41900.63500.1143200 | Aluminium door-window fixing | 13.5d | 2026-05-07 | 2026-05-19 | 1333FS+0.25d, 1348FS+0.25d |  | GC1 | 8832994 |
| 1350 | 37100.37400.37600.38500.39400.40900.41900.63500.1143300 | Putty primer coat | 6.75d | 2026-04-01 | 2026-04-07 | 1334, 1348 |  | GC1 | 8833004 |
| 1351 | 37100.37400.37600.38500.39400.40900.41900.63500.1143400 | Door shutter fixing | 9d | 2026-04-01 | 2026-04-09 | 1335, 1348 |  | GC1 | 8833014 |
| 1352 | 37100.37400.37600.38500.39400.40900.41900.63500.1143500 | Electrical wiring work | 13.5d | 2026-05-17 | 2026-05-29 | 1336, 1351 |  | GC1 | 8833024 |
| 1353 | 37100.37400.37600.38500.39400.40900.41900.63500.1143600 | Painting 1st coat | 13.5d | 2026-06-01 | 2026-06-13 | 1337, 1350, 1351, 1352 |  | GC1 | 8833034 |
| 1354 | 37100.37400.37600.38500.39400.40900.41900.63500.1143700 | False ceiling | 11.25d | 2026-06-13 | 2026-06-23 | 1338, 1353 |  | GC1 | 8833044 |
| 1355 | 37100.37400.37600.38500.39400.40900.41900.63600 | **12th Floor** | 148d | 2026-02-23 | 2026-07-05 |  | start no earlier than 2026-02-23 | GC1 | 8806654 |
| 1356 | 37100.37400.37600.38500.39400.40900.41900.63600.1143800 | Block Work | 9d | 2026-02-23 | 2026-03-03 | 1340FS+0.25d |  | GC1 | 8833054 |
| 1357 | 37100.37400.37600.38500.39400.40900.41900.63600.1143900 | Door Frame Fixing | 9d | 2026-03-03 | 2026-03-11 | 1341, 1356 |  | GC1 | 8833064 |
| 1358 | 37100.37400.37600.38500.39400.40900.41900.63600.1144000 | Internal Plumbing Works | 11.25d | 2026-03-19 | 2026-03-29 | 1342, 1356 |  | GC1 | 8833074 |
| 1359 | 37100.37400.37600.38500.39400.40900.41900.63600.1144100 | Waterproofing | 9d | 2026-03-29 | 2026-04-06 | 1343, 1358 |  | GC1 | 8833084 |
| 1360 | 37100.37400.37600.38500.39400.40900.41900.63600.1144200 | Internal Plaster | 4.5d | 2026-03-19 | 2026-03-22 | 1344FS+0.25d, 1357FS+0.25d |  | GC1 | 8833094 |
| 1361 | 37100.37400.37600.38500.39400.40900.41900.63600.1144300 | IPS flooring work | 10.12d | 2026-04-07 | 2026-04-16 | 1345, 1357, 1358, 1359 |  | GC1 | 8833104 |
| 1362 | 37100.37400.37600.38500.39400.40900.41900.63600.1144400 | Toilet dado work | 9d | 2026-04-06 | 2026-04-14 | 1346, 1359, 1360 |  | GC1 | 8833114 |
| 1363 | 37100.37400.37600.38500.39400.40900.41900.63600.1144500 | Toilet flooring work | 7.88d | 2026-04-14 | 2026-04-21 | 1347, 1362 |  | GC1 | 8833124 |
| 1364 | 37100.37400.37600.38500.39400.40900.41900.63600.1144600 | Living dinning flooring | 9d | 2026-04-01 | 2026-04-09 | 1348FS+0.25d, 1357FS+0.25d |  | GC1 | 8833134 |
| 1365 | 37100.37400.37600.38500.39400.40900.41900.63600.1144700 | Aluminium door-window fixing | 13.5d | 2026-05-19 | 2026-05-31 | 1349, 1361, 1364 |  | GC1 | 8833144 |
| 1366 | 37100.37400.37600.38500.39400.40900.41900.63600.1144800 | Putty primer coat | 6.75d | 2026-04-09 | 2026-04-15 | 1350, 1364 |  | GC1 | 8833154 |
| 1367 | 37100.37400.37600.38500.39400.40900.41900.63600.1144900 | Door shutter fixing | 9d | 2026-04-09 | 2026-04-17 | 1351, 1364 |  | GC1 | 8833164 |
| 1368 | 37100.37400.37600.38500.39400.40900.41900.63600.1145000 | Electrical wiring work | 13.5d | 2026-05-29 | 2026-06-10 | 1352, 1367 |  | GC1 | 8833174 |
| 1369 | 37100.37400.37600.38500.39400.40900.41900.63600.1145100 | Painting 1st coat | 13.5d | 2026-06-13 | 2026-06-25 | 1353, 1366, 1367, 1368 |  | GC1 | 8833184 |
| 1370 | 37100.37400.37600.38500.39400.40900.41900.63600.1145200 | False ceiling | 11.25d | 2026-06-25 | 2026-07-05 | 1354, 1369 |  | GC1 | 8833194 |

| ID | WBS | Task | Duration | Start | Finish | Predecessors | Constraint | Calendar | Unique_Task_ID |
| --- | --- | --- | --- | --- | --- | --- | --- | --- | --- |
| 1371 | 37100.37400.37600.38500.39400.40900.41900.63700 | **13th Floor** | 152.25d | 2026-03-03 | 2026-07-17 |  | start no earlier than 2026-03-03 | GC1 | 8806664 |
| 1372 | 37100.37400.37600.38500.39400.40900.41900.63700.1145300 | Block Work | 9d | 2026-03-03 | 2026-03-11 | 1356FS+0.25d |  | GC1 | 8833204 |
| 1373 | 37100.37400.37600.38500.39400.40900.41900.63700.1145400 | Door Frame Fixing | 9d | 2026-03-11 | 2026-03-19 | 1357, 1372 |  | GC1 | 8833214 |
| 1374 | 37100.37400.37600.38500.39400.40900.41900.63700.1145500 | Internal Plumbing Works | 11.25d | 2026-03-29 | 2026-04-08 | 1358, 1372 |  | GC1 | 8833224 |
| 1375 | 37100.37400.37600.38500.39400.40900.41900.63700.1145600 | Waterproofing | 9d | 2026-04-08 | 2026-04-16 | 1359, 1374 |  | GC1 | 8833234 |
| 1376 | 37100.37400.37600.38500.39400.40900.41900.63700.1145700 | Internal Plaster | 4.5d | 2026-03-23 | 2026-03-27 | 1360FS+0.25d, 1373FS+0.25d |  | GC1 | 8833244 |
| 1377 | 37100.37400.37600.38500.39400.40900.41900.63700.1145800 | IPS flooring work | 10.12d | 2026-04-16 | 2026-04-25 | 1361, 1373, 1375, 1376 |  | GC1 | 8833254 |
| 1378 | 37100.37400.37600.38500.39400.40900.41900.63700.1145900 | Toilet dado work | 9d | 2026-04-16 | 2026-04-24 | 1362, 1375, 1376 |  | GC1 | 8833264 |
| 1379 | 37100.37400.37600.38500.39400.40900.41900.63700.1146000 | Toilet flooring work | 7.88d | 2026-04-24 | 2026-05-01 | 1363, 1378 |  | GC1 | 8833274 |
| 1380 | 37100.37400.37600.38500.39400.40900.41900.63700.1146100 | Living dinning flooring | 9d | 2026-05-01 | 2026-05-09 | 1364, 1373, 1379 |  | GC1 | 8833284 |
| 1381 | 37100.37400.37600.38500.39400.40900.41900.63700.1146200 | Aluminium door-window fixing | 13.5d | 2026-05-31 | 2026-06-12 | 1365, 1377, 1380 |  | GC1 | 8833294 |
| 1382 | 37100.37400.37600.38500.39400.40900.41900.63700.1146300 | Putty primer coat | 6.75d | 2026-05-09 | 2026-05-15 | 1366, 1380 |  | GC1 | 8833304 |
| 1383 | 37100.37400.37600.38500.39400.40900.41900.63700.1146400 | Door shutter fixing | 9d | 2026-05-09 | 2026-05-17 | 1367, 1380 |  | GC1 | 8833314 |
| 1384 | 37100.37400.37600.38500.39400.40900.41900.63700.1146500 | Electrical wiring work | 13.5d | 2026-06-10 | 2026-06-22 | 1368, 1383 |  | GC1 | 8833324 |
| 1385 | 37100.37400.37600.38500.39400.40900.41900.63700.1146600 | Painting 1st coat | 13.5d | 2026-06-25 | 2026-07-07 | 1369, 1382, 1383, 1384 |  | GC1 | 8833334 |
| 1386 | 37100.37400.37600.38500.39400.40900.41900.63700.1146700 | False ceiling | 11.25d | 2026-07-07 | 2026-07-17 | 1370, 1385 |  | GC1 | 8833344 |
| 1387 | 37100.37400.37600.38500.39400.40900.41900.63800 | **14th Floor** | 156.5d | 2026-03-12 | 2026-07-29 |  | start no earlier than 2026-03-12 | GC1 | 8806674 |
| 1388 | 37100.37400.37600.38500.39400.40900.41900.63800.1146800 | Block Work | 9d | 2026-03-12 | 2026-03-20 | 1372FS+0.25d |  | GC1 | 8833354 |
| 1389 | 37100.37400.37600.38500.39400.40900.41900.63800.1146900 | Door Frame Fixing | 9d | 2026-03-20 | 2026-03-28 | 1373, 1388 |  | GC1 | 8833364 |
| 1390 | 37100.37400.37600.38500.39400.40900.41900.63800.1147000 | Internal Plumbing Works | 11.25d | 2026-04-08 | 2026-04-18 | 1374, 1388 |  | GC1 | 8833374 |
| 1391 | 37100.37400.37600.38500.39400.40900.41900.63800.1147100 | Waterproofing | 9d | 2026-04-18 | 2026-04-26 | 1375, 1390 |  | GC1 | 8833384 |
| 1392 | 37100.37400.37600.38500.39400.40900.41900.63800.1147200 | Internal Plaster | 4.5d | 2026-03-28 | 2026-04-01 | 1376FS+0.25d, 1389FS+0.25d |  | GC1 | 8833394 |
| 1393 | 37100.37400.37600.38500.39400.40900.41900.63800.1147300 | IPS flooring work | 10.12d | 2026-04-26 | 2026-05-05 | 1377, 1389, 1390, 1391 |  | GC1 | 8833404 |
| 1394 | 37100.37400.37600.38500.39400.40900.41900.63800.1147400 | Toilet dado work | 9d | 2026-04-26 | 2026-05-04 | 1378, 1391, 1392 |  | GC1 | 8833414 |
| 1395 | 37100.37400.37600.38500.39400.40900.41900.63800.1147500 | Toilet flooring work | 7.88d | 2026-05-04 | 2026-05-11 | 1379, 1394 |  | GC1 | 8833424 |
| 1396 | 37100.37400.37600.38500.39400.40900.41900.63800.1147600 | Living dinning flooring | 9d | 2026-05-11 | 2026-05-19 | 1380, 1389, 1395 |  | GC1 | 8833434 |
| 1397 | 37100.37400.37600.38500.39400.40900.41900.63800.1147700 | Aluminium door-window fixing | 13.5d | 2026-06-12 | 2026-06-24 | 1381, 1393, 1396 |  | GC1 | 8833444 |
| 1398 | 37100.37400.37600.38500.39400.40900.41900.63800.1147800 | Putty primer coat | 6.75d | 2026-05-19 | 2026-05-25 | 1382, 1396 |  | GC1 | 8833454 |
| 1399 | 37100.37400.37600.38500.39400.40900.41900.63800.1147900 | Door shutter fixing | 9d | 2026-05-19 | 2026-05-27 | 1383, 1396 |  | GC1 | 8833464 |
| 1400 | 37100.37400.37600.38500.39400.40900.41900.63800.1148000 | Electrical wiring work | 13.5d | 2026-06-22 | 2026-07-04 | 1384, 1399 |  | GC1 | 8833474 |
| 1401 | 37100.37400.37600.38500.39400.40900.41900.63800.1148100 | Painting 1st coat | 13.5d | 2026-07-07 | 2026-07-19 | 1385, 1398, 1399, 1400 |  | GC1 | 8833484 |
| 1402 | 37100.37400.37600.38500.39400.40900.41900.63800.1148200 | False ceiling | 11.25d | 2026-07-19 | 2026-07-29 | 1386, 1401 |  | GC1 | 8833494 |

| ID | WBS | Task | Duration | Start | Finish | Predecessors | Constraint | Calendar | Unique_Task_ID |
| --- | --- | --- | --- | --- | --- | --- | --- | --- | --- |
| 1403 | 37100.37400.37600.38500.39400.40900.41900.63900 | **15th Floor** | 160.75d | 2026-03-20 | 2026-08-10 |  | start no earlier than 2026-03-20 | GC1 | 8806684 |
| 1404 | 37100.37400.37600.38500.39400.40900.41900.63900.1148300 | Block Work | 9d | 2026-03-20 | 2026-03-28 | 1388FS+0.25d |  | GC1 | 8833504 |
| 1405 | 37100.37400.37600.38500.39400.40900.41900.63900.1148400 | Door Frame Fixing | 5.62d | 2026-03-28 | 2026-04-02 | 1389, 1404 |  | GC1 | 8833514 |
| 1406 | 37100.37400.37600.38500.39400.40900.41900.63900.1148500 | Internal Plumbing Works | 11.25d | 2026-04-18 | 2026-04-28 | 1390, 1404 |  | GC1 | 8833524 |
| 1407 | 37100.37400.37600.38500.39400.40900.41900.63900.1148600 | Waterproofing | 9d | 2026-04-28 | 2026-05-06 | 1391, 1406 |  | GC1 | 8833534 |
| 1408 | 37100.37400.37600.38500.39400.40900.41900.63900.1148700 | Internal Plaster | 6.75d | 2026-04-02 | 2026-04-08 | 1392FS+0.25d, 1405FS+0.25d |  | GC1 | 8833544 |
| 1409 | 37100.37400.37600.38500.39400.40900.41900.63900.1148800 | IPS flooring work | 10.12d | 2026-05-06 | 2026-05-15 | 1393, 1405, 1406, 1407 |  | GC1 | 8833554 |
| 1410 | 37100.37400.37600.38500.39400.40900.41900.63900.1148900 | Toilet dado work | 9d | 2026-05-06 | 2026-05-14 | 1394, 1407, 1408 |  | GC1 | 8833564 |
| 1411 | 37100.37400.37600.38500.39400.40900.41900.63900.1149000 | Toilet flooring work | 7.88d | 2026-05-14 | 2026-05-21 | 1395, 1410 |  | GC1 | 8833574 |
| 1412 | 37100.37400.37600.38500.39400.40900.41900.63900.1149100 | Living dinning flooring | 9d | 2026-05-21 | 2026-05-29 | 1396, 1405, 1411 |  | GC1 | 8833584 |
| 1413 | 37100.37400.37600.38500.39400.40900.41900.63900.1149200 | Aluminium door-window fixing | 13.5d | 2026-06-24 | 2026-07-06 | 1397, 1409, 1412 |  | GC1 | 8833594 |
| 1414 | 37100.37400.37600.38500.39400.40900.41900.63900.1149300 | Putty primer coat | 6.75d | 2026-05-29 | 2026-06-04 | 1398, 1412 |  | GC1 | 8833604 |
| 1415 | 37100.37400.37600.38500.39400.40900.41900.63900.1149400 | Door shutter fixing | 9d | 2026-05-29 | 2026-06-06 | 1399, 1412 |  | GC1 | 8833614 |
| 1416 | 37100.37400.37600.38500.39400.40900.41900.63900.1149500 | Electrical wiring work | 13.5d | 2026-07-04 | 2026-07-16 | 1400, 1415 |  | GC1 | 8833624 |
| 1417 | 37100.37400.37600.38500.39400.40900.41900.63900.1149600 | Painting 1st coat | 13.5d | 2026-07-19 | 2026-07-31 | 1401, 1414, 1415, 1416 |  | GC1 | 8833634 |
| 1418 | 37100.37400.37600.38500.39400.40900.41900.63900.1149700 | False ceiling | 11.25d | 2026-07-31 | 2026-08-10 | 1402, 1417 |  | GC1 | 8833644 |
| 1419 | 37100.37400.37600.38500.39400.40900.41900.64000 | **16th Floor** | 121.5d | 2026-05-25 | 2026-09-09 |  | start no earlier than 2026-05-25 | GC1 | 8806694 |
| 1420 | 37100.37400.37600.38500.39400.40900.41900.64000.1149800 | Block Work | 9d | 2026-05-25 | 2026-06-01 | 1157, 1404 |  | GC1 | 8833654 |
| 1421 | 37100.37400.37600.38500.39400.40900.41900.64000.1149900 | Door Frame Fixing | 10.12d | 2026-06-02 | 2026-06-10 | 1405, 1420 |  | GC1 | 8833664 |
| 1422 | 37100.37400.37600.38500.39400.40900.41900.64000.1150000 | Internal Plumbing Works | 11.25d | 2026-06-02 | 2026-06-11 | 1406, 1420 |  | GC1 | 8833674 |
| 1423 | 37100.37400.37600.38500.39400.40900.41900.64000.1150100 | Waterproofing | 13.5d | 2026-06-12 | 2026-06-23 | 1407, 1422 |  | GC1 | 8833684 |
| 1424 | 37100.37400.37600.38500.39400.40900.41900.64000.1150200 | Internal Plaster | 10.12d | 2026-06-24 | 2026-07-02 | 1408, 1421, 1422, 1423 |  | GC1 | 8833694 |
| 1425 | 37100.37400.37600.38500.39400.40900.41900.64000.1150300 | IPS flooring work | 10.12d | 2026-06-24 | 2026-07-02 | 1409, 1421, 1422, 1423 |  | GC1 | 8833704 |
| 1426 | 37100.37400.37600.38500.39400.40900.41900.64000.1150400 | Toilet dado work | 9d | 2026-07-03 | 2026-07-10 | 1410, 1423, 1424 |  | GC1 | 8833714 |
| 1427 | 37100.37400.37600.38500.39400.40900.41900.64000.1150500 | Toilet flooring work | 7.88d | 2026-07-11 | 2026-07-17 | 1411, 1426 |  | GC1 | 8833724 |
| 1428 | 37100.37400.37600.38500.39400.40900.41900.64000.1150600 | Living dinning flooring | 13.5d | 2026-07-18 | 2026-07-29 | 1412, 1421, 1427 |  | GC1 | 8833734 |
| 1429 | 37100.37400.37600.38500.39400.40900.41900.64000.1150700 | Aluminium door-window fixing | 13.5d | 2026-07-30 | 2026-08-10 | 1413, 1425, 1428 |  | GC1 | 8833744 |
| 1430 | 37100.37400.37600.38500.39400.40900.41900.64000.1150800 | Putty primer coat | 6.75d | 2026-07-30 | 2026-08-04 | 1414, 1428 |  | GC1 | 8833754 |
| 1431 | 37100.37400.37600.38500.39400.40900.41900.64000.1150900 | Door shutter fixing | 9d | 2026-07-30 | 2026-08-06 | 1415, 1428 |  | GC1 | 8833764 |
| 1432 | 37100.37400.37600.38500.39400.40900.41900.64000.1151000 | Electrical wiring work | 13.5d | 2026-08-07 | 2026-08-18 | 1416, 1431 |  | GC1 | 8833774 |
| 1433 | 37100.37400.37600.38500.39400.40900.41900.64000.1151100 | Painting 1st coat | 13.5d | 2026-08-19 | 2026-08-30 | 1417, 1430, 1431, 1432 |  | GC1 | 8833784 |
| 1434 | 37100.37400.37600.38500.39400.40900.41900.64000.1151200 | False ceiling | 11.25d | 2026-08-31 | 2026-09-09 | 1418, 1433 |  | GC1 | 8833794 |

| ID | WBS | Task | Duration | Start | Finish | Predecessors | Constraint | Calendar | Unique_Task_ID |
| --- | --- | --- | --- | --- | --- | --- | --- | --- | --- |
| 1435 | 37100.37400.37600.38500.39400.40900.41900.64100 | **17th Floor** | 122.62d | 2026-06-05 | 2026-09-21 |  | start no earlier than 2026-06-05 | GC1 | 8806704 |
| 1436 | 37100.37400.37600.38500.39400.40900.41900.64100.1151300 | Block Work | 9d | 2026-06-05 | 2026-06-12 | 1158, 1420 |  | GC1 | 8833804 |
| 1437 | 37100.37400.37600.38500.39400.40900.41900.64100.1151400 | Door Frame Fixing | 10.12d | 2026-06-13 | 2026-06-21 | 1421, 1436 |  | GC1 | 8833814 |
| 1438 | 37100.37400.37600.38500.39400.40900.41900.64100.1151500 | Internal Plumbing Works | 11.25d | 2026-06-13 | 2026-06-22 | 1422, 1436 |  | GC1 | 8833824 |
| 1439 | 37100.37400.37600.38500.39400.40900.41900.64100.1151600 | Waterproofing | 13.5d | 2026-06-24 | 2026-07-05 | 1423, 1438 |  | GC1 | 8833834 |
| 1440 | 37100.37400.37600.38500.39400.40900.41900.64100.1151700 | Internal Plaster | 10.12d | 2026-07-06 | 2026-07-14 | 1424, 1437, 1438, 1439 |  | GC1 | 8833844 |
| 1441 | 37100.37400.37600.38500.39400.40900.41900.64100.1151800 | IPS flooring work | 10.12d | 2026-07-06 | 2026-07-14 | 1425, 1437, 1438, 1439 |  | GC1 | 8833854 |
| 1442 | 37100.37400.37600.38500.39400.40900.41900.64100.1151900 | Toilet dado work | 9d | 2026-07-15 | 2026-07-22 | 1426, 1439, 1440 |  | GC1 | 8833864 |
| 1443 | 37100.37400.37600.38500.39400.40900.41900.64100.1152000 | Toilet flooring work | 7.88d | 2026-07-23 | 2026-07-29 | 1427, 1442 |  | GC1 | 8833874 |
| 1444 | 37100.37400.37600.38500.39400.40900.41900.64100.1152100 | Living dinning flooring | 13.5d | 2026-07-30 | 2026-08-10 | 1428, 1437, 1443 |  | GC1 | 8833884 |
| 1445 | 37100.37400.37600.38500.39400.40900.41900.64100.1152200 | Aluminium door-window fixing | 13.5d | 2026-08-11 | 2026-08-22 | 1429, 1441, 1444 |  | GC1 | 8833894 |
| 1446 | 37100.37400.37600.38500.39400.40900.41900.64100.1152300 | Putty primer coat | 6.75d | 2026-08-11 | 2026-08-16 | 1430, 1444 |  | GC1 | 8833904 |
| 1447 | 37100.37400.37600.38500.39400.40900.41900.64100.1152400 | Door shutter fixing | 9d | 2026-08-11 | 2026-08-18 | 1431, 1444 |  | GC1 | 8833914 |
| 1448 | 37100.37400.37600.38500.39400.40900.41900.64100.1152500 | Electrical wiring work | 13.5d | 2026-08-19 | 2026-08-30 | 1432, 1447 |  | GC1 | 8833924 |
| 1449 | 37100.37400.37600.38500.39400.40900.41900.64100.1152600 | Painting 1st coat | 13.5d | 2026-08-31 | 2026-09-11 | 1433, 1446, 1447, 1448 |  | GC1 | 8833934 |
| 1450 | 37100.37400.37600.38500.39400.40900.41900.64100.1152700 | False ceiling | 11.25d | 2026-09-12 | 2026-09-21 | 1434, 1449 |  | GC1 | 8833944 |
| 1451 | 37100.37400.37600.38500.39400.40900.41900.64200 | **18th Floor** | 123.75d | 2026-06-16 | 2026-10-03 |  | start no earlier than 2026-06-16 | GC1 | 8806714 |
| 1452 | 37100.37400.37600.38500.39400.40900.41900.64200.1152800 | Block Work | 9d | 2026-06-16 | 2026-06-23 | 1159, 1436 |  | GC1 | 8833954 |
| 1453 | 37100.37400.37600.38500.39400.40900.41900.64200.1152900 | Door Frame Fixing | 10.12d | 2026-06-24 | 2026-07-02 | 1437, 1452 |  | GC1 | 8833964 |
| 1454 | 37100.37400.37600.38500.39400.40900.41900.64200.1153000 | Internal Plumbing Works | 11.25d | 2026-06-24 | 2026-07-03 | 1438, 1452 |  | GC1 | 8833974 |
| 1455 | 37100.37400.37600.38500.39400.40900.41900.64200.1153100 | Waterproofing | 13.5d | 2026-07-06 | 2026-07-17 | 1439, 1454 |  | GC1 | 8833984 |
| 1456 | 37100.37400.37600.38500.39400.40900.41900.64200.1153200 | Internal Plaster | 10.12d | 2026-07-18 | 2026-07-26 | 1440, 1453, 1454, 1455 |  | GC1 | 8833994 |
| 1457 | 37100.37400.37600.38500.39400.40900.41900.64200.1153300 | IPS flooring work | 10.12d | 2026-07-18 | 2026-07-26 | 1441, 1453, 1454, 1455 |  | GC1 | 8834004 |
| 1458 | 37100.37400.37600.38500.39400.40900.41900.64200.1153400 | Toilet dado work | 9d | 2026-07-27 | 2026-08-03 | 1442, 1455, 1456 |  | GC1 | 8834014 |
| 1459 | 37100.37400.37600.38500.39400.40900.41900.64200.1153500 | Toilet flooring work | 7.88d | 2026-08-04 | 2026-08-10 | 1443, 1458 |  | GC1 | 8834024 |
| 1460 | 37100.37400.37600.38500.39400.40900.41900.64200.1153600 | Living dinning flooring | 13.5d | 2026-08-11 | 2026-08-22 | 1444, 1453, 1459 |  | GC1 | 8834034 |
| 1461 | 37100.37400.37600.38500.39400.40900.41900.64200.1153700 | Aluminium door-window fixing | 13.5d | 2026-08-23 | 2026-09-03 | 1445, 1457, 1460 |  | GC1 | 8834044 |
| 1462 | 37100.37400.37600.38500.39400.40900.41900.64200.1153800 | Putty primer coat | 6.75d | 2026-08-23 | 2026-08-28 | 1446, 1460 |  | GC1 | 8834054 |
| 1463 | 37100.37400.37600.38500.39400.40900.41900.64200.1153900 | Door shutter fixing | 9d | 2026-08-23 | 2026-08-30 | 1447, 1460 |  | GC1 | 8834064 |
| 1464 | 37100.37400.37600.38500.39400.40900.41900.64200.1154000 | Electrical wiring work | 13.5d | 2026-08-31 | 2026-09-11 | 1448, 1463 |  | GC1 | 8834074 |
| 1465 | 37100.37400.37600.38500.39400.40900.41900.64200.1154100 | Painting 1st coat | 13.5d | 2026-09-12 | 2026-09-23 | 1449, 1462, 1463, 1464 |  | GC1 | 8834084 |
| 1466 | 37100.37400.37600.38500.39400.40900.41900.64200.1154200 | False ceiling | 11.25d | 2026-09-24 | 2026-10-03 | 1450, 1465 |  | GC1 | 8834094 |

| ID | WBS | Task | Duration | Start | Finish | Predecessors | Constraint | Calendar | Unique_Task_ID |
| --- | --- | --- | --- | --- | --- | --- | --- | --- | --- |
| 1467 | 37100.37400.37600.38500.39400.40900.41900.64300 | **19th Floor** | 124.88d | 2026-06-27 | 2026-10-15 |  | start no earlier than 2026-06-27 | GC1 | 8806724 |
| 1468 | 37100.37400.37600.38500.39400.40900.41900.64300.1154300 | Block Work | 9d | 2026-06-27 | 2026-07-04 | 1160, 1452 |  | GC1 | 8834104 |
| 1469 | 37100.37400.37600.38500.39400.40900.41900.64300.1154400 | Door Frame Fixing | 10.12d | 2026-07-05 | 2026-07-13 | 1453, 1468 |  | GC1 | 8834114 |
| 1470 | 37100.37400.37600.38500.39400.40900.41900.64300.1154500 | Internal Plumbing Works | 11.25d | 2026-07-05 | 2026-07-14 | 1454, 1468 |  | GC1 | 8834124 |
| 1471 | 37100.37400.37600.38500.39400.40900.41900.64300.1154600 | Waterproofing | 13.5d | 2026-07-18 | 2026-07-29 | 1455, 1470 |  | GC1 | 8834134 |
| 1472 | 37100.37400.37600.38500.39400.40900.41900.64300.1154700 | Internal Plaster | 10.12d | 2026-07-30 | 2026-08-07 | 1456, 1469, 1470, 1471 |  | GC1 | 8834144 |
| 1473 | 37100.37400.37600.38500.39400.40900.41900.64300.1154800 | IPS flooring work | 10.12d | 2026-08-08 | 2026-08-16 | 1457, 1469, 1471, 1472 |  | GC1 | 8834154 |
| 1474 | 37100.37400.37600.38500.39400.40900.41900.64300.1154900 | Toilet dado work | 9d | 2026-08-08 | 2026-08-15 | 1458, 1471, 1472 |  | GC1 | 8834164 |
| 1475 | 37100.37400.37600.38500.39400.40900.41900.64300.1155000 | Toilet flooring work | 7.88d | 2026-08-16 | 2026-08-22 | 1459, 1474 |  | GC1 | 8834174 |
| 1476 | 37100.37400.37600.38500.39400.40900.41900.64300.1155100 | Living dinning flooring | 13.5d | 2026-08-23 | 2026-09-03 | 1460, 1469, 1475 |  | GC1 | 8834184 |
| 1477 | 37100.37400.37600.38500.39400.40900.41900.64300.1155200 | Aluminium door-window fixing | 13.5d | 2026-09-04 | 2026-09-15 | 1461, 1473, 1476 |  | GC1 | 8834194 |
| 1478 | 37100.37400.37600.38500.39400.40900.41900.64300.1155300 | Putty primer coat | 6.75d | 2026-09-04 | 2026-09-09 | 1462, 1476 |  | GC1 | 8834204 |
| 1479 | 37100.37400.37600.38500.39400.40900.41900.64300.1155400 | Door shutter fixing | 9d | 2026-09-04 | 2026-09-11 | 1463, 1476 |  | GC1 | 8834214 |
| 1480 | 37100.37400.37600.38500.39400.40900.41900.64300.1155500 | Electrical wiring work | 13.5d | 2026-09-12 | 2026-09-23 | 1464, 1479 |  | GC1 | 8834224 |
| 1481 | 37100.37400.37600.38500.39400.40900.41900.64300.1155600 | Painting 1st coat | 13.5d | 2026-09-24 | 2026-10-05 | 1465, 1478, 1479, 1480 |  | GC1 | 8834234 |
| 1482 | 37100.37400.37600.38500.39400.40900.41900.64300.1155700 | False ceiling | 11.25d | 2026-10-06 | 2026-10-15 | 1466, 1481 |  | GC1 | 8834244 |
| 1483 | 37100.37400.37600.38500.39400.40900.41900.64400 | **20th Floor** | 126d | 2026-07-08 | 2026-10-27 |  | start no earlier than 2026-07-08 | GC1 | 8806734 |
| 1484 | 37100.37400.37600.38500.39400.40900.41900.64400.1155800 | Block Work | 9d | 2026-07-08 | 2026-07-15 | 1161, 1468 |  | GC1 | 8834254 |
| 1485 | 37100.37400.37600.38500.39400.40900.41900.64400.1155900 | Door Frame Fixing | 10.12d | 2026-07-16 | 2026-07-24 | 1469, 1484 |  | GC1 | 8834264 |
| 1486 | 37100.37400.37600.38500.39400.40900.41900.64400.1156000 | Internal Plumbing Works | 11.25d | 2026-07-16 | 2026-07-25 | 1470, 1484 |  | GC1 | 8834274 |
| 1487 | 37100.37400.37600.38500.39400.40900.41900.64400.1156100 | Waterproofing | 13.5d | 2026-07-30 | 2026-08-10 | 1471, 1486 |  | GC1 | 8834284 |
| 1488 | 37100.37400.37600.38500.39400.40900.41900.64400.1156200 | Internal Plaster | 10.12d | 2026-08-11 | 2026-08-19 | 1472, 1485, 1486, 1487 |  | GC1 | 8834294 |
| 1489 | 37100.37400.37600.38500.39400.40900.41900.64400.1156300 | IPS flooring work | 10.12d | 2026-08-20 | 2026-08-28 | 1473, 1485, 1487, 1488 |  | GC1 | 8834304 |
| 1490 | 37100.37400.37600.38500.39400.40900.41900.64400.1156400 | Toilet dado work | 9d | 2026-08-20 | 2026-08-27 | 1474, 1487, 1488 |  | GC1 | 8834314 |
| 1491 | 37100.37400.37600.38500.39400.40900.41900.64400.1156500 | Toilet flooring work | 7.88d | 2026-08-28 | 2026-09-03 | 1475, 1490 |  | GC1 | 8834324 |
| 1492 | 37100.37400.37600.38500.39400.40900.41900.64400.1156600 | Living dinning flooring | 13.5d | 2026-09-04 | 2026-09-15 | 1476, 1485, 1491 |  | GC1 | 8834334 |
| 1493 | 37100.37400.37600.38500.39400.40900.41900.64400.1156700 | Aluminium door-window fixing | 13.5d | 2026-09-16 | 2026-09-27 | 1477, 1489, 1492 |  | GC1 | 8834344 |
| 1494 | 37100.37400.37600.38500.39400.40900.41900.64400.1156800 | Putty primer coat | 6.75d | 2026-09-16 | 2026-09-21 | 1478, 1492 |  | GC1 | 8834354 |
| 1495 | 37100.37400.37600.38500.39400.40900.41900.64400.1156900 | Door shutter fixing | 9d | 2026-09-16 | 2026-09-23 | 1479, 1492 |  | GC1 | 8834364 |
| 1496 | 37100.37400.37600.38500.39400.40900.41900.64400.1157000 | Electrical wiring work | 13.5d | 2026-09-24 | 2026-10-05 | 1480, 1495 |  | GC1 | 8834374 |
| 1497 | 37100.37400.37600.38500.39400.40900.41900.64400.1157100 | Painting 1st coat | 13.5d | 2026-10-06 | 2026-10-17 | 1481, 1494, 1495, 1496 |  | GC1 | 8834384 |
| 1498 | 37100.37400.37600.38500.39400.40900.41900.64400.1157200 | False ceiling | 11.25d | 2026-10-18 | 2026-10-27 | 1482, 1497 |  | GC1 | 8834394 |

| ID | WBS | Task | Duration | Start | Finish | Predecessors | Constraint | Calendar | Unique_Task_ID |
| --- | --- | --- | --- | --- | --- | --- | --- | --- | --- |
| 1499 | 37100.37400.37600.38500.39400.40900.41900.64500 | **21st Floor** | 127.12d | 2026-07-19 | 2026-12-23 |  | start no earlier than 2026-07-19 | GC1 | 8806744 |
| 1500 | 37100.37400.37600.38500.39400.40900.41900.64500.1157300 | Block Work | 9d | 2026-07-19 | 2026-07-26 | 1162, 1484 |  | GC1 | 8834404 |
| 1501 | 37100.37400.37600.38500.39400.40900.41900.64500.1157400 | Door Frame Fixing | 10.12d | 2026-07-27 | 2026-08-04 | 1485, 1500 |  | GC1 | 8834414 |
| 1502 | 37100.37400.37600.38500.39400.40900.41900.64500.1157500 | Internal Plumbing Works | 11.25d | 2026-07-27 | 2026-08-05 | 1486, 1500 |  | GC1 | 8834424 |
| 1503 | 37100.37400.37600.38500.39400.40900.41900.64500.1157600 | Waterproofing | 13.5d | 2026-08-11 | 2026-08-22 | 1487, 1502 |  | GC1 | 8834434 |
| 1504 | 37100.37400.37600.38500.39400.40900.41900.64500.1157700 | Internal Plaster | 10.12d | 2026-08-23 | 2026-08-31 | 1488, 1501, 1502, 1503 |  | GC1 | 8834444 |
| 1505 | 37100.37400.37600.38500.39400.40900.41900.64500.1157800 | IPS flooring work | 10.12d | 2026-09-01 | 2026-09-09 | 1489, 1501, 1503, 1504 |  | GC1 | 8834454 |
| 1506 | 37100.37400.37600.38500.39400.40900.41900.64500.1157900 | Toilet dado work | 9d | 2026-09-01 | 2026-09-08 | 1490, 1503, 1504 |  | GC1 | 8834464 |
| 1507 | 37100.37400.37600.38500.39400.40900.41900.64500.1158000 | Toilet flooring work | 7.88d | 2026-09-09 | 2026-09-15 | 1491, 1506 |  | GC1 | 8834474 |
| 1508 | 37100.37400.37600.38500.39400.40900.41900.64500.1158100 | Living dinning flooring | 13.5d | 2026-09-16 | 2026-09-27 | 1492, 1501, 1507 |  | GC1 | 8834484 |
| 1509 | 37100.37400.37600.38500.39400.40900.41900.64500.1158200 | Aluminium door-window fixing | 13.5d | 2026-09-28 | 2026-10-09 | 1493, 1505, 1508 |  | GC1 | 8834494 |
| 1510 | 37100.37400.37600.38500.39400.40900.41900.64500.1158300 | Putty primer coat | 6.75d | 2026-09-28 | 2026-10-03 | 1494, 1508 |  | GC1 | 8834504 |
| 1511 | 37100.37400.37600.38500.39400.40900.41900.64500.1158400 | Door shutter fixing | 9d | 2026-09-28 | 2026-10-05 | 1495, 1508 |  | GC1 | 8834514 |
| 1512 | 37100.37400.37600.38500.39400.40900.41900.64500.1158500 | Electrical wiring work | 13.5d | 2026-10-06 | 2026-10-17 | 1496, 1511 |  | GC1 | 8834524 |
| 1513 | 37100.37400.37600.38500.39400.40900.41900.64500.1158600 | Painting 1st coat | 13.5d | 2026-10-18 | 2026-10-29 | 1497, 1510, 1511, 1512 |  | GC1 | 8834534 |
| 1514 | 37100.37400.37600.38500.39400.40900.41900.64500.1158700 | False ceiling | 11.25d | 2026-10-30 | 2026-12-23 | 1498, 1513 |  | GC1 | 8834544 |
| 1515 | 37100.37400.37600.38500.39400.40900.41900.64600 | **22nd Floor** | 128.25d | 2026-07-30 | 2027-01-04 |  | start no earlier than 2026-07-30 | GC1 | 8806754 |
| 1516 | 37100.37400.37600.38500.39400.40900.41900.64600.1158800 | Block Work | 9d | 2026-07-30 | 2026-08-06 | 1163, 1500 |  | GC1 | 8834554 |
| 1517 | 37100.37400.37600.38500.39400.40900.41900.64600.1158900 | Door Frame Fixing | 10.12d | 2026-08-07 | 2026-08-15 | 1501, 1516 |  | GC1 | 8834564 |
| 1518 | 37100.37400.37600.38500.39400.40900.41900.64600.1159000 | Internal Plumbing Works | 11.25d | 2026-08-07 | 2026-08-16 | 1502, 1516 |  | GC1 | 8834574 |
| 1519 | 37100.37400.37600.38500.39400.40900.41900.64600.1159100 | Waterproofing | 13.5d | 2026-08-23 | 2026-09-03 | 1503, 1518 |  | GC1 | 8834584 |
| 1520 | 37100.37400.37600.38500.39400.40900.41900.64600.1159200 | Internal Plaster | 10.12d | 2026-09-04 | 2026-09-12 | 1504, 1517, 1518, 1519 |  | GC1 | 8834594 |
| 1521 | 37100.37400.37600.38500.39400.40900.41900.64600.1159300 | IPS flooring work | 10.12d | 2026-09-13 | 2026-09-21 | 1505, 1517, 1519, 1520 |  | GC1 | 8834604 |
| 1522 | 37100.37400.37600.38500.39400.40900.41900.64600.1159400 | Toilet dado work | 9d | 2026-09-13 | 2026-09-20 | 1506, 1519, 1520 |  | GC1 | 8834614 |
| 1523 | 37100.37400.37600.38500.39400.40900.41900.64600.1159500 | Toilet flooring work | 7.88d | 2026-09-21 | 2026-09-27 | 1507, 1522 |  | GC1 | 8834624 |
| 1524 | 37100.37400.37600.38500.39400.40900.41900.64600.1159600 | Living dinning flooring | 13.5d | 2026-09-28 | 2026-10-09 | 1508, 1517, 1523 |  | GC1 | 8834634 |
| 1525 | 37100.37400.37600.38500.39400.40900.41900.64600.1159700 | Aluminium door-window fixing | 13.5d | 2026-10-10 | 2026-10-21 | 1509, 1521, 1524 |  | GC1 | 8834644 |
| 1526 | 37100.37400.37600.38500.39400.40900.41900.64600.1159800 | Putty primer coat | 6.75d | 2026-10-10 | 2026-10-15 | 1510, 1524 |  | GC1 | 8834654 |
| 1527 | 37100.37400.37600.38500.39400.40900.41900.64600.1159900 | Door shutter fixing | 9d | 2026-10-10 | 2026-10-17 | 1511, 1524 |  | GC1 | 8834664 |
| 1528 | 37100.37400.37600.38500.39400.40900.41900.64600.1160000 | Electrical wiring work | 13.5d | 2026-10-18 | 2026-10-29 | 1512, 1527 |  | GC1 | 8834674 |
| 1529 | 37100.37400.37600.38500.39400.40900.41900.64600.1160100 | Painting 1st coat | 13.5d | 2026-10-30 | 2026-12-25 | 1513, 1526, 1527, 1528 |  | GC1 | 8834684 |
| 1530 | 37100.37400.37600.38500.39400.40900.41900.64600.1160200 | False ceiling | 11.25d | 2026-12-26 | 2027-01-04 | 1514, 1529 |  | GC1 | 8834694 |

| ID | WBS | Task | Duration | Start | Finish | Predecessors | Constraint | Calendar | Unique_Task_ID |
| --- | --- | --- | --- | --- | --- | --- | --- | --- | --- |
| 1531 | 37100.37400.37600.38500.39400.40900.41900.64700 | **23rd Floor** | 132.75d | 2026-08-10 | 2027-01-19 |  | start no earlier than 2026-08-10 | GC1 | 8806764 |
| 1532 | 37100.37400.37600.38500.39400.40900.41900.64700.1160300 | Block Work | 9d | 2026-08-10 | 2026-08-17 | 1164, 1516 |  | GC1 | 8834704 |
| 1533 | 37100.37400.37600.38500.39400.40900.41900.64700.1160400 | Door Frame Fixing | 10.12d | 2026-08-18 | 2026-08-26 | 1517, 1532 |  | GC1 | 8834714 |
| 1534 | 37100.37400.37600.38500.39400.40900.41900.64700.1160500 | Internal Plumbing Works | 11.25d | 2026-08-18 | 2026-08-27 | 1518, 1532 |  | GC1 | 8834724 |
| 1535 | 37100.37400.37600.38500.39400.40900.41900.64700.1160600 | Waterproofing | 13.5d | 2026-09-04 | 2026-09-15 | 1519, 1534 |  | GC1 | 8834734 |
| 1536 | 37100.37400.37600.38500.39400.40900.41900.64700.1160700 | Internal Plaster | 10.12d | 2026-09-16 | 2026-09-24 | 1520, 1533, 1534, 1535 |  | GC1 | 8834744 |
| 1537 | 37100.37400.37600.38500.39400.40900.41900.64700.1160800 | IPS flooring work | 10.12d | 2026-09-25 | 2026-10-03 | 1521, 1533, 1535, 1536 |  | GC1 | 8834754 |
| 1538 | 37100.37400.37600.38500.39400.40900.41900.64700.1160900 | Toilet dado work | 9d | 2026-09-25 | 2026-10-02 | 1522, 1535, 1536 |  | GC1 | 8834764 |
| 1539 | 37100.37400.37600.38500.39400.40900.41900.64700.1161000 | Toilet flooring work | 7.88d | 2026-10-03 | 2026-10-09 | 1523, 1538 |  | GC1 | 8834774 |
| 1540 | 37100.37400.37600.38500.39400.40900.41900.64700.1161100 | Living dinning flooring | 16.88d | 2026-10-10 | 2026-10-24 | 1524, 1533, 1539 |  | GC1 | 8834784 |
| 1541 | 37100.37400.37600.38500.39400.40900.41900.64700.1161200 | Aluminium door-window fixing | 16.88d | 2026-10-25 | 2026-12-23 | 1525, 1537, 1540 |  | GC1 | 8834794 |
| 1542 | 37100.37400.37600.38500.39400.40900.41900.64700.1161300 | Putty primer coat | 6.75d | 2026-10-25 | 2026-10-30 | 1526, 1540 |  | GC1 | 8834804 |
| 1543 | 37100.37400.37600.38500.39400.40900.41900.64700.1161400 | Door shutter fixing | 9d | 2026-10-25 | 2026-12-16 | 1527, 1540 |  | GC1 | 8834814 |
| 1544 | 37100.37400.37600.38500.39400.40900.41900.64700.1161500 | Electrical wiring work | 13.5d | 2026-12-17 | 2026-12-28 | 1528, 1543 |  | GC1 | 8834824 |
| 1545 | 37100.37400.37600.38500.39400.40900.41900.64700.1161600 | Painting 1st coat | 13.5d | 2026-12-29 | 2027-01-09 | 1529, 1542, 1543, 1544 |  | GC1 | 8834834 |
| 1546 | 37100.37400.37600.38500.39400.40900.41900.64700.1161700 | False ceiling | 11.25d | 2027-01-10 | 2027-01-19 | 1530, 1545 |  | GC1 | 8834844 |
| 1547 | 37100.37400.37600.38500.39400.40900.41900.64800 | **24th Floor** | 137.25d | 2026-08-21 | 2027-02-03 |  | start no earlier than 2026-08-21 | GC1 | 8806774 |
| 1548 | 37100.37400.37600.38500.39400.40900.41900.64800.1161800 | Block Work | 9d | 2026-08-21 | 2026-08-28 | 1165, 1532 |  | GC1 | 8834854 |
| 1549 | 37100.37400.37600.38500.39400.40900.41900.64800.1161900 | Door Frame Fixing | 10.12d | 2026-08-29 | 2026-09-06 | 1533, 1548 |  | GC1 | 8834864 |
| 1550 | 37100.37400.37600.38500.39400.40900.41900.64800.1162000 | Internal Plumbing Works | 11.25d | 2026-08-29 | 2026-09-07 | 1534, 1548 |  | GC1 | 8834874 |
| 1551 | 37100.37400.37600.38500.39400.40900.41900.64800.1162100 | Waterproofing | 13.5d | 2026-09-16 | 2026-09-27 | 1535, 1550 |  | GC1 | 8834884 |
| 1552 | 37100.37400.37600.38500.39400.40900.41900.64800.1162200 | Internal Plaster | 10.12d | 2026-09-28 | 2026-10-06 | 1536, 1549, 1550, 1551 |  | GC1 | 8834894 |
| 1553 | 37100.37400.37600.38500.39400.40900.41900.64800.1162300 | IPS flooring work | 10.12d | 2026-10-07 | 2026-10-15 | 1537, 1549, 1551, 1552 |  | GC1 | 8834904 |
| 1554 | 37100.37400.37600.38500.39400.40900.41900.64800.1162400 | Toilet dado work | 9d | 2026-10-07 | 2026-10-14 | 1538, 1551, 1552 |  | GC1 | 8834914 |
| 1555 | 37100.37400.37600.38500.39400.40900.41900.64800.1162500 | Toilet flooring work | 7.88d | 2026-10-15 | 2026-10-21 | 1539, 1554 |  | GC1 | 8834924 |
| 1556 | 37100.37400.37600.38500.39400.40900.41900.64800.1162600 | Living dinning flooring | 16.88d | 2026-10-25 | 2026-12-23 | 1540, 1549, 1555 |  | GC1 | 8834934 |
| 1557 | 37100.37400.37600.38500.39400.40900.41900.64800.1162700 | Aluminium door-window fixing | 16.88d | 2026-12-24 | 2027-01-07 | 1541, 1553, 1556 |  | GC1 | 8834944 |
| 1558 | 37100.37400.37600.38500.39400.40900.41900.64800.1162800 | Putty primer coat | 6.75d | 2026-12-24 | 2026-12-29 | 1542, 1556 |  | GC1 | 8834954 |
| 1559 | 37100.37400.37600.38500.39400.40900.41900.64800.1162900 | Door shutter fixing | 9d | 2026-12-24 | 2026-12-31 | 1543, 1556 |  | GC1 | 8834964 |
| 1560 | 37100.37400.37600.38500.39400.40900.41900.64800.1163000 | Electrical wiring work | 13.5d | 2027-01-01 | 2027-01-12 | 1544, 1559 |  | GC1 | 8834974 |
| 1561 | 37100.37400.37600.38500.39400.40900.41900.64800.1163100 | Painting 1st coat | 13.5d | 2027-01-13 | 2027-01-24 | 1545, 1558, 1559, 1560 |  | GC1 | 8834984 |
| 1562 | 37100.37400.37600.38500.39400.40900.41900.64800.1163200 | False ceiling | 11.25d | 2027-01-25 | 2027-02-03 | 1546, 1561 |  | GC1 | 8834994 |

| ID | WBS | Task | Duration | Start | Finish | Predecessors | Constraint | Calendar | Unique_Task_ID |
| --- | --- | --- | --- | --- | --- | --- | --- | --- | --- |
| 1563 | 37100.37400.37600.38500.39400.40900.41900.64900 | **25th Floor** | 141.75d | 2026-09-01 | 2027-02-18 |  | start no earlier than 2026-09-01 | GC1 | 8806784 |
| 1564 | 37100.37400.37600.38500.39400.40900.41900.64900.1163300 | Block Work | 9d | 2026-09-01 | 2026-09-08 | 1166, 1548 |  | GC1 | 8835004 |
| 1565 | 37100.37400.37600.38500.39400.40900.41900.64900.1163400 | Door Frame Fixing | 10.12d | 2026-09-09 | 2026-09-17 | 1549, 1564 |  | GC1 | 8835014 |
| 1566 | 37100.37400.37600.38500.39400.40900.41900.64900.1163500 | Internal Plumbing Works | 11.25d | 2026-09-09 | 2026-09-18 | 1550, 1564 |  | GC1 | 8835024 |
| 1567 | 37100.37400.37600.38500.39400.40900.41900.64900.1163600 | Waterproofing | 13.5d | 2026-09-28 | 2026-10-09 | 1551, 1566 |  | GC1 | 8835034 |
| 1568 | 37100.37400.37600.38500.39400.40900.41900.64900.1163700 | Internal Plaster | 10.12d | 2026-10-10 | 2026-10-18 | 1552, 1565, 1566, 1567 |  | GC1 | 8835044 |
| 1569 | 37100.37400.37600.38500.39400.40900.41900.64900.1163800 | IPS flooring work | 10.12d | 2026-10-19 | 2026-10-27 | 1553, 1565, 1567, 1568 |  | GC1 | 8835054 |
| 1570 | 37100.37400.37600.38500.39400.40900.41900.64900.1163900 | Toilet dado work | 9d | 2026-10-19 | 2026-10-26 | 1554, 1567, 1568 |  | GC1 | 8835064 |
| 1571 | 37100.37400.37600.38500.39400.40900.41900.64900.1164000 | Toilet flooring work | 7.88d | 2026-10-27 | 2026-12-17 | 1555, 1570 |  | GC1 | 8835074 |
| 1572 | 37100.37400.37600.38500.39400.40900.41900.64900.1164100 | Living dinning flooring | 16.88d | 2026-12-24 | 2027-01-07 | 1556, 1565, 1571 |  | GC1 | 8835084 |
| 1573 | 37100.37400.37600.38500.39400.40900.41900.64900.1164200 | Aluminium door-window fixing | 16.88d | 2027-01-08 | 2027-01-22 | 1557, 1569, 1572 |  | GC1 | 8835094 |
| 1574 | 37100.37400.37600.38500.39400.40900.41900.64900.1164300 | Putty primer coat | 6.75d | 2027-01-08 | 2027-01-13 | 1558, 1572 |  | GC1 | 8835104 |
| 1575 | 37100.37400.37600.38500.39400.40900.41900.64900.1164400 | Door shutter fixing | 9d | 2027-01-08 | 2027-01-15 | 1559, 1572 |  | GC1 | 8835114 |
| 1576 | 37100.37400.37600.38500.39400.40900.41900.64900.1164500 | Electrical wiring work | 13.5d | 2027-01-16 | 2027-01-27 | 1560, 1575 |  | GC1 | 8835124 |
| 1577 | 37100.37400.37600.38500.39400.40900.41900.64900.1164600 | Painting 1st coat | 13.5d | 2027-01-28 | 2027-02-08 | 1561, 1574, 1575, 1576 |  | GC1 | 8835134 |
| 1578 | 37100.37400.37600.38500.39400.40900.41900.64900.1164700 | False ceiling | 11.25d | 2027-02-09 | 2027-02-18 | 1562, 1577 |  | GC1 | 8835144 |
| 1579 | 37100.37400.37600.38500.39400.40900.41900.65000 | **26th Floor** | 146.25d | 2026-09-12 | 2027-03-05 |  | start no earlier than 2026-09-12 | GC1 | 8806794 |
| 1580 | 37100.37400.37600.38500.39400.40900.41900.65000.1164800 | Block Work | 9d | 2026-09-12 | 2026-09-19 | 1167, 1564 |  | GC1 | 8835154 |
| 1581 | 37100.37400.37600.38500.39400.40900.41900.65000.1164900 | Door Frame Fixing | 10.12d | 2026-09-20 | 2026-09-28 | 1565, 1580 |  | GC1 | 8835164 |
| 1582 | 37100.37400.37600.38500.39400.40900.41900.65000.1165000 | Internal Plumbing Works | 11.25d | 2026-09-20 | 2026-09-29 | 1566, 1580 |  | GC1 | 8835174 |
| 1583 | 37100.37400.37600.38500.39400.40900.41900.65000.1165100 | Waterproofing | 13.5d | 2026-10-10 | 2026-10-21 | 1567, 1582 |  | GC1 | 8835184 |
| 1584 | 37100.37400.37600.38500.39400.40900.41900.65000.1165200 | Internal Plaster | 10.12d | 2026-10-22 | 2026-10-30 | 1568, 1581, 1582, 1583 |  | GC1 | 8835194 |
| 1585 | 37100.37400.37600.38500.39400.40900.41900.65000.1165300 | IPS flooring work | 10.12d | 2026-10-31 | 2026-12-23 | 1569, 1581, 1583, 1584 |  | GC1 | 8835204 |
| 1586 | 37100.37400.37600.38500.39400.40900.41900.65000.1165400 | Toilet dado work | 9d | 2026-10-31 | 2026-12-22 | 1570, 1583, 1584 |  | GC1 | 8835214 |
| 1587 | 37100.37400.37600.38500.39400.40900.41900.65000.1165500 | Toilet flooring work | 7.88d | 2026-12-23 | 2026-12-29 | 1571, 1586 |  | GC1 | 8835224 |
| 1588 | 37100.37400.37600.38500.39400.40900.41900.65000.1165600 | Living dinning flooring | 16.88d | 2027-01-08 | 2027-01-22 | 1572, 1581, 1587 |  | GC1 | 8835234 |
| 1589 | 37100.37400.37600.38500.39400.40900.41900.65000.1165700 | Aluminium door-window fixing | 16.88d | 2027-01-23 | 2027-02-06 | 1573, 1585, 1588 |  | GC1 | 8835244 |
| 1590 | 37100.37400.37600.38500.39400.40900.41900.65000.1165800 | Putty primer coat | 6.75d | 2027-01-23 | 2027-01-28 | 1574, 1588 |  | GC1 | 8835254 |
| 1591 | 37100.37400.37600.38500.39400.40900.41900.65000.1165900 | Door shutter fixing | 9d | 2027-01-23 | 2027-01-30 | 1575, 1588 |  | GC1 | 8835264 |
| 1592 | 37100.37400.37600.38500.39400.40900.41900.65000.1166000 | Electrical wiring work | 13.5d | 2027-01-31 | 2027-02-11 | 1576, 1591 |  | GC1 | 8835274 |
| 1593 | 37100.37400.37600.38500.39400.40900.41900.65000.1166100 | Painting 1st coat | 13.5d | 2027-02-12 | 2027-02-23 | 1577, 1590, 1591, 1592 |  | GC1 | 8835284 |
| 1594 | 37100.37400.37600.38500.39400.40900.41900.65000.1166200 | False ceiling | 11.25d | 2027-02-24 | 2027-03-05 | 1578, 1593 |  | GC1 | 8835294 |

| ID | WBS | Task | Duration | Start | Finish | Predecessors | Constraint | Calendar | Unique_Task_ID |
| --- | --- | --- | --- | --- | --- | --- | --- | --- | --- |
| 1595 | 37100.37400.37600.38500.39400.40900.41900.65100 | **27th Floor** | 150.75d | 2026-09-23 | 2027-03-20 |  | start no earlier than 2026-09-23 | GC1 | 8806804 |
| 1596 | 37100.37400.37600.38500.39400.40900.41900.65100.1166300 | Block Work | 9d | 2026-09-23 | 2026-09-30 | 1168, 1580 |  | GC1 | 8835304 |
| 1597 | 37100.37400.37600.38500.39400.40900.41900.65100.1166400 | Door Frame Fixing | 10.12d | 2026-10-01 | 2026-10-09 | 1581, 1596 |  | GC1 | 8835314 |
| 1598 | 37100.37400.37600.38500.39400.40900.41900.65100.1166500 | Internal Plumbing Works | 11.25d | 2026-10-01 | 2026-10-10 | 1582, 1596 |  | GC1 | 8835324 |
| 1599 | 37100.37400.37600.38500.39400.40900.41900.65100.1166600 | Waterproofing | 13.5d | 2026-10-22 | 2026-12-17 | 1583, 1598 |  | GC1 | 8835334 |
| 1600 | 37100.37400.37600.38500.39400.40900.41900.65100.1166700 | Internal Plaster | 10.12d | 2026-12-18 | 2026-12-26 | 1584, 1597, 1598, 1599 |  | GC1 | 8835344 |
| 1601 | 37100.37400.37600.38500.39400.40900.41900.65100.1166800 | IPS flooring work | 10.12d | 2026-12-27 | 2027-01-04 | 1585, 1597, 1599, 1600 |  | GC1 | 8835354 |
| 1602 | 37100.37400.37600.38500.39400.40900.41900.65100.1166900 | Toilet dado work | 9d | 2026-12-27 | 2027-01-03 | 1586, 1599, 1600 |  | GC1 | 8835364 |
| 1603 | 37100.37400.37600.38500.39400.40900.41900.65100.1167000 | Toilet flooring work | 7.88d | 2027-01-04 | 2027-01-10 | 1587, 1602 |  | GC1 | 8835374 |
| 1604 | 37100.37400.37600.38500.39400.40900.41900.65100.1167100 | Living dinning flooring | 16.88d | 2027-01-23 | 2027-02-06 | 1588, 1597, 1603 |  | GC1 | 8835384 |
| 1605 | 37100.37400.37600.38500.39400.40900.41900.65100.1167200 | Aluminium door-window fixing | 16.88d | 2027-02-07 | 2027-02-21 | 1589, 1601, 1604 |  | GC1 | 8835394 |
| 1606 | 37100.37400.37600.38500.39400.40900.41900.65100.1167300 | Putty primer coat | 6.75d | 2027-02-07 | 2027-02-12 | 1590, 1604 |  | GC1 | 8835404 |
| 1607 | 37100.37400.37600.38500.39400.40900.41900.65100.1167400 | Door shutter fixing | 9d | 2027-02-07 | 2027-02-14 | 1591, 1604 |  | GC1 | 8835414 |
| 1608 | 37100.37400.37600.38500.39400.40900.41900.65100.1167500 | Electrical wiring work | 13.5d | 2027-02-15 | 2027-02-26 | 1592, 1607 |  | GC1 | 8835424 |
| 1609 | 37100.37400.37600.38500.39400.40900.41900.65100.1167600 | Painting 1st coat | 13.5d | 2027-02-27 | 2027-03-10 | 1593, 1606, 1607, 1608 |  | GC1 | 8835434 |
| 1610 | 37100.37400.37600.38500.39400.40900.41900.65100.1167700 | False ceiling | 11.25d | 2027-03-11 | 2027-03-20 | 1594, 1609 |  | GC1 | 8835444 |
| 1611 | 37100.37400.37600.38500.39400.40900.41900.65200 | **28th Floor** | 155.25d | 2026-10-04 | 2027-04-04 |  | start no earlier than 2026-10-04 | GC1 | 8806814 |
| 1612 | 37100.37400.37600.38500.39400.40900.41900.65200.1167800 | Block Work | 9d | 2026-10-04 | 2026-10-11 | 1169, 1596 |  | GC1 | 8835454 |
| 1613 | 37100.37400.37600.38500.39400.40900.41900.65200.1167900 | Door Frame Fixing | 10.12d | 2026-10-12 | 2026-10-20 | 1597, 1612 |  | GC1 | 8835464 |
| 1614 | 37100.37400.37600.38500.39400.40900.41900.65200.1168000 | Internal Plumbing Works | 11.25d | 2026-10-12 | 2026-10-21 | 1598, 1612 |  | GC1 | 8835474 |
| 1615 | 37100.37400.37600.38500.39400.40900.41900.65200.1168100 | Waterproofing | 13.5d | 2026-12-18 | 2026-12-29 | 1599, 1614 |  | GC1 | 8835484 |
| 1616 | 37100.37400.37600.38500.39400.40900.41900.65200.1168200 | Internal Plaster | 10.12d | 2026-12-30 | 2027-01-07 | 1600, 1613, 1614, 1615 |  | GC1 | 8835494 |
| 1617 | 37100.37400.37600.38500.39400.40900.41900.65200.1168300 | IPS flooring work | 10.12d | 2027-01-08 | 2027-01-16 | 1601, 1613, 1615, 1616 |  | GC1 | 8835504 |
| 1618 | 37100.37400.37600.38500.39400.40900.41900.65200.1168400 | Toilet dado work | 9d | 2027-01-08 | 2027-01-15 | 1602, 1615, 1616 |  | GC1 | 8835514 |
| 1619 | 37100.37400.37600.38500.39400.40900.41900.65200.1168500 | Toilet flooring work | 7.88d | 2027-01-16 | 2027-01-22 | 1603, 1618 |  | GC1 | 8835524 |
| 1620 | 37100.37400.37600.38500.39400.40900.41900.65200.1168600 | Living dinning flooring | 16.88d | 2027-02-07 | 2027-02-21 | 1604, 1613, 1619 |  | GC1 | 8835534 |
| 1621 | 37100.37400.37600.38500.39400.40900.41900.65200.1168700 | Aluminium door-window fixing | 16.88d | 2027-02-22 | 2027-03-08 | 1605, 1617, 1620 |  | GC1 | 8835544 |
| 1622 | 37100.37400.37600.38500.39400.40900.41900.65200.1168800 | Putty primer coat | 6.75d | 2027-02-22 | 2027-02-27 | 1606, 1620 |  | GC1 | 8835554 |
| 1623 | 37100.37400.37600.38500.39400.40900.41900.65200.1168900 | Door shutter fixing | 9d | 2027-02-22 | 2027-03-01 | 1607, 1620 |  | GC1 | 8835564 |
| 1624 | 37100.37400.37600.38500.39400.40900.41900.65200.1169000 | Electrical wiring work | 13.5d | 2027-03-02 | 2027-03-13 | 1608, 1623 |  | GC1 | 8835574 |
| 1625 | 37100.37400.37600.38500.39400.40900.41900.65200.1169100 | Painting 1st coat | 13.5d | 2027-03-14 | 2027-03-25 | 1609, 1622, 1623, 1624 |  | GC1 | 8835584 |
| 1626 | 37100.37400.37600.38500.39400.40900.41900.65200.1169200 | False ceiling | 11.25d | 2027-03-26 | 2027-04-04 | 1610, 1625 |  | GC1 | 8835594 |

| ID | WBS | Task | Duration | Start | Finish | Predecessors | Constraint | Calendar | Unique_Task_ID |
| --- | --- | --- | --- | --- | --- | --- | --- | --- | --- |
| 1627 | 37100.37400.37600.38500.39400.40900.41900.65300 | **29th Floor** | 159.75d | 2026-10-15 | 2027-04-19 |  | start no earlier than 2026-10-15 | GC1 | 8806824 |
| 1628 | 37100.37400.37600.38500.39400.40900.41900.65300.1169300 | Block Work | 9d | 2026-10-15 | 2026-10-22 | 1170, 1612 |  | GC1 | 8835604 |
| 1629 | 37100.37400.37600.38500.39400.40900.41900.65300.1169400 | Door Frame Fixing | 10.12d | 2026-10-23 | 2026-10-31 | 1613, 1628 |  | GC1 | 8835614 |
| 1630 | 37100.37400.37600.38500.39400.40900.41900.65300.1169500 | Internal Plumbing Works | 11.25d | 2026-10-23 | 2026-12-16 | 1614, 1628 |  | GC1 | 8835624 |
| 1631 | 37100.37400.37600.38500.39400.40900.41900.65300.1169600 | Waterproofing | 13.5d | 2026-12-30 | 2027-01-10 | 1615, 1630 |  | GC1 | 8835634 |
| 1632 | 37100.37400.37600.38500.39400.40900.41900.65300.1169700 | Internal Plaster | 10.12d | 2027-01-11 | 2027-01-19 | 1616, 1629, 1630, 1631 |  | GC1 | 8835644 |
| 1633 | 37100.37400.37600.38500.39400.40900.41900.65300.1169800 | IPS flooring work | 10.12d | 2027-01-20 | 2027-01-28 | 1617, 1629, 1631, 1632 |  | GC1 | 8835654 |
| 1634 | 37100.37400.37600.38500.39400.40900.41900.65300.1169900 | Toilet dado work | 9d | 2027-01-20 | 2027-01-27 | 1618, 1631, 1632 |  | GC1 | 8835664 |
| 1635 | 37100.37400.37600.38500.39400.40900.41900.65300.1170000 | Toilet flooring work | 7.88d | 2027-01-28 | 2027-02-03 | 1619, 1634 |  | GC1 | 8835674 |
| 1636 | 37100.37400.37600.38500.39400.40900.41900.65300.1170100 | Living dinning flooring | 16.88d | 2027-02-22 | 2027-03-08 | 1620, 1629, 1635 |  | GC1 | 8835684 |
| 1637 | 37100.37400.37600.38500.39400.40900.41900.65300.1170200 | Aluminium door-window fixing | 16.88d | 2027-03-09 | 2027-03-23 | 1621, 1633, 1636 |  | GC1 | 8835694 |
| 1638 | 37100.37400.37600.38500.39400.40900.41900.65300.1170300 | Putty primer coat | 6.75d | 2027-03-09 | 2027-03-14 | 1622, 1636 |  | GC1 | 8835704 |
| 1639 | 37100.37400.37600.38500.39400.40900.41900.65300.1170400 | Door shutter fixing | 9d | 2027-03-09 | 2027-03-16 | 1623, 1636 |  | GC1 | 8835714 |
| 1640 | 37100.37400.37600.38500.39400.40900.41900.65300.1170500 | Electrical wiring work | 13.5d | 2027-03-17 | 2027-03-28 | 1624, 1639 |  | GC1 | 8835724 |
| 1641 | 37100.37400.37600.38500.39400.40900.41900.65300.1170600 | Painting 1st coat | 13.5d | 2027-03-29 | 2027-04-09 | 1625, 1638, 1639, 1640 |  | GC1 | 8835734 |
| 1642 | 37100.37400.37600.38500.39400.40900.41900.65300.1170700 | False ceiling | 11.25d | 2027-04-10 | 2027-04-19 | 1626, 1641 |  | GC1 | 8835744 |
| 1643 | 37100.37400.37600.38500.39400.40900.41900.65400 | **30th Floor** | 171d | 2026-10-26 | 2027-05-10 |  | start no earlier than 2026-10-26 | GC1 | 8806834 |
| 1644 | 37100.37400.37600.38500.39400.40900.41900.65400.1170800 | Block Work | 9d | 2026-10-26 | 2026-12-17 | 1171, 1628 |  | GC1 | 8835754 |
| 1645 | 37100.37400.37600.38500.39400.40900.41900.65400.1170900 | Door Frame Fixing | 10.12d | 2026-12-18 | 2026-12-26 | 1629, 1644 |  | GC1 | 8835764 |
| 1646 | 37100.37400.37600.38500.39400.40900.41900.65400.1171000 | Internal Plumbing Works | 11.25d | 2026-12-18 | 2026-12-27 | 1630, 1644 |  | GC1 | 8835774 |
| 1647 | 37100.37400.37600.38500.39400.40900.41900.65400.1171100 | Waterproofing | 13.5d | 2027-01-11 | 2027-01-22 | 1631, 1646 |  | GC1 | 8835784 |
| 1648 | 37100.37400.37600.38500.39400.40900.41900.65400.1171200 | Internal Plaster | 10.12d | 2027-01-23 | 2027-01-31 | 1632, 1645, 1646, 1647 |  | GC1 | 8835794 |
| 1649 | 37100.37400.37600.38500.39400.40900.41900.65400.1171300 | IPS flooring work | 10.12d | 2027-02-01 | 2027-02-09 | 1633, 1645, 1647, 1648 |  | GC1 | 8835804 |
| 1650 | 37100.37400.37600.38500.39400.40900.41900.65400.1171400 | Toilet dado work | 9d | 2027-02-01 | 2027-02-08 | 1634, 1647, 1648 |  | GC1 | 8835814 |
| 1651 | 37100.37400.37600.38500.39400.40900.41900.65400.1171500 | Toilet flooring work | 7.88d | 2027-02-09 | 2027-02-15 | 1635, 1650 |  | GC1 | 8835824 |
| 1652 | 37100.37400.37600.38500.39400.40900.41900.65400.1171600 | Living dinning flooring | 16.88d | 2027-03-09 | 2027-03-23 | 1636, 1645, 1651 |  | GC1 | 8835834 |
| 1653 | 37100.37400.37600.38500.39400.40900.41900.65400.1171700 | Aluminium door-window fixing | 16.88d | 2027-03-24 | 2027-04-07 | 1637, 1649, 1652 |  | GC1 | 8835844 |
| 1654 | 37100.37400.37600.38500.39400.40900.41900.65400.1171800 | Putty primer coat | 6.75d | 2027-03-24 | 2027-03-29 | 1638, 1652 |  | GC1 | 8835854 |
| 1655 | 37100.37400.37600.38500.39400.40900.41900.65400.1171900 | Door shutter fixing | 9d | 2027-03-24 | 2027-03-31 | 1639, 1652 |  | GC1 | 8835864 |
| 1656 | 37100.37400.37600.38500.39400.40900.41900.65400.1172000 | Electrical wiring work | 16.88d | 2027-04-01 | 2027-04-15 | 1640, 1655 |  | GC1 | 8835874 |
| 1657 | 37100.37400.37600.38500.39400.40900.41900.65400.1172100 | Painting 1st coat | 16.88d | 2027-04-16 | 2027-04-30 | 1641, 1654, 1655, 1656 |  | GC1 | 8835884 |
| 1658 | 37100.37400.37600.38500.39400.40900.41900.65400.1172200 | False ceiling | 11.25d | 2027-05-01 | 2027-05-10 | 1642, 1657 |  | GC1 | 8835894 |

| ID | WBS | Task | Duration | Start | Finish | Predecessors | Constraint | Calendar | Unique_Task_ID |
| --- | --- | --- | --- | --- | --- | --- | --- | --- | --- |
| 1659 | 37100.37400.37600.38500.39400.40900.41900.65500 | **31st Floor** | 175.5d | 2026-12-21 | 2027-05-25 |  | start no earlier than 2026-12-21 | GC1 | 8806844 |
| 1660 | 37100.37400.37600.38500.39400.40900.41900.65500.1172300 | Block Work | 9d | 2026-12-21 | 2026-12-28 | 1172, 1644 |  | GC1 | 8835904 |
| 1661 | 37100.37400.37600.38500.39400.40900.41900.65500.1172400 | Door Frame Fixing | 10.12d | 2026-12-29 | 2027-01-06 | 1645, 1660 |  | GC1 | 8835914 |
| 1662 | 37100.37400.37600.38500.39400.40900.41900.65500.1172500 | Internal Plumbing Works | 11.25d | 2026-12-29 | 2027-01-07 | 1646, 1660 |  | GC1 | 8835924 |
| 1663 | 37100.37400.37600.38500.39400.40900.41900.65500.1172600 | Waterproofing | 13.5d | 2027-01-23 | 2027-02-03 | 1647, 1662 |  | GC1 | 8835934 |
| 1664 | 37100.37400.37600.38500.39400.40900.41900.65500.1172700 | Internal Plaster | 10.12d | 2027-02-04 | 2027-02-12 | 1648, 1661, 1662, 1663 |  | GC1 | 8835944 |
| 1665 | 37100.37400.37600.38500.39400.40900.41900.65500.1172800 | IPS flooring work | 10.12d | 2027-02-13 | 2027-02-21 | 1649, 1661, 1663, 1664 |  | GC1 | 8835954 |
| 1666 | 37100.37400.37600.38500.39400.40900.41900.65500.1172900 | Toilet dado work | 9d | 2027-02-13 | 2027-02-20 | 1650, 1663, 1664 |  | GC1 | 8835964 |
| 1667 | 37100.37400.37600.38500.39400.40900.41900.65500.1173000 | Toilet flooring work | 7.88d | 2027-02-21 | 2027-02-27 | 1651, 1666 |  | GC1 | 8835974 |
| 1668 | 37100.37400.37600.38500.39400.40900.41900.65500.1173100 | Living dinning flooring | 16.88d | 2027-03-24 | 2027-04-07 | 1652, 1661, 1667 |  | GC1 | 8835984 |
| 1669 | 37100.37400.37600.38500.39400.40900.41900.65500.1173200 | Aluminium door-window fixing | 13.5d | 2027-04-08 | 2027-04-19 | 1653, 1665, 1668 |  | GC1 | 8835994 |
| 1670 | 37100.37400.37600.38500.39400.40900.41900.65500.1173300 | Putty primer coat | 6.75d | 2027-04-08 | 2027-04-13 | 1654, 1668 |  | GC1 | 8836004 |
| 1671 | 37100.37400.37600.38500.39400.40900.41900.65500.1173400 | Door shutter fixing | 9d | 2027-04-08 | 2027-04-15 | 1655, 1668 |  | GC1 | 8836014 |
| 1672 | 37100.37400.37600.38500.39400.40900.41900.65500.1173500 | Electrical wiring work | 16.88d | 2027-04-16 | 2027-04-30 | 1656, 1671 |  | GC1 | 8836024 |
| 1673 | 37100.37400.37600.38500.39400.40900.41900.65500.1173600 | Painting 1st coat | 16.88d | 2027-05-01 | 2027-05-15 | 1657, 1670, 1671, 1672 |  | GC1 | 8836034 |
| 1674 | 37100.37400.37600.38500.39400.40900.41900.65500.1173700 | False ceiling | 11.25d | 2027-05-16 | 2027-05-25 | 1658, 1673 |  | GC1 | 8836044 |
| 1675 | 37100.37400.37600.38500.39400.40900.41900.65600 | **32nd Floor** | 183.38d | 2026-12-29 | 2027-06-09 |  | start no earlier than 2026-12-29 | GC1 | 8806854 |
| 1676 | 37100.37400.37600.38500.39400.40900.41900.65600.1173800 | Block Work | 9d | 2026-12-29 | 2027-01-05 | 1173, 1660 |  | GC1 | 8836054 |
| 1677 | 37100.37400.37600.38500.39400.40900.41900.65600.1173900 | Door Frame Fixing | 10.12d | 2027-01-07 | 2027-01-15 | 1661, 1676 |  | GC1 | 8836064 |
| 1678 | 37100.37400.37600.38500.39400.40900.41900.65600.1174000 | Internal Plumbing Works | 11.25d | 2027-01-08 | 2027-01-17 | 1662, 1676 |  | GC1 | 8836074 |
| 1679 | 37100.37400.37600.38500.39400.40900.41900.65600.1174100 | Waterproofing | 13.5d | 2027-02-04 | 2027-02-15 | 1663, 1678 |  | GC1 | 8836084 |
| 1680 | 37100.37400.37600.38500.39400.40900.41900.65600.1174200 | Internal Plaster | 10.12d | 2027-02-16 | 2027-02-24 | 1664, 1677, 1678, 1679 |  | GC1 | 8836094 |
| 1681 | 37100.37400.37600.38500.39400.40900.41900.65600.1174300 | IPS flooring work | 10.12d | 2027-02-25 | 2027-03-05 | 1665, 1677, 1679, 1680 |  | GC1 | 8836104 |
| 1682 | 37100.37400.37600.38500.39400.40900.41900.65600.1174400 | Toilet dado work | 9d | 2027-02-25 | 2027-03-04 | 1666, 1679, 1680 |  | GC1 | 8836114 |
| 1683 | 37100.37400.37600.38500.39400.40900.41900.65600.1174500 | Toilet flooring work | 7.88d | 2027-03-05 | 2027-03-11 | 1667, 1682 |  | GC1 | 8836124 |
| 1684 | 37100.37400.37600.38500.39400.40900.41900.65600.1174600 | Living dinning flooring | 16.88d | 2027-04-08 | 2027-04-22 | 1668, 1677, 1683 |  | GC1 | 8836134 |
| 1685 | 37100.37400.37600.38500.39400.40900.41900.65600.1174700 | Aluminium door-window fixing | 13.5d | 2027-04-23 | 2027-05-04 | 1669, 1681, 1684 |  | GC1 | 8836144 |
| 1686 | 37100.37400.37600.38500.39400.40900.41900.65600.1174800 | Putty primer coat | 6.75d | 2027-04-23 | 2027-04-28 | 1670, 1684 |  | GC1 | 8836154 |
| 1687 | 37100.37400.37600.38500.39400.40900.41900.65600.1174900 | Door shutter fixing | 9d | 2027-04-23 | 2027-04-30 | 1671, 1684 |  | GC1 | 8836164 |
| 1688 | 37100.37400.37600.38500.39400.40900.41900.65600.1175000 | Electrical wiring work | 16.88d | 2027-05-01 | 2027-05-15 | 1672, 1687 |  | GC1 | 8836174 |
| 1689 | 37100.37400.37600.38500.39400.40900.41900.65600.1175100 | Painting 1st coat | 16.88d | 2027-05-16 | 2027-05-30 | 1673, 1686, 1687, 1688 |  | GC1 | 8836184 |
| 1690 | 37100.37400.37600.38500.39400.40900.41900.65600.1175200 | False ceiling | 11.25d | 2027-05-31 | 2027-06-09 | 1674, 1689 |  | GC1 | 8836194 |

| ID | WBS | Task | Duration | Start | Finish | Predecessors | Constraint | Calendar | Unique_Task_ID |
| --- | --- | --- | --- | --- | --- | --- | --- | --- | --- |
| 1691 | 37100.37400.37600.38500.39400.40900.41900.65700 | **33rd Floor** | 187.88d | 2027-01-06 | 2027-06-21 |  | start no earlier than 2027-01-06 | GC1 | 8806864 |
| 1692 | 37100.37400.37600.38500.39400.40900.41900.65700.1175300 | Block Work | 9d | 2027-01-06 | 2027-01-13 | 1174, 1676 |  | GC1 | 8836204 |
| 1693 | 37100.37400.37600.38500.39400.40900.41900.65700.1175400 | Door Frame Fixing | 10.12d | 2027-01-16 | 2027-01-24 | 1677, 1692 |  | GC1 | 8836214 |
| 1694 | 37100.37400.37600.38500.39400.40900.41900.65700.1175500 | Internal Plumbing Works | 11.25d | 2027-01-18 | 2027-01-27 | 1678, 1692 |  | GC1 | 8836224 |
| 1695 | 37100.37400.37600.38500.39400.40900.41900.65700.1175600 | Waterproofing | 13.5d | 2027-02-16 | 2027-02-27 | 1679, 1694 |  | GC1 | 8836234 |
| 1696 | 37100.37400.37600.38500.39400.40900.41900.65700.1175700 | Internal Plaster | 10.12d | 2027-02-28 | 2027-03-08 | 1680, 1693, 1694, 1695 |  | GC1 | 8836244 |
| 1697 | 37100.37400.37600.38500.39400.40900.41900.65700.1175800 | IPS flooring work | 10.12d | 2027-03-09 | 2027-03-17 | 1681, 1693, 1695, 1696 |  | GC1 | 8836254 |
| 1698 | 37100.37400.37600.38500.39400.40900.41900.65700.1175900 | Toilet dado work | 9d | 2027-03-09 | 2027-03-16 | 1682, 1695, 1696 |  | GC1 | 8836264 |
| 1699 | 37100.37400.37600.38500.39400.40900.41900.65700.1176000 | Toilet flooring work | 7.88d | 2027-03-17 | 2027-03-23 | 1683, 1698 |  | GC1 | 8836274 |
| 1700 | 37100.37400.37600.38500.39400.40900.41900.65700.1176100 | Living dinning flooring | 16.88d | 2027-04-23 | 2027-05-07 | 1684, 1693, 1699 |  | GC1 | 8836284 |
| 1701 | 37100.37400.37600.38500.39400.40900.41900.65700.1176200 | Aluminium door-window fixing | 16.88d | 2027-05-08 | 2027-05-22 | 1685, 1697, 1700 |  | GC1 | 8836294 |
| 1702 | 37100.37400.37600.38500.39400.40900.41900.65700.1176300 | Putty primer coat | 6.75d | 2027-05-08 | 2027-05-13 | 1686, 1700 |  | GC1 | 8836304 |
| 1703 | 37100.37400.37600.38500.39400.40900.41900.65700.1176400 | Door shutter fixing | 9d | 2027-05-08 | 2027-05-15 | 1687, 1700 |  | GC1 | 8836314 |
| 1704 | 37100.37400.37600.38500.39400.40900.41900.65700.1176500 | Electrical wiring work | 13.5d | 2027-05-16 | 2027-05-27 | 1688, 1703 |  | GC1 | 8836324 |
| 1705 | 37100.37400.37600.38500.39400.40900.41900.65700.1176600 | Painting 1st coat | 13.5d | 2027-05-31 | 2027-06-11 | 1689, 1702, 1703, 1704 |  | GC1 | 8836334 |
| 1706 | 37100.37400.37600.38500.39400.40900.41900.65700.1176700 | False ceiling | 11.25d | 2027-06-12 | 2027-06-21 | 1690, 1705 |  | GC1 | 8836344 |
| 1707 | 37100.37400.37600.38500.39400.40900.41900.65800 | **34th Floor** | 192.38d | 2027-01-14 | 2027-07-03 |  | start no earlier than 2027-01-14 | GC1 | 8806874 |
| 1708 | 37100.37400.37600.38500.39400.40900.41900.65800.1176800 | Block Work | 9d | 2027-01-14 | 2027-01-21 | 1175, 1692 |  | GC1 | 8836354 |
| 1709 | 37100.37400.37600.38500.39400.40900.41900.65800.1176900 | Door Frame Fixing | 10.12d | 2027-01-25 | 2027-02-02 | 1693, 1708 |  | GC1 | 8836364 |
| 1710 | 37100.37400.37600.38500.39400.40900.41900.65800.1177000 | Internal Plumbing Works | 11.25d | 2027-01-28 | 2027-02-06 | 1694, 1708 |  | GC1 | 8836374 |
| 1711 | 37100.37400.37600.38500.39400.40900.41900.65800.1177100 | Waterproofing | 13.5d | 2027-02-28 | 2027-03-11 | 1695, 1710 |  | GC1 | 8836384 |
| 1712 | 37100.37400.37600.38500.39400.40900.41900.65800.1177200 | Internal Plaster | 10.12d | 2027-03-12 | 2027-03-20 | 1696, 1709, 1710, 1711 |  | GC1 | 8836394 |
| 1713 | 37100.37400.37600.38500.39400.40900.41900.65800.1177300 | IPS flooring work | 10.12d | 2027-03-21 | 2027-03-29 | 1697, 1709, 1711, 1712 |  | GC1 | 8836404 |
| 1714 | 37100.37400.37600.38500.39400.40900.41900.65800.1177400 | Toilet dado work | 9d | 2027-03-21 | 2027-03-28 | 1698, 1711, 1712 |  | GC1 | 8836414 |
| 1715 | 37100.37400.37600.38500.39400.40900.41900.65800.1177500 | Toilet flooring work | 7.88d | 2027-03-29 | 2027-04-04 | 1699, 1714 |  | GC1 | 8836424 |
| 1716 | 37100.37400.37600.38500.39400.40900.41900.65800.1177600 | Living dinning flooring | 16.88d | 2027-05-08 | 2027-05-22 | 1700, 1709, 1715 |  | GC1 | 8836434 |
| 1717 | 37100.37400.37600.38500.39400.40900.41900.65800.1177700 | Aluminium door-window fixing | 16.88d | 2027-05-23 | 2027-06-06 | 1701, 1713, 1716 |  | GC1 | 8836444 |
| 1718 | 37100.37400.37600.38500.39400.40900.41900.65800.1177800 | Putty primer coat | 6.75d | 2027-05-23 | 2027-05-28 | 1702, 1716 |  | GC1 | 8836454 |
| 1719 | 37100.37400.37600.38500.39400.40900.41900.65800.1177900 | Door shutter fixing | 9d | 2027-05-23 | 2027-05-30 | 1703, 1716 |  | GC1 | 8836464 |
| 1720 | 37100.37400.37600.38500.39400.40900.41900.65800.1178000 | Electrical wiring work | 13.5d | 2027-05-31 | 2027-06-11 | 1704, 1719 |  | GC1 | 8836474 |
| 1721 | 37100.37400.37600.38500.39400.40900.41900.65800.1178100 | Painting 1st coat | 13.5d | 2027-06-12 | 2027-06-23 | 1705, 1718, 1719, 1720 |  | GC1 | 8836484 |
| 1722 | 37100.37400.37600.38500.39400.40900.41900.65800.1178200 | False ceiling | 11.25d | 2027-06-24 | 2027-07-03 | 1706, 1721 |  | GC1 | 8836494 |

| ID | WBS | Task | Duration | Start | Finish | Predecessors | Constraint | Calendar | Unique_Task_ID |
| --- | --- | --- | --- | --- | --- | --- | --- | --- | --- |
| 1723 | 37100.37400.37600.38500.39400.40900.41900.65900 | **35th Floor** | 196.88d | 2027-01-25 | 2027-07-18 |  | start no earlier than 2027-01-25 | GC1 | 8806884 |
| 1724 | 37100.37400.37600.38500.39400.40900.41900.65900.1178300 | Block Work | 9d | 2027-01-25 | 2027-02-01 | 1176, 1708 |  | GC1 | 8836504 |
| 1725 | 37100.37400.37600.38500.39400.40900.41900.65900.1178400 | Door Frame Fixing | 10.12d | 2027-02-03 | 2027-02-11 | 1709, 1724 |  | GC1 | 8836514 |
| 1726 | 37100.37400.37600.38500.39400.40900.41900.65900.1178500 | Internal Plumbing Works | 11.25d | 2027-02-07 | 2027-02-16 | 1710, 1724 |  | GC1 | 8836524 |
| 1727 | 37100.37400.37600.38500.39400.40900.41900.65900.1178600 | Waterproofing | 13.5d | 2027-03-12 | 2027-03-23 | 1711, 1726 |  | GC1 | 8836534 |
| 1728 | 37100.37400.37600.38500.39400.40900.41900.65900.1178700 | Internal Plaster | 10.12d | 2027-03-24 | 2027-04-01 | 1712, 1725, 1726, 1727 |  | GC1 | 8836544 |
| 1729 | 37100.37400.37600.38500.39400.40900.41900.65900.1178800 | IPS flooring work | 10.12d | 2027-04-02 | 2027-04-10 | 1713, 1725, 1727, 1728 |  | GC1 | 8836554 |
| 1730 | 37100.37400.37600.38500.39400.40900.41900.65900.1178900 | Toilet dado work | 9d | 2027-04-02 | 2027-04-09 | 1714, 1727, 1728 |  | GC1 | 8836564 |
| 1731 | 37100.37400.37600.38500.39400.40900.41900.65900.1179000 | Toilet flooring work | 7.88d | 2027-04-10 | 2027-04-16 | 1715, 1730 |  | GC1 | 8836574 |
| 1732 | 37100.37400.37600.38500.39400.40900.41900.65900.1179100 | Living dinning flooring | 16.88d | 2027-05-23 | 2027-06-06 | 1716, 1725, 1731 |  | GC1 | 8836584 |
| 1733 | 37100.37400.37600.38500.39400.40900.41900.65900.1179200 | Aluminium door-window fixing | 16.88d | 2027-06-07 | 2027-06-21 | 1717, 1729, 1732 |  | GC1 | 8836594 |
| 1734 | 37100.37400.37600.38500.39400.40900.41900.65900.1179300 | Putty primer coat | 6.75d | 2027-06-07 | 2027-06-12 | 1718, 1732 |  | GC1 | 8836604 |
| 1735 | 37100.37400.37600.38500.39400.40900.41900.65900.1179400 | Door shutter fixing | 9d | 2027-06-07 | 2027-06-14 | 1719, 1732 |  | GC1 | 8836614 |
| 1736 | 37100.37400.37600.38500.39400.40900.41900.65900.1179500 | Electrical wiring work | 13.5d | 2027-06-15 | 2027-06-26 | 1720, 1735 |  | GC1 | 8836624 |
| 1737 | 37100.37400.37600.38500.39400.40900.41900.65900.1179600 | Painting 1st coat | 13.5d | 2027-06-27 | 2027-07-08 | 1721, 1734, 1735, 1736 |  | GC1 | 8836634 |
| 1738 | 37100.37400.37600.38500.39400.40900.41900.65900.1179700 | False ceiling | 11.25d | 2027-07-09 | 2027-07-18 | 1722, 1737 |  | GC1 | 8836644 |
| 1739 | 37100.37400.37600.38500.39400.40900.190600 | **Terrace Finishing** | 90d | 2026-10-05 | 2027-02-06 |  | start no earlier than 2026-10-05 | GC1 | 8810724 |
| 1740 | 37100.37400.37600.38500.39400.40900.190600.512900 | Terrace waterproofing | 45d | 2026-10-05 | 2026-12-28 | 1133 |  | GC1 | 8819434 |
| 1741 | 37100.37400.37600.38500.39400.40900.190600.513000 | Terrace finishing | 45d | 2026-12-29 | 2027-02-06 | 1740 |  | GC1 | 8819444 |
| 1742 | 37100.37400.37600.38500.39400.40900.99100 | **Common Area Finishing** | 343.12d | 2026-12-29 | 2027-10-29 |  | start no earlier than 2026-12-29 | GC1 | 8808044 |
| 1743 | 37100.37400.37600.38500.39400.40900.99100.513100 | Block Work | 67.5d | 2026-12-29 | 2027-02-26 | 1138 |  | GC1 | 8819454 |
| 1744 | 37100.37400.37600.38500.39400.40900.99100.513200 | Internal Plaster | 135d | 2027-02-17 | 2027-06-16 | 1749SS+33.75d |  | GC1 | 8819464 |
| 1745 | 37100.37400.37600.38500.39400.40900.99100.513300 | Staircase railing fixing | 168.75d | 2027-06-02 | 2027-10-29 | 1747SS+33.75d, 1746SS+33.75d |  | GC1 | 8819474 |
| 1746 | 37100.37400.37600.38500.39400.40900.99100.513400 | Main staircase flooring | 168.75d | 2027-05-03 | 2027-09-29 | 1747SS+16.88d |  | GC1 | 8819484 |
| 1747 | 37100.37400.37600.38500.39400.40900.99100.513500 | Fire staircase flooring | 168.75d | 2027-04-18 | 2027-09-14 | 1744SS+16.88d, 1751SS+33.75d |  | GC1 | 8819494 |
| 1748 | 37100.37400.37600.38500.39400.40900.99100.513600 | Fire door work | 67.5d | 2027-06-02 | 2027-07-31 | 1746SS+33.75d, 1747SS+33.75d |  | GC1 | 8819504 |
| 1749 | 37100.37400.37600.38500.39400.40900.99100.513700 | Electrical wiring work | 135d | 2027-01-18 | 2027-05-17 | 1743SS+22.5d |  | GC1 | 8819514 |
| 1750 | 37100.37400.37600.38500.39400.40900.99100.513800 | Lobby flooring | 168.75d | 2027-01-21 | 2027-06-20 | 1749SS+4.12d |  | GC1 | 8819524 |
| 1751 | 37100.37400.37600.38500.39400.40900.99100.513900 | Ceiling & wall putty-primer | 123.75d | 2027-03-19 | 2027-07-06 | 1744SS+33.75d |  | GC1 | 8819534 |
| 1752 | 37100.37400.37600.38500.39400.40900.99100.514000 | Ceiling & wall painting | 112.5d | 2027-04-08 | 2027-07-16 | 1751SS+22.5d |  | GC1 | 8819544 |
| 1753 | 37100.37400.37600.38500.39400.40900.99100.514100 | Light fixture supply & installation | 50.62d | 2027-06-07 | 2027-07-21 | 1752SS+67.5d |  | GC1 | 8819554 |

| ID | WBS | Task | Duration | Start | Finish | Predecessors | Constraint | Calendar | Unique_Task_ID |
| --- | --- | --- | --- | --- | --- | --- | --- | --- | --- |
| 1754 | 37100.37400.37600.38500.39400.40900.46100 | **Balcony Glass Railing** | 78.75d | 2027-07-26 | 2027-10-03 |  | start no earlier than 2027-07-26 | GC1 | 8806164 |
| 1755 | 37100.37400.37600.38500.39400.40900.46100.514200 | 1st Floor | 2.25d | 2027-07-26 | 2027-07-27 | 1823 |  | GC1 | 8819564 |
| 1756 | 37100.37400.37600.38500.39400.40900.46100.514300 | 2nd Floor | 2.25d | 2027-07-28 | 2027-07-29 | 1755 |  | GC1 | 8819574 |
| 1757 | 37100.37400.37600.38500.39400.40900.46100.514400 | 3rd Floor | 2.25d | 2027-07-30 | 2027-07-31 | 1756 |  | GC1 | 8819584 |
| 1758 | 37100.37400.37600.38500.39400.40900.46100.514500 | 4th Floor | 2.25d | 2027-08-01 | 2027-08-02 | 1757 |  | GC1 | 8819594 |
| 1759 | 37100.37400.37600.38500.39400.40900.46100.514600 | 5th Floor | 2.25d | 2027-08-03 | 2027-08-04 | 1758 |  | GC1 | 8819604 |
| 1760 | 37100.37400.37600.38500.39400.40900.46100.514700 | 6th Floor | 2.25d | 2027-08-05 | 2027-08-06 | 1759 |  | GC1 | 8819614 |
| 1761 | 37100.37400.37600.38500.39400.40900.46100.514800 | 7th Floor | 2.25d | 2027-08-07 | 2027-08-08 | 1760 |  | GC1 | 8819624 |
| 1762 | 37100.37400.37600.38500.39400.40900.46100.514900 | 8th Floor | 2.25d | 2027-08-09 | 2027-08-10 | 1761 |  | GC1 | 8819634 |
| 1763 | 37100.37400.37600.38500.39400.40900.46100.515000 | 9th Floor | 2.25d | 2027-08-11 | 2027-08-12 | 1762 |  | GC1 | 8819644 |
| 1764 | 37100.37400.37600.38500.39400.40900.46100.515100 | 10th Floor | 2.25d | 2027-08-13 | 2027-08-14 | 1763 |  | GC1 | 8819654 |
| 1765 | 37100.37400.37600.38500.39400.40900.46100.515200 | 11th Floor | 2.25d | 2027-08-15 | 2027-08-16 | 1764 |  | GC1 | 8819664 |
| 1766 | 37100.37400.37600.38500.39400.40900.46100.515300 | 12th Floor | 2.25d | 2027-08-17 | 2027-08-18 | 1765 |  | GC1 | 8819674 |
| 1767 | 37100.37400.37600.38500.39400.40900.46100.515400 | 13th Floor | 2.25d | 2027-08-19 | 2027-08-20 | 1766 |  | GC1 | 8819684 |
| 1768 | 37100.37400.37600.38500.39400.40900.46100.515500 | 14th Floor | 2.25d | 2027-08-21 | 2027-08-22 | 1767 |  | GC1 | 8819694 |
| 1769 | 37100.37400.37600.38500.39400.40900.46100.515600 | 15th Floor | 2.25d | 2027-08-23 | 2027-08-24 | 1768 |  | GC1 | 8819704 |
| 1770 | 37100.37400.37600.38500.39400.40900.46100.515700 | 16th Floor | 2.25d | 2027-08-25 | 2027-08-26 | 1769 |  | GC1 | 8819714 |
| 1771 | 37100.37400.37600.38500.39400.40900.46100.515800 | 17th Floor | 2.25d | 2027-08-27 | 2027-08-28 | 1770 |  | GC1 | 8819724 |
| 1772 | 37100.37400.37600.38500.39400.40900.46100.515900 | 18th Floor | 2.25d | 2027-08-29 | 2027-08-30 | 1771 |  | GC1 | 8819734 |
| 1773 | 37100.37400.37600.38500.39400.40900.46100.516000 | 19th Floor | 2.25d | 2027-08-31 | 2027-09-01 | 1772 |  | GC1 | 8819744 |
| 1774 | 37100.37400.37600.38500.39400.40900.46100.516100 | 20th Floor | 2.25d | 2027-09-02 | 2027-09-03 | 1773 |  | GC1 | 8819754 |
| 1775 | 37100.37400.37600.38500.39400.40900.46100.516200 | 21st Floor | 2.25d | 2027-09-04 | 2027-09-05 | 1774 |  | GC1 | 8819764 |
| 1776 | 37100.37400.37600.38500.39400.40900.46100.516300 | 22nd Floor | 2.25d | 2027-09-06 | 2027-09-07 | 1775 |  | GC1 | 8819774 |
| 1777 | 37100.37400.37600.38500.39400.40900.46100.516400 | 23rd Floor | 2.25d | 2027-09-08 | 2027-09-09 | 1776 |  | GC1 | 8819784 |
| 1778 | 37100.37400.37600.38500.39400.40900.46100.516500 | 24th Floor | 2.25d | 2027-09-10 | 2027-09-11 | 1777 |  | GC1 | 8819794 |
| 1779 | 37100.37400.37600.38500.39400.40900.46100.516600 | 25th Floor | 2.25d | 2027-09-12 | 2027-09-13 | 1778 |  | GC1 | 8819804 |
| 1780 | 37100.37400.37600.38500.39400.40900.46100.516700 | 26th Floor | 2.25d | 2027-09-14 | 2027-09-15 | 1779 |  | GC1 | 8819814 |
| 1781 | 37100.37400.37600.38500.39400.40900.46100.516800 | 27th Floor | 2.25d | 2027-09-16 | 2027-09-17 | 1780 |  | GC1 | 8819824 |
| 1782 | 37100.37400.37600.38500.39400.40900.46100.516900 | 28th Floor | 2.25d | 2027-09-18 | 2027-09-19 | 1781 |  | GC1 | 8819834 |
| 1783 | 37100.37400.37600.38500.39400.40900.46100.517000 | 29th Floor | 2.25d | 2027-09-20 | 2027-09-21 | 1782 |  | GC1 | 8819844 |
| 1784 | 37100.37400.37600.38500.39400.40900.46100.517100 | 30th Floor | 2.25d | 2027-09-22 | 2027-09-23 | 1783 |  | GC1 | 8819854 |
| 1785 | 37100.37400.37600.38500.39400.40900.46100.517200 | 31st Floor | 2.25d | 2027-09-24 | 2027-09-25 | 1784 |  | GC1 | 8819864 |
| 1786 | 37100.37400.37600.38500.39400.40900.46100.517300 | 32nd Floor | 2.25d | 2027-09-26 | 2027-09-27 | 1785 |  | GC1 | 8819874 |
| 1787 | 37100.37400.37600.38500.39400.40900.46100.517400 | 33rd Floor | 2.25d | 2027-09-28 | 2027-09-29 | 1786 |  | GC1 | 8819884 |
| 1788 | 37100.37400.37600.38500.39400.40900.46100.517500 | 34th Floor | 2.25d | 2027-09-30 | 2027-10-01 | 1787 |  | GC1 | 8819894 |
| 1789 | 37100.37400.37600.38500.39400.40900.46100.517600 | 35th Floor | 2.25d | 2027-10-02 | 2027-10-03 | 1788 |  | GC1 | 8819904 |

| ID | WBS | Task | Duration | Start | Finish | Predecessors | Constraint | Calendar | Unique_Task_ID |
| --- | --- | --- | --- | --- | --- | --- | --- | --- | --- |
| 1790 | 37100.37400.37600.38500.95700 | **MEP work** | 531d | 2026-12-29 | 2028-05-28 |  | start no earlier than 2026-12-29 | GC1 | 8807974 |
| 1791 | 37100.37400.37600.38500.95700.97800 | **Electrical work** | 270d | 2026-12-29 | 2027-08-25 |  | start no earlier than 2026-12-29 | GC1 | 8808004 |
| 1792 | 37100.37400.37600.38500.95700.97800.309200 | Cable Tray | 101.25d | 2026-12-29 | 2027-03-28 | 1138 |  | GC1 | 8813124 |
| 1793 | 37100.37400.37600.38500.95700.97800.309300 | Cable, main & sub main | 90d | 2027-02-12 | 2027-05-02 | 1792SS+50.62d |  | GC1 | 8813134 |
| 1794 | 37100.37400.37600.38500.95700.97800.309400 | LT panel & DB | 135d | 2027-03-29 | 2027-07-26 | 1792 |  | GC1 | 8813144 |
| 1795 | 37100.37400.37600.38500.95700.97800.309500 | Rising main | 101.25d | 2027-05-28 | 2027-08-25 | 1792FS+67.5d |  | GC1 | 8813154 |
| 1796 | 37100.37400.37600.38500.95700.97800.309600 | EARTHING Works | 67.5d | 2027-04-13 | 2027-06-11 | 1792FS+16.88d |  | GC1 | 8813164 |
| 1797 | 37100.37400.37600.38500.95700.97800.309700 | Advance lightening protection | 67.5d | 2027-02-07 | 2027-04-07 | 1741 |  | GC1 | 8813174 |
| 1798 | 37100.37400.37600.38500.95700.97800.309800 | Inverter | 39.38d | 2027-06-12 | 2027-07-16 | 1796 |  | GC1 | 8813184 |
| 1799 | 37100.37400.37600.38500.95700.97800.309900 | Energy meter | 67.5d | 2027-05-03 | 2027-07-01 | 1793 |  | GC1 | 8813194 |
| 1800 | 37100.37400.37600.38500.95700.97800.310000 | Exhast fan | 67.5d | 2027-04-28 | 2027-06-26 | 1733FF+5.62d |  | GC1 | 8813204 |
| 1801 | 37100.37400.37600.38500.95700.97800.310100 | FTTH | 67.5d | 2027-06-02 | 2027-07-31 | 1796FS-11.25d |  | GC1 | 8813214 |
| 1802 | 37100.37400.37600.38500.95700.97800.310200 | Security System - FA & PA | 61.88d | 2027-06-07 | 2027-07-31 | 1801FF |  | GC1 | 8813224 |
| 1803 | 37100.37400.37600.38500.95700.97800.310300 | Solar water heater | 67.5d | 2027-02-07 | 2027-04-07 | 1741 |  | GC1 | 8813234 |
| 1804 | 37100.37400.37600.38500.95700.122800 | **Plumbing wrok** | 281.25d | 2026-12-29 | 2027-09-04 |  | start no earlier than 2026-12-29 | GC1 | 8808364 |
| 1805 | 37100.37400.37600.38500.95700.122800.310400 | Terrace looping | 50.62d | 2026-12-29 | 2027-02-11 | 1740 |  | GC1 | 8813244 |
| 1806 | 37100.37400.37600.38500.95700.122800.310500 | Shaft Plumbing | 135d | 2027-02-12 | 2027-06-11 | 1805 |  | GC1 | 8813254 |
| 1807 | 37100.37400.37600.38500.95700.122800.310600 | CP sanitary fixture supply | 84.38d | 2027-06-16 | 2027-08-29 | 1728, 1731FS+67.5d |  | GC1 | 8813264 |
| 1808 | 37100.37400.37600.38500.95700.122800.310700 | Cold & flushing water supply | 101.25d | 2027-05-18 | 2027-08-15 | 1744SS+101.25d |  | GC1 | 8813274 |
| 1809 | 37100.37400.37600.38500.95700.122800.310800 | Misc work | 33.75d | 2027-08-06 | 2027-09-04 | 1808FS-11.25d |  | GC1 | 8813284 |
| 1810 | 37100.37400.37600.38500.95700.129700 | **Fire fighting work** | 382.5d | 2026-12-29 | 2028-01-17 |  | start no earlier than 2026-12-29 | GC1 | 8808494 |
| 1811 | 37100.37400.37600.38500.95700.129700.310900 | Fire hydrant work | 123.75d | 2027-04-18 | 2027-08-05 | 1744SS+67.5d |  | GC1 | 8813294 |
| 1812 | 37100.37400.37600.38500.95700.129700.311000 | Sprinkler & piping work | 101.25d | 2027-09-05 | 2028-01-17 | 1811FS+33.75d |  | GC1 | 8813304 |
| 1813 | 37100.37400.37600.38500.95700.129700.311100 | Shaft Downtake works | 101.25d | 2026-12-29 | 2027-03-28 | 1740 |  | GC1 | 8813314 |
| 1814 | 37100.37400.37600.38500.95700.129700.311200 | Connection to pump room | 33.75d | 2027-03-29 | 2027-04-27 | 1813 |  | GC1 | 8813324 |

| ID | WBS | Task | Duration | Start | Finish | Predecessors | Complete | Constraint | Calendar | Unique_Task_ID |
| --- | --- | --- | --- | --- | --- | --- | --- | --- | --- | --- |
| 1815 | 37100.37400.37600.38500.95700.184400 | **Lift work** | 191.25d | 2026-12-29 | 2027-06-16 |  |  | start no earlier than 2026-12-29 | GC1 | 8810694 |
| 1816 | 37100.37400.37600.38500.95700.184400.311300 | Lift Shaft Handover | 45d | 2026-12-29 | 2027-02-06 | 1138 |  |  | GC1 | 8813334 |
| 1817 | 37100.37400.37600.38500.95700.184400.311400 | Lift installation work | 50.62d | 2027-02-07 | 2027-03-23 | 1816 |  |  | GC1 | 8813344 |
| 1818 | 37100.37400.37600.38500.95700.184400.311500 | Lift testing and commissioning | 95.62d | 2027-03-24 | 2027-06-16 | 1817 |  |  | GC1 | 8813354 |
| 1819 | 37100.37400.37600.38500.95700.194500 | **AC work** | 112.5d | 2028-02-19 | 2028-05-28 |  |  | start no earlier than 2028-02-19 | GC1 | 8810864 |
| 1820 | 37100.37400.37600.38500.95700.194500.311600 | Split AC | 112.5d | 2028-02-19 | 2028-05-28 | 1836FS-33.75d |  |  | GC1 | 8813364 |
| 1821 | 37100.37400.37600.38500.126500 | **Tower Completion** | 303.75d | 2027-01-27 | 2027-10-23 |  |  | start no earlier than 2027-01-27 | GC1 | 8808454 |
| 1822 | 37100.37400.37600.38500.126500.231300 | SURFACE PREPARATION | 90d | 2027-01-27 | 2027-04-16 | 1176FS+2.25d |  |  | GC1 | 8811314 |
| 1823 | 37100.37400.37600.38500.126500.231400 | External Painting | 112.5d | 2027-04-17 | 2027-07-25 | 1822 |  |  | GC1 | 8811324 |
| 1824 | 37100.37400.37600.38500.126500.231500 | Final coat of painting | 101.25d | 2027-07-26 | 2027-10-23 | 1823 |  |  | GC1 | 8811334 |
| 1825 | 37100.37400.37600.38500.126500.231600 | Misc. work | 67.5d | 2027-07-26 | 2027-09-23 | 1823 |  |  | GC1 | 8811344 |
| 1826 | 37100.37400.37600.38500.192500 | **Basement lobby** | 67.5d | 2027-06-20 | 2027-08-19 |  |  | start no earlier than 2027-06-20 | GC1 | 8810884 |
| 1827 | 37100.37400.37600.38500.192500.231700 | Basement lobby | 67.5d | 2027-06-20 | 2027-08-19 | 1750 |  |  | GC1 | 8811354 |
| 1828 | 37100.37400.37600.38500.111400 | **Post OC activities** | 418.5d | 2027-06-27 | 2028-08-16 |  |  | start no earlier than 2027-06-27 | GC1 | 8808244 |
| 1829 | 37100.37400.37600.38500.111400.231800 | Wardrobe installation | 202.5d | 2028-02-19 | 2028-08-16 | 1836FS-33.75d |  |  | GC1 | 8811364 |
| 1830 | 37100.37400.37600.38500.111400.231900 | CP & SANITARYWARE | 135d | 2028-02-19 | 2028-06-17 | 1836FS-33.75d, 1807 |  |  | GC1 | 8811374 |
| 1831 | 37100.37400.37600.38500.111400.232000 | Wooden Flooring | 202.5d | 2028-02-19 | 2028-08-16 | 1836FS-33.75d |  |  | GC1 | 8811384 |
| 1832 | 37100.37400.37600.38500.111400.232100 | Electrical Fixtures And Fittings | 135d | 2027-06-27 | 2027-10-24 | 1736 |  |  | GC1 | 8811394 |
| 1833 | 37100.37400.37600.38500.111400.232200 | Modular Kitchen | 202.5d | 2028-02-19 | 2028-08-16 | 1829SS |  |  | GC1 | 8811404 |
| 1834 | 37100.37400.37600.38500.111400.232300 | Final Coat Paint | 101.25d | 2028-03-05 | 2028-06-02 | 1836FS-16.88d, 1753, 1738 |  |  | GC1 | 8811414 |
| 1835 | 37100.37400.37600.38500.218000 | OC Application/Readiness | 1.12d | 2028-01-18 | 2028-01-18 | 1138, 1745FS+9d, 950, 951, 1136, 1748, 1789, 1794, 1795, 1797, 1798, 1799, 1800, 1802, 1803, 1806, 1809, 1812, 1814, 1818, 1824, 1825, 1827 |  |  | GC1 | 8810984 |
| 1836 | 37100.37400.37600.38500.218100 | OC Receipt | 1.12d | 2028-03-19 | 2028-03-19 | 1835FS+67.5d |  |  | GC1 | 8810994 |
| 1837 | 37100.37400.37600.38500.218200 | Offer To Possession | 33.75d | 2028-08-17 | 2028-09-15 | 1829, 1830, 1831, 1832, 1833, 1834, 1820 |  |  | GC1 | 8811004 |
| 1838 | 37100.37400.37600.38600 | **Tower 3** | 1593d | 2024-05-14 | 2028-08-11 |  | 2% | start no earlier than 2024-05-14 | GC1 | 8805854 |
| 1839 | 37100.37400.37600.38600.100500 | **Substructure** | 655.88d | 2024-05-14 | 2026-01-31 |  | 40% | start no earlier than 2024-05-14 | GC1 | 8808114 |
| 1840 | 37100.37400.37600.38600.100500.116100 | **Soil Bed Preparation** | 515.25d | 2024-05-14 | 2025-08-14 |  | 80% | start no earlier than 2024-05-14 | GC1 | 8808324 |
| 1841 | 37100.37400.37600.38600.100500.116100.204700 | Test Piling | 106.69d | 2024-05-14 | 2024-08-16 | 7SS | 100% | start no earlier than 2024-05-14 | GC1 | 8813374 |
| 1842 | 37100.37400.37600.38600.100500.116100.204800 | Excavation | 33.56d | 2024-07-21 | 2024-08-19 | 1841SS+68d | 100% | start no earlier than 2024-07-21 | GC1 | 8813384 |
| 1843 | 37100.37400.37600.38600.100500.116100.204900 | Main Piling Work | 174.81d | 2024-08-22 | 2025-04-05 | 1841FS+5d | 96% | start no earlier than 2024-08-22 | GC1 | 8813394 |
| 1844 | 37100.37400.37600.38600.100500.116100.311700 | Anti-termite | 5.62d | 2025-04-02 | 2025-04-07 | 1843FF+2d |  |  | GC1 | 8813404 |
| 1845 | 37100.37400.37600.38600.100500.116100.205000 | PCC | 13.31d | 2025-03-02 | 2025-03-23 | 1842FS+0.25d | 100% | start no earlier than 2025-03-02 | GC1 | 8813414 |
| 1846 | 37100.37400.37600.38600.100500.116100.311800 | Backfilling | 67.5d | 2025-06-16 | 2025-08-14 | 1859 |  |  | GC1 | 8813424 |

| ID | WBS | Task | Duration | Start | Finish | Predecessors | Constraint | Calendar | Unique_Task_ID |
| --- | --- | --- | --- | --- | --- | --- | --- | --- | --- |
| 1847 | 37100.37400.37600.38600.100500.104700 | **RCC Structure** | 113.62d | 2025-04-01 | 2025-07-10 |  | start no earlier than 2025-04-01 | GC1 | 8808194 |
| 1848 | 37100.37400.37600.38600.100500.104700.188900 | **Raft Foundation** | 29.25d | 2025-04-01 | 2025-04-26 |  | start no earlier than 2025-04-01 | GC1 | 8810544 |
| 1849 | 37100.37400.37600.38600.100500.104700.188900.517700 | Reinforcement | 19.12d | 2025-04-01 | 2025-04-17 | 1845FS+2.25d |  | GC1 | 8819914 |
| 1850 | 37100.37400.37600.38600.100500.104700.188900.517800 | Formwork | 13.5d | 2025-04-13 | 2025-04-24 | 1849FF+7.88d |  | GC1 | 8819924 |
| 1851 | 37100.37400.37600.38600.100500.104700.188900.517900 | Concreting | 2.25d | 2025-04-25 | 2025-04-26 | 1850 |  | GC1 | 8819934 |
| 1852 | 37100.37400.37600.38600.100500.104700.189000 | **Basement 1 Slab** | 28.12d | 2025-04-27 | 2025-05-21 |  | start no earlier than 2025-04-27 | GC1 | 8810554 |
| 1853 | 37100.37400.37600.38600.100500.104700.189000.518000 | Reinforcement | 22.5d | 2025-04-27 | 2025-05-16 | 1851 |  | GC1 | 8819944 |
| 1854 | 37100.37400.37600.38600.100500.104700.189000.518100 | Formwork | 22.5d | 2025-04-28 | 2025-05-17 | 1853SS+1.12d |  | GC1 | 8819954 |
| 1855 | 37100.37400.37600.38600.100500.104700.189000.518200 | Concreting | 4.5d | 2025-05-18 | 2025-05-21 | 1854 |  | GC1 | 8819964 |
| 1856 | 37100.37400.37600.38600.100500.104700.189100 | **Basement 2 Slab/GF** | 28.12d | 2025-05-22 | 2025-06-15 |  | start no earlier than 2025-05-22 | GC1 | 8810564 |
| 1857 | 37100.37400.37600.38600.100500.104700.189100.518300 | Reinforcement | 22.5d | 2025-05-22 | 2025-06-10 | 1855 |  | GC1 | 8819974 |
| 1858 | 37100.37400.37600.38600.100500.104700.189100.518400 | Formwork | 22.5d | 2025-05-23 | 2025-06-11 | 1857SS+1.12d |  | GC1 | 8819984 |
| 1859 | 37100.37400.37600.38600.100500.104700.189100.518500 | Concreting | 4.5d | 2025-06-12 | 2025-06-15 | 1858 |  | GC1 | 8819994 |
| 1860 | 37100.37400.37600.38600.100500.104700.189200 | **Podium /Ground Floor Slab** | 28.12d | 2025-06-16 | 2025-07-10 |  | start no earlier than 2025-06-16 | GC1 | 8810574 |
| 1861 | 37100.37400.37600.38600.100500.104700.189200.518600 | Reinforcement | 22.5d | 2025-06-16 | 2025-07-05 | 1859 |  | GC1 | 8820004 |
| 1862 | 37100.37400.37600.38600.100500.104700.189200.518700 | Formwork | 22.5d | 2025-06-17 | 2025-07-06 | 1861SS+1.12d |  | GC1 | 8820014 |
| 1863 | 37100.37400.37600.38600.100500.104700.189200.518800 | Concreting | 4.5d | 2025-07-07 | 2025-07-10 | 1862 |  | GC1 | 8820024 |
| 1864 | 37100.37400.37600.38600.100500.129800 | **Substructure Finishing** | 146.25d | 2025-08-10 | 2026-01-31 |  | start no earlier than 2025-08-10 | GC1 | 8808514 |
| 1865 | 37100.37400.37600.38600.100500.129800.311900 | Masonary work | 50.62d | 2025-08-10 | 2025-09-23 | 1863FS+33.75d |  | GC1 | 8813434 |
| 1866 | 37100.37400.37600.38600.100500.129800.312000 | Plaster | 45d | 2025-09-24 | 2025-12-17 | 1865 |  | GC1 | 8813444 |
| 1867 | 37100.37400.37600.38600.100500.129800.312100 | Structural steel | 67.5d | 2025-09-09 | 2025-12-22 | 1863FS+67.5d |  | GC1 | 8813454 |
| 1868 | 37100.37400.37600.38600.100500.129800.312200 | White Wash | 50.62d | 2025-12-18 | 2026-01-31 | 1866 |  | GC1 | 8813464 |
| 1869 | 37100.37400.37600.38600.39500 | **Superstructure** | 828d | 2025-07-11 | 2027-10-14 |  | start no earlier than 2025-07-11 | GC1 | 8805904 |
| 1870 | 37100.37400.37600.38600.39500.44000 | **RCC structure** | 496.12d | 2025-07-11 | 2026-12-23 |  | start no earlier than 2025-07-11 | GC1 | 8806054 |
| 1871 | 37100.37400.37600.38600.39500.44000.158200 | **1st floor slab** | 28.12d | 2025-07-11 | 2025-08-04 |  | start no earlier than 2025-07-11 | GC1 | 8809674 |
| 1872 | 37100.37400.37600.38600.39500.44000.158200.518900 | Reinforcement | 24.75d | 2025-07-11 | 2025-08-01 | 1863 |  | GC1 | 8820034 |
| 1873 | 37100.37400.37600.38600.39500.44000.158200.519000 | Wall conduiting | 3.38d | 2025-07-14 | 2025-07-16 | 1872SS+3.38d |  | GC1 | 8820044 |
| 1874 | 37100.37400.37600.38600.39500.44000.158200.519100 | Formwork | 23.62d | 2025-07-14 | 2025-08-03 | 1872SS+3.38d |  | GC1 | 8820054 |
| 1875 | 37100.37400.37600.38600.39500.44000.158200.519200 | Concreting | 1.12d | 2025-08-04 | 2025-08-04 | 1874 |  | GC1 | 8820064 |

| ID | WBS | Task | Duration | Start | Finish | Predecessors | Constraint | Calendar | Unique_Task_ID |
| --- | --- | --- | --- | --- | --- | --- | --- | --- | --- |
| 1876 | 37100.37400.37600.38600.39500.44000.158300 | **2nd floor slab** | 23.62d | 2025-08-05 | 2025-08-25 |  | start no earlier than 2025-08-05 | GC1 | 8809664 |
| 1877 | 37100.37400.37600.38600.39500.44000.158300.519300 | Reinforcement | 20.25d | 2025-08-05 | 2025-08-22 | 1875 |  | GC1 | 8820074 |
| 1878 | 37100.37400.37600.38600.39500.44000.158300.519400 | Wall conduiting | 3.38d | 2025-08-08 | 2025-08-10 | 1873, 1877SS+3.38d |  | GC1 | 8820084 |
| 1879 | 37100.37400.37600.38600.39500.44000.158300.519500 | Formwork | 19.12d | 2025-08-08 | 2025-08-24 | 1877SS+3.38d |  | GC1 | 8820094 |
| 1880 | 37100.37400.37600.38600.39500.44000.158300.519600 | Concreting | 1.12d | 2025-08-25 | 2025-08-25 | 1879 |  | GC1 | 8820104 |
| 1881 | 37100.37400.37600.38600.39500.44000.158400 | **3rd floor slab** | 16.88d | 2025-08-26 | 2025-09-09 |  | start no earlier than 2025-08-26 | GC1 | 8809654 |
| 1882 | 37100.37400.37600.38600.39500.44000.158400.519700 | Reinforcement | 12.38d | 2025-08-26 | 2025-09-05 | 1880 |  | GC1 | 8820114 |
| 1883 | 37100.37400.37600.38600.39500.44000.158400.519800 | Wall conduiting | 3.38d | 2025-08-29 | 2025-08-31 | 1878, 1882SS+3.38d |  | GC1 | 8820124 |
| 1884 | 37100.37400.37600.38600.39500.44000.158400.519900 | Formwork | 11.25d | 2025-08-30 | 2025-09-08 | 1882SS+4.5d |  | GC1 | 8820134 |
| 1885 | 37100.37400.37600.38600.39500.44000.158400.520000 | Concreting | 1.12d | 2025-09-09 | 2025-09-09 | 1884 |  | GC1 | 8820144 |
| 1886 | 37100.37400.37600.38600.39500.44000.158500 | **4th floor slab** | 10.12d | 2025-09-10 | 2025-09-18 |  | start no earlier than 2025-09-10 | GC1 | 8809644 |
| 1887 | 37100.37400.37600.38600.39500.44000.158500.520100 | Reinforcement | 7.88d | 2025-09-10 | 2025-09-16 | 1885 |  | GC1 | 8820154 |
| 1888 | 37100.37400.37600.38600.39500.44000.158500.520200 | Wall conduiting | 2.25d | 2025-09-11 | 2025-09-12 | 1883, 1887SS+1.12d |  | GC1 | 8820164 |
| 1889 | 37100.37400.37600.38600.39500.44000.158500.520300 | Formwork | 6.75d | 2025-09-12 | 2025-09-17 | 1887SS+2.25d |  | GC1 | 8820174 |
| 1890 | 37100.37400.37600.38600.39500.44000.158500.520400 | Concreting | 1.12d | 2025-09-18 | 2025-09-18 | 1889 |  | GC1 | 8820184 |
| 1891 | 37100.37400.37600.38600.39500.44000.158600 | **5th floor slab** | 10.12d | 2025-09-19 | 2025-09-27 |  | start no earlier than 2025-09-19 | GC1 | 8809634 |
| 1892 | 37100.37400.37600.38600.39500.44000.158600.520500 | Reinforcement | 7.88d | 2025-09-19 | 2025-09-25 | 1890 |  | GC1 | 8820194 |
| 1893 | 37100.37400.37600.38600.39500.44000.158600.520600 | Wall conduiting | 2.25d | 2025-09-20 | 2025-09-21 | 1888, 1892SS+1.12d |  | GC1 | 8820204 |
| 1894 | 37100.37400.37600.38600.39500.44000.158600.520700 | Formwork | 6.75d | 2025-09-21 | 2025-09-26 | 1892SS+2.25d |  | GC1 | 8820214 |
| 1895 | 37100.37400.37600.38600.39500.44000.158600.520800 | Concreting | 1.12d | 2025-09-27 | 2025-09-27 | 1894 |  | GC1 | 8820224 |
| 1896 | 37100.37400.37600.38600.39500.44000.158700 | **6th floor slab** | 10.12d | 2025-09-28 | 2025-10-06 |  | start no earlier than 2025-09-28 | GC1 | 8809624 |
| 1897 | 37100.37400.37600.38600.39500.44000.158700.520900 | Reinforcement | 7.88d | 2025-09-28 | 2025-10-04 | 1895 |  | GC1 | 8820234 |
| 1898 | 37100.37400.37600.38600.39500.44000.158700.521000 | Wall conduiting | 2.25d | 2025-09-29 | 2025-09-30 | 1893, 1897SS+1.12d |  | GC1 | 8820244 |
| 1899 | 37100.37400.37600.38600.39500.44000.158700.521100 | Formwork | 6.75d | 2025-09-30 | 2025-10-05 | 1897SS+2.25d |  | GC1 | 8820254 |
| 1900 | 37100.37400.37600.38600.39500.44000.158700.521200 | Concreting | 1.12d | 2025-10-06 | 2025-10-06 | 1899 |  | GC1 | 8820264 |

| ID | WBS | Task | Duration | Start | Finish | Predecessors | Constraint | Calendar | Unique_Task_ID |
| --- | --- | --- | --- | --- | --- | --- | --- | --- | --- |
| 1901 | 37100.37400.37600.38600.39500.44000.158800 | **7th floor slab** | 10.12d | 2025-10-07 | 2025-10-15 |  | start no earlier than 2025-10-07 | GC1 | 8809614 |
| 1902 | 37100.37400.37600.38600.39500.44000.158800.521300 | Reinforcement | 7.88d | 2025-10-07 | 2025-10-13 | 1900 |  | GC1 | 8820274 |
| 1903 | 37100.37400.37600.38600.39500.44000.158800.521400 | Wall conduiting | 2.25d | 2025-10-08 | 2025-10-09 | 1898, 1902SS+1.12d |  | GC1 | 8820284 |
| 1904 | 37100.37400.37600.38600.39500.44000.158800.521500 | Formwork | 6.75d | 2025-10-09 | 2025-10-14 | 1902SS+2.25d |  | GC1 | 8820294 |
| 1905 | 37100.37400.37600.38600.39500.44000.158800.521600 | Concreting | 1.12d | 2025-10-15 | 2025-10-15 | 1904 |  | GC1 | 8820304 |
| 1906 | 37100.37400.37600.38600.39500.44000.158900 | **8th floor slab** | 13.5d | 2025-10-16 | 2025-10-27 |  | start no earlier than 2025-10-16 | GC1 | 8809604 |
| 1907 | 37100.37400.37600.38600.39500.44000.158900.521700 | Reinforcement | 11.25d | 2025-10-16 | 2025-10-25 | 1905 |  | GC1 | 8820314 |
| 1908 | 37100.37400.37600.38600.39500.44000.158900.521800 | Wall conduiting | 2.25d | 2025-10-17 | 2025-10-18 | 1903, 1907SS+1.12d |  | GC1 | 8820324 |
| 1909 | 37100.37400.37600.38600.39500.44000.158900.521900 | Formwork | 10.12d | 2025-10-18 | 2025-10-26 | 1907SS+2.25d |  | GC1 | 8820334 |
| 1910 | 37100.37400.37600.38600.39500.44000.158900.522000 | Concreting | 1.12d | 2025-10-27 | 2025-10-27 | 1909 |  | GC1 | 8820344 |
| 1911 | 37100.37400.37600.38600.39500.44000.159000 | **9th floor slab** | 10.12d | 2025-10-28 | 2025-12-20 |  | start no earlier than 2025-10-28 | GC1 | 8809594 |
| 1912 | 37100.37400.37600.38600.39500.44000.159000.522100 | Reinforcement | 7.88d | 2025-10-28 | 2025-12-18 | 1910 |  | GC1 | 8820354 |
| 1913 | 37100.37400.37600.38600.39500.44000.159000.522200 | Wall conduiting | 2.25d | 2025-10-29 | 2025-10-30 | 1908, 1912SS+1.12d |  | GC1 | 8820364 |
| 1914 | 37100.37400.37600.38600.39500.44000.159000.522300 | Formwork | 6.75d | 2025-10-30 | 2025-12-19 | 1912SS+2.25d |  | GC1 | 8820374 |
| 1915 | 37100.37400.37600.38600.39500.44000.159000.522400 | Concreting | 1.12d | 2025-12-20 | 2025-12-20 | 1914 |  | GC1 | 8820384 |
| 1916 | 37100.37400.37600.38600.39500.44000.159100 | **10th floor slab** | 10.12d | 2025-12-21 | 2025-12-29 |  | start no earlier than 2025-12-21 | GC1 | 8809584 |
| 1917 | 37100.37400.37600.38600.39500.44000.159100.522500 | Reinforcement | 7.88d | 2025-12-21 | 2025-12-27 | 1915 |  | GC1 | 8820394 |
| 1918 | 37100.37400.37600.38600.39500.44000.159100.522600 | Wall conduiting | 2.25d | 2025-12-22 | 2025-12-23 | 1913, 1917SS+1.12d |  | GC1 | 8820404 |
| 1919 | 37100.37400.37600.38600.39500.44000.159100.522700 | Formwork | 6.75d | 2025-12-23 | 2025-12-28 | 1917SS+2.25d |  | GC1 | 8820414 |
| 1920 | 37100.37400.37600.38600.39500.44000.159100.522800 | Concreting | 1.12d | 2025-12-29 | 2025-12-29 | 1919 |  | GC1 | 8820424 |
| 1921 | 37100.37400.37600.38600.39500.44000.159200 | **11th floor slab** | 10.12d | 2025-12-30 | 2026-01-07 |  | start no earlier than 2025-12-30 | GC1 | 8809574 |
| 1922 | 37100.37400.37600.38600.39500.44000.159200.522900 | Reinforcement | 7.88d | 2025-12-30 | 2026-01-05 | 1920 |  | GC1 | 8820434 |
| 1923 | 37100.37400.37600.38600.39500.44000.159200.523000 | Wall conduiting | 2.25d | 2025-12-31 | 2026-01-01 | 1918, 1922SS+1.12d |  | GC1 | 8820444 |
| 1924 | 37100.37400.37600.38600.39500.44000.159200.523100 | Formwork | 6.75d | 2026-01-01 | 2026-01-06 | 1922SS+2.25d |  | GC1 | 8820454 |
| 1925 | 37100.37400.37600.38600.39500.44000.159200.523200 | Concreting | 1.12d | 2026-01-07 | 2026-01-07 | 1924 |  | GC1 | 8820464 |

| ID | WBS | Task | Duration | Start | Finish | Predecessors | Constraint | Calendar | Unique_Task_ID |
| --- | --- | --- | --- | --- | --- | --- | --- | --- | --- |
| 1926 | 37100.37400.37600.38600.39500.44000.159300 | **12th floor slab** | 10.12d | 2026-01-08 | 2026-01-16 |  | start no earlier than 2026-01-08 | GC1 | 8809564 |
| 1927 | 37100.37400.37600.38600.39500.44000.159300.523300 | Reinforcement | 7.88d | 2026-01-08 | 2026-01-14 | 1925 |  | GC1 | 8820474 |
| 1928 | 37100.37400.37600.38600.39500.44000.159300.523400 | Wall conduiting | 2.25d | 2026-01-09 | 2026-01-10 | 1923, 1927SS+1.12d |  | GC1 | 8820484 |
| 1929 | 37100.37400.37600.38600.39500.44000.159300.523500 | Formwork | 6.75d | 2026-01-10 | 2026-01-15 | 1927SS+2.25d |  | GC1 | 8820494 |
| 1930 | 37100.37400.37600.38600.39500.44000.159300.523600 | Concreting | 1.12d | 2026-01-16 | 2026-01-16 | 1929 |  | GC1 | 8820504 |
| 1931 | 37100.37400.37600.38600.39500.44000.159400 | **13th floor slab** | 10.12d | 2026-01-17 | 2026-01-25 |  | start no earlier than 2026-01-17 | GC1 | 8809554 |
| 1932 | 37100.37400.37600.38600.39500.44000.159400.523700 | Reinforcement | 7.88d | 2026-01-17 | 2026-01-23 | 1930 |  | GC1 | 8820514 |
| 1933 | 37100.37400.37600.38600.39500.44000.159400.523800 | Wall conduiting | 2.25d | 2026-01-18 | 2026-01-19 | 1928, 1932SS+1.12d |  | GC1 | 8820524 |
| 1934 | 37100.37400.37600.38600.39500.44000.159400.523900 | Formwork | 6.75d | 2026-01-19 | 2026-01-24 | 1932SS+2.25d |  | GC1 | 8820534 |
| 1935 | 37100.37400.37600.38600.39500.44000.159400.524000 | Concreting | 1.12d | 2026-01-25 | 2026-01-25 | 1934 |  | GC1 | 8820544 |
| 1936 | 37100.37400.37600.38600.39500.44000.159500 | **14th floor slab** | 10.12d | 2026-01-26 | 2026-02-03 |  | start no earlier than 2026-01-26 | GC1 | 8809544 |
| 1937 | 37100.37400.37600.38600.39500.44000.159500.524100 | Reinforcement | 7.88d | 2026-01-26 | 2026-02-01 | 1935 |  | GC1 | 8820554 |
| 1938 | 37100.37400.37600.38600.39500.44000.159500.524200 | Wall conduiting | 2.25d | 2026-01-27 | 2026-01-28 | 1933, 1937SS+1.12d |  | GC1 | 8820564 |
| 1939 | 37100.37400.37600.38600.39500.44000.159500.524300 | Formwork | 6.75d | 2026-01-28 | 2026-02-02 | 1937SS+2.25d |  | GC1 | 8820574 |
| 1940 | 37100.37400.37600.38600.39500.44000.159500.524400 | Concreting | 1.12d | 2026-02-03 | 2026-02-03 | 1939 |  | GC1 | 8820584 |
| 1941 | 37100.37400.37600.38600.39500.44000.159600 | **15th floor slab** | 10.12d | 2026-02-04 | 2026-02-12 |  | start no earlier than 2026-02-04 | GC1 | 8809534 |
| 1942 | 37100.37400.37600.38600.39500.44000.159600.524500 | Reinforcement | 7.88d | 2026-02-04 | 2026-02-10 | 1940 |  | GC1 | 8820594 |
| 1943 | 37100.37400.37600.38600.39500.44000.159600.524600 | Wall conduiting | 2.25d | 2026-02-05 | 2026-02-06 | 1938, 1942SS+1.12d |  | GC1 | 8820604 |
| 1944 | 37100.37400.37600.38600.39500.44000.159600.524700 | Formwork | 6.75d | 2026-02-06 | 2026-02-11 | 1942SS+2.25d |  | GC1 | 8820614 |
| 1945 | 37100.37400.37600.38600.39500.44000.159600.524800 | Concreting | 1.12d | 2026-02-12 | 2026-02-12 | 1944 |  | GC1 | 8820624 |
| 1946 | 37100.37400.37600.38600.39500.44000.159700 | **16th floor slab** | 13.5d | 2026-02-13 | 2026-02-24 |  | start no earlier than 2026-02-13 | GC1 | 8809524 |
| 1947 | 37100.37400.37600.38600.39500.44000.159700.524900 | Reinforcement | 10.12d | 2026-02-13 | 2026-02-21 | 1945 |  | GC1 | 8820634 |
| 1948 | 37100.37400.37600.38600.39500.44000.159700.525000 | Wall conduiting | 2.25d | 2026-02-14 | 2026-02-15 | 1943, 1947SS+1.12d |  | GC1 | 8820644 |
| 1949 | 37100.37400.37600.38600.39500.44000.159700.525100 | Formwork | 10.12d | 2026-02-15 | 2026-02-23 | 1947SS+2.25d |  | GC1 | 8820654 |
| 1950 | 37100.37400.37600.38600.39500.44000.159700.525200 | Concreting | 1.12d | 2026-02-24 | 2026-02-24 | 1949 |  | GC1 | 8820664 |

| ID | WBS | Task | Duration | Start | Finish | Predecessors | Constraint | Calendar | Unique_Task_ID |
| --- | --- | --- | --- | --- | --- | --- | --- | --- | --- |
| 1951 | 37100.37400.37600.38600.39500.44000.159800 | **17th floor slab** | 10.12d | 2026-02-25 | 2026-03-05 |  | start no earlier than 2026-02-25 | GC1 | 8809514 |
| 1952 | 37100.37400.37600.38600.39500.44000.159800.525300 | Reinforcement | 7.88d | 2026-02-25 | 2026-03-03 | 1950 |  | GC1 | 8820674 |
| 1953 | 37100.37400.37600.38600.39500.44000.159800.525400 | Wall conduiting | 2.25d | 2026-02-26 | 2026-02-27 | 1948, 1952SS+1.12d |  | GC1 | 8820684 |
| 1954 | 37100.37400.37600.38600.39500.44000.159800.525500 | Formwork | 6.75d | 2026-02-27 | 2026-03-04 | 1952SS+2.25d |  | GC1 | 8820694 |
| 1955 | 37100.37400.37600.38600.39500.44000.159800.525600 | Concreting | 1.12d | 2026-03-05 | 2026-03-05 | 1954 |  | GC1 | 8820704 |
| 1956 | 37100.37400.37600.38600.39500.44000.159900 | **18th floor slab** | 10.12d | 2026-03-06 | 2026-03-14 |  | start no earlier than 2026-03-06 | GC1 | 8809504 |
| 1957 | 37100.37400.37600.38600.39500.44000.159900.525700 | Reinforcement | 7.88d | 2026-03-06 | 2026-03-12 | 1955 |  | GC1 | 8820714 |
| 1958 | 37100.37400.37600.38600.39500.44000.159900.525800 | Wall conduiting | 2.25d | 2026-03-07 | 2026-03-08 | 1953, 1957SS+1.12d |  | GC1 | 8820724 |
| 1959 | 37100.37400.37600.38600.39500.44000.159900.525900 | Formwork | 6.75d | 2026-03-08 | 2026-03-13 | 1957SS+2.25d |  | GC1 | 8820734 |
| 1960 | 37100.37400.37600.38600.39500.44000.159900.526000 | Concreting | 1.12d | 2026-03-14 | 2026-03-14 | 1959 |  | GC1 | 8820744 |
| 1961 | 37100.37400.37600.38600.39500.44000.160000 | **19th floor slab** | 9d | 2026-03-15 | 2026-03-22 |  | start no earlier than 2026-03-15 | GC1 | 8809494 |
| 1962 | 37100.37400.37600.38600.39500.44000.160000.526100 | Reinforcement | 7.88d | 2026-03-15 | 2026-03-21 | 1960 |  | GC1 | 8820754 |
| 1963 | 37100.37400.37600.38600.39500.44000.160000.526200 | Wall conduiting | 2.25d | 2026-03-16 | 2026-03-17 | 1958, 1962SS+1.12d |  | GC1 | 8820764 |
| 1964 | 37100.37400.37600.38600.39500.44000.160000.526300 | Formwork | 6.75d | 2026-03-16 | 2026-03-21 | 1962SS+1.12d |  | GC1 | 8820774 |
| 1965 | 37100.37400.37600.38600.39500.44000.160000.526400 | Concreting | 1.12d | 2026-03-22 | 2026-03-22 | 1964 |  | GC1 | 8820784 |
| 1966 | 37100.37400.37600.38600.39500.44000.160100 | **20th floor slab** | 9d | 2026-03-23 | 2026-03-30 |  | start no earlier than 2026-03-23 | GC1 | 8809484 |
| 1967 | 37100.37400.37600.38600.39500.44000.160100.526500 | Reinforcement | 7.88d | 2026-03-23 | 2026-03-29 | 1965 |  | GC1 | 8820794 |
| 1968 | 37100.37400.37600.38600.39500.44000.160100.526600 | Wall conduiting | 2.25d | 2026-03-24 | 2026-03-25 | 1963, 1967SS+1.12d |  | GC1 | 8820804 |
| 1969 | 37100.37400.37600.38600.39500.44000.160100.526700 | Formwork | 6.75d | 2026-03-24 | 2026-03-29 | 1967SS+1.12d |  | GC1 | 8820814 |
| 1970 | 37100.37400.37600.38600.39500.44000.160100.526800 | Concreting | 1.12d | 2026-03-30 | 2026-03-30 | 1969 |  | GC1 | 8820824 |
| 1971 | 37100.37400.37600.38600.39500.44000.160200 | **21st floor slab** | 11.25d | 2026-03-31 | 2026-04-09 |  | start no earlier than 2026-03-31 | GC1 | 8809474 |
| 1972 | 37100.37400.37600.38600.39500.44000.160200.526900 | Reinforcement | 9d | 2026-03-31 | 2026-04-07 | 1970 |  | GC1 | 8820834 |
| 1973 | 37100.37400.37600.38600.39500.44000.160200.527000 | Wall conduiting | 2.25d | 2026-04-01 | 2026-04-02 | 1968, 1972SS+1.12d |  | GC1 | 8820844 |
| 1974 | 37100.37400.37600.38600.39500.44000.160200.527100 | Formwork | 7.88d | 2026-04-02 | 2026-04-08 | 1972SS+2.25d |  | GC1 | 8820854 |
| 1975 | 37100.37400.37600.38600.39500.44000.160200.527200 | Concreting | 1.12d | 2026-04-09 | 2026-04-09 | 1974 |  | GC1 | 8820864 |

| ID | WBS | Task | Duration | Start | Finish | Predecessors | Constraint | Calendar | Unique_Task_ID |
| --- | --- | --- | --- | --- | --- | --- | --- | --- | --- |
| 1976 | 37100.37400.37600.38600.39500.44000.160300 | **22nd floor slab** | 11.25d | 2026-04-10 | 2026-04-19 |  | start no earlier than 2026-04-10 | GC1 | 8809464 |
| 1977 | 37100.37400.37600.38600.39500.44000.160300.527300 | Reinforcement | 9d | 2026-04-10 | 2026-04-17 | 1975 |  | GC1 | 8820874 |
| 1978 | 37100.37400.37600.38600.39500.44000.160300.527400 | Wall conduiting | 2.25d | 2026-04-11 | 2026-04-12 | 1973, 1977SS+1.12d |  | GC1 | 8820884 |
| 1979 | 37100.37400.37600.38600.39500.44000.160300.527500 | Formwork | 7.88d | 2026-04-12 | 2026-04-18 | 1977SS+2.25d |  | GC1 | 8820894 |
| 1980 | 37100.37400.37600.38600.39500.44000.160300.527600 | Concreting | 1.12d | 2026-04-19 | 2026-04-19 | 1979 |  | GC1 | 8820904 |
| 1981 | 37100.37400.37600.38600.39500.44000.160400 | **23rd floor slab** | 11.25d | 2026-04-20 | 2026-04-29 |  | start no earlier than 2026-04-20 | GC1 | 8809454 |
| 1982 | 37100.37400.37600.38600.39500.44000.160400.527700 | Reinforcement | 9d | 2026-04-20 | 2026-04-27 | 1980 |  | GC1 | 8820914 |
| 1983 | 37100.37400.37600.38600.39500.44000.160400.527800 | Wall conduiting | 2.25d | 2026-04-21 | 2026-04-22 | 1978, 1982SS+1.12d |  | GC1 | 8820924 |
| 1984 | 37100.37400.37600.38600.39500.44000.160400.527900 | Formwork | 7.88d | 2026-04-22 | 2026-04-28 | 1982SS+2.25d |  | GC1 | 8820934 |
| 1985 | 37100.37400.37600.38600.39500.44000.160400.528000 | Concreting | 1.12d | 2026-04-29 | 2026-04-29 | 1984 |  | GC1 | 8820944 |
| 1986 | 37100.37400.37600.38600.39500.44000.160500 | **24th floor slab** | 14.62d | 2026-04-30 | 2026-05-12 |  | start no earlier than 2026-04-30 | GC1 | 8809444 |
| 1987 | 37100.37400.37600.38600.39500.44000.160500.528100 | Reinforcement | 11.25d | 2026-04-30 | 2026-05-09 | 1985 |  | GC1 | 8820954 |
| 1988 | 37100.37400.37600.38600.39500.44000.160500.528200 | Wall conduiting | 2.25d | 2026-05-01 | 2026-05-02 | 1983, 1987SS+1.12d |  | GC1 | 8820964 |
| 1989 | 37100.37400.37600.38600.39500.44000.160500.528300 | Formwork | 11.25d | 2026-05-02 | 2026-05-11 | 1987SS+2.25d |  | GC1 | 8820974 |
| 1990 | 37100.37400.37600.38600.39500.44000.160500.528400 | Concreting | 1.12d | 2026-05-12 | 2026-05-12 | 1989 |  | GC1 | 8820984 |
| 1991 | 37100.37400.37600.38600.39500.44000.160600 | **25th floor slab** | 14.62d | 2026-05-13 | 2026-05-25 |  | start no earlier than 2026-05-13 | GC1 | 8809434 |
| 1992 | 37100.37400.37600.38600.39500.44000.160600.528500 | Reinforcement | 11.25d | 2026-05-13 | 2026-05-22 | 1990 |  | GC1 | 8820994 |
| 1993 | 37100.37400.37600.38600.39500.44000.160600.528600 | Wall conduiting | 2.25d | 2026-05-14 | 2026-05-15 | 1988, 1992SS+1.12d |  | GC1 | 8821004 |
| 1994 | 37100.37400.37600.38600.39500.44000.160600.528700 | Formwork | 11.25d | 2026-05-15 | 2026-05-24 | 1992SS+2.25d |  | GC1 | 8821014 |
| 1995 | 37100.37400.37600.38600.39500.44000.160600.528800 | Concreting | 1.12d | 2026-05-25 | 2026-05-25 | 1994 |  | GC1 | 8821024 |
| 1996 | 37100.37400.37600.38600.39500.44000.160700 | **26th floor slab** | 11.25d | 2026-05-26 | 2026-06-04 |  | start no earlier than 2026-05-26 | GC1 | 8809424 |
| 1997 | 37100.37400.37600.38600.39500.44000.160700.528900 | Reinforcement | 9d | 2026-05-26 | 2026-06-02 | 1995 |  | GC1 | 8821034 |
| 1998 | 37100.37400.37600.38600.39500.44000.160700.529000 | Wall conduiting | 2.25d | 2026-05-27 | 2026-05-28 | 1993, 1997SS+1.12d |  | GC1 | 8821044 |
| 1999 | 37100.37400.37600.38600.39500.44000.160700.529100 | Formwork | 7.88d | 2026-05-28 | 2026-06-03 | 1997SS+2.25d |  | GC1 | 8821054 |
| 2000 | 37100.37400.37600.38600.39500.44000.160700.529200 | Concreting | 1.12d | 2026-06-04 | 2026-06-04 | 1999 |  | GC1 | 8821064 |

| ID | WBS | Task | Duration | Start | Finish | Predecessors | Constraint | Calendar | Unique_Task_ID |
| --- | --- | --- | --- | --- | --- | --- | --- | --- | --- |
| 2001 | 37100.37400.37600.38600.39500.44000.160800 | **27th floor slab** | 11.25d | 2026-06-05 | 2026-06-14 |  | start no earlier than 2026-06-05 | GC1 | 8809414 |
| 2002 | 37100.37400.37600.38600.39500.44000.160800.529300 | Reinforcement | 9d | 2026-06-05 | 2026-06-12 | 2000 |  | GC1 | 8821074 |
| 2003 | 37100.37400.37600.38600.39500.44000.160800.529400 | Wall conduiting | 2.25d | 2026-06-06 | 2026-06-07 | 1998, 2002SS+1.12d |  | GC1 | 8821084 |
| 2004 | 37100.37400.37600.38600.39500.44000.160800.529500 | Formwork | 7.88d | 2026-06-07 | 2026-06-13 | 2002SS+2.25d |  | GC1 | 8821094 |
| 2005 | 37100.37400.37600.38600.39500.44000.160800.529600 | Concreting | 1.12d | 2026-06-14 | 2026-06-14 | 2004 |  | GC1 | 8821104 |
| 2006 | 37100.37400.37600.38600.39500.44000.160900 | **28th floor slab** | 11.25d | 2026-06-15 | 2026-06-24 |  | start no earlier than 2026-06-15 | GC1 | 8809404 |
| 2007 | 37100.37400.37600.38600.39500.44000.160900.529700 | Reinforcement | 9d | 2026-06-15 | 2026-06-22 | 2005 |  | GC1 | 8821114 |
| 2008 | 37100.37400.37600.38600.39500.44000.160900.529800 | Wall conduiting | 2.25d | 2026-06-16 | 2026-06-17 | 2003, 2007SS+1.12d |  | GC1 | 8821124 |
| 2009 | 37100.37400.37600.38600.39500.44000.160900.529900 | Formwork | 7.88d | 2026-06-17 | 2026-06-23 | 2007SS+2.25d |  | GC1 | 8821134 |
| 2010 | 37100.37400.37600.38600.39500.44000.160900.530000 | Concreting | 1.12d | 2026-06-24 | 2026-06-24 | 2009 |  | GC1 | 8821144 |
| 2011 | 37100.37400.37600.38600.39500.44000.161000 | **29th floor slab** | 11.25d | 2026-06-25 | 2026-07-04 |  | start no earlier than 2026-06-25 | GC1 | 8809394 |
| 2012 | 37100.37400.37600.38600.39500.44000.161000.530100 | Reinforcement | 9d | 2026-06-25 | 2026-07-02 | 2010 |  | GC1 | 8821154 |
| 2013 | 37100.37400.37600.38600.39500.44000.161000.530200 | Wall conduiting | 2.25d | 2026-06-26 | 2026-06-27 | 2008, 2012SS+1.12d |  | GC1 | 8821164 |
| 2014 | 37100.37400.37600.38600.39500.44000.161000.530300 | Formwork | 7.88d | 2026-06-27 | 2026-07-03 | 2012SS+2.25d |  | GC1 | 8821174 |
| 2015 | 37100.37400.37600.38600.39500.44000.161000.530400 | Concreting | 1.12d | 2026-07-04 | 2026-07-04 | 2014 |  | GC1 | 8821184 |
| 2016 | 37100.37400.37600.38600.39500.44000.161100 | **30th floor slab** | 11.25d | 2026-07-05 | 2026-07-14 |  | start no earlier than 2026-07-05 | GC1 | 8809384 |
| 2017 | 37100.37400.37600.38600.39500.44000.161100.530500 | Reinforcement | 9d | 2026-07-05 | 2026-07-12 | 2015 |  | GC1 | 8821194 |
| 2018 | 37100.37400.37600.38600.39500.44000.161100.530600 | Wall conduiting | 2.25d | 2026-07-06 | 2026-07-07 | 2013, 2017SS+1.12d |  | GC1 | 8821204 |
| 2019 | 37100.37400.37600.38600.39500.44000.161100.530700 | Formwork | 7.88d | 2026-07-07 | 2026-07-13 | 2017SS+2.25d |  | GC1 | 8821214 |
| 2020 | 37100.37400.37600.38600.39500.44000.161100.530800 | Concreting | 1.12d | 2026-07-14 | 2026-07-14 | 2019 |  | GC1 | 8821224 |
| 2021 | 37100.37400.37600.38600.39500.44000.161200 | **31st floor slab** | 13.5d | 2026-07-15 | 2026-07-26 |  | start no earlier than 2026-07-15 | GC1 | 8809374 |
| 2022 | 37100.37400.37600.38600.39500.44000.161200.530900 | Reinforcement | 10.12d | 2026-07-15 | 2026-07-23 | 2020 |  | GC1 | 8821234 |
| 2023 | 37100.37400.37600.38600.39500.44000.161200.531000 | Wall conduiting | 2.25d | 2026-07-16 | 2026-07-17 | 2018, 2022SS+1.12d |  | GC1 | 8821244 |
| 2024 | 37100.37400.37600.38600.39500.44000.161200.531100 | Formwork | 10.12d | 2026-07-17 | 2026-07-25 | 2022SS+2.25d |  | GC1 | 8821254 |
| 2025 | 37100.37400.37600.38600.39500.44000.161200.531200 | Concreting | 1.12d | 2026-07-26 | 2026-07-26 | 2024 |  | GC1 | 8821264 |

| ID | WBS | Task | Duration | Start | Finish | Predecessors | Constraint | Calendar | Unique_Task_ID |
| --- | --- | --- | --- | --- | --- | --- | --- | --- | --- |
| 2026 | 37100.37400.37600.38600.39500.44000.161300 | **32nd floor slab** | 14.62d | 2026-07-27 | 2026-08-08 |  | start no earlier than 2026-07-27 | GC1 | 8809364 |
| 2027 | 37100.37400.37600.38600.39500.44000.161300.531300 | Reinforcement | 11.25d | 2026-07-27 | 2026-08-05 | 2025 |  | GC1 | 8821274 |
| 2028 | 37100.37400.37600.38600.39500.44000.161300.531400 | Wall conduiting | 2.25d | 2026-07-28 | 2026-07-29 | 2023, 2027SS+1.12d |  | GC1 | 8821284 |
| 2029 | 37100.37400.37600.38600.39500.44000.161300.531500 | Formwork | 11.25d | 2026-07-29 | 2026-08-07 | 2027SS+2.25d |  | GC1 | 8821294 |
| 2030 | 37100.37400.37600.38600.39500.44000.161300.531600 | Concreting | 1.12d | 2026-08-08 | 2026-08-08 | 2029 |  | GC1 | 8821304 |
| 2031 | 37100.37400.37600.38600.39500.44000.161400 | **33rd floor slab** | 13.5d | 2026-08-09 | 2026-08-20 |  | start no earlier than 2026-08-09 | GC1 | 8809354 |
| 2032 | 37100.37400.37600.38600.39500.44000.161400.531700 | Reinforcement | 10.12d | 2026-08-09 | 2026-08-17 | 2030 |  | GC1 | 8821314 |
| 2033 | 37100.37400.37600.38600.39500.44000.161400.531800 | Wall conduiting | 2.25d | 2026-08-10 | 2026-08-11 | 2028, 2032SS+1.12d |  | GC1 | 8821324 |
| 2034 | 37100.37400.37600.38600.39500.44000.161400.531900 | Formwork | 10.12d | 2026-08-11 | 2026-08-19 | 2032SS+2.25d |  | GC1 | 8821334 |
| 2035 | 37100.37400.37600.38600.39500.44000.161400.532000 | Concreting | 1.12d | 2026-08-20 | 2026-08-20 | 2034 |  | GC1 | 8821344 |
| 2036 | 37100.37400.37600.38600.39500.44000.161500 | **34th floor slab** | 14.62d | 2026-08-21 | 2026-09-02 |  | start no earlier than 2026-08-21 | GC1 | 8809344 |
| 2037 | 37100.37400.37600.38600.39500.44000.161500.532100 | Reinforcement | 11.25d | 2026-08-21 | 2026-08-30 | 2035 |  | GC1 | 8821354 |
| 2038 | 37100.37400.37600.38600.39500.44000.161500.532200 | Wall conduiting | 2.25d | 2026-08-22 | 2026-08-23 | 2033, 2037SS+1.12d |  | GC1 | 8821364 |
| 2039 | 37100.37400.37600.38600.39500.44000.161500.532300 | Formwork | 11.25d | 2026-08-23 | 2026-09-01 | 2037SS+2.25d |  | GC1 | 8821374 |
| 2040 | 37100.37400.37600.38600.39500.44000.161500.532400 | Concreting | 1.12d | 2026-09-02 | 2026-09-02 | 2039 |  | GC1 | 8821384 |
| 2041 | 37100.37400.37600.38600.39500.44000.161600 | **35th floor slab** | 13.5d | 2026-09-03 | 2026-09-14 |  | start no earlier than 2026-09-03 | GC1 | 8809334 |
| 2042 | 37100.37400.37600.38600.39500.44000.161600.532500 | Reinforcement | 10.12d | 2026-09-03 | 2026-09-11 | 2040 |  | GC1 | 8821394 |
| 2043 | 37100.37400.37600.38600.39500.44000.161600.532600 | Wall conduiting | 2.25d | 2026-09-04 | 2026-09-05 | 2038, 2042SS+1.12d |  | GC1 | 8821404 |
| 2044 | 37100.37400.37600.38600.39500.44000.161600.532700 | Formwork | 9d | 2026-09-06 | 2026-09-13 | 2043SS+2.25d |  | GC1 | 8821414 |
| 2045 | 37100.37400.37600.38600.39500.44000.161600.532800 | Concreting | 1.12d | 2026-09-14 | 2026-09-14 | 2044 |  | GC1 | 8821424 |
| 2046 | 37100.37400.37600.38600.39500.44000.161700 | **Terrace floor slab** | 16.88d | 2026-09-15 | 2026-09-29 |  | start no earlier than 2026-09-15 | GC1 | 8809324 |
| 2047 | 37100.37400.37600.38600.39500.44000.161700.532900 | Reinforcement | 12.38d | 2026-09-15 | 2026-09-25 | 2045 |  | GC1 | 8821434 |
| 2048 | 37100.37400.37600.38600.39500.44000.161700.533000 | Wall conduiting | 2.25d | 2026-09-16 | 2026-09-17 | 2043, 2047SS+1.12d |  | GC1 | 8821444 |
| 2049 | 37100.37400.37600.38600.39500.44000.161700.533100 | Formwork | 13.5d | 2026-09-17 | 2026-09-28 | 2047SS+2.25d |  | GC1 | 8821454 |
| 2050 | 37100.37400.37600.38600.39500.44000.161700.533200 | Concreting | 1.12d | 2026-09-29 | 2026-09-29 | 2049 |  | GC1 | 8821464 |

| ID | WBS | Task | Duration | Start | Finish | Predecessors | Constraint | Calendar | Unique_Task_ID |
| --- | --- | --- | --- | --- | --- | --- | --- | --- | --- |
| 2051 | 37100.37400.37600.38600.39500.44000.161800 | **OHT & Mumty** | 45d | 2026-09-30 | 2026-12-23 |  | start no earlier than 2026-09-30 | GC1 | 8809314 |
| 2052 | 37100.37400.37600.38600.39500.44000.161800.533300 | Reinforcement | 33.75d | 2026-09-30 | 2026-10-29 | 2050 |  | GC1 | 8821474 |
| 2053 | 37100.37400.37600.38600.39500.44000.161800.533400 | Wall conduiting | 5.62d | 2026-10-01 | 2026-10-05 | 2048, 2052SS+1.12d |  | GC1 | 8821484 |
| 2054 | 37100.37400.37600.38600.39500.44000.161800.533500 | Formwork | 37.12d | 2026-10-04 | 2026-12-20 | 2052SS+4.5d |  | GC1 | 8821494 |
| 2055 | 37100.37400.37600.38600.39500.44000.161800.533600 | Concreting | 3.38d | 2026-12-21 | 2026-12-23 | 2054 |  | GC1 | 8821504 |
| 2056 | 37100.37400.37600.38600.39500.45500 | **Post Pour Activities** | 444.38d | 2025-09-19 | 2027-01-16 |  | start no earlier than 2025-09-19 | GC1 | 8806104 |
| 2057 | 37100.37400.37600.38600.39500.45500.312300 | 1st Floor | 12.38d | 2025-09-19 | 2025-09-29 | 1890 |  | GC1 | 8813474 |
| 2058 | 37100.37400.37600.38600.39500.45500.312400 | 2nd Floor | 12.38d | 2025-09-30 | 2025-10-10 | 2057, 1895 |  | GC1 | 8813484 |
| 2059 | 37100.37400.37600.38600.39500.45500.312500 | 3rd Floor | 12.38d | 2025-10-11 | 2025-10-21 | 2058, 1900 |  | GC1 | 8813494 |
| 2060 | 37100.37400.37600.38600.39500.45500.312600 | 4th Floor | 12.38d | 2025-10-22 | 2025-12-16 | 2059, 1905 |  | GC1 | 8813504 |
| 2061 | 37100.37400.37600.38600.39500.45500.312700 | 5th Floor | 12.38d | 2025-12-17 | 2025-12-27 | 2060, 1910 |  | GC1 | 8813514 |
| 2062 | 37100.37400.37600.38600.39500.45500.312800 | 6th Floor | 12.38d | 2025-12-28 | 2026-01-07 | 2061, 1915 |  | GC1 | 8813524 |
| 2063 | 37100.37400.37600.38600.39500.45500.312900 | 7th Floor | 12.38d | 2026-01-08 | 2026-01-18 | 2062, 1920 |  | GC1 | 8813534 |
| 2064 | 37100.37400.37600.38600.39500.45500.313000 | 8th Floor | 12.38d | 2026-01-19 | 2026-01-29 | 2063, 1925 |  | GC1 | 8813544 |
| 2065 | 37100.37400.37600.38600.39500.45500.313100 | 9th Floor | 12.38d | 2026-01-30 | 2026-02-09 | 2064, 1930 |  | GC1 | 8813554 |
| 2066 | 37100.37400.37600.38600.39500.45500.313200 | 10th Floor | 12.38d | 2026-02-10 | 2026-02-20 | 2065, 1935 |  | GC1 | 8813564 |
| 2067 | 37100.37400.37600.38600.39500.45500.313300 | 11th Floor | 12.38d | 2026-02-21 | 2026-03-03 | 2066, 1940 |  | GC1 | 8813574 |
| 2068 | 37100.37400.37600.38600.39500.45500.313400 | 12th Floor | 12.38d | 2026-03-04 | 2026-03-14 | 2067, 1945 |  | GC1 | 8813584 |
| 2069 | 37100.37400.37600.38600.39500.45500.313500 | 13th Floor | 12.38d | 2026-03-15 | 2026-03-25 | 2068, 1950 |  | GC1 | 8813594 |
| 2070 | 37100.37400.37600.38600.39500.45500.313600 | 14th Floor | 12.38d | 2026-03-26 | 2026-04-05 | 2069, 1955 |  | GC1 | 8813604 |
| 2071 | 37100.37400.37600.38600.39500.45500.313700 | 15th Floor | 12.38d | 2026-04-06 | 2026-04-16 | 2070, 1960 |  | GC1 | 8813614 |
| 2072 | 37100.37400.37600.38600.39500.45500.313800 | 16th Floor | 12.38d | 2026-04-17 | 2026-04-27 | 2071, 1965 |  | GC1 | 8813624 |
| 2073 | 37100.37400.37600.38600.39500.45500.313900 | 17th Floor | 12.38d | 2026-04-28 | 2026-05-08 | 2072, 1970 |  | GC1 | 8813634 |
| 2074 | 37100.37400.37600.38600.39500.45500.314000 | 18th Floor | 12.38d | 2026-05-09 | 2026-05-19 | 2073, 1975 |  | GC1 | 8813644 |
| 2075 | 37100.37400.37600.38600.39500.45500.314100 | 19th Floor | 12.38d | 2026-05-20 | 2026-05-30 | 2074, 1980 |  | GC1 | 8813654 |
| 2076 | 37100.37400.37600.38600.39500.45500.314200 | 20th Floor | 12.38d | 2026-05-31 | 2026-06-10 | 2075, 1985 |  | GC1 | 8813664 |
| 2077 | 37100.37400.37600.38600.39500.45500.314300 | 21st Floor | 12.38d | 2026-06-11 | 2026-06-21 | 2076, 1990 |  | GC1 | 8813674 |
| 2078 | 37100.37400.37600.38600.39500.45500.314400 | 22nd Floor | 12.38d | 2026-06-22 | 2026-07-02 | 2077, 1995 |  | GC1 | 8813684 |
| 2079 | 37100.37400.37600.38600.39500.45500.314500 | 23rd Floor | 12.38d | 2026-07-03 | 2026-07-13 | 2078, 2000 |  | GC1 | 8813694 |
| 2080 | 37100.37400.37600.38600.39500.45500.314600 | 24th Floor | 12.38d | 2026-07-14 | 2026-07-24 | 2079, 2005 |  | GC1 | 8813704 |
| 2081 | 37100.37400.37600.38600.39500.45500.314700 | 25th Floor | 12.38d | 2026-07-25 | 2026-08-04 | 2080, 2010 |  | GC1 | 8813714 |
| 2082 | 37100.37400.37600.38600.39500.45500.314800 | 26th Floor | 12.38d | 2026-08-05 | 2026-08-15 | 2081, 2015 |  | GC1 | 8813724 |
| 2083 | 37100.37400.37600.38600.39500.45500.314900 | 27th Floor | 12.38d | 2026-08-16 | 2026-08-26 | 2082, 2020 |  | GC1 | 8813734 |
| 2084 | 37100.37400.37600.38600.39500.45500.315000 | 28th Floor | 12.38d | 2026-08-27 | 2026-09-06 | 2083, 2025 |  | GC1 | 8813744 |
| 2085 | 37100.37400.37600.38600.39500.45500.315100 | 29th Floor | 12.38d | 2026-09-07 | 2026-09-17 | 2084, 2030 |  | GC1 | 8813754 |
| 2086 | 37100.37400.37600.38600.39500.45500.315200 | 30th Floor | 12.38d | 2026-09-18 | 2026-09-28 | 2085, 2035 |  | GC1 | 8813764 |
| 2087 | 37100.37400.37600.38600.39500.45500.315300 | 31st Floor | 12.38d | 2026-09-29 | 2026-10-09 | 2086, 2040 |  | GC1 | 8813774 |
| 2088 | 37100.37400.37600.38600.39500.45500.315400 | 32nd Flood | 12.38d | 2026-10-10 | 2026-10-20 | 2087, 2045 |  | GC1 | 8813784 |
| 2089 | 37100.37400.37600.38600.39500.45500.315500 | 33rd Floor | 12.38d | 2026-10-21 | 2026-10-31 | 2088 |  | GC1 | 8813794 |
| 2090 | 37100.37400.37600.38600.39500.45500.315600 | 34th Floor | 9d | 2026-12-16 | 2026-12-23 | 2089 |  | GC1 | 8813804 |
| 2091 | 37100.37400.37600.38600.39500.45500.315700 | 35th Floor | 9d | 2026-12-24 | 2026-12-31 | 2090 |  | GC1 | 8813814 |
| 2092 | 37100.37400.37600.38600.39500.45500.315800 | Terrace | 9d | 2027-01-01 | 2027-01-08 | 2091 |  | GC1 | 8813824 |
| 2093 | 37100.37400.37600.38600.39500.45500.315900 | Mumty & Machine Room | 9d | 2027-01-09 | 2027-01-16 | 2092 |  | GC1 | 8813834 |

| ID | WBS | Task | Duration | Start | Finish | Predecessors | Constraint | Calendar | Unique_Task_ID |
| --- | --- | --- | --- | --- | --- | --- | --- | --- | --- |
| 2094 | 37100.37400.37600.38600.39500.41000 | **Finishing work** | 736.62d | 2025-09-30 | 2027-10-14 |  | start no earlier than 2025-09-30 | GC1 | 8805954 |
| 2095 | 37100.37400.37600.38600.39500.41000.42000 | **Flat finishing** | 630.88d | 2025-09-30 | 2027-07-12 |  | start no earlier than 2025-09-30 | GC1 | 8806004 |
| 2096 | 37100.37400.37600.38600.39500.41000.42000.66000 | **1st Floor** | 102.38d | 2025-09-30 | 2026-02-13 |  | start no earlier than 2025-09-30 | GC1 | 8806894 |
| 2097 | 37100.37400.37600.38600.39500.41000.42000.66000.1179800 | Block Work | 9d | 2025-09-30 | 2025-10-08 | 2057FS+0.25d |  | GC1 | 8836654 |
| 2098 | 37100.37400.37600.38600.39500.41000.42000.66000.1179900 | Door Frame Fixing | 7.88d | 2025-10-08 | 2025-10-15 | 2097 |  | GC1 | 8836664 |
| 2099 | 37100.37400.37600.38600.39500.41000.42000.66000.1180000 | Internal Plumbing Works | 11.25d | 2025-10-08 | 2025-10-18 | 2097 |  | GC1 | 8836674 |
| 2100 | 37100.37400.37600.38600.39500.41000.42000.66000.1180100 | Waterproofing | 13.5d | 2025-10-18 | 2025-10-30 | 2099 |  | GC1 | 8836684 |
| 2101 | 37100.37400.37600.38600.39500.41000.42000.66000.1180200 | Internal Plaster | 4.5d | 2025-10-18 | 2025-10-22 | 2098FS+0.25d, 2099FS+0.25d |  | GC1 | 8836694 |
| 2102 | 37100.37400.37600.38600.39500.41000.42000.66000.1180300 | IPS flooring work | 10.12d | 2025-10-30 | 2025-12-23 | 2098, 2099, 2100 |  | GC1 | 8836704 |
| 2103 | 37100.37400.37600.38600.39500.41000.42000.66000.1180400 | Toilet dado work | 9d | 2025-10-30 | 2025-12-22 | 2100, 2101 |  | GC1 | 8836714 |
| 2104 | 37100.37400.37600.38600.39500.41000.42000.66000.1180500 | Toilet flooring work | 7.88d | 2025-12-22 | 2025-12-29 | 2103 |  | GC1 | 8836724 |
| 2105 | 37100.37400.37600.38600.39500.41000.42000.66000.1180600 | Living dinning flooring | 4.5d | 2025-12-29 | 2026-01-02 | 2098, 2104 |  | GC1 | 8836734 |
| 2106 | 37100.37400.37600.38600.39500.41000.42000.66000.1180700 | Aluminium door-window fixing | 11.25d | 2026-01-02 | 2026-01-12 | 2102, 2105 |  | GC1 | 8836744 |
| 2107 | 37100.37400.37600.38600.39500.41000.42000.66000.1180800 | Putty primer coat | 6.75d | 2026-01-02 | 2026-01-08 | 2105 |  | GC1 | 8836754 |
| 2108 | 37100.37400.37600.38600.39500.41000.42000.66000.1180900 | Door shutter fixing | 9d | 2026-01-02 | 2026-01-10 | 2105 |  | GC1 | 8836764 |
| 2109 | 37100.37400.37600.38600.39500.41000.42000.66000.1181000 | Electrical wiring work | 13.5d | 2026-01-10 | 2026-01-22 | 2108 |  | GC1 | 8836774 |
| 2110 | 37100.37400.37600.38600.39500.41000.42000.66000.1181100 | Painting 1st coat | 13.5d | 2026-01-22 | 2026-02-03 | 2107, 2108, 2109 |  | GC1 | 8836784 |
| 2111 | 37100.37400.37600.38600.39500.41000.42000.66000.1181200 | False ceiling | 11.25d | 2026-02-03 | 2026-02-13 | 2110 |  | GC1 | 8836794 |
| 2112 | 37100.37400.37600.38600.39500.41000.42000.66100 | **2nd Floor** | 106.62d | 2025-10-08 | 2026-02-25 |  | start no earlier than 2025-10-08 | GC1 | 8806904 |
| 2113 | 37100.37400.37600.38600.39500.41000.42000.66100.1181300 | Block Work | 9d | 2025-10-08 | 2025-10-16 | 2097FS+0.25d |  | GC1 | 8836804 |
| 2114 | 37100.37400.37600.38600.39500.41000.42000.66100.1181400 | Door Frame Fixing | 7.88d | 2025-10-16 | 2025-10-23 | 2098, 2113 |  | GC1 | 8836814 |
| 2115 | 37100.37400.37600.38600.39500.41000.42000.66100.1181500 | Internal Plumbing Works | 11.25d | 2025-10-18 | 2025-10-28 | 2099, 2113 |  | GC1 | 8836824 |
| 2116 | 37100.37400.37600.38600.39500.41000.42000.66100.1181600 | Waterproofing | 13.5d | 2025-10-30 | 2025-12-26 | 2100, 2115 |  | GC1 | 8836834 |
| 2117 | 37100.37400.37600.38600.39500.41000.42000.66100.1181700 | Internal Plaster | 4.5d | 2025-10-23 | 2025-10-27 | 2101FS+0.25d, 2114FS+0.25d |  | GC1 | 8836844 |
| 2118 | 37100.37400.37600.38600.39500.41000.42000.66100.1181800 | IPS flooring work | 10.12d | 2025-12-26 | 2026-01-04 | 2102, 2114, 2115, 2116 |  | GC1 | 8836854 |
| 2119 | 37100.37400.37600.38600.39500.41000.42000.66100.1181900 | Toilet dado work | 9d | 2025-12-26 | 2026-01-03 | 2103, 2116, 2117 |  | GC1 | 8836864 |
| 2120 | 37100.37400.37600.38600.39500.41000.42000.66100.1182000 | Toilet flooring work | 7.88d | 2026-01-03 | 2026-01-10 | 2104, 2119 |  | GC1 | 8836874 |
| 2121 | 37100.37400.37600.38600.39500.41000.42000.66100.1182100 | Living dinning flooring | 4.5d | 2026-01-02 | 2026-01-06 | 2105FS+0.25d, 2114FS+0.25d |  | GC1 | 8836884 |
| 2122 | 37100.37400.37600.38600.39500.41000.42000.66100.1182200 | Aluminium door-window fixing | 11.25d | 2026-01-12 | 2026-01-22 | 2106FS+0.25d, 2121FS+0.25d |  | GC1 | 8836894 |
| 2123 | 37100.37400.37600.38600.39500.41000.42000.66100.1182300 | Putty primer coat | 6.75d | 2026-01-08 | 2026-01-14 | 2107, 2121 |  | GC1 | 8836904 |
| 2124 | 37100.37400.37600.38600.39500.41000.42000.66100.1182400 | Door shutter fixing | 9d | 2026-01-10 | 2026-01-18 | 2108, 2121 |  | GC1 | 8836914 |
| 2125 | 37100.37400.37600.38600.39500.41000.42000.66100.1182500 | Electrical wiring work | 13.5d | 2026-01-22 | 2026-02-03 | 2109, 2124 |  | GC1 | 8836924 |
| 2126 | 37100.37400.37600.38600.39500.41000.42000.66100.1182600 | Painting 1st coat | 13.5d | 2026-02-03 | 2026-02-15 | 2110, 2123, 2124, 2125 |  | GC1 | 8836934 |
| 2127 | 37100.37400.37600.38600.39500.41000.42000.66100.1182700 | False ceiling | 11.25d | 2026-02-15 | 2026-02-25 | 2111, 2126 |  | GC1 | 8836944 |

| ID | WBS | Task | Duration | Start | Finish | Predecessors | Constraint | Calendar | Unique_Task_ID |
| --- | --- | --- | --- | --- | --- | --- | --- | --- | --- |
| 2128 | 37100.37400.37600.38600.39500.41000.42000.66200 | **3rd Floor** | 110.88d | 2025-10-16 | 2026-03-09 |  | start no earlier than 2025-10-16 | GC1 | 8806914 |
| 2129 | 37100.37400.37600.38600.39500.41000.42000.66200.1182800 | Block Work | 9d | 2025-10-16 | 2025-10-24 | 2113FS+0.25d |  | GC1 | 8836954 |
| 2130 | 37100.37400.37600.38600.39500.41000.42000.66200.1182900 | Door Frame Fixing | 7.88d | 2025-10-24 | 2025-10-31 | 2114, 2129 |  | GC1 | 8836964 |
| 2131 | 37100.37400.37600.38600.39500.41000.42000.66200.1183000 | Internal Plumbing Works | 11.25d | 2025-10-28 | 2025-12-22 | 2115, 2129 |  | GC1 | 8836974 |
| 2132 | 37100.37400.37600.38600.39500.41000.42000.66200.1183100 | Waterproofing | 13.5d | 2025-12-26 | 2026-01-07 | 2116, 2131 |  | GC1 | 8836984 |
| 2133 | 37100.37400.37600.38600.39500.41000.42000.66200.1183200 | Internal Plaster | 4.5d | 2025-10-31 | 2025-12-19 | 2117FS+0.25d, 2130FS+0.25d |  | GC1 | 8836994 |
| 2134 | 37100.37400.37600.38600.39500.41000.42000.66200.1183300 | IPS flooring work | 10.12d | 2026-01-07 | 2026-01-16 | 2118, 2130, 2132, 2133 |  | GC1 | 8837004 |
| 2135 | 37100.37400.37600.38600.39500.41000.42000.66200.1183400 | Toilet dado work | 9d | 2026-01-07 | 2026-01-15 | 2119, 2132, 2133 |  | GC1 | 8837014 |
| 2136 | 37100.37400.37600.38600.39500.41000.42000.66200.1183500 | Toilet flooring work | 7.88d | 2026-01-15 | 2026-01-22 | 2120, 2135 |  | GC1 | 8837024 |
| 2137 | 37100.37400.37600.38600.39500.41000.42000.66200.1183600 | Living dinning flooring | 4.5d | 2026-01-06 | 2026-01-10 | 2121FS+0.25d, 2130FS+0.25d |  | GC1 | 8837034 |
| 2138 | 37100.37400.37600.38600.39500.41000.42000.66200.1183700 | Aluminium door-window fixing | 11.25d | 2026-01-22 | 2026-02-01 | 2122FS+0.25d, 2137FS+0.25d |  | GC1 | 8837044 |
| 2139 | 37100.37400.37600.38600.39500.41000.42000.66200.1183800 | Putty primer coat | 6.75d | 2026-01-14 | 2026-01-20 | 2123, 2137 |  | GC1 | 8837054 |
| 2140 | 37100.37400.37600.38600.39500.41000.42000.66200.1183900 | Door shutter fixing | 9d | 2026-01-18 | 2026-01-26 | 2124, 2137 |  | GC1 | 8837064 |
| 2141 | 37100.37400.37600.38600.39500.41000.42000.66200.1184000 | Electrical wiring work | 13.5d | 2026-02-03 | 2026-02-15 | 2125, 2140 |  | GC1 | 8837074 |
| 2142 | 37100.37400.37600.38600.39500.41000.42000.66200.1184100 | Painting 1st coat | 13.5d | 2026-02-15 | 2026-02-27 | 2126, 2139, 2140, 2141 |  | GC1 | 8837084 |
| 2143 | 37100.37400.37600.38600.39500.41000.42000.66200.1184200 | False ceiling | 11.25d | 2026-02-27 | 2026-03-09 | 2127, 2142 |  | GC1 | 8837094 |
| 2144 | 37100.37400.37600.38600.39500.41000.42000.66300 | **4th Floor** | 115.12d | 2025-10-24 | 2026-03-21 |  | start no earlier than 2025-10-24 | GC1 | 8806924 |
| 2145 | 37100.37400.37600.38600.39500.41000.42000.66300.1184300 | Block Work | 9d | 2025-10-24 | 2025-12-16 | 2129FS+0.25d |  | GC1 | 8837104 |
| 2146 | 37100.37400.37600.38600.39500.41000.42000.66300.1184400 | Door Frame Fixing | 7.88d | 2025-12-16 | 2025-12-23 | 2130, 2145 |  | GC1 | 8837114 |
| 2147 | 37100.37400.37600.38600.39500.41000.42000.66300.1184500 | Internal Plumbing Works | 11.25d | 2025-12-22 | 2026-01-01 | 2131, 2145 |  | GC1 | 8837124 |
| 2148 | 37100.37400.37600.38600.39500.41000.42000.66300.1184600 | Waterproofing | 13.5d | 2026-01-07 | 2026-01-19 | 2132, 2147 |  | GC1 | 8837134 |
| 2149 | 37100.37400.37600.38600.39500.41000.42000.66300.1184700 | Internal Plaster | 4.5d | 2025-12-24 | 2025-12-28 | 2133FS+0.25d, 2146FS+0.25d |  | GC1 | 8837144 |
| 2150 | 37100.37400.37600.38600.39500.41000.42000.66300.1184800 | IPS flooring work | 10.12d | 2026-01-19 | 2026-01-28 | 2134, 2146, 2148, 2149 |  | GC1 | 8837154 |
| 2151 | 37100.37400.37600.38600.39500.41000.42000.66300.1184900 | Toilet dado work | 9d | 2026-01-19 | 2026-01-27 | 2135, 2148, 2149 |  | GC1 | 8837164 |
| 2152 | 37100.37400.37600.38600.39500.41000.42000.66300.1185000 | Toilet flooring work | 7.88d | 2026-01-27 | 2026-02-03 | 2136, 2151 |  | GC1 | 8837174 |
| 2153 | 37100.37400.37600.38600.39500.41000.42000.66300.1185100 | Living dinning flooring | 4.5d | 2026-01-10 | 2026-01-14 | 2137FS+0.25d, 2146FS+0.25d |  | GC1 | 8837184 |
| 2154 | 37100.37400.37600.38600.39500.41000.42000.66300.1185200 | Aluminium door-window fixing | 11.25d | 2026-02-01 | 2026-02-11 | 2138FS+0.25d, 2153FS+0.25d |  | GC1 | 8837194 |
| 2155 | 37100.37400.37600.38600.39500.41000.42000.66300.1185300 | Putty primer coat | 6.75d | 2026-01-20 | 2026-01-26 | 2139, 2153 |  | GC1 | 8837204 |
| 2156 | 37100.37400.37600.38600.39500.41000.42000.66300.1185400 | Door shutter fixing | 9d | 2026-01-26 | 2026-02-03 | 2140, 2153 |  | GC1 | 8837214 |
| 2157 | 37100.37400.37600.38600.39500.41000.42000.66300.1185500 | Electrical wiring work | 13.5d | 2026-02-15 | 2026-02-27 | 2141, 2156 |  | GC1 | 8837224 |
| 2158 | 37100.37400.37600.38600.39500.41000.42000.66300.1185600 | Painting 1st coat | 13.5d | 2026-02-27 | 2026-03-11 | 2142, 2155, 2156, 2157 |  | GC1 | 8837234 |
| 2159 | 37100.37400.37600.38600.39500.41000.42000.66300.1185700 | False ceiling | 11.25d | 2026-03-11 | 2026-03-21 | 2143, 2158 |  | GC1 | 8837244 |

| ID | WBS | Task | Duration | Start | Finish | Predecessors | Constraint | Calendar | Unique_Task_ID |
| --- | --- | --- | --- | --- | --- | --- | --- | --- | --- |
| 2160 | 37100.37400.37600.38600.39500.41000.42000.66400 | **5th Floor** | 122.75d | 2025-12-17 | 2026-04-05 |  | start no earlier than 2025-12-17 | GC1 | 8806934 |
| 2161 | 37100.37400.37600.38600.39500.41000.42000.66400.1185800 | Block Work | 9d | 2025-12-17 | 2025-12-25 | 2145FS+0.25d |  | GC1 | 8837254 |
| 2162 | 37100.37400.37600.38600.39500.41000.42000.66400.1185900 | Door Frame Fixing | 7.88d | 2025-12-25 | 2026-01-01 | 2146, 2161 |  | GC1 | 8837264 |
| 2163 | 37100.37400.37600.38600.39500.41000.42000.66400.1186000 | Internal Plumbing Works | 11.25d | 2026-01-01 | 2026-01-11 | 2147, 2161 |  | GC1 | 8837274 |
| 2164 | 37100.37400.37600.38600.39500.41000.42000.66400.1186100 | Waterproofing | 13.5d | 2026-01-19 | 2026-01-31 | 2148, 2163 |  | GC1 | 8837284 |
| 2165 | 37100.37400.37600.38600.39500.41000.42000.66400.1186200 | Internal Plaster | 4.5d | 2026-01-01 | 2026-01-05 | 2149FS+0.25d, 2162FS+0.25d |  | GC1 | 8837294 |
| 2166 | 37100.37400.37600.38600.39500.41000.42000.66400.1186300 | IPS flooring work | 10.12d | 2026-01-31 | 2026-02-09 | 2150, 2162, 2164, 2165 |  | GC1 | 8837304 |
| 2167 | 37100.37400.37600.38600.39500.41000.42000.66400.1186400 | Toilet dado work | 9d | 2026-01-31 | 2026-02-08 | 2151, 2164, 2165 |  | GC1 | 8837314 |
| 2168 | 37100.37400.37600.38600.39500.41000.42000.66400.1186500 | Toilet flooring work | 7.88d | 2026-02-08 | 2026-02-15 | 2152, 2167 |  | GC1 | 8837324 |
| 2169 | 37100.37400.37600.38600.39500.41000.42000.66400.1186600 | Living dinning flooring | 4.5d | 2026-01-15 | 2026-01-19 | 2153FS+0.25d, 2162FS+0.25d |  | GC1 | 8837334 |
| 2170 | 37100.37400.37600.38600.39500.41000.42000.66400.1186700 | Aluminium door-window fixing | 11.25d | 2026-02-12 | 2026-02-22 | 2154FS+0.25d, 2169FS+0.25d |  | GC1 | 8837344 |
| 2171 | 37100.37400.37600.38600.39500.41000.42000.66400.1186800 | Putty primer coat | 6.75d | 2026-01-26 | 2026-02-01 | 2155, 2169 |  | GC1 | 8837354 |
| 2172 | 37100.37400.37600.38600.39500.41000.42000.66400.1186900 | Door shutter fixing | 9d | 2026-02-03 | 2026-02-11 | 2156, 2169 |  | GC1 | 8837364 |
| 2173 | 37100.37400.37600.38600.39500.41000.42000.66400.1187000 | Electrical wiring work | 13.5d | 2026-02-27 | 2026-03-11 | 2157, 2172 |  | GC1 | 8837374 |
| 2174 | 37100.37400.37600.38600.39500.41000.42000.66400.1187100 | Painting 1st coat | 16.88d | 2026-03-11 | 2026-03-26 | 2158, 2171, 2172, 2173 |  | GC1 | 8837384 |
| 2175 | 37100.37400.37600.38600.39500.41000.42000.66400.1187200 | False ceiling | 11.25d | 2026-03-26 | 2026-04-05 | 2159, 2174 |  | GC1 | 8837394 |
| 2176 | 37100.37400.37600.38600.39500.41000.42000.66500 | **6th Floor** | 127d | 2025-12-25 | 2026-04-17 |  | start no earlier than 2025-12-25 | GC1 | 8806944 |
| 2177 | 37100.37400.37600.38600.39500.41000.42000.66500.1187300 | Block Work | 9d | 2025-12-25 | 2026-01-02 | 2161FS+0.25d |  | GC1 | 8837404 |
| 2178 | 37100.37400.37600.38600.39500.41000.42000.66500.1187400 | Door Frame Fixing | 7.88d | 2026-01-01 | 2026-01-08 | 1910, 2162 |  | GC1 | 8837414 |
| 2179 | 37100.37400.37600.38600.39500.41000.42000.66500.1187500 | Internal Plumbing Works | 11.25d | 2026-01-11 | 2026-01-21 | 2163, 2177 |  | GC1 | 8837424 |
| 2180 | 37100.37400.37600.38600.39500.41000.42000.66500.1187600 | Waterproofing | 13.5d | 2026-01-31 | 2026-02-12 | 2164, 2179 |  | GC1 | 8837434 |
| 2181 | 37100.37400.37600.38600.39500.41000.42000.66500.1187700 | Internal Plaster | 4.5d | 2026-01-08 | 2026-01-12 | 2165FS+0.25d, 2178FS+0.25d |  | GC1 | 8837444 |
| 2182 | 37100.37400.37600.38600.39500.41000.42000.66500.1187800 | IPS flooring work | 10.12d | 2026-02-12 | 2026-02-21 | 2166, 2178, 2180, 2181 |  | GC1 | 8837454 |
| 2183 | 37100.37400.37600.38600.39500.41000.42000.66500.1187900 | Toilet dado work | 9d | 2026-02-12 | 2026-02-20 | 2167, 2180, 2181 |  | GC1 | 8837464 |
| 2184 | 37100.37400.37600.38600.39500.41000.42000.66500.1188000 | Toilet flooring work | 7.88d | 2026-02-20 | 2026-02-27 | 2168, 2183 |  | GC1 | 8837474 |
| 2185 | 37100.37400.37600.38600.39500.41000.42000.66500.1188100 | Living dinning flooring | 4.5d | 2026-01-19 | 2026-01-23 | 2169FS+0.25d, 2178FS+0.25d |  | GC1 | 8837484 |
| 2186 | 37100.37400.37600.38600.39500.41000.42000.66500.1188200 | Aluminium door-window fixing | 11.25d | 2026-02-22 | 2026-03-04 | 2170FS+0.25d, 2185FS+0.25d |  | GC1 | 8837494 |
| 2187 | 37100.37400.37600.38600.39500.41000.42000.66500.1188300 | Putty primer coat | 6.75d | 2026-02-01 | 2026-02-07 | 2171, 2185 |  | GC1 | 8837504 |
| 2188 | 37100.37400.37600.38600.39500.41000.42000.66500.1188400 | Door shutter fixing | 9d | 2026-02-11 | 2026-02-19 | 2172, 2185 |  | GC1 | 8837514 |
| 2189 | 37100.37400.37600.38600.39500.41000.42000.66500.1188500 | Electrical wiring work | 13.5d | 2026-03-11 | 2026-03-23 | 2173, 2188 |  | GC1 | 8837524 |
| 2190 | 37100.37400.37600.38600.39500.41000.42000.66500.1188600 | Painting 1st coat | 13.5d | 2026-03-26 | 2026-04-07 | 2174, 2187, 2188, 2189 |  | GC1 | 8837534 |
| 2191 | 37100.37400.37600.38600.39500.41000.42000.66500.1188700 | False ceiling | 11.25d | 2026-04-07 | 2026-04-17 | 2175, 2190 |  | GC1 | 8837544 |

| ID | WBS | Task | Duration | Start | Finish | Predecessors | Constraint | Calendar | Unique_Task_ID |
| --- | --- | --- | --- | --- | --- | --- | --- | --- | --- |
| 2192 | 37100.37400.37600.38600.39500.41000.42000.66600 | **7th Floor** | 131.25d | 2026-01-02 | 2026-04-29 |  | start no earlier than 2026-01-02 | GC1 | 8806954 |
| 2193 | 37100.37400.37600.38600.39500.41000.42000.66600.1188800 | Block Work | 9d | 2026-01-02 | 2026-01-10 | 2177FS+0.25d |  | GC1 | 8837554 |
| 2194 | 37100.37400.37600.38600.39500.41000.42000.66600.1188900 | Door Frame Fixing | 7.88d | 2026-01-10 | 2026-01-17 | 2178, 2193 |  | GC1 | 8837564 |
| 2195 | 37100.37400.37600.38600.39500.41000.42000.66600.1189000 | Internal Plumbing Works | 11.25d | 2026-01-21 | 2026-01-31 | 2179, 2193 |  | GC1 | 8837574 |
| 2196 | 37100.37400.37600.38600.39500.41000.42000.66600.1189100 | Waterproofing | 13.5d | 2026-02-12 | 2026-02-24 | 2180, 2195 |  | GC1 | 8837584 |
| 2197 | 37100.37400.37600.38600.39500.41000.42000.66600.1189200 | Internal Plaster | 4.5d | 2026-01-17 | 2026-01-21 | 2181FS+0.25d, 2194FS+0.25d |  | GC1 | 8837594 |
| 2198 | 37100.37400.37600.38600.39500.41000.42000.66600.1189300 | IPS flooring work | 10.12d | 2026-02-21 | 2026-03-02 | 2182FS+0.25d, 2194FS+0.25d |  | GC1 | 8837604 |
| 2199 | 37100.37400.37600.38600.39500.41000.42000.66600.1189400 | Toilet dado work | 9d | 2026-02-24 | 2026-03-04 | 2183, 2196, 2197 |  | GC1 | 8837614 |
| 2200 | 37100.37400.37600.38600.39500.41000.42000.66600.1189500 | Toilet flooring work | 7.88d | 2026-03-04 | 2026-03-11 | 2184, 2199 |  | GC1 | 8837624 |
| 2201 | 37100.37400.37600.38600.39500.41000.42000.66600.1189600 | Living dinning flooring | 4.5d | 2026-01-23 | 2026-01-27 | 2185FS+0.25d, 2194FS+0.25d |  | GC1 | 8837634 |
| 2202 | 37100.37400.37600.38600.39500.41000.42000.66600.1189700 | Aluminium door-window fixing | 11.25d | 2026-03-04 | 2026-03-14 | 2186FS+0.25d, 2201FS+0.25d |  | GC1 | 8837644 |
| 2203 | 37100.37400.37600.38600.39500.41000.42000.66600.1189800 | Putty primer coat | 6.75d | 2026-02-07 | 2026-02-13 | 2187, 2201 |  | GC1 | 8837654 |
| 2204 | 37100.37400.37600.38600.39500.41000.42000.66600.1189900 | Door shutter fixing | 9d | 2026-02-19 | 2026-02-27 | 2188, 2201 |  | GC1 | 8837664 |
| 2205 | 37100.37400.37600.38600.39500.41000.42000.66600.1190000 | Electrical wiring work | 13.5d | 2026-03-23 | 2026-04-04 | 2189, 2204 |  | GC1 | 8837674 |
| 2206 | 37100.37400.37600.38600.39500.41000.42000.66600.1190100 | Painting 1st coat | 13.5d | 2026-04-07 | 2026-04-19 | 2190, 2203, 2204, 2205 |  | GC1 | 8837684 |
| 2207 | 37100.37400.37600.38600.39500.41000.42000.66600.1190200 | False ceiling | 11.25d | 2026-04-19 | 2026-04-29 | 2191, 2206 |  | GC1 | 8837694 |
| 2208 | 37100.37400.37600.38600.39500.41000.42000.66700 | **8th Floor** | 135.5d | 2026-01-10 | 2026-05-11 |  | start no earlier than 2026-01-10 | GC1 | 8806964 |
| 2209 | 37100.37400.37600.38600.39500.41000.42000.66700.1190300 | Block Work | 9d | 2026-01-10 | 2026-01-18 | 2193FS+0.25d |  | GC1 | 8837704 |
| 2210 | 37100.37400.37600.38600.39500.41000.42000.66700.1190400 | Door Frame Fixing | 7.88d | 2026-01-18 | 2026-01-25 | 2194, 2209 |  | GC1 | 8837714 |
| 2211 | 37100.37400.37600.38600.39500.41000.42000.66700.1190500 | Internal Plumbing Works | 11.25d | 2026-01-31 | 2026-02-10 | 2195, 2209 |  | GC1 | 8837724 |
| 2212 | 37100.37400.37600.38600.39500.41000.42000.66700.1190600 | Waterproofing | 13.5d | 2026-02-24 | 2026-03-08 | 2196, 2211 |  | GC1 | 8837734 |
| 2213 | 37100.37400.37600.38600.39500.41000.42000.66700.1190700 | Internal Plaster | 4.5d | 2026-01-26 | 2026-01-29 | 2197FS+0.25d, 2210FS+0.25d |  | GC1 | 8837744 |
| 2214 | 37100.37400.37600.38600.39500.41000.42000.66700.1190800 | IPS flooring work | 10.12d | 2026-03-08 | 2026-03-17 | 2198, 2210, 2212, 2213 |  | GC1 | 8837754 |
| 2215 | 37100.37400.37600.38600.39500.41000.42000.66700.1190900 | Toilet dado work | 9d | 2026-03-08 | 2026-03-16 | 2199, 2212, 2213 |  | GC1 | 8837764 |
| 2216 | 37100.37400.37600.38600.39500.41000.42000.66700.1191000 | Toilet flooring work | 7.88d | 2026-03-16 | 2026-03-23 | 2200, 2215 |  | GC1 | 8837774 |
| 2217 | 37100.37400.37600.38600.39500.41000.42000.66700.1191100 | Living dinning flooring | 4.5d | 2026-01-27 | 2026-01-31 | 2201FS+0.25d, 2210FS+0.25d |  | GC1 | 8837784 |
| 2218 | 37100.37400.37600.38600.39500.41000.42000.66700.1191200 | Aluminium door-window fixing | 11.25d | 2026-03-14 | 2026-03-24 | 2202FS+0.25d, 2217FS+0.25d |  | GC1 | 8837794 |
| 2219 | 37100.37400.37600.38600.39500.41000.42000.66700.1191300 | Putty primer coat | 6.75d | 2026-02-13 | 2026-02-19 | 2203, 2217 |  | GC1 | 8837804 |
| 2220 | 37100.37400.37600.38600.39500.41000.42000.66700.1191400 | Door shutter fixing | 9d | 2026-02-27 | 2026-03-07 | 2204, 2217 |  | GC1 | 8837814 |
| 2221 | 37100.37400.37600.38600.39500.41000.42000.66700.1191500 | Electrical wiring work | 13.5d | 2026-04-04 | 2026-04-16 | 2205, 2220 |  | GC1 | 8837824 |
| 2222 | 37100.37400.37600.38600.39500.41000.42000.66700.1191600 | Painting 1st coat | 13.5d | 2026-04-19 | 2026-05-01 | 2206, 2219, 2220, 2221 |  | GC1 | 8837834 |
| 2223 | 37100.37400.37600.38600.39500.41000.42000.66700.1191700 | False ceiling | 11.25d | 2026-05-01 | 2026-05-11 | 2207, 2222 |  | GC1 | 8837844 |

| ID | WBS | Task | Duration | Start | Finish | Predecessors | Constraint | Calendar | Unique_Task_ID |
| --- | --- | --- | --- | --- | --- | --- | --- | --- | --- |
| 2224 | 37100.37400.37600.38600.39500.41000.42000.66800 | **9th Floor** | 139.75d | 2026-01-19 | 2026-05-23 |  | start no earlier than 2026-01-19 | GC1 | 8806974 |
| 2225 | 37100.37400.37600.38600.39500.41000.42000.66800.1191800 | Block Work | 9d | 2026-01-19 | 2026-01-26 | 2209FS+0.25d |  | GC1 | 8837854 |
| 2226 | 37100.37400.37600.38600.39500.41000.42000.66800.1191900 | Door Frame Fixing | 7.88d | 2026-01-27 | 2026-02-02 | 2210, 2225 |  | GC1 | 8837864 |
| 2227 | 37100.37400.37600.38600.39500.41000.42000.66800.1192000 | Internal Plumbing Works | 11.25d | 2026-02-10 | 2026-02-20 | 2211, 2225 |  | GC1 | 8837874 |
| 2228 | 37100.37400.37600.38600.39500.41000.42000.66800.1192100 | Waterproofing | 13.5d | 2026-03-08 | 2026-03-20 | 2212, 2227 |  | GC1 | 8837884 |
| 2229 | 37100.37400.37600.38600.39500.41000.42000.66800.1192200 | Internal Plaster | 4.5d | 2026-02-03 | 2026-02-07 | 2213FS+0.25d, 2226FS+0.25d |  | GC1 | 8837894 |
| 2230 | 37100.37400.37600.38600.39500.41000.42000.66800.1192300 | IPS flooring work | 10.12d | 2026-03-20 | 2026-03-29 | 2214, 2226, 2228, 2229 |  | GC1 | 8837904 |
| 2231 | 37100.37400.37600.38600.39500.41000.42000.66800.1192400 | Toilet dado work | 9d | 2026-03-20 | 2026-03-28 | 2215, 2228, 2229 |  | GC1 | 8837914 |
| 2232 | 37100.37400.37600.38600.39500.41000.42000.66800.1192500 | Toilet flooring work | 7.88d | 2026-03-28 | 2026-04-04 | 2216, 2231 |  | GC1 | 8837924 |
| 2233 | 37100.37400.37600.38600.39500.41000.42000.66800.1192600 | Living dinning flooring | 4.5d | 2026-02-03 | 2026-02-07 | 2217FS+0.25d, 2226FS+0.25d |  | GC1 | 8837934 |
| 2234 | 37100.37400.37600.38600.39500.41000.42000.66800.1192700 | Aluminium door-window fixing | 11.25d | 2026-03-29 | 2026-04-08 | 2218, 2230, 2233 |  | GC1 | 8837944 |
| 2235 | 37100.37400.37600.38600.39500.41000.42000.66800.1192800 | Putty primer coat | 6.75d | 2026-02-19 | 2026-02-25 | 2219, 2233 |  | GC1 | 8837954 |
| 2236 | 37100.37400.37600.38600.39500.41000.42000.66800.1192900 | Door shutter fixing | 9d | 2026-03-07 | 2026-03-15 | 2220, 2233 |  | GC1 | 8837964 |
| 2237 | 37100.37400.37600.38600.39500.41000.42000.66800.1193000 | Electrical wiring work | 13.5d | 2026-04-16 | 2026-04-28 | 2221, 2236 |  | GC1 | 8837974 |
| 2238 | 37100.37400.37600.38600.39500.41000.42000.66800.1193100 | Painting 1st coat | 13.5d | 2026-05-01 | 2026-05-13 | 2222, 2235, 2236, 2237 |  | GC1 | 8837984 |
| 2239 | 37100.37400.37600.38600.39500.41000.42000.66800.1193200 | False ceiling | 11.25d | 2026-05-13 | 2026-05-23 | 2223, 2238 |  | GC1 | 8837994 |
| 2240 | 37100.37400.37600.38600.39500.41000.42000.66900 | **10th Floor** | 144d | 2026-01-27 | 2026-06-04 |  | start no earlier than 2026-01-27 | GC1 | 8806984 |
| 2241 | 37100.37400.37600.38600.39500.41000.42000.66900.1193300 | Block Work | 9d | 2026-01-27 | 2026-02-04 | 2225FS+0.25d |  | GC1 | 8838004 |
| 2242 | 37100.37400.37600.38600.39500.41000.42000.66900.1193400 | Door Frame Fixing | 7.88d | 2026-02-04 | 2026-02-11 | 2226, 2241 |  | GC1 | 8838014 |
| 2243 | 37100.37400.37600.38600.39500.41000.42000.66900.1193500 | Internal Plumbing Works | 11.25d | 2026-02-20 | 2026-03-02 | 2227, 2241 |  | GC1 | 8838024 |
| 2244 | 37100.37400.37600.38600.39500.41000.42000.66900.1193600 | Waterproofing | 13.5d | 2026-03-20 | 2026-04-01 | 2228, 2243 |  | GC1 | 8838034 |
| 2245 | 37100.37400.37600.38600.39500.41000.42000.66900.1193700 | Internal Plaster | 4.5d | 2026-02-11 | 2026-02-15 | 2229FS+0.25d, 2242FS+0.25d |  | GC1 | 8838044 |
| 2246 | 37100.37400.37600.38600.39500.41000.42000.66900.1193800 | IPS flooring work | 10.12d | 2026-04-01 | 2026-04-10 | 2230, 2242, 2244, 2245 |  | GC1 | 8838054 |
| 2247 | 37100.37400.37600.38600.39500.41000.42000.66900.1193900 | Toilet dado work | 9d | 2026-04-01 | 2026-04-09 | 2231, 2244, 2245 |  | GC1 | 8838064 |
| 2248 | 37100.37400.37600.38600.39500.41000.42000.66900.1194000 | Toilet flooring work | 7.88d | 2026-04-09 | 2026-04-16 | 2232, 2247 |  | GC1 | 8838074 |
| 2249 | 37100.37400.37600.38600.39500.41000.42000.66900.1194100 | Living dinning flooring | 4.5d | 2026-02-11 | 2026-02-15 | 2233FS+0.25d, 2242FS+0.25d |  | GC1 | 8838084 |
| 2250 | 37100.37400.37600.38600.39500.41000.42000.66900.1194200 | Aluminium door-window fixing | 11.25d | 2026-04-08 | 2026-04-18 | 2234FS+0.25d, 2249FS+0.25d |  | GC1 | 8838094 |
| 2251 | 37100.37400.37600.38600.39500.41000.42000.66900.1194300 | Putty primer coat | 6.75d | 2026-02-25 | 2026-03-03 | 2235, 2249 |  | GC1 | 8838104 |
| 2252 | 37100.37400.37600.38600.39500.41000.42000.66900.1194400 | Door shutter fixing | 9d | 2026-03-15 | 2026-03-23 | 2236, 2249 |  | GC1 | 8838114 |
| 2253 | 37100.37400.37600.38600.39500.41000.42000.66900.1194500 | Electrical wiring work | 13.5d | 2026-04-28 | 2026-05-10 | 2237, 2252 |  | GC1 | 8838124 |
| 2254 | 37100.37400.37600.38600.39500.41000.42000.66900.1194600 | Painting 1st coat | 13.5d | 2026-05-13 | 2026-05-25 | 2238, 2251, 2252, 2253 |  | GC1 | 8838134 |
| 2255 | 37100.37400.37600.38600.39500.41000.42000.66900.1194700 | False ceiling | 11.25d | 2026-05-25 | 2026-06-04 | 2239, 2254 |  | GC1 | 8838144 |

| ID | WBS | Task | Duration | Start | Finish | Predecessors | Constraint | Calendar | Unique_Task_ID |
| --- | --- | --- | --- | --- | --- | --- | --- | --- | --- |
| 2256 | 37100.37400.37600.38600.39500.41000.42000.67000 | **11th Floor** | 148.25d | 2026-02-04 | 2026-06-16 |  | start no earlier than 2026-02-04 | GC1 | 8806994 |
| 2257 | 37100.37400.37600.38600.39500.41000.42000.67000.1194800 | Block Work | 9d | 2026-02-04 | 2026-02-12 | 2241FS+0.25d |  | GC1 | 8838154 |
| 2258 | 37100.37400.37600.38600.39500.41000.42000.67000.1194900 | Door Frame Fixing | 7.88d | 2026-02-12 | 2026-02-19 | 2242, 2257 |  | GC1 | 8838164 |
| 2259 | 37100.37400.37600.38600.39500.41000.42000.67000.1195000 | Internal Plumbing Works | 11.25d | 2026-03-02 | 2026-03-12 | 2243, 2257 |  | GC1 | 8838174 |
| 2260 | 37100.37400.37600.38600.39500.41000.42000.67000.1195100 | Waterproofing | 13.5d | 2026-04-01 | 2026-04-13 | 2244, 2259 |  | GC1 | 8838184 |
| 2261 | 37100.37400.37600.38600.39500.41000.42000.67000.1195200 | Internal Plaster | 4.5d | 2026-02-19 | 2026-02-23 | 2245FS+0.25d, 2258FS+0.25d |  | GC1 | 8838194 |
| 2262 | 37100.37400.37600.38600.39500.41000.42000.67000.1195300 | IPS flooring work | 10.12d | 2026-04-13 | 2026-04-22 | 2246, 2258, 2259, 2260 |  | GC1 | 8838204 |
| 2263 | 37100.37400.37600.38600.39500.41000.42000.67000.1195400 | Toilet dado work | 9d | 2026-04-13 | 2026-04-21 | 2247, 2260, 2261 |  | GC1 | 8838214 |
| 2264 | 37100.37400.37600.38600.39500.41000.42000.67000.1195500 | Toilet flooring work | 7.88d | 2026-04-21 | 2026-04-28 | 2248, 2263 |  | GC1 | 8838224 |
| 2265 | 37100.37400.37600.38600.39500.41000.42000.67000.1195600 | Living dinning flooring | 4.5d | 2026-02-19 | 2026-02-23 | 2249FS+0.25d, 2258FS+0.25d |  | GC1 | 8838234 |
| 2266 | 37100.37400.37600.38600.39500.41000.42000.67000.1195700 | Aluminium door-window fixing | 11.25d | 2026-04-18 | 2026-04-28 | 2250FS+0.25d, 2265FS+0.25d |  | GC1 | 8838244 |
| 2267 | 37100.37400.37600.38600.39500.41000.42000.67000.1195800 | Putty primer coat | 6.75d | 2026-03-03 | 2026-03-09 | 2251, 2265 |  | GC1 | 8838254 |
| 2268 | 37100.37400.37600.38600.39500.41000.42000.67000.1195900 | Door shutter fixing | 9d | 2026-03-23 | 2026-03-31 | 2252, 2265 |  | GC1 | 8838264 |
| 2269 | 37100.37400.37600.38600.39500.41000.42000.67000.1196000 | Electrical wiring work | 13.5d | 2026-05-10 | 2026-05-22 | 2253, 2268 |  | GC1 | 8838274 |
| 2270 | 37100.37400.37600.38600.39500.41000.42000.67000.1196100 | Painting 1st coat | 13.5d | 2026-05-25 | 2026-06-06 | 2254, 2267, 2268, 2269 |  | GC1 | 8838284 |
| 2271 | 37100.37400.37600.38600.39500.41000.42000.67000.1196200 | False ceiling | 11.25d | 2026-06-06 | 2026-06-16 | 2255, 2270 |  | GC1 | 8838294 |
| 2272 | 37100.37400.37600.38600.39500.41000.42000.67100 | **12th Floor** | 152.5d | 2026-02-12 | 2026-06-28 |  | start no earlier than 2026-02-12 | GC1 | 8807004 |
| 2273 | 37100.37400.37600.38600.39500.41000.42000.67100.1196300 | Block Work | 9d | 2026-02-12 | 2026-02-20 | 2257FS+0.25d |  | GC1 | 8838304 |
| 2274 | 37100.37400.37600.38600.39500.41000.42000.67100.1196400 | Door Frame Fixing | 7.88d | 2026-02-20 | 2026-02-27 | 2258, 2273 |  | GC1 | 8838314 |
| 2275 | 37100.37400.37600.38600.39500.41000.42000.67100.1196500 | Internal Plumbing Works | 11.25d | 2026-03-12 | 2026-03-22 | 2259, 2273 |  | GC1 | 8838324 |
| 2276 | 37100.37400.37600.38600.39500.41000.42000.67100.1196600 | Waterproofing | 13.5d | 2026-04-13 | 2026-04-25 | 2260, 2275 |  | GC1 | 8838334 |
| 2277 | 37100.37400.37600.38600.39500.41000.42000.67100.1196700 | Internal Plaster | 4.5d | 2026-02-27 | 2026-03-03 | 2261FS+0.25d, 2274FS+0.25d |  | GC1 | 8838344 |
| 2278 | 37100.37400.37600.38600.39500.41000.42000.67100.1196800 | IPS flooring work | 10.12d | 2026-04-25 | 2026-05-04 | 2262, 2274, 2275, 2276 |  | GC1 | 8838354 |
| 2279 | 37100.37400.37600.38600.39500.41000.42000.67100.1196900 | Toilet dado work | 9d | 2026-04-25 | 2026-05-03 | 2263, 2276, 2277 |  | GC1 | 8838364 |
| 2280 | 37100.37400.37600.38600.39500.41000.42000.67100.1197000 | Toilet flooring work | 7.88d | 2026-05-03 | 2026-05-10 | 2264, 2279 |  | GC1 | 8838374 |
| 2281 | 37100.37400.37600.38600.39500.41000.42000.67100.1197100 | Living dinning flooring | 4.5d | 2026-02-27 | 2026-03-03 | 2265FS+0.25d, 2274FS+0.25d |  | GC1 | 8838384 |
| 2282 | 37100.37400.37600.38600.39500.41000.42000.67100.1197200 | Aluminium door-window fixing | 11.25d | 2026-05-04 | 2026-05-14 | 2266, 2278, 2281 |  | GC1 | 8838394 |
| 2283 | 37100.37400.37600.38600.39500.41000.42000.67100.1197300 | Putty primer coat | 6.75d | 2026-03-09 | 2026-03-15 | 2267, 2281 |  | GC1 | 8838404 |
| 2284 | 37100.37400.37600.38600.39500.41000.42000.67100.1197400 | Door shutter fixing | 9d | 2026-03-31 | 2026-04-08 | 2268, 2281 |  | GC1 | 8838414 |
| 2285 | 37100.37400.37600.38600.39500.41000.42000.67100.1197500 | Electrical wiring work | 13.5d | 2026-05-22 | 2026-06-03 | 2269, 2284 |  | GC1 | 8838424 |
| 2286 | 37100.37400.37600.38600.39500.41000.42000.67100.1197600 | Painting 1st coat | 13.5d | 2026-06-06 | 2026-06-18 | 2270, 2283, 2284, 2285 |  | GC1 | 8838434 |
| 2287 | 37100.37400.37600.38600.39500.41000.42000.67100.1197700 | False ceiling | 11.25d | 2026-06-18 | 2026-06-28 | 2271, 2286 |  | GC1 | 8838444 |

| ID | WBS | Task | Duration | Start | Finish | Predecessors | Constraint | Calendar | Unique_Task_ID |
| --- | --- | --- | --- | --- | --- | --- | --- | --- | --- |
| 2288 | 37100.37400.37600.38600.39500.41000.42000.67200 | **13th Floor** | 159d | 2026-02-20 | 2026-07-12 |  | start no earlier than 2026-02-20 | GC1 | 8807014 |
| 2289 | 37100.37400.37600.38600.39500.41000.42000.67200.1197800 | Block Work | 9d | 2026-02-20 | 2026-02-28 | 2273FS+0.25d |  | GC1 | 8838454 |
| 2290 | 37100.37400.37600.38600.39500.41000.42000.67200.1197900 | Door Frame Fixing | 7.88d | 2026-02-28 | 2026-03-07 | 2274, 2289 |  | GC1 | 8838464 |
| 2291 | 37100.37400.37600.38600.39500.41000.42000.67200.1198000 | Internal Plumbing Works | 11.25d | 2026-03-22 | 2026-04-01 | 2275, 2289 |  | GC1 | 8838474 |
| 2292 | 37100.37400.37600.38600.39500.41000.42000.67200.1198100 | Waterproofing | 13.5d | 2026-04-25 | 2026-05-07 | 2276, 2291 |  | GC1 | 8838484 |
| 2293 | 37100.37400.37600.38600.39500.41000.42000.67200.1198200 | Internal Plaster | 4.5d | 2026-03-08 | 2026-03-12 | 2277FS+0.25d, 2290FS+0.25d |  | GC1 | 8838494 |
| 2294 | 37100.37400.37600.38600.39500.41000.42000.67200.1198300 | IPS flooring work | 10.12d | 2026-05-07 | 2026-05-16 | 2278, 2290, 2292, 2293 |  | GC1 | 8838504 |
| 2295 | 37100.37400.37600.38600.39500.41000.42000.67200.1198400 | Toilet dado work | 9d | 2026-05-07 | 2026-05-15 | 2279, 2292, 2293 |  | GC1 | 8838514 |
| 2296 | 37100.37400.37600.38600.39500.41000.42000.67200.1198500 | Toilet flooring work | 7.88d | 2026-05-15 | 2026-05-22 | 2280, 2295 |  | GC1 | 8838524 |
| 2297 | 37100.37400.37600.38600.39500.41000.42000.67200.1198600 | Living dinning flooring | 10.12d | 2026-05-22 | 2026-05-31 | 2281, 2290, 2296 |  | GC1 | 8838534 |
| 2298 | 37100.37400.37600.38600.39500.41000.42000.67200.1198700 | Aluminium door-window fixing | 11.25d | 2026-05-31 | 2026-06-10 | 2282, 2294, 2297 |  | GC1 | 8838544 |
| 2299 | 37100.37400.37600.38600.39500.41000.42000.67200.1198800 | Putty primer coat | 6.75d | 2026-05-31 | 2026-06-06 | 2283, 2297 |  | GC1 | 8838554 |
| 2300 | 37100.37400.37600.38600.39500.41000.42000.67200.1198900 | Door shutter fixing | 9d | 2026-05-31 | 2026-06-08 | 2284, 2297 |  | GC1 | 8838564 |
| 2301 | 37100.37400.37600.38600.39500.41000.42000.67200.1199000 | Electrical wiring work | 13.5d | 2026-06-08 | 2026-06-20 | 2285, 2300 |  | GC1 | 8838574 |
| 2302 | 37100.37400.37600.38600.39500.41000.42000.67200.1199100 | Painting 1st coat | 13.5d | 2026-06-20 | 2026-07-02 | 2286, 2299, 2300, 2301 |  | GC1 | 8838584 |
| 2303 | 37100.37400.37600.38600.39500.41000.42000.67200.1199200 | False ceiling | 11.25d | 2026-07-02 | 2026-07-12 | 2287, 2302 |  | GC1 | 8838594 |
| 2304 | 37100.37400.37600.38600.39500.41000.42000.67400 | **14th Floor** | 163.25d | 2026-03-01 | 2026-07-24 |  | start no earlier than 2026-03-01 | GC1 | 8807024 |
| 2305 | 37100.37400.37600.38600.39500.41000.42000.67400.1199300 | Block Work | 9d | 2026-03-01 | 2026-03-09 | 2289FS+0.25d |  | GC1 | 8838604 |
| 2306 | 37100.37400.37600.38600.39500.41000.42000.67400.1199400 | Door Frame Fixing | 7.88d | 2026-03-09 | 2026-03-16 | 2290, 2305 |  | GC1 | 8838614 |
| 2307 | 37100.37400.37600.38600.39500.41000.42000.67400.1199500 | Internal Plumbing Works | 11.25d | 2026-04-01 | 2026-04-11 | 2291, 2305 |  | GC1 | 8838624 |
| 2308 | 37100.37400.37600.38600.39500.41000.42000.67400.1199600 | Waterproofing | 13.5d | 2026-05-07 | 2026-05-19 | 2292, 2307 |  | GC1 | 8838634 |
| 2309 | 37100.37400.37600.38600.39500.41000.42000.67400.1199700 | Internal Plaster | 4.5d | 2026-03-16 | 2026-03-20 | 2293FS+0.25d, 2306FS+0.25d |  | GC1 | 8838644 |
| 2310 | 37100.37400.37600.38600.39500.41000.42000.67400.1199800 | IPS flooring work | 10.12d | 2026-05-19 | 2026-05-28 | 2294, 2306, 2307, 2308 |  | GC1 | 8838654 |
| 2311 | 37100.37400.37600.38600.39500.41000.42000.67400.1199900 | Toilet dado work | 9d | 2026-05-19 | 2026-05-27 | 2295, 2308, 2309 |  | GC1 | 8838664 |
| 2312 | 37100.37400.37600.38600.39500.41000.42000.67400.1200000 | Toilet flooring work | 7.88d | 2026-05-27 | 2026-06-03 | 2296, 2311 |  | GC1 | 8838674 |
| 2313 | 37100.37400.37600.38600.39500.41000.42000.67400.1200100 | Living dinning flooring | 10.12d | 2026-06-03 | 2026-06-12 | 2297, 2306, 2312 |  | GC1 | 8838684 |
| 2314 | 37100.37400.37600.38600.39500.41000.42000.67400.1200200 | Aluminium door-window fixing | 11.25d | 2026-06-12 | 2026-06-22 | 2298, 2310, 2313 |  | GC1 | 8838694 |
| 2315 | 37100.37400.37600.38600.39500.41000.42000.67400.1200300 | Putty primer coat | 6.75d | 2026-06-12 | 2026-06-18 | 2299, 2313 |  | GC1 | 8838704 |
| 2316 | 37100.37400.37600.38600.39500.41000.42000.67400.1200400 | Door shutter fixing | 9d | 2026-06-12 | 2026-06-20 | 2300, 2313 |  | GC1 | 8838714 |
| 2317 | 37100.37400.37600.38600.39500.41000.42000.67400.1200500 | Electrical wiring work | 13.5d | 2026-06-20 | 2026-07-02 | 2301, 2316 |  | GC1 | 8838724 |
| 2318 | 37100.37400.37600.38600.39500.41000.42000.67400.1200600 | Painting 1st coat | 13.5d | 2026-07-02 | 2026-07-14 | 2302, 2315, 2316, 2317 |  | GC1 | 8838734 |
| 2319 | 37100.37400.37600.38600.39500.41000.42000.67400.1200700 | False ceiling | 11.25d | 2026-07-14 | 2026-07-24 | 2303, 2318 |  | GC1 | 8838744 |

| ID | WBS | Task | Duration | Start | Finish | Predecessors | Constraint | Calendar | Unique_Task_ID |
| --- | --- | --- | --- | --- | --- | --- | --- | --- | --- |
| 2320 | 37100.37400.37600.38600.39500.41000.42000.67500 | **15th Floor** | 167.5d | 2026-03-09 | 2026-08-05 |  | start no earlier than 2026-03-09 | GC1 | 8807034 |
| 2321 | 37100.37400.37600.38600.39500.41000.42000.67500.1200800 | Block Work | 9d | 2026-03-09 | 2026-03-17 | 2305FS+0.25d |  | GC1 | 8838754 |
| 2322 | 37100.37400.37600.38600.39500.41000.42000.67500.1200900 | Door Frame Fixing | 7.88d | 2026-03-17 | 2026-03-24 | 2306, 2321 |  | GC1 | 8838764 |
| 2323 | 37100.37400.37600.38600.39500.41000.42000.67500.1201000 | Internal Plumbing Works | 11.25d | 2026-04-11 | 2026-04-21 | 2307, 2321 |  | GC1 | 8838774 |
| 2324 | 37100.37400.37600.38600.39500.41000.42000.67500.1201100 | Waterproofing | 13.5d | 2026-05-19 | 2026-05-31 | 2308, 2323 |  | GC1 | 8838784 |
| 2325 | 37100.37400.37600.38600.39500.41000.42000.67500.1201200 | Internal Plaster | 4.5d | 2026-03-24 | 2026-03-28 | 2309FS+0.25d, 2322FS+0.25d |  | GC1 | 8838794 |
| 2326 | 37100.37400.37600.38600.39500.41000.42000.67500.1201300 | IPS flooring work | 10.12d | 2026-05-31 | 2026-06-09 | 2310, 2322, 2323, 2324 |  | GC1 | 8838804 |
| 2327 | 37100.37400.37600.38600.39500.41000.42000.67500.1201400 | Toilet dado work | 9d | 2026-05-31 | 2026-06-08 | 2311, 2324, 2325 |  | GC1 | 8838814 |
| 2328 | 37100.37400.37600.38600.39500.41000.42000.67500.1201500 | Toilet flooring work | 7.88d | 2026-06-08 | 2026-06-15 | 2312, 2327 |  | GC1 | 8838824 |
| 2329 | 37100.37400.37600.38600.39500.41000.42000.67500.1201600 | Living dinning flooring | 10.12d | 2026-06-15 | 2026-06-24 | 2313, 2322, 2328 |  | GC1 | 8838834 |
| 2330 | 37100.37400.37600.38600.39500.41000.42000.67500.1201700 | Aluminium door-window fixing | 11.25d | 2026-06-24 | 2026-07-04 | 2314, 2326, 2329 |  | GC1 | 8838844 |
| 2331 | 37100.37400.37600.38600.39500.41000.42000.67500.1201800 | Putty primer coat | 6.75d | 2026-06-24 | 2026-06-30 | 2315, 2329 |  | GC1 | 8838854 |
| 2332 | 37100.37400.37600.38600.39500.41000.42000.67500.1201900 | Door shutter fixing | 9d | 2026-06-24 | 2026-07-02 | 2316, 2329 |  | GC1 | 8838864 |
| 2333 | 37100.37400.37600.38600.39500.41000.42000.67500.1202000 | Electrical wiring work | 13.5d | 2026-07-02 | 2026-07-14 | 2317, 2332 |  | GC1 | 8838874 |
| 2334 | 37100.37400.37600.38600.39500.41000.42000.67500.1202100 | Painting 1st coat | 13.5d | 2026-07-14 | 2026-07-26 | 2318, 2331, 2332, 2333 |  | GC1 | 8838884 |
| 2335 | 37100.37400.37600.38600.39500.41000.42000.67500.1202200 | False ceiling | 11.25d | 2026-07-26 | 2026-08-05 | 2319, 2334 |  | GC1 | 8838894 |
| 2336 | 37100.37400.37600.38600.39500.41000.42000.67600 | **16th Floor** | 181.88d | 2026-03-17 | 2026-08-26 |  | start no earlier than 2026-03-17 | GC1 | 8807044 |
| 2337 | 37100.37400.37600.38600.39500.41000.42000.67600.1202300 | Block Work | 9d | 2026-03-17 | 2026-03-25 | 2321FS+0.25d |  | GC1 | 8838904 |
| 2338 | 37100.37400.37600.38600.39500.41000.42000.67600.1202400 | Door Frame Fixing | 10.12d | 2026-03-25 | 2026-04-03 | 2322, 2337 |  | GC1 | 8838914 |
| 2339 | 37100.37400.37600.38600.39500.41000.42000.67600.1202500 | Internal Plumbing Works | 11.25d | 2026-04-21 | 2026-05-01 | 2323, 2337 |  | GC1 | 8838924 |
| 2340 | 37100.37400.37600.38600.39500.41000.42000.67600.1202600 | Waterproofing | 13.5d | 2026-05-31 | 2026-06-12 | 2324, 2339 |  | GC1 | 8838934 |
| 2341 | 37100.37400.37600.38600.39500.41000.42000.67600.1202700 | Internal Plaster | 10.12d | 2026-06-12 | 2026-06-21 | 2325, 2338, 2339, 2340 |  | GC1 | 8838944 |
| 2342 | 37100.37400.37600.38600.39500.41000.42000.67600.1202800 | IPS flooring work | 10.12d | 2026-06-12 | 2026-06-21 | 2326, 2338, 2339, 2340 |  | GC1 | 8838954 |
| 2343 | 37100.37400.37600.38600.39500.41000.42000.67600.1202900 | Toilet dado work | 9d | 2026-06-21 | 2026-06-29 | 2327, 2340, 2341 |  | GC1 | 8838964 |
| 2344 | 37100.37400.37600.38600.39500.41000.42000.67600.1203000 | Toilet flooring work | 7.88d | 2026-06-29 | 2026-07-06 | 2328, 2343 |  | GC1 | 8838974 |
| 2345 | 37100.37400.37600.38600.39500.41000.42000.67600.1203100 | Living dinning flooring | 10.12d | 2026-07-06 | 2026-07-15 | 2329, 2338, 2344 |  | GC1 | 8838984 |
| 2346 | 37100.37400.37600.38600.39500.41000.42000.67600.1203200 | Aluminium door-window fixing | 11.25d | 2026-07-15 | 2026-07-25 | 2330, 2342, 2345 |  | GC1 | 8838994 |
| 2347 | 37100.37400.37600.38600.39500.41000.42000.67600.1203300 | Putty primer coat | 6.75d | 2026-07-15 | 2026-07-21 | 2331, 2345 |  | GC1 | 8839004 |
| 2348 | 37100.37400.37600.38600.39500.41000.42000.67600.1203400 | Door shutter fixing | 9d | 2026-07-15 | 2026-07-23 | 2332, 2345 |  | GC1 | 8839014 |
| 2349 | 37100.37400.37600.38600.39500.41000.42000.67600.1203500 | Electrical wiring work | 13.5d | 2026-07-23 | 2026-08-04 | 2333, 2348 |  | GC1 | 8839024 |
| 2350 | 37100.37400.37600.38600.39500.41000.42000.67600.1203600 | Painting 1st coat | 13.5d | 2026-08-04 | 2026-08-16 | 2334, 2347, 2348, 2349 |  | GC1 | 8839034 |
| 2351 | 37100.37400.37600.38600.39500.41000.42000.67600.1203700 | False ceiling | 11.25d | 2026-08-16 | 2026-08-26 | 2335, 2350 |  | GC1 | 8839044 |

| ID | WBS | Task | Duration | Start | Finish | Predecessors | Constraint | Calendar | Unique_Task_ID |
| --- | --- | --- | --- | --- | --- | --- | --- | --- | --- |
| 2352 | 37100.37400.37600.38600.39500.41000.42000.67700 | **17th Floor** | 121.5d | 2026-05-31 | 2026-09-15 |  | start no earlier than 2026-05-31 | GC1 | 8807054 |
| 2353 | 37100.37400.37600.38600.39500.41000.42000.67700.1203800 | Block Work | 9d | 2026-05-31 | 2026-06-07 | 2075, 2337 |  | GC1 | 8839054 |
| 2354 | 37100.37400.37600.38600.39500.41000.42000.67700.1203900 | Door Frame Fixing | 10.12d | 2026-06-08 | 2026-06-16 | 2338, 2353 |  | GC1 | 8839064 |
| 2355 | 37100.37400.37600.38600.39500.41000.42000.67700.1204000 | Internal Plumbing Works | 11.25d | 2026-06-08 | 2026-06-17 | 2339, 2353 |  | GC1 | 8839074 |
| 2356 | 37100.37400.37600.38600.39500.41000.42000.67700.1204100 | Waterproofing | 13.5d | 2026-06-18 | 2026-06-29 | 2340, 2355 |  | GC1 | 8839084 |
| 2357 | 37100.37400.37600.38600.39500.41000.42000.67700.1204200 | Internal Plaster | 10.12d | 2026-06-30 | 2026-07-08 | 2341, 2354, 2355, 2356 |  | GC1 | 8839094 |
| 2358 | 37100.37400.37600.38600.39500.41000.42000.67700.1204300 | IPS flooring work | 10.12d | 2026-06-30 | 2026-07-08 | 2342, 2354, 2355, 2356 |  | GC1 | 8839104 |
| 2359 | 37100.37400.37600.38600.39500.41000.42000.67700.1204400 | Toilet dado work | 9d | 2026-07-09 | 2026-07-16 | 2343, 2356, 2357 |  | GC1 | 8839114 |
| 2360 | 37100.37400.37600.38600.39500.41000.42000.67700.1204500 | Toilet flooring work | 7.88d | 2026-07-17 | 2026-07-23 | 2344, 2359 |  | GC1 | 8839124 |
| 2361 | 37100.37400.37600.38600.39500.41000.42000.67700.1204600 | Living dinning flooring | 13.5d | 2026-07-24 | 2026-08-04 | 2345, 2354, 2360 |  | GC1 | 8839134 |
| 2362 | 37100.37400.37600.38600.39500.41000.42000.67700.1204700 | Aluminium door-window fixing | 13.5d | 2026-08-05 | 2026-08-16 | 2346, 2358, 2361 |  | GC1 | 8839144 |
| 2363 | 37100.37400.37600.38600.39500.41000.42000.67700.1204800 | Putty primer coat | 6.75d | 2026-08-05 | 2026-08-10 | 2347, 2361 |  | GC1 | 8839154 |
| 2364 | 37100.37400.37600.38600.39500.41000.42000.67700.1204900 | Door shutter fixing | 9d | 2026-08-05 | 2026-08-12 | 2348, 2361 |  | GC1 | 8839164 |
| 2365 | 37100.37400.37600.38600.39500.41000.42000.67700.1205000 | Electrical wiring work | 13.5d | 2026-08-13 | 2026-08-24 | 2349, 2364 |  | GC1 | 8839174 |
| 2366 | 37100.37400.37600.38600.39500.41000.42000.67700.1205100 | Painting 1st coat | 13.5d | 2026-08-25 | 2026-09-05 | 2350, 2363, 2364, 2365 |  | GC1 | 8839184 |
| 2367 | 37100.37400.37600.38600.39500.41000.42000.67700.1205200 | False ceiling | 11.25d | 2026-09-06 | 2026-09-15 | 2351, 2366 |  | GC1 | 8839194 |
| 2368 | 37100.37400.37600.38600.39500.41000.42000.67800 | **18th Floor** | 122.62d | 2026-06-11 | 2026-09-27 |  | start no earlier than 2026-06-11 | GC1 | 8807064 |
| 2369 | 37100.37400.37600.38600.39500.41000.42000.67800.1205300 | Block Work | 9d | 2026-06-11 | 2026-06-18 | 2076, 2353 |  | GC1 | 8839204 |
| 2370 | 37100.37400.37600.38600.39500.41000.42000.67800.1205400 | Door Frame Fixing | 10.12d | 2026-06-19 | 2026-06-27 | 2354, 2369 |  | GC1 | 8839214 |
| 2371 | 37100.37400.37600.38600.39500.41000.42000.67800.1205500 | Internal Plumbing Works | 11.25d | 2026-06-19 | 2026-06-28 | 2355, 2369 |  | GC1 | 8839224 |
| 2372 | 37100.37400.37600.38600.39500.41000.42000.67800.1205600 | Waterproofing | 13.5d | 2026-06-30 | 2026-07-11 | 2356, 2371 |  | GC1 | 8839234 |
| 2373 | 37100.37400.37600.38600.39500.41000.42000.67800.1205700 | Internal Plaster | 10.12d | 2026-07-12 | 2026-07-20 | 2357, 2370, 2371, 2372 |  | GC1 | 8839244 |
| 2374 | 37100.37400.37600.38600.39500.41000.42000.67800.1205800 | IPS flooring work | 10.12d | 2026-07-12 | 2026-07-20 | 2358, 2370, 2371, 2372 |  | GC1 | 8839254 |
| 2375 | 37100.37400.37600.38600.39500.41000.42000.67800.1205900 | Toilet dado work | 9d | 2026-07-21 | 2026-07-28 | 2359, 2372, 2373 |  | GC1 | 8839264 |
| 2376 | 37100.37400.37600.38600.39500.41000.42000.67800.1206000 | Toilet flooring work | 7.88d | 2026-07-29 | 2026-08-04 | 2360, 2375 |  | GC1 | 8839274 |
| 2377 | 37100.37400.37600.38600.39500.41000.42000.67800.1206100 | Living dinning flooring | 13.5d | 2026-08-05 | 2026-08-16 | 2361, 2370, 2376 |  | GC1 | 8839284 |
| 2378 | 37100.37400.37600.38600.39500.41000.42000.67800.1206200 | Aluminium door-window fixing | 13.5d | 2026-08-17 | 2026-08-28 | 2362, 2374, 2377 |  | GC1 | 8839294 |
| 2379 | 37100.37400.37600.38600.39500.41000.42000.67800.1206300 | Putty primer coat | 6.75d | 2026-08-17 | 2026-08-22 | 2363, 2377 |  | GC1 | 8839304 |
| 2380 | 37100.37400.37600.38600.39500.41000.42000.67800.1206400 | Door shutter fixing | 9d | 2026-08-17 | 2026-08-24 | 2364, 2377 |  | GC1 | 8839314 |
| 2381 | 37100.37400.37600.38600.39500.41000.42000.67800.1206500 | Electrical wiring work | 13.5d | 2026-08-25 | 2026-09-05 | 2365, 2380 |  | GC1 | 8839324 |
| 2382 | 37100.37400.37600.38600.39500.41000.42000.67800.1206600 | Painting 1st coat | 13.5d | 2026-09-06 | 2026-09-17 | 2366, 2379, 2380, 2381 |  | GC1 | 8839334 |
| 2383 | 37100.37400.37600.38600.39500.41000.42000.67800.1206700 | False ceiling | 11.25d | 2026-09-18 | 2026-09-27 | 2367, 2382 |  | GC1 | 8839344 |

| ID | WBS | Task | Duration | Start | Finish | Predecessors | Constraint | Calendar | Unique_Task_ID |
| --- | --- | --- | --- | --- | --- | --- | --- | --- | --- |
| 2384 | 37100.37400.37600.38600.39500.41000.42000.67900 | **19th Floor** | 123.75d | 2026-06-22 | 2026-10-09 |  | start no earlier than 2026-06-22 | GC1 | 8807074 |
| 2385 | 37100.37400.37600.38600.39500.41000.42000.67900.1206800 | Block Work | 9d | 2026-06-22 | 2026-06-29 | 2077, 2369 |  | GC1 | 8839354 |
| 2386 | 37100.37400.37600.38600.39500.41000.42000.67900.1206900 | Door Frame Fixing | 10.12d | 2026-06-30 | 2026-07-08 | 2370, 2385 |  | GC1 | 8839364 |
| 2387 | 37100.37400.37600.38600.39500.41000.42000.67900.1207000 | Internal Plumbing Works | 11.25d | 2026-06-30 | 2026-07-09 | 2371, 2385 |  | GC1 | 8839374 |
| 2388 | 37100.37400.37600.38600.39500.41000.42000.67900.1207100 | Waterproofing | 13.5d | 2026-07-12 | 2026-07-23 | 2372, 2387 |  | GC1 | 8839384 |
| 2389 | 37100.37400.37600.38600.39500.41000.42000.67900.1207200 | Internal Plaster | 10.12d | 2026-07-24 | 2026-08-01 | 2373, 2386, 2387, 2388 |  | GC1 | 8839394 |
| 2390 | 37100.37400.37600.38600.39500.41000.42000.67900.1207300 | IPS flooring work | 10.12d | 2026-08-02 | 2026-08-10 | 2374, 2386, 2388, 2389 |  | GC1 | 8839404 |
| 2391 | 37100.37400.37600.38600.39500.41000.42000.67900.1207400 | Toilet dado work | 9d | 2026-08-02 | 2026-08-09 | 2375, 2388, 2389 |  | GC1 | 8839414 |
| 2392 | 37100.37400.37600.38600.39500.41000.42000.67900.1207500 | Toilet flooring work | 7.88d | 2026-08-10 | 2026-08-16 | 2376, 2391 |  | GC1 | 8839424 |
| 2393 | 37100.37400.37600.38600.39500.41000.42000.67900.1207600 | Living dinning flooring | 13.5d | 2026-08-17 | 2026-08-28 | 2377, 2386, 2392 |  | GC1 | 8839434 |
| 2394 | 37100.37400.37600.38600.39500.41000.42000.67900.1207700 | Aluminium door-window fixing | 13.5d | 2026-08-29 | 2026-09-09 | 2378, 2390, 2393 |  | GC1 | 8839444 |
| 2395 | 37100.37400.37600.38600.39500.41000.42000.67900.1207800 | Putty primer coat | 6.75d | 2026-08-29 | 2026-09-03 | 2379, 2393 |  | GC1 | 8839454 |
| 2396 | 37100.37400.37600.38600.39500.41000.42000.67900.1207900 | Door shutter fixing | 9d | 2026-08-29 | 2026-09-05 | 2380, 2393 |  | GC1 | 8839464 |
| 2397 | 37100.37400.37600.38600.39500.41000.42000.67900.1208000 | Electrical wiring work | 13.5d | 2026-09-06 | 2026-09-17 | 2381, 2396 |  | GC1 | 8839474 |
| 2398 | 37100.37400.37600.38600.39500.41000.42000.67900.1208100 | Painting 1st coat | 13.5d | 2026-09-18 | 2026-09-29 | 2382, 2395, 2396, 2397 |  | GC1 | 8839484 |
| 2399 | 37100.37400.37600.38600.39500.41000.42000.67900.1208200 | False ceiling | 11.25d | 2026-09-30 | 2026-10-09 | 2383, 2398 |  | GC1 | 8839494 |
| 2400 | 37100.37400.37600.38600.39500.41000.42000.68000 | **20th Floor** | 124.88d | 2026-07-03 | 2026-10-21 |  | start no earlier than 2026-07-03 | GC1 | 8807084 |
| 2401 | 37100.37400.37600.38600.39500.41000.42000.68000.1208300 | Block Work | 9d | 2026-07-03 | 2026-07-10 | 2078, 2385 |  | GC1 | 8839504 |
| 2402 | 37100.37400.37600.38600.39500.41000.42000.68000.1208400 | Door Frame Fixing | 10.12d | 2026-07-11 | 2026-07-19 | 2386, 2401 |  | GC1 | 8839514 |
| 2403 | 37100.37400.37600.38600.39500.41000.42000.68000.1208500 | Internal Plumbing Works | 11.25d | 2026-07-11 | 2026-07-20 | 2387, 2401 |  | GC1 | 8839524 |
| 2404 | 37100.37400.37600.38600.39500.41000.42000.68000.1208600 | Waterproofing | 13.5d | 2026-07-24 | 2026-08-04 | 2388, 2403 |  | GC1 | 8839534 |
| 2405 | 37100.37400.37600.38600.39500.41000.42000.68000.1208700 | Internal Plaster | 10.12d | 2026-08-05 | 2026-08-13 | 2389, 2402, 2403, 2404 |  | GC1 | 8839544 |
| 2406 | 37100.37400.37600.38600.39500.41000.42000.68000.1208800 | IPS flooring work | 10.12d | 2026-08-14 | 2026-08-22 | 2390, 2402, 2404, 2405 |  | GC1 | 8839554 |
| 2407 | 37100.37400.37600.38600.39500.41000.42000.68000.1208900 | Toilet dado work | 9d | 2026-08-14 | 2026-08-21 | 2391, 2404, 2405 |  | GC1 | 8839564 |
| 2408 | 37100.37400.37600.38600.39500.41000.42000.68000.1209000 | Toilet flooring work | 7.88d | 2026-08-22 | 2026-08-28 | 2392, 2407 |  | GC1 | 8839574 |
| 2409 | 37100.37400.37600.38600.39500.41000.42000.68000.1209100 | Living dinning flooring | 13.5d | 2026-08-29 | 2026-09-09 | 2393, 2402, 2408 |  | GC1 | 8839584 |
| 2410 | 37100.37400.37600.38600.39500.41000.42000.68000.1209200 | Aluminium door-window fixing | 13.5d | 2026-09-10 | 2026-09-21 | 2394, 2406, 2409 |  | GC1 | 8839594 |
| 2411 | 37100.37400.37600.38600.39500.41000.42000.68000.1209300 | Putty primer coat | 6.75d | 2026-09-10 | 2026-09-15 | 2395, 2409 |  | GC1 | 8839604 |
| 2412 | 37100.37400.37600.38600.39500.41000.42000.68000.1209400 | Door shutter fixing | 9d | 2026-09-10 | 2026-09-17 | 2396, 2409 |  | GC1 | 8839614 |
| 2413 | 37100.37400.37600.38600.39500.41000.42000.68000.1209500 | Electrical wiring work | 13.5d | 2026-09-18 | 2026-09-29 | 2397, 2412 |  | GC1 | 8839624 |
| 2414 | 37100.37400.37600.38600.39500.41000.42000.68000.1209600 | Painting 1st coat | 13.5d | 2026-09-30 | 2026-10-11 | 2398, 2411, 2412, 2413 |  | GC1 | 8839634 |
| 2415 | 37100.37400.37600.38600.39500.41000.42000.68000.1209700 | False ceiling | 11.25d | 2026-10-12 | 2026-10-21 | 2399, 2414 |  | GC1 | 8839644 |

| ID | WBS | Task | Duration | Start | Finish | Predecessors | Constraint | Calendar | Unique_Task_ID |
| --- | --- | --- | --- | --- | --- | --- | --- | --- | --- |
| 2416 | 37100.37400.37600.38600.39500.41000.42000.68100 | **21st Floor** | 126d | 2026-07-14 | 2026-12-17 |  | start no earlier than 2026-07-14 | GC1 | 8807094 |
| 2417 | 37100.37400.37600.38600.39500.41000.42000.68100.1209800 | Block Work | 9d | 2026-07-14 | 2026-07-21 | 2079, 2401 |  | GC1 | 8839654 |
| 2418 | 37100.37400.37600.38600.39500.41000.42000.68100.1209900 | Door Frame Fixing | 10.12d | 2026-07-22 | 2026-07-30 | 2402, 2417 |  | GC1 | 8839664 |
| 2419 | 37100.37400.37600.38600.39500.41000.42000.68100.1210000 | Internal Plumbing Works | 11.25d | 2026-07-22 | 2026-07-31 | 2403, 2417 |  | GC1 | 8839674 |
| 2420 | 37100.37400.37600.38600.39500.41000.42000.68100.1210100 | Waterproofing | 13.5d | 2026-08-05 | 2026-08-16 | 2404, 2419 |  | GC1 | 8839684 |
| 2421 | 37100.37400.37600.38600.39500.41000.42000.68100.1210200 | Internal Plaster | 10.12d | 2026-08-17 | 2026-08-25 | 2405, 2418, 2419, 2420 |  | GC1 | 8839694 |
| 2422 | 37100.37400.37600.38600.39500.41000.42000.68100.1210300 | IPS flooring work | 10.12d | 2026-08-26 | 2026-09-03 | 2406, 2418, 2420, 2421 |  | GC1 | 8839704 |
| 2423 | 37100.37400.37600.38600.39500.41000.42000.68100.1210400 | Toilet dado work | 9d | 2026-08-26 | 2026-09-02 | 2407, 2420, 2421 |  | GC1 | 8839714 |
| 2424 | 37100.37400.37600.38600.39500.41000.42000.68100.1210500 | Toilet flooring work | 7.88d | 2026-09-03 | 2026-09-09 | 2408, 2423 |  | GC1 | 8839724 |
| 2425 | 37100.37400.37600.38600.39500.41000.42000.68100.1210600 | Living dinning flooring | 13.5d | 2026-09-10 | 2026-09-21 | 2409, 2418, 2424 |  | GC1 | 8839734 |
| 2426 | 37100.37400.37600.38600.39500.41000.42000.68100.1210700 | Aluminium door-window fixing | 13.5d | 2026-09-22 | 2026-10-03 | 2410, 2422, 2425 |  | GC1 | 8839744 |
| 2427 | 37100.37400.37600.38600.39500.41000.42000.68100.1210800 | Putty primer coat | 6.75d | 2026-09-22 | 2026-09-27 | 2411, 2425 |  | GC1 | 8839754 |
| 2428 | 37100.37400.37600.38600.39500.41000.42000.68100.1210900 | Door shutter fixing | 9d | 2026-09-22 | 2026-09-29 | 2412, 2425 |  | GC1 | 8839764 |
| 2429 | 37100.37400.37600.38600.39500.41000.42000.68100.1211000 | Electrical wiring work | 13.5d | 2026-09-30 | 2026-10-11 | 2413, 2428 |  | GC1 | 8839774 |
| 2430 | 37100.37400.37600.38600.39500.41000.42000.68100.1211100 | Painting 1st coat | 13.5d | 2026-10-12 | 2026-10-23 | 2414, 2427, 2428, 2429 |  | GC1 | 8839784 |
| 2431 | 37100.37400.37600.38600.39500.41000.42000.68100.1211200 | False ceiling | 11.25d | 2026-10-24 | 2026-12-17 | 2415, 2430 |  | GC1 | 8839794 |
| 2432 | 37100.37400.37600.38600.39500.41000.42000.68200 | **22nd Floor** | 127.12d | 2026-07-25 | 2026-12-29 |  | start no earlier than 2026-07-25 | GC1 | 8807104 |
| 2433 | 37100.37400.37600.38600.39500.41000.42000.68200.1211300 | Block Work | 9d | 2026-07-25 | 2026-08-01 | 2080, 2417 |  | GC1 | 8839804 |
| 2434 | 37100.37400.37600.38600.39500.41000.42000.68200.1211400 | Door Frame Fixing | 10.12d | 2026-08-02 | 2026-08-10 | 2418, 2433 |  | GC1 | 8839814 |
| 2435 | 37100.37400.37600.38600.39500.41000.42000.68200.1211500 | Internal Plumbing Works | 11.25d | 2026-08-02 | 2026-08-11 | 2419, 2433 |  | GC1 | 8839824 |
| 2436 | 37100.37400.37600.38600.39500.41000.42000.68200.1211600 | Waterproofing | 13.5d | 2026-08-17 | 2026-08-28 | 2420, 2435 |  | GC1 | 8839834 |
| 2437 | 37100.37400.37600.38600.39500.41000.42000.68200.1211700 | Internal Plaster | 10.12d | 2026-08-29 | 2026-09-06 | 2421, 2434, 2435, 2436 |  | GC1 | 8839844 |
| 2438 | 37100.37400.37600.38600.39500.41000.42000.68200.1211800 | IPS flooring work | 10.12d | 2026-09-07 | 2026-09-15 | 2422, 2434, 2436, 2437 |  | GC1 | 8839854 |
| 2439 | 37100.37400.37600.38600.39500.41000.42000.68200.1211900 | Toilet dado work | 9d | 2026-09-07 | 2026-09-14 | 2423, 2436, 2437 |  | GC1 | 8839864 |
| 2440 | 37100.37400.37600.38600.39500.41000.42000.68200.1212000 | Toilet flooring work | 7.88d | 2026-09-15 | 2026-09-21 | 2424, 2439 |  | GC1 | 8839874 |
| 2441 | 37100.37400.37600.38600.39500.41000.42000.68200.1212100 | Living dinning flooring | 13.5d | 2026-09-22 | 2026-10-03 | 2425, 2434, 2440 |  | GC1 | 8839884 |
| 2442 | 37100.37400.37600.38600.39500.41000.42000.68200.1212200 | Aluminium door-window fixing | 13.5d | 2026-10-04 | 2026-10-15 | 2426, 2438, 2441 |  | GC1 | 8839894 |
| 2443 | 37100.37400.37600.38600.39500.41000.42000.68200.1212300 | Putty primer coat | 6.75d | 2026-10-04 | 2026-10-09 | 2427, 2441 |  | GC1 | 8839904 |
| 2444 | 37100.37400.37600.38600.39500.41000.42000.68200.1212400 | Door shutter fixing | 9d | 2026-10-04 | 2026-10-11 | 2428, 2441 |  | GC1 | 8839914 |
| 2445 | 37100.37400.37600.38600.39500.41000.42000.68200.1212500 | Electrical wiring work | 13.5d | 2026-10-12 | 2026-10-23 | 2429, 2444 |  | GC1 | 8839924 |
| 2446 | 37100.37400.37600.38600.39500.41000.42000.68200.1212600 | Painting 1st coat | 13.5d | 2026-10-24 | 2026-12-19 | 2430, 2443, 2444, 2445 |  | GC1 | 8839934 |
| 2447 | 37100.37400.37600.38600.39500.41000.42000.68200.1212700 | False ceiling | 11.25d | 2026-12-20 | 2026-12-29 | 2431, 2446 |  | GC1 | 8839944 |

| ID | WBS | Task | Duration | Start | Finish | Predecessors | Constraint | Calendar | Unique_Task_ID |
| --- | --- | --- | --- | --- | --- | --- | --- | --- | --- |
| 2448 | 37100.37400.37600.38600.39500.41000.42000.68300 | **23rd Floor** | 131.62d | 2026-08-05 | 2027-01-13 |  | start no earlier than 2026-08-05 | GC1 | 8807114 |
| 2449 | 37100.37400.37600.38600.39500.41000.42000.68300.1212800 | Block Work | 9d | 2026-08-05 | 2026-08-12 | 2081, 2433 |  | GC1 | 8839954 |
| 2450 | 37100.37400.37600.38600.39500.41000.42000.68300.1212900 | Door Frame Fixing | 10.12d | 2026-08-13 | 2026-08-21 | 2434, 2449 |  | GC1 | 8839964 |
| 2451 | 37100.37400.37600.38600.39500.41000.42000.68300.1213000 | Internal Plumbing Works | 11.25d | 2026-08-13 | 2026-08-22 | 2435, 2449 |  | GC1 | 8839974 |
| 2452 | 37100.37400.37600.38600.39500.41000.42000.68300.1213100 | Waterproofing | 13.5d | 2026-08-29 | 2026-09-09 | 2436, 2451 |  | GC1 | 8839984 |
| 2453 | 37100.37400.37600.38600.39500.41000.42000.68300.1213200 | Internal Plaster | 10.12d | 2026-09-10 | 2026-09-18 | 2437, 2450, 2451, 2452 |  | GC1 | 8839994 |
| 2454 | 37100.37400.37600.38600.39500.41000.42000.68300.1213300 | IPS flooring work | 10.12d | 2026-09-19 | 2026-09-27 | 2438, 2450, 2452, 2453 |  | GC1 | 8840004 |
| 2455 | 37100.37400.37600.38600.39500.41000.42000.68300.1213400 | Toilet dado work | 9d | 2026-09-19 | 2026-09-26 | 2439, 2452, 2453 |  | GC1 | 8840014 |
| 2456 | 37100.37400.37600.38600.39500.41000.42000.68300.1213500 | Toilet flooring work | 7.88d | 2026-09-27 | 2026-10-03 | 2440, 2455 |  | GC1 | 8840024 |
| 2457 | 37100.37400.37600.38600.39500.41000.42000.68300.1213600 | Living dinning flooring | 16.88d | 2026-10-04 | 2026-10-18 | 2441, 2450, 2456 |  | GC1 | 8840034 |
| 2458 | 37100.37400.37600.38600.39500.41000.42000.68300.1213700 | Aluminium door-window fixing | 16.88d | 2026-10-19 | 2026-12-17 | 2442, 2454, 2457 |  | GC1 | 8840044 |
| 2459 | 37100.37400.37600.38600.39500.41000.42000.68300.1213800 | Putty primer coat | 6.75d | 2026-10-19 | 2026-10-24 | 2443, 2457 |  | GC1 | 8840054 |
| 2460 | 37100.37400.37600.38600.39500.41000.42000.68300.1213900 | Door shutter fixing | 9d | 2026-10-19 | 2026-10-26 | 2444, 2457 |  | GC1 | 8840064 |
| 2461 | 37100.37400.37600.38600.39500.41000.42000.68300.1214000 | Electrical wiring work | 13.5d | 2026-10-27 | 2026-12-22 | 2445, 2460 |  | GC1 | 8840074 |
| 2462 | 37100.37400.37600.38600.39500.41000.42000.68300.1214100 | Painting 1st coat | 13.5d | 2026-12-23 | 2027-01-03 | 2446, 2459, 2460, 2461 |  | GC1 | 8840084 |
| 2463 | 37100.37400.37600.38600.39500.41000.42000.68300.1214200 | False ceiling | 11.25d | 2027-01-04 | 2027-01-13 | 2447, 2462 |  | GC1 | 8840094 |
| 2464 | 37100.37400.37600.38600.39500.41000.42000.68400 | **24th Floor** | 136.12d | 2026-08-16 | 2027-01-28 |  | start no earlier than 2026-08-16 | GC1 | 8807124 |
| 2465 | 37100.37400.37600.38600.39500.41000.42000.68400.1214300 | Block Work | 9d | 2026-08-16 | 2026-08-23 | 2082, 2449 |  | GC1 | 8840104 |
| 2466 | 37100.37400.37600.38600.39500.41000.42000.68400.1214400 | Door Frame Fixing | 10.12d | 2026-08-24 | 2026-09-01 | 2450, 2465 |  | GC1 | 8840114 |
| 2467 | 37100.37400.37600.38600.39500.41000.42000.68400.1214500 | Internal Plumbing Works | 11.25d | 2026-08-24 | 2026-09-02 | 2451, 2465 |  | GC1 | 8840124 |
| 2468 | 37100.37400.37600.38600.39500.41000.42000.68400.1214600 | Waterproofing | 13.5d | 2026-09-10 | 2026-09-21 | 2452, 2467 |  | GC1 | 8840134 |
| 2469 | 37100.37400.37600.38600.39500.41000.42000.68400.1214700 | Internal Plaster | 10.12d | 2026-09-22 | 2026-09-30 | 2453, 2466, 2467, 2468 |  | GC1 | 8840144 |
| 2470 | 37100.37400.37600.38600.39500.41000.42000.68400.1214800 | IPS flooring work | 10.12d | 2026-10-01 | 2026-10-09 | 2454, 2466, 2468, 2469 |  | GC1 | 8840154 |
| 2471 | 37100.37400.37600.38600.39500.41000.42000.68400.1214900 | Toilet dado work | 9d | 2026-10-01 | 2026-10-08 | 2455, 2468, 2469 |  | GC1 | 8840164 |
| 2472 | 37100.37400.37600.38600.39500.41000.42000.68400.1215000 | Toilet flooring work | 7.88d | 2026-10-09 | 2026-10-15 | 2456, 2471 |  | GC1 | 8840174 |
| 2473 | 37100.37400.37600.38600.39500.41000.42000.68400.1215100 | Living dinning flooring | 16.88d | 2026-10-19 | 2026-12-17 | 2457, 2466, 2472 |  | GC1 | 8840184 |
| 2474 | 37100.37400.37600.38600.39500.41000.42000.68400.1215200 | Aluminium door-window fixing | 16.88d | 2026-12-18 | 2027-01-01 | 2458, 2470, 2473 |  | GC1 | 8840194 |
| 2475 | 37100.37400.37600.38600.39500.41000.42000.68400.1215300 | Putty primer coat | 6.75d | 2026-12-18 | 2026-12-23 | 2459, 2473 |  | GC1 | 8840204 |
| 2476 | 37100.37400.37600.38600.39500.41000.42000.68400.1215400 | Door shutter fixing | 9d | 2026-12-18 | 2026-12-25 | 2460, 2473 |  | GC1 | 8840214 |
| 2477 | 37100.37400.37600.38600.39500.41000.42000.68400.1215500 | Electrical wiring work | 13.5d | 2026-12-26 | 2027-01-06 | 2461, 2476 |  | GC1 | 8840224 |
| 2478 | 37100.37400.37600.38600.39500.41000.42000.68400.1215600 | Painting 1st coat | 13.5d | 2027-01-07 | 2027-01-18 | 2462, 2475, 2476, 2477 |  | GC1 | 8840234 |
| 2479 | 37100.37400.37600.38600.39500.41000.42000.68400.1215700 | False ceiling | 11.25d | 2027-01-19 | 2027-01-28 | 2463, 2478 |  | GC1 | 8840244 |

| ID | WBS | Task | Duration | Start | Finish | Predecessors | Constraint | Calendar | Unique_Task_ID |
| --- | --- | --- | --- | --- | --- | --- | --- | --- | --- |
| 2480 | 37100.37400.37600.38600.39500.41000.42000.68500 | **25th Floor** | 140.62d | 2026-08-27 | 2027-02-12 |  | start no earlier than 2026-08-27 | GC1 | 8807134 |
| 2481 | 37100.37400.37600.38600.39500.41000.42000.68500.1215800 | Block Work | 9d | 2026-08-27 | 2026-09-03 | 2083, 2465 |  | GC1 | 8840254 |
| 2482 | 37100.37400.37600.38600.39500.41000.42000.68500.1215900 | Door Frame Fixing | 10.12d | 2026-09-04 | 2026-09-12 | 2466, 2481 |  | GC1 | 8840264 |
| 2483 | 37100.37400.37600.38600.39500.41000.42000.68500.1216000 | Internal Plumbing Works | 11.25d | 2026-09-04 | 2026-09-13 | 2467, 2481 |  | GC1 | 8840274 |
| 2484 | 37100.37400.37600.38600.39500.41000.42000.68500.1216100 | Waterproofing | 13.5d | 2026-09-22 | 2026-10-03 | 2468, 2483 |  | GC1 | 8840284 |
| 2485 | 37100.37400.37600.38600.39500.41000.42000.68500.1216200 | Internal Plaster | 10.12d | 2026-10-04 | 2026-10-12 | 2469, 2482, 2483, 2484 |  | GC1 | 8840294 |
| 2486 | 37100.37400.37600.38600.39500.41000.42000.68500.1216300 | IPS flooring work | 10.12d | 2026-10-13 | 2026-10-21 | 2470, 2482, 2484, 2485 |  | GC1 | 8840304 |
| 2487 | 37100.37400.37600.38600.39500.41000.42000.68500.1216400 | Toilet dado work | 9d | 2026-10-13 | 2026-10-20 | 2471, 2484, 2485 |  | GC1 | 8840314 |
| 2488 | 37100.37400.37600.38600.39500.41000.42000.68500.1216500 | Toilet flooring work | 7.88d | 2026-10-21 | 2026-10-27 | 2472, 2487 |  | GC1 | 8840324 |
| 2489 | 37100.37400.37600.38600.39500.41000.42000.68500.1216600 | Living dinning flooring | 16.88d | 2026-12-18 | 2027-01-01 | 2473, 2482, 2488 |  | GC1 | 8840334 |
| 2490 | 37100.37400.37600.38600.39500.41000.42000.68500.1216700 | Aluminium door-window fixing | 16.88d | 2027-01-02 | 2027-01-16 | 2474, 2486, 2489 |  | GC1 | 8840344 |
| 2491 | 37100.37400.37600.38600.39500.41000.42000.68500.1216800 | Putty primer coat | 6.75d | 2027-01-02 | 2027-01-07 | 2475, 2489 |  | GC1 | 8840354 |
| 2492 | 37100.37400.37600.38600.39500.41000.42000.68500.1216900 | Door shutter fixing | 9d | 2027-01-02 | 2027-01-09 | 2476, 2489 |  | GC1 | 8840364 |
| 2493 | 37100.37400.37600.38600.39500.41000.42000.68500.1217000 | Electrical wiring work | 13.5d | 2027-01-10 | 2027-01-21 | 2477, 2492 |  | GC1 | 8840374 |
| 2494 | 37100.37400.37600.38600.39500.41000.42000.68500.1217100 | Painting 1st coat | 13.5d | 2027-01-22 | 2027-02-02 | 2478, 2491, 2492, 2493 |  | GC1 | 8840384 |
| 2495 | 37100.37400.37600.38600.39500.41000.42000.68500.1217200 | False ceiling | 11.25d | 2027-02-03 | 2027-02-12 | 2479, 2494 |  | GC1 | 8840394 |
| 2496 | 37100.37400.37600.38600.39500.41000.42000.68600 | **26th Floor** | 145.12d | 2026-09-07 | 2027-02-27 |  | start no earlier than 2026-09-07 | GC1 | 8807144 |
| 2497 | 37100.37400.37600.38600.39500.41000.42000.68600.1217300 | Block Work | 9d | 2026-09-07 | 2026-09-14 | 2084, 2481 |  | GC1 | 8840404 |
| 2498 | 37100.37400.37600.38600.39500.41000.42000.68600.1217400 | Door Frame Fixing | 10.12d | 2026-09-15 | 2026-09-23 | 2482, 2497 |  | GC1 | 8840414 |
| 2499 | 37100.37400.37600.38600.39500.41000.42000.68600.1217500 | Internal Plumbing Works | 11.25d | 2026-09-15 | 2026-09-24 | 2483, 2497 |  | GC1 | 8840424 |
| 2500 | 37100.37400.37600.38600.39500.41000.42000.68600.1217600 | Waterproofing | 13.5d | 2026-10-04 | 2026-10-15 | 2484, 2499 |  | GC1 | 8840434 |
| 2501 | 37100.37400.37600.38600.39500.41000.42000.68600.1217700 | Internal Plaster | 10.12d | 2026-10-16 | 2026-10-24 | 2485, 2498, 2499, 2500 |  | GC1 | 8840444 |
| 2502 | 37100.37400.37600.38600.39500.41000.42000.68600.1217800 | IPS flooring work | 10.12d | 2026-10-25 | 2026-12-17 | 2486, 2498, 2500, 2501 |  | GC1 | 8840454 |
| 2503 | 37100.37400.37600.38600.39500.41000.42000.68600.1217900 | Toilet dado work | 9d | 2026-10-25 | 2026-12-16 | 2487, 2500, 2501 |  | GC1 | 8840464 |
| 2504 | 37100.37400.37600.38600.39500.41000.42000.68600.1218000 | Toilet flooring work | 7.88d | 2026-12-17 | 2026-12-23 | 2488, 2503 |  | GC1 | 8840474 |
| 2505 | 37100.37400.37600.38600.39500.41000.42000.68600.1218100 | Living dinning flooring | 16.88d | 2027-01-02 | 2027-01-16 | 2489, 2498, 2504 |  | GC1 | 8840484 |
| 2506 | 37100.37400.37600.38600.39500.41000.42000.68600.1218200 | Aluminium door-window fixing | 16.88d | 2027-01-17 | 2027-01-31 | 2490, 2502, 2505 |  | GC1 | 8840494 |
| 2507 | 37100.37400.37600.38600.39500.41000.42000.68600.1218300 | Putty primer coat | 6.75d | 2027-01-17 | 2027-01-22 | 2491, 2505 |  | GC1 | 8840504 |
| 2508 | 37100.37400.37600.38600.39500.41000.42000.68600.1218400 | Door shutter fixing | 9d | 2027-01-17 | 2027-01-24 | 2492, 2505 |  | GC1 | 8840514 |
| 2509 | 37100.37400.37600.38600.39500.41000.42000.68600.1218500 | Electrical wiring work | 13.5d | 2027-01-25 | 2027-02-05 | 2493, 2508 |  | GC1 | 8840524 |
| 2510 | 37100.37400.37600.38600.39500.41000.42000.68600.1218600 | Painting 1st coat | 13.5d | 2027-02-06 | 2027-02-17 | 2494, 2507, 2508, 2509 |  | GC1 | 8840534 |
| 2511 | 37100.37400.37600.38600.39500.41000.42000.68600.1218700 | False ceiling | 11.25d | 2027-02-18 | 2027-02-27 | 2495, 2510 |  | GC1 | 8840544 |

| ID | WBS | Task | Duration | Start | Finish | Predecessors | Constraint | Calendar | Unique_Task_ID |
| --- | --- | --- | --- | --- | --- | --- | --- | --- | --- |
| 2512 | 37100.37400.37600.38600.39500.41000.42000.68700 | **27th Floor** | 149.62d | 2026-09-18 | 2027-03-14 |  | start no earlier than 2026-09-18 | GC1 | 8807154 |
| 2513 | 37100.37400.37600.38600.39500.41000.42000.68700.1218800 | Block Work | 9d | 2026-09-18 | 2026-09-25 | 2085, 2497 |  | GC1 | 8840554 |
| 2514 | 37100.37400.37600.38600.39500.41000.42000.68700.1218900 | Door Frame Fixing | 10.12d | 2026-09-26 | 2026-10-04 | 2498, 2513 |  | GC1 | 8840564 |
| 2515 | 37100.37400.37600.38600.39500.41000.42000.68700.1219000 | Internal Plumbing Works | 11.25d | 2026-09-26 | 2026-10-05 | 2499, 2513 |  | GC1 | 8840574 |
| 2516 | 37100.37400.37600.38600.39500.41000.42000.68700.1219100 | Waterproofing | 13.5d | 2026-10-16 | 2026-10-27 | 2500, 2515 |  | GC1 | 8840584 |
| 2517 | 37100.37400.37600.38600.39500.41000.42000.68700.1219200 | Internal Plaster | 10.12d | 2026-10-28 | 2026-12-20 | 2501, 2514, 2515, 2516 |  | GC1 | 8840594 |
| 2518 | 37100.37400.37600.38600.39500.41000.42000.68700.1219300 | IPS flooring work | 10.12d | 2026-12-21 | 2026-12-29 | 2502, 2514, 2516, 2517 |  | GC1 | 8840604 |
| 2519 | 37100.37400.37600.38600.39500.41000.42000.68700.1219400 | Toilet dado work | 9d | 2026-12-21 | 2026-12-28 | 2503, 2516, 2517 |  | GC1 | 8840614 |
| 2520 | 37100.37400.37600.38600.39500.41000.42000.68700.1219500 | Toilet flooring work | 7.88d | 2026-12-29 | 2027-01-04 | 2504, 2519 |  | GC1 | 8840624 |
| 2521 | 37100.37400.37600.38600.39500.41000.42000.68700.1219600 | Living dinning flooring | 16.88d | 2027-01-17 | 2027-01-31 | 2505, 2514, 2520 |  | GC1 | 8840634 |
| 2522 | 37100.37400.37600.38600.39500.41000.42000.68700.1219700 | Aluminium door-window fixing | 16.88d | 2027-02-01 | 2027-02-15 | 2506, 2518, 2521 |  | GC1 | 8840644 |
| 2523 | 37100.37400.37600.38600.39500.41000.42000.68700.1219800 | Putty primer coat | 6.75d | 2027-02-01 | 2027-02-06 | 2507, 2521 |  | GC1 | 8840654 |
| 2524 | 37100.37400.37600.38600.39500.41000.42000.68700.1219900 | Door shutter fixing | 9d | 2027-02-01 | 2027-02-08 | 2508, 2521 |  | GC1 | 8840664 |
| 2525 | 37100.37400.37600.38600.39500.41000.42000.68700.1220000 | Electrical wiring work | 13.5d | 2027-02-09 | 2027-02-20 | 2509, 2524 |  | GC1 | 8840674 |
| 2526 | 37100.37400.37600.38600.39500.41000.42000.68700.1220100 | Painting 1st coat | 13.5d | 2027-02-21 | 2027-03-04 | 2510, 2523, 2524, 2525 |  | GC1 | 8840684 |
| 2527 | 37100.37400.37600.38600.39500.41000.42000.68700.1220200 | False ceiling | 11.25d | 2027-03-05 | 2027-03-14 | 2511, 2526 |  | GC1 | 8840694 |
| 2528 | 37100.37400.37600.38600.39500.41000.42000.68800 | **28th Floor** | 154.12d | 2026-09-29 | 2027-03-29 |  | start no earlier than 2026-09-29 | GC1 | 8807164 |
| 2529 | 37100.37400.37600.38600.39500.41000.42000.68800.1220300 | Block Work | 9d | 2026-09-29 | 2026-10-06 | 2086, 2513 |  | GC1 | 8840704 |
| 2530 | 37100.37400.37600.38600.39500.41000.42000.68800.1220400 | Door Frame Fixing | 10.12d | 2026-10-07 | 2026-10-15 | 2514, 2529 |  | GC1 | 8840714 |
| 2531 | 37100.37400.37600.38600.39500.41000.42000.68800.1220500 | Internal Plumbing Works | 11.25d | 2026-10-07 | 2026-10-16 | 2515, 2529 |  | GC1 | 8840724 |
| 2532 | 37100.37400.37600.38600.39500.41000.42000.68800.1220600 | Waterproofing | 13.5d | 2026-10-28 | 2026-12-23 | 2516, 2531 |  | GC1 | 8840734 |
| 2533 | 37100.37400.37600.38600.39500.41000.42000.68800.1220700 | Internal Plaster | 10.12d | 2026-12-24 | 2027-01-01 | 2517, 2530, 2531, 2532 |  | GC1 | 8840744 |
| 2534 | 37100.37400.37600.38600.39500.41000.42000.68800.1220800 | IPS flooring work | 10.12d | 2027-01-02 | 2027-01-10 | 2518, 2530, 2532, 2533 |  | GC1 | 8840754 |
| 2535 | 37100.37400.37600.38600.39500.41000.42000.68800.1220900 | Toilet dado work | 9d | 2027-01-02 | 2027-01-09 | 2519, 2532, 2533 |  | GC1 | 8840764 |
| 2536 | 37100.37400.37600.38600.39500.41000.42000.68800.1221000 | Toilet flooring work | 7.88d | 2027-01-10 | 2027-01-16 | 2520, 2535 |  | GC1 | 8840774 |
| 2537 | 37100.37400.37600.38600.39500.41000.42000.68800.1221100 | Living dinning flooring | 16.88d | 2027-02-01 | 2027-02-15 | 2521, 2530, 2536 |  | GC1 | 8840784 |
| 2538 | 37100.37400.37600.38600.39500.41000.42000.68800.1221200 | Aluminium door-window fixing | 16.88d | 2027-02-16 | 2027-03-02 | 2522, 2534, 2537 |  | GC1 | 8840794 |
| 2539 | 37100.37400.37600.38600.39500.41000.42000.68800.1221300 | Putty primer coat | 6.75d | 2027-02-16 | 2027-02-21 | 2523, 2537 |  | GC1 | 8840804 |
| 2540 | 37100.37400.37600.38600.39500.41000.42000.68800.1221400 | Door shutter fixing | 9d | 2027-02-16 | 2027-02-23 | 2524, 2537 |  | GC1 | 8840814 |
| 2541 | 37100.37400.37600.38600.39500.41000.42000.68800.1221500 | Electrical wiring work | 13.5d | 2027-02-24 | 2027-03-07 | 2525, 2540 |  | GC1 | 8840824 |
| 2542 | 37100.37400.37600.38600.39500.41000.42000.68800.1221600 | Painting 1st coat | 13.5d | 2027-03-08 | 2027-03-19 | 2526, 2539, 2540, 2541 |  | GC1 | 8840834 |
| 2543 | 37100.37400.37600.38600.39500.41000.42000.68800.1221700 | False ceiling | 11.25d | 2027-03-20 | 2027-03-29 | 2527, 2542 |  | GC1 | 8840844 |

| ID | WBS | Task | Duration | Start | Finish | Predecessors | Constraint | Calendar | Unique_Task_ID |
| --- | --- | --- | --- | --- | --- | --- | --- | --- | --- |
| 2544 | 37100.37400.37600.38600.39500.41000.42000.68900 | **29th Floor** | 158.62d | 2026-10-10 | 2027-04-13 |  | start no earlier than 2026-10-10 | GC1 | 8807174 |
| 2545 | 37100.37400.37600.38600.39500.41000.42000.68900.1221800 | Block Work | 9d | 2026-10-10 | 2026-10-17 | 2087, 2529 |  | GC1 | 8840854 |
| 2546 | 37100.37400.37600.38600.39500.41000.42000.68900.1221900 | Door Frame Fixing | 10.12d | 2026-10-18 | 2026-10-26 | 2530, 2545 |  | GC1 | 8840864 |
| 2547 | 37100.37400.37600.38600.39500.41000.42000.68900.1222000 | Internal Plumbing Works | 11.25d | 2026-10-18 | 2026-10-27 | 2531, 2545 |  | GC1 | 8840874 |
| 2548 | 37100.37400.37600.38600.39500.41000.42000.68900.1222100 | Waterproofing | 13.5d | 2026-12-24 | 2027-01-04 | 2532, 2547 |  | GC1 | 8840884 |
| 2549 | 37100.37400.37600.38600.39500.41000.42000.68900.1222200 | Internal Plaster | 10.12d | 2027-01-05 | 2027-01-13 | 2533, 2546, 2547, 2548 |  | GC1 | 8840894 |
| 2550 | 37100.37400.37600.38600.39500.41000.42000.68900.1222300 | IPS flooring work | 10.12d | 2027-01-14 | 2027-01-22 | 2534, 2546, 2548, 2549 |  | GC1 | 8840904 |
| 2551 | 37100.37400.37600.38600.39500.41000.42000.68900.1222400 | Toilet dado work | 9d | 2027-01-14 | 2027-01-21 | 2535, 2548, 2549 |  | GC1 | 8840914 |
| 2552 | 37100.37400.37600.38600.39500.41000.42000.68900.1222500 | Toilet flooring work | 7.88d | 2027-01-22 | 2027-01-28 | 2536, 2551 |  | GC1 | 8840924 |
| 2553 | 37100.37400.37600.38600.39500.41000.42000.68900.1222600 | Living dinning flooring | 16.88d | 2027-02-16 | 2027-03-02 | 2537, 2546, 2552 |  | GC1 | 8840934 |
| 2554 | 37100.37400.37600.38600.39500.41000.42000.68900.1222700 | Aluminium door-window fixing | 16.88d | 2027-03-03 | 2027-03-17 | 2538, 2550, 2553 |  | GC1 | 8840944 |
| 2555 | 37100.37400.37600.38600.39500.41000.42000.68900.1222800 | Putty primer coat | 6.75d | 2027-03-03 | 2027-03-08 | 2539, 2553 |  | GC1 | 8840954 |
| 2556 | 37100.37400.37600.38600.39500.41000.42000.68900.1222900 | Door shutter fixing | 9d | 2027-03-03 | 2027-03-10 | 2540, 2553 |  | GC1 | 8840964 |
| 2557 | 37100.37400.37600.38600.39500.41000.42000.68900.1223000 | Electrical wiring work | 13.5d | 2027-03-11 | 2027-03-22 | 2541, 2556 |  | GC1 | 8840974 |
| 2558 | 37100.37400.37600.38600.39500.41000.42000.68900.1223100 | Painting 1st coat | 13.5d | 2027-03-23 | 2027-04-03 | 2542, 2555, 2556, 2557 |  | GC1 | 8840984 |
| 2559 | 37100.37400.37600.38600.39500.41000.42000.68900.1223200 | False ceiling | 11.25d | 2027-04-04 | 2027-04-13 | 2543, 2558 |  | GC1 | 8840994 |
| 2560 | 37100.37400.37600.38600.39500.41000.42000.69000 | **30th Floor** | 169.88d | 2026-10-21 | 2027-05-04 |  | start no earlier than 2026-10-21 | GC1 | 8807184 |
| 2561 | 37100.37400.37600.38600.39500.41000.42000.69000.1223300 | Block Work | 9d | 2026-10-21 | 2026-10-28 | 2088, 2545 |  | GC1 | 8841004 |
| 2562 | 37100.37400.37600.38600.39500.41000.42000.69000.1223400 | Door Frame Fixing | 10.12d | 2026-10-29 | 2026-12-21 | 2546, 2561 |  | GC1 | 8841014 |
| 2563 | 37100.37400.37600.38600.39500.41000.42000.69000.1223500 | Internal Plumbing Works | 11.25d | 2026-10-29 | 2026-12-22 | 2547, 2561 |  | GC1 | 8841024 |
| 2564 | 37100.37400.37600.38600.39500.41000.42000.69000.1223600 | Waterproofing | 13.5d | 2027-01-05 | 2027-01-16 | 2548, 2563 |  | GC1 | 8841034 |
| 2565 | 37100.37400.37600.38600.39500.41000.42000.69000.1223700 | Internal Plaster | 10.12d | 2027-01-17 | 2027-01-25 | 2549, 2562, 2563, 2564 |  | GC1 | 8841044 |
| 2566 | 37100.37400.37600.38600.39500.41000.42000.69000.1223800 | IPS flooring work | 10.12d | 2027-01-26 | 2027-02-03 | 2550, 2562, 2564, 2565 |  | GC1 | 8841054 |
| 2567 | 37100.37400.37600.38600.39500.41000.42000.69000.1223900 | Toilet dado work | 9d | 2027-01-26 | 2027-02-02 | 2551, 2564, 2565 |  | GC1 | 8841064 |
| 2568 | 37100.37400.37600.38600.39500.41000.42000.69000.1224000 | Toilet flooring work | 7.88d | 2027-02-03 | 2027-02-09 | 2552, 2567 |  | GC1 | 8841074 |
| 2569 | 37100.37400.37600.38600.39500.41000.42000.69000.1224100 | Living dinning flooring | 16.88d | 2027-03-03 | 2027-03-17 | 2553, 2562, 2568 |  | GC1 | 8841084 |
| 2570 | 37100.37400.37600.38600.39500.41000.42000.69000.1224200 | Aluminium door-window fixing | 16.88d | 2027-03-18 | 2027-04-01 | 2554, 2566, 2569 |  | GC1 | 8841094 |
| 2571 | 37100.37400.37600.38600.39500.41000.42000.69000.1224300 | Putty primer coat | 6.75d | 2027-03-18 | 2027-03-23 | 2555, 2569 |  | GC1 | 8841104 |
| 2572 | 37100.37400.37600.38600.39500.41000.42000.69000.1224400 | Door shutter fixing | 9d | 2027-03-18 | 2027-03-25 | 2556, 2569 |  | GC1 | 8841114 |
| 2573 | 37100.37400.37600.38600.39500.41000.42000.69000.1224500 | Electrical wiring work | 16.88d | 2027-03-26 | 2027-04-09 | 2557, 2572 |  | GC1 | 8841124 |
| 2574 | 37100.37400.37600.38600.39500.41000.42000.69000.1224600 | Painting 1st coat | 16.88d | 2027-04-10 | 2027-04-24 | 2558, 2571, 2572, 2573 |  | GC1 | 8841134 |
| 2575 | 37100.37400.37600.38600.39500.41000.42000.69000.1224700 | False ceiling | 11.25d | 2027-04-25 | 2027-05-04 | 2559, 2574 |  | GC1 | 8841144 |

| ID | WBS | Task | Duration | Start | Finish | Predecessors | Constraint | Calendar | Unique_Task_ID |
| --- | --- | --- | --- | --- | --- | --- | --- | --- | --- |
| 2576 | 37100.37400.37600.38600.39500.41000.42000.69100 | **31st Floor** | 174.38d | 2026-12-16 | 2027-05-19 |  | start no earlier than 2026-12-16 | GC1 | 8807194 |
| 2577 | 37100.37400.37600.38600.39500.41000.42000.69100.1224800 | Block Work | 9d | 2026-12-16 | 2026-12-23 | 2089, 2561 |  | GC1 | 8841154 |
| 2578 | 37100.37400.37600.38600.39500.41000.42000.69100.1224900 | Door Frame Fixing | 10.12d | 2026-12-24 | 2027-01-01 | 2562, 2577 |  | GC1 | 8841164 |
| 2579 | 37100.37400.37600.38600.39500.41000.42000.69100.1225000 | Internal Plumbing Works | 11.25d | 2026-12-24 | 2027-01-02 | 2563, 2577 |  | GC1 | 8841174 |
| 2580 | 37100.37400.37600.38600.39500.41000.42000.69100.1225100 | Waterproofing | 11.25d | 2027-01-17 | 2027-01-26 | 2564, 2579 |  | GC1 | 8841184 |
| 2581 | 37100.37400.37600.38600.39500.41000.42000.69100.1225200 | Internal Plaster | 10.12d | 2027-01-27 | 2027-02-04 | 2565, 2578, 2579, 2580 |  | GC1 | 8841194 |
| 2582 | 37100.37400.37600.38600.39500.41000.42000.69100.1225300 | IPS flooring work | 10.12d | 2027-02-05 | 2027-02-13 | 2566, 2578, 2580, 2581 |  | GC1 | 8841204 |
| 2583 | 37100.37400.37600.38600.39500.41000.42000.69100.1225400 | Toilet dado work | 9d | 2027-02-05 | 2027-02-12 | 2567, 2580, 2581 |  | GC1 | 8841214 |
| 2584 | 37100.37400.37600.38600.39500.41000.42000.69100.1225500 | Toilet flooring work | 7.88d | 2027-02-13 | 2027-02-19 | 2568, 2583 |  | GC1 | 8841224 |
| 2585 | 37100.37400.37600.38600.39500.41000.42000.69100.1225600 | Living dinning flooring | 16.88d | 2027-03-18 | 2027-04-01 | 2569, 2578, 2584 |  | GC1 | 8841234 |
| 2586 | 37100.37400.37600.38600.39500.41000.42000.69100.1225700 | Aluminium door-window fixing | 13.5d | 2027-04-02 | 2027-04-13 | 2570, 2582, 2585 |  | GC1 | 8841244 |
| 2587 | 37100.37400.37600.38600.39500.41000.42000.69100.1225800 | Putty primer coat | 6.75d | 2027-04-02 | 2027-04-07 | 2571, 2585 |  | GC1 | 8841254 |
| 2588 | 37100.37400.37600.38600.39500.41000.42000.69100.1225900 | Door shutter fixing | 9d | 2027-04-02 | 2027-04-09 | 2572, 2585 |  | GC1 | 8841264 |
| 2589 | 37100.37400.37600.38600.39500.41000.42000.69100.1226000 | Electrical wiring work | 16.88d | 2027-04-10 | 2027-04-24 | 2573, 2588 |  | GC1 | 8841274 |
| 2590 | 37100.37400.37600.38600.39500.41000.42000.69100.1226100 | Painting 1st coat | 16.88d | 2027-04-25 | 2027-05-09 | 2574, 2587, 2588, 2589 |  | GC1 | 8841284 |
| 2591 | 37100.37400.37600.38600.39500.41000.42000.69100.1226200 | False ceiling | 11.25d | 2027-05-10 | 2027-05-19 | 2575, 2590 |  | GC1 | 8841294 |
| 2592 | 37100.37400.37600.38600.39500.41000.42000.69200 | **32nd Floor** | 182.25d | 2026-12-24 | 2027-06-03 |  | start no earlier than 2026-12-24 | GC1 | 8807204 |
| 2593 | 37100.37400.37600.38600.39500.41000.42000.69200.1226300 | Block Work | 9d | 2026-12-24 | 2026-12-31 | 2090, 2577 |  | GC1 | 8841304 |
| 2594 | 37100.37400.37600.38600.39500.41000.42000.69200.1226400 | Door Frame Fixing | 10.12d | 2027-01-02 | 2027-01-10 | 2578, 2593 |  | GC1 | 8841314 |
| 2595 | 37100.37400.37600.38600.39500.41000.42000.69200.1226500 | Internal Plumbing Works | 11.25d | 2027-01-03 | 2027-01-12 | 2579, 2593 |  | GC1 | 8841324 |
| 2596 | 37100.37400.37600.38600.39500.41000.42000.69200.1226600 | Waterproofing | 13.5d | 2027-01-13 | 2027-01-24 | 2595 |  | GC1 | 8841334 |
| 2597 | 37100.37400.37600.38600.39500.41000.42000.69200.1226700 | Internal Plaster | 10.12d | 2027-02-05 | 2027-02-13 | 2581, 2594, 2595, 2596 |  | GC1 | 8841344 |
| 2598 | 37100.37400.37600.38600.39500.41000.42000.69200.1226800 | IPS flooring work | 10.12d | 2027-02-14 | 2027-02-22 | 2582, 2594, 2596, 2597 |  | GC1 | 8841354 |
| 2599 | 37100.37400.37600.38600.39500.41000.42000.69200.1226900 | Toilet dado work | 9d | 2027-02-14 | 2027-02-21 | 2583, 2596, 2597 |  | GC1 | 8841364 |
| 2600 | 37100.37400.37600.38600.39500.41000.42000.69200.1227000 | Toilet flooring work | 7.88d | 2027-02-22 | 2027-02-28 | 2584, 2599 |  | GC1 | 8841374 |
| 2601 | 37100.37400.37600.38600.39500.41000.42000.69200.1227100 | Living dinning flooring | 16.88d | 2027-04-02 | 2027-04-16 | 2585, 2594, 2600 |  | GC1 | 8841384 |
| 2602 | 37100.37400.37600.38600.39500.41000.42000.69200.1227200 | Aluminium door-window fixing | 13.5d | 2027-04-17 | 2027-04-28 | 2586, 2598, 2601 |  | GC1 | 8841394 |
| 2603 | 37100.37400.37600.38600.39500.41000.42000.69200.1227300 | Putty primer coat | 6.75d | 2027-04-17 | 2027-04-22 | 2587, 2601 |  | GC1 | 8841404 |
| 2604 | 37100.37400.37600.38600.39500.41000.42000.69200.1227400 | Door shutter fixing | 9d | 2027-04-17 | 2027-04-24 | 2588, 2601 |  | GC1 | 8841414 |
| 2605 | 37100.37400.37600.38600.39500.41000.42000.69200.1227500 | Electrical wiring work | 16.88d | 2027-04-25 | 2027-05-09 | 2589, 2604 |  | GC1 | 8841424 |
| 2606 | 37100.37400.37600.38600.39500.41000.42000.69200.1227600 | Painting 1st coat | 16.88d | 2027-05-10 | 2027-05-24 | 2590, 2603, 2604, 2605 |  | GC1 | 8841434 |
| 2607 | 37100.37400.37600.38600.39500.41000.42000.69200.1227700 | False ceiling | 11.25d | 2027-05-25 | 2027-06-03 | 2591, 2606 |  | GC1 | 8841444 |

| ID | WBS | Task | Duration | Start | Finish | Predecessors | Constraint | Calendar | Unique_Task_ID |
| --- | --- | --- | --- | --- | --- | --- | --- | --- | --- |
| 2608 | 37100.37400.37600.38600.39500.41000.42000.69300 | **33rd Floor** | 186.75d | 2027-01-01 | 2027-06-15 |  | start no earlier than 2027-01-01 | GC1 | 8807214 |
| 2609 | 37100.37400.37600.38600.39500.41000.42000.69300.1227800 | Block Work | 9d | 2027-01-01 | 2027-01-08 | 2091, 2593 |  | GC1 | 8841454 |
| 2610 | 37100.37400.37600.38600.39500.41000.42000.69300.1227900 | Door Frame Fixing | 10.12d | 2027-01-11 | 2027-01-19 | 2594, 2609 |  | GC1 | 8841464 |
| 2611 | 37100.37400.37600.38600.39500.41000.42000.69300.1228000 | Internal Plumbing Works | 11.25d | 2027-01-13 | 2027-01-22 | 2595, 2609 |  | GC1 | 8841474 |
| 2612 | 37100.37400.37600.38600.39500.41000.42000.69300.1228100 | Waterproofing | 11.25d | 2027-01-25 | 2027-02-03 | 2596, 2611 |  | GC1 | 8841484 |
| 2613 | 37100.37400.37600.38600.39500.41000.42000.69300.1228200 | Internal Plaster | 9d | 2027-02-14 | 2027-02-21 | 2597, 2610, 2611, 2612 |  | GC1 | 8841494 |
| 2614 | 37100.37400.37600.38600.39500.41000.42000.69300.1228300 | IPS flooring work | 10.12d | 2027-02-23 | 2027-03-03 | 2598, 2610, 2612, 2613 |  | GC1 | 8841504 |
| 2615 | 37100.37400.37600.38600.39500.41000.42000.69300.1228400 | Toilet dado work | 9d | 2027-02-22 | 2027-03-01 | 2599, 2612, 2613 |  | GC1 | 8841514 |
| 2616 | 37100.37400.37600.38600.39500.41000.42000.69300.1228500 | Toilet flooring work | 7.88d | 2027-03-02 | 2027-03-08 | 2600, 2615 |  | GC1 | 8841524 |
| 2617 | 37100.37400.37600.38600.39500.41000.42000.69300.1228600 | Living dinning flooring | 16.88d | 2027-04-17 | 2027-05-01 | 2601, 2610, 2616 |  | GC1 | 8841534 |
| 2618 | 37100.37400.37600.38600.39500.41000.42000.69300.1228700 | Aluminium door-window fixing | 16.88d | 2027-05-02 | 2027-05-16 | 2602, 2614, 2617 |  | GC1 | 8841544 |
| 2619 | 37100.37400.37600.38600.39500.41000.42000.69300.1228800 | Putty primer coat | 6.75d | 2027-05-02 | 2027-05-07 | 2603, 2617 |  | GC1 | 8841554 |
| 2620 | 37100.37400.37600.38600.39500.41000.42000.69300.1228900 | Door shutter fixing | 9d | 2027-05-02 | 2027-05-09 | 2604, 2617 |  | GC1 | 8841564 |
| 2621 | 37100.37400.37600.38600.39500.41000.42000.69300.1229000 | Electrical wiring work | 13.5d | 2027-05-10 | 2027-05-21 | 2605, 2620 |  | GC1 | 8841574 |
| 2622 | 37100.37400.37600.38600.39500.41000.42000.69300.1229100 | Painting 1st coat | 13.5d | 2027-05-25 | 2027-06-05 | 2606, 2619, 2620, 2621 |  | GC1 | 8841584 |
| 2623 | 37100.37400.37600.38600.39500.41000.42000.69300.1229200 | False ceiling | 11.25d | 2027-06-06 | 2027-06-15 | 2607, 2622 |  | GC1 | 8841594 |
| 2624 | 37100.37400.37600.38600.39500.41000.42000.69400 | **34th Floor** | 191.25d | 2027-01-09 | 2027-06-27 |  | start no earlier than 2027-01-09 | GC1 | 8807224 |
| 2625 | 37100.37400.37600.38600.39500.41000.42000.69400.1229300 | Block Work | 9d | 2027-01-09 | 2027-01-16 | 2092, 2609 |  | GC1 | 8841604 |
| 2626 | 37100.37400.37600.38600.39500.41000.42000.69400.1229400 | Door Frame Fixing | 10.12d | 2027-01-20 | 2027-01-28 | 2610, 2625 |  | GC1 | 8841614 |
| 2627 | 37100.37400.37600.38600.39500.41000.42000.69400.1229500 | Internal Plumbing Works | 11.25d | 2027-01-23 | 2027-02-01 | 2611, 2625 |  | GC1 | 8841624 |
| 2628 | 37100.37400.37600.38600.39500.41000.42000.69400.1229600 | Waterproofing | 11.25d | 2027-02-04 | 2027-02-13 | 2612, 2627 |  | GC1 | 8841634 |
| 2629 | 37100.37400.37600.38600.39500.41000.42000.69400.1229700 | Internal Plaster | 9d | 2027-02-22 | 2027-03-01 | 2613, 2626, 2627, 2628 |  | GC1 | 8841644 |
| 2630 | 37100.37400.37600.38600.39500.41000.42000.69400.1229800 | IPS flooring work | 10.12d | 2027-03-04 | 2027-03-12 | 2614, 2626, 2628, 2629 |  | GC1 | 8841654 |
| 2631 | 37100.37400.37600.38600.39500.41000.42000.69400.1229900 | Toilet dado work | 9d | 2027-03-02 | 2027-03-09 | 2615, 2628, 2629 |  | GC1 | 8841664 |
| 2632 | 37100.37400.37600.38600.39500.41000.42000.69400.1230000 | Toilet flooring work | 7.88d | 2027-03-10 | 2027-03-16 | 2616, 2631 |  | GC1 | 8841674 |
| 2633 | 37100.37400.37600.38600.39500.41000.42000.69400.1230100 | Living dinning flooring | 16.88d | 2027-05-02 | 2027-05-16 | 2617, 2626, 2632 |  | GC1 | 8841684 |
| 2634 | 37100.37400.37600.38600.39500.41000.42000.69400.1230200 | Aluminium door-window fixing | 16.88d | 2027-05-17 | 2027-05-31 | 2618, 2630, 2633 |  | GC1 | 8841694 |
| 2635 | 37100.37400.37600.38600.39500.41000.42000.69400.1230300 | Putty primer coat | 6.75d | 2027-05-17 | 2027-05-22 | 2619, 2633 |  | GC1 | 8841704 |
| 2636 | 37100.37400.37600.38600.39500.41000.42000.69400.1230400 | Door shutter fixing | 9d | 2027-05-17 | 2027-05-24 | 2620, 2633 |  | GC1 | 8841714 |
| 2637 | 37100.37400.37600.38600.39500.41000.42000.69400.1230500 | Electrical wiring work | 13.5d | 2027-05-25 | 2027-06-05 | 2621, 2636 |  | GC1 | 8841724 |
| 2638 | 37100.37400.37600.38600.39500.41000.42000.69400.1230600 | Painting 1st coat | 13.5d | 2027-06-06 | 2027-06-17 | 2622, 2635, 2636, 2637 |  | GC1 | 8841734 |
| 2639 | 37100.37400.37600.38600.39500.41000.42000.69400.1230700 | False ceiling | 11.25d | 2027-06-18 | 2027-06-27 | 2623, 2638 |  | GC1 | 8841744 |

| ID | WBS | Task | Duration | Start | Finish | Predecessors | Constraint | Calendar | Unique_Task_ID |
| --- | --- | --- | --- | --- | --- | --- | --- | --- | --- |
| 2640 | 37100.37400.37600.38600.39500.41000.42000.69500 | **35th Floor** | 199.12d | 2027-01-17 | 2027-07-12 |  | start no earlier than 2027-01-17 | GC1 | 8807234 |
| 2641 | 37100.37400.37600.38600.39500.41000.42000.69500.1230800 | Block Work | 9d | 2027-01-17 | 2027-01-24 | 2093, 2625 |  | GC1 | 8841754 |
| 2642 | 37100.37400.37600.38600.39500.41000.42000.69500.1230900 | Door Frame Fixing | 10.12d | 2027-01-29 | 2027-02-06 | 2626, 2641 |  | GC1 | 8841764 |
| 2643 | 37100.37400.37600.38600.39500.41000.42000.69500.1231000 | Internal Plumbing Works | 10.12d | 2027-02-02 | 2027-02-10 | 2627, 2641 |  | GC1 | 8841774 |
| 2644 | 37100.37400.37600.38600.39500.41000.42000.69500.1231100 | Waterproofing | 11.25d | 2027-02-14 | 2027-02-23 | 2628, 2643 |  | GC1 | 8841784 |
| 2645 | 37100.37400.37600.38600.39500.41000.42000.69500.1231200 | Internal Plaster | 9d | 2027-02-24 | 2027-03-03 | 2642, 2643, 2644 |  | GC1 | 8841794 |
| 2646 | 37100.37400.37600.38600.39500.41000.42000.69500.1231300 | IPS flooring work | 10.12d | 2027-03-13 | 2027-03-21 | 2630, 2642, 2644, 2645 |  | GC1 | 8841804 |
| 2647 | 37100.37400.37600.38600.39500.41000.42000.69500.1231400 | Toilet dado work | 9d | 2027-03-10 | 2027-03-17 | 2631, 2644, 2645 |  | GC1 | 8841814 |
| 2648 | 37100.37400.37600.38600.39500.41000.42000.69500.1231500 | Toilet flooring work | 7.88d | 2027-03-18 | 2027-03-24 | 2632, 2647 |  | GC1 | 8841824 |
| 2649 | 37100.37400.37600.38600.39500.41000.42000.69500.1231600 | Living dinning flooring | 16.88d | 2027-05-17 | 2027-05-31 | 2633, 2642, 2648 |  | GC1 | 8841834 |
| 2650 | 37100.37400.37600.38600.39500.41000.42000.69500.1231700 | Aluminium door-window fixing | 16.88d | 2027-06-01 | 2027-06-15 | 2634, 2646, 2649 |  | GC1 | 8841844 |
| 2651 | 37100.37400.37600.38600.39500.41000.42000.69500.1231800 | Putty primer coat | 6.75d | 2027-06-01 | 2027-06-06 | 2635, 2649 |  | GC1 | 8841854 |
| 2652 | 37100.37400.37600.38600.39500.41000.42000.69500.1231900 | Door shutter fixing | 9d | 2027-06-01 | 2027-06-08 | 2636, 2649 |  | GC1 | 8841864 |
| 2653 | 37100.37400.37600.38600.39500.41000.42000.69500.1232000 | Electrical wiring work | 13.5d | 2027-06-09 | 2027-06-20 | 2637, 2652 |  | GC1 | 8841874 |
| 2654 | 37100.37400.37600.38600.39500.41000.42000.69500.1232100 | Painting 1st coat | 13.5d | 2027-06-21 | 2027-07-02 | 2638, 2651, 2652, 2653 |  | GC1 | 8841884 |
| 2655 | 37100.37400.37600.38600.39500.41000.42000.69500.1232200 | False ceiling | 11.25d | 2027-07-03 | 2027-07-12 | 2639, 2654 |  | GC1 | 8841894 |
| 2656 | 37100.37400.37600.38600.39500.41000.190500 | **Terrace Finishing** | 90d | 2026-09-30 | 2027-02-01 |  | start no earlier than 2026-09-30 | GC1 | 8810734 |
| 2657 | 37100.37400.37600.38600.39500.41000.190500.533700 | Terrace waterproofing | 45d | 2026-09-30 | 2026-12-23 | 2050 |  | GC1 | 8821514 |
| 2658 | 37100.37400.37600.38600.39500.41000.190500.533800 | Terrace finishing | 45d | 2026-12-24 | 2027-02-01 | 2657 |  | GC1 | 8821524 |
| 2659 | 37100.37400.37600.38600.39500.41000.99000 | **Common Area Finishing** | 331.88d | 2026-12-24 | 2027-10-14 |  | start no earlier than 2026-12-24 | GC1 | 8808054 |
| 2660 | 37100.37400.37600.38600.39500.41000.99000.533900 | Block Work | 45d | 2026-12-24 | 2027-02-01 | 2055 |  | GC1 | 8821534 |
| 2661 | 37100.37400.37600.38600.39500.41000.99000.534000 | Internal Plaster | 135d | 2027-02-02 | 2027-06-01 | 2666SS+22.5d |  | GC1 | 8821544 |
| 2662 | 37100.37400.37600.38600.39500.41000.99000.534100 | Staircase railing fixing | 168.75d | 2027-05-18 | 2027-10-14 | 2664SS+33.75d, 2663SS+33.75d |  | GC1 | 8821554 |
| 2663 | 37100.37400.37600.38600.39500.41000.99000.534200 | Main staircase flooring | 168.75d | 2027-04-18 | 2027-09-14 | 2664SS+16.88d |  | GC1 | 8821564 |
| 2664 | 37100.37400.37600.38600.39500.41000.99000.534300 | Fire staircase flooring | 168.75d | 2027-04-03 | 2027-08-30 | 2661SS+16.88d, 2668SS+33.75d |  | GC1 | 8821574 |
| 2665 | 37100.37400.37600.38600.39500.41000.99000.534400 | Fire door work | 67.5d | 2027-05-18 | 2027-07-16 | 2663SS+33.75d, 2664SS+33.75d |  | GC1 | 8821584 |
| 2666 | 37100.37400.37600.38600.39500.41000.99000.534500 | Electrical wiring work | 135d | 2027-01-13 | 2027-05-12 | 2660SS+22.5d |  | GC1 | 8821594 |
| 2667 | 37100.37400.37600.38600.39500.41000.99000.534600 | Lobby flooring | 168.75d | 2027-01-16 | 2027-06-15 | 2666SS+4.12d |  | GC1 | 8821604 |
| 2668 | 37100.37400.37600.38600.39500.41000.99000.534700 | Ceiling & wall putty-primer | 123.75d | 2027-03-04 | 2027-06-21 | 2661SS+33.75d |  | GC1 | 8821614 |
| 2669 | 37100.37400.37600.38600.39500.41000.99000.534800 | Ceiling & wall painting | 112.5d | 2027-03-24 | 2027-07-01 | 2668SS+22.5d |  | GC1 | 8821624 |
| 2670 | 37100.37400.37600.38600.39500.41000.99000.534900 | Light fixture supply & installation | 50.62d | 2027-05-23 | 2027-07-06 | 2669SS+67.5d |  | GC1 | 8821634 |

| ID | WBS | Task | Duration | Start | Finish | Predecessors | Constraint | Calendar | Unique_Task_ID |
| --- | --- | --- | --- | --- | --- | --- | --- | --- | --- |
| 2671 | 37100.37400.37600.38600.39500.41000.46000 | **Balcony Glass Railing** | 78.75d | 2027-07-18 | 2027-09-25 |  | start no earlier than 2027-07-18 | GC1 | 8806154 |
| 2672 | 37100.37400.37600.38600.39500.41000.46000.535000 | 1st Floor | 2.25d | 2027-07-18 | 2027-07-19 | 2740 |  | GC1 | 8821644 |
| 2673 | 37100.37400.37600.38600.39500.41000.46000.535100 | 2nd Floor | 2.25d | 2027-07-20 | 2027-07-21 | 2672 |  | GC1 | 8821654 |
| 2674 | 37100.37400.37600.38600.39500.41000.46000.535200 | 3rd Floor | 2.25d | 2027-07-22 | 2027-07-23 | 2673 |  | GC1 | 8821664 |
| 2675 | 37100.37400.37600.38600.39500.41000.46000.535300 | 4th Floor | 2.25d | 2027-07-24 | 2027-07-25 | 2674 |  | GC1 | 8821674 |
| 2676 | 37100.37400.37600.38600.39500.41000.46000.535400 | 5th Floor | 2.25d | 2027-07-26 | 2027-07-27 | 2675 |  | GC1 | 8821684 |
| 2677 | 37100.37400.37600.38600.39500.41000.46000.535500 | 6th Floor | 2.25d | 2027-07-28 | 2027-07-29 | 2676 |  | GC1 | 8821694 |
| 2678 | 37100.37400.37600.38600.39500.41000.46000.535600 | 7th Floor | 2.25d | 2027-07-30 | 2027-07-31 | 2677 |  | GC1 | 8821704 |
| 2679 | 37100.37400.37600.38600.39500.41000.46000.535700 | 8th Floor | 2.25d | 2027-08-01 | 2027-08-02 | 2678 |  | GC1 | 8821714 |
| 2680 | 37100.37400.37600.38600.39500.41000.46000.535800 | 9th Floor | 2.25d | 2027-08-03 | 2027-08-04 | 2679 |  | GC1 | 8821724 |
| 2681 | 37100.37400.37600.38600.39500.41000.46000.535900 | 10th Floor | 2.25d | 2027-08-05 | 2027-08-06 | 2680 |  | GC1 | 8821734 |
| 2682 | 37100.37400.37600.38600.39500.41000.46000.536000 | 11th Floor | 2.25d | 2027-08-07 | 2027-08-08 | 2681 |  | GC1 | 8821744 |
| 2683 | 37100.37400.37600.38600.39500.41000.46000.536100 | 12th Floor | 2.25d | 2027-08-09 | 2027-08-10 | 2682 |  | GC1 | 8821754 |
| 2684 | 37100.37400.37600.38600.39500.41000.46000.536200 | 13th Floor | 2.25d | 2027-08-11 | 2027-08-12 | 2683 |  | GC1 | 8821764 |
| 2685 | 37100.37400.37600.38600.39500.41000.46000.536300 | 14th Floor | 2.25d | 2027-08-13 | 2027-08-14 | 2684 |  | GC1 | 8821774 |
| 2686 | 37100.37400.37600.38600.39500.41000.46000.536400 | 15th Floor | 2.25d | 2027-08-15 | 2027-08-16 | 2685 |  | GC1 | 8821784 |
| 2687 | 37100.37400.37600.38600.39500.41000.46000.536500 | 16th Floor | 2.25d | 2027-08-17 | 2027-08-18 | 2686 |  | GC1 | 8821794 |
| 2688 | 37100.37400.37600.38600.39500.41000.46000.536600 | 17th Floor | 2.25d | 2027-08-19 | 2027-08-20 | 2687 |  | GC1 | 8821804 |
| 2689 | 37100.37400.37600.38600.39500.41000.46000.536700 | 18th Floor | 2.25d | 2027-08-21 | 2027-08-22 | 2688 |  | GC1 | 8821814 |
| 2690 | 37100.37400.37600.38600.39500.41000.46000.536800 | 19th Floor | 2.25d | 2027-08-23 | 2027-08-24 | 2689 |  | GC1 | 8821824 |
| 2691 | 37100.37400.37600.38600.39500.41000.46000.536900 | 20th Floor | 2.25d | 2027-08-25 | 2027-08-26 | 2690 |  | GC1 | 8821834 |
| 2692 | 37100.37400.37600.38600.39500.41000.46000.537000 | 21st Floor | 2.25d | 2027-08-27 | 2027-08-28 | 2691 |  | GC1 | 8821844 |
| 2693 | 37100.37400.37600.38600.39500.41000.46000.537100 | 22nd Floor | 2.25d | 2027-08-29 | 2027-08-30 | 2692 |  | GC1 | 8821854 |
| 2694 | 37100.37400.37600.38600.39500.41000.46000.537200 | 23rd Floor | 2.25d | 2027-08-31 | 2027-09-01 | 2693 |  | GC1 | 8821864 |
| 2695 | 37100.37400.37600.38600.39500.41000.46000.537300 | 24th Floor | 2.25d | 2027-09-02 | 2027-09-03 | 2694 |  | GC1 | 8821874 |
| 2696 | 37100.37400.37600.38600.39500.41000.46000.537400 | 25th Floor | 2.25d | 2027-09-04 | 2027-09-05 | 2695 |  | GC1 | 8821884 |
| 2697 | 37100.37400.37600.38600.39500.41000.46000.537500 | 26th Floor | 2.25d | 2027-09-06 | 2027-09-07 | 2696 |  | GC1 | 8821894 |
| 2698 | 37100.37400.37600.38600.39500.41000.46000.537600 | 27th Floor | 2.25d | 2027-09-08 | 2027-09-09 | 2697 |  | GC1 | 8821904 |
| 2699 | 37100.37400.37600.38600.39500.41000.46000.537700 | 28th Floor | 2.25d | 2027-09-10 | 2027-09-11 | 2698 |  | GC1 | 8821914 |
| 2700 | 37100.37400.37600.38600.39500.41000.46000.537800 | 29th Floor | 2.25d | 2027-09-12 | 2027-09-13 | 2699 |  | GC1 | 8821924 |
| 2701 | 37100.37400.37600.38600.39500.41000.46000.537900 | 30th Floor | 2.25d | 2027-09-14 | 2027-09-15 | 2700 |  | GC1 | 8821934 |
| 2702 | 37100.37400.37600.38600.39500.41000.46000.538000 | 31st Floor | 2.25d | 2027-09-16 | 2027-09-17 | 2701 |  | GC1 | 8821944 |
| 2703 | 37100.37400.37600.38600.39500.41000.46000.538100 | 32nd Floor | 2.25d | 2027-09-18 | 2027-09-19 | 2702 |  | GC1 | 8821954 |
| 2704 | 37100.37400.37600.38600.39500.41000.46000.538200 | 33rd Floor | 2.25d | 2027-09-20 | 2027-09-21 | 2703 |  | GC1 | 8821964 |
| 2705 | 37100.37400.37600.38600.39500.41000.46000.538300 | 34th Floor | 2.25d | 2027-09-22 | 2027-09-23 | 2704 |  | GC1 | 8821974 |
| 2706 | 37100.37400.37600.38600.39500.41000.46000.538400 | 35th Floor | 2.25d | 2027-09-24 | 2027-09-25 | 2705 |  | GC1 | 8821984 |

| ID | WBS | Task | Duration | Start | Finish | Predecessors | Constraint | Calendar | Unique_Task_ID |
| --- | --- | --- | --- | --- | --- | --- | --- | --- | --- |
| 2707 | 37100.37400.37600.38600.95800 | **MEP work** | 497.25d | 2026-12-24 | 2028-04-23 |  | start no earlier than 2026-12-24 | GC1 | 8807964 |
| 2708 | 37100.37400.37600.38600.95800.97900 | **Electrical work** | 270d | 2026-12-24 | 2027-08-20 |  | start no earlier than 2026-12-24 | GC1 | 8808034 |
| 2709 | 37100.37400.37600.38600.95800.97900.316000 | Cable Tray | 101.25d | 2026-12-24 | 2027-03-23 | 2055 |  | GC1 | 8813844 |
| 2710 | 37100.37400.37600.38600.95800.97900.316100 | Cable, main & sub main | 90d | 2027-02-07 | 2027-04-27 | 2709SS+50.62d |  | GC1 | 8813854 |
| 2711 | 37100.37400.37600.38600.95800.97900.316200 | LT panel & DB | 135d | 2027-03-24 | 2027-07-21 | 2709 |  | GC1 | 8813864 |
| 2712 | 37100.37400.37600.38600.95800.97900.316300 | Rising main | 101.25d | 2027-05-23 | 2027-08-20 | 2709FS+67.5d |  | GC1 | 8813874 |
| 2713 | 37100.37400.37600.38600.95800.97900.316400 | EARTHING Works | 67.5d | 2027-04-08 | 2027-06-06 | 2709FS+16.88d |  | GC1 | 8813884 |
| 2714 | 37100.37400.37600.38600.95800.97900.316500 | Advance lightening protection | 67.5d | 2027-02-02 | 2027-04-02 | 2658 |  | GC1 | 8813894 |
| 2715 | 37100.37400.37600.38600.95800.97900.316600 | Inverter | 39.38d | 2027-06-07 | 2027-07-11 | 2713 |  | GC1 | 8813904 |
| 2716 | 37100.37400.37600.38600.95800.97900.316700 | Energy meter | 67.5d | 2027-04-28 | 2027-06-26 | 2710 |  | GC1 | 8813914 |
| 2717 | 37100.37400.37600.38600.95800.97900.316800 | Exhast fan | 67.5d | 2027-04-22 | 2027-06-20 | 2650FF+5.62d |  | GC1 | 8813924 |
| 2718 | 37100.37400.37600.38600.95800.97900.316900 | FTTH | 67.5d | 2027-05-28 | 2027-07-26 | 2713FS-11.25d |  | GC1 | 8813934 |
| 2719 | 37100.37400.37600.38600.95800.97900.317000 | Security System - FA & PA | 61.88d | 2027-06-02 | 2027-07-26 | 2718FF |  | GC1 | 8813944 |
| 2720 | 37100.37400.37600.38600.95800.97900.317100 | Solar water heater | 67.5d | 2027-02-02 | 2027-04-02 | 2658 |  | GC1 | 8813954 |
| 2721 | 37100.37400.37600.38600.95800.122900 | **Plumbing wrok** | 270d | 2026-12-24 | 2027-08-20 |  | start no earlier than 2026-12-24 | GC1 | 8808404 |
| 2722 | 37100.37400.37600.38600.95800.122900.317200 | Terrace looping | 50.62d | 2026-12-24 | 2027-02-06 | 2657 |  | GC1 | 8813964 |
| 2723 | 37100.37400.37600.38600.95800.122900.317300 | Shaft Plumbing | 135d | 2027-02-07 | 2027-06-06 | 2722 |  | GC1 | 8813974 |
| 2724 | 37100.37400.37600.38600.95800.122900.317400 | CP sanitary fixture supply | 84.38d | 2027-05-24 | 2027-08-06 | 2645, 2648FS+67.5d |  | GC1 | 8813984 |
| 2725 | 37100.37400.37600.38600.95800.122900.317500 | Cold & flushing water supply | 101.25d | 2027-05-03 | 2027-07-31 | 2661SS+101.25d |  | GC1 | 8813994 |
| 2726 | 37100.37400.37600.38600.95800.122900.317600 | Misc work | 33.75d | 2027-07-22 | 2027-08-20 | 2725FS-11.25d |  | GC1 | 8814004 |
| 2727 | 37100.37400.37600.38600.95800.129900 | **Fire fighting work** | 348.75d | 2026-12-24 | 2027-10-29 |  | start no earlier than 2026-12-24 | GC1 | 8808524 |
| 2728 | 37100.37400.37600.38600.95800.129900.317700 | Fire hydrant work | 101.25d | 2027-04-03 | 2027-07-01 | 2661SS+67.5d |  | GC1 | 8814014 |
| 2729 | 37100.37400.37600.38600.95800.129900.317800 | Sprinkler & piping work | 101.25d | 2027-08-01 | 2027-10-29 | 2728FS+33.75d |  | GC1 | 8814024 |
| 2730 | 37100.37400.37600.38600.95800.129900.317900 | Shaft Downtake works | 101.25d | 2026-12-24 | 2027-03-23 | 2657 |  | GC1 | 8814034 |
| 2731 | 37100.37400.37600.38600.95800.129900.318000 | Connection to pump room | 33.75d | 2027-03-24 | 2027-04-22 | 2730 |  | GC1 | 8814044 |

| ID | WBS | Task | Duration | Start | Finish | Predecessors | Complete | Constraint | Calendar | Unique_Task_ID |
| --- | --- | --- | --- | --- | --- | --- | --- | --- | --- | --- |
| 2732 | 37100.37400.37600.38600.95800.184500 | **Lift work** | 191.25d | 2026-12-24 | 2027-06-11 |  |  | start no earlier than 2026-12-24 | GC1 | 8810684 |
| 2733 | 37100.37400.37600.38600.95800.184500.318100 | Lift Shaft Handover | 45d | 2026-12-24 | 2027-02-01 | 2055 |  |  | GC1 | 8814054 |
| 2734 | 37100.37400.37600.38600.95800.184500.318200 | Lift installation work | 50.62d | 2027-02-02 | 2027-03-18 | 2733 |  |  | GC1 | 8814064 |
| 2735 | 37100.37400.37600.38600.95800.184500.318300 | Lift testing and commissioning | 95.62d | 2027-03-19 | 2027-06-11 | 2734 |  |  | GC1 | 8814074 |
| 2736 | 37100.37400.37600.38600.95800.194600 | **AC work** | 112.5d | 2028-01-15 | 2028-04-23 |  |  | start no earlier than 2028-01-15 | GC1 | 8810844 |
| 2737 | 37100.37400.37600.38600.95800.194600.318400 | Split AC | 112.5d | 2028-01-15 | 2028-04-23 | 2753FS-33.75d |  |  | GC1 | 8814084 |
| 2738 | 37100.37400.37600.38600.126600 | **Tower Completion** | 303.75d | 2027-01-19 | 2027-10-15 |  |  | start no earlier than 2027-01-19 | GC1 | 8808444 |
| 2739 | 37100.37400.37600.38600.126600.232400 | SURFACE PREPARATION | 90d | 2027-01-19 | 2027-04-08 | 2093FS+2.25d |  |  | GC1 | 8811424 |
| 2740 | 37100.37400.37600.38600.126600.232500 | External Painting | 112.5d | 2027-04-09 | 2027-07-17 | 2739 |  |  | GC1 | 8811434 |
| 2741 | 37100.37400.37600.38600.126600.232600 | Final coat of painting | 101.25d | 2027-07-18 | 2027-10-15 | 2740 |  |  | GC1 | 8811444 |
| 2742 | 37100.37400.37600.38600.126600.232700 | Misc. work | 67.5d | 2027-07-18 | 2027-09-15 | 2740 |  |  | GC1 | 8811454 |
| 2743 | 37100.37400.37600.38600.192400 | **Basement lobby** | 67.5d | 2027-06-15 | 2027-08-14 |  |  | start no earlier than 2027-06-15 | GC1 | 8810894 |
| 2744 | 37100.37400.37600.38600.192400.232800 | Basement lobby | 67.5d | 2027-06-15 | 2027-08-14 | 2667 |  |  | GC1 | 8811464 |
| 2745 | 37100.37400.37600.38600.110000 | **Post OC activities** | 385.88d | 2027-06-21 | 2028-07-12 |  |  | start no earlier than 2027-06-21 | GC1 | 8808254 |
| 2746 | 37100.37400.37600.38600.110000.232900 | Wardrobe installation | 202.5d | 2028-01-15 | 2028-07-12 | 2753FS-33.75d |  |  | GC1 | 8811474 |
| 2747 | 37100.37400.37600.38600.110000.233000 | CP & SANITARYWARE | 135d | 2028-01-15 | 2028-05-13 | 2753FS-33.75d, 2724 |  |  | GC1 | 8811484 |
| 2748 | 37100.37400.37600.38600.110000.233100 | Wooden Flooring | 202.5d | 2028-01-15 | 2028-07-12 | 2753FS-33.75d |  |  | GC1 | 8811494 |
| 2749 | 37100.37400.37600.38600.110000.233200 | Electrical Fixtures And Fittings | 135d | 2027-06-21 | 2027-10-18 | 2653 |  |  | GC1 | 8811504 |
| 2750 | 37100.37400.37600.38600.110000.233300 | Modular Kitchen | 202.5d | 2028-01-15 | 2028-07-12 | 2746SS |  |  | GC1 | 8811514 |
| 2751 | 37100.37400.37600.38600.110000.233400 | Final Coat Paint | 101.25d | 2028-01-30 | 2028-04-28 | 2753FS-16.88d, 2670 |  |  | GC1 | 8811524 |
| 2752 | 37100.37400.37600.38600.218300 | OC Application/Readiness | 1.12d | 2027-10-30 | 2027-10-30 | 2055, 2662FS+9d, 1867, 1868, 2053, 2655, 2706, 2711, 2712, 2714, 2715, 2716, 2717, 2719, 2720, 2723, 2726, 2731, 2729, 2735, 2741, 2742, 2744 |  |  | GC1 | 8811014 |
| 2753 | 37100.37400.37600.38600.218400 | OC Receipt | 1.12d | 2028-02-13 | 2028-02-13 | 2752FS+67.5d |  |  | GC1 | 8811024 |
| 2754 | 37100.37400.37600.38600.218500 | Offer To Possession | 33.75d | 2028-07-13 | 2028-08-11 | 2746, 2747, 2748, 2749, 2750, 2751, 2737 |  |  | GC1 | 8811034 |
| 2755 | 37100.37400.37600.38700 | **Tower 2** | 1692.44d | 2024-05-14 | 2028-11-08 |  | 2% | start no earlier than 2024-05-14 | GC1 | 8805864 |
| 2756 | 37100.37400.37600.38700.100600 | **Substructure** | 665.31d | 2024-05-14 | 2026-02-09 |  | 39% | start no earlier than 2024-05-14 | GC1 | 8808124 |
| 2757 | 37100.37400.37600.38700.100600.116700 | **Soil Bed Preparation** | 524.69d | 2024-05-14 | 2025-08-23 |  | 79% | start no earlier than 2024-05-14 | GC1 | 8808314 |
| 2758 | 37100.37400.37600.38700.100600.116700.208100 | Test Piling | 104.44d | 2024-05-14 | 2024-08-14 | 7SS | 100% | start no earlier than 2024-05-14 | GC1 | 8814094 |
| 2759 | 37100.37400.37600.38700.100600.116700.208200 | Excavation | 33.56d | 2024-06-26 | 2024-07-25 | 2758SS+43d | 100% | start no earlier than 2024-06-26 | GC1 | 8814104 |
| 2760 | 37100.37400.37600.38700.100600.116700.208300 | Main Piling Work | 185.62d | 2024-09-04 | 2025-04-05 | 2758FS+20d | 97% | start no earlier than 2024-09-04 | GC1 | 8814114 |
| 2761 | 37100.37400.37600.38700.100600.116700.318500 | Anti-termite | 5.62d | 2025-04-02 | 2025-04-07 | 2760FF+2d, 2759 |  |  | GC1 | 8814124 |
| 2762 | 37100.37400.37600.38700.100600.116700.318600 | PCC | 5.62d | 2025-04-04 | 2025-04-09 | 2761SS+2.25d |  |  | GC1 | 8814134 |
| 2763 | 37100.37400.37600.38700.100600.116700.318700 | Backfilling | 67.5d | 2025-06-24 | 2025-08-23 | 2776 |  |  | GC1 | 8814144 |

| ID | WBS | Task | Duration | Start | Finish | Predecessors | Constraint | Calendar | Unique_Task_ID |
| --- | --- | --- | --- | --- | --- | --- | --- | --- | --- |
| 2764 | 37100.37400.37600.38700.100600.104500 | **RCC Structure** | 113.62d | 2025-04-09 | 2025-07-19 |  | start no earlier than 2025-04-09 | GC1 | 8808164 |
| 2765 | 37100.37400.37600.38700.100600.104500.182300 | **Raft Foundation** | 29.25d | 2025-04-09 | 2025-05-05 |  | start no earlier than 2025-04-09 | GC1 | 8810584 |
| 2766 | 37100.37400.37600.38700.100600.104500.182300.538500 | Reinforcement | 19.12d | 2025-04-09 | 2025-04-26 | 2762 |  | GC1 | 8821994 |
| 2767 | 37100.37400.37600.38700.100600.104500.182300.538600 | Formwork | 13.5d | 2025-04-21 | 2025-05-03 | 2766FF+7.88d |  | GC1 | 8822004 |
| 2768 | 37100.37400.37600.38700.100600.104500.182300.538700 | Concreting | 2.25d | 2025-05-03 | 2025-05-05 | 2767 |  | GC1 | 8822014 |
| 2769 | 37100.37400.37600.38700.100600.104500.182200 | **Basement 1 Slab** | 28.12d | 2025-05-05 | 2025-05-30 |  | start no earlier than 2025-05-05 | GC1 | 8810594 |
| 2770 | 37100.37400.37600.38700.100600.104500.182200.538800 | Reinforcement | 22.5d | 2025-05-05 | 2025-05-25 | 2768 |  | GC1 | 8822024 |
| 2771 | 37100.37400.37600.38700.100600.104500.182200.538900 | Formwork | 22.5d | 2025-05-06 | 2025-05-26 | 2770SS+1.12d |  | GC1 | 8822034 |
| 2772 | 37100.37400.37600.38700.100600.104500.182200.539000 | Concreting | 4.5d | 2025-05-26 | 2025-05-30 | 2771 |  | GC1 | 8822044 |
| 2773 | 37100.37400.37600.38700.100600.104500.182100 | **Basement 2 Slab/GF** | 28.12d | 2025-05-30 | 2025-06-24 |  | start no earlier than 2025-05-30 | GC1 | 8810604 |
| 2774 | 37100.37400.37600.38700.100600.104500.182100.539100 | Reinforcement | 22.5d | 2025-05-30 | 2025-06-19 | 2772 |  | GC1 | 8822054 |
| 2775 | 37100.37400.37600.38700.100600.104500.182100.539200 | Formwork | 22.5d | 2025-05-31 | 2025-06-20 | 2774SS+1.12d |  | GC1 | 8822064 |
| 2776 | 37100.37400.37600.38700.100600.104500.182100.539300 | Concreting | 4.5d | 2025-06-20 | 2025-06-24 | 2775 |  | GC1 | 8822074 |
| 2777 | 37100.37400.37600.38700.100600.104500.182000 | **Podium /Ground Floor Slab** | 28.12d | 2025-06-24 | 2025-07-19 |  | start no earlier than 2025-06-24 | GC1 | 8810614 |
| 2778 | 37100.37400.37600.38700.100600.104500.182000.539400 | Reinforcement | 22.5d | 2025-06-24 | 2025-07-14 | 2776 |  | GC1 | 8822084 |
| 2779 | 37100.37400.37600.38700.100600.104500.182000.539500 | Formwork | 22.5d | 2025-06-25 | 2025-07-15 | 2778SS+1.12d |  | GC1 | 8822094 |
| 2780 | 37100.37400.37600.38700.100600.104500.182000.539600 | Concreting | 4.5d | 2025-07-15 | 2025-07-19 | 2779 |  | GC1 | 8822104 |
| 2781 | 37100.37400.37600.38700.100600.130000 | **Substructure Finishing** | 146.25d | 2025-08-18 | 2026-02-09 |  | start no earlier than 2025-08-18 | GC1 | 8808534 |
| 2782 | 37100.37400.37600.38700.100600.130000.318800 | Masonary work | 50.62d | 2025-08-18 | 2025-10-02 | 2780FS+33.75d |  | GC1 | 8814154 |
| 2783 | 37100.37400.37600.38700.100600.130000.318900 | Plaster | 45d | 2025-10-02 | 2025-12-26 | 2782 |  | GC1 | 8814164 |
| 2784 | 37100.37400.37600.38700.100600.130000.319000 | Structural steel | 67.5d | 2025-09-17 | 2025-12-31 | 2780FS+67.5d |  | GC1 | 8814174 |
| 2785 | 37100.37400.37600.38700.100600.130000.319100 | White Wash | 50.62d | 2025-12-26 | 2026-02-09 | 2783 |  | GC1 | 8814184 |
| 2786 | 37100.37400.37600.38700.39700 | **Superstructure** | 830.25d | 2025-07-19 | 2027-10-25 |  | start no earlier than 2025-07-19 | GC1 | 8805914 |
| 2787 | 37100.37400.37600.38700.39700.44100 | **RCC structure** | 498.38d | 2025-07-19 | 2027-01-03 |  | start no earlier than 2025-07-19 | GC1 | 8806064 |
| 2788 | 37100.37400.37600.38700.39700.44100.161900 | **1st floor slab** | 28.12d | 2025-07-19 | 2025-08-13 |  | start no earlier than 2025-07-19 | GC1 | 8809304 |
| 2789 | 37100.37400.37600.38700.39700.44100.161900.539700 | Reinforcement | 24.75d | 2025-07-19 | 2025-08-10 | 2780 |  | GC1 | 8822114 |
| 2790 | 37100.37400.37600.38700.39700.44100.161900.539800 | Wall conduiting | 3.38d | 2025-07-22 | 2025-07-25 | 2789SS+3.38d |  | GC1 | 8822124 |
| 2791 | 37100.37400.37600.38700.39700.44100.161900.539900 | Formwork | 23.62d | 2025-07-22 | 2025-08-12 | 2789SS+3.38d |  | GC1 | 8822134 |
| 2792 | 37100.37400.37600.38700.39700.44100.161900.540000 | Concreting | 1.12d | 2025-08-12 | 2025-08-13 | 2791 |  | GC1 | 8822144 |

| ID | WBS | Task | Duration | Start | Finish | Predecessors | Constraint | Calendar | Unique_Task_ID |
| --- | --- | --- | --- | --- | --- | --- | --- | --- | --- |
| 2793 | 37100.37400.37600.38700.39700.44100.162000 | **2nd floor slab** | 23.62d | 2025-08-13 | 2025-09-03 |  | start no earlier than 2025-08-13 | GC1 | 8809294 |
| 2794 | 37100.37400.37600.38700.39700.44100.162000.540100 | Reinforcement | 20.25d | 2025-08-13 | 2025-08-31 | 2792 |  | GC1 | 8822154 |
| 2795 | 37100.37400.37600.38700.39700.44100.162000.540200 | Wall conduiting | 3.38d | 2025-08-15 | 2025-08-18 | 2790FS+0.25d, 2794SS+2.25d |  | GC1 | 8822164 |
| 2796 | 37100.37400.37600.38700.39700.44100.162000.540300 | Formwork | 19.12d | 2025-08-16 | 2025-09-02 | 2794SS+3.38d |  | GC1 | 8822174 |
| 2797 | 37100.37400.37600.38700.39700.44100.162000.540400 | Concreting | 1.12d | 2025-09-02 | 2025-09-03 | 2796 |  | GC1 | 8822184 |
| 2798 | 37100.37400.37600.38700.39700.44100.162100 | **3rd floor slab** | 16.88d | 2025-09-03 | 2025-09-18 |  | start no earlier than 2025-09-03 | GC1 | 8809284 |
| 2799 | 37100.37400.37600.38700.39700.44100.162100.540500 | Reinforcement | 12.38d | 2025-09-03 | 2025-09-14 | 2797 |  | GC1 | 8822194 |
| 2800 | 37100.37400.37600.38700.39700.44100.162100.540600 | Wall conduiting | 3.38d | 2025-09-06 | 2025-09-09 | 2795, 2799SS+3.38d |  | GC1 | 8822204 |
| 2801 | 37100.37400.37600.38700.39700.44100.162100.540700 | Formwork | 11.25d | 2025-09-07 | 2025-09-17 | 2799SS+4.5d |  | GC1 | 8822214 |
| 2802 | 37100.37400.37600.38700.39700.44100.162100.540800 | Concreting | 1.12d | 2025-09-17 | 2025-09-18 | 2801 |  | GC1 | 8822224 |
| 2803 | 37100.37400.37600.38700.39700.44100.162200 | **4th floor slab** | 10.12d | 2025-09-18 | 2025-09-27 |  | start no earlier than 2025-09-18 | GC1 | 8809274 |
| 2804 | 37100.37400.37600.38700.39700.44100.162200.540900 | Reinforcement | 7.88d | 2025-09-18 | 2025-09-25 | 2802 |  | GC1 | 8822234 |
| 2805 | 37100.37400.37600.38700.39700.44100.162200.541000 | Wall conduiting | 2.25d | 2025-09-19 | 2025-09-21 | 2800, 2804SS+1.12d |  | GC1 | 8822244 |
| 2806 | 37100.37400.37600.38700.39700.44100.162200.541100 | Formwork | 6.75d | 2025-09-20 | 2025-09-26 | 2804SS+2.25d |  | GC1 | 8822254 |
| 2807 | 37100.37400.37600.38700.39700.44100.162200.541200 | Concreting | 1.12d | 2025-09-26 | 2025-09-27 | 2806 |  | GC1 | 8822264 |
| 2808 | 37100.37400.37600.38700.39700.44100.162300 | **5th floor slab** | 10.12d | 2025-09-27 | 2025-10-06 |  | start no earlier than 2025-09-27 | GC1 | 8809264 |
| 2809 | 37100.37400.37600.38700.39700.44100.162300.541300 | Reinforcement | 7.88d | 2025-09-27 | 2025-10-04 | 2807 |  | GC1 | 8822274 |
| 2810 | 37100.37400.37600.38700.39700.44100.162300.541400 | Wall conduiting | 2.25d | 2025-09-28 | 2025-09-30 | 2805, 2809SS+1.12d |  | GC1 | 8822284 |
| 2811 | 37100.37400.37600.38700.39700.44100.162300.541500 | Formwork | 6.75d | 2025-09-29 | 2025-10-05 | 2809SS+2.25d |  | GC1 | 8822294 |
| 2812 | 37100.37400.37600.38700.39700.44100.162300.541600 | Concreting | 1.12d | 2025-10-05 | 2025-10-06 | 2811 |  | GC1 | 8822304 |
| 2813 | 37100.37400.37600.38700.39700.44100.162400 | **6th floor slab** | 10.12d | 2025-10-06 | 2025-10-15 |  | start no earlier than 2025-10-06 | GC1 | 8809254 |
| 2814 | 37100.37400.37600.38700.39700.44100.162400.541700 | Reinforcement | 7.88d | 2025-10-06 | 2025-10-13 | 2812 |  | GC1 | 8822314 |
| 2815 | 37100.37400.37600.38700.39700.44100.162400.541800 | Wall conduiting | 2.25d | 2025-10-07 | 2025-10-09 | 2810, 2814SS+1.12d |  | GC1 | 8822324 |
| 2816 | 37100.37400.37600.38700.39700.44100.162400.541900 | Formwork | 6.75d | 2025-10-08 | 2025-10-14 | 2814SS+2.25d |  | GC1 | 8822334 |
| 2817 | 37100.37400.37600.38700.39700.44100.162400.542000 | Concreting | 1.12d | 2025-10-14 | 2025-10-15 | 2816 |  | GC1 | 8822344 |

| ID | WBS | Task | Duration | Start | Finish | Predecessors | Constraint | Calendar | Unique_Task_ID |
| --- | --- | --- | --- | --- | --- | --- | --- | --- | --- |
| 2818 | 37100.37400.37600.38700.39700.44100.162500 | **7th floor slab** | 10.12d | 2025-10-15 | 2025-10-24 |  | start no earlier than 2025-10-15 | GC1 | 8809244 |
| 2819 | 37100.37400.37600.38700.39700.44100.162500.542100 | Reinforcement | 7.88d | 2025-10-15 | 2025-10-22 | 2817 |  | GC1 | 8822354 |
| 2820 | 37100.37400.37600.38700.39700.44100.162500.542200 | Wall conduiting | 2.25d | 2025-10-16 | 2025-10-18 | 2815, 2819SS+1.12d |  | GC1 | 8822364 |
| 2821 | 37100.37400.37600.38700.39700.44100.162500.542300 | Formwork | 6.75d | 2025-10-17 | 2025-10-23 | 2819SS+2.25d |  | GC1 | 8822374 |
| 2822 | 37100.37400.37600.38700.39700.44100.162500.542400 | Concreting | 1.12d | 2025-10-23 | 2025-10-24 | 2821 |  | GC1 | 8822384 |
| 2823 | 37100.37400.37600.38700.39700.44100.162600 | **8th floor slab** | 13.5d | 2025-10-24 | 2025-12-20 |  | start no earlier than 2025-10-24 | GC1 | 8809234 |
| 2824 | 37100.37400.37600.38700.39700.44100.162600.542500 | Reinforcement | 11.25d | 2025-10-24 | 2025-12-18 | 2822 |  | GC1 | 8822394 |
| 2825 | 37100.37400.37600.38700.39700.44100.162600.542600 | Wall conduiting | 2.25d | 2025-10-25 | 2025-10-27 | 2820, 2824SS+1.12d |  | GC1 | 8822404 |
| 2826 | 37100.37400.37600.38700.39700.44100.162600.542700 | Formwork | 10.12d | 2025-10-26 | 2025-12-19 | 2824SS+2.25d |  | GC1 | 8822414 |
| 2827 | 37100.37400.37600.38700.39700.44100.162600.542800 | Concreting | 1.12d | 2025-12-19 | 2025-12-20 | 2826 |  | GC1 | 8822424 |
| 2828 | 37100.37400.37600.38700.39700.44100.162700 | **9th floor slab** | 10.12d | 2025-12-20 | 2025-12-29 |  | start no earlier than 2025-12-20 | GC1 | 8809224 |
| 2829 | 37100.37400.37600.38700.39700.44100.162700.542900 | Reinforcement | 7.88d | 2025-12-20 | 2025-12-27 | 2827 |  | GC1 | 8822434 |
| 2830 | 37100.37400.37600.38700.39700.44100.162700.543000 | Wall conduiting | 2.25d | 2025-12-21 | 2025-12-23 | 2825, 2829SS+1.12d |  | GC1 | 8822444 |
| 2831 | 37100.37400.37600.38700.39700.44100.162700.543100 | Formwork | 6.75d | 2025-12-22 | 2025-12-28 | 2829SS+2.25d |  | GC1 | 8822454 |
| 2832 | 37100.37400.37600.38700.39700.44100.162700.543200 | Concreting | 1.12d | 2025-12-28 | 2025-12-29 | 2831 |  | GC1 | 8822464 |
| 2833 | 37100.37400.37600.38700.39700.44100.162800 | **10th floor slab** | 10.12d | 2025-12-29 | 2026-01-07 |  | start no earlier than 2025-12-29 | GC1 | 8809214 |
| 2834 | 37100.37400.37600.38700.39700.44100.162800.543300 | Reinforcement | 7.88d | 2025-12-29 | 2026-01-05 | 2832 |  | GC1 | 8822474 |
| 2835 | 37100.37400.37600.38700.39700.44100.162800.543400 | Wall conduiting | 2.25d | 2025-12-30 | 2026-01-01 | 2830, 2834SS+1.12d |  | GC1 | 8822484 |
| 2836 | 37100.37400.37600.38700.39700.44100.162800.543500 | Formwork | 6.75d | 2025-12-31 | 2026-01-06 | 2834SS+2.25d |  | GC1 | 8822494 |
| 2837 | 37100.37400.37600.38700.39700.44100.162800.543600 | Concreting | 1.12d | 2026-01-06 | 2026-01-07 | 2836 |  | GC1 | 8822504 |
| 2838 | 37100.37400.37600.38700.39700.44100.162900 | **11th floor slab** | 10.12d | 2026-01-07 | 2026-01-16 |  | start no earlier than 2026-01-07 | GC1 | 8809204 |
| 2839 | 37100.37400.37600.38700.39700.44100.162900.543700 | Reinforcement | 7.88d | 2026-01-07 | 2026-01-14 | 2837 |  | GC1 | 8822514 |
| 2840 | 37100.37400.37600.38700.39700.44100.162900.543800 | Wall conduiting | 2.25d | 2026-01-08 | 2026-01-10 | 2835, 2839SS+1.12d |  | GC1 | 8822524 |
| 2841 | 37100.37400.37600.38700.39700.44100.162900.543900 | Formwork | 6.75d | 2026-01-09 | 2026-01-15 | 2839SS+2.25d |  | GC1 | 8822534 |
| 2842 | 37100.37400.37600.38700.39700.44100.162900.544000 | Concreting | 1.12d | 2026-01-15 | 2026-01-16 | 2841 |  | GC1 | 8822544 |

| ID | WBS | Task | Duration | Start | Finish | Predecessors | Constraint | Calendar | Unique_Task_ID |
| --- | --- | --- | --- | --- | --- | --- | --- | --- | --- |
| 2843 | 37100.37400.37600.38700.39700.44100.163000 | **12th floor slab** | 10.12d | 2026-01-16 | 2026-01-25 |  | start no earlier than 2026-01-16 | GC1 | 8809194 |
| 2844 | 37100.37400.37600.38700.39700.44100.163000.544100 | Reinforcement | 7.88d | 2026-01-16 | 2026-01-23 | 2842 |  | GC1 | 8822554 |
| 2845 | 37100.37400.37600.38700.39700.44100.163000.544200 | Wall conduiting | 2.25d | 2026-01-17 | 2026-01-19 | 2840, 2844SS+1.12d |  | GC1 | 8822564 |
| 2846 | 37100.37400.37600.38700.39700.44100.163000.544300 | Formwork | 6.75d | 2026-01-18 | 2026-01-24 | 2844SS+2.25d |  | GC1 | 8822574 |
| 2847 | 37100.37400.37600.38700.39700.44100.163000.544400 | Concreting | 1.12d | 2026-01-24 | 2026-01-25 | 2846 |  | GC1 | 8822584 |
| 2848 | 37100.37400.37600.38700.39700.44100.163100 | **13th floor slab** | 10.12d | 2026-01-25 | 2026-02-03 |  | start no earlier than 2026-01-25 | GC1 | 8809184 |
| 2849 | 37100.37400.37600.38700.39700.44100.163100.544500 | Reinforcement | 7.88d | 2026-01-25 | 2026-02-01 | 2847 |  | GC1 | 8822594 |
| 2850 | 37100.37400.37600.38700.39700.44100.163100.544600 | Wall conduiting | 2.25d | 2026-01-26 | 2026-01-28 | 2845, 2849SS+1.12d |  | GC1 | 8822604 |
| 2851 | 37100.37400.37600.38700.39700.44100.163100.544700 | Formwork | 6.75d | 2026-01-27 | 2026-02-02 | 2849SS+2.25d |  | GC1 | 8822614 |
| 2852 | 37100.37400.37600.38700.39700.44100.163100.544800 | Concreting | 1.12d | 2026-02-02 | 2026-02-03 | 2851 |  | GC1 | 8822624 |
| 2853 | 37100.37400.37600.38700.39700.44100.163200 | **14th floor slab** | 10.12d | 2026-02-03 | 2026-02-12 |  | start no earlier than 2026-02-03 | GC1 | 8809174 |
| 2854 | 37100.37400.37600.38700.39700.44100.163200.544900 | Reinforcement | 7.88d | 2026-02-03 | 2026-02-10 | 2852 |  | GC1 | 8822634 |
| 2855 | 37100.37400.37600.38700.39700.44100.163200.545000 | Wall conduiting | 2.25d | 2026-02-04 | 2026-02-06 | 2850, 2854SS+1.12d |  | GC1 | 8822644 |
| 2856 | 37100.37400.37600.38700.39700.44100.163200.545100 | Formwork | 6.75d | 2026-02-05 | 2026-02-11 | 2854SS+2.25d |  | GC1 | 8822654 |
| 2857 | 37100.37400.37600.38700.39700.44100.163200.545200 | Concreting | 1.12d | 2026-02-11 | 2026-02-12 | 2856 |  | GC1 | 8822664 |
| 2858 | 37100.37400.37600.38700.39700.44100.163300 | **15th floor slab** | 10.12d | 2026-02-12 | 2026-02-21 |  | start no earlier than 2026-02-12 | GC1 | 8809164 |
| 2859 | 37100.37400.37600.38700.39700.44100.163300.545300 | Reinforcement | 7.88d | 2026-02-12 | 2026-02-19 | 2857 |  | GC1 | 8822674 |
| 2860 | 37100.37400.37600.38700.39700.44100.163300.545400 | Wall conduiting | 2.25d | 2026-02-13 | 2026-02-15 | 2855, 2859SS+1.12d |  | GC1 | 8822684 |
| 2861 | 37100.37400.37600.38700.39700.44100.163300.545500 | Formwork | 6.75d | 2026-02-14 | 2026-02-20 | 2859SS+2.25d |  | GC1 | 8822694 |
| 2862 | 37100.37400.37600.38700.39700.44100.163300.545600 | Concreting | 1.12d | 2026-02-20 | 2026-02-21 | 2861 |  | GC1 | 8822704 |
| 2863 | 37100.37400.37600.38700.39700.44100.163400 | **16th floor slab** | 13.5d | 2026-02-21 | 2026-03-05 |  | start no earlier than 2026-02-21 | GC1 | 8809154 |
| 2864 | 37100.37400.37600.38700.39700.44100.163400.545700 | Reinforcement | 10.12d | 2026-02-21 | 2026-03-02 | 2862 |  | GC1 | 8822714 |
| 2865 | 37100.37400.37600.38700.39700.44100.163400.545800 | Wall conduiting | 2.25d | 2026-02-22 | 2026-02-24 | 2860, 2864SS+1.12d |  | GC1 | 8822724 |
| 2866 | 37100.37400.37600.38700.39700.44100.163400.545900 | Formwork | 10.12d | 2026-02-23 | 2026-03-04 | 2864SS+2.25d |  | GC1 | 8822734 |
| 2867 | 37100.37400.37600.38700.39700.44100.163400.546000 | Concreting | 1.12d | 2026-03-04 | 2026-03-05 | 2866 |  | GC1 | 8822744 |

| ID | WBS | Task | Duration | Start | Finish | Predecessors | Constraint | Calendar | Unique_Task_ID |
| --- | --- | --- | --- | --- | --- | --- | --- | --- | --- |
| 2868 | 37100.37400.37600.38700.39700.44100.163500 | **17th floor slab** | 10.12d | 2026-03-05 | 2026-03-14 |  | start no earlier than 2026-03-05 | GC1 | 8809144 |
| 2869 | 37100.37400.37600.38700.39700.44100.163500.546100 | Reinforcement | 7.88d | 2026-03-05 | 2026-03-12 | 2867 |  | GC1 | 8822754 |
| 2870 | 37100.37400.37600.38700.39700.44100.163500.546200 | Wall conduiting | 2.25d | 2026-03-06 | 2026-03-08 | 2865, 2869SS+1.12d |  | GC1 | 8822764 |
| 2871 | 37100.37400.37600.38700.39700.44100.163500.546300 | Formwork | 6.75d | 2026-03-07 | 2026-03-13 | 2869SS+2.25d |  | GC1 | 8822774 |
| 2872 | 37100.37400.37600.38700.39700.44100.163500.546400 | Concreting | 1.12d | 2026-03-13 | 2026-03-14 | 2871 |  | GC1 | 8822784 |
| 2873 | 37100.37400.37600.38700.39700.44100.163600 | **18th floor slab** | 10.12d | 2026-03-14 | 2026-03-23 |  | start no earlier than 2026-03-14 | GC1 | 8809134 |
| 2874 | 37100.37400.37600.38700.39700.44100.163600.546500 | Reinforcement | 7.88d | 2026-03-14 | 2026-03-21 | 2872 |  | GC1 | 8822794 |
| 2875 | 37100.37400.37600.38700.39700.44100.163600.546600 | Wall conduiting | 2.25d | 2026-03-15 | 2026-03-17 | 2870, 2874SS+1.12d |  | GC1 | 8822804 |
| 2876 | 37100.37400.37600.38700.39700.44100.163600.546700 | Formwork | 6.75d | 2026-03-16 | 2026-03-22 | 2874SS+2.25d |  | GC1 | 8822814 |
| 2877 | 37100.37400.37600.38700.39700.44100.163600.546800 | Concreting | 1.12d | 2026-03-22 | 2026-03-23 | 2876 |  | GC1 | 8822824 |
| 2878 | 37100.37400.37600.38700.39700.44100.163700 | **19th floor slab** | 9d | 2026-03-23 | 2026-03-31 |  | start no earlier than 2026-03-23 | GC1 | 8809124 |
| 2879 | 37100.37400.37600.38700.39700.44100.163700.546900 | Reinforcement | 7.88d | 2026-03-23 | 2026-03-30 | 2877 |  | GC1 | 8822834 |
| 2880 | 37100.37400.37600.38700.39700.44100.163700.547000 | Wall conduiting | 2.25d | 2026-03-24 | 2026-03-26 | 2875, 2879SS+1.12d |  | GC1 | 8822844 |
| 2881 | 37100.37400.37600.38700.39700.44100.163700.547100 | Formwork | 6.75d | 2026-03-24 | 2026-03-30 | 2879SS+1.12d |  | GC1 | 8822854 |
| 2882 | 37100.37400.37600.38700.39700.44100.163700.547200 | Concreting | 1.12d | 2026-03-30 | 2026-03-31 | 2881 |  | GC1 | 8822864 |
| 2883 | 37100.37400.37600.38700.39700.44100.163800 | **20th floor slab** | 9d | 2026-03-31 | 2026-04-08 |  | start no earlier than 2026-03-31 | GC1 | 8809114 |
| 2884 | 37100.37400.37600.38700.39700.44100.163800.547300 | Reinforcement | 7.88d | 2026-03-31 | 2026-04-07 | 2882 |  | GC1 | 8822874 |
| 2885 | 37100.37400.37600.38700.39700.44100.163800.547400 | Wall conduiting | 2.25d | 2026-04-01 | 2026-04-03 | 2880, 2884SS+1.12d |  | GC1 | 8822884 |
| 2886 | 37100.37400.37600.38700.39700.44100.163800.547500 | Formwork | 6.75d | 2026-04-01 | 2026-04-07 | 2884SS+1.12d |  | GC1 | 8822894 |
| 2887 | 37100.37400.37600.38700.39700.44100.163800.547600 | Concreting | 1.12d | 2026-04-07 | 2026-04-08 | 2886 |  | GC1 | 8822904 |
| 2888 | 37100.37400.37600.38700.39700.44100.163900 | **21st floor slab** | 11.25d | 2026-04-08 | 2026-04-18 |  | start no earlier than 2026-04-08 | GC1 | 8809104 |
| 2889 | 37100.37400.37600.38700.39700.44100.163900.547700 | Reinforcement | 9d | 2026-04-08 | 2026-04-16 | 2887 |  | GC1 | 8822914 |
| 2890 | 37100.37400.37600.38700.39700.44100.163900.547800 | Wall conduiting | 2.25d | 2026-04-09 | 2026-04-11 | 2885, 2889SS+1.12d |  | GC1 | 8822924 |
| 2891 | 37100.37400.37600.38700.39700.44100.163900.547900 | Formwork | 7.88d | 2026-04-10 | 2026-04-17 | 2889SS+2.25d |  | GC1 | 8822934 |
| 2892 | 37100.37400.37600.38700.39700.44100.163900.548000 | Concreting | 1.12d | 2026-04-17 | 2026-04-18 | 2891 |  | GC1 | 8822944 |

| ID | WBS | Task | Duration | Start | Finish | Predecessors | Constraint | Calendar | Unique_Task_ID |
| --- | --- | --- | --- | --- | --- | --- | --- | --- | --- |
| 2893 | 37100.37400.37600.38700.39700.44100.164000 | **22nd floor slab** | 11.25d | 2026-04-18 | 2026-04-28 |  | start no earlier than 2026-04-18 | GC1 | 8809094 |
| 2894 | 37100.37400.37600.38700.39700.44100.164000.548100 | Reinforcement | 9d | 2026-04-18 | 2026-04-26 | 2892 |  | GC1 | 8822954 |
| 2895 | 37100.37400.37600.38700.39700.44100.164000.548200 | Wall conduiting | 2.25d | 2026-04-19 | 2026-04-21 | 2890, 2894SS+1.12d |  | GC1 | 8822964 |
| 2896 | 37100.37400.37600.38700.39700.44100.164000.548300 | Formwork | 7.88d | 2026-04-20 | 2026-04-27 | 2894SS+2.25d |  | GC1 | 8822974 |
| 2897 | 37100.37400.37600.38700.39700.44100.164000.548400 | Concreting | 1.12d | 2026-04-27 | 2026-04-28 | 2896 |  | GC1 | 8822984 |
| 2898 | 37100.37400.37600.38700.39700.44100.164100 | **23rd floor slab** | 11.25d | 2026-04-28 | 2026-05-08 |  | start no earlier than 2026-04-28 | GC1 | 8809084 |
| 2899 | 37100.37400.37600.38700.39700.44100.164100.548500 | Reinforcement | 9d | 2026-04-28 | 2026-05-06 | 2897 |  | GC1 | 8822994 |
| 2900 | 37100.37400.37600.38700.39700.44100.164100.548600 | Wall conduiting | 2.25d | 2026-04-29 | 2026-05-01 | 2895, 2899SS+1.12d |  | GC1 | 8823004 |
| 2901 | 37100.37400.37600.38700.39700.44100.164100.548700 | Formwork | 7.88d | 2026-04-30 | 2026-05-07 | 2899SS+2.25d |  | GC1 | 8823014 |
| 2902 | 37100.37400.37600.38700.39700.44100.164100.548800 | Concreting | 1.12d | 2026-05-07 | 2026-05-08 | 2901 |  | GC1 | 8823024 |
| 2903 | 37100.37400.37600.38700.39700.44100.164200 | **24th floor slab** | 14.62d | 2026-05-08 | 2026-05-21 |  | start no earlier than 2026-05-08 | GC1 | 8809074 |
| 2904 | 37100.37400.37600.38700.39700.44100.164200.548900 | Reinforcement | 11.25d | 2026-05-08 | 2026-05-18 | 2902 |  | GC1 | 8823034 |
| 2905 | 37100.37400.37600.38700.39700.44100.164200.549000 | Wall conduiting | 2.25d | 2026-05-09 | 2026-05-11 | 2900, 2904SS+1.12d |  | GC1 | 8823044 |
| 2906 | 37100.37400.37600.38700.39700.44100.164200.549100 | Formwork | 11.25d | 2026-05-10 | 2026-05-20 | 2904SS+2.25d |  | GC1 | 8823054 |
| 2907 | 37100.37400.37600.38700.39700.44100.164200.549200 | Concreting | 1.12d | 2026-05-20 | 2026-05-21 | 2906 |  | GC1 | 8823064 |
| 2908 | 37100.37400.37600.38700.39700.44100.164300 | **25th floor slab** | 14.62d | 2026-05-21 | 2026-06-03 |  | start no earlier than 2026-05-21 | GC1 | 8809064 |
| 2909 | 37100.37400.37600.38700.39700.44100.164300.549300 | Reinforcement | 11.25d | 2026-05-21 | 2026-05-31 | 2907 |  | GC1 | 8823074 |
| 2910 | 37100.37400.37600.38700.39700.44100.164300.549400 | Wall conduiting | 2.25d | 2026-05-22 | 2026-05-24 | 2905, 2909SS+1.12d |  | GC1 | 8823084 |
| 2911 | 37100.37400.37600.38700.39700.44100.164300.549500 | Formwork | 11.25d | 2026-05-23 | 2026-06-02 | 2909SS+2.25d |  | GC1 | 8823094 |
| 2912 | 37100.37400.37600.38700.39700.44100.164300.549600 | Concreting | 1.12d | 2026-06-02 | 2026-06-03 | 2911 |  | GC1 | 8823104 |
| 2913 | 37100.37400.37600.38700.39700.44100.164400 | **26th floor slab** | 11.25d | 2026-06-03 | 2026-06-13 |  | start no earlier than 2026-06-03 | GC1 | 8809054 |
| 2914 | 37100.37400.37600.38700.39700.44100.164400.549700 | Reinforcement | 9d | 2026-06-03 | 2026-06-11 | 2912 |  | GC1 | 8823114 |
| 2915 | 37100.37400.37600.38700.39700.44100.164400.549800 | Wall conduiting | 2.25d | 2026-06-04 | 2026-06-06 | 2910, 2914SS+1.12d |  | GC1 | 8823124 |
| 2916 | 37100.37400.37600.38700.39700.44100.164400.549900 | Formwork | 7.88d | 2026-06-05 | 2026-06-12 | 2914SS+2.25d |  | GC1 | 8823134 |
| 2917 | 37100.37400.37600.38700.39700.44100.164400.550000 | Concreting | 1.12d | 2026-06-12 | 2026-06-13 | 2916 |  | GC1 | 8823144 |

| ID | WBS | Task | Duration | Start | Finish | Predecessors | Constraint | Calendar | Unique_Task_ID |
| --- | --- | --- | --- | --- | --- | --- | --- | --- | --- |
| 2918 | 37100.37400.37600.38700.39700.44100.164500 | **27th floor slab** | 11.25d | 2026-06-13 | 2026-06-23 |  | start no earlier than 2026-06-13 | GC1 | 8809044 |
| 2919 | 37100.37400.37600.38700.39700.44100.164500.550100 | Reinforcement | 9d | 2026-06-13 | 2026-06-21 | 2917 |  | GC1 | 8823154 |
| 2920 | 37100.37400.37600.38700.39700.44100.164500.550200 | Wall conduiting | 2.25d | 2026-06-14 | 2026-06-16 | 2915, 2919SS+1.12d |  | GC1 | 8823164 |
| 2921 | 37100.37400.37600.38700.39700.44100.164500.550300 | Formwork | 7.88d | 2026-06-15 | 2026-06-22 | 2919SS+2.25d |  | GC1 | 8823174 |
| 2922 | 37100.37400.37600.38700.39700.44100.164500.550400 | Concreting | 1.12d | 2026-06-22 | 2026-06-23 | 2921 |  | GC1 | 8823184 |
| 2923 | 37100.37400.37600.38700.39700.44100.164600 | **28th floor slab** | 11.25d | 2026-06-23 | 2026-07-03 |  | start no earlier than 2026-06-23 | GC1 | 8809034 |
| 2924 | 37100.37400.37600.38700.39700.44100.164600.550500 | Reinforcement | 9d | 2026-06-23 | 2026-07-01 | 2922 |  | GC1 | 8823194 |
| 2925 | 37100.37400.37600.38700.39700.44100.164600.550600 | Wall conduiting | 2.25d | 2026-06-24 | 2026-06-26 | 2920, 2924SS+1.12d |  | GC1 | 8823204 |
| 2926 | 37100.37400.37600.38700.39700.44100.164600.550700 | Formwork | 7.88d | 2026-06-25 | 2026-07-02 | 2924SS+2.25d |  | GC1 | 8823214 |
| 2927 | 37100.37400.37600.38700.39700.44100.164600.550800 | Concreting | 1.12d | 2026-07-02 | 2026-07-03 | 2926 |  | GC1 | 8823224 |
| 2928 | 37100.37400.37600.38700.39700.44100.164700 | **29th floor slab** | 11.25d | 2026-07-03 | 2026-07-13 |  | start no earlier than 2026-07-03 | GC1 | 8809024 |
| 2929 | 37100.37400.37600.38700.39700.44100.164700.550900 | Reinforcement | 9d | 2026-07-03 | 2026-07-11 | 2927 |  | GC1 | 8823234 |
| 2930 | 37100.37400.37600.38700.39700.44100.164700.551000 | Wall conduiting | 2.25d | 2026-07-04 | 2026-07-06 | 2925, 2929SS+1.12d |  | GC1 | 8823244 |
| 2931 | 37100.37400.37600.38700.39700.44100.164700.551100 | Formwork | 7.88d | 2026-07-05 | 2026-07-12 | 2929SS+2.25d |  | GC1 | 8823254 |
| 2932 | 37100.37400.37600.38700.39700.44100.164700.551200 | Concreting | 1.12d | 2026-07-12 | 2026-07-13 | 2931 |  | GC1 | 8823264 |
| 2933 | 37100.37400.37600.38700.39700.44100.164800 | **30th floor slab** | 11.25d | 2026-07-13 | 2026-07-23 |  | start no earlier than 2026-07-13 | GC1 | 8809014 |
| 2934 | 37100.37400.37600.38700.39700.44100.164800.551300 | Reinforcement | 9d | 2026-07-13 | 2026-07-21 | 2932 |  | GC1 | 8823274 |
| 2935 | 37100.37400.37600.38700.39700.44100.164800.551400 | Wall conduiting | 2.25d | 2026-07-14 | 2026-07-16 | 2930, 2934SS+1.12d |  | GC1 | 8823284 |
| 2936 | 37100.37400.37600.38700.39700.44100.164800.551500 | Formwork | 7.88d | 2026-07-15 | 2026-07-22 | 2934SS+2.25d |  | GC1 | 8823294 |
| 2937 | 37100.37400.37600.38700.39700.44100.164800.551600 | Concreting | 1.12d | 2026-07-22 | 2026-07-23 | 2936 |  | GC1 | 8823304 |
| 2938 | 37100.37400.37600.38700.39700.44100.164900 | **31st floor slab** | 13.5d | 2026-07-23 | 2026-08-04 |  | start no earlier than 2026-07-23 | GC1 | 8809004 |
| 2939 | 37100.37400.37600.38700.39700.44100.164900.551700 | Reinforcement | 10.12d | 2026-07-23 | 2026-08-01 | 2937 |  | GC1 | 8823314 |
| 2940 | 37100.37400.37600.38700.39700.44100.164900.551800 | Wall conduiting | 2.25d | 2026-07-24 | 2026-07-26 | 2935, 2939SS+1.12d |  | GC1 | 8823324 |
| 2941 | 37100.37400.37600.38700.39700.44100.164900.551900 | Formwork | 10.12d | 2026-07-25 | 2026-08-03 | 2939SS+2.25d |  | GC1 | 8823334 |
| 2942 | 37100.37400.37600.38700.39700.44100.164900.552000 | Concreting | 1.12d | 2026-08-03 | 2026-08-04 | 2941 |  | GC1 | 8823344 |

| ID | WBS | Task | Duration | Start | Finish | Predecessors | Constraint | Calendar | Unique_Task_ID |
| --- | --- | --- | --- | --- | --- | --- | --- | --- | --- |
| 2943 | 37100.37400.37600.38700.39700.44100.165000 | **32nd floor slab** | 14.62d | 2026-08-04 | 2026-08-17 |  | start no earlier than 2026-08-04 | GC1 | 8808994 |
| 2944 | 37100.37400.37600.38700.39700.44100.165000.552100 | Reinforcement | 11.25d | 2026-08-04 | 2026-08-14 | 2942 |  | GC1 | 8823354 |
| 2945 | 37100.37400.37600.38700.39700.44100.165000.552200 | Wall conduiting | 2.25d | 2026-08-05 | 2026-08-07 | 2940, 2944SS+1.12d |  | GC1 | 8823364 |
| 2946 | 37100.37400.37600.38700.39700.44100.165000.552300 | Formwork | 11.25d | 2026-08-06 | 2026-08-16 | 2944SS+2.25d |  | GC1 | 8823374 |
| 2947 | 37100.37400.37600.38700.39700.44100.165000.552400 | Concreting | 1.12d | 2026-08-16 | 2026-08-17 | 2946 |  | GC1 | 8823384 |
| 2948 | 37100.37400.37600.38700.39700.44100.165100 | **33rd floor slab** | 13.5d | 2026-08-17 | 2026-08-29 |  | start no earlier than 2026-08-17 | GC1 | 8808984 |
| 2949 | 37100.37400.37600.38700.39700.44100.165100.552500 | Reinforcement | 10.12d | 2026-08-17 | 2026-08-26 | 2947 |  | GC1 | 8823394 |
| 2950 | 37100.37400.37600.38700.39700.44100.165100.552600 | Wall conduiting | 2.25d | 2026-08-18 | 2026-08-20 | 2945, 2949SS+1.12d |  | GC1 | 8823404 |
| 2951 | 37100.37400.37600.38700.39700.44100.165100.552700 | Formwork | 10.12d | 2026-08-19 | 2026-08-28 | 2949SS+2.25d |  | GC1 | 8823414 |
| 2952 | 37100.37400.37600.38700.39700.44100.165100.552800 | Concreting | 1.12d | 2026-08-28 | 2026-08-29 | 2951 |  | GC1 | 8823424 |
| 2953 | 37100.37400.37600.38700.39700.44100.165200 | **34th floor slab** | 14.62d | 2026-08-29 | 2026-09-11 |  | start no earlier than 2026-08-29 | GC1 | 8808974 |
| 2954 | 37100.37400.37600.38700.39700.44100.165200.552900 | Reinforcement | 11.25d | 2026-08-29 | 2026-09-08 | 2952 |  | GC1 | 8823434 |
| 2955 | 37100.37400.37600.38700.39700.44100.165200.553000 | Wall conduiting | 2.25d | 2026-08-30 | 2026-09-01 | 2950, 2954SS+1.12d |  | GC1 | 8823444 |
| 2956 | 37100.37400.37600.38700.39700.44100.165200.553100 | Formwork | 11.25d | 2026-08-31 | 2026-09-10 | 2954SS+2.25d |  | GC1 | 8823454 |
| 2957 | 37100.37400.37600.38700.39700.44100.165200.553200 | Concreting | 1.12d | 2026-09-10 | 2026-09-11 | 2956 |  | GC1 | 8823464 |
| 2958 | 37100.37400.37600.38700.39700.44100.165300 | **35th floor slab** | 13.5d | 2026-09-11 | 2026-09-23 |  | start no earlier than 2026-09-11 | GC1 | 8808964 |
| 2959 | 37100.37400.37600.38700.39700.44100.165300.553300 | Reinforcement | 10.12d | 2026-09-11 | 2026-09-20 | 2957 |  | GC1 | 8823474 |
| 2960 | 37100.37400.37600.38700.39700.44100.165300.553400 | Wall conduiting | 2.25d | 2026-09-12 | 2026-09-14 | 2955, 2959SS+1.12d |  | GC1 | 8823484 |
| 2961 | 37100.37400.37600.38700.39700.44100.165300.553500 | Formwork | 9d | 2026-09-14 | 2026-09-22 | 2960SS+2.25d |  | GC1 | 8823494 |
| 2962 | 37100.37400.37600.38700.39700.44100.165300.553600 | Concreting | 1.12d | 2026-09-22 | 2026-09-23 | 2961 |  | GC1 | 8823504 |
| 2963 | 37100.37400.37600.38700.39700.44100.165400 | **Terrace floor slab** | 16.88d | 2026-09-23 | 2026-10-08 |  | start no earlier than 2026-09-23 | GC1 | 8808954 |
| 2964 | 37100.37400.37600.38700.39700.44100.165400.553700 | Reinforcement | 12.38d | 2026-09-23 | 2026-10-04 | 2962 |  | GC1 | 8823514 |
| 2965 | 37100.37400.37600.38700.39700.44100.165400.553800 | Wall conduiting | 2.25d | 2026-09-24 | 2026-09-26 | 2960, 2964SS+1.12d |  | GC1 | 8823524 |
| 2966 | 37100.37400.37600.38700.39700.44100.165400.553900 | Formwork | 13.5d | 2026-09-25 | 2026-10-07 | 2964SS+2.25d |  | GC1 | 8823534 |
| 2967 | 37100.37400.37600.38700.39700.44100.165400.554000 | Concreting | 1.12d | 2026-10-07 | 2026-10-08 | 2966 |  | GC1 | 8823544 |

| ID | WBS | Task | Duration | Start | Finish | Predecessors | Constraint | Calendar | Unique_Task_ID |
| --- | --- | --- | --- | --- | --- | --- | --- | --- | --- |
| 2968 | 37100.37400.37600.38700.39700.44100.165500 | **OHT & Mumty** | 47.25d | 2026-10-08 | 2027-01-03 |  | start no earlier than 2026-10-08 | GC1 | 8808944 |
| 2969 | 37100.37400.37600.38700.39700.44100.165500.554100 | Reinforcement | 33.75d | 2026-10-08 | 2026-12-22 | 2967 |  | GC1 | 8823554 |
| 2970 | 37100.37400.37600.38700.39700.44100.165500.554200 | Wall conduiting | 5.62d | 2026-10-09 | 2026-10-14 | 2965, 2969SS+1.12d |  | GC1 | 8823564 |
| 2971 | 37100.37400.37600.38700.39700.44100.165500.554300 | Formwork | 37.12d | 2026-10-14 | 2026-12-31 | 2969SS+4.5d, 2970 |  | GC1 | 8823574 |
| 2972 | 37100.37400.37600.38700.39700.44100.165500.554400 | Concreting | 3.38d | 2026-12-31 | 2027-01-03 | 2971 |  | GC1 | 8823584 |
| 2973 | 37100.37400.37600.38700.39700.45600 | **Post Pour Activities** | 439.88d | 2025-09-27 | 2027-01-21 |  | start no earlier than 2025-09-27 | GC1 | 8806114 |
| 2974 | 37100.37400.37600.38700.39700.45600.319200 | 1st Floor | 12.38d | 2025-09-27 | 2025-10-08 | 2807 |  | GC1 | 8814194 |
| 2975 | 37100.37400.37600.38700.39700.45600.319300 | 2nd Floor | 12.38d | 2025-10-08 | 2025-10-19 | 2974, 2812 |  | GC1 | 8814204 |
| 2976 | 37100.37400.37600.38700.39700.45600.319400 | 3rd Floor | 12.38d | 2025-10-19 | 2025-10-30 | 2975, 2817 |  | GC1 | 8814214 |
| 2977 | 37100.37400.37600.38700.39700.45600.319500 | 4th Floor | 12.38d | 2025-10-30 | 2025-12-25 | 2976, 2822 |  | GC1 | 8814224 |
| 2978 | 37100.37400.37600.38700.39700.45600.319600 | 5th Floor | 12.38d | 2025-12-25 | 2026-01-05 | 2977, 2827 |  | GC1 | 8814234 |
| 2979 | 37100.37400.37600.38700.39700.45600.319700 | 6th Floor | 12.38d | 2026-01-05 | 2026-01-16 | 2978, 2832 |  | GC1 | 8814244 |
| 2980 | 37100.37400.37600.38700.39700.45600.319800 | 7th Floor | 12.38d | 2026-01-16 | 2026-01-27 | 2979, 2837 |  | GC1 | 8814254 |
| 2981 | 37100.37400.37600.38700.39700.45600.319900 | 8th Floor | 12.38d | 2026-01-27 | 2026-02-07 | 2980, 2842 |  | GC1 | 8814264 |
| 2982 | 37100.37400.37600.38700.39700.45600.320000 | 9th Floor | 12.38d | 2026-02-07 | 2026-02-18 | 2981, 2847 |  | GC1 | 8814274 |
| 2983 | 37100.37400.37600.38700.39700.45600.320100 | 10th Floor | 11.25d | 2026-02-18 | 2026-02-28 | 2982, 2852 |  | GC1 | 8814284 |
| 2984 | 37100.37400.37600.38700.39700.45600.320200 | 11th Floor | 11.25d | 2026-02-28 | 2026-03-10 | 2983, 2857 |  | GC1 | 8814294 |
| 2985 | 37100.37400.37600.38700.39700.45600.320300 | 12th Floor | 11.25d | 2026-03-10 | 2026-03-20 | 2984, 2862 |  | GC1 | 8814304 |
| 2986 | 37100.37400.37600.38700.39700.45600.320400 | 13th Floor | 11.25d | 2026-03-20 | 2026-03-30 | 2985, 2867 |  | GC1 | 8814314 |
| 2987 | 37100.37400.37600.38700.39700.45600.320500 | 14th Floor | 12.38d | 2026-03-30 | 2026-04-10 | 2986, 2872 |  | GC1 | 8814324 |
| 2988 | 37100.37400.37600.38700.39700.45600.320600 | 15th Floor | 12.38d | 2026-04-10 | 2026-04-21 | 2987, 2877 |  | GC1 | 8814334 |
| 2989 | 37100.37400.37600.38700.39700.45600.320700 | 16th Floor | 12.38d | 2026-04-21 | 2026-05-02 | 2988, 2882 |  | GC1 | 8814344 |
| 2990 | 37100.37400.37600.38700.39700.45600.320800 | 17th Floor | 12.38d | 2026-05-02 | 2026-05-13 | 2989, 2887 |  | GC1 | 8814354 |
| 2991 | 37100.37400.37600.38700.39700.45600.320900 | 18th Floor | 12.38d | 2026-05-13 | 2026-05-24 | 2990, 2892 |  | GC1 | 8814364 |
| 2992 | 37100.37400.37600.38700.39700.45600.321000 | 19th Floor | 12.38d | 2026-05-24 | 2026-06-04 | 2991, 2897 |  | GC1 | 8814374 |
| 2993 | 37100.37400.37600.38700.39700.45600.321100 | 20th Floor | 12.38d | 2026-06-04 | 2026-06-15 | 2992, 2902 |  | GC1 | 8814384 |
| 2994 | 37100.37400.37600.38700.39700.45600.321200 | 21st Floor | 12.38d | 2026-06-15 | 2026-06-26 | 2993, 2907 |  | GC1 | 8814394 |
| 2995 | 37100.37400.37600.38700.39700.45600.321300 | 22nd Floor | 12.38d | 2026-06-26 | 2026-07-07 | 2994, 2912 |  | GC1 | 8814404 |
| 2996 | 37100.37400.37600.38700.39700.45600.321400 | 23rd Floor | 12.38d | 2026-07-07 | 2026-07-18 | 2995, 2917 |  | GC1 | 8814414 |
| 2997 | 37100.37400.37600.38700.39700.45600.321500 | 24th Floor | 12.38d | 2026-07-18 | 2026-07-29 | 2996, 2922 |  | GC1 | 8814424 |
| 2998 | 37100.37400.37600.38700.39700.45600.321600 | 25th Floor | 12.38d | 2026-07-29 | 2026-08-09 | 2997, 2927 |  | GC1 | 8814434 |
| 2999 | 37100.37400.37600.38700.39700.45600.321700 | 26th Floor | 12.38d | 2026-08-09 | 2026-08-20 | 2998, 2932 |  | GC1 | 8814444 |
| 3000 | 37100.37400.37600.38700.39700.45600.321800 | 27th Floor | 12.38d | 2026-08-20 | 2026-08-31 | 2999, 2937 |  | GC1 | 8814454 |
| 3001 | 37100.37400.37600.38700.39700.45600.321900 | 28th Floor | 12.38d | 2026-08-31 | 2026-09-11 | 3000, 2942 |  | GC1 | 8814464 |
| 3002 | 37100.37400.37600.38700.39700.45600.322000 | 29th Floor | 12.38d | 2026-09-11 | 2026-09-22 | 3001, 2947 |  | GC1 | 8814474 |
| 3003 | 37100.37400.37600.38700.39700.45600.322100 | 30th Floor | 12.38d | 2026-09-22 | 2026-10-03 | 3002, 2952 |  | GC1 | 8814484 |
| 3004 | 37100.37400.37600.38700.39700.45600.322200 | 31st Floor | 12.38d | 2026-10-03 | 2026-10-14 | 3003, 2957 |  | GC1 | 8814494 |
| 3005 | 37100.37400.37600.38700.39700.45600.322300 | 32nd Flood | 12.38d | 2026-10-14 | 2026-10-25 | 3004, 2962 |  | GC1 | 8814504 |
| 3006 | 37100.37400.37600.38700.39700.45600.322400 | 33rd Floor | 12.38d | 2026-10-25 | 2026-12-20 | 3005 |  | GC1 | 8814514 |
| 3007 | 37100.37400.37600.38700.39700.45600.322500 | 34th Floor | 9d | 2026-12-20 | 2026-12-28 | 3006 |  | GC1 | 8814524 |
| 3008 | 37100.37400.37600.38700.39700.45600.322600 | 35th Floor | 9d | 2026-12-28 | 2027-01-05 | 3007 |  | GC1 | 8814534 |
| 3009 | 37100.37400.37600.38700.39700.45600.322700 | Terrace | 9d | 2027-01-05 | 2027-01-13 | 3008 |  | GC1 | 8814544 |
| 3010 | 37100.37400.37600.38700.39700.45600.322800 | Mumty & Machine Room | 9d | 2027-01-13 | 2027-01-21 | 3009 |  | GC1 | 8814554 |

| ID | WBS | Task | Duration | Start | Finish | Predecessors | Constraint | Calendar | Unique_Task_ID |
| --- | --- | --- | --- | --- | --- | --- | --- | --- | --- |
| 3011 | 37100.37400.37600.38700.39700.41100 | **Finishing work** | 738.88d | 2025-10-08 | 2027-10-25 |  | start no earlier than 2025-10-08 | GC1 | 8805964 |
| 3012 | 37100.37400.37600.38700.39700.41100.42100 | **Flat finishing** | 627.5d | 2025-10-08 | 2027-07-18 |  | start no earlier than 2025-10-08 | GC1 | 8806014 |
| 3013 | 37100.37400.37600.38700.39700.41100.42100.69600 | **1st Floor** | 102.38d | 2025-10-08 | 2026-02-21 |  | start no earlier than 2025-10-08 | GC1 | 8807244 |
| 3014 | 37100.37400.37600.38700.39700.41100.42100.69600.1232300 | Block Work | 9d | 2025-10-08 | 2025-10-16 | 2974FS+0.25d, 2807 |  | GC1 | 8841904 |
| 3015 | 37100.37400.37600.38700.39700.41100.42100.69600.1232400 | Door Frame Fixing | 5.62d | 2025-10-16 | 2025-10-21 | 3014 |  | GC1 | 8841914 |
| 3016 | 37100.37400.37600.38700.39700.41100.42100.69600.1232500 | Internal Plumbing Works | 11.25d | 2025-10-16 | 2025-10-26 | 3014 |  | GC1 | 8841924 |
| 3017 | 37100.37400.37600.38700.39700.41100.42100.69600.1232600 | Waterproofing | 13.5d | 2025-10-26 | 2025-12-22 | 3016 |  | GC1 | 8841934 |
| 3018 | 37100.37400.37600.38700.39700.41100.42100.69600.1232700 | Internal Plaster | 10.12d | 2025-10-21 | 2025-10-30 | 3015FS+0.25d |  | GC1 | 8841944 |
| 3019 | 37100.37400.37600.38700.39700.41100.42100.69600.1232800 | IPS flooring work | 10.12d | 2025-12-22 | 2025-12-31 | 3015, 3016, 3017 |  | GC1 | 8841954 |
| 3020 | 37100.37400.37600.38700.39700.41100.42100.69600.1232900 | Toilet dado work | 9d | 2025-12-22 | 2025-12-30 | 3017, 3018 |  | GC1 | 8841964 |
| 3021 | 37100.37400.37600.38700.39700.41100.42100.69600.1233000 | Toilet flooring work | 7.88d | 2025-12-30 | 2026-01-06 | 3020 |  | GC1 | 8841974 |
| 3022 | 37100.37400.37600.38700.39700.41100.42100.69600.1233100 | Living dinning flooring | 4.5d | 2026-01-06 | 2026-01-10 | 3015, 3021 |  | GC1 | 8841984 |
| 3023 | 37100.37400.37600.38700.39700.41100.42100.69600.1233200 | Aluminium door-window fixing | 9d | 2026-01-10 | 2026-01-18 | 2822, 3022FS+0.25d |  | GC1 | 8841994 |
| 3024 | 37100.37400.37600.38700.39700.41100.42100.69600.1233300 | Putty primer coat | 10.12d | 2026-01-10 | 2026-01-19 | 3022 |  | GC1 | 8842004 |
| 3025 | 37100.37400.37600.38700.39700.41100.42100.69600.1233400 | Door shutter fixing | 9d | 2026-01-10 | 2026-01-18 | 3022 |  | GC1 | 8842014 |
| 3026 | 37100.37400.37600.38700.39700.41100.42100.69600.1233500 | Electrical wiring work | 13.5d | 2026-01-18 | 2026-01-30 | 3025 |  | GC1 | 8842024 |
| 3027 | 37100.37400.37600.38700.39700.41100.42100.69600.1233600 | Painting 1st coat | 13.5d | 2026-01-30 | 2026-02-11 | 3024, 3025, 3026 |  | GC1 | 8842034 |
| 3028 | 37100.37400.37600.38700.39700.41100.42100.69600.1233700 | False ceiling | 11.25d | 2026-02-11 | 2026-02-21 | 3027 |  | GC1 | 8842044 |
| 3029 | 37100.37400.37600.38700.39700.41100.42100.69700 | **2nd Floor** | 106.88d | 2025-10-16 | 2026-03-05 |  | start no earlier than 2025-10-16 | GC1 | 8807254 |
| 3030 | 37100.37400.37600.38700.39700.41100.42100.69700.1233800 | Block Work | 9d | 2025-10-16 | 2025-10-24 | 3014FS+0.25d |  | GC1 | 8842054 |
| 3031 | 37100.37400.37600.38700.39700.41100.42100.69700.1233900 | Door Frame Fixing | 5.62d | 2025-10-24 | 2025-10-29 | 3015, 3030 |  | GC1 | 8842064 |
| 3032 | 37100.37400.37600.38700.39700.41100.42100.69700.1234000 | Internal Plumbing Works | 11.25d | 2025-10-26 | 2025-12-20 | 3016, 3030 |  | GC1 | 8842074 |
| 3033 | 37100.37400.37600.38700.39700.41100.42100.69700.1234100 | Waterproofing | 13.5d | 2025-12-22 | 2026-01-03 | 3017, 3032 |  | GC1 | 8842084 |
| 3034 | 37100.37400.37600.38700.39700.41100.42100.69700.1234200 | Internal Plaster | 10.12d | 2025-10-31 | 2025-12-24 | 3018FS+0.25d, 3031FS+0.25d |  | GC1 | 8842094 |
| 3035 | 37100.37400.37600.38700.39700.41100.42100.69700.1234300 | IPS flooring work | 10.12d | 2026-01-03 | 2026-01-12 | 3019, 3031, 3032, 3033 |  | GC1 | 8842104 |
| 3036 | 37100.37400.37600.38700.39700.41100.42100.69700.1234400 | Toilet dado work | 9d | 2026-01-03 | 2026-01-11 | 3020, 3033, 3034 |  | GC1 | 8842114 |
| 3037 | 37100.37400.37600.38700.39700.41100.42100.69700.1234500 | Toilet flooring work | 7.88d | 2026-01-11 | 2026-01-18 | 3021, 3036 |  | GC1 | 8842124 |
| 3038 | 37100.37400.37600.38700.39700.41100.42100.69700.1234600 | Living dinning flooring | 4.5d | 2026-01-18 | 2026-01-22 | 3022FS+0.25d, 3037FS+0.25d |  | GC1 | 8842134 |
| 3039 | 37100.37400.37600.38700.39700.41100.42100.69700.1234700 | Aluminium door-window fixing | 9d | 2026-01-23 | 2026-01-31 | 3023FS+0.25d, 3038FS+0.25d |  | GC1 | 8842144 |
| 3040 | 37100.37400.37600.38700.39700.41100.42100.69700.1234800 | Putty primer coat | 6.75d | 2026-01-22 | 2026-01-28 | 3024, 3038 |  | GC1 | 8842154 |
| 3041 | 37100.37400.37600.38700.39700.41100.42100.69700.1234900 | Door shutter fixing | 9d | 2026-01-22 | 2026-01-30 | 3025, 3038 |  | GC1 | 8842164 |
| 3042 | 37100.37400.37600.38700.39700.41100.42100.69700.1235000 | Electrical wiring work | 13.5d | 2026-01-30 | 2026-02-11 | 3026, 3041 |  | GC1 | 8842174 |
| 3043 | 37100.37400.37600.38700.39700.41100.42100.69700.1235100 | Painting 1st coat | 13.5d | 2026-02-11 | 2026-02-23 | 3027, 3040, 3041, 3042 |  | GC1 | 8842184 |
| 3044 | 37100.37400.37600.38700.39700.41100.42100.69700.1235200 | False ceiling | 11.25d | 2026-02-23 | 2026-03-05 | 3028, 3043 |  | GC1 | 8842194 |

| ID | WBS | Task | Duration | Start | Finish | Predecessors | Constraint | Calendar | Unique_Task_ID |
| --- | --- | --- | --- | --- | --- | --- | --- | --- | --- |
| 3045 | 37100.37400.37600.38700.39700.41100.42100.69800 | **3rd Floor** | 111.12d | 2025-10-25 | 2026-03-17 |  | start no earlier than 2025-10-25 | GC1 | 8807264 |
| 3046 | 37100.37400.37600.38700.39700.41100.42100.69800.1235300 | Block Work | 9d | 2025-10-25 | 2025-12-17 | 3030FS+0.25d |  | GC1 | 8842204 |
| 3047 | 37100.37400.37600.38700.39700.41100.42100.69800.1235400 | Door Frame Fixing | 5.62d | 2025-12-17 | 2025-12-22 | 3031, 3046 |  | GC1 | 8842214 |
| 3048 | 37100.37400.37600.38700.39700.41100.42100.69800.1235500 | Internal Plumbing Works | 11.25d | 2025-12-20 | 2025-12-30 | 3032, 3046 |  | GC1 | 8842224 |
| 3049 | 37100.37400.37600.38700.39700.41100.42100.69800.1235600 | Waterproofing | 13.5d | 2026-01-03 | 2026-01-15 | 3033, 3048 |  | GC1 | 8842234 |
| 3050 | 37100.37400.37600.38700.39700.41100.42100.69800.1235700 | Internal Plaster | 10.12d | 2025-12-24 | 2026-01-02 | 3034FS+0.25d, 3047FS+0.25d |  | GC1 | 8842244 |
| 3051 | 37100.37400.37600.38700.39700.41100.42100.69800.1235800 | IPS flooring work | 10.12d | 2026-01-15 | 2026-01-24 | 3035, 3047, 3049, 3050 |  | GC1 | 8842254 |
| 3052 | 37100.37400.37600.38700.39700.41100.42100.69800.1235900 | Toilet dado work | 9d | 2026-01-15 | 2026-01-23 | 3036, 3049, 3050 |  | GC1 | 8842264 |
| 3053 | 37100.37400.37600.38700.39700.41100.42100.69800.1236000 | Toilet flooring work | 7.88d | 2026-01-23 | 2026-01-30 | 3037, 3052 |  | GC1 | 8842274 |
| 3054 | 37100.37400.37600.38700.39700.41100.42100.69800.1236100 | Living dinning flooring | 4.5d | 2026-01-30 | 2026-02-03 | 3038FS+0.25d, 3053FS+0.25d |  | GC1 | 8842284 |
| 3055 | 37100.37400.37600.38700.39700.41100.42100.69800.1236200 | Aluminium door-window fixing | 9d | 2026-02-04 | 2026-02-12 | 3039FS+0.25d, 3054FS+0.25d |  | GC1 | 8842294 |
| 3056 | 37100.37400.37600.38700.39700.41100.42100.69800.1236300 | Putty primer coat | 6.75d | 2026-02-03 | 2026-02-09 | 3040, 3054 |  | GC1 | 8842304 |
| 3057 | 37100.37400.37600.38700.39700.41100.42100.69800.1236400 | Door shutter fixing | 9d | 2026-02-03 | 2026-02-11 | 3041, 3054 |  | GC1 | 8842314 |
| 3058 | 37100.37400.37600.38700.39700.41100.42100.69800.1236500 | Electrical wiring work | 13.5d | 2026-02-11 | 2026-02-23 | 3042, 3057 |  | GC1 | 8842324 |
| 3059 | 37100.37400.37600.38700.39700.41100.42100.69800.1236600 | Painting 1st coat | 13.5d | 2026-02-23 | 2026-03-07 | 3043, 3056, 3057, 3058 |  | GC1 | 8842334 |
| 3060 | 37100.37400.37600.38700.39700.41100.42100.69800.1236700 | False ceiling | 11.25d | 2026-03-07 | 2026-03-17 | 3044, 3059 |  | GC1 | 8842344 |
| 3061 | 37100.37400.37600.38700.39700.41100.42100.69900 | **4th Floor** | 115.38d | 2025-12-17 | 2026-03-29 |  | start no earlier than 2025-12-17 | GC1 | 8807274 |
| 3062 | 37100.37400.37600.38700.39700.41100.42100.69900.1236800 | Block Work | 9d | 2025-12-17 | 2025-12-25 | 3046FS+0.25d |  | GC1 | 8842354 |
| 3063 | 37100.37400.37600.38700.39700.41100.42100.69900.1236900 | Door Frame Fixing | 5.62d | 2025-12-25 | 2025-12-30 | 3047, 3062 |  | GC1 | 8842364 |
| 3064 | 37100.37400.37600.38700.39700.41100.42100.69900.1237000 | Internal Plumbing Works | 11.25d | 2025-12-30 | 2026-01-09 | 3048, 3062 |  | GC1 | 8842374 |
| 3065 | 37100.37400.37600.38700.39700.41100.42100.69900.1237100 | Waterproofing | 13.5d | 2026-01-15 | 2026-01-27 | 3049, 3064 |  | GC1 | 8842384 |
| 3066 | 37100.37400.37600.38700.39700.41100.42100.69900.1237200 | Internal Plaster | 10.12d | 2026-01-02 | 2026-01-11 | 3050FS+0.25d, 3063FS+0.25d |  | GC1 | 8842394 |
| 3067 | 37100.37400.37600.38700.39700.41100.42100.69900.1237300 | IPS flooring work | 10.12d | 2026-01-27 | 2026-02-05 | 3051, 3063, 3065, 3066 |  | GC1 | 8842404 |
| 3068 | 37100.37400.37600.38700.39700.41100.42100.69900.1237400 | Toilet dado work | 9d | 2026-01-27 | 2026-02-04 | 3052, 3065, 3066 |  | GC1 | 8842414 |
| 3069 | 37100.37400.37600.38700.39700.41100.42100.69900.1237500 | Toilet flooring work | 7.88d | 2026-02-04 | 2026-02-11 | 3053, 3068 |  | GC1 | 8842424 |
| 3070 | 37100.37400.37600.38700.39700.41100.42100.69900.1237600 | Living dinning flooring | 4.5d | 2026-02-11 | 2026-02-15 | 3054FS+0.25d, 3069FS+0.25d |  | GC1 | 8842434 |
| 3071 | 37100.37400.37600.38700.39700.41100.42100.69900.1237700 | Aluminium door-window fixing | 9d | 2026-02-16 | 2026-02-24 | 3055FS+0.25d, 3070FS+0.25d |  | GC1 | 8842444 |
| 3072 | 37100.37400.37600.38700.39700.41100.42100.69900.1237800 | Putty primer coat | 6.75d | 2026-02-15 | 2026-02-21 | 3056, 3070 |  | GC1 | 8842454 |
| 3073 | 37100.37400.37600.38700.39700.41100.42100.69900.1237900 | Door shutter fixing | 9d | 2026-02-15 | 2026-02-23 | 3057, 3070 |  | GC1 | 8842464 |
| 3074 | 37100.37400.37600.38700.39700.41100.42100.69900.1238000 | Electrical wiring work | 13.5d | 2026-02-23 | 2026-03-07 | 3058, 3073 |  | GC1 | 8842474 |
| 3075 | 37100.37400.37600.38700.39700.41100.42100.69900.1238100 | Painting 1st coat | 13.5d | 2026-03-07 | 2026-03-19 | 3059, 3072, 3073, 3074 |  | GC1 | 8842484 |
| 3076 | 37100.37400.37600.38700.39700.41100.42100.69900.1238200 | False ceiling | 11.25d | 2026-03-19 | 2026-03-29 | 3060, 3075 |  | GC1 | 8842494 |

| ID | WBS | Task | Duration | Start | Finish | Predecessors | Constraint | Calendar | Unique_Task_ID |
| --- | --- | --- | --- | --- | --- | --- | --- | --- | --- |
| 3077 | 37100.37400.37600.38700.39700.41100.42100.70000 | **5th Floor** | 123d | 2025-12-25 | 2026-04-13 |  | start no earlier than 2025-12-25 | GC1 | 8807284 |
| 3078 | 37100.37400.37600.38700.39700.41100.42100.70000.1238300 | Block Work | 9d | 2025-12-25 | 2026-01-02 | 3062FS+0.25d |  | GC1 | 8842504 |
| 3079 | 37100.37400.37600.38700.39700.41100.42100.70000.1238400 | Door Frame Fixing | 5.62d | 2026-01-02 | 2026-01-07 | 3063, 3078 |  | GC1 | 8842514 |
| 3080 | 37100.37400.37600.38700.39700.41100.42100.70000.1238500 | Internal Plumbing Works | 11.25d | 2026-01-09 | 2026-01-19 | 3064, 3078 |  | GC1 | 8842524 |
| 3081 | 37100.37400.37600.38700.39700.41100.42100.70000.1238600 | Waterproofing | 13.5d | 2026-01-27 | 2026-02-08 | 3065, 3080 |  | GC1 | 8842534 |
| 3082 | 37100.37400.37600.38700.39700.41100.42100.70000.1238700 | Internal Plaster | 10.12d | 2026-01-11 | 2026-01-20 | 3066FS+0.25d, 3079FS+0.25d |  | GC1 | 8842544 |
| 3083 | 37100.37400.37600.38700.39700.41100.42100.70000.1238800 | IPS flooring work | 10.12d | 2026-02-08 | 2026-02-17 | 3067, 3079, 3081, 3082 |  | GC1 | 8842554 |
| 3084 | 37100.37400.37600.38700.39700.41100.42100.70000.1238900 | Toilet dado work | 9d | 2026-02-08 | 2026-02-16 | 3068, 3081, 3082 |  | GC1 | 8842564 |
| 3085 | 37100.37400.37600.38700.39700.41100.42100.70000.1239000 | Toilet flooring work | 7.88d | 2026-02-16 | 2026-02-23 | 3069, 3084 |  | GC1 | 8842574 |
| 3086 | 37100.37400.37600.38700.39700.41100.42100.70000.1239100 | Living dinning flooring | 4.5d | 2026-02-23 | 2026-02-27 | 3070FS+0.25d, 3085FS+0.25d |  | GC1 | 8842584 |
| 3087 | 37100.37400.37600.38700.39700.41100.42100.70000.1239200 | Aluminium door-window fixing | 9d | 2026-02-28 | 2026-03-08 | 3071FS+0.25d, 3086FS+0.25d |  | GC1 | 8842594 |
| 3088 | 37100.37400.37600.38700.39700.41100.42100.70000.1239300 | Putty primer coat | 6.75d | 2026-02-27 | 2026-03-05 | 3072, 3086 |  | GC1 | 8842604 |
| 3089 | 37100.37400.37600.38700.39700.41100.42100.70000.1239400 | Door shutter fixing | 9d | 2026-02-27 | 2026-03-07 | 3073, 3086 |  | GC1 | 8842614 |
| 3090 | 37100.37400.37600.38700.39700.41100.42100.70000.1239500 | Electrical wiring work | 13.5d | 2026-03-07 | 2026-03-19 | 3074, 3089 |  | GC1 | 8842624 |
| 3091 | 37100.37400.37600.38700.39700.41100.42100.70000.1239600 | Painting 1st coat | 16.88d | 2026-03-19 | 2026-04-03 | 3075, 3088, 3089, 3090 |  | GC1 | 8842634 |
| 3092 | 37100.37400.37600.38700.39700.41100.42100.70000.1239700 | False ceiling | 11.25d | 2026-04-03 | 2026-04-13 | 3076, 3091 |  | GC1 | 8842644 |
| 3093 | 37100.37400.37600.38700.39700.41100.42100.70100 | **6th Floor** | 127.25d | 2026-01-02 | 2026-04-25 |  | start no earlier than 2026-01-02 | GC1 | 8807294 |
| 3094 | 37100.37400.37600.38700.39700.41100.42100.70100.1239800 | Block Work | 9d | 2026-01-02 | 2026-01-10 | 3078FS+0.25d |  | GC1 | 8842654 |
| 3095 | 37100.37400.37600.38700.39700.41100.42100.70100.1239900 | Door Frame Fixing | 5.62d | 2026-01-07 | 2026-01-12 | 2827, 3079 |  | GC1 | 8842664 |
| 3096 | 37100.37400.37600.38700.39700.41100.42100.70100.1240000 | Internal Plumbing Works | 11.25d | 2026-01-19 | 2026-01-29 | 3080, 3094 |  | GC1 | 8842674 |
| 3097 | 37100.37400.37600.38700.39700.41100.42100.70100.1240100 | Waterproofing | 13.5d | 2026-02-08 | 2026-02-20 | 3081, 3096 |  | GC1 | 8842684 |
| 3098 | 37100.37400.37600.38700.39700.41100.42100.70100.1240200 | Internal Plaster | 10.12d | 2026-01-20 | 2026-01-29 | 3082FS+0.25d, 3095FS+0.25d |  | GC1 | 8842694 |
| 3099 | 37100.37400.37600.38700.39700.41100.42100.70100.1240300 | IPS flooring work | 10.12d | 2026-02-20 | 2026-03-01 | 3083, 3095, 3097, 3098 |  | GC1 | 8842704 |
| 3100 | 37100.37400.37600.38700.39700.41100.42100.70100.1240400 | Toilet dado work | 9d | 2026-02-20 | 2026-02-28 | 3084, 3097, 3098 |  | GC1 | 8842714 |
| 3101 | 37100.37400.37600.38700.39700.41100.42100.70100.1240500 | Toilet flooring work | 7.88d | 2026-02-28 | 2026-03-07 | 3085, 3100 |  | GC1 | 8842724 |
| 3102 | 37100.37400.37600.38700.39700.41100.42100.70100.1240600 | Living dinning flooring | 4.5d | 2026-03-07 | 2026-03-11 | 3086FS+0.25d, 3101FS+0.25d |  | GC1 | 8842734 |
| 3103 | 37100.37400.37600.38700.39700.41100.42100.70100.1240700 | Aluminium door-window fixing | 9d | 2026-03-12 | 2026-03-20 | 3087FS+0.25d, 3102FS+0.25d |  | GC1 | 8842744 |
| 3104 | 37100.37400.37600.38700.39700.41100.42100.70100.1240800 | Putty primer coat | 6.75d | 2026-03-11 | 2026-03-17 | 3088, 3102 |  | GC1 | 8842754 |
| 3105 | 37100.37400.37600.38700.39700.41100.42100.70100.1240900 | Door shutter fixing | 9d | 2026-03-11 | 2026-03-19 | 3089, 3102 |  | GC1 | 8842764 |
| 3106 | 37100.37400.37600.38700.39700.41100.42100.70100.1241000 | Electrical wiring work | 13.5d | 2026-03-19 | 2026-03-31 | 3090, 3105 |  | GC1 | 8842774 |
| 3107 | 37100.37400.37600.38700.39700.41100.42100.70100.1241100 | Painting 1st coat | 13.5d | 2026-04-03 | 2026-04-15 | 3091, 3104, 3105, 3106 |  | GC1 | 8842784 |
| 3108 | 37100.37400.37600.38700.39700.41100.42100.70100.1241200 | False ceiling | 11.25d | 2026-04-15 | 2026-04-25 | 3092, 3107 |  | GC1 | 8842794 |

| ID | WBS | Task | Duration | Start | Finish | Predecessors | Constraint | Calendar | Unique_Task_ID |
| --- | --- | --- | --- | --- | --- | --- | --- | --- | --- |
| 3109 | 37100.37400.37600.38700.39700.41100.42100.70200 | **7th Floor** | 131.5d | 2026-01-10 | 2026-05-07 |  | start no earlier than 2026-01-10 | GC1 | 8807304 |
| 3110 | 37100.37400.37600.38700.39700.41100.42100.70200.1241300 | Block Work | 9d | 2026-01-10 | 2026-01-18 | 3094FS+0.25d |  | GC1 | 8842804 |
| 3111 | 37100.37400.37600.38700.39700.41100.42100.70200.1241400 | Door Frame Fixing | 5.62d | 2026-01-18 | 2026-01-23 | 3095, 3110 |  | GC1 | 8842814 |
| 3112 | 37100.37400.37600.38700.39700.41100.42100.70200.1241500 | Internal Plumbing Works | 11.25d | 2026-01-29 | 2026-02-08 | 3096, 3110 |  | GC1 | 8842824 |
| 3113 | 37100.37400.37600.38700.39700.41100.42100.70200.1241600 | Waterproofing | 13.5d | 2026-02-20 | 2026-03-04 | 3097, 3112 |  | GC1 | 8842834 |
| 3114 | 37100.37400.37600.38700.39700.41100.42100.70200.1241700 | Internal Plaster | 10.12d | 2026-01-30 | 2026-02-08 | 3098FS+0.25d, 3111FS+0.25d |  | GC1 | 8842844 |
| 3115 | 37100.37400.37600.38700.39700.41100.42100.70200.1241800 | IPS flooring work | 10.12d | 2026-03-04 | 2026-03-13 | 3099, 3111, 3113, 3114 |  | GC1 | 8842854 |
| 3116 | 37100.37400.37600.38700.39700.41100.42100.70200.1241900 | Toilet dado work | 9d | 2026-03-04 | 2026-03-12 | 3100, 3113, 3114 |  | GC1 | 8842864 |
| 3117 | 37100.37400.37600.38700.39700.41100.42100.70200.1242000 | Toilet flooring work | 7.88d | 2026-03-12 | 2026-03-19 | 3101, 3116 |  | GC1 | 8842874 |
| 3118 | 37100.37400.37600.38700.39700.41100.42100.70200.1242100 | Living dinning flooring | 3.38d | 2026-03-12 | 2026-03-15 | 3102FS+0.25d, 3111 |  | GC1 | 8842884 |
| 3119 | 37100.37400.37600.38700.39700.41100.42100.70200.1242200 | Aluminium door-window fixing | 9d | 2026-03-20 | 2026-03-28 | 3103FS+0.25d |  | GC1 | 8842894 |
| 3120 | 37100.37400.37600.38700.39700.41100.42100.70200.1242300 | Putty primer coat | 6.75d | 2026-03-17 | 2026-03-23 | 3104, 3118 |  | GC1 | 8842904 |
| 3121 | 37100.37400.37600.38700.39700.41100.42100.70200.1242400 | Door shutter fixing | 9d | 2026-03-19 | 2026-03-27 | 3105, 3118 |  | GC1 | 8842914 |
| 3122 | 37100.37400.37600.38700.39700.41100.42100.70200.1242500 | Electrical wiring work | 13.5d | 2026-03-31 | 2026-04-12 | 3106, 3121 |  | GC1 | 8842924 |
| 3123 | 37100.37400.37600.38700.39700.41100.42100.70200.1242600 | Painting 1st coat | 13.5d | 2026-04-15 | 2026-04-27 | 3107, 3120, 3121, 3122 |  | GC1 | 8842934 |
| 3124 | 37100.37400.37600.38700.39700.41100.42100.70200.1242700 | False ceiling | 11.25d | 2026-04-27 | 2026-05-07 | 3108, 3123 |  | GC1 | 8842944 |
| 3125 | 37100.37400.37600.38700.39700.41100.42100.70300 | **8th Floor** | 135.75d | 2026-01-19 | 2026-05-19 |  | start no earlier than 2026-01-19 | GC1 | 8807314 |
| 3126 | 37100.37400.37600.38700.39700.41100.42100.70300.1242800 | Block Work | 9d | 2026-01-19 | 2026-01-27 | 3110FS+0.25d |  | GC1 | 8842954 |
| 3127 | 37100.37400.37600.38700.39700.41100.42100.70300.1242900 | Door Frame Fixing | 5.62d | 2026-01-27 | 2026-02-01 | 3111, 3126 |  | GC1 | 8842964 |
| 3128 | 37100.37400.37600.38700.39700.41100.42100.70300.1243000 | Internal Plumbing Works | 11.25d | 2026-02-08 | 2026-02-18 | 3112, 3126 |  | GC1 | 8842974 |
| 3129 | 37100.37400.37600.38700.39700.41100.42100.70300.1243100 | Waterproofing | 13.5d | 2026-03-04 | 2026-03-16 | 3113, 3128 |  | GC1 | 8842984 |
| 3130 | 37100.37400.37600.38700.39700.41100.42100.70300.1243200 | Internal Plaster | 10.12d | 2026-02-08 | 2026-02-17 | 3114FS+0.25d, 3127FS+0.25d |  | GC1 | 8842994 |
| 3131 | 37100.37400.37600.38700.39700.41100.42100.70300.1243300 | IPS flooring work | 10.12d | 2026-03-16 | 2026-03-25 | 3115, 3127, 3129, 3130 |  | GC1 | 8843004 |
| 3132 | 37100.37400.37600.38700.39700.41100.42100.70300.1243400 | Toilet dado work | 9d | 2026-03-16 | 2026-03-24 | 3116, 3129, 3130 |  | GC1 | 8843014 |
| 3133 | 37100.37400.37600.38700.39700.41100.42100.70300.1243500 | Toilet flooring work | 7.88d | 2026-03-24 | 2026-03-31 | 3117, 3132 |  | GC1 | 8843024 |
| 3134 | 37100.37400.37600.38700.39700.41100.42100.70300.1243600 | Living dinning flooring | 3.38d | 2026-03-15 | 2026-03-18 | 3118FS+0.25d |  | GC1 | 8843034 |
| 3135 | 37100.37400.37600.38700.39700.41100.42100.70300.1243700 | Aluminium door-window fixing | 13.5d | 2026-03-28 | 2026-04-09 | 3119FS+0.25d, 3134FS+0.25d |  | GC1 | 8843044 |
| 3136 | 37100.37400.37600.38700.39700.41100.42100.70300.1243800 | Putty primer coat | 6.75d | 2026-03-23 | 2026-03-29 | 3120, 3134 |  | GC1 | 8843054 |
| 3137 | 37100.37400.37600.38700.39700.41100.42100.70300.1243900 | Door shutter fixing | 9d | 2026-03-27 | 2026-04-04 | 3121, 3134 |  | GC1 | 8843064 |
| 3138 | 37100.37400.37600.38700.39700.41100.42100.70300.1244000 | Electrical wiring work | 13.5d | 2026-04-12 | 2026-04-24 | 3122, 3137 |  | GC1 | 8843074 |
| 3139 | 37100.37400.37600.38700.39700.41100.42100.70300.1244100 | Painting 1st coat | 13.5d | 2026-04-27 | 2026-05-09 | 3123, 3136, 3137, 3138 |  | GC1 | 8843084 |
| 3140 | 37100.37400.37600.38700.39700.41100.42100.70300.1244200 | False ceiling | 11.25d | 2026-05-09 | 2026-05-19 | 3124, 3139 |  | GC1 | 8843094 |

| ID | WBS | Task | Duration | Start | Finish | Predecessors | Constraint | Calendar | Unique_Task_ID |
| --- | --- | --- | --- | --- | --- | --- | --- | --- | --- |
| 3141 | 37100.37400.37600.38700.39700.41100.42100.70500 | **9th Floor** | 140d | 2026-01-27 | 2026-05-31 |  | start no earlier than 2026-01-27 | GC1 | 8807324 |
| 3142 | 37100.37400.37600.38700.39700.41100.42100.70500.1244300 | Block Work | 9d | 2026-01-27 | 2026-02-04 | 3126FS+0.25d |  | GC1 | 8843104 |
| 3143 | 37100.37400.37600.38700.39700.41100.42100.70500.1244400 | Door Frame Fixing | 5.62d | 2026-02-04 | 2026-02-09 | 3127, 3142 |  | GC1 | 8843114 |
| 3144 | 37100.37400.37600.38700.39700.41100.42100.70500.1244500 | Internal Plumbing Works | 11.25d | 2026-02-18 | 2026-02-28 | 3128, 3142 |  | GC1 | 8843124 |
| 3145 | 37100.37400.37600.38700.39700.41100.42100.70500.1244600 | Waterproofing | 13.5d | 2026-03-16 | 2026-03-28 | 3129, 3144 |  | GC1 | 8843134 |
| 3146 | 37100.37400.37600.38700.39700.41100.42100.70500.1244700 | Internal Plaster | 10.12d | 2026-02-17 | 2026-02-26 | 3130FS+0.25d, 3143FS+0.25d |  | GC1 | 8843144 |
| 3147 | 37100.37400.37600.38700.39700.41100.42100.70500.1244800 | IPS flooring work | 10.12d | 2026-03-28 | 2026-04-06 | 3131, 3143, 3145, 3146 |  | GC1 | 8843154 |
| 3148 | 37100.37400.37600.38700.39700.41100.42100.70500.1244900 | Toilet dado work | 9d | 2026-03-28 | 2026-04-05 | 3132, 3145, 3146 |  | GC1 | 8843164 |
| 3149 | 37100.37400.37600.38700.39700.41100.42100.70500.1245000 | Toilet flooring work | 7.88d | 2026-04-05 | 2026-04-12 | 3133, 3148 |  | GC1 | 8843174 |
| 3150 | 37100.37400.37600.38700.39700.41100.42100.70500.1245100 | Living dinning flooring | 3.38d | 2026-03-18 | 2026-03-21 | 3134FS+0.25d |  | GC1 | 8843184 |
| 3151 | 37100.37400.37600.38700.39700.41100.42100.70500.1245200 | Aluminium door-window fixing | 13.5d | 2026-04-09 | 2026-04-21 | 3135FS+0.25d, 3150FS+0.25d |  | GC1 | 8843194 |
| 3152 | 37100.37400.37600.38700.39700.41100.42100.70500.1245300 | Putty primer coat | 6.75d | 2026-03-29 | 2026-04-04 | 3136, 3150 |  | GC1 | 8843204 |
| 3153 | 37100.37400.37600.38700.39700.41100.42100.70500.1245400 | Door shutter fixing | 9d | 2026-04-04 | 2026-04-12 | 3137, 3150 |  | GC1 | 8843214 |
| 3154 | 37100.37400.37600.38700.39700.41100.42100.70500.1245500 | Electrical wiring work | 13.5d | 2026-04-24 | 2026-05-06 | 3138, 3153 |  | GC1 | 8843224 |
| 3155 | 37100.37400.37600.38700.39700.41100.42100.70500.1245600 | Painting 1st coat | 13.5d | 2026-05-09 | 2026-05-21 | 3139, 3152, 3153, 3154 |  | GC1 | 8843234 |
| 3156 | 37100.37400.37600.38700.39700.41100.42100.70500.1245700 | False ceiling | 11.25d | 2026-05-21 | 2026-05-31 | 3140, 3155 |  | GC1 | 8843244 |
| 3157 | 37100.37400.37600.38700.39700.41100.42100.70600 | **10th Floor** | 144.25d | 2026-02-04 | 2026-06-12 |  | start no earlier than 2026-02-04 | GC1 | 8807334 |
| 3158 | 37100.37400.37600.38700.39700.41100.42100.70600.1245800 | Block Work | 9d | 2026-02-04 | 2026-02-12 | 3142FS+0.25d |  | GC1 | 8843254 |
| 3159 | 37100.37400.37600.38700.39700.41100.42100.70600.1245900 | Door Frame Fixing | 5.62d | 2026-02-12 | 2026-02-17 | 3143, 3158 |  | GC1 | 8843264 |
| 3160 | 37100.37400.37600.38700.39700.41100.42100.70600.1246000 | Internal Plumbing Works | 11.25d | 2026-02-28 | 2026-03-10 | 3144, 3158 |  | GC1 | 8843274 |
| 3161 | 37100.37400.37600.38700.39700.41100.42100.70600.1246100 | Waterproofing | 13.5d | 2026-03-28 | 2026-04-09 | 3145, 3160 |  | GC1 | 8843284 |
| 3162 | 37100.37400.37600.38700.39700.41100.42100.70600.1246200 | Internal Plaster | 10.12d | 2026-02-26 | 2026-03-07 | 3146FS+0.25d, 3159FS+0.25d |  | GC1 | 8843294 |
| 3163 | 37100.37400.37600.38700.39700.41100.42100.70600.1246300 | IPS flooring work | 10.12d | 2026-04-09 | 2026-04-18 | 3147, 3159, 3161, 3162 |  | GC1 | 8843304 |
| 3164 | 37100.37400.37600.38700.39700.41100.42100.70600.1246400 | Toilet dado work | 9d | 2026-04-09 | 2026-04-17 | 3148, 3161, 3162 |  | GC1 | 8843314 |
| 3165 | 37100.37400.37600.38700.39700.41100.42100.70600.1246500 | Toilet flooring work | 7.88d | 2026-04-17 | 2026-04-24 | 3149, 3164 |  | GC1 | 8843324 |
| 3166 | 37100.37400.37600.38700.39700.41100.42100.70600.1246600 | Living dinning flooring | 3.38d | 2026-03-21 | 2026-03-24 | 3150FS+0.25d |  | GC1 | 8843334 |
| 3167 | 37100.37400.37600.38700.39700.41100.42100.70600.1246700 | Aluminium door-window fixing | 13.5d | 2026-04-21 | 2026-05-03 | 3151FS+0.25d, 3166FS+0.25d |  | GC1 | 8843344 |
| 3168 | 37100.37400.37600.38700.39700.41100.42100.70600.1246800 | Putty primer coat | 6.75d | 2026-04-04 | 2026-04-10 | 3152, 3166 |  | GC1 | 8843354 |
| 3169 | 37100.37400.37600.38700.39700.41100.42100.70600.1246900 | Door shutter fixing | 9d | 2026-04-12 | 2026-04-20 | 3153, 3166 |  | GC1 | 8843364 |
| 3170 | 37100.37400.37600.38700.39700.41100.42100.70600.1247000 | Electrical wiring work | 13.5d | 2026-05-06 | 2026-05-18 | 3154, 3169 |  | GC1 | 8843374 |
| 3171 | 37100.37400.37600.38700.39700.41100.42100.70600.1247100 | Painting 1st coat | 13.5d | 2026-05-21 | 2026-06-02 | 3155, 3168, 3169, 3170 |  | GC1 | 8843384 |
| 3172 | 37100.37400.37600.38700.39700.41100.42100.70600.1247200 | False ceiling | 11.25d | 2026-06-02 | 2026-06-12 | 3156, 3171 |  | GC1 | 8843394 |

| ID | WBS | Task | Duration | Start | Finish | Predecessors | Constraint | Calendar | Unique_Task_ID |
| --- | --- | --- | --- | --- | --- | --- | --- | --- | --- |
| 3173 | 37100.37400.37600.38700.39700.41100.42100.70700 | **11th Floor** | 148.5d | 2026-02-12 | 2026-06-24 |  | start no earlier than 2026-02-12 | GC1 | 8807344 |
| 3174 | 37100.37400.37600.38700.39700.41100.42100.70700.1247300 | Block Work | 9d | 2026-02-12 | 2026-02-20 | 3158FS+0.25d |  | GC1 | 8843404 |
| 3175 | 37100.37400.37600.38700.39700.41100.42100.70700.1247400 | Door Frame Fixing | 5.62d | 2026-02-20 | 2026-02-25 | 3159, 3174 |  | GC1 | 8843414 |
| 3176 | 37100.37400.37600.38700.39700.41100.42100.70700.1247500 | Internal Plumbing Works | 11.25d | 2026-03-10 | 2026-03-20 | 3160, 3174 |  | GC1 | 8843424 |
| 3177 | 37100.37400.37600.38700.39700.41100.42100.70700.1247600 | Waterproofing | 13.5d | 2026-04-09 | 2026-04-21 | 3161, 3176 |  | GC1 | 8843434 |
| 3178 | 37100.37400.37600.38700.39700.41100.42100.70700.1247700 | Internal Plaster | 10.12d | 2026-03-08 | 2026-03-17 | 3162FS+0.25d, 3175FS+0.25d |  | GC1 | 8843444 |
| 3179 | 37100.37400.37600.38700.39700.41100.42100.70700.1247800 | IPS flooring work | 10.12d | 2026-04-21 | 2026-04-30 | 3163, 3175, 3176, 3177 |  | GC1 | 8843454 |
| 3180 | 37100.37400.37600.38700.39700.41100.42100.70700.1247900 | Toilet dado work | 9d | 2026-04-21 | 2026-04-29 | 3164, 3177, 3178 |  | GC1 | 8843464 |
| 3181 | 37100.37400.37600.38700.39700.41100.42100.70700.1248000 | Toilet flooring work | 7.88d | 2026-04-29 | 2026-05-06 | 3165, 3180 |  | GC1 | 8843474 |
| 3182 | 37100.37400.37600.38700.39700.41100.42100.70700.1248100 | Living dinning flooring | 4.5d | 2026-03-24 | 2026-03-28 | 3166FS+0.25d |  | GC1 | 8843484 |
| 3183 | 37100.37400.37600.38700.39700.41100.42100.70700.1248200 | Aluminium door-window fixing | 13.5d | 2026-05-04 | 2026-05-16 | 3167FS+0.25d, 3182FS+0.25d |  | GC1 | 8843494 |
| 3184 | 37100.37400.37600.38700.39700.41100.42100.70700.1248300 | Putty primer coat | 6.75d | 2026-04-10 | 2026-04-16 | 3168, 3182 |  | GC1 | 8843504 |
| 3185 | 37100.37400.37600.38700.39700.41100.42100.70700.1248400 | Door shutter fixing | 9d | 2026-04-20 | 2026-04-28 | 3169, 3182 |  | GC1 | 8843514 |
| 3186 | 37100.37400.37600.38700.39700.41100.42100.70700.1248500 | Electrical wiring work | 13.5d | 2026-05-18 | 2026-05-30 | 3170, 3185 |  | GC1 | 8843524 |
| 3187 | 37100.37400.37600.38700.39700.41100.42100.70700.1248600 | Painting 1st coat | 13.5d | 2026-06-02 | 2026-06-14 | 3171, 3184, 3185, 3186 |  | GC1 | 8843534 |
| 3188 | 37100.37400.37600.38700.39700.41100.42100.70700.1248700 | False ceiling | 11.25d | 2026-06-14 | 2026-06-24 | 3172, 3187 |  | GC1 | 8843544 |
| 3189 | 37100.37400.37600.38700.39700.41100.42100.70800 | **12th Floor** | 152.75d | 2026-02-21 | 2026-07-06 |  | start no earlier than 2026-02-21 | GC1 | 8807354 |
| 3190 | 37100.37400.37600.38700.39700.41100.42100.70800.1248800 | Block Work | 9d | 2026-02-21 | 2026-03-01 | 3174FS+0.25d |  | GC1 | 8843554 |
| 3191 | 37100.37400.37600.38700.39700.41100.42100.70800.1248900 | Door Frame Fixing | 5.62d | 2026-03-01 | 2026-03-06 | 3175, 3190 |  | GC1 | 8843564 |
| 3192 | 37100.37400.37600.38700.39700.41100.42100.70800.1249000 | Internal Plumbing Works | 11.25d | 2026-03-20 | 2026-03-30 | 3176, 3190 |  | GC1 | 8843574 |
| 3193 | 37100.37400.37600.38700.39700.41100.42100.70800.1249100 | Waterproofing | 13.5d | 2026-04-21 | 2026-05-03 | 3177, 3192 |  | GC1 | 8843584 |
| 3194 | 37100.37400.37600.38700.39700.41100.42100.70800.1249200 | Internal Plaster | 7.88d | 2026-03-17 | 2026-03-24 | 3178FS+0.25d, 3191FS+0.25d |  | GC1 | 8843594 |
| 3195 | 37100.37400.37600.38700.39700.41100.42100.70800.1249300 | IPS flooring work | 10.12d | 2026-05-03 | 2026-05-12 | 3179, 3191, 3192, 3193 |  | GC1 | 8843604 |
| 3196 | 37100.37400.37600.38700.39700.41100.42100.70800.1249400 | Toilet dado work | 9d | 2026-05-03 | 2026-05-11 | 3180, 3193, 3194 |  | GC1 | 8843614 |
| 3197 | 37100.37400.37600.38700.39700.41100.42100.70800.1249500 | Toilet flooring work | 7.88d | 2026-05-11 | 2026-05-18 | 3181, 3196 |  | GC1 | 8843624 |
| 3198 | 37100.37400.37600.38700.39700.41100.42100.70800.1249600 | Living dinning flooring | 13.5d | 2026-03-29 | 2026-04-10 | 3182FS+0.25d, 3191FS+0.25d |  | GC1 | 8843634 |
| 3199 | 37100.37400.37600.38700.39700.41100.42100.70800.1249700 | Aluminium door-window fixing | 13.5d | 2026-05-16 | 2026-05-28 | 3183, 3195, 3198 |  | GC1 | 8843644 |
| 3200 | 37100.37400.37600.38700.39700.41100.42100.70800.1249800 | Putty primer coat | 6.75d | 2026-04-16 | 2026-04-22 | 3184, 3198 |  | GC1 | 8843654 |
| 3201 | 37100.37400.37600.38700.39700.41100.42100.70800.1249900 | Door shutter fixing | 9d | 2026-04-28 | 2026-05-06 | 3185, 3198 |  | GC1 | 8843664 |
| 3202 | 37100.37400.37600.38700.39700.41100.42100.70800.1250000 | Electrical wiring work | 13.5d | 2026-05-30 | 2026-06-11 | 3186, 3201 |  | GC1 | 8843674 |
| 3203 | 37100.37400.37600.38700.39700.41100.42100.70800.1250100 | Painting 1st coat | 13.5d | 2026-06-14 | 2026-06-26 | 3187, 3200, 3201, 3202 |  | GC1 | 8843684 |
| 3204 | 37100.37400.37600.38700.39700.41100.42100.70800.1250200 | False ceiling | 11.25d | 2026-06-26 | 2026-07-06 | 3188, 3203 |  | GC1 | 8843694 |

| ID | WBS | Task | Duration | Start | Finish | Predecessors | Constraint | Calendar | Unique_Task_ID |
| --- | --- | --- | --- | --- | --- | --- | --- | --- | --- |
| 3205 | 37100.37400.37600.38700.39700.41100.42100.70900 | **13th Floor** | 165.75d | 2026-03-01 | 2026-07-26 |  | start no earlier than 2026-03-01 | GC1 | 8807364 |
| 3206 | 37100.37400.37600.38700.39700.41100.42100.70900.1250300 | Block Work | 9d | 2026-03-01 | 2026-03-09 | 3190FS+0.25d |  | GC1 | 8843704 |
| 3207 | 37100.37400.37600.38700.39700.41100.42100.70900.1250400 | Door Frame Fixing | 10.12d | 2026-03-09 | 2026-03-18 | 3191, 3206 |  | GC1 | 8843714 |
| 3208 | 37100.37400.37600.38700.39700.41100.42100.70900.1250500 | Internal Plumbing Works | 11.25d | 2026-03-30 | 2026-04-09 | 3192, 3206 |  | GC1 | 8843724 |
| 3209 | 37100.37400.37600.38700.39700.41100.42100.70900.1250600 | Waterproofing | 13.5d | 2026-05-03 | 2026-05-15 | 3193, 3208 |  | GC1 | 8843734 |
| 3210 | 37100.37400.37600.38700.39700.41100.42100.70900.1250700 | Internal Plaster | 5.62d | 2026-03-24 | 2026-03-29 | 3194FS+0.25d, 3207FS+0.25d |  | GC1 | 8843744 |
| 3211 | 37100.37400.37600.38700.39700.41100.42100.70900.1250800 | IPS flooring work | 10.12d | 2026-05-15 | 2026-05-24 | 3195, 3207, 3209, 3210 |  | GC1 | 8843754 |
| 3212 | 37100.37400.37600.38700.39700.41100.42100.70900.1250900 | Toilet dado work | 9d | 2026-05-15 | 2026-05-23 | 3196, 3209, 3210 |  | GC1 | 8843764 |
| 3213 | 37100.37400.37600.38700.39700.41100.42100.70900.1251000 | Toilet flooring work | 7.88d | 2026-05-23 | 2026-05-30 | 3197, 3212 |  | GC1 | 8843774 |
| 3214 | 37100.37400.37600.38700.39700.41100.42100.70900.1251100 | Living dinning flooring | 16.88d | 2026-05-30 | 2026-06-14 | 3198, 3207, 3213 |  | GC1 | 8843784 |
| 3215 | 37100.37400.37600.38700.39700.41100.42100.70900.1251200 | Aluminium door-window fixing | 16.88d | 2026-06-14 | 2026-06-29 | 3199, 3211, 3214 |  | GC1 | 8843794 |
| 3216 | 37100.37400.37600.38700.39700.41100.42100.70900.1251300 | Putty primer coat | 6.75d | 2026-06-14 | 2026-06-20 | 3200, 3214 |  | GC1 | 8843804 |
| 3217 | 37100.37400.37600.38700.39700.41100.42100.70900.1251400 | Door shutter fixing | 9d | 2026-06-14 | 2026-06-22 | 3201, 3214 |  | GC1 | 8843814 |
| 3218 | 37100.37400.37600.38700.39700.41100.42100.70900.1251500 | Electrical wiring work | 13.5d | 2026-06-22 | 2026-07-04 | 3202, 3217 |  | GC1 | 8843824 |
| 3219 | 37100.37400.37600.38700.39700.41100.42100.70900.1251600 | Painting 1st coat | 13.5d | 2026-07-04 | 2026-07-16 | 3203, 3216, 3217, 3218 |  | GC1 | 8843834 |
| 3220 | 37100.37400.37600.38700.39700.41100.42100.70900.1251700 | False ceiling | 11.25d | 2026-07-16 | 2026-07-26 | 3204, 3219 |  | GC1 | 8843844 |
| 3221 | 37100.37400.37600.38700.39700.41100.42100.71000 | **14th Floor** | 173.38d | 2026-03-09 | 2026-08-10 |  | start no earlier than 2026-03-09 | GC1 | 8807374 |
| 3222 | 37100.37400.37600.38700.39700.41100.42100.71000.1251800 | Block Work | 9d | 2026-03-09 | 2026-03-17 | 3206FS+0.25d |  | GC1 | 8843854 |
| 3223 | 37100.37400.37600.38700.39700.41100.42100.71000.1251900 | Door Frame Fixing | 10.12d | 2026-03-18 | 2026-03-27 | 3207, 3222 |  | GC1 | 8843864 |
| 3224 | 37100.37400.37600.38700.39700.41100.42100.71000.1252000 | Internal Plumbing Works | 11.25d | 2026-04-09 | 2026-04-19 | 3208, 3222 |  | GC1 | 8843874 |
| 3225 | 37100.37400.37600.38700.39700.41100.42100.71000.1252100 | Waterproofing | 13.5d | 2026-05-15 | 2026-05-27 | 3209, 3224 |  | GC1 | 8843884 |
| 3226 | 37100.37400.37600.38700.39700.41100.42100.71000.1252200 | Internal Plaster | 5.62d | 2026-03-29 | 2026-04-03 | 3210FS+0.25d, 3223FS+0.25d |  | GC1 | 8843894 |
| 3227 | 37100.37400.37600.38700.39700.41100.42100.71000.1252300 | IPS flooring work | 10.12d | 2026-05-27 | 2026-06-05 | 3211, 3223, 3224, 3225 |  | GC1 | 8843904 |
| 3228 | 37100.37400.37600.38700.39700.41100.42100.71000.1252400 | Toilet dado work | 9d | 2026-05-27 | 2026-06-04 | 3212, 3225, 3226 |  | GC1 | 8843914 |
| 3229 | 37100.37400.37600.38700.39700.41100.42100.71000.1252500 | Toilet flooring work | 7.88d | 2026-06-04 | 2026-06-11 | 3213, 3228 |  | GC1 | 8843924 |
| 3230 | 37100.37400.37600.38700.39700.41100.42100.71000.1252600 | Living dinning flooring | 16.88d | 2026-06-14 | 2026-06-29 | 3214, 3223, 3229 |  | GC1 | 8843934 |
| 3231 | 37100.37400.37600.38700.39700.41100.42100.71000.1252700 | Aluminium door-window fixing | 16.88d | 2026-06-29 | 2026-07-14 | 3215, 3227, 3230 |  | GC1 | 8843944 |
| 3232 | 37100.37400.37600.38700.39700.41100.42100.71000.1252800 | Putty primer coat | 6.75d | 2026-06-29 | 2026-07-05 | 3216, 3230 |  | GC1 | 8843954 |
| 3233 | 37100.37400.37600.38700.39700.41100.42100.71000.1252900 | Door shutter fixing | 9d | 2026-06-29 | 2026-07-07 | 3217, 3230 |  | GC1 | 8843964 |
| 3234 | 37100.37400.37600.38700.39700.41100.42100.71000.1253000 | Electrical wiring work | 13.5d | 2026-07-07 | 2026-07-19 | 3218, 3233 |  | GC1 | 8843974 |
| 3235 | 37100.37400.37600.38700.39700.41100.42100.71000.1253100 | Painting 1st coat | 13.5d | 2026-07-19 | 2026-07-31 | 3219, 3232, 3233, 3234 |  | GC1 | 8843984 |
| 3236 | 37100.37400.37600.38700.39700.41100.42100.71000.1253200 | False ceiling | 11.25d | 2026-07-31 | 2026-08-10 | 3220, 3235 |  | GC1 | 8843994 |

| ID | WBS | Task | Duration | Start | Finish | Predecessors | Constraint | Calendar | Unique_Task_ID |
| --- | --- | --- | --- | --- | --- | --- | --- | --- | --- |
| 3237 | 37100.37400.37600.38700.39700.41100.42100.71100 | **15th Floor** | 181d | 2026-03-17 | 2026-08-25 |  | start no earlier than 2026-03-17 | GC1 | 8807384 |
| 3238 | 37100.37400.37600.38700.39700.41100.42100.71100.1253300 | Block Work | 9d | 2026-03-17 | 2026-03-25 | 3222FS+0.25d |  | GC1 | 8844004 |
| 3239 | 37100.37400.37600.38700.39700.41100.42100.71100.1253400 | Door Frame Fixing | 10.12d | 2026-03-27 | 2026-04-05 | 3223, 3238 |  | GC1 | 8844014 |
| 3240 | 37100.37400.37600.38700.39700.41100.42100.71100.1253500 | Internal Plumbing Works | 11.25d | 2026-04-19 | 2026-04-29 | 3224, 3238 |  | GC1 | 8844024 |
| 3241 | 37100.37400.37600.38700.39700.41100.42100.71100.1253600 | Waterproofing | 13.5d | 2026-05-27 | 2026-06-08 | 3225, 3240 |  | GC1 | 8844034 |
| 3242 | 37100.37400.37600.38700.39700.41100.42100.71100.1253700 | Internal Plaster | 10.12d | 2026-06-08 | 2026-06-17 | 3226, 3239, 3240, 3241 |  | GC1 | 8844044 |
| 3243 | 37100.37400.37600.38700.39700.41100.42100.71100.1253800 | IPS flooring work | 10.12d | 2026-06-08 | 2026-06-17 | 3227, 3239, 3240, 3241 |  | GC1 | 8844054 |
| 3244 | 37100.37400.37600.38700.39700.41100.42100.71100.1253900 | Toilet dado work | 9d | 2026-06-17 | 2026-06-25 | 3228, 3241, 3242 |  | GC1 | 8844064 |
| 3245 | 37100.37400.37600.38700.39700.41100.42100.71100.1254000 | Toilet flooring work | 7.88d | 2026-06-25 | 2026-07-02 | 3229, 3244 |  | GC1 | 8844074 |
| 3246 | 37100.37400.37600.38700.39700.41100.42100.71100.1254100 | Living dinning flooring | 13.5d | 2026-07-02 | 2026-07-14 | 3230, 3239, 3245 |  | GC1 | 8844084 |
| 3247 | 37100.37400.37600.38700.39700.41100.42100.71100.1254200 | Aluminium door-window fixing | 13.5d | 2026-07-14 | 2026-07-26 | 3231, 3243, 3246 |  | GC1 | 8844094 |
| 3248 | 37100.37400.37600.38700.39700.41100.42100.71100.1254300 | Putty primer coat | 6.75d | 2026-07-14 | 2026-07-20 | 3232, 3246 |  | GC1 | 8844104 |
| 3249 | 37100.37400.37600.38700.39700.41100.42100.71100.1254400 | Door shutter fixing | 9d | 2026-07-14 | 2026-07-22 | 3233, 3246 |  | GC1 | 8844114 |
| 3250 | 37100.37400.37600.38700.39700.41100.42100.71100.1254500 | Electrical wiring work | 13.5d | 2026-07-22 | 2026-08-03 | 3234, 3249 |  | GC1 | 8844124 |
| 3251 | 37100.37400.37600.38700.39700.41100.42100.71100.1254600 | Painting 1st coat | 13.5d | 2026-08-03 | 2026-08-15 | 3235, 3248, 3249, 3250 |  | GC1 | 8844134 |
| 3252 | 37100.37400.37600.38700.39700.41100.42100.71100.1254700 | False ceiling | 11.25d | 2026-08-15 | 2026-08-25 | 3236, 3251 |  | GC1 | 8844144 |
| 3253 | 37100.37400.37600.38700.39700.41100.42100.71300 | **16th Floor** | 121.5d | 2026-05-24 | 2026-09-09 |  | start no earlier than 2026-05-24 | GC1 | 8807394 |
| 3254 | 37100.37400.37600.38700.39700.41100.42100.71300.1254800 | Block Work | 9d | 2026-05-24 | 2026-06-01 | 2991, 3238 |  | GC1 | 8844154 |
| 3255 | 37100.37400.37600.38700.39700.41100.42100.71300.1254900 | Door Frame Fixing | 10.12d | 2026-06-01 | 2026-06-10 | 3239, 3254 |  | GC1 | 8844164 |
| 3256 | 37100.37400.37600.38700.39700.41100.42100.71300.1255000 | Internal Plumbing Works | 11.25d | 2026-06-01 | 2026-06-11 | 3240, 3254 |  | GC1 | 8844174 |
| 3257 | 37100.37400.37600.38700.39700.41100.42100.71300.1255100 | Waterproofing | 13.5d | 2026-06-11 | 2026-06-23 | 3241, 3256 |  | GC1 | 8844184 |
| 3258 | 37100.37400.37600.38700.39700.41100.42100.71300.1255200 | Internal Plaster | 10.12d | 2026-06-23 | 2026-07-02 | 3242, 3255, 3256, 3257 |  | GC1 | 8844194 |
| 3259 | 37100.37400.37600.38700.39700.41100.42100.71300.1255300 | IPS flooring work | 10.12d | 2026-06-23 | 2026-07-02 | 3243, 3255, 3256, 3257 |  | GC1 | 8844204 |
| 3260 | 37100.37400.37600.38700.39700.41100.42100.71300.1255400 | Toilet dado work | 9d | 2026-07-02 | 2026-07-10 | 3244, 3257, 3258 |  | GC1 | 8844214 |
| 3261 | 37100.37400.37600.38700.39700.41100.42100.71300.1255500 | Toilet flooring work | 7.88d | 2026-07-10 | 2026-07-17 | 3245, 3260 |  | GC1 | 8844224 |
| 3262 | 37100.37400.37600.38700.39700.41100.42100.71300.1255600 | Living dinning flooring | 13.5d | 2026-07-17 | 2026-07-29 | 3246, 3255, 3261 |  | GC1 | 8844234 |
| 3263 | 37100.37400.37600.38700.39700.41100.42100.71300.1255700 | Aluminium door-window fixing | 13.5d | 2026-07-29 | 2026-08-10 | 3247, 3259, 3262 |  | GC1 | 8844244 |
| 3264 | 37100.37400.37600.38700.39700.41100.42100.71300.1255800 | Putty primer coat | 6.75d | 2026-07-29 | 2026-08-04 | 3248, 3262 |  | GC1 | 8844254 |
| 3265 | 37100.37400.37600.38700.39700.41100.42100.71300.1255900 | Door shutter fixing | 9d | 2026-07-29 | 2026-08-06 | 3249, 3262 |  | GC1 | 8844264 |
| 3266 | 37100.37400.37600.38700.39700.41100.42100.71300.1256000 | Electrical wiring work | 13.5d | 2026-08-06 | 2026-08-18 | 3250, 3265 |  | GC1 | 8844274 |
| 3267 | 37100.37400.37600.38700.39700.41100.42100.71300.1256100 | Painting 1st coat | 13.5d | 2026-08-18 | 2026-08-30 | 3251, 3264, 3265, 3266 |  | GC1 | 8844284 |
| 3268 | 37100.37400.37600.38700.39700.41100.42100.71300.1256200 | False ceiling | 11.25d | 2026-08-30 | 2026-09-09 | 3252, 3267 |  | GC1 | 8844294 |

| ID | WBS | Task | Duration | Start | Finish | Predecessors | Constraint | Calendar | Unique_Task_ID |
| --- | --- | --- | --- | --- | --- | --- | --- | --- | --- |
| 3269 | 37100.37400.37600.38700.39700.41100.42100.71400 | **17th Floor** | 122.62d | 2026-06-04 | 2026-09-21 |  | start no earlier than 2026-06-04 | GC1 | 8807404 |
| 3270 | 37100.37400.37600.38700.39700.41100.42100.71400.1256300 | Block Work | 9d | 2026-06-04 | 2026-06-12 | 2992, 3254 |  | GC1 | 8844304 |
| 3271 | 37100.37400.37600.38700.39700.41100.42100.71400.1256400 | Door Frame Fixing | 10.12d | 2026-06-12 | 2026-06-21 | 3255, 3270 |  | GC1 | 8844314 |
| 3272 | 37100.37400.37600.38700.39700.41100.42100.71400.1256500 | Internal Plumbing Works | 11.25d | 2026-06-12 | 2026-06-22 | 3256, 3270 |  | GC1 | 8844324 |
| 3273 | 37100.37400.37600.38700.39700.41100.42100.71400.1256600 | Waterproofing | 13.5d | 2026-06-23 | 2026-07-05 | 3257, 3272 |  | GC1 | 8844334 |
| 3274 | 37100.37400.37600.38700.39700.41100.42100.71400.1256700 | Internal Plaster | 10.12d | 2026-07-05 | 2026-07-14 | 3258, 3271, 3272, 3273 |  | GC1 | 8844344 |
| 3275 | 37100.37400.37600.38700.39700.41100.42100.71400.1256800 | IPS flooring work | 10.12d | 2026-07-05 | 2026-07-14 | 3259, 3271, 3272, 3273 |  | GC1 | 8844354 |
| 3276 | 37100.37400.37600.38700.39700.41100.42100.71400.1256900 | Toilet dado work | 9d | 2026-07-14 | 2026-07-22 | 3260, 3273, 3274 |  | GC1 | 8844364 |
| 3277 | 37100.37400.37600.38700.39700.41100.42100.71400.1257000 | Toilet flooring work | 7.88d | 2026-07-22 | 2026-07-29 | 3261, 3276 |  | GC1 | 8844374 |
| 3278 | 37100.37400.37600.38700.39700.41100.42100.71400.1257100 | Living dinning flooring | 13.5d | 2026-07-29 | 2026-08-10 | 3262, 3271, 3277 |  | GC1 | 8844384 |
| 3279 | 37100.37400.37600.38700.39700.41100.42100.71400.1257200 | Aluminium door-window fixing | 13.5d | 2026-08-10 | 2026-08-22 | 3263, 3275, 3278 |  | GC1 | 8844394 |
| 3280 | 37100.37400.37600.38700.39700.41100.42100.71400.1257300 | Putty primer coat | 6.75d | 2026-08-10 | 2026-08-16 | 3264, 3278 |  | GC1 | 8844404 |
| 3281 | 37100.37400.37600.38700.39700.41100.42100.71400.1257400 | Door shutter fixing | 9d | 2026-08-10 | 2026-08-18 | 3265, 3278 |  | GC1 | 8844414 |
| 3282 | 37100.37400.37600.38700.39700.41100.42100.71400.1257500 | Electrical wiring work | 13.5d | 2026-08-18 | 2026-08-30 | 3266, 3281 |  | GC1 | 8844424 |
| 3283 | 37100.37400.37600.38700.39700.41100.42100.71400.1257600 | Painting 1st coat | 13.5d | 2026-08-30 | 2026-09-11 | 3267, 3280, 3281, 3282 |  | GC1 | 8844434 |
| 3284 | 37100.37400.37600.38700.39700.41100.42100.71400.1257700 | False ceiling | 11.25d | 2026-09-11 | 2026-09-21 | 3268, 3283 |  | GC1 | 8844444 |
| 3285 | 37100.37400.37600.38700.39700.41100.42100.71500 | **18th Floor** | 123.75d | 2026-06-15 | 2026-10-03 |  | start no earlier than 2026-06-15 | GC1 | 8807414 |
| 3286 | 37100.37400.37600.38700.39700.41100.42100.71500.1257800 | Block Work | 9d | 2026-06-15 | 2026-06-23 | 2993, 3270 |  | GC1 | 8844454 |
| 3287 | 37100.37400.37600.38700.39700.41100.42100.71500.1257900 | Door Frame Fixing | 10.12d | 2026-06-23 | 2026-07-02 | 3271, 3286 |  | GC1 | 8844464 |
| 3288 | 37100.37400.37600.38700.39700.41100.42100.71500.1258000 | Internal Plumbing Works | 11.25d | 2026-06-23 | 2026-07-03 | 3272, 3286 |  | GC1 | 8844474 |
| 3289 | 37100.37400.37600.38700.39700.41100.42100.71500.1258100 | Waterproofing | 13.5d | 2026-07-05 | 2026-07-17 | 3273, 3288 |  | GC1 | 8844484 |
| 3290 | 37100.37400.37600.38700.39700.41100.42100.71500.1258200 | Internal Plaster | 10.12d | 2026-07-17 | 2026-07-26 | 3274, 3287, 3288, 3289 |  | GC1 | 8844494 |
| 3291 | 37100.37400.37600.38700.39700.41100.42100.71500.1258300 | IPS flooring work | 10.12d | 2026-07-17 | 2026-07-26 | 3275, 3287, 3288, 3289 |  | GC1 | 8844504 |
| 3292 | 37100.37400.37600.38700.39700.41100.42100.71500.1258400 | Toilet dado work | 9d | 2026-07-26 | 2026-08-03 | 3276, 3289, 3290 |  | GC1 | 8844514 |
| 3293 | 37100.37400.37600.38700.39700.41100.42100.71500.1258500 | Toilet flooring work | 7.88d | 2026-08-03 | 2026-08-10 | 3277, 3292 |  | GC1 | 8844524 |
| 3294 | 37100.37400.37600.38700.39700.41100.42100.71500.1258600 | Living dinning flooring | 13.5d | 2026-08-10 | 2026-08-22 | 3278, 3287, 3293 |  | GC1 | 8844534 |
| 3295 | 37100.37400.37600.38700.39700.41100.42100.71500.1258700 | Aluminium door-window fixing | 13.5d | 2026-08-22 | 2026-09-03 | 3279, 3291, 3294 |  | GC1 | 8844544 |
| 3296 | 37100.37400.37600.38700.39700.41100.42100.71500.1258800 | Putty primer coat | 6.75d | 2026-08-22 | 2026-08-28 | 3280, 3294 |  | GC1 | 8844554 |
| 3297 | 37100.37400.37600.38700.39700.41100.42100.71500.1258900 | Door shutter fixing | 9d | 2026-08-22 | 2026-08-30 | 3281, 3294 |  | GC1 | 8844564 |
| 3298 | 37100.37400.37600.38700.39700.41100.42100.71500.1259000 | Electrical wiring work | 13.5d | 2026-08-30 | 2026-09-11 | 3282, 3297 |  | GC1 | 8844574 |
| 3299 | 37100.37400.37600.38700.39700.41100.42100.71500.1259100 | Painting 1st coat | 13.5d | 2026-09-11 | 2026-09-23 | 3283, 3296, 3297, 3298 |  | GC1 | 8844584 |
| 3300 | 37100.37400.37600.38700.39700.41100.42100.71500.1259200 | False ceiling | 11.25d | 2026-09-23 | 2026-10-03 | 3284, 3299 |  | GC1 | 8844594 |

| ID | WBS | Task | Duration | Start | Finish | Predecessors | Constraint | Calendar | Unique_Task_ID |
| --- | --- | --- | --- | --- | --- | --- | --- | --- | --- |
| 3301 | 37100.37400.37600.38700.39700.41100.42100.71600 | **19th Floor** | 124.88d | 2026-06-26 | 2026-10-15 |  | start no earlier than 2026-06-26 | GC1 | 8807424 |
| 3302 | 37100.37400.37600.38700.39700.41100.42100.71600.1259300 | Block Work | 9d | 2026-06-26 | 2026-07-04 | 2994, 3286 |  | GC1 | 8844604 |
| 3303 | 37100.37400.37600.38700.39700.41100.42100.71600.1259400 | Door Frame Fixing | 10.12d | 2026-07-04 | 2026-07-13 | 3287, 3302 |  | GC1 | 8844614 |
| 3304 | 37100.37400.37600.38700.39700.41100.42100.71600.1259500 | Internal Plumbing Works | 11.25d | 2026-07-04 | 2026-07-14 | 3288, 3302 |  | GC1 | 8844624 |
| 3305 | 37100.37400.37600.38700.39700.41100.42100.71600.1259600 | Waterproofing | 13.5d | 2026-07-17 | 2026-07-29 | 3289, 3304 |  | GC1 | 8844634 |
| 3306 | 37100.37400.37600.38700.39700.41100.42100.71600.1259700 | Internal Plaster | 10.12d | 2026-07-29 | 2026-08-07 | 3290, 3303, 3304, 3305 |  | GC1 | 8844644 |
| 3307 | 37100.37400.37600.38700.39700.41100.42100.71600.1259800 | IPS flooring work | 10.12d | 2026-08-07 | 2026-08-16 | 3291, 3303, 3305, 3306 |  | GC1 | 8844654 |
| 3308 | 37100.37400.37600.38700.39700.41100.42100.71600.1259900 | Toilet dado work | 9d | 2026-08-07 | 2026-08-15 | 3292, 3305, 3306 |  | GC1 | 8844664 |
| 3309 | 37100.37400.37600.38700.39700.41100.42100.71600.1260000 | Toilet flooring work | 7.88d | 2026-08-15 | 2026-08-22 | 3293, 3308 |  | GC1 | 8844674 |
| 3310 | 37100.37400.37600.38700.39700.41100.42100.71600.1260100 | Living dinning flooring | 13.5d | 2026-08-22 | 2026-09-03 | 3294, 3303, 3309 |  | GC1 | 8844684 |
| 3311 | 37100.37400.37600.38700.39700.41100.42100.71600.1260200 | Aluminium door-window fixing | 13.5d | 2026-09-03 | 2026-09-15 | 3295, 3307, 3310 |  | GC1 | 8844694 |
| 3312 | 37100.37400.37600.38700.39700.41100.42100.71600.1260300 | Putty primer coat | 6.75d | 2026-09-03 | 2026-09-09 | 3296, 3310 |  | GC1 | 8844704 |
| 3313 | 37100.37400.37600.38700.39700.41100.42100.71600.1260400 | Door shutter fixing | 9d | 2026-09-03 | 2026-09-11 | 3297, 3310 |  | GC1 | 8844714 |
| 3314 | 37100.37400.37600.38700.39700.41100.42100.71600.1260500 | Electrical wiring work | 13.5d | 2026-09-11 | 2026-09-23 | 3298, 3313 |  | GC1 | 8844724 |
| 3315 | 37100.37400.37600.38700.39700.41100.42100.71600.1260600 | Painting 1st coat | 13.5d | 2026-09-23 | 2026-10-05 | 3299, 3312, 3313, 3314 |  | GC1 | 8844734 |
| 3316 | 37100.37400.37600.38700.39700.41100.42100.71600.1260700 | False ceiling | 11.25d | 2026-10-05 | 2026-10-15 | 3300, 3315 |  | GC1 | 8844744 |
| 3317 | 37100.37400.37600.38700.39700.41100.42100.71700 | **20th Floor** | 126d | 2026-07-07 | 2026-10-27 |  | start no earlier than 2026-07-07 | GC1 | 8807434 |
| 3318 | 37100.37400.37600.38700.39700.41100.42100.71700.1260800 | Block Work | 9d | 2026-07-07 | 2026-07-15 | 2995, 3302 |  | GC1 | 8844754 |
| 3319 | 37100.37400.37600.38700.39700.41100.42100.71700.1260900 | Door Frame Fixing | 10.12d | 2026-07-15 | 2026-07-24 | 3303, 3318 |  | GC1 | 8844764 |
| 3320 | 37100.37400.37600.38700.39700.41100.42100.71700.1261000 | Internal Plumbing Works | 11.25d | 2026-07-15 | 2026-07-25 | 3304, 3318 |  | GC1 | 8844774 |
| 3321 | 37100.37400.37600.38700.39700.41100.42100.71700.1261100 | Waterproofing | 13.5d | 2026-07-29 | 2026-08-10 | 3305, 3320 |  | GC1 | 8844784 |
| 3322 | 37100.37400.37600.38700.39700.41100.42100.71700.1261200 | Internal Plaster | 10.12d | 2026-08-10 | 2026-08-19 | 3306, 3319, 3320, 3321 |  | GC1 | 8844794 |
| 3323 | 37100.37400.37600.38700.39700.41100.42100.71700.1261300 | IPS flooring work | 10.12d | 2026-08-19 | 2026-08-28 | 3307, 3319, 3321, 3322 |  | GC1 | 8844804 |
| 3324 | 37100.37400.37600.38700.39700.41100.42100.71700.1261400 | Toilet dado work | 9d | 2026-08-19 | 2026-08-27 | 3308, 3321, 3322 |  | GC1 | 8844814 |
| 3325 | 37100.37400.37600.38700.39700.41100.42100.71700.1261500 | Toilet flooring work | 7.88d | 2026-08-27 | 2026-09-03 | 3309, 3324 |  | GC1 | 8844824 |
| 3326 | 37100.37400.37600.38700.39700.41100.42100.71700.1261600 | Living dinning flooring | 13.5d | 2026-09-03 | 2026-09-15 | 3310, 3319, 3325 |  | GC1 | 8844834 |
| 3327 | 37100.37400.37600.38700.39700.41100.42100.71700.1261700 | Aluminium door-window fixing | 13.5d | 2026-09-15 | 2026-09-27 | 3311, 3323, 3326 |  | GC1 | 8844844 |
| 3328 | 37100.37400.37600.38700.39700.41100.42100.71700.1261800 | Putty primer coat | 6.75d | 2026-09-15 | 2026-09-21 | 3312, 3326 |  | GC1 | 8844854 |
| 3329 | 37100.37400.37600.38700.39700.41100.42100.71700.1261900 | Door shutter fixing | 9d | 2026-09-15 | 2026-09-23 | 3313, 3326 |  | GC1 | 8844864 |
| 3330 | 37100.37400.37600.38700.39700.41100.42100.71700.1262000 | Electrical wiring work | 13.5d | 2026-09-23 | 2026-10-05 | 3314, 3329 |  | GC1 | 8844874 |
| 3331 | 37100.37400.37600.38700.39700.41100.42100.71700.1262100 | Painting 1st coat | 13.5d | 2026-10-05 | 2026-10-17 | 3315, 3328, 3329, 3330 |  | GC1 | 8844884 |
| 3332 | 37100.37400.37600.38700.39700.41100.42100.71700.1262200 | False ceiling | 11.25d | 2026-10-17 | 2026-10-27 | 3316, 3331 |  | GC1 | 8844894 |

| ID | WBS | Task | Duration | Start | Finish | Predecessors | Constraint | Calendar | Unique_Task_ID |
| --- | --- | --- | --- | --- | --- | --- | --- | --- | --- |
| 3333 | 37100.37400.37600.38700.39700.41100.42100.71800 | **21st Floor** | 127.12d | 2026-07-18 | 2026-12-23 |  | start no earlier than 2026-07-18 | GC1 | 8807444 |
| 3334 | 37100.37400.37600.38700.39700.41100.42100.71800.1262300 | Block Work | 9d | 2026-07-18 | 2026-07-26 | 2996, 3318 |  | GC1 | 8844904 |
| 3335 | 37100.37400.37600.38700.39700.41100.42100.71800.1262400 | Door Frame Fixing | 10.12d | 2026-07-26 | 2026-08-04 | 3319, 3334 |  | GC1 | 8844914 |
| 3336 | 37100.37400.37600.38700.39700.41100.42100.71800.1262500 | Internal Plumbing Works | 11.25d | 2026-07-26 | 2026-08-05 | 3320, 3334 |  | GC1 | 8844924 |
| 3337 | 37100.37400.37600.38700.39700.41100.42100.71800.1262600 | Waterproofing | 13.5d | 2026-08-10 | 2026-08-22 | 3321, 3336 |  | GC1 | 8844934 |
| 3338 | 37100.37400.37600.38700.39700.41100.42100.71800.1262700 | Internal Plaster | 10.12d | 2026-08-22 | 2026-08-31 | 3322, 3335, 3336, 3337 |  | GC1 | 8844944 |
| 3339 | 37100.37400.37600.38700.39700.41100.42100.71800.1262800 | IPS flooring work | 10.12d | 2026-08-31 | 2026-09-09 | 3323, 3335, 3337, 3338 |  | GC1 | 8844954 |
| 3340 | 37100.37400.37600.38700.39700.41100.42100.71800.1262900 | Toilet dado work | 9d | 2026-08-31 | 2026-09-08 | 3324, 3337, 3338 |  | GC1 | 8844964 |
| 3341 | 37100.37400.37600.38700.39700.41100.42100.71800.1263000 | Toilet flooring work | 7.88d | 2026-09-08 | 2026-09-15 | 3325, 3340 |  | GC1 | 8844974 |
| 3342 | 37100.37400.37600.38700.39700.41100.42100.71800.1263100 | Living dinning flooring | 13.5d | 2026-09-15 | 2026-09-27 | 3326, 3335, 3341 |  | GC1 | 8844984 |
| 3343 | 37100.37400.37600.38700.39700.41100.42100.71800.1263200 | Aluminium door-window fixing | 13.5d | 2026-09-27 | 2026-10-09 | 3327, 3339, 3342 |  | GC1 | 8844994 |
| 3344 | 37100.37400.37600.38700.39700.41100.42100.71800.1263300 | Putty primer coat | 6.75d | 2026-09-27 | 2026-10-03 | 3328, 3342 |  | GC1 | 8845004 |
| 3345 | 37100.37400.37600.38700.39700.41100.42100.71800.1263400 | Door shutter fixing | 9d | 2026-09-27 | 2026-10-05 | 3329, 3342 |  | GC1 | 8845014 |
| 3346 | 37100.37400.37600.38700.39700.41100.42100.71800.1263500 | Electrical wiring work | 13.5d | 2026-10-05 | 2026-10-17 | 3330, 3345 |  | GC1 | 8845024 |
| 3347 | 37100.37400.37600.38700.39700.41100.42100.71800.1263600 | Painting 1st coat | 13.5d | 2026-10-17 | 2026-10-29 | 3331, 3344, 3345, 3346 |  | GC1 | 8845034 |
| 3348 | 37100.37400.37600.38700.39700.41100.42100.71800.1263700 | False ceiling | 11.25d | 2026-10-29 | 2026-12-23 | 3332, 3347 |  | GC1 | 8845044 |
| 3349 | 37100.37400.37600.38700.39700.41100.42100.71900 | **22nd Floor** | 128.25d | 2026-07-29 | 2027-01-04 |  | start no earlier than 2026-07-29 | GC1 | 8807454 |
| 3350 | 37100.37400.37600.38700.39700.41100.42100.71900.1263800 | Block Work | 9d | 2026-07-29 | 2026-08-06 | 2997, 3334 |  | GC1 | 8845054 |
| 3351 | 37100.37400.37600.38700.39700.41100.42100.71900.1263900 | Door Frame Fixing | 10.12d | 2026-08-06 | 2026-08-15 | 3335, 3350 |  | GC1 | 8845064 |
| 3352 | 37100.37400.37600.38700.39700.41100.42100.71900.1264000 | Internal Plumbing Works | 11.25d | 2026-08-06 | 2026-08-16 | 3336, 3350 |  | GC1 | 8845074 |
| 3353 | 37100.37400.37600.38700.39700.41100.42100.71900.1264100 | Waterproofing | 13.5d | 2026-08-22 | 2026-09-03 | 3337, 3352 |  | GC1 | 8845084 |
| 3354 | 37100.37400.37600.38700.39700.41100.42100.71900.1264200 | Internal Plaster | 10.12d | 2026-09-03 | 2026-09-12 | 3338, 3351, 3352, 3353 |  | GC1 | 8845094 |
| 3355 | 37100.37400.37600.38700.39700.41100.42100.71900.1264300 | IPS flooring work | 10.12d | 2026-09-12 | 2026-09-21 | 3339, 3351, 3353, 3354 |  | GC1 | 8845104 |
| 3356 | 37100.37400.37600.38700.39700.41100.42100.71900.1264400 | Toilet dado work | 9d | 2026-09-12 | 2026-09-20 | 3340, 3353, 3354 |  | GC1 | 8845114 |
| 3357 | 37100.37400.37600.38700.39700.41100.42100.71900.1264500 | Toilet flooring work | 7.88d | 2026-09-20 | 2026-09-27 | 3341, 3356 |  | GC1 | 8845124 |
| 3358 | 37100.37400.37600.38700.39700.41100.42100.71900.1264600 | Living dinning flooring | 13.5d | 2026-09-27 | 2026-10-09 | 3342, 3351, 3357 |  | GC1 | 8845134 |
| 3359 | 37100.37400.37600.38700.39700.41100.42100.71900.1264700 | Aluminium door-window fixing | 13.5d | 2026-10-09 | 2026-10-21 | 3343, 3355, 3358 |  | GC1 | 8845144 |
| 3360 | 37100.37400.37600.38700.39700.41100.42100.71900.1264800 | Putty primer coat | 6.75d | 2026-10-09 | 2026-10-15 | 3344, 3358 |  | GC1 | 8845154 |
| 3361 | 37100.37400.37600.38700.39700.41100.42100.71900.1264900 | Door shutter fixing | 9d | 2026-10-09 | 2026-10-17 | 3345, 3358 |  | GC1 | 8845164 |
| 3362 | 37100.37400.37600.38700.39700.41100.42100.71900.1265000 | Electrical wiring work | 13.5d | 2026-10-17 | 2026-10-29 | 3346, 3361 |  | GC1 | 8845174 |
| 3363 | 37100.37400.37600.38700.39700.41100.42100.71900.1265100 | Painting 1st coat | 13.5d | 2026-10-29 | 2026-12-25 | 3347, 3360, 3361, 3362 |  | GC1 | 8845184 |
| 3364 | 37100.37400.37600.38700.39700.41100.42100.71900.1265200 | False ceiling | 11.25d | 2026-12-25 | 2027-01-04 | 3348, 3363 |  | GC1 | 8845194 |

| ID | WBS | Task | Duration | Start | Finish | Predecessors | Constraint | Calendar | Unique_Task_ID |
| --- | --- | --- | --- | --- | --- | --- | --- | --- | --- |
| 3365 | 37100.37400.37600.38700.39700.41100.42100.72000 | **23rd Floor** | 132.75d | 2026-08-09 | 2027-01-19 |  | start no earlier than 2026-08-09 | GC1 | 8807464 |
| 3366 | 37100.37400.37600.38700.39700.41100.42100.72000.1265300 | Block Work | 9d | 2026-08-09 | 2026-08-17 | 2998, 3350 |  | GC1 | 8845204 |
| 3367 | 37100.37400.37600.38700.39700.41100.42100.72000.1265400 | Door Frame Fixing | 10.12d | 2026-08-17 | 2026-08-26 | 3351, 3366 |  | GC1 | 8845214 |
| 3368 | 37100.37400.37600.38700.39700.41100.42100.72000.1265500 | Internal Plumbing Works | 11.25d | 2026-08-17 | 2026-08-27 | 3352, 3366 |  | GC1 | 8845224 |
| 3369 | 37100.37400.37600.38700.39700.41100.42100.72000.1265600 | Waterproofing | 13.5d | 2026-09-03 | 2026-09-15 | 3353, 3368 |  | GC1 | 8845234 |
| 3370 | 37100.37400.37600.38700.39700.41100.42100.72000.1265700 | Internal Plaster | 10.12d | 2026-09-15 | 2026-09-24 | 3354, 3367, 3368, 3369 |  | GC1 | 8845244 |
| 3371 | 37100.37400.37600.38700.39700.41100.42100.72000.1265800 | IPS flooring work | 10.12d | 2026-09-24 | 2026-10-03 | 3355, 3367, 3369, 3370 |  | GC1 | 8845254 |
| 3372 | 37100.37400.37600.38700.39700.41100.42100.72000.1265900 | Toilet dado work | 9d | 2026-09-24 | 2026-10-02 | 3356, 3369, 3370 |  | GC1 | 8845264 |
| 3373 | 37100.37400.37600.38700.39700.41100.42100.72000.1266000 | Toilet flooring work | 7.88d | 2026-10-02 | 2026-10-09 | 3357, 3372 |  | GC1 | 8845274 |
| 3374 | 37100.37400.37600.38700.39700.41100.42100.72000.1266100 | Living dinning flooring | 16.88d | 2026-10-09 | 2026-10-24 | 3358, 3367, 3373 |  | GC1 | 8845284 |
| 3375 | 37100.37400.37600.38700.39700.41100.42100.72000.1266200 | Aluminium door-window fixing | 16.88d | 2026-10-24 | 2026-12-23 | 3359, 3371, 3374 |  | GC1 | 8845294 |
| 3376 | 37100.37400.37600.38700.39700.41100.42100.72000.1266300 | Putty primer coat | 6.75d | 2026-10-24 | 2026-10-30 | 3360, 3374 |  | GC1 | 8845304 |
| 3377 | 37100.37400.37600.38700.39700.41100.42100.72000.1266400 | Door shutter fixing | 9d | 2026-10-24 | 2026-12-16 | 3361, 3374 |  | GC1 | 8845314 |
| 3378 | 37100.37400.37600.38700.39700.41100.42100.72000.1266500 | Electrical wiring work | 13.5d | 2026-12-16 | 2026-12-28 | 3362, 3377 |  | GC1 | 8845324 |
| 3379 | 37100.37400.37600.38700.39700.41100.42100.72000.1266600 | Painting 1st coat | 13.5d | 2026-12-28 | 2027-01-09 | 3363, 3376, 3377, 3378 |  | GC1 | 8845334 |
| 3380 | 37100.37400.37600.38700.39700.41100.42100.72000.1266700 | False ceiling | 11.25d | 2027-01-09 | 2027-01-19 | 3364, 3379 |  | GC1 | 8845344 |
| 3381 | 37100.37400.37600.38700.39700.41100.42100.72100 | **24th Floor** | 137.25d | 2026-08-20 | 2027-02-03 |  | start no earlier than 2026-08-20 | GC1 | 8807474 |
| 3382 | 37100.37400.37600.38700.39700.41100.42100.72100.1266800 | Block Work | 9d | 2026-08-20 | 2026-08-28 | 2999, 3366 |  | GC1 | 8845354 |
| 3383 | 37100.37400.37600.38700.39700.41100.42100.72100.1266900 | Door Frame Fixing | 10.12d | 2026-08-28 | 2026-09-06 | 3367, 3382 |  | GC1 | 8845364 |
| 3384 | 37100.37400.37600.38700.39700.41100.42100.72100.1267000 | Internal Plumbing Works | 11.25d | 2026-08-28 | 2026-09-07 | 3368, 3382 |  | GC1 | 8845374 |
| 3385 | 37100.37400.37600.38700.39700.41100.42100.72100.1267100 | Waterproofing | 13.5d | 2026-09-15 | 2026-09-27 | 3369, 3384 |  | GC1 | 8845384 |
| 3386 | 37100.37400.37600.38700.39700.41100.42100.72100.1267200 | Internal Plaster | 10.12d | 2026-09-27 | 2026-10-06 | 3370, 3383, 3384, 3385 |  | GC1 | 8845394 |
| 3387 | 37100.37400.37600.38700.39700.41100.42100.72100.1267300 | IPS flooring work | 10.12d | 2026-10-06 | 2026-10-15 | 3371, 3383, 3385, 3386 |  | GC1 | 8845404 |
| 3388 | 37100.37400.37600.38700.39700.41100.42100.72100.1267400 | Toilet dado work | 9d | 2026-10-06 | 2026-10-14 | 3372, 3385, 3386 |  | GC1 | 8845414 |
| 3389 | 37100.37400.37600.38700.39700.41100.42100.72100.1267500 | Toilet flooring work | 7.88d | 2026-10-14 | 2026-10-21 | 3373, 3388 |  | GC1 | 8845424 |
| 3390 | 37100.37400.37600.38700.39700.41100.42100.72100.1267600 | Living dinning flooring | 16.88d | 2026-10-24 | 2026-12-23 | 3374, 3383, 3389 |  | GC1 | 8845434 |
| 3391 | 37100.37400.37600.38700.39700.41100.42100.72100.1267700 | Aluminium door-window fixing | 16.88d | 2026-12-23 | 2027-01-07 | 3375, 3387, 3390 |  | GC1 | 8845444 |
| 3392 | 37100.37400.37600.38700.39700.41100.42100.72100.1267800 | Putty primer coat | 6.75d | 2026-12-23 | 2026-12-29 | 3376, 3390 |  | GC1 | 8845454 |
| 3393 | 37100.37400.37600.38700.39700.41100.42100.72100.1267900 | Door shutter fixing | 9d | 2026-12-23 | 2026-12-31 | 3377, 3390 |  | GC1 | 8845464 |
| 3394 | 37100.37400.37600.38700.39700.41100.42100.72100.1268000 | Electrical wiring work | 13.5d | 2026-12-31 | 2027-01-12 | 3378, 3393 |  | GC1 | 8845474 |
| 3395 | 37100.37400.37600.38700.39700.41100.42100.72100.1268100 | Painting 1st coat | 13.5d | 2027-01-12 | 2027-01-24 | 3379, 3392, 3393, 3394 |  | GC1 | 8845484 |
| 3396 | 37100.37400.37600.38700.39700.41100.42100.72100.1268200 | False ceiling | 11.25d | 2027-01-24 | 2027-02-03 | 3380, 3395 |  | GC1 | 8845494 |

| ID | WBS | Task | Duration | Start | Finish | Predecessors | Constraint | Calendar | Unique_Task_ID |
| --- | --- | --- | --- | --- | --- | --- | --- | --- | --- |
| 3397 | 37100.37400.37600.38700.39700.41100.42100.72200 | **25th Floor** | 141.75d | 2026-08-31 | 2027-02-18 |  | start no earlier than 2026-08-31 | GC1 | 8807484 |
| 3398 | 37100.37400.37600.38700.39700.41100.42100.72200.1268300 | Block Work | 9d | 2026-08-31 | 2026-09-08 | 3000, 3382 |  | GC1 | 8845504 |
| 3399 | 37100.37400.37600.38700.39700.41100.42100.72200.1268400 | Door Frame Fixing | 10.12d | 2026-09-08 | 2026-09-17 | 3383, 3398 |  | GC1 | 8845514 |
| 3400 | 37100.37400.37600.38700.39700.41100.42100.72200.1268500 | Internal Plumbing Works | 11.25d | 2026-09-08 | 2026-09-18 | 3384, 3398 |  | GC1 | 8845524 |
| 3401 | 37100.37400.37600.38700.39700.41100.42100.72200.1268600 | Waterproofing | 13.5d | 2026-09-27 | 2026-10-09 | 3385, 3400 |  | GC1 | 8845534 |
| 3402 | 37100.37400.37600.38700.39700.41100.42100.72200.1268700 | Internal Plaster | 10.12d | 2026-10-09 | 2026-10-18 | 3386, 3399, 3400, 3401 |  | GC1 | 8845544 |
| 3403 | 37100.37400.37600.38700.39700.41100.42100.72200.1268800 | IPS flooring work | 10.12d | 2026-10-18 | 2026-10-27 | 3387, 3399, 3401, 3402 |  | GC1 | 8845554 |
| 3404 | 37100.37400.37600.38700.39700.41100.42100.72200.1268900 | Toilet dado work | 9d | 2026-10-18 | 2026-10-26 | 3388, 3401, 3402 |  | GC1 | 8845564 |
| 3405 | 37100.37400.37600.38700.39700.41100.42100.72200.1269000 | Toilet flooring work | 7.88d | 2026-10-26 | 2026-12-17 | 3389, 3404 |  | GC1 | 8845574 |
| 3406 | 37100.37400.37600.38700.39700.41100.42100.72200.1269100 | Living dinning flooring | 16.88d | 2026-12-23 | 2027-01-07 | 3390, 3399, 3405 |  | GC1 | 8845584 |
| 3407 | 37100.37400.37600.38700.39700.41100.42100.72200.1269200 | Aluminium door-window fixing | 16.88d | 2027-01-07 | 2027-01-22 | 3391, 3403, 3406 |  | GC1 | 8845594 |
| 3408 | 37100.37400.37600.38700.39700.41100.42100.72200.1269300 | Putty primer coat | 6.75d | 2027-01-07 | 2027-01-13 | 3392, 3406 |  | GC1 | 8845604 |
| 3409 | 37100.37400.37600.38700.39700.41100.42100.72200.1269400 | Door shutter fixing | 9d | 2027-01-07 | 2027-01-15 | 3393, 3406 |  | GC1 | 8845614 |
| 3410 | 37100.37400.37600.38700.39700.41100.42100.72200.1269500 | Electrical wiring work | 13.5d | 2027-01-15 | 2027-01-27 | 3394, 3409 |  | GC1 | 8845624 |
| 3411 | 37100.37400.37600.38700.39700.41100.42100.72200.1269600 | Painting 1st coat | 13.5d | 2027-01-27 | 2027-02-08 | 3395, 3408, 3409, 3410 |  | GC1 | 8845634 |
| 3412 | 37100.37400.37600.38700.39700.41100.42100.72200.1269700 | False ceiling | 11.25d | 2027-02-08 | 2027-02-18 | 3396, 3411 |  | GC1 | 8845644 |
| 3413 | 37100.37400.37600.38700.39700.41100.42100.72400 | **26th Floor** | 146.25d | 2026-09-11 | 2027-03-05 |  | start no earlier than 2026-09-11 | GC1 | 8807494 |
| 3414 | 37100.37400.37600.38700.39700.41100.42100.72400.1269800 | Block Work | 9d | 2026-09-11 | 2026-09-19 | 3001, 3398 |  | GC1 | 8845654 |
| 3415 | 37100.37400.37600.38700.39700.41100.42100.72400.1269900 | Door Frame Fixing | 10.12d | 2026-09-19 | 2026-09-28 | 3399, 3414 |  | GC1 | 8845664 |
| 3416 | 37100.37400.37600.38700.39700.41100.42100.72400.1270000 | Internal Plumbing Works | 11.25d | 2026-09-19 | 2026-09-29 | 3400, 3414 |  | GC1 | 8845674 |
| 3417 | 37100.37400.37600.38700.39700.41100.42100.72400.1270100 | Waterproofing | 13.5d | 2026-10-09 | 2026-10-21 | 3401, 3416 |  | GC1 | 8845684 |
| 3418 | 37100.37400.37600.38700.39700.41100.42100.72400.1270200 | Internal Plaster | 10.12d | 2026-10-21 | 2026-10-30 | 3402, 3415, 3416, 3417 |  | GC1 | 8845694 |
| 3419 | 37100.37400.37600.38700.39700.41100.42100.72400.1270300 | IPS flooring work | 10.12d | 2026-10-30 | 2026-12-23 | 3403, 3415, 3417, 3418 |  | GC1 | 8845704 |
| 3420 | 37100.37400.37600.38700.39700.41100.42100.72400.1270400 | Toilet dado work | 9d | 2026-10-30 | 2026-12-22 | 3404, 3417, 3418 |  | GC1 | 8845714 |
| 3421 | 37100.37400.37600.38700.39700.41100.42100.72400.1270500 | Toilet flooring work | 7.88d | 2026-12-22 | 2026-12-29 | 3405, 3420 |  | GC1 | 8845724 |
| 3422 | 37100.37400.37600.38700.39700.41100.42100.72400.1270600 | Living dinning flooring | 16.88d | 2027-01-07 | 2027-01-22 | 3406, 3415, 3421 |  | GC1 | 8845734 |
| 3423 | 37100.37400.37600.38700.39700.41100.42100.72400.1270700 | Aluminium door-window fixing | 16.88d | 2027-01-22 | 2027-02-06 | 3407, 3419, 3422 |  | GC1 | 8845744 |
| 3424 | 37100.37400.37600.38700.39700.41100.42100.72400.1270800 | Putty primer coat | 6.75d | 2027-01-22 | 2027-01-28 | 3408, 3422 |  | GC1 | 8845754 |
| 3425 | 37100.37400.37600.38700.39700.41100.42100.72400.1270900 | Door shutter fixing | 9d | 2027-01-22 | 2027-01-30 | 3409, 3422 |  | GC1 | 8845764 |
| 3426 | 37100.37400.37600.38700.39700.41100.42100.72400.1271000 | Electrical wiring work | 13.5d | 2027-01-30 | 2027-02-11 | 3410, 3425 |  | GC1 | 8845774 |
| 3427 | 37100.37400.37600.38700.39700.41100.42100.72400.1271100 | Painting 1st coat | 13.5d | 2027-02-11 | 2027-02-23 | 3411, 3424, 3425, 3426 |  | GC1 | 8845784 |
| 3428 | 37100.37400.37600.38700.39700.41100.42100.72400.1271200 | False ceiling | 11.25d | 2027-02-23 | 2027-03-05 | 3412, 3427 |  | GC1 | 8845794 |

| ID | WBS | Task | Duration | Start | Finish | Predecessors | Constraint | Calendar | Unique_Task_ID |
| --- | --- | --- | --- | --- | --- | --- | --- | --- | --- |
| 3429 | 37100.37400.37600.38700.39700.41100.42100.72500 | **27th Floor** | 150.75d | 2026-09-22 | 2027-03-20 |  | start no earlier than 2026-09-22 | GC1 | 8807504 |
| 3430 | 37100.37400.37600.38700.39700.41100.42100.72500.1271300 | Block Work | 9d | 2026-09-22 | 2026-09-30 | 3002, 3414 |  | GC1 | 8845804 |
| 3431 | 37100.37400.37600.38700.39700.41100.42100.72500.1271400 | Door Frame Fixing | 10.12d | 2026-09-30 | 2026-10-09 | 3415, 3430 |  | GC1 | 8845814 |
| 3432 | 37100.37400.37600.38700.39700.41100.42100.72500.1271500 | Internal Plumbing Works | 11.25d | 2026-09-30 | 2026-10-10 | 3416, 3430 |  | GC1 | 8845824 |
| 3433 | 37100.37400.37600.38700.39700.41100.42100.72500.1271600 | Waterproofing | 13.5d | 2026-10-21 | 2026-12-17 | 3417, 3432 |  | GC1 | 8845834 |
| 3434 | 37100.37400.37600.38700.39700.41100.42100.72500.1271700 | Internal Plaster | 10.12d | 2026-12-17 | 2026-12-26 | 3418, 3431, 3432, 3433 |  | GC1 | 8845844 |
| 3435 | 37100.37400.37600.38700.39700.41100.42100.72500.1271800 | IPS flooring work | 10.12d | 2026-12-26 | 2027-01-04 | 3419, 3431, 3433, 3434 |  | GC1 | 8845854 |
| 3436 | 37100.37400.37600.38700.39700.41100.42100.72500.1271900 | Toilet dado work | 9d | 2026-12-26 | 2027-01-03 | 3420, 3433, 3434 |  | GC1 | 8845864 |
| 3437 | 37100.37400.37600.38700.39700.41100.42100.72500.1272000 | Toilet flooring work | 7.88d | 2027-01-03 | 2027-01-10 | 3421, 3436 |  | GC1 | 8845874 |
| 3438 | 37100.37400.37600.38700.39700.41100.42100.72500.1272100 | Living dinning flooring | 16.88d | 2027-01-22 | 2027-02-06 | 3422, 3431, 3437 |  | GC1 | 8845884 |
| 3439 | 37100.37400.37600.38700.39700.41100.42100.72500.1272200 | Aluminium door-window fixing | 16.88d | 2027-02-06 | 2027-02-21 | 3423, 3435, 3438 |  | GC1 | 8845894 |
| 3440 | 37100.37400.37600.38700.39700.41100.42100.72500.1272300 | Putty primer coat | 6.75d | 2027-02-06 | 2027-02-12 | 3424, 3438 |  | GC1 | 8845904 |
| 3441 | 37100.37400.37600.38700.39700.41100.42100.72500.1272400 | Door shutter fixing | 9d | 2027-02-06 | 2027-02-14 | 3425, 3438 |  | GC1 | 8845914 |
| 3442 | 37100.37400.37600.38700.39700.41100.42100.72500.1272500 | Electrical wiring work | 13.5d | 2027-02-14 | 2027-02-26 | 3426, 3441 |  | GC1 | 8845924 |
| 3443 | 37100.37400.37600.38700.39700.41100.42100.72500.1272600 | Painting 1st coat | 13.5d | 2027-02-26 | 2027-03-10 | 3427, 3440, 3441, 3442 |  | GC1 | 8845934 |
| 3444 | 37100.37400.37600.38700.39700.41100.42100.72500.1272700 | False ceiling | 11.25d | 2027-03-10 | 2027-03-20 | 3428, 3443 |  | GC1 | 8845944 |
| 3445 | 37100.37400.37600.38700.39700.41100.42100.72600 | **28th Floor** | 155.25d | 2026-10-03 | 2027-04-04 |  | start no earlier than 2026-10-03 | GC1 | 8807514 |
| 3446 | 37100.37400.37600.38700.39700.41100.42100.72600.1272800 | Block Work | 9d | 2026-10-03 | 2026-10-11 | 3003, 3430 |  | GC1 | 8845954 |
| 3447 | 37100.37400.37600.38700.39700.41100.42100.72600.1272900 | Door Frame Fixing | 10.12d | 2026-10-11 | 2026-10-20 | 3431, 3446 |  | GC1 | 8845964 |
| 3448 | 37100.37400.37600.38700.39700.41100.42100.72600.1273000 | Internal Plumbing Works | 11.25d | 2026-10-11 | 2026-10-21 | 3432, 3446 |  | GC1 | 8845974 |
| 3449 | 37100.37400.37600.38700.39700.41100.42100.72600.1273100 | Waterproofing | 13.5d | 2026-12-17 | 2026-12-29 | 3433, 3448 |  | GC1 | 8845984 |
| 3450 | 37100.37400.37600.38700.39700.41100.42100.72600.1273200 | Internal Plaster | 10.12d | 2026-12-29 | 2027-01-07 | 3434, 3447, 3448, 3449 |  | GC1 | 8845994 |
| 3451 | 37100.37400.37600.38700.39700.41100.42100.72600.1273300 | IPS flooring work | 10.12d | 2027-01-07 | 2027-01-16 | 3435, 3447, 3449, 3450 |  | GC1 | 8846004 |
| 3452 | 37100.37400.37600.38700.39700.41100.42100.72600.1273400 | Toilet dado work | 9d | 2027-01-07 | 2027-01-15 | 3436, 3449, 3450 |  | GC1 | 8846014 |
| 3453 | 37100.37400.37600.38700.39700.41100.42100.72600.1273500 | Toilet flooring work | 7.88d | 2027-01-15 | 2027-01-22 | 3437, 3452 |  | GC1 | 8846024 |
| 3454 | 37100.37400.37600.38700.39700.41100.42100.72600.1273600 | Living dinning flooring | 16.88d | 2027-02-06 | 2027-02-21 | 3438, 3447, 3453 |  | GC1 | 8846034 |
| 3455 | 37100.37400.37600.38700.39700.41100.42100.72600.1273700 | Aluminium door-window fixing | 16.88d | 2027-02-21 | 2027-03-08 | 3439, 3451, 3454 |  | GC1 | 8846044 |
| 3456 | 37100.37400.37600.38700.39700.41100.42100.72600.1273800 | Putty primer coat | 6.75d | 2027-02-21 | 2027-02-27 | 3440, 3454 |  | GC1 | 8846054 |
| 3457 | 37100.37400.37600.38700.39700.41100.42100.72600.1273900 | Door shutter fixing | 9d | 2027-02-21 | 2027-03-01 | 3441, 3454 |  | GC1 | 8846064 |
| 3458 | 37100.37400.37600.38700.39700.41100.42100.72600.1274000 | Electrical wiring work | 13.5d | 2027-03-01 | 2027-03-13 | 3442, 3457 |  | GC1 | 8846074 |
| 3459 | 37100.37400.37600.38700.39700.41100.42100.72600.1274100 | Painting 1st coat | 13.5d | 2027-03-13 | 2027-03-25 | 3443, 3456, 3457, 3458 |  | GC1 | 8846084 |
| 3460 | 37100.37400.37600.38700.39700.41100.42100.72600.1274200 | False ceiling | 11.25d | 2027-03-25 | 2027-04-04 | 3444, 3459 |  | GC1 | 8846094 |

| ID | WBS | Task | Duration | Start | Finish | Predecessors | Constraint | Calendar | Unique_Task_ID |
| --- | --- | --- | --- | --- | --- | --- | --- | --- | --- |
| 3461 | 37100.37400.37600.38700.39700.41100.42100.72700 | **29th Floor** | 159.75d | 2026-10-14 | 2027-04-19 |  | start no earlier than 2026-10-14 | GC1 | 8807524 |
| 3462 | 37100.37400.37600.38700.39700.41100.42100.72700.1274300 | Block Work | 9d | 2026-10-14 | 2026-10-22 | 3004, 3446 |  | GC1 | 8846104 |
| 3463 | 37100.37400.37600.38700.39700.41100.42100.72700.1274400 | Door Frame Fixing | 10.12d | 2026-10-22 | 2026-10-31 | 3447, 3462 |  | GC1 | 8846114 |
| 3464 | 37100.37400.37600.38700.39700.41100.42100.72700.1274500 | Internal Plumbing Works | 11.25d | 2026-10-22 | 2026-12-16 | 3448, 3462 |  | GC1 | 8846124 |
| 3465 | 37100.37400.37600.38700.39700.41100.42100.72700.1274600 | Waterproofing | 13.5d | 2026-12-29 | 2027-01-10 | 3449, 3464 |  | GC1 | 8846134 |
| 3466 | 37100.37400.37600.38700.39700.41100.42100.72700.1274700 | Internal Plaster | 10.12d | 2027-01-10 | 2027-01-19 | 3450, 3463, 3464, 3465 |  | GC1 | 8846144 |
| 3467 | 37100.37400.37600.38700.39700.41100.42100.72700.1274800 | IPS flooring work | 10.12d | 2027-01-19 | 2027-01-28 | 3451, 3463, 3465, 3466 |  | GC1 | 8846154 |
| 3468 | 37100.37400.37600.38700.39700.41100.42100.72700.1274900 | Toilet dado work | 9d | 2027-01-19 | 2027-01-27 | 3452, 3465, 3466 |  | GC1 | 8846164 |
| 3469 | 37100.37400.37600.38700.39700.41100.42100.72700.1275000 | Toilet flooring work | 7.88d | 2027-01-27 | 2027-02-03 | 3453, 3468 |  | GC1 | 8846174 |
| 3470 | 37100.37400.37600.38700.39700.41100.42100.72700.1275100 | Living dinning flooring | 16.88d | 2027-02-21 | 2027-03-08 | 3454, 3463, 3469 |  | GC1 | 8846184 |
| 3471 | 37100.37400.37600.38700.39700.41100.42100.72700.1275200 | Aluminium door-window fixing | 16.88d | 2027-03-08 | 2027-03-23 | 3455, 3467, 3470 |  | GC1 | 8846194 |
| 3472 | 37100.37400.37600.38700.39700.41100.42100.72700.1275300 | Putty primer coat | 6.75d | 2027-03-08 | 2027-03-14 | 3456, 3470 |  | GC1 | 8846204 |
| 3473 | 37100.37400.37600.38700.39700.41100.42100.72700.1275400 | Door shutter fixing | 9d | 2027-03-08 | 2027-03-16 | 3457, 3470 |  | GC1 | 8846214 |
| 3474 | 37100.37400.37600.38700.39700.41100.42100.72700.1275500 | Electrical wiring work | 13.5d | 2027-03-16 | 2027-03-28 | 3458, 3473 |  | GC1 | 8846224 |
| 3475 | 37100.37400.37600.38700.39700.41100.42100.72700.1275600 | Painting 1st coat | 13.5d | 2027-03-28 | 2027-04-09 | 3459, 3472, 3473, 3474 |  | GC1 | 8846234 |
| 3476 | 37100.37400.37600.38700.39700.41100.42100.72700.1275700 | False ceiling | 11.25d | 2027-04-09 | 2027-04-19 | 3460, 3475 |  | GC1 | 8846244 |
| 3477 | 37100.37400.37600.38700.39700.41100.42100.72800 | **30th Floor** | 171d | 2026-10-25 | 2027-05-10 |  | start no earlier than 2026-10-25 | GC1 | 8807534 |
| 3478 | 37100.37400.37600.38700.39700.41100.42100.72800.1275800 | Block Work | 9d | 2026-10-25 | 2026-12-17 | 3005, 3462 |  | GC1 | 8846254 |
| 3479 | 37100.37400.37600.38700.39700.41100.42100.72800.1275900 | Door Frame Fixing | 10.12d | 2026-12-17 | 2026-12-26 | 3463, 3478 |  | GC1 | 8846264 |
| 3480 | 37100.37400.37600.38700.39700.41100.42100.72800.1276000 | Internal Plumbing Works | 11.25d | 2026-12-17 | 2026-12-27 | 3464, 3478 |  | GC1 | 8846274 |
| 3481 | 37100.37400.37600.38700.39700.41100.42100.72800.1276100 | Waterproofing | 13.5d | 2027-01-10 | 2027-01-22 | 3465, 3480 |  | GC1 | 8846284 |
| 3482 | 37100.37400.37600.38700.39700.41100.42100.72800.1276200 | Internal Plaster | 10.12d | 2027-01-22 | 2027-01-31 | 3466, 3479, 3480, 3481 |  | GC1 | 8846294 |
| 3483 | 37100.37400.37600.38700.39700.41100.42100.72800.1276300 | IPS flooring work | 10.12d | 2027-01-31 | 2027-02-09 | 3467, 3479, 3481, 3482 |  | GC1 | 8846304 |
| 3484 | 37100.37400.37600.38700.39700.41100.42100.72800.1276400 | Toilet dado work | 9d | 2027-01-31 | 2027-02-08 | 3468, 3481, 3482 |  | GC1 | 8846314 |
| 3485 | 37100.37400.37600.38700.39700.41100.42100.72800.1276500 | Toilet flooring work | 7.88d | 2027-02-08 | 2027-02-15 | 3469, 3484 |  | GC1 | 8846324 |
| 3486 | 37100.37400.37600.38700.39700.41100.42100.72800.1276600 | Living dinning flooring | 16.88d | 2027-03-08 | 2027-03-23 | 3470, 3479, 3485 |  | GC1 | 8846334 |
| 3487 | 37100.37400.37600.38700.39700.41100.42100.72800.1276700 | Aluminium door-window fixing | 16.88d | 2027-03-23 | 2027-04-07 | 3471, 3483, 3486 |  | GC1 | 8846344 |
| 3488 | 37100.37400.37600.38700.39700.41100.42100.72800.1276800 | Putty primer coat | 6.75d | 2027-03-23 | 2027-03-29 | 3472, 3486 |  | GC1 | 8846354 |
| 3489 | 37100.37400.37600.38700.39700.41100.42100.72800.1276900 | Door shutter fixing | 9d | 2027-03-23 | 2027-03-31 | 3473, 3486 |  | GC1 | 8846364 |
| 3490 | 37100.37400.37600.38700.39700.41100.42100.72800.1277000 | Electrical wiring work | 16.88d | 2027-03-31 | 2027-04-15 | 3474, 3489 |  | GC1 | 8846374 |
| 3491 | 37100.37400.37600.38700.39700.41100.42100.72800.1277100 | Painting 1st coat | 16.88d | 2027-04-15 | 2027-04-30 | 3475, 3488, 3489, 3490 |  | GC1 | 8846384 |
| 3492 | 37100.37400.37600.38700.39700.41100.42100.72800.1277200 | False ceiling | 11.25d | 2027-04-30 | 2027-05-10 | 3476, 3491 |  | GC1 | 8846394 |

| ID | WBS | Task | Duration | Start | Finish | Predecessors | Constraint | Calendar | Unique_Task_ID |
| --- | --- | --- | --- | --- | --- | --- | --- | --- | --- |
| 3493 | 37100.37400.37600.38700.39700.41100.42100.72900 | **31st Floor** | 175.5d | 2026-12-20 | 2027-05-25 |  | start no earlier than 2026-12-20 | GC1 | 8807544 |
| 3494 | 37100.37400.37600.38700.39700.41100.42100.72900.1277300 | Block Work | 9d | 2026-12-20 | 2026-12-28 | 3006, 3478 |  | GC1 | 8846404 |
| 3495 | 37100.37400.37600.38700.39700.41100.42100.72900.1277400 | Door Frame Fixing | 10.12d | 2026-12-28 | 2027-01-06 | 3479, 3494 |  | GC1 | 8846414 |
| 3496 | 37100.37400.37600.38700.39700.41100.42100.72900.1277500 | Internal Plumbing Works | 11.25d | 2026-12-28 | 2027-01-07 | 3480, 3494 |  | GC1 | 8846424 |
| 3497 | 37100.37400.37600.38700.39700.41100.42100.72900.1277600 | Waterproofing | 13.5d | 2027-01-07 | 2027-01-19 | 3496 |  | GC1 | 8846434 |
| 3498 | 37100.37400.37600.38700.39700.41100.42100.72900.1277700 | Internal Plaster | 10.12d | 2027-01-31 | 2027-02-09 | 3482, 3495, 3496, 3497 |  | GC1 | 8846444 |
| 3499 | 37100.37400.37600.38700.39700.41100.42100.72900.1277800 | IPS flooring work | 10.12d | 2027-02-09 | 2027-02-18 | 3483, 3495, 3497, 3498 |  | GC1 | 8846454 |
| 3500 | 37100.37400.37600.38700.39700.41100.42100.72900.1277900 | Toilet dado work | 9d | 2027-02-09 | 2027-02-17 | 3484, 3497, 3498 |  | GC1 | 8846464 |
| 3501 | 37100.37400.37600.38700.39700.41100.42100.72900.1278000 | Toilet flooring work | 7.88d | 2027-02-17 | 2027-02-24 | 3485, 3500 |  | GC1 | 8846474 |
| 3502 | 37100.37400.37600.38700.39700.41100.42100.72900.1278100 | Living dinning flooring | 16.88d | 2027-03-23 | 2027-04-07 | 3486, 3495, 3501 |  | GC1 | 8846484 |
| 3503 | 37100.37400.37600.38700.39700.41100.42100.72900.1278200 | Aluminium door-window fixing | 13.5d | 2027-04-07 | 2027-04-19 | 3487, 3499, 3502 |  | GC1 | 8846494 |
| 3504 | 37100.37400.37600.38700.39700.41100.42100.72900.1278300 | Putty primer coat | 6.75d | 2027-04-07 | 2027-04-13 | 3488, 3502 |  | GC1 | 8846504 |
| 3505 | 37100.37400.37600.38700.39700.41100.42100.72900.1278400 | Door shutter fixing | 9d | 2027-04-07 | 2027-04-15 | 3489, 3502 |  | GC1 | 8846514 |
| 3506 | 37100.37400.37600.38700.39700.41100.42100.72900.1278500 | Electrical wiring work | 16.88d | 2027-04-15 | 2027-04-30 | 3490, 3505 |  | GC1 | 8846524 |
| 3507 | 37100.37400.37600.38700.39700.41100.42100.72900.1278600 | Painting 1st coat | 16.88d | 2027-04-30 | 2027-05-15 | 3491, 3504, 3505, 3506 |  | GC1 | 8846534 |
| 3508 | 37100.37400.37600.38700.39700.41100.42100.72900.1278700 | False ceiling | 11.25d | 2027-05-15 | 2027-05-25 | 3492, 3507 |  | GC1 | 8846544 |
| 3509 | 37100.37400.37600.38700.39700.41100.42100.73000 | **32nd Floor** | 183.38d | 2026-12-28 | 2027-06-09 |  | start no earlier than 2026-12-28 | GC1 | 8807554 |
| 3510 | 37100.37400.37600.38700.39700.41100.42100.73000.1278800 | Block Work | 9d | 2026-12-28 | 2027-01-05 | 3007, 3494 |  | GC1 | 8846554 |
| 3511 | 37100.37400.37600.38700.39700.41100.42100.73000.1278900 | Door Frame Fixing | 10.12d | 2027-01-06 | 2027-01-15 | 3495, 3510 |  | GC1 | 8846564 |
| 3512 | 37100.37400.37600.38700.39700.41100.42100.73000.1279000 | Internal Plumbing Works | 11.25d | 2027-01-07 | 2027-01-17 | 3496, 3510 |  | GC1 | 8846574 |
| 3513 | 37100.37400.37600.38700.39700.41100.42100.73000.1279100 | Waterproofing | 13.5d | 2027-01-19 | 2027-01-31 | 3497, 3512 |  | GC1 | 8846584 |
| 3514 | 37100.37400.37600.38700.39700.41100.42100.73000.1279200 | Internal Plaster | 10.12d | 2027-02-09 | 2027-02-18 | 3498, 3511, 3512, 3513 |  | GC1 | 8846594 |
| 3515 | 37100.37400.37600.38700.39700.41100.42100.73000.1279300 | IPS flooring work | 10.12d | 2027-02-18 | 2027-02-27 | 3499, 3511, 3513, 3514 |  | GC1 | 8846604 |
| 3516 | 37100.37400.37600.38700.39700.41100.42100.73000.1279400 | Toilet dado work | 9d | 2027-02-18 | 2027-02-26 | 3500, 3513, 3514 |  | GC1 | 8846614 |
| 3517 | 37100.37400.37600.38700.39700.41100.42100.73000.1279500 | Toilet flooring work | 7.88d | 2027-02-26 | 2027-03-05 | 3501, 3516 |  | GC1 | 8846624 |
| 3518 | 37100.37400.37600.38700.39700.41100.42100.73000.1279600 | Living dinning flooring | 16.88d | 2027-04-07 | 2027-04-22 | 3502, 3511, 3517 |  | GC1 | 8846634 |
| 3519 | 37100.37400.37600.38700.39700.41100.42100.73000.1279700 | Aluminium door-window fixing | 13.5d | 2027-04-22 | 2027-05-04 | 3503, 3515, 3518 |  | GC1 | 8846644 |
| 3520 | 37100.37400.37600.38700.39700.41100.42100.73000.1279800 | Putty primer coat | 6.75d | 2027-04-22 | 2027-04-28 | 3504, 3518 |  | GC1 | 8846654 |
| 3521 | 37100.37400.37600.38700.39700.41100.42100.73000.1279900 | Door shutter fixing | 9d | 2027-04-22 | 2027-04-30 | 3505, 3518 |  | GC1 | 8846664 |
| 3522 | 37100.37400.37600.38700.39700.41100.42100.73000.1280000 | Electrical wiring work | 16.88d | 2027-04-30 | 2027-05-15 | 3506, 3521 |  | GC1 | 8846674 |
| 3523 | 37100.37400.37600.38700.39700.41100.42100.73000.1280100 | Painting 1st coat | 16.88d | 2027-05-15 | 2027-05-30 | 3507, 3520, 3521, 3522 |  | GC1 | 8846684 |
| 3524 | 37100.37400.37600.38700.39700.41100.42100.73000.1280200 | False ceiling | 11.25d | 2027-05-30 | 2027-06-09 | 3508, 3523 |  | GC1 | 8846694 |

| ID | WBS | Task | Duration | Start | Finish | Predecessors | Constraint | Calendar | Unique_Task_ID |
| --- | --- | --- | --- | --- | --- | --- | --- | --- | --- |
| 3525 | 37100.37400.37600.38700.39700.41100.42100.73100 | **33rd Floor** | 187.88d | 2027-01-05 | 2027-06-21 |  | start no earlier than 2027-01-05 | GC1 | 8807564 |
| 3526 | 37100.37400.37600.38700.39700.41100.42100.73100.1280300 | Block Work | 9d | 2027-01-05 | 2027-01-13 | 3008, 3510 |  | GC1 | 8846704 |
| 3527 | 37100.37400.37600.38700.39700.41100.42100.73100.1280400 | Door Frame Fixing | 10.12d | 2027-01-15 | 2027-01-24 | 3511, 3526 |  | GC1 | 8846714 |
| 3528 | 37100.37400.37600.38700.39700.41100.42100.73100.1280500 | Internal Plumbing Works | 11.25d | 2027-01-17 | 2027-01-27 | 3512, 3526 |  | GC1 | 8846724 |
| 3529 | 37100.37400.37600.38700.39700.41100.42100.73100.1280600 | Waterproofing | 13.5d | 2027-01-31 | 2027-02-12 | 3513, 3528 |  | GC1 | 8846734 |
| 3530 | 37100.37400.37600.38700.39700.41100.42100.73100.1280700 | Internal Plaster | 10.12d | 2027-02-12 | 2027-02-21 | 3527, 3528, 3529 |  | GC1 | 8846744 |
| 3531 | 37100.37400.37600.38700.39700.41100.42100.73100.1280800 | IPS flooring work | 10.12d | 2027-02-27 | 2027-03-08 | 3515, 3527, 3529, 3530 |  | GC1 | 8846754 |
| 3532 | 37100.37400.37600.38700.39700.41100.42100.73100.1280900 | Toilet dado work | 9d | 2027-02-26 | 2027-03-06 | 3516, 3529, 3530 |  | GC1 | 8846764 |
| 3533 | 37100.37400.37600.38700.39700.41100.42100.73100.1281000 | Toilet flooring work | 7.88d | 2027-03-06 | 2027-03-13 | 3517, 3532 |  | GC1 | 8846774 |
| 3534 | 37100.37400.37600.38700.39700.41100.42100.73100.1281100 | Living dinning flooring | 16.88d | 2027-04-22 | 2027-05-07 | 3518, 3527, 3533 |  | GC1 | 8846784 |
| 3535 | 37100.37400.37600.38700.39700.41100.42100.73100.1281200 | Aluminium door-window fixing | 16.88d | 2027-05-07 | 2027-05-22 | 3519, 3531, 3534 |  | GC1 | 8846794 |
| 3536 | 37100.37400.37600.38700.39700.41100.42100.73100.1281300 | Putty primer coat | 6.75d | 2027-05-07 | 2027-05-13 | 3520, 3534 |  | GC1 | 8846804 |
| 3537 | 37100.37400.37600.38700.39700.41100.42100.73100.1281400 | Door shutter fixing | 9d | 2027-05-07 | 2027-05-15 | 3521, 3534 |  | GC1 | 8846814 |
| 3538 | 37100.37400.37600.38700.39700.41100.42100.73100.1281500 | Electrical wiring work | 13.5d | 2027-05-15 | 2027-05-27 | 3522, 3537 |  | GC1 | 8846824 |
| 3539 | 37100.37400.37600.38700.39700.41100.42100.73100.1281600 | Painting 1st coat | 13.5d | 2027-05-30 | 2027-06-11 | 3523, 3536, 3537, 3538 |  | GC1 | 8846834 |
| 3540 | 37100.37400.37600.38700.39700.41100.42100.73100.1281700 | False ceiling | 11.25d | 2027-06-11 | 2027-06-21 | 3524, 3539 |  | GC1 | 8846844 |
| 3541 | 37100.37400.37600.38700.39700.41100.42100.73200 | **34th Floor** | 192.38d | 2027-01-13 | 2027-07-03 |  | start no earlier than 2027-01-13 | GC1 | 8807574 |
| 3542 | 37100.37400.37600.38700.39700.41100.42100.73200.1281800 | Block Work | 9d | 2027-01-13 | 2027-01-21 | 3009, 3526 |  | GC1 | 8846854 |
| 3543 | 37100.37400.37600.38700.39700.41100.42100.73200.1281900 | Door Frame Fixing | 10.12d | 2027-01-24 | 2027-02-02 | 3527, 3542 |  | GC1 | 8846864 |
| 3544 | 37100.37400.37600.38700.39700.41100.42100.73200.1282000 | Internal Plumbing Works | 11.25d | 2027-01-27 | 2027-02-06 | 3528, 3542 |  | GC1 | 8846874 |
| 3545 | 37100.37400.37600.38700.39700.41100.42100.73200.1282100 | Waterproofing | 11.25d | 2027-02-06 | 2027-02-16 | 3544 |  | GC1 | 8846884 |
| 3546 | 37100.37400.37600.38700.39700.41100.42100.73200.1282200 | Internal Plaster | 10.12d | 2027-02-21 | 2027-03-02 | 3530, 3543, 3544, 3545 |  | GC1 | 8846894 |
| 3547 | 37100.37400.37600.38700.39700.41100.42100.73200.1282300 | IPS flooring work | 10.12d | 2027-03-08 | 2027-03-17 | 3531, 3543, 3545, 3546 |  | GC1 | 8846904 |
| 3548 | 37100.37400.37600.38700.39700.41100.42100.73200.1282400 | Toilet dado work | 9d | 2027-03-06 | 2027-03-14 | 3532, 3545, 3546 |  | GC1 | 8846914 |
| 3549 | 37100.37400.37600.38700.39700.41100.42100.73200.1282500 | Toilet flooring work | 7.88d | 2027-03-14 | 2027-03-21 | 3533, 3548 |  | GC1 | 8846924 |
| 3550 | 37100.37400.37600.38700.39700.41100.42100.73200.1282600 | Living dinning flooring | 16.88d | 2027-05-07 | 2027-05-22 | 3534, 3543, 3549 |  | GC1 | 8846934 |
| 3551 | 37100.37400.37600.38700.39700.41100.42100.73200.1282700 | Aluminium door-window fixing | 16.88d | 2027-05-22 | 2027-06-06 | 3535, 3547, 3550 |  | GC1 | 8846944 |
| 3552 | 37100.37400.37600.38700.39700.41100.42100.73200.1282800 | Putty primer coat | 6.75d | 2027-05-22 | 2027-05-28 | 3536, 3550 |  | GC1 | 8846954 |
| 3553 | 37100.37400.37600.38700.39700.41100.42100.73200.1282900 | Door shutter fixing | 9d | 2027-05-22 | 2027-05-30 | 3537, 3550 |  | GC1 | 8846964 |
| 3554 | 37100.37400.37600.38700.39700.41100.42100.73200.1283000 | Electrical wiring work | 13.5d | 2027-05-30 | 2027-06-11 | 3538, 3553 |  | GC1 | 8846974 |
| 3555 | 37100.37400.37600.38700.39700.41100.42100.73200.1283100 | Painting 1st coat | 13.5d | 2027-06-11 | 2027-06-23 | 3539, 3552, 3553, 3554 |  | GC1 | 8846984 |
| 3556 | 37100.37400.37600.38700.39700.41100.42100.73200.1283200 | False ceiling | 11.25d | 2027-06-23 | 2027-07-03 | 3540, 3555 |  | GC1 | 8846994 |

| ID | WBS | Task | Duration | Start | Finish | Predecessors | Constraint | Calendar | Unique_Task_ID |
| --- | --- | --- | --- | --- | --- | --- | --- | --- | --- |
| 3557 | 37100.37400.37600.38700.39700.41100.42100.73300 | **35th Floor** | 200.25d | 2027-01-21 | 2027-07-18 |  | start no earlier than 2027-01-21 | GC1 | 8807584 |
| 3558 | 37100.37400.37600.38700.39700.41100.42100.73300.1283300 | Block Work | 9d | 2027-01-21 | 2027-01-29 | 3010, 3542 |  | GC1 | 8847004 |
| 3559 | 37100.37400.37600.38700.39700.41100.42100.73300.1283400 | Door Frame Fixing | 10.12d | 2027-02-02 | 2027-02-11 | 3543, 3558 |  | GC1 | 8847014 |
| 3560 | 37100.37400.37600.38700.39700.41100.42100.73300.1283500 | Internal Plumbing Works | 11.25d | 2027-02-06 | 2027-02-16 | 3544, 3558 |  | GC1 | 8847024 |
| 3561 | 37100.37400.37600.38700.39700.41100.42100.73300.1283600 | Waterproofing | 13.5d | 2027-02-16 | 2027-02-28 | 3545, 3560 |  | GC1 | 8847034 |
| 3562 | 37100.37400.37600.38700.39700.41100.42100.73300.1283700 | Internal Plaster | 10.12d | 2027-03-02 | 2027-03-11 | 3546, 3559, 3560, 3561 |  | GC1 | 8847044 |
| 3563 | 37100.37400.37600.38700.39700.41100.42100.73300.1283800 | IPS flooring work | 10.12d | 2027-03-17 | 2027-03-26 | 3547, 3559, 3561, 3562 |  | GC1 | 8847054 |
| 3564 | 37100.37400.37600.38700.39700.41100.42100.73300.1283900 | Toilet dado work | 9d | 2027-03-14 | 2027-03-22 | 3548, 3561, 3562 |  | GC1 | 8847064 |
| 3565 | 37100.37400.37600.38700.39700.41100.42100.73300.1284000 | Toilet flooring work | 7.88d | 2027-03-22 | 2027-03-29 | 3549, 3564 |  | GC1 | 8847074 |
| 3566 | 37100.37400.37600.38700.39700.41100.42100.73300.1284100 | Living dinning flooring | 16.88d | 2027-05-22 | 2027-06-06 | 3550, 3559, 3565 |  | GC1 | 8847084 |
| 3567 | 37100.37400.37600.38700.39700.41100.42100.73300.1284200 | Aluminium door-window fixing | 16.88d | 2027-06-06 | 2027-06-21 | 3551, 3563, 3566 |  | GC1 | 8847094 |
| 3568 | 37100.37400.37600.38700.39700.41100.42100.73300.1284300 | Putty primer coat | 6.75d | 2027-06-06 | 2027-06-12 | 3552, 3566 |  | GC1 | 8847104 |
| 3569 | 37100.37400.37600.38700.39700.41100.42100.73300.1284400 | Door shutter fixing | 9d | 2027-06-06 | 2027-06-14 | 3553, 3566 |  | GC1 | 8847114 |
| 3570 | 37100.37400.37600.38700.39700.41100.42100.73300.1284500 | Electrical wiring work | 13.5d | 2027-06-14 | 2027-06-26 | 3554, 3569 |  | GC1 | 8847124 |
| 3571 | 37100.37400.37600.38700.39700.41100.42100.73300.1284600 | Painting 1st coat | 13.5d | 2027-06-26 | 2027-07-08 | 3555, 3568, 3569, 3570 |  | GC1 | 8847134 |
| 3572 | 37100.37400.37600.38700.39700.41100.42100.73300.1284700 | False ceiling | 11.25d | 2027-07-08 | 2027-07-18 | 3556, 3571 |  | GC1 | 8847144 |
| 3573 | 37100.37400.37600.38700.39700.41100.190100 | **Terrace Finishing** | 90d | 2026-10-08 | 2027-02-10 |  | start no earlier than 2026-10-08 | GC1 | 8810744 |
| 3574 | 37100.37400.37600.38700.39700.41100.190100.554500 | Terrace waterproofing | 45d | 2026-10-08 | 2027-01-01 | 2967 |  | GC1 | 8823594 |
| 3575 | 37100.37400.37600.38700.39700.41100.190100.554600 | Terrace finishing | 45d | 2027-01-01 | 2027-02-10 | 3574 |  | GC1 | 8823604 |
| 3576 | 37100.37400.37600.38700.39700.41100.98900 | **Common Area Finishing** | 331.88d | 2027-01-03 | 2027-10-25 |  | start no earlier than 2027-01-03 | GC1 | 8808064 |
| 3577 | 37100.37400.37600.38700.39700.41100.98900.554700 | Block Work | 45d | 2027-01-03 | 2027-02-12 | 2972 |  | GC1 | 8823614 |
| 3578 | 37100.37400.37600.38700.39700.41100.98900.554800 | Internal Plaster | 135d | 2027-02-12 | 2027-06-12 | 3583SS+22.5d |  | GC1 | 8823624 |
| 3579 | 37100.37400.37600.38700.39700.41100.98900.554900 | Staircase railing fixing | 168.75d | 2027-05-28 | 2027-10-25 | 3581SS+33.75d, 3580SS+33.75d |  | GC1 | 8823634 |
| 3580 | 37100.37400.37600.38700.39700.41100.98900.555000 | Main staircase flooring | 168.75d | 2027-04-28 | 2027-09-25 | 3581SS+16.88d |  | GC1 | 8823644 |
| 3581 | 37100.37400.37600.38700.39700.41100.98900.555100 | Fire staircase flooring | 168.75d | 2027-04-13 | 2027-09-10 | 3578SS+16.88d, 3585SS+33.75d |  | GC1 | 8823654 |
| 3582 | 37100.37400.37600.38700.39700.41100.98900.555200 | Fire door work | 67.5d | 2027-05-28 | 2027-07-27 | 3580SS+33.75d, 3581SS+33.75d |  | GC1 | 8823664 |
| 3583 | 37100.37400.37600.38700.39700.41100.98900.555300 | Electrical wiring work | 135d | 2027-01-23 | 2027-05-23 | 3577SS+22.5d |  | GC1 | 8823674 |
| 3584 | 37100.37400.37600.38700.39700.41100.98900.555400 | Lobby flooring | 168.75d | 2027-01-27 | 2027-06-26 | 3583SS+4.12d |  | GC1 | 8823684 |
| 3585 | 37100.37400.37600.38700.39700.41100.98900.555500 | Ceiling & wall putty-primer | 123.75d | 2027-03-14 | 2027-07-02 | 3578SS+33.75d |  | GC1 | 8823694 |
| 3586 | 37100.37400.37600.38700.39700.41100.98900.555600 | Ceiling & wall painting | 112.5d | 2027-04-03 | 2027-07-12 | 3585SS+22.5d |  | GC1 | 8823704 |
| 3587 | 37100.37400.37600.38700.39700.41100.98900.555700 | Light fixture supply & installation | 50.62d | 2027-06-02 | 2027-07-17 | 3586SS+67.5d |  | GC1 | 8823714 |

| ID | WBS | Task | Duration | Start | Finish | Predecessors | Constraint | Calendar | Unique_Task_ID |
| --- | --- | --- | --- | --- | --- | --- | --- | --- | --- |
| 3588 | 37100.37400.37600.38700.39700.41100.45900 | **Balcony Glass Railing** | 78.75d | 2027-07-22 | 2027-09-30 |  | start no earlier than 2027-07-22 | GC1 | 8806144 |
| 3589 | 37100.37400.37600.38700.39700.41100.45900.555800 | 1st Floor | 2.25d | 2027-07-22 | 2027-07-24 | 3657 |  | GC1 | 8823724 |
| 3590 | 37100.37400.37600.38700.39700.41100.45900.555900 | 2nd Floor | 2.25d | 2027-07-24 | 2027-07-26 | 3589 |  | GC1 | 8823734 |
| 3591 | 37100.37400.37600.38700.39700.41100.45900.556000 | 3rd Floor | 2.25d | 2027-07-26 | 2027-07-28 | 3590 |  | GC1 | 8823744 |
| 3592 | 37100.37400.37600.38700.39700.41100.45900.556100 | 4th Floor | 2.25d | 2027-07-28 | 2027-07-30 | 3591 |  | GC1 | 8823754 |
| 3593 | 37100.37400.37600.38700.39700.41100.45900.556200 | 5th Floor | 2.25d | 2027-07-30 | 2027-08-01 | 3592 |  | GC1 | 8823764 |
| 3594 | 37100.37400.37600.38700.39700.41100.45900.556300 | 6th Floor | 2.25d | 2027-08-01 | 2027-08-03 | 3593 |  | GC1 | 8823774 |
| 3595 | 37100.37400.37600.38700.39700.41100.45900.556400 | 7th Floor | 2.25d | 2027-08-03 | 2027-08-05 | 3594 |  | GC1 | 8823784 |
| 3596 | 37100.37400.37600.38700.39700.41100.45900.556500 | 8th Floor | 2.25d | 2027-08-05 | 2027-08-07 | 3595 |  | GC1 | 8823794 |
| 3597 | 37100.37400.37600.38700.39700.41100.45900.556600 | 9th Floor | 2.25d | 2027-08-07 | 2027-08-09 | 3596 |  | GC1 | 8823804 |
| 3598 | 37100.37400.37600.38700.39700.41100.45900.556700 | 10th Floor | 2.25d | 2027-08-09 | 2027-08-11 | 3597 |  | GC1 | 8823814 |
| 3599 | 37100.37400.37600.38700.39700.41100.45900.556800 | 11th Floor | 2.25d | 2027-08-11 | 2027-08-13 | 3598 |  | GC1 | 8823824 |
| 3600 | 37100.37400.37600.38700.39700.41100.45900.556900 | 12th Floor | 2.25d | 2027-08-13 | 2027-08-15 | 3599 |  | GC1 | 8823834 |
| 3601 | 37100.37400.37600.38700.39700.41100.45900.557000 | 13th Floor | 2.25d | 2027-08-15 | 2027-08-17 | 3600 |  | GC1 | 8823844 |
| 3602 | 37100.37400.37600.38700.39700.41100.45900.557100 | 14th Floor | 2.25d | 2027-08-17 | 2027-08-19 | 3601 |  | GC1 | 8823854 |
| 3603 | 37100.37400.37600.38700.39700.41100.45900.557200 | 15th Floor | 2.25d | 2027-08-19 | 2027-08-21 | 3602 |  | GC1 | 8823864 |
| 3604 | 37100.37400.37600.38700.39700.41100.45900.557300 | 16th Floor | 2.25d | 2027-08-21 | 2027-08-23 | 3603 |  | GC1 | 8823874 |
| 3605 | 37100.37400.37600.38700.39700.41100.45900.557400 | 17th Floor | 2.25d | 2027-08-23 | 2027-08-25 | 3604 |  | GC1 | 8823884 |
| 3606 | 37100.37400.37600.38700.39700.41100.45900.557500 | 18th Floor | 2.25d | 2027-08-25 | 2027-08-27 | 3605 |  | GC1 | 8823894 |
| 3607 | 37100.37400.37600.38700.39700.41100.45900.557600 | 19th Floor | 2.25d | 2027-08-27 | 2027-08-29 | 3606 |  | GC1 | 8823904 |
| 3608 | 37100.37400.37600.38700.39700.41100.45900.557700 | 20th Floor | 2.25d | 2027-08-29 | 2027-08-31 | 3607 |  | GC1 | 8823914 |
| 3609 | 37100.37400.37600.38700.39700.41100.45900.557800 | 21st Floor | 2.25d | 2027-08-31 | 2027-09-02 | 3608 |  | GC1 | 8823924 |
| 3610 | 37100.37400.37600.38700.39700.41100.45900.557900 | 22nd Floor | 2.25d | 2027-09-02 | 2027-09-04 | 3609 |  | GC1 | 8823934 |
| 3611 | 37100.37400.37600.38700.39700.41100.45900.558000 | 23rd Floor | 2.25d | 2027-09-04 | 2027-09-06 | 3610 |  | GC1 | 8823944 |
| 3612 | 37100.37400.37600.38700.39700.41100.45900.558100 | 24th Floor | 2.25d | 2027-09-06 | 2027-09-08 | 3611 |  | GC1 | 8823954 |
| 3613 | 37100.37400.37600.38700.39700.41100.45900.558200 | 25th Floor | 2.25d | 2027-09-08 | 2027-09-10 | 3612 |  | GC1 | 8823964 |
| 3614 | 37100.37400.37600.38700.39700.41100.45900.558300 | 26th Floor | 2.25d | 2027-09-10 | 2027-09-12 | 3613 |  | GC1 | 8823974 |
| 3615 | 37100.37400.37600.38700.39700.41100.45900.558400 | 27th Floor | 2.25d | 2027-09-12 | 2027-09-14 | 3614 |  | GC1 | 8823984 |
| 3616 | 37100.37400.37600.38700.39700.41100.45900.558500 | 28th Floor | 2.25d | 2027-09-14 | 2027-09-16 | 3615 |  | GC1 | 8823994 |
| 3617 | 37100.37400.37600.38700.39700.41100.45900.558600 | 29th Floor | 2.25d | 2027-09-16 | 2027-09-18 | 3616 |  | GC1 | 8824004 |
| 3618 | 37100.37400.37600.38700.39700.41100.45900.558700 | 30th Floor | 2.25d | 2027-09-18 | 2027-09-20 | 3617 |  | GC1 | 8824014 |
| 3619 | 37100.37400.37600.38700.39700.41100.45900.558800 | 31st Floor | 2.25d | 2027-09-20 | 2027-09-22 | 3618 |  | GC1 | 8824024 |
| 3620 | 37100.37400.37600.38700.39700.41100.45900.558900 | 32nd Floor | 2.25d | 2027-09-22 | 2027-09-24 | 3619 |  | GC1 | 8824034 |
| 3621 | 37100.37400.37600.38700.39700.41100.45900.559000 | 33rd Floor | 2.25d | 2027-09-24 | 2027-09-26 | 3620 |  | GC1 | 8824044 |
| 3622 | 37100.37400.37600.38700.39700.41100.45900.559100 | 34th Floor | 2.25d | 2027-09-26 | 2027-09-28 | 3621 |  | GC1 | 8824054 |
| 3623 | 37100.37400.37600.38700.39700.41100.45900.559200 | 35th Floor | 2.25d | 2027-09-28 | 2027-09-30 | 3622 |  | GC1 | 8824064 |

| ID | WBS | Task | Duration | Start | Finish | Predecessors | Constraint | Calendar | Unique_Task_ID |
| --- | --- | --- | --- | --- | --- | --- | --- | --- | --- |
| 3624 | 37100.37400.37600.38700.95900 | **MEP work** | 508.5d | 2027-01-01 | 2028-05-12 |  | start no earlier than 2027-01-01 | GC1 | 8807954 |
| 3625 | 37100.37400.37600.38700.95900.98000 | **Electrical work** | 270d | 2027-01-03 | 2027-08-31 |  | start no earlier than 2027-01-03 | GC1 | 8808024 |
| 3626 | 37100.37400.37600.38700.95900.98000.322900 | Cable Tray | 101.25d | 2027-01-03 | 2027-04-03 | 2972 |  | GC1 | 8814564 |
| 3627 | 37100.37400.37600.38700.95900.98000.323000 | Cable, main & sub main | 90d | 2027-02-17 | 2027-05-08 | 3626SS+50.62d |  | GC1 | 8814574 |
| 3628 | 37100.37400.37600.38700.95900.98000.323100 | LT panel & DB | 135d | 2027-04-03 | 2027-08-01 | 3626 |  | GC1 | 8814584 |
| 3629 | 37100.37400.37600.38700.95900.98000.323200 | Rising main | 101.25d | 2027-06-02 | 2027-08-31 | 3626FS+67.5d |  | GC1 | 8814594 |
| 3630 | 37100.37400.37600.38700.95900.98000.323300 | EARTHING Works | 67.5d | 2027-04-18 | 2027-06-17 | 3626FS+16.88d |  | GC1 | 8814604 |
| 3631 | 37100.37400.37600.38700.95900.98000.323400 | Advance lightening protection | 67.5d | 2027-02-10 | 2027-04-11 | 3575 |  | GC1 | 8814614 |
| 3632 | 37100.37400.37600.38700.95900.98000.323500 | Inverter | 39.38d | 2027-06-17 | 2027-07-22 | 3630 |  | GC1 | 8814624 |
| 3633 | 37100.37400.37600.38700.95900.98000.323600 | Energy meter | 67.5d | 2027-05-08 | 2027-07-07 | 3627 |  | GC1 | 8814634 |
| 3634 | 37100.37400.37600.38700.95900.98000.323700 | Exhast fan | 67.5d | 2027-04-27 | 2027-06-26 | 3567FF+5.62d |  | GC1 | 8814644 |
| 3635 | 37100.37400.37600.38700.95900.98000.323800 | FTTH | 67.5d | 2027-06-07 | 2027-08-06 | 3630FS-11.25d |  | GC1 | 8814654 |
| 3636 | 37100.37400.37600.38700.95900.98000.323900 | Security System - FA & PA | 61.88d | 2027-06-12 | 2027-08-06 | 3635FF |  | GC1 | 8814664 |
| 3637 | 37100.37400.37600.38700.95900.98000.324000 | Solar water heater | 67.5d | 2027-02-10 | 2027-04-11 | 3575 |  | GC1 | 8814674 |
| 3638 | 37100.37400.37600.38700.95900.123000 | **Plumbing wrok** | 272.25d | 2027-01-01 | 2027-08-31 |  | start no earlier than 2027-01-01 | GC1 | 8808394 |
| 3639 | 37100.37400.37600.38700.95900.123000.324100 | Terrace looping | 50.62d | 2027-01-01 | 2027-02-15 | 3574 |  | GC1 | 8814684 |
| 3640 | 37100.37400.37600.38700.95900.123000.324200 | Shaft Plumbing | 135d | 2027-02-15 | 2027-06-15 | 3639 |  | GC1 | 8814694 |
| 3641 | 37100.37400.37600.38700.95900.123000.324300 | CP sanitary fixture supply | 84.38d | 2027-05-28 | 2027-08-11 | 3562, 3565FS+67.5d |  | GC1 | 8814704 |
| 3642 | 37100.37400.37600.38700.95900.123000.324400 | Cold & flushing water supply | 101.25d | 2027-05-13 | 2027-08-11 | 3578SS+101.25d |  | GC1 | 8814714 |
| 3643 | 37100.37400.37600.38700.95900.123000.324500 | Misc work | 33.75d | 2027-08-01 | 2027-08-31 | 3642FS-11.25d |  | GC1 | 8814724 |
| 3644 | 37100.37400.37600.38700.95900.130100 | **Fire fighting work** | 351d | 2027-01-01 | 2027-12-24 |  | start no earlier than 2027-01-01 | GC1 | 8808544 |
| 3645 | 37100.37400.37600.38700.95900.130100.324600 | Fire hydrant work | 101.25d | 2027-04-13 | 2027-07-12 | 3578SS+67.5d |  | GC1 | 8814734 |
| 3646 | 37100.37400.37600.38700.95900.130100.324700 | Sprinkler & piping work | 101.25d | 2027-08-11 | 2027-12-24 | 3645FS+33.75d |  | GC1 | 8814744 |
| 3647 | 37100.37400.37600.38700.95900.130100.324800 | Shaft Downtake works | 101.25d | 2027-01-01 | 2027-04-01 | 3574 |  | GC1 | 8814754 |
| 3648 | 37100.37400.37600.38700.95900.130100.324900 | Connection to pump room | 33.75d | 2027-04-01 | 2027-05-01 | 3647 |  | GC1 | 8814764 |

| ID | WBS | Task | Duration | Start | Finish | Predecessors | Complete | Constraint | Calendar | Unique_Task_ID |
| --- | --- | --- | --- | --- | --- | --- | --- | --- | --- | --- |
| 3649 | 37100.37400.37600.38700.95900.184600 | **Lift work** | 191.25d | 2027-01-03 | 2027-06-22 |  |  | start no earlier than 2027-01-03 | GC1 | 8810674 |
| 3650 | 37100.37400.37600.38700.95900.184600.325000 | Lift Shaft Handover | 45d | 2027-01-03 | 2027-02-12 | 2972 |  |  | GC1 | 8814774 |
| 3651 | 37100.37400.37600.38700.95900.184600.325100 | Lift installation work | 50.62d | 2027-02-12 | 2027-03-29 | 3650 |  |  | GC1 | 8814784 |
| 3652 | 37100.37400.37600.38700.95900.184600.325200 | Lift testing and commissioning | 95.62d | 2027-03-29 | 2027-06-22 | 3651 |  |  | GC1 | 8814794 |
| 3653 | 37100.37400.37600.38700.95900.194700 | **AC work** | 112.5d | 2028-02-02 | 2028-05-12 |  |  | start no earlier than 2028-02-02 | GC1 | 8810834 |
| 3654 | 37100.37400.37600.38700.95900.194700.325300 | Split AC | 112.5d | 2028-02-02 | 2028-05-12 | 3652FS+202.5d |  |  | GC1 | 8814804 |
| 3655 | 37100.37400.37600.38700.126700 | **Tower Completion** | 303.75d | 2027-01-23 | 2027-10-20 |  |  | start no earlier than 2027-01-23 | GC1 | 8808434 |
| 3656 | 37100.37400.37600.38700.126700.233500 | SURFACE PREPARATION | 90d | 2027-01-23 | 2027-04-13 | 3010FS+2.25d |  |  | GC1 | 8811534 |
| 3657 | 37100.37400.37600.38700.126700.233600 | External Painting | 112.5d | 2027-04-13 | 2027-07-22 | 3656 |  |  | GC1 | 8811544 |
| 3658 | 37100.37400.37600.38700.126700.233700 | Final coat of painting | 101.25d | 2027-07-22 | 2027-10-20 | 3657 |  |  | GC1 | 8811554 |
| 3659 | 37100.37400.37600.38700.126700.233800 | Misc. work | 67.5d | 2027-07-22 | 2027-09-20 | 3657 |  |  | GC1 | 8811564 |
| 3660 | 37100.37400.37600.38700.192300 | **Basement lobby** | 67.5d | 2027-06-26 | 2027-08-25 |  |  | start no earlier than 2027-06-26 | GC1 | 8810904 |
| 3661 | 37100.37400.37600.38700.192300.233900 | Basement lobby | 67.5d | 2027-06-26 | 2027-08-25 | 3584 |  |  | GC1 | 8811574 |
| 3662 | 37100.37400.37600.38700.109900 | **Post OC activities** | 513d | 2027-06-26 | 2028-11-08 |  |  | start no earlier than 2027-06-26 | GC1 | 8808274 |
| 3663 | 37100.37400.37600.38700.109900.234000 | Wardrobe installation | 202.5d | 2027-12-30 | 2028-06-26 | 3670FS-33.75d |  |  | GC1 | 8811584 |
| 3664 | 37100.37400.37600.38700.109900.234100 | CP & SANITARYWARE | 135d | 2027-12-30 | 2028-04-27 | 3670FS-33.75d, 3641 |  |  | GC1 | 8811594 |
| 3665 | 37100.37400.37600.38700.109900.234200 | Wooden Flooring | 202.5d | 2027-08-31 | 2028-04-12 | 3654FF-33.75d |  |  | GC1 | 8811604 |
| 3666 | 37100.37400.37600.38700.109900.234300 | Electrical Fixtures And Fittings | 135d | 2027-06-26 | 2027-10-24 | 3570 |  |  | GC1 | 8811614 |
| 3667 | 37100.37400.37600.38700.109900.234400 | Modular Kitchen | 202.5d | 2027-08-31 | 2028-04-12 | 3665SS |  |  | GC1 | 8811624 |
| 3668 | 37100.37400.37600.38700.109900.234500 | Final Coat Paint | 101.25d | 2028-08-10 | 2028-11-08 | 3665FS+135d |  |  | GC1 | 8811634 |
| 3669 | 37100.37400.37600.38700.218600 | OC Application/Readiness | 101.25d | 2027-12-24 | 2028-03-23 | 2784, 2972, 3572, 3579, 3582, 3623, 3631, 3632, 3634, 3636, 3637, 3640, 3643, 3646, 3648, 3652, 3659 |  |  | GC1 | 8811044 |
| 3670 | 37100.37400.37600.38700.218700 | OC Receipt | 28.12d | 2028-01-04 | 2028-01-28 | 4586FS+11.25d |  |  | GC1 | 8811054 |
| 3671 | 37100.37400.37600.38700.218800 | Offer To Possession | 24.75d | 2028-01-04 | 2028-01-25 | 4586FS+11.25d |  |  | GC1 | 8811064 |
| 3672 | 37100.37400.37600.38800 | **Tower 1** | 1598.62d | 2024-05-14 | 2028-08-16 |  | 2% | start no earlier than 2024-05-14 | GC1 | 8805874 |
| 3673 | 37100.37400.37600.38800.100700 | **Substructure** | 655.88d | 2024-05-14 | 2026-01-31 |  | 36% | start no earlier than 2024-05-14 | GC1 | 8808134 |
| 3674 | 37100.37400.37600.38800.100700.117200 | **Soil Bed Preparation** | 515.25d | 2024-05-14 | 2025-08-14 |  | 77% | start no earlier than 2024-05-14 | GC1 | 8808304 |
| 3675 | 37100.37400.37600.38800.100700.117200.199300 | Test Piling | 104.44d | 2024-05-14 | 2024-08-14 |  | 100% | start no earlier than 2024-05-14 | GC1 | 8814814 |
| 3676 | 37100.37400.37600.38800.100700.117200.201300 | Excavation | 33.56d | 2024-06-26 | 2024-07-25 | 3675SS+43d | 100% | start no earlier than 2024-06-26 | GC1 | 8814824 |
| 3677 | 37100.37400.37600.38800.100700.117200.201400 | Main Piling Work | 135d | 2024-09-26 | 2025-04-05 | 3675FS+42d | 96% | start no earlier than 2024-09-26 | GC1 | 8814834 |
| 3678 | 37100.37400.37600.38800.100700.117200.325400 | Anti-termite | 5.62d | 2025-04-02 | 2025-04-07 | 3677FF+2d |  |  | GC1 | 8814844 |
| 3679 | 37100.37400.37600.38800.100700.117200.201900 | PCC | 7.69d | 2025-03-10 | 2025-04-07 | 3677FS-29.94d | 70% |  | GC1 | 8814854 |
| 3680 | 37100.37400.37600.38800.100700.117200.325500 | Backfilling | 67.5d | 2025-06-16 | 2025-08-14 | 3693 |  |  | GC1 | 8814864 |

| ID | WBS | Task | Duration | Start | Finish | Predecessors | Constraint | Calendar | Unique_Task_ID |
| --- | --- | --- | --- | --- | --- | --- | --- | --- | --- |
| 3681 | 37100.37400.37600.38800.100700.104400 | **RCC Structure** | 113.62d | 2025-04-01 | 2025-07-10 |  | start no earlier than 2025-04-01 | GC1 | 8808214 |
| 3682 | 37100.37400.37600.38800.100700.104400.188100 | **Raft Foundation** | 29.25d | 2025-04-01 | 2025-04-26 |  | start no earlier than 2025-04-01 | GC1 | 8810624 |
| 3683 | 37100.37400.37600.38800.100700.104400.188100.559300 | Reinforcement | 19.12d | 2025-04-01 | 2025-04-17 | 3679FS-18.69d |  | GC1 | 8824074 |
| 3684 | 37100.37400.37600.38800.100700.104400.188100.559400 | Formwork | 13.5d | 2025-04-13 | 2025-04-24 | 3683FF+7.88d |  | GC1 | 8824084 |
| 3685 | 37100.37400.37600.38800.100700.104400.188100.559500 | Concreting | 2.25d | 2025-04-25 | 2025-04-26 | 3684 |  | GC1 | 8824094 |
| 3686 | 37100.37400.37600.38800.100700.104400.188200 | **Basement 1 Slab** | 28.12d | 2025-04-27 | 2025-05-21 |  | start no earlier than 2025-04-27 | GC1 | 8810634 |
| 3687 | 37100.37400.37600.38800.100700.104400.188200.559600 | Reinforcement | 22.5d | 2025-04-27 | 2025-05-16 | 3685 |  | GC1 | 8824104 |
| 3688 | 37100.37400.37600.38800.100700.104400.188200.559700 | Formwork | 22.5d | 2025-04-28 | 2025-05-17 | 3687SS+1.12d |  | GC1 | 8824114 |
| 3689 | 37100.37400.37600.38800.100700.104400.188200.559800 | Concreting | 4.5d | 2025-05-18 | 2025-05-21 | 3688 |  | GC1 | 8824124 |
| 3690 | 37100.37400.37600.38800.100700.104400.188400 | **Basement 2 Slab/GF** | 28.12d | 2025-05-22 | 2025-06-15 |  | start no earlier than 2025-05-22 | GC1 | 8810644 |
| 3691 | 37100.37400.37600.38800.100700.104400.188400.559900 | Reinforcement | 22.5d | 2025-05-22 | 2025-06-10 | 3689 |  | GC1 | 8824134 |
| 3692 | 37100.37400.37600.38800.100700.104400.188400.560000 | Formwork | 22.5d | 2025-05-23 | 2025-06-11 | 3691SS+1.12d |  | GC1 | 8824144 |
| 3693 | 37100.37400.37600.38800.100700.104400.188400.560100 | Concreting | 4.5d | 2025-06-12 | 2025-06-15 | 3692 |  | GC1 | 8824154 |
| 3694 | 37100.37400.37600.38800.100700.104400.188500 | **Podium /Ground Floor Slab** | 28.12d | 2025-06-16 | 2025-07-10 |  | start no earlier than 2025-06-16 | GC1 | 8810654 |
| 3695 | 37100.37400.37600.38800.100700.104400.188500.560200 | Reinforcement | 22.5d | 2025-06-16 | 2025-07-05 | 3693 |  | GC1 | 8824164 |
| 3696 | 37100.37400.37600.38800.100700.104400.188500.560300 | Formwork | 22.5d | 2025-06-17 | 2025-07-06 | 3695SS+1.12d |  | GC1 | 8824174 |
| 3697 | 37100.37400.37600.38800.100700.104400.188500.560400 | Concreting | 4.5d | 2025-07-07 | 2025-07-10 | 3696 |  | GC1 | 8824184 |
| 3698 | 37100.37400.37600.38800.100700.130200 | **Substructure Finishing** | 146.25d | 2025-08-10 | 2026-01-31 |  | start no earlier than 2025-08-10 | GC1 | 8808554 |
| 3699 | 37100.37400.37600.38800.100700.130200.325600 | Masonary work | 50.62d | 2025-08-10 | 2025-09-23 | 3697FS+33.75d |  | GC1 | 8814874 |
| 3700 | 37100.37400.37600.38800.100700.130200.325700 | Plaster | 45d | 2025-09-24 | 2025-12-17 | 3699 |  | GC1 | 8814884 |
| 3701 | 37100.37400.37600.38800.100700.130200.325800 | Structural steel | 67.5d | 2025-09-09 | 2025-12-22 | 3697FS+67.5d |  | GC1 | 8814894 |
| 3702 | 37100.37400.37600.38800.100700.130200.325900 | White Wash | 50.62d | 2025-12-18 | 2026-01-31 | 3700 |  | GC1 | 8814904 |
| 3703 | 37100.37400.37600.38800.39800 | **Superstructure** | 839.25d | 2025-07-11 | 2027-10-24 |  | start no earlier than 2025-07-11 | GC1 | 8805924 |
| 3704 | 37100.37400.37600.38800.39800.44200 | **RCC structure** | 496.12d | 2025-07-11 | 2026-12-23 |  | start no earlier than 2025-07-11 | GC1 | 8806074 |
| 3705 | 37100.37400.37600.38800.39800.44200.165600 | **1st floor slab** | 28.12d | 2025-07-11 | 2025-08-04 |  | start no earlier than 2025-07-11 | GC1 | 8808934 |
| 3706 | 37100.37400.37600.38800.39800.44200.165600.560500 | Reinforcement | 24.75d | 2025-07-11 | 2025-08-01 | 3697 |  | GC1 | 8824194 |
| 3707 | 37100.37400.37600.38800.39800.44200.165600.560600 | Wall conduiting | 3.38d | 2025-07-14 | 2025-07-16 | 3706SS+3.38d |  | GC1 | 8824204 |
| 3708 | 37100.37400.37600.38800.39800.44200.165600.560700 | Formwork | 23.62d | 2025-07-14 | 2025-08-03 | 3706SS+3.38d |  | GC1 | 8824214 |
| 3709 | 37100.37400.37600.38800.39800.44200.165600.560800 | Concreting | 1.12d | 2025-08-04 | 2025-08-04 | 3708 |  | GC1 | 8824224 |

| ID | WBS | Task | Duration | Start | Finish | Predecessors | Constraint | Calendar | Unique_Task_ID |
| --- | --- | --- | --- | --- | --- | --- | --- | --- | --- |
| 3710 | 37100.37400.37600.38800.39800.44200.165700 | **2nd floor slab** | 23.62d | 2025-08-05 | 2025-08-25 |  | start no earlier than 2025-08-05 | GC1 | 8808924 |
| 3711 | 37100.37400.37600.38800.39800.44200.165700.560900 | Reinforcement | 20.25d | 2025-08-05 | 2025-08-22 | 3709 |  | GC1 | 8824234 |
| 3712 | 37100.37400.37600.38800.39800.44200.165700.561000 | Wall conduiting | 3.38d | 2025-08-07 | 2025-08-09 | 3707FS+0.25d, 3711SS+2.25d |  | GC1 | 8824244 |
| 3713 | 37100.37400.37600.38800.39800.44200.165700.561100 | Formwork | 19.12d | 2025-08-08 | 2025-08-24 | 3711SS+3.38d |  | GC1 | 8824254 |
| 3714 | 37100.37400.37600.38800.39800.44200.165700.561200 | Concreting | 1.12d | 2025-08-25 | 2025-08-25 | 3713 |  | GC1 | 8824264 |
| 3715 | 37100.37400.37600.38800.39800.44200.165800 | **3rd floor slab** | 16.88d | 2025-08-26 | 2025-09-09 |  | start no earlier than 2025-08-26 | GC1 | 8808914 |
| 3716 | 37100.37400.37600.38800.39800.44200.165800.561300 | Reinforcement | 12.38d | 2025-08-26 | 2025-09-05 | 3714 |  | GC1 | 8824274 |
| 3717 | 37100.37400.37600.38800.39800.44200.165800.561400 | Wall conduiting | 3.38d | 2025-08-29 | 2025-08-31 | 3712, 3716SS+3.38d |  | GC1 | 8824284 |
| 3718 | 37100.37400.37600.38800.39800.44200.165800.561500 | Formwork | 11.25d | 2025-08-30 | 2025-09-08 | 3716SS+4.5d |  | GC1 | 8824294 |
| 3719 | 37100.37400.37600.38800.39800.44200.165800.561600 | Concreting | 1.12d | 2025-09-09 | 2025-09-09 | 3718 |  | GC1 | 8824304 |
| 3720 | 37100.37400.37600.38800.39800.44200.165900 | **4th floor slab** | 10.12d | 2025-09-10 | 2025-09-18 |  | start no earlier than 2025-09-10 | GC1 | 8808904 |
| 3721 | 37100.37400.37600.38800.39800.44200.165900.561700 | Reinforcement | 7.88d | 2025-09-10 | 2025-09-16 | 3719 |  | GC1 | 8824314 |
| 3722 | 37100.37400.37600.38800.39800.44200.165900.561800 | Wall conduiting | 2.25d | 2025-09-11 | 2025-09-12 | 3717, 3721SS+1.12d |  | GC1 | 8824324 |
| 3723 | 37100.37400.37600.38800.39800.44200.165900.561900 | Formwork | 6.75d | 2025-09-12 | 2025-09-17 | 3721SS+2.25d |  | GC1 | 8824334 |
| 3724 | 37100.37400.37600.38800.39800.44200.165900.562000 | Concreting | 1.12d | 2025-09-18 | 2025-09-18 | 3723 |  | GC1 | 8824344 |
| 3725 | 37100.37400.37600.38800.39800.44200.166000 | **5th floor slab** | 10.12d | 2025-09-19 | 2025-09-27 |  | start no earlier than 2025-09-19 | GC1 | 8808894 |
| 3726 | 37100.37400.37600.38800.39800.44200.166000.562100 | Reinforcement | 7.88d | 2025-09-19 | 2025-09-25 | 3724 |  | GC1 | 8824354 |
| 3727 | 37100.37400.37600.38800.39800.44200.166000.562200 | Wall conduiting | 2.25d | 2025-09-20 | 2025-09-21 | 3722, 3726SS+1.12d |  | GC1 | 8824364 |
| 3728 | 37100.37400.37600.38800.39800.44200.166000.562300 | Formwork | 6.75d | 2025-09-21 | 2025-09-26 | 3726SS+2.25d |  | GC1 | 8824374 |
| 3729 | 37100.37400.37600.38800.39800.44200.166000.562400 | Concreting | 1.12d | 2025-09-27 | 2025-09-27 | 3728 |  | GC1 | 8824384 |
| 3730 | 37100.37400.37600.38800.39800.44200.166100 | **6th floor slab** | 10.12d | 2025-09-28 | 2025-10-06 |  | start no earlier than 2025-09-28 | GC1 | 8808884 |
| 3731 | 37100.37400.37600.38800.39800.44200.166100.562500 | Reinforcement | 7.88d | 2025-09-28 | 2025-10-04 | 3729 |  | GC1 | 8824394 |
| 3732 | 37100.37400.37600.38800.39800.44200.166100.562600 | Wall conduiting | 2.25d | 2025-09-29 | 2025-09-30 | 3727, 3731SS+1.12d |  | GC1 | 8824404 |
| 3733 | 37100.37400.37600.38800.39800.44200.166100.562700 | Formwork | 6.75d | 2025-09-30 | 2025-10-05 | 3731SS+2.25d |  | GC1 | 8824414 |
| 3734 | 37100.37400.37600.38800.39800.44200.166100.562800 | Concreting | 1.12d | 2025-10-06 | 2025-10-06 | 3733 |  | GC1 | 8824424 |

| ID | WBS | Task | Duration | Start | Finish | Predecessors | Constraint | Calendar | Unique_Task_ID |
| --- | --- | --- | --- | --- | --- | --- | --- | --- | --- |
| 3735 | 37100.37400.37600.38800.39800.44200.166200 | **7th floor slab** | 10.12d | 2025-10-07 | 2025-10-15 |  | start no earlier than 2025-10-07 | GC1 | 8808874 |
| 3736 | 37100.37400.37600.38800.39800.44200.166200.562900 | Reinforcement | 7.88d | 2025-10-07 | 2025-10-13 | 3734 |  | GC1 | 8824434 |
| 3737 | 37100.37400.37600.38800.39800.44200.166200.563000 | Wall conduiting | 2.25d | 2025-10-08 | 2025-10-09 | 3732, 3736SS+1.12d |  | GC1 | 8824444 |
| 3738 | 37100.37400.37600.38800.39800.44200.166200.563100 | Formwork | 6.75d | 2025-10-09 | 2025-10-14 | 3736SS+2.25d |  | GC1 | 8824454 |
| 3739 | 37100.37400.37600.38800.39800.44200.166200.563200 | Concreting | 1.12d | 2025-10-15 | 2025-10-15 | 3738 |  | GC1 | 8824464 |
| 3740 | 37100.37400.37600.38800.39800.44200.166300 | **8th floor slab** | 13.5d | 2025-10-16 | 2025-10-27 |  | start no earlier than 2025-10-16 | GC1 | 8808864 |
| 3741 | 37100.37400.37600.38800.39800.44200.166300.563300 | Reinforcement | 11.25d | 2025-10-16 | 2025-10-25 | 3739 |  | GC1 | 8824474 |
| 3742 | 37100.37400.37600.38800.39800.44200.166300.563400 | Wall conduiting | 2.25d | 2025-10-17 | 2025-10-18 | 3737, 3741SS+1.12d |  | GC1 | 8824484 |
| 3743 | 37100.37400.37600.38800.39800.44200.166300.563500 | Formwork | 10.12d | 2025-10-18 | 2025-10-26 | 3741SS+2.25d |  | GC1 | 8824494 |
| 3744 | 37100.37400.37600.38800.39800.44200.166300.563600 | Concreting | 1.12d | 2025-10-27 | 2025-10-27 | 3743 |  | GC1 | 8824504 |
| 3745 | 37100.37400.37600.38800.39800.44200.166400 | **9th floor slab** | 10.12d | 2025-10-28 | 2025-12-20 |  | start no earlier than 2025-10-28 | GC1 | 8808854 |
| 3746 | 37100.37400.37600.38800.39800.44200.166400.563700 | Reinforcement | 7.88d | 2025-10-28 | 2025-12-18 | 3744 |  | GC1 | 8824514 |
| 3747 | 37100.37400.37600.38800.39800.44200.166400.563800 | Wall conduiting | 2.25d | 2025-10-29 | 2025-10-30 | 3742, 3746SS+1.12d |  | GC1 | 8824524 |
| 3748 | 37100.37400.37600.38800.39800.44200.166400.563900 | Formwork | 6.75d | 2025-10-30 | 2025-12-19 | 3746SS+2.25d |  | GC1 | 8824534 |
| 3749 | 37100.37400.37600.38800.39800.44200.166400.564000 | Concreting | 1.12d | 2025-12-20 | 2025-12-20 | 3748 |  | GC1 | 8824544 |
| 3750 | 37100.37400.37600.38800.39800.44200.166500 | **10th floor slab** | 10.12d | 2025-12-21 | 2025-12-29 |  | start no earlier than 2025-12-21 | GC1 | 8808844 |
| 3751 | 37100.37400.37600.38800.39800.44200.166500.564100 | Reinforcement | 7.88d | 2025-12-21 | 2025-12-27 | 3749 |  | GC1 | 8824554 |
| 3752 | 37100.37400.37600.38800.39800.44200.166500.564200 | Wall conduiting | 2.25d | 2025-12-22 | 2025-12-23 | 3747, 3751SS+1.12d |  | GC1 | 8824564 |
| 3753 | 37100.37400.37600.38800.39800.44200.166500.564300 | Formwork | 6.75d | 2025-12-23 | 2025-12-28 | 3751SS+2.25d |  | GC1 | 8824574 |
| 3754 | 37100.37400.37600.38800.39800.44200.166500.564400 | Concreting | 1.12d | 2025-12-29 | 2025-12-29 | 3753 |  | GC1 | 8824584 |
| 3755 | 37100.37400.37600.38800.39800.44200.166600 | **11th floor slab** | 10.12d | 2025-12-30 | 2026-01-07 |  | start no earlier than 2025-12-30 | GC1 | 8808834 |
| 3756 | 37100.37400.37600.38800.39800.44200.166600.564500 | Reinforcement | 7.88d | 2025-12-30 | 2026-01-05 | 3754 |  | GC1 | 8824594 |
| 3757 | 37100.37400.37600.38800.39800.44200.166600.564600 | Wall conduiting | 2.25d | 2025-12-31 | 2026-01-01 | 3752, 3756SS+1.12d |  | GC1 | 8824604 |
| 3758 | 37100.37400.37600.38800.39800.44200.166600.564700 | Formwork | 6.75d | 2026-01-01 | 2026-01-06 | 3756SS+2.25d |  | GC1 | 8824614 |
| 3759 | 37100.37400.37600.38800.39800.44200.166600.564800 | Concreting | 1.12d | 2026-01-07 | 2026-01-07 | 3758 |  | GC1 | 8824624 |

| ID | WBS | Task | Duration | Start | Finish | Predecessors | Constraint | Calendar | Unique_Task_ID |
| --- | --- | --- | --- | --- | --- | --- | --- | --- | --- |
| 3760 | 37100.37400.37600.38800.39800.44200.166700 | **12th floor slab** | 10.12d | 2026-01-08 | 2026-01-16 |  | start no earlier than 2026-01-08 | GC1 | 8808824 |
| 3761 | 37100.37400.37600.38800.39800.44200.166700.564900 | Reinforcement | 7.88d | 2026-01-08 | 2026-01-14 | 3759 |  | GC1 | 8824634 |
| 3762 | 37100.37400.37600.38800.39800.44200.166700.565000 | Wall conduiting | 2.25d | 2026-01-09 | 2026-01-10 | 3757, 3761SS+1.12d |  | GC1 | 8824644 |
| 3763 | 37100.37400.37600.38800.39800.44200.166700.565100 | Formwork | 6.75d | 2026-01-10 | 2026-01-15 | 3761SS+2.25d |  | GC1 | 8824654 |
| 3764 | 37100.37400.37600.38800.39800.44200.166700.565200 | Concreting | 1.12d | 2026-01-16 | 2026-01-16 | 3763 |  | GC1 | 8824664 |
| 3765 | 37100.37400.37600.38800.39800.44200.166800 | **13th floor slab** | 10.12d | 2026-01-17 | 2026-01-25 |  | start no earlier than 2026-01-17 | GC1 | 8808814 |
| 3766 | 37100.37400.37600.38800.39800.44200.166800.565300 | Reinforcement | 7.88d | 2026-01-17 | 2026-01-23 | 3764 |  | GC1 | 8824674 |
| 3767 | 37100.37400.37600.38800.39800.44200.166800.565400 | Wall conduiting | 2.25d | 2026-01-18 | 2026-01-19 | 3762, 3766SS+1.12d |  | GC1 | 8824684 |
| 3768 | 37100.37400.37600.38800.39800.44200.166800.565500 | Formwork | 6.75d | 2026-01-19 | 2026-01-24 | 3766SS+2.25d |  | GC1 | 8824694 |
| 3769 | 37100.37400.37600.38800.39800.44200.166800.565600 | Concreting | 1.12d | 2026-01-25 | 2026-01-25 | 3768 |  | GC1 | 8824704 |
| 3770 | 37100.37400.37600.38800.39800.44200.166900 | **14th floor slab** | 10.12d | 2026-01-26 | 2026-02-03 |  | start no earlier than 2026-01-26 | GC1 | 8808804 |
| 3771 | 37100.37400.37600.38800.39800.44200.166900.565700 | Reinforcement | 7.88d | 2026-01-26 | 2026-02-01 | 3769 |  | GC1 | 8824714 |
| 3772 | 37100.37400.37600.38800.39800.44200.166900.565800 | Wall conduiting | 2.25d | 2026-01-27 | 2026-01-28 | 3767, 3771SS+1.12d |  | GC1 | 8824724 |
| 3773 | 37100.37400.37600.38800.39800.44200.166900.565900 | Formwork | 6.75d | 2026-01-28 | 2026-02-02 | 3771SS+2.25d |  | GC1 | 8824734 |
| 3774 | 37100.37400.37600.38800.39800.44200.166900.566000 | Concreting | 1.12d | 2026-02-03 | 2026-02-03 | 3773 |  | GC1 | 8824744 |
| 3775 | 37100.37400.37600.38800.39800.44200.167000 | **15th floor slab** | 10.12d | 2026-02-04 | 2026-02-12 |  | start no earlier than 2026-02-04 | GC1 | 8808794 |
| 3776 | 37100.37400.37600.38800.39800.44200.167000.566100 | Reinforcement | 7.88d | 2026-02-04 | 2026-02-10 | 3774 |  | GC1 | 8824754 |
| 3777 | 37100.37400.37600.38800.39800.44200.167000.566200 | Wall conduiting | 2.25d | 2026-02-05 | 2026-02-06 | 3772, 3776SS+1.12d |  | GC1 | 8824764 |
| 3778 | 37100.37400.37600.38800.39800.44200.167000.566300 | Formwork | 6.75d | 2026-02-06 | 2026-02-11 | 3776SS+2.25d |  | GC1 | 8824774 |
| 3779 | 37100.37400.37600.38800.39800.44200.167000.566400 | Concreting | 1.12d | 2026-02-12 | 2026-02-12 | 3778 |  | GC1 | 8824784 |
| 3780 | 37100.37400.37600.38800.39800.44200.167100 | **16th floor slab** | 13.5d | 2026-02-13 | 2026-02-24 |  | start no earlier than 2026-02-13 | GC1 | 8808784 |
| 3781 | 37100.37400.37600.38800.39800.44200.167100.566500 | Reinforcement | 10.12d | 2026-02-13 | 2026-02-21 | 3779 |  | GC1 | 8824794 |
| 3782 | 37100.37400.37600.38800.39800.44200.167100.566600 | Wall conduiting | 2.25d | 2026-02-14 | 2026-02-15 | 3777, 3781SS+1.12d |  | GC1 | 8824804 |
| 3783 | 37100.37400.37600.38800.39800.44200.167100.566700 | Formwork | 10.12d | 2026-02-15 | 2026-02-23 | 3781SS+2.25d |  | GC1 | 8824814 |
| 3784 | 37100.37400.37600.38800.39800.44200.167100.566800 | Concreting | 1.12d | 2026-02-24 | 2026-02-24 | 3783 |  | GC1 | 8824824 |

| ID | WBS | Task | Duration | Start | Finish | Predecessors | Constraint | Calendar | Unique_Task_ID |
| --- | --- | --- | --- | --- | --- | --- | --- | --- | --- |
| 3785 | 37100.37400.37600.38800.39800.44200.167200 | **17th floor slab** | 10.12d | 2026-02-25 | 2026-03-05 |  | start no earlier than 2026-02-25 | GC1 | 8808774 |
| 3786 | 37100.37400.37600.38800.39800.44200.167200.566900 | Reinforcement | 7.88d | 2026-02-25 | 2026-03-03 | 3784 |  | GC1 | 8824834 |
| 3787 | 37100.37400.37600.38800.39800.44200.167200.567000 | Wall conduiting | 2.25d | 2026-02-26 | 2026-02-27 | 3782, 3786SS+1.12d |  | GC1 | 8824844 |
| 3788 | 37100.37400.37600.38800.39800.44200.167200.567100 | Formwork | 6.75d | 2026-02-27 | 2026-03-04 | 3786SS+2.25d |  | GC1 | 8824854 |
| 3789 | 37100.37400.37600.38800.39800.44200.167200.567200 | Concreting | 1.12d | 2026-03-05 | 2026-03-05 | 3788 |  | GC1 | 8824864 |
| 3790 | 37100.37400.37600.38800.39800.44200.167300 | **18th floor slab** | 10.12d | 2026-03-06 | 2026-03-14 |  | start no earlier than 2026-03-06 | GC1 | 8808764 |
| 3791 | 37100.37400.37600.38800.39800.44200.167300.567300 | Reinforcement | 7.88d | 2026-03-06 | 2026-03-12 | 3789 |  | GC1 | 8824874 |
| 3792 | 37100.37400.37600.38800.39800.44200.167300.567400 | Wall conduiting | 2.25d | 2026-03-07 | 2026-03-08 | 3787, 3791SS+1.12d |  | GC1 | 8824884 |
| 3793 | 37100.37400.37600.38800.39800.44200.167300.567500 | Formwork | 6.75d | 2026-03-08 | 2026-03-13 | 3791SS+2.25d |  | GC1 | 8824894 |
| 3794 | 37100.37400.37600.38800.39800.44200.167300.567600 | Concreting | 1.12d | 2026-03-14 | 2026-03-14 | 3793 |  | GC1 | 8824904 |
| 3795 | 37100.37400.37600.38800.39800.44200.167400 | **19th floor slab** | 9d | 2026-03-15 | 2026-03-22 |  | start no earlier than 2026-03-15 | GC1 | 8808754 |
| 3796 | 37100.37400.37600.38800.39800.44200.167400.567700 | Reinforcement | 7.88d | 2026-03-15 | 2026-03-21 | 3794 |  | GC1 | 8824914 |
| 3797 | 37100.37400.37600.38800.39800.44200.167400.567800 | Wall conduiting | 2.25d | 2026-03-16 | 2026-03-17 | 3792, 3796SS+1.12d |  | GC1 | 8824924 |
| 3798 | 37100.37400.37600.38800.39800.44200.167400.567900 | Formwork | 6.75d | 2026-03-16 | 2026-03-21 | 3796SS+1.12d |  | GC1 | 8824934 |
| 3799 | 37100.37400.37600.38800.39800.44200.167400.568000 | Concreting | 1.12d | 2026-03-22 | 2026-03-22 | 3798 |  | GC1 | 8824944 |
| 3800 | 37100.37400.37600.38800.39800.44200.167500 | **20th floor slab** | 9d | 2026-03-23 | 2026-03-30 |  | start no earlier than 2026-03-23 | GC1 | 8808744 |
| 3801 | 37100.37400.37600.38800.39800.44200.167500.568100 | Reinforcement | 7.88d | 2026-03-23 | 2026-03-29 | 3799 |  | GC1 | 8824954 |
| 3802 | 37100.37400.37600.38800.39800.44200.167500.568200 | Wall conduiting | 2.25d | 2026-03-24 | 2026-03-25 | 3797, 3801SS+1.12d |  | GC1 | 8824964 |
| 3803 | 37100.37400.37600.38800.39800.44200.167500.568300 | Formwork | 6.75d | 2026-03-24 | 2026-03-29 | 3801SS+1.12d |  | GC1 | 8824974 |
| 3804 | 37100.37400.37600.38800.39800.44200.167500.568400 | Concreting | 1.12d | 2026-03-30 | 2026-03-30 | 3803 |  | GC1 | 8824984 |
| 3805 | 37100.37400.37600.38800.39800.44200.167600 | **21st floor slab** | 11.25d | 2026-03-31 | 2026-04-09 |  | start no earlier than 2026-03-31 | GC1 | 8808734 |
| 3806 | 37100.37400.37600.38800.39800.44200.167600.568500 | Reinforcement | 9d | 2026-03-31 | 2026-04-07 | 3804 |  | GC1 | 8824994 |
| 3807 | 37100.37400.37600.38800.39800.44200.167600.568600 | Wall conduiting | 2.25d | 2026-04-01 | 2026-04-02 | 3802, 3806SS+1.12d |  | GC1 | 8825004 |
| 3808 | 37100.37400.37600.38800.39800.44200.167600.568700 | Formwork | 7.88d | 2026-04-02 | 2026-04-08 | 3806SS+2.25d |  | GC1 | 8825014 |
| 3809 | 37100.37400.37600.38800.39800.44200.167600.568800 | Concreting | 1.12d | 2026-04-09 | 2026-04-09 | 3808 |  | GC1 | 8825024 |

| ID | WBS | Task | Duration | Start | Finish | Predecessors | Constraint | Calendar | Unique_Task_ID |
| --- | --- | --- | --- | --- | --- | --- | --- | --- | --- |
| 3810 | 37100.37400.37600.38800.39800.44200.167700 | **22nd floor slab** | 11.25d | 2026-04-10 | 2026-04-19 |  | start no earlier than 2026-04-10 | GC1 | 8808724 |
| 3811 | 37100.37400.37600.38800.39800.44200.167700.568900 | Reinforcement | 9d | 2026-04-10 | 2026-04-17 | 3809 |  | GC1 | 8825034 |
| 3812 | 37100.37400.37600.38800.39800.44200.167700.569000 | Wall conduiting | 2.25d | 2026-04-11 | 2026-04-12 | 3807, 3811SS+1.12d |  | GC1 | 8825044 |
| 3813 | 37100.37400.37600.38800.39800.44200.167700.569100 | Formwork | 7.88d | 2026-04-12 | 2026-04-18 | 3811SS+2.25d |  | GC1 | 8825054 |
| 3814 | 37100.37400.37600.38800.39800.44200.167700.569200 | Concreting | 1.12d | 2026-04-19 | 2026-04-19 | 3813 |  | GC1 | 8825064 |
| 3815 | 37100.37400.37600.38800.39800.44200.167800 | **23rd floor slab** | 11.25d | 2026-04-20 | 2026-04-29 |  | start no earlier than 2026-04-20 | GC1 | 8808714 |
| 3816 | 37100.37400.37600.38800.39800.44200.167800.569300 | Reinforcement | 9d | 2026-04-20 | 2026-04-27 | 3814 |  | GC1 | 8825074 |
| 3817 | 37100.37400.37600.38800.39800.44200.167800.569400 | Wall conduiting | 2.25d | 2026-04-21 | 2026-04-22 | 3812, 3816SS+1.12d |  | GC1 | 8825084 |
| 3818 | 37100.37400.37600.38800.39800.44200.167800.569500 | Formwork | 7.88d | 2026-04-22 | 2026-04-28 | 3816SS+2.25d |  | GC1 | 8825094 |
| 3819 | 37100.37400.37600.38800.39800.44200.167800.569600 | Concreting | 1.12d | 2026-04-29 | 2026-04-29 | 3818 |  | GC1 | 8825104 |
| 3820 | 37100.37400.37600.38800.39800.44200.167900 | **24th floor slab** | 14.62d | 2026-04-30 | 2026-05-12 |  | start no earlier than 2026-04-30 | GC1 | 8808704 |
| 3821 | 37100.37400.37600.38800.39800.44200.167900.569700 | Reinforcement | 11.25d | 2026-04-30 | 2026-05-09 | 3819 |  | GC1 | 8825114 |
| 3822 | 37100.37400.37600.38800.39800.44200.167900.569800 | Wall conduiting | 2.25d | 2026-05-01 | 2026-05-02 | 3817, 3821SS+1.12d |  | GC1 | 8825124 |
| 3823 | 37100.37400.37600.38800.39800.44200.167900.569900 | Formwork | 11.25d | 2026-05-02 | 2026-05-11 | 3821SS+2.25d |  | GC1 | 8825134 |
| 3824 | 37100.37400.37600.38800.39800.44200.167900.570000 | Concreting | 1.12d | 2026-05-12 | 2026-05-12 | 3823 |  | GC1 | 8825144 |
| 3825 | 37100.37400.37600.38800.39800.44200.168000 | **25th floor slab** | 14.62d | 2026-05-13 | 2026-05-25 |  | start no earlier than 2026-05-13 | GC1 | 8808694 |
| 3826 | 37100.37400.37600.38800.39800.44200.168000.570100 | Reinforcement | 11.25d | 2026-05-13 | 2026-05-22 | 3824 |  | GC1 | 8825154 |
| 3827 | 37100.37400.37600.38800.39800.44200.168000.570200 | Wall conduiting | 2.25d | 2026-05-14 | 2026-05-15 | 3822, 3826SS+1.12d |  | GC1 | 8825164 |
| 3828 | 37100.37400.37600.38800.39800.44200.168000.570300 | Formwork | 11.25d | 2026-05-15 | 2026-05-24 | 3826SS+2.25d |  | GC1 | 8825174 |
| 3829 | 37100.37400.37600.38800.39800.44200.168000.570400 | Concreting | 1.12d | 2026-05-25 | 2026-05-25 | 3828 |  | GC1 | 8825184 |
| 3830 | 37100.37400.37600.38800.39800.44200.168100 | **26th floor slab** | 11.25d | 2026-05-26 | 2026-06-04 |  | start no earlier than 2026-05-26 | GC1 | 8808684 |
| 3831 | 37100.37400.37600.38800.39800.44200.168100.570500 | Reinforcement | 9d | 2026-05-26 | 2026-06-02 | 3829 |  | GC1 | 8825194 |
| 3832 | 37100.37400.37600.38800.39800.44200.168100.570600 | Wall conduiting | 2.25d | 2026-05-27 | 2026-05-28 | 3827, 3831SS+1.12d |  | GC1 | 8825204 |
| 3833 | 37100.37400.37600.38800.39800.44200.168100.570700 | Formwork | 7.88d | 2026-05-28 | 2026-06-03 | 3831SS+2.25d |  | GC1 | 8825214 |
| 3834 | 37100.37400.37600.38800.39800.44200.168100.570800 | Concreting | 1.12d | 2026-06-04 | 2026-06-04 | 3833 |  | GC1 | 8825224 |

| ID | WBS | Task | Duration | Start | Finish | Predecessors | Constraint | Calendar | Unique_Task_ID |
| --- | --- | --- | --- | --- | --- | --- | --- | --- | --- |
| 3835 | 37100.37400.37600.38800.39800.44200.168200 | **27th floor slab** | 11.25d | 2026-06-05 | 2026-06-14 |  | start no earlier than 2026-06-05 | GC1 | 8808674 |
| 3836 | 37100.37400.37600.38800.39800.44200.168200.570900 | Reinforcement | 9d | 2026-06-05 | 2026-06-12 | 3834 |  | GC1 | 8825234 |
| 3837 | 37100.37400.37600.38800.39800.44200.168200.571000 | Wall conduiting | 2.25d | 2026-06-06 | 2026-06-07 | 3832, 3836SS+1.12d |  | GC1 | 8825244 |
| 3838 | 37100.37400.37600.38800.39800.44200.168200.571100 | Formwork | 7.88d | 2026-06-07 | 2026-06-13 | 3836SS+2.25d |  | GC1 | 8825254 |
| 3839 | 37100.37400.37600.38800.39800.44200.168200.571200 | Concreting | 1.12d | 2026-06-14 | 2026-06-14 | 3838 |  | GC1 | 8825264 |
| 3840 | 37100.37400.37600.38800.39800.44200.168300 | **28th floor slab** | 11.25d | 2026-06-15 | 2026-06-24 |  | start no earlier than 2026-06-15 | GC1 | 8808664 |
| 3841 | 37100.37400.37600.38800.39800.44200.168300.571300 | Reinforcement | 9d | 2026-06-15 | 2026-06-22 | 3839 |  | GC1 | 8825274 |
| 3842 | 37100.37400.37600.38800.39800.44200.168300.571400 | Wall conduiting | 2.25d | 2026-06-16 | 2026-06-17 | 3837, 3841SS+1.12d |  | GC1 | 8825284 |
| 3843 | 37100.37400.37600.38800.39800.44200.168300.571500 | Formwork | 7.88d | 2026-06-17 | 2026-06-23 | 3841SS+2.25d |  | GC1 | 8825294 |
| 3844 | 37100.37400.37600.38800.39800.44200.168300.571600 | Concreting | 1.12d | 2026-06-24 | 2026-06-24 | 3843 |  | GC1 | 8825304 |
| 3845 | 37100.37400.37600.38800.39800.44200.168400 | **29th floor slab** | 11.25d | 2026-06-25 | 2026-07-04 |  | start no earlier than 2026-06-25 | GC1 | 8808654 |
| 3846 | 37100.37400.37600.38800.39800.44200.168400.571700 | Reinforcement | 9d | 2026-06-25 | 2026-07-02 | 3844 |  | GC1 | 8825314 |
| 3847 | 37100.37400.37600.38800.39800.44200.168400.571800 | Wall conduiting | 2.25d | 2026-06-26 | 2026-06-27 | 3842, 3846SS+1.12d |  | GC1 | 8825324 |
| 3848 | 37100.37400.37600.38800.39800.44200.168400.571900 | Formwork | 7.88d | 2026-06-27 | 2026-07-03 | 3846SS+2.25d |  | GC1 | 8825334 |
| 3849 | 37100.37400.37600.38800.39800.44200.168400.572000 | Concreting | 1.12d | 2026-07-04 | 2026-07-04 | 3848 |  | GC1 | 8825344 |
| 3850 | 37100.37400.37600.38800.39800.44200.168500 | **30th floor slab** | 11.25d | 2026-07-05 | 2026-07-14 |  | start no earlier than 2026-07-05 | GC1 | 8808644 |
| 3851 | 37100.37400.37600.38800.39800.44200.168500.572100 | Reinforcement | 9d | 2026-07-05 | 2026-07-12 | 3849 |  | GC1 | 8825354 |
| 3852 | 37100.37400.37600.38800.39800.44200.168500.572200 | Wall conduiting | 2.25d | 2026-07-06 | 2026-07-07 | 3847, 3851SS+1.12d |  | GC1 | 8825364 |
| 3853 | 37100.37400.37600.38800.39800.44200.168500.572300 | Formwork | 7.88d | 2026-07-07 | 2026-07-13 | 3851SS+2.25d |  | GC1 | 8825374 |
| 3854 | 37100.37400.37600.38800.39800.44200.168500.572400 | Concreting | 1.12d | 2026-07-14 | 2026-07-14 | 3853 |  | GC1 | 8825384 |
| 3855 | 37100.37400.37600.38800.39800.44200.168600 | **31st floor slab** | 13.5d | 2026-07-15 | 2026-07-26 |  | start no earlier than 2026-07-15 | GC1 | 8808634 |
| 3856 | 37100.37400.37600.38800.39800.44200.168600.572500 | Reinforcement | 10.12d | 2026-07-15 | 2026-07-23 | 3854 |  | GC1 | 8825394 |
| 3857 | 37100.37400.37600.38800.39800.44200.168600.572600 | Wall conduiting | 2.25d | 2026-07-16 | 2026-07-17 | 3852, 3856SS+1.12d |  | GC1 | 8825404 |
| 3858 | 37100.37400.37600.38800.39800.44200.168600.572700 | Formwork | 10.12d | 2026-07-17 | 2026-07-25 | 3856SS+2.25d |  | GC1 | 8825414 |
| 3859 | 37100.37400.37600.38800.39800.44200.168600.572800 | Concreting | 1.12d | 2026-07-26 | 2026-07-26 | 3858 |  | GC1 | 8825424 |

| ID | WBS | Task | Duration | Start | Finish | Predecessors | Constraint | Calendar | Unique_Task_ID |
| --- | --- | --- | --- | --- | --- | --- | --- | --- | --- |
| 3860 | 37100.37400.37600.38800.39800.44200.168700 | **32nd floor slab** | 14.62d | 2026-07-27 | 2026-08-08 |  | start no earlier than 2026-07-27 | GC1 | 8808624 |
| 3861 | 37100.37400.37600.38800.39800.44200.168700.572900 | Reinforcement | 11.25d | 2026-07-27 | 2026-08-05 | 3859 |  | GC1 | 8825434 |
| 3862 | 37100.37400.37600.38800.39800.44200.168700.573000 | Wall conduiting | 2.25d | 2026-07-28 | 2026-07-29 | 3857, 3861SS+1.12d |  | GC1 | 8825444 |
| 3863 | 37100.37400.37600.38800.39800.44200.168700.573100 | Formwork | 11.25d | 2026-07-29 | 2026-08-07 | 3861SS+2.25d |  | GC1 | 8825454 |
| 3864 | 37100.37400.37600.38800.39800.44200.168700.573200 | Concreting | 1.12d | 2026-08-08 | 2026-08-08 | 3863 |  | GC1 | 8825464 |
| 3865 | 37100.37400.37600.38800.39800.44200.168800 | **33rd floor slab** | 13.5d | 2026-08-09 | 2026-08-20 |  | start no earlier than 2026-08-09 | GC1 | 8808614 |
| 3866 | 37100.37400.37600.38800.39800.44200.168800.573300 | Reinforcement | 10.12d | 2026-08-09 | 2026-08-17 | 3864 |  | GC1 | 8825474 |
| 3867 | 37100.37400.37600.38800.39800.44200.168800.573400 | Wall conduiting | 2.25d | 2026-08-10 | 2026-08-11 | 3862, 3866SS+1.12d |  | GC1 | 8825484 |
| 3868 | 37100.37400.37600.38800.39800.44200.168800.573500 | Formwork | 10.12d | 2026-08-11 | 2026-08-19 | 3866SS+2.25d |  | GC1 | 8825494 |
| 3869 | 37100.37400.37600.38800.39800.44200.168800.573600 | Concreting | 1.12d | 2026-08-20 | 2026-08-20 | 3868 |  | GC1 | 8825504 |
| 3870 | 37100.37400.37600.38800.39800.44200.168900 | **34th floor slab** | 14.62d | 2026-08-21 | 2026-09-02 |  | start no earlier than 2026-08-21 | GC1 | 8808604 |
| 3871 | 37100.37400.37600.38800.39800.44200.168900.573700 | Reinforcement | 11.25d | 2026-08-21 | 2026-08-30 | 3869 |  | GC1 | 8825514 |
| 3872 | 37100.37400.37600.38800.39800.44200.168900.573800 | Wall conduiting | 2.25d | 2026-08-22 | 2026-08-23 | 3867, 3871SS+1.12d |  | GC1 | 8825524 |
| 3873 | 37100.37400.37600.38800.39800.44200.168900.573900 | Formwork | 11.25d | 2026-08-23 | 2026-09-01 | 3871SS+2.25d |  | GC1 | 8825534 |
| 3874 | 37100.37400.37600.38800.39800.44200.168900.574000 | Concreting | 1.12d | 2026-09-02 | 2026-09-02 | 3873 |  | GC1 | 8825544 |
| 3875 | 37100.37400.37600.38800.39800.44200.169000 | **35th floor slab** | 13.5d | 2026-09-03 | 2026-09-14 |  | start no earlier than 2026-09-03 | GC1 | 8808594 |
| 3876 | 37100.37400.37600.38800.39800.44200.169000.574100 | Reinforcement | 10.12d | 2026-09-03 | 2026-09-11 | 3874 |  | GC1 | 8825554 |
| 3877 | 37100.37400.37600.38800.39800.44200.169000.574200 | Wall conduiting | 2.25d | 2026-09-04 | 2026-09-05 | 3872, 3876SS+1.12d |  | GC1 | 8825564 |
| 3878 | 37100.37400.37600.38800.39800.44200.169000.574300 | Formwork | 9d | 2026-09-06 | 2026-09-13 | 3877SS+2.25d |  | GC1 | 8825574 |
| 3879 | 37100.37400.37600.38800.39800.44200.169000.574400 | Concreting | 1.12d | 2026-09-14 | 2026-09-14 | 3878 |  | GC1 | 8825584 |
| 3880 | 37100.37400.37600.38800.39800.44200.169100 | **Terrace floor slab** | 16.88d | 2026-09-15 | 2026-09-29 |  | start no earlier than 2026-09-15 | GC1 | 8808584 |
| 3881 | 37100.37400.37600.38800.39800.44200.169100.574500 | Reinforcement | 12.38d | 2026-09-15 | 2026-09-25 | 3879 |  | GC1 | 8825594 |
| 3882 | 37100.37400.37600.38800.39800.44200.169100.574600 | Wall conduiting | 2.25d | 2026-09-16 | 2026-09-17 | 3877, 3881SS+1.12d |  | GC1 | 8825604 |
| 3883 | 37100.37400.37600.38800.39800.44200.169100.574700 | Formwork | 13.5d | 2026-09-17 | 2026-09-28 | 3881SS+2.25d |  | GC1 | 8825614 |
| 3884 | 37100.37400.37600.38800.39800.44200.169100.574800 | Concreting | 1.12d | 2026-09-29 | 2026-09-29 | 3883 |  | GC1 | 8825624 |

| ID | WBS | Task | Duration | Start | Finish | Predecessors | Constraint | Calendar | Unique_Task_ID |
| --- | --- | --- | --- | --- | --- | --- | --- | --- | --- |
| 3885 | 37100.37400.37600.38800.39800.44200.169200 | **OHT & Mumty** | 45d | 2026-09-30 | 2026-12-23 |  | start no earlier than 2026-09-30 | GC1 | 8808574 |
| 3886 | 37100.37400.37600.38800.39800.44200.169200.574900 | Reinforcement | 33.75d | 2026-09-30 | 2026-10-29 | 3884 |  | GC1 | 8825634 |
| 3887 | 37100.37400.37600.38800.39800.44200.169200.575000 | Wall conduiting | 5.62d | 2026-10-01 | 2026-10-05 | 3882, 3886SS+1.12d |  | GC1 | 8825644 |
| 3888 | 37100.37400.37600.38800.39800.44200.169200.575100 | Formwork | 37.12d | 2026-10-04 | 2026-12-20 | 3886SS+4.5d |  | GC1 | 8825654 |
| 3889 | 37100.37400.37600.38800.39800.44200.169200.575200 | Concreting | 3.38d | 2026-12-21 | 2026-12-23 | 3888 |  | GC1 | 8825664 |
| 3890 | 37100.37400.37600.38800.39800.45700 | **Post Pour Activities** | 448.62d | 2025-09-10 | 2027-01-11 |  | start no earlier than 2025-09-10 | GC1 | 8806124 |
| 3891 | 37100.37400.37600.38800.39800.45700.326000 | 1st Floor | 12.38d | 2025-09-10 | 2025-09-21 | 3719FS+0.25d |  | GC1 | 8814914 |
| 3892 | 37100.37400.37600.38800.39800.45700.326100 | 2nd Floor | 12.38d | 2025-09-28 | 2025-10-08 | 3891, 3729 |  | GC1 | 8814924 |
| 3893 | 37100.37400.37600.38800.39800.45700.326200 | 3rd Floor | 12.38d | 2025-10-09 | 2025-10-19 | 3892, 3734 |  | GC1 | 8814934 |
| 3894 | 37100.37400.37600.38800.39800.45700.326300 | 4th Floor | 12.38d | 2025-10-20 | 2025-10-30 | 3893, 3739 |  | GC1 | 8814944 |
| 3895 | 37100.37400.37600.38800.39800.45700.326400 | 5th Floor | 12.38d | 2025-10-31 | 2025-12-25 | 3894, 3744 |  | GC1 | 8814954 |
| 3896 | 37100.37400.37600.38800.39800.45700.326500 | 6th Floor | 12.38d | 2025-12-26 | 2026-01-05 | 3895, 3749 |  | GC1 | 8814964 |
| 3897 | 37100.37400.37600.38800.39800.45700.326600 | 7th Floor | 12.38d | 2026-01-06 | 2026-01-16 | 3896, 3754 |  | GC1 | 8814974 |
| 3898 | 37100.37400.37600.38800.39800.45700.326700 | 8th Floor | 12.38d | 2026-01-17 | 2026-01-27 | 3897, 3759 |  | GC1 | 8814984 |
| 3899 | 37100.37400.37600.38800.39800.45700.326800 | 9th Floor | 12.38d | 2026-01-28 | 2026-02-07 | 3898, 3764 |  | GC1 | 8814994 |
| 3900 | 37100.37400.37600.38800.39800.45700.326900 | 10th Floor | 12.38d | 2026-02-08 | 2026-02-18 | 3899, 3769 |  | GC1 | 8815004 |
| 3901 | 37100.37400.37600.38800.39800.45700.327000 | 11th Floor | 12.38d | 2026-02-19 | 2026-03-01 | 3900, 3774 |  | GC1 | 8815014 |
| 3902 | 37100.37400.37600.38800.39800.45700.327100 | 12th Floor | 12.38d | 2026-03-02 | 2026-03-12 | 3901, 3779 |  | GC1 | 8815024 |
| 3903 | 37100.37400.37600.38800.39800.45700.327200 | 13th Floor | 12.38d | 2026-03-13 | 2026-03-23 | 3902, 3784 |  | GC1 | 8815034 |
| 3904 | 37100.37400.37600.38800.39800.45700.327300 | 14th Floor | 12.38d | 2026-03-24 | 2026-04-03 | 3903, 3789 |  | GC1 | 8815044 |
| 3905 | 37100.37400.37600.38800.39800.45700.327400 | 15th Floor | 12.38d | 2026-04-04 | 2026-04-14 | 3904, 3794 |  | GC1 | 8815054 |
| 3906 | 37100.37400.37600.38800.39800.45700.327500 | 16th Floor | 12.38d | 2026-04-15 | 2026-04-25 | 3905, 3799 |  | GC1 | 8815064 |
| 3907 | 37100.37400.37600.38800.39800.45700.327600 | 17th Floor | 12.38d | 2026-04-26 | 2026-05-06 | 3906, 3804 |  | GC1 | 8815074 |
| 3908 | 37100.37400.37600.38800.39800.45700.327700 | 18th Floor | 12.38d | 2026-05-07 | 2026-05-17 | 3907, 3809 |  | GC1 | 8815084 |
| 3909 | 37100.37400.37600.38800.39800.45700.327800 | 19th Floor | 12.38d | 2026-05-18 | 2026-05-28 | 3908, 3814 |  | GC1 | 8815094 |
| 3910 | 37100.37400.37600.38800.39800.45700.327900 | 20th Floor | 12.38d | 2026-05-29 | 2026-06-08 | 3909, 3819 |  | GC1 | 8815104 |
| 3911 | 37100.37400.37600.38800.39800.45700.328000 | 21st Floor | 12.38d | 2026-06-09 | 2026-06-19 | 3910, 3824 |  | GC1 | 8815114 |
| 3912 | 37100.37400.37600.38800.39800.45700.328100 | 22nd Floor | 12.38d | 2026-06-20 | 2026-06-30 | 3911, 3829 |  | GC1 | 8815124 |
| 3913 | 37100.37400.37600.38800.39800.45700.328200 | 23rd Floor | 12.38d | 2026-07-01 | 2026-07-11 | 3912, 3834 |  | GC1 | 8815134 |
| 3914 | 37100.37400.37600.38800.39800.45700.328300 | 24th Floor | 12.38d | 2026-07-12 | 2026-07-22 | 3913, 3839 |  | GC1 | 8815144 |
| 3915 | 37100.37400.37600.38800.39800.45700.328400 | 25th Floor | 12.38d | 2026-07-23 | 2026-08-02 | 3914, 3844 |  | GC1 | 8815154 |
| 3916 | 37100.37400.37600.38800.39800.45700.328500 | 26th Floor | 12.38d | 2026-08-03 | 2026-08-13 | 3915, 3849 |  | GC1 | 8815164 |
| 3917 | 37100.37400.37600.38800.39800.45700.328600 | 27th Floor | 12.38d | 2026-08-14 | 2026-08-24 | 3916, 3854 |  | GC1 | 8815174 |
| 3918 | 37100.37400.37600.38800.39800.45700.328700 | 28th Floor | 12.38d | 2026-08-25 | 2026-09-04 | 3917, 3859 |  | GC1 | 8815184 |
| 3919 | 37100.37400.37600.38800.39800.45700.328800 | 29th Floor | 12.38d | 2026-09-05 | 2026-09-15 | 3918, 3864 |  | GC1 | 8815194 |
| 3920 | 37100.37400.37600.38800.39800.45700.328900 | 30th Floor | 12.38d | 2026-09-16 | 2026-09-26 | 3919, 3869 |  | GC1 | 8815204 |
| 3921 | 37100.37400.37600.38800.39800.45700.329000 | 31st Floor | 12.38d | 2026-09-27 | 2026-10-07 | 3920, 3874 |  | GC1 | 8815214 |
| 3922 | 37100.37400.37600.38800.39800.45700.329100 | 32nd Flood | 12.38d | 2026-10-08 | 2026-10-18 | 3921, 3879 |  | GC1 | 8815224 |
| 3923 | 37100.37400.37600.38800.39800.45700.329200 | 33rd Floor | 9d | 2026-10-19 | 2026-10-26 | 3922 |  | GC1 | 8815234 |
| 3924 | 37100.37400.37600.38800.39800.45700.329300 | 34th Floor | 9d | 2026-10-27 | 2026-12-18 | 3923 |  | GC1 | 8815244 |
| 3925 | 37100.37400.37600.38800.39800.45700.329400 | 35th Floor | 9d | 2026-12-19 | 2026-12-26 | 3924 |  | GC1 | 8815254 |
| 3926 | 37100.37400.37600.38800.39800.45700.329500 | Terrace | 9d | 2026-12-27 | 2027-01-03 | 3925 |  | GC1 | 8815264 |
| 3927 | 37100.37400.37600.38800.39800.45700.329600 | Mumty & Machine Room | 9d | 2027-01-04 | 2027-01-11 | 3926, 3887 |  | GC1 | 8815274 |

| ID | WBS | Task | Duration | Start | Finish | Predecessors | Constraint | Calendar | Unique_Task_ID |
| --- | --- | --- | --- | --- | --- | --- | --- | --- | --- |
| 3928 | 37100.37400.37600.38800.39800.41200 | **Finishing work** | 757.75d | 2025-09-21 | 2027-10-24 |  | start no earlier than 2025-09-21 | GC1 | 8805974 |
| 3929 | 37100.37400.37600.38800.39800.41200.42200 | **Flat finishing** | 638.5d | 2025-09-21 | 2027-07-10 |  | start no earlier than 2025-09-21 | GC1 | 8806024 |
| 3930 | 37100.37400.37600.38800.39800.41200.42200.73400 | **1st Floor** | 95.62d | 2025-09-21 | 2026-01-29 |  | start no earlier than 2025-09-21 | GC1 | 8807594 |
| 3931 | 37100.37400.37600.38800.39800.41200.42200.73400.1284800 | Block Work | 7.88d | 2025-09-21 | 2025-09-28 | 3891FS+0.25d |  | GC1 | 8847154 |
| 3932 | 37100.37400.37600.38800.39800.41200.42200.73400.1284900 | Door Frame Fixing | 5.62d | 2025-09-28 | 2025-10-03 | 3931 |  | GC1 | 8847164 |
| 3933 | 37100.37400.37600.38800.39800.41200.42200.73400.1285000 | Internal Plumbing Works | 7.88d | 2025-09-28 | 2025-10-05 | 3931 |  | GC1 | 8847174 |
| 3934 | 37100.37400.37600.38800.39800.41200.42200.73400.1285100 | Waterproofing | 7.88d | 2025-10-05 | 2025-10-12 | 3933 |  | GC1 | 8847184 |
| 3935 | 37100.37400.37600.38800.39800.41200.42200.73400.1285200 | Internal Plaster | 5.62d | 2025-10-03 | 2025-10-08 | 3932FS+0.25d |  | GC1 | 8847194 |
| 3936 | 37100.37400.37600.38800.39800.41200.42200.73400.1285300 | IPS flooring work | 7.88d | 2025-10-12 | 2025-10-19 | 3932, 3933, 3934 |  | GC1 | 8847204 |
| 3937 | 37100.37400.37600.38800.39800.41200.42200.73400.1285400 | Toilet dado work | 7.88d | 2025-10-12 | 2025-10-19 | 3934, 3935 |  | GC1 | 8847214 |
| 3938 | 37100.37400.37600.38800.39800.41200.42200.73400.1285500 | Toilet flooring work | 6.75d | 2025-10-19 | 2025-10-25 | 3937 |  | GC1 | 8847224 |
| 3939 | 37100.37400.37600.38800.39800.41200.42200.73400.1285600 | Living dinning flooring | 10.12d | 2025-10-25 | 2025-12-18 | 3932, 3938 |  | GC1 | 8847234 |
| 3940 | 37100.37400.37600.38800.39800.41200.42200.73400.1285700 | Aluminium door-window fixing | 13.5d | 2025-12-18 | 2025-12-30 | 3939FS+0.25d |  | GC1 | 8847244 |
| 3941 | 37100.37400.37600.38800.39800.41200.42200.73400.1285800 | Putty primer coat | 6.75d | 2025-12-18 | 2025-12-24 | 3939 |  | GC1 | 8847254 |
| 3942 | 37100.37400.37600.38800.39800.41200.42200.73400.1285900 | Door shutter fixing | 9d | 2025-12-18 | 2025-12-26 | 3939 |  | GC1 | 8847264 |
| 3943 | 37100.37400.37600.38800.39800.41200.42200.73400.1286000 | Electrical wiring work | 13.5d | 2025-12-26 | 2026-01-07 | 3942 |  | GC1 | 8847274 |
| 3944 | 37100.37400.37600.38800.39800.41200.42200.73400.1286100 | Painting 1st coat | 13.5d | 2026-01-07 | 2026-01-19 | 3941, 3942, 3943 |  | GC1 | 8847284 |
| 3945 | 37100.37400.37600.38800.39800.41200.42200.73400.1286200 | False ceiling | 11.25d | 2026-01-19 | 2026-01-29 | 3944 |  | GC1 | 8847294 |
| 3946 | 37100.37400.37600.38800.39800.41200.42200.73500 | **2nd Floor** | 101d | 2025-09-28 | 2026-02-10 |  | start no earlier than 2025-09-28 | GC1 | 8807604 |
| 3947 | 37100.37400.37600.38800.39800.41200.42200.73500.1286300 | Block Work | 7.88d | 2025-09-28 | 2025-10-05 | 3931FS+0.25d |  | GC1 | 8847304 |
| 3948 | 37100.37400.37600.38800.39800.41200.42200.73500.1286400 | Door Frame Fixing | 5.62d | 2025-10-05 | 2025-10-10 | 3932, 3947 |  | GC1 | 8847314 |
| 3949 | 37100.37400.37600.38800.39800.41200.42200.73500.1286500 | Internal Plumbing Works | 7.88d | 2025-10-05 | 2025-10-12 | 3933, 3947 |  | GC1 | 8847324 |
| 3950 | 37100.37400.37600.38800.39800.41200.42200.73500.1286600 | Waterproofing | 7.88d | 2025-10-12 | 2025-10-19 | 3934, 3949 |  | GC1 | 8847334 |
| 3951 | 37100.37400.37600.38800.39800.41200.42200.73500.1286700 | Internal Plaster | 5.62d | 2025-10-10 | 2025-10-15 | 3935FS+0.25d, 3948 |  | GC1 | 8847344 |
| 3952 | 37100.37400.37600.38800.39800.41200.42200.73500.1286800 | IPS flooring work | 7.88d | 2025-10-19 | 2025-10-26 | 3936, 3948, 3949, 3950 |  | GC1 | 8847354 |
| 3953 | 37100.37400.37600.38800.39800.41200.42200.73500.1286900 | Toilet dado work | 7.88d | 2025-10-19 | 2025-10-26 | 3937, 3950, 3951 |  | GC1 | 8847364 |
| 3954 | 37100.37400.37600.38800.39800.41200.42200.73500.1287000 | Toilet flooring work | 6.75d | 2025-10-26 | 2025-12-16 | 3938, 3953 |  | GC1 | 8847374 |
| 3955 | 37100.37400.37600.38800.39800.41200.42200.73500.1287100 | Living dinning flooring | 10.12d | 2025-12-18 | 2025-12-27 | 3939, 3948, 3954 |  | GC1 | 8847384 |
| 3956 | 37100.37400.37600.38800.39800.41200.42200.73500.1287200 | Aluminium door-window fixing | 13.5d | 2025-12-30 | 2026-01-11 | 3940FS+0.25d, 3955FS+0.25d |  | GC1 | 8847394 |
| 3957 | 37100.37400.37600.38800.39800.41200.42200.73500.1287300 | Putty primer coat | 6.75d | 2025-12-27 | 2026-01-02 | 3941, 3955 |  | GC1 | 8847404 |
| 3958 | 37100.37400.37600.38800.39800.41200.42200.73500.1287400 | Door shutter fixing | 9d | 2025-12-27 | 2026-01-04 | 3942, 3955 |  | GC1 | 8847414 |
| 3959 | 37100.37400.37600.38800.39800.41200.42200.73500.1287500 | Electrical wiring work | 13.5d | 2026-01-07 | 2026-01-19 | 3943, 3958 |  | GC1 | 8847424 |
| 3960 | 37100.37400.37600.38800.39800.41200.42200.73500.1287600 | Painting 1st coat | 13.5d | 2026-01-19 | 2026-01-31 | 3944, 3957, 3958, 3959 |  | GC1 | 8847434 |
| 3961 | 37100.37400.37600.38800.39800.41200.42200.73500.1287700 | False ceiling | 11.25d | 2026-01-31 | 2026-02-10 | 3945, 3960 |  | GC1 | 8847444 |

| ID | WBS | Task | Duration | Start | Finish | Predecessors | Constraint | Calendar | Unique_Task_ID |
| --- | --- | --- | --- | --- | --- | --- | --- | --- | --- |
| 3962 | 37100.37400.37600.38800.39800.41200.42200.73600 | **3rd Floor** | 106.38d | 2025-10-05 | 2026-02-22 |  | start no earlier than 2025-10-05 | GC1 | 8807614 |
| 3963 | 37100.37400.37600.38800.39800.41200.42200.73600.1287800 | Block Work | 7.88d | 2025-10-05 | 2025-10-12 | 3947FS+0.25d |  | GC1 | 8847454 |
| 3964 | 37100.37400.37600.38800.39800.41200.42200.73600.1287900 | Door Frame Fixing | 5.62d | 2025-10-12 | 2025-10-17 | 3948, 3963 |  | GC1 | 8847464 |
| 3965 | 37100.37400.37600.38800.39800.41200.42200.73600.1288000 | Internal Plumbing Works | 7.88d | 2025-10-12 | 2025-10-19 | 3949, 3963 |  | GC1 | 8847474 |
| 3966 | 37100.37400.37600.38800.39800.41200.42200.73600.1288100 | Waterproofing | 7.88d | 2025-10-19 | 2025-10-26 | 3950, 3965 |  | GC1 | 8847484 |
| 3967 | 37100.37400.37600.38800.39800.41200.42200.73600.1288200 | Internal Plaster | 5.62d | 2025-10-17 | 2025-10-22 | 3951FS+0.25d, 3964 |  | GC1 | 8847494 |
| 3968 | 37100.37400.37600.38800.39800.41200.42200.73600.1288300 | IPS flooring work | 7.88d | 2025-10-26 | 2025-12-17 | 3952FS+0.25d, 3964FS+0.25d |  | GC1 | 8847504 |
| 3969 | 37100.37400.37600.38800.39800.41200.42200.73600.1288400 | Toilet dado work | 7.88d | 2025-10-26 | 2025-12-17 | 3953, 3966, 3967 |  | GC1 | 8847514 |
| 3970 | 37100.37400.37600.38800.39800.41200.42200.73600.1288500 | Toilet flooring work | 6.75d | 2025-12-17 | 2025-12-23 | 3954, 3969 |  | GC1 | 8847524 |
| 3971 | 37100.37400.37600.38800.39800.41200.42200.73600.1288600 | Living dinning flooring | 10.12d | 2025-12-27 | 2026-01-05 | 3955, 3964, 3970 |  | GC1 | 8847534 |
| 3972 | 37100.37400.37600.38800.39800.41200.42200.73600.1288700 | Aluminium door-window fixing | 13.5d | 2026-01-12 | 2026-01-24 | 3956FS+0.25d, 3971FS+0.25d |  | GC1 | 8847544 |
| 3973 | 37100.37400.37600.38800.39800.41200.42200.73600.1288800 | Putty primer coat | 6.75d | 2026-01-05 | 2026-01-11 | 3957, 3971 |  | GC1 | 8847554 |
| 3974 | 37100.37400.37600.38800.39800.41200.42200.73600.1288900 | Door shutter fixing | 9d | 2026-01-05 | 2026-01-13 | 3958, 3971 |  | GC1 | 8847564 |
| 3975 | 37100.37400.37600.38800.39800.41200.42200.73600.1289000 | Electrical wiring work | 13.5d | 2026-01-19 | 2026-01-31 | 3959, 3974 |  | GC1 | 8847574 |
| 3976 | 37100.37400.37600.38800.39800.41200.42200.73600.1289100 | Painting 1st coat | 13.5d | 2026-01-31 | 2026-02-12 | 3960, 3973, 3974, 3975 |  | GC1 | 8847584 |
| 3977 | 37100.37400.37600.38800.39800.41200.42200.73600.1289200 | False ceiling | 11.25d | 2026-02-12 | 2026-02-22 | 3961, 3976 |  | GC1 | 8847594 |
| 3978 | 37100.37400.37600.38800.39800.41200.42200.73700 | **4th Floor** | 111.75d | 2025-10-13 | 2026-03-06 |  | start no earlier than 2025-10-13 | GC1 | 8807624 |
| 3979 | 37100.37400.37600.38800.39800.41200.42200.73700.1289300 | Block Work | 7.88d | 2025-10-13 | 2025-10-20 | 3963FS+0.25d |  | GC1 | 8847604 |
| 3980 | 37100.37400.37600.38800.39800.41200.42200.73700.1289400 | Door Frame Fixing | 5.62d | 2025-10-20 | 2025-10-25 | 3964, 3979 |  | GC1 | 8847614 |
| 3981 | 37100.37400.37600.38800.39800.41200.42200.73700.1289500 | Internal Plumbing Works | 7.88d | 2025-10-20 | 2025-10-27 | 3965, 3979 |  | GC1 | 8847624 |
| 3982 | 37100.37400.37600.38800.39800.41200.42200.73700.1289600 | Waterproofing | 7.88d | 2025-10-27 | 2025-12-18 | 3966, 3981 |  | GC1 | 8847634 |
| 3983 | 37100.37400.37600.38800.39800.41200.42200.73700.1289700 | Internal Plaster | 5.62d | 2025-10-25 | 2025-10-30 | 3967FS+0.25d, 3980FS+0.25d |  | GC1 | 8847644 |
| 3984 | 37100.37400.37600.38800.39800.41200.42200.73700.1289800 | IPS flooring work | 7.88d | 2025-12-18 | 2025-12-25 | 3968, 3980, 3982, 3983 |  | GC1 | 8847654 |
| 3985 | 37100.37400.37600.38800.39800.41200.42200.73700.1289900 | Toilet dado work | 7.88d | 2025-12-18 | 2025-12-25 | 3969, 3982, 3983 |  | GC1 | 8847664 |
| 3986 | 37100.37400.37600.38800.39800.41200.42200.73700.1290000 | Toilet flooring work | 6.75d | 2025-12-25 | 2025-12-31 | 3970, 3985 |  | GC1 | 8847674 |
| 3987 | 37100.37400.37600.38800.39800.41200.42200.73700.1290100 | Living dinning flooring | 10.12d | 2026-01-05 | 2026-01-14 | 3971, 3980, 3986 |  | GC1 | 8847684 |
| 3988 | 37100.37400.37600.38800.39800.41200.42200.73700.1290200 | Aluminium door-window fixing | 13.5d | 2026-01-24 | 2026-02-05 | 3972FS+0.25d, 3987FS+0.25d |  | GC1 | 8847694 |
| 3989 | 37100.37400.37600.38800.39800.41200.42200.73700.1290300 | Putty primer coat | 6.75d | 2026-01-14 | 2026-01-20 | 3973, 3987 |  | GC1 | 8847704 |
| 3990 | 37100.37400.37600.38800.39800.41200.42200.73700.1290400 | Door shutter fixing | 9d | 2026-01-14 | 2026-01-22 | 3974, 3987 |  | GC1 | 8847714 |
| 3991 | 37100.37400.37600.38800.39800.41200.42200.73700.1290500 | Electrical wiring work | 13.5d | 2026-01-31 | 2026-02-12 | 3975, 3990 |  | GC1 | 8847724 |
| 3992 | 37100.37400.37600.38800.39800.41200.42200.73700.1290600 | Painting 1st coat | 13.5d | 2026-02-12 | 2026-02-24 | 3976, 3989, 3990, 3991 |  | GC1 | 8847734 |
| 3993 | 37100.37400.37600.38800.39800.41200.42200.73700.1290700 | False ceiling | 11.25d | 2026-02-24 | 2026-03-06 | 3977, 3992 |  | GC1 | 8847744 |

| ID | WBS | Task | Duration | Start | Finish | Predecessors | Constraint | Calendar | Unique_Task_ID |
| --- | --- | --- | --- | --- | --- | --- | --- | --- | --- |
| 3994 | 37100.37400.37600.38800.39800.41200.42200.73800 | **5th Floor** | 117.12d | 2025-10-20 | 2026-03-18 |  | start no earlier than 2025-10-20 | GC1 | 8807634 |
| 3995 | 37100.37400.37600.38800.39800.41200.42200.73800.1290800 | Block Work | 7.88d | 2025-10-20 | 2025-10-27 | 3979FS+0.25d |  | GC1 | 8847754 |
| 3996 | 37100.37400.37600.38800.39800.41200.42200.73800.1290900 | Door Frame Fixing | 5.62d | 2025-10-27 | 2025-12-16 | 3980, 3995 |  | GC1 | 8847764 |
| 3997 | 37100.37400.37600.38800.39800.41200.42200.73800.1291000 | Internal Plumbing Works | 7.88d | 2025-10-27 | 2025-12-18 | 3981, 3995 |  | GC1 | 8847774 |
| 3998 | 37100.37400.37600.38800.39800.41200.42200.73800.1291100 | Waterproofing | 7.88d | 2025-12-18 | 2025-12-25 | 3982, 3997 |  | GC1 | 8847784 |
| 3999 | 37100.37400.37600.38800.39800.41200.42200.73800.1291200 | Internal Plaster | 5.62d | 2025-12-16 | 2025-12-21 | 3983FS+0.25d, 3996FS+0.25d |  | GC1 | 8847794 |
| 4000 | 37100.37400.37600.38800.39800.41200.42200.73800.1291300 | IPS flooring work | 7.88d | 2025-12-25 | 2026-01-01 | 3984, 3996, 3998, 3999 |  | GC1 | 8847804 |
| 4001 | 37100.37400.37600.38800.39800.41200.42200.73800.1291400 | Toilet dado work | 7.88d | 2025-12-25 | 2026-01-01 | 3985, 3998, 3999 |  | GC1 | 8847814 |
| 4002 | 37100.37400.37600.38800.39800.41200.42200.73800.1291500 | Toilet flooring work | 6.75d | 2026-01-01 | 2026-01-07 | 3986, 4001 |  | GC1 | 8847824 |
| 4003 | 37100.37400.37600.38800.39800.41200.42200.73800.1291600 | Living dinning flooring | 10.12d | 2026-01-14 | 2026-01-23 | 3987, 3996, 4002 |  | GC1 | 8847834 |
| 4004 | 37100.37400.37600.38800.39800.41200.42200.73800.1291700 | Aluminium door-window fixing | 13.5d | 2026-02-05 | 2026-02-17 | 3988FS+0.25d, 4003FS+0.25d |  | GC1 | 8847844 |
| 4005 | 37100.37400.37600.38800.39800.41200.42200.73800.1291800 | Putty primer coat | 6.75d | 2026-01-23 | 2026-01-29 | 3989, 4003 |  | GC1 | 8847854 |
| 4006 | 37100.37400.37600.38800.39800.41200.42200.73800.1291900 | Door shutter fixing | 9d | 2026-01-23 | 2026-01-31 | 3990, 4003 |  | GC1 | 8847864 |
| 4007 | 37100.37400.37600.38800.39800.41200.42200.73800.1292000 | Electrical wiring work | 13.5d | 2026-02-12 | 2026-02-24 | 3991, 4006 |  | GC1 | 8847874 |
| 4008 | 37100.37400.37600.38800.39800.41200.42200.73800.1292100 | Painting 1st coat | 13.5d | 2026-02-24 | 2026-03-08 | 3992, 4005, 4006, 4007 |  | GC1 | 8847884 |
| 4009 | 37100.37400.37600.38800.39800.41200.42200.73800.1292200 | False ceiling | 11.25d | 2026-03-08 | 2026-03-18 | 3993, 4008 |  | GC1 | 8847894 |
| 4010 | 37100.37400.37600.38800.39800.41200.42200.73900 | **6th Floor** | 122.5d | 2025-10-27 | 2026-03-30 |  | start no earlier than 2025-10-27 | GC1 | 8807644 |
| 4011 | 37100.37400.37600.38800.39800.41200.42200.73900.1292300 | Block Work | 7.88d | 2025-10-27 | 2025-12-18 | 3995FS+0.25d |  | GC1 | 8847904 |
| 4012 | 37100.37400.37600.38800.39800.41200.42200.73900.1292400 | Door Frame Fixing | 5.62d | 2025-12-16 | 2025-12-21 | 3744, 3996 |  | GC1 | 8847914 |
| 4013 | 37100.37400.37600.38800.39800.41200.42200.73900.1292500 | Internal Plumbing Works | 7.88d | 2025-12-18 | 2025-12-25 | 3997, 4011 |  | GC1 | 8847924 |
| 4014 | 37100.37400.37600.38800.39800.41200.42200.73900.1292600 | Waterproofing | 7.88d | 2025-12-25 | 2026-01-01 | 3998, 4013 |  | GC1 | 8847934 |
| 4015 | 37100.37400.37600.38800.39800.41200.42200.73900.1292700 | Internal Plaster | 5.62d | 2025-12-21 | 2025-12-26 | 3999FS+0.25d, 4012FS+0.25d |  | GC1 | 8847944 |
| 4016 | 37100.37400.37600.38800.39800.41200.42200.73900.1292800 | IPS flooring work | 7.88d | 2026-01-01 | 2026-01-08 | 4000, 4012, 4014, 4015 |  | GC1 | 8847954 |
| 4017 | 37100.37400.37600.38800.39800.41200.42200.73900.1292900 | Toilet dado work | 7.88d | 2026-01-01 | 2026-01-08 | 4001, 4014, 4015 |  | GC1 | 8847964 |
| 4018 | 37100.37400.37600.38800.39800.41200.42200.73900.1293000 | Toilet flooring work | 6.75d | 2026-01-08 | 2026-01-14 | 4002, 4017 |  | GC1 | 8847974 |
| 4019 | 37100.37400.37600.38800.39800.41200.42200.73900.1293100 | Living dinning flooring | 10.12d | 2026-01-23 | 2026-02-01 | 4003FS+0.25d, 4012FS+0.25d |  | GC1 | 8847984 |
| 4020 | 37100.37400.37600.38800.39800.41200.42200.73900.1293200 | Aluminium door-window fixing | 13.5d | 2026-02-17 | 2026-03-01 | 4004FS+0.25d, 4019FS+0.25d |  | GC1 | 8847994 |
| 4021 | 37100.37400.37600.38800.39800.41200.42200.73900.1293300 | Putty primer coat | 6.75d | 2026-02-01 | 2026-02-07 | 4005, 4019 |  | GC1 | 8848004 |
| 4022 | 37100.37400.37600.38800.39800.41200.42200.73900.1293400 | Door shutter fixing | 9d | 2026-02-01 | 2026-02-09 | 4006, 4019 |  | GC1 | 8848014 |
| 4023 | 37100.37400.37600.38800.39800.41200.42200.73900.1293500 | Electrical wiring work | 13.5d | 2026-02-24 | 2026-03-08 | 4007, 4022 |  | GC1 | 8848024 |
| 4024 | 37100.37400.37600.38800.39800.41200.42200.73900.1293600 | Painting 1st coat | 13.5d | 2026-03-08 | 2026-03-20 | 4008, 4021, 4022, 4023 |  | GC1 | 8848034 |
| 4025 | 37100.37400.37600.38800.39800.41200.42200.73900.1293700 | False ceiling | 11.25d | 2026-03-20 | 2026-03-30 | 4009, 4024 |  | GC1 | 8848044 |

| ID | WBS | Task | Duration | Start | Finish | Predecessors | Constraint | Calendar | Unique_Task_ID |
| --- | --- | --- | --- | --- | --- | --- | --- | --- | --- |
| 4026 | 37100.37400.37600.38800.39800.41200.42200.74000 | **7th Floor** | 127.88d | 2025-12-18 | 2026-04-11 |  | start no earlier than 2025-12-18 | GC1 | 8807654 |
| 4027 | 37100.37400.37600.38800.39800.41200.42200.74000.1293800 | Block Work | 7.88d | 2025-12-18 | 2025-12-25 | 4011FS+0.25d |  | GC1 | 8848054 |
| 4028 | 37100.37400.37600.38800.39800.41200.42200.74000.1293900 | Door Frame Fixing | 5.62d | 2025-12-25 | 2025-12-30 | 4012, 4027 |  | GC1 | 8848064 |
| 4029 | 37100.37400.37600.38800.39800.41200.42200.74000.1294000 | Internal Plumbing Works | 7.88d | 2025-12-25 | 2026-01-01 | 4013, 4027 |  | GC1 | 8848074 |
| 4030 | 37100.37400.37600.38800.39800.41200.42200.74000.1294100 | Waterproofing | 7.88d | 2026-01-01 | 2026-01-08 | 4014, 4029 |  | GC1 | 8848084 |
| 4031 | 37100.37400.37600.38800.39800.41200.42200.74000.1294200 | Internal Plaster | 5.62d | 2025-12-31 | 2026-01-04 | 4015FS+0.25d, 4028FS+0.25d |  | GC1 | 8848094 |
| 4032 | 37100.37400.37600.38800.39800.41200.42200.74000.1294300 | IPS flooring work | 7.88d | 2026-01-08 | 2026-01-15 | 4016, 4028, 4030, 4031 |  | GC1 | 8848104 |
| 4033 | 37100.37400.37600.38800.39800.41200.42200.74000.1294400 | Toilet dado work | 7.88d | 2026-01-08 | 2026-01-15 | 4017, 4030, 4031 |  | GC1 | 8848114 |
| 4034 | 37100.37400.37600.38800.39800.41200.42200.74000.1294500 | Toilet flooring work | 6.75d | 2026-01-15 | 2026-01-21 | 4018, 4033 |  | GC1 | 8848124 |
| 4035 | 37100.37400.37600.38800.39800.41200.42200.74000.1294600 | Living dinning flooring | 10.12d | 2026-02-01 | 2026-02-10 | 4019FS+0.25d, 4028FS+0.25d |  | GC1 | 8848134 |
| 4036 | 37100.37400.37600.38800.39800.41200.42200.74000.1294700 | Aluminium door-window fixing | 13.5d | 2026-03-02 | 2026-03-13 | 4020FS+0.25d, 4035FS+0.25d |  | GC1 | 8848144 |
| 4037 | 37100.37400.37600.38800.39800.41200.42200.74000.1294800 | Putty primer coat | 6.75d | 2026-02-10 | 2026-02-16 | 4021, 4035 |  | GC1 | 8848154 |
| 4038 | 37100.37400.37600.38800.39800.41200.42200.74000.1294900 | Door shutter fixing | 9d | 2026-02-10 | 2026-02-18 | 4022, 4035 |  | GC1 | 8848164 |
| 4039 | 37100.37400.37600.38800.39800.41200.42200.74000.1295000 | Electrical wiring work | 13.5d | 2026-03-08 | 2026-03-20 | 4023, 4038 |  | GC1 | 8848174 |
| 4040 | 37100.37400.37600.38800.39800.41200.42200.74000.1295100 | Painting 1st coat | 13.5d | 2026-03-20 | 2026-04-01 | 4024, 4037, 4038, 4039 |  | GC1 | 8848184 |
| 4041 | 37100.37400.37600.38800.39800.41200.42200.74000.1295200 | False ceiling | 11.25d | 2026-04-01 | 2026-04-11 | 4025, 4040 |  | GC1 | 8848194 |
| 4042 | 37100.37400.37600.38800.39800.41200.42200.74100 | **8th Floor** | 133.25d | 2025-12-26 | 2026-04-23 |  | start no earlier than 2025-12-26 | GC1 | 8807664 |
| 4043 | 37100.37400.37600.38800.39800.41200.42200.74100.1295300 | Block Work | 7.88d | 2025-12-26 | 2026-01-01 | 4027FS+0.25d |  | GC1 | 8848204 |
| 4044 | 37100.37400.37600.38800.39800.41200.42200.74100.1295400 | Door Frame Fixing | 5.62d | 2026-01-02 | 2026-01-06 | 4028, 4043 |  | GC1 | 8848214 |
| 4045 | 37100.37400.37600.38800.39800.41200.42200.74100.1295500 | Internal Plumbing Works | 7.88d | 2026-01-02 | 2026-01-08 | 4029, 4043 |  | GC1 | 8848224 |
| 4046 | 37100.37400.37600.38800.39800.41200.42200.74100.1295600 | Waterproofing | 10.12d | 2026-01-09 | 2026-01-17 | 4030, 4045 |  | GC1 | 8848234 |
| 4047 | 37100.37400.37600.38800.39800.41200.42200.74100.1295700 | Internal Plaster | 7.88d | 2026-01-07 | 2026-01-14 | 4031FS+0.25d, 4044FS+0.25d |  | GC1 | 8848244 |
| 4048 | 37100.37400.37600.38800.39800.41200.42200.74100.1295800 | IPS flooring work | 5.62d | 2026-01-18 | 2026-01-22 | 4032, 4044, 4046, 4047 |  | GC1 | 8848254 |
| 4049 | 37100.37400.37600.38800.39800.41200.42200.74100.1295900 | Toilet dado work | 7.88d | 2026-01-18 | 2026-01-24 | 4033, 4046, 4047 |  | GC1 | 8848264 |
| 4050 | 37100.37400.37600.38800.39800.41200.42200.74100.1296000 | Toilet flooring work | 6.75d | 2026-01-25 | 2026-01-30 | 4034, 4049 |  | GC1 | 8848274 |
| 4051 | 37100.37400.37600.38800.39800.41200.42200.74100.1296100 | Living dinning flooring | 10.12d | 2026-02-11 | 2026-02-20 | 4035FS+0.25d, 4044FS+0.25d |  | GC1 | 8848284 |
| 4052 | 37100.37400.37600.38800.39800.41200.42200.74100.1296200 | Aluminium door-window fixing | 13.5d | 2026-03-14 | 2026-03-26 | 4036FS+0.25d, 4051FS+0.25d |  | GC1 | 8848294 |
| 4053 | 37100.37400.37600.38800.39800.41200.42200.74100.1296300 | Putty primer coat | 6.75d | 2026-02-20 | 2026-02-26 | 4037, 4051 |  | GC1 | 8848304 |
| 4054 | 37100.37400.37600.38800.39800.41200.42200.74100.1296400 | Door shutter fixing | 9d | 2026-02-20 | 2026-02-28 | 4038, 4051 |  | GC1 | 8848314 |
| 4055 | 37100.37400.37600.38800.39800.41200.42200.74100.1296500 | Electrical wiring work | 13.5d | 2026-03-20 | 2026-04-01 | 4039, 4054 |  | GC1 | 8848324 |
| 4056 | 37100.37400.37600.38800.39800.41200.42200.74100.1296600 | Painting 1st coat | 13.5d | 2026-04-01 | 2026-04-13 | 4040, 4053, 4054, 4055 |  | GC1 | 8848334 |
| 4057 | 37100.37400.37600.38800.39800.41200.42200.74100.1296700 | False ceiling | 11.25d | 2026-04-13 | 2026-04-23 | 4041, 4056 |  | GC1 | 8848344 |

| ID | WBS | Task | Duration | Start | Finish | Predecessors | Constraint | Calendar | Unique_Task_ID |
| --- | --- | --- | --- | --- | --- | --- | --- | --- | --- |
| 4058 | 37100.37400.37600.38800.39800.41200.42200.74300 | **9th Floor** | 138.62d | 2026-01-02 | 2026-05-05 |  | start no earlier than 2026-01-02 | GC1 | 8807674 |
| 4059 | 37100.37400.37600.38800.39800.41200.42200.74300.1296800 | Block Work | 7.88d | 2026-01-02 | 2026-01-09 | 4043FS+0.25d |  | GC1 | 8848354 |
| 4060 | 37100.37400.37600.38800.39800.41200.42200.74300.1296900 | Door Frame Fixing | 5.62d | 2026-01-09 | 2026-01-14 | 4044, 4059 |  | GC1 | 8848364 |
| 4061 | 37100.37400.37600.38800.39800.41200.42200.74300.1297000 | Internal Plumbing Works | 7.88d | 2026-01-09 | 2026-01-16 | 4045, 4059 |  | GC1 | 8848374 |
| 4062 | 37100.37400.37600.38800.39800.41200.42200.74300.1297100 | Waterproofing | 7.88d | 2026-01-18 | 2026-01-24 | 4046, 4061 |  | GC1 | 8848384 |
| 4063 | 37100.37400.37600.38800.39800.41200.42200.74300.1297200 | Internal Plaster | 5.62d | 2026-01-25 | 2026-01-29 | 4047, 4060, 4061, 4062 |  | GC1 | 8848394 |
| 4064 | 37100.37400.37600.38800.39800.41200.42200.74300.1297300 | IPS flooring work | 7.88d | 2026-01-30 | 2026-02-05 | 4048, 4060, 4062, 4063 |  | GC1 | 8848404 |
| 4065 | 37100.37400.37600.38800.39800.41200.42200.74300.1297400 | Toilet dado work | 7.88d | 2026-01-30 | 2026-02-05 | 4049, 4062, 4063 |  | GC1 | 8848414 |
| 4066 | 37100.37400.37600.38800.39800.41200.42200.74300.1297500 | Toilet flooring work | 6.75d | 2026-02-06 | 2026-02-11 | 4050, 4065 |  | GC1 | 8848424 |
| 4067 | 37100.37400.37600.38800.39800.41200.42200.74300.1297600 | Living dinning flooring | 10.12d | 2026-02-20 | 2026-03-01 | 4051FS+0.25d, 4060FS+0.25d |  | GC1 | 8848434 |
| 4068 | 37100.37400.37600.38800.39800.41200.42200.74300.1297700 | Aluminium door-window fixing | 16.88d | 2026-03-26 | 2026-04-10 | 4052FS+0.25d, 4067FS+0.25d |  | GC1 | 8848444 |
| 4069 | 37100.37400.37600.38800.39800.41200.42200.74300.1297800 | Putty primer coat | 6.75d | 2026-03-01 | 2026-03-07 | 4053, 4067 |  | GC1 | 8848454 |
| 4070 | 37100.37400.37600.38800.39800.41200.42200.74300.1297900 | Door shutter fixing | 9d | 2026-03-01 | 2026-03-09 | 4054, 4067 |  | GC1 | 8848464 |
| 4071 | 37100.37400.37600.38800.39800.41200.42200.74300.1298000 | Electrical wiring work | 13.5d | 2026-04-01 | 2026-04-13 | 4055, 4070 |  | GC1 | 8848474 |
| 4072 | 37100.37400.37600.38800.39800.41200.42200.74300.1298100 | Painting 1st coat | 13.5d | 2026-04-13 | 2026-04-25 | 4056, 4069, 4070, 4071 |  | GC1 | 8848484 |
| 4073 | 37100.37400.37600.38800.39800.41200.42200.74300.1298200 | False ceiling | 11.25d | 2026-04-25 | 2026-05-05 | 4057, 4072 |  | GC1 | 8848494 |
| 4074 | 37100.37400.37600.38800.39800.41200.42200.74400 | **10th Floor** | 144d | 2026-01-09 | 2026-05-17 |  | start no earlier than 2026-01-09 | GC1 | 8807684 |
| 4075 | 37100.37400.37600.38800.39800.41200.42200.74400.1298300 | Block Work | 7.88d | 2026-01-09 | 2026-01-16 | 4059FS+0.25d |  | GC1 | 8848504 |
| 4076 | 37100.37400.37600.38800.39800.41200.42200.74400.1298400 | Door Frame Fixing | 5.62d | 2026-01-16 | 2026-01-21 | 4060, 4075 |  | GC1 | 8848514 |
| 4077 | 37100.37400.37600.38800.39800.41200.42200.74400.1298500 | Internal Plumbing Works | 7.88d | 2026-01-16 | 2026-01-23 | 4061, 4075 |  | GC1 | 8848524 |
| 4078 | 37100.37400.37600.38800.39800.41200.42200.74400.1298600 | Waterproofing | 7.88d | 2026-01-25 | 2026-01-31 | 4062, 4077 |  | GC1 | 8848534 |
| 4079 | 37100.37400.37600.38800.39800.41200.42200.74400.1298700 | Internal Plaster | 5.62d | 2026-02-01 | 2026-02-05 | 4063, 4076, 4077, 4078 |  | GC1 | 8848544 |
| 4080 | 37100.37400.37600.38800.39800.41200.42200.74400.1298800 | IPS flooring work | 7.88d | 2026-02-06 | 2026-02-12 | 4064, 4076, 4078, 4079 |  | GC1 | 8848554 |
| 4081 | 37100.37400.37600.38800.39800.41200.42200.74400.1298900 | Toilet dado work | 7.88d | 2026-02-06 | 2026-02-12 | 4065, 4078, 4079 |  | GC1 | 8848564 |
| 4082 | 37100.37400.37600.38800.39800.41200.42200.74400.1299000 | Toilet flooring work | 6.75d | 2026-02-13 | 2026-02-18 | 4066, 4081 |  | GC1 | 8848574 |
| 4083 | 37100.37400.37600.38800.39800.41200.42200.74400.1299100 | Living dinning flooring | 10.12d | 2026-03-01 | 2026-03-10 | 4067FS+0.25d, 4076FS+0.25d |  | GC1 | 8848584 |
| 4084 | 37100.37400.37600.38800.39800.41200.42200.74400.1299200 | Aluminium door-window fixing | 16.88d | 2026-04-10 | 2026-04-25 | 4068FS+0.25d, 4083FS+0.25d |  | GC1 | 8848594 |
| 4085 | 37100.37400.37600.38800.39800.41200.42200.74400.1299300 | Putty primer coat | 6.75d | 2026-03-10 | 2026-03-16 | 4069, 4083 |  | GC1 | 8848604 |
| 4086 | 37100.37400.37600.38800.39800.41200.42200.74400.1299400 | Door shutter fixing | 9d | 2026-03-10 | 2026-03-18 | 4070, 4083 |  | GC1 | 8848614 |
| 4087 | 37100.37400.37600.38800.39800.41200.42200.74400.1299500 | Electrical wiring work | 13.5d | 2026-04-13 | 2026-04-25 | 4071, 4086 |  | GC1 | 8848624 |
| 4088 | 37100.37400.37600.38800.39800.41200.42200.74400.1299600 | Painting 1st coat | 13.5d | 2026-04-25 | 2026-05-07 | 4072, 4085, 4086, 4087 |  | GC1 | 8848634 |
| 4089 | 37100.37400.37600.38800.39800.41200.42200.74400.1299700 | False ceiling | 11.25d | 2026-05-07 | 2026-05-17 | 4073, 4088 |  | GC1 | 8848644 |

| ID | WBS | Task | Duration | Start | Finish | Predecessors | Constraint | Calendar | Unique_Task_ID |
| --- | --- | --- | --- | --- | --- | --- | --- | --- | --- |
| 4090 | 37100.37400.37600.38800.39800.41200.42200.74600 | **11th Floor** | 149.38d | 2026-01-16 | 2026-05-29 |  | start no earlier than 2026-01-16 | GC1 | 8807694 |
| 4091 | 37100.37400.37600.38800.39800.41200.42200.74600.1299800 | Block Work | 7.88d | 2026-01-16 | 2026-01-23 | 4075FS+0.25d |  | GC1 | 8848654 |
| 4092 | 37100.37400.37600.38800.39800.41200.42200.74600.1299900 | Door Frame Fixing | 5.62d | 2026-01-23 | 2026-01-28 | 4076, 4091 |  | GC1 | 8848664 |
| 4093 | 37100.37400.37600.38800.39800.41200.42200.74600.1300000 | Internal Plumbing Works | 7.88d | 2026-01-23 | 2026-01-30 | 4077, 4091 |  | GC1 | 8848674 |
| 4094 | 37100.37400.37600.38800.39800.41200.42200.74600.1300100 | Waterproofing | 7.88d | 2026-02-01 | 2026-02-07 | 4078, 4093 |  | GC1 | 8848684 |
| 4095 | 37100.37400.37600.38800.39800.41200.42200.74600.1300200 | Internal Plaster | 5.62d | 2026-02-08 | 2026-02-12 | 4079, 4092, 4093, 4094 |  | GC1 | 8848694 |
| 4096 | 37100.37400.37600.38800.39800.41200.42200.74600.1300300 | IPS flooring work | 7.88d | 2026-02-13 | 2026-02-19 | 4080, 4092, 4093, 4094 |  | GC1 | 8848704 |
| 4097 | 37100.37400.37600.38800.39800.41200.42200.74600.1300400 | Toilet dado work | 7.88d | 2026-02-13 | 2026-02-19 | 4081, 4094, 4095 |  | GC1 | 8848714 |
| 4098 | 37100.37400.37600.38800.39800.41200.42200.74600.1300500 | Toilet flooring work | 6.75d | 2026-02-20 | 2026-02-25 | 4082, 4097 |  | GC1 | 8848724 |
| 4099 | 37100.37400.37600.38800.39800.41200.42200.74600.1300600 | Living dinning flooring | 10.12d | 2026-03-10 | 2026-03-19 | 4083FS+0.25d, 4092FS+0.25d |  | GC1 | 8848734 |
| 4100 | 37100.37400.37600.38800.39800.41200.42200.74600.1300700 | Aluminium door-window fixing | 16.88d | 2026-04-25 | 2026-05-10 | 4084FS+0.25d, 4099FS+0.25d |  | GC1 | 8848744 |
| 4101 | 37100.37400.37600.38800.39800.41200.42200.74600.1300800 | Putty primer coat | 6.75d | 2026-03-19 | 2026-03-25 | 4085, 4099 |  | GC1 | 8848754 |
| 4102 | 37100.37400.37600.38800.39800.41200.42200.74600.1300900 | Door shutter fixing | 9d | 2026-03-19 | 2026-03-27 | 4086, 4099 |  | GC1 | 8848764 |
| 4103 | 37100.37400.37600.38800.39800.41200.42200.74600.1301000 | Electrical wiring work | 13.5d | 2026-04-25 | 2026-05-07 | 4087, 4102 |  | GC1 | 8848774 |
| 4104 | 37100.37400.37600.38800.39800.41200.42200.74600.1301100 | Painting 1st coat | 13.5d | 2026-05-07 | 2026-05-19 | 4088, 4101, 4102, 4103 |  | GC1 | 8848784 |
| 4105 | 37100.37400.37600.38800.39800.41200.42200.74600.1301200 | False ceiling | 11.25d | 2026-05-19 | 2026-05-29 | 4089, 4104 |  | GC1 | 8848794 |
| 4106 | 37100.37400.37600.38800.39800.41200.42200.74700 | **12th Floor** | 154.75d | 2026-01-23 | 2026-06-10 |  | start no earlier than 2026-01-23 | GC1 | 8807704 |
| 4107 | 37100.37400.37600.38800.39800.41200.42200.74700.1301300 | Block Work | 9d | 2026-01-23 | 2026-01-31 | 4091FS+0.25d |  | GC1 | 8848804 |
| 4108 | 37100.37400.37600.38800.39800.41200.42200.74700.1301400 | Door Frame Fixing | 10.12d | 2026-01-31 | 2026-02-09 | 4092, 4107 |  | GC1 | 8848814 |
| 4109 | 37100.37400.37600.38800.39800.41200.42200.74700.1301500 | Internal Plumbing Works | 11.25d | 2026-01-31 | 2026-02-10 | 4093, 4107 |  | GC1 | 8848824 |
| 4110 | 37100.37400.37600.38800.39800.41200.42200.74700.1301600 | Waterproofing | 7.88d | 2026-02-10 | 2026-02-17 | 4094, 4109 |  | GC1 | 8848834 |
| 4111 | 37100.37400.37600.38800.39800.41200.42200.74700.1301700 | Internal Plaster | 5.62d | 2026-02-17 | 2026-02-22 | 4095, 4108, 4109, 4110 |  | GC1 | 8848844 |
| 4112 | 37100.37400.37600.38800.39800.41200.42200.74700.1301800 | IPS flooring work | 10.12d | 2026-02-20 | 2026-02-28 | 4096, 4108, 4109, 4110 |  | GC1 | 8848854 |
| 4113 | 37100.37400.37600.38800.39800.41200.42200.74700.1301900 | Toilet dado work | 9d | 2026-02-22 | 2026-03-02 | 4097, 4110, 4111 |  | GC1 | 8848864 |
| 4114 | 37100.37400.37600.38800.39800.41200.42200.74700.1302000 | Toilet flooring work | 7.88d | 2026-03-02 | 2026-03-09 | 4098, 4113 |  | GC1 | 8848874 |
| 4115 | 37100.37400.37600.38800.39800.41200.42200.74700.1302100 | Living dinning flooring | 11.25d | 2026-03-20 | 2026-03-29 | 4099FS+0.25d, 4108FS+0.25d |  | GC1 | 8848884 |
| 4116 | 37100.37400.37600.38800.39800.41200.42200.74700.1302200 | Aluminium door-window fixing | 13.5d | 2026-05-11 | 2026-05-23 | 4100FS+0.25d, 4112FS+0.25d |  | GC1 | 8848894 |
| 4117 | 37100.37400.37600.38800.39800.41200.42200.74700.1302300 | Putty primer coat | 6.75d | 2026-03-30 | 2026-04-04 | 4101, 4115 |  | GC1 | 8848904 |
| 4118 | 37100.37400.37600.38800.39800.41200.42200.74700.1302400 | Door shutter fixing | 9d | 2026-03-30 | 2026-04-06 | 4102, 4115 |  | GC1 | 8848914 |
| 4119 | 37100.37400.37600.38800.39800.41200.42200.74700.1302500 | Electrical wiring work | 13.5d | 2026-05-07 | 2026-05-19 | 4103, 4118 |  | GC1 | 8848924 |
| 4120 | 37100.37400.37600.38800.39800.41200.42200.74700.1302600 | Painting 1st coat | 13.5d | 2026-05-19 | 2026-05-31 | 4104, 4117, 4118, 4119 |  | GC1 | 8848934 |
| 4121 | 37100.37400.37600.38800.39800.41200.42200.74700.1302700 | False ceiling | 11.25d | 2026-05-31 | 2026-06-10 | 4105, 4120 |  | GC1 | 8848944 |

| ID | WBS | Task | Duration | Start | Finish | Predecessors | Constraint | Calendar | Unique_Task_ID |
| --- | --- | --- | --- | --- | --- | --- | --- | --- | --- |
| 4122 | 37100.37400.37600.38800.39800.41200.42200.74800 | **13th Floor** | 159d | 2026-02-01 | 2026-06-22 |  | start no earlier than 2026-02-01 | GC1 | 8807714 |
| 4123 | 37100.37400.37600.38800.39800.41200.42200.74800.1302800 | Block Work | 9d | 2026-02-01 | 2026-02-09 | 4107FS+0.25d |  | GC1 | 8848954 |
| 4124 | 37100.37400.37600.38800.39800.41200.42200.74800.1302900 | Door Frame Fixing | 10.12d | 2026-02-09 | 2026-02-18 | 4108, 4123 |  | GC1 | 8848964 |
| 4125 | 37100.37400.37600.38800.39800.41200.42200.74800.1303000 | Internal Plumbing Works | 11.25d | 2026-02-10 | 2026-02-20 | 4109, 4123 |  | GC1 | 8848974 |
| 4126 | 37100.37400.37600.38800.39800.41200.42200.74800.1303100 | Waterproofing | 7.88d | 2026-02-20 | 2026-02-27 | 4110, 4125 |  | GC1 | 8848984 |
| 4127 | 37100.37400.37600.38800.39800.41200.42200.74800.1303200 | Internal Plaster | 5.62d | 2026-02-23 | 2026-02-28 | 4111FS+0.25d, 4124FS+0.25d |  | GC1 | 8848994 |
| 4128 | 37100.37400.37600.38800.39800.41200.42200.74800.1303300 | IPS flooring work | 10.12d | 2026-03-01 | 2026-03-09 | 4112, 4124, 4126, 4127 |  | GC1 | 8849004 |
| 4129 | 37100.37400.37600.38800.39800.41200.42200.74800.1303400 | Toilet dado work | 9d | 2026-03-02 | 2026-03-10 | 4113, 4126, 4127 |  | GC1 | 8849014 |
| 4130 | 37100.37400.37600.38800.39800.41200.42200.74800.1303500 | Toilet flooring work | 7.88d | 2026-03-10 | 2026-03-17 | 4114, 4129 |  | GC1 | 8849024 |
| 4131 | 37100.37400.37600.38800.39800.41200.42200.74800.1303600 | Living dinning flooring | 5.62d | 2026-03-30 | 2026-04-03 | 4115, 4124, 4130 |  | GC1 | 8849034 |
| 4132 | 37100.37400.37600.38800.39800.41200.42200.74800.1303700 | Aluminium door-window fixing | 16.88d | 2026-05-23 | 2026-06-07 | 4116, 4128, 4131 |  | GC1 | 8849044 |
| 4133 | 37100.37400.37600.38800.39800.41200.42200.74800.1303800 | Putty primer coat | 6.75d | 2026-04-05 | 2026-04-10 | 4117, 4131 |  | GC1 | 8849054 |
| 4134 | 37100.37400.37600.38800.39800.41200.42200.74800.1303900 | Door shutter fixing | 9d | 2026-04-07 | 2026-04-14 | 4118, 4131 |  | GC1 | 8849064 |
| 4135 | 37100.37400.37600.38800.39800.41200.42200.74800.1304000 | Electrical wiring work | 13.5d | 2026-05-19 | 2026-05-31 | 4119, 4134 |  | GC1 | 8849074 |
| 4136 | 37100.37400.37600.38800.39800.41200.42200.74800.1304100 | Painting 1st coat | 13.5d | 2026-05-31 | 2026-06-12 | 4120, 4133, 4134, 4135 |  | GC1 | 8849084 |
| 4137 | 37100.37400.37600.38800.39800.41200.42200.74800.1304200 | False ceiling | 11.25d | 2026-06-12 | 2026-06-22 | 4121, 4136 |  | GC1 | 8849094 |
| 4138 | 37100.37400.37600.38800.39800.41200.42200.74900 | **14th Floor** | 163.25d | 2026-02-09 | 2026-07-04 |  | start no earlier than 2026-02-09 | GC1 | 8807724 |
| 4139 | 37100.37400.37600.38800.39800.41200.42200.74900.1304300 | Block Work | 9d | 2026-02-09 | 2026-02-17 | 4123FS+0.25d |  | GC1 | 8849104 |
| 4140 | 37100.37400.37600.38800.39800.41200.42200.74900.1304400 | Door Frame Fixing | 10.12d | 2026-02-18 | 2026-02-27 | 4124, 4139 |  | GC1 | 8849114 |
| 4141 | 37100.37400.37600.38800.39800.41200.42200.74900.1304500 | Internal Plumbing Works | 11.25d | 2026-02-20 | 2026-03-02 | 4125, 4139 |  | GC1 | 8849124 |
| 4142 | 37100.37400.37600.38800.39800.41200.42200.74900.1304600 | Waterproofing | 7.88d | 2026-03-02 | 2026-03-09 | 4126, 4141 |  | GC1 | 8849134 |
| 4143 | 37100.37400.37600.38800.39800.41200.42200.74900.1304700 | Internal Plaster | 5.62d | 2026-02-28 | 2026-03-05 | 4127FS+0.25d, 4140FS+0.25d |  | GC1 | 8849144 |
| 4144 | 37100.37400.37600.38800.39800.41200.42200.74900.1304800 | IPS flooring work | 10.12d | 2026-03-10 | 2026-03-18 | 4128, 4140, 4141, 4142 |  | GC1 | 8849154 |
| 4145 | 37100.37400.37600.38800.39800.41200.42200.74900.1304900 | Toilet dado work | 9d | 2026-03-10 | 2026-03-18 | 4129, 4142, 4143 |  | GC1 | 8849164 |
| 4146 | 37100.37400.37600.38800.39800.41200.42200.74900.1305000 | Toilet flooring work | 7.88d | 2026-03-18 | 2026-03-25 | 4130, 4145 |  | GC1 | 8849174 |
| 4147 | 37100.37400.37600.38800.39800.41200.42200.74900.1305100 | Living dinning flooring | 16.88d | 2026-04-04 | 2026-04-18 | 4131, 4140, 4146 |  | GC1 | 8849184 |
| 4148 | 37100.37400.37600.38800.39800.41200.42200.74900.1305200 | Aluminium door-window fixing | 16.88d | 2026-06-07 | 2026-06-22 | 4132, 4144, 4147 |  | GC1 | 8849194 |
| 4149 | 37100.37400.37600.38800.39800.41200.42200.74900.1305300 | Putty primer coat | 6.75d | 2026-04-19 | 2026-04-24 | 4133, 4147 |  | GC1 | 8849204 |
| 4150 | 37100.37400.37600.38800.39800.41200.42200.74900.1305400 | Door shutter fixing | 9d | 2026-04-19 | 2026-04-26 | 4134, 4147 |  | GC1 | 8849214 |
| 4151 | 37100.37400.37600.38800.39800.41200.42200.74900.1305500 | Electrical wiring work | 13.5d | 2026-05-31 | 2026-06-12 | 4135, 4150 |  | GC1 | 8849224 |
| 4152 | 37100.37400.37600.38800.39800.41200.42200.74900.1305600 | Painting 1st coat | 13.5d | 2026-06-12 | 2026-06-24 | 4136, 4149, 4150, 4151 |  | GC1 | 8849234 |
| 4153 | 37100.37400.37600.38800.39800.41200.42200.74900.1305700 | False ceiling | 11.25d | 2026-06-24 | 2026-07-04 | 4137, 4152 |  | GC1 | 8849244 |

| ID | WBS | Task | Duration | Start | Finish | Predecessors | Constraint | Calendar | Unique_Task_ID |
| --- | --- | --- | --- | --- | --- | --- | --- | --- | --- |
| 4154 | 37100.37400.37600.38800.39800.41200.42200.75000 | **15th Floor** | 167.5d | 2026-02-17 | 2026-07-16 |  | start no earlier than 2026-02-17 | GC1 | 8807734 |
| 4155 | 37100.37400.37600.38800.39800.41200.42200.75000.1305800 | Block Work | 9d | 2026-02-17 | 2026-02-25 | 4139FS+0.25d |  | GC1 | 8849254 |
| 4156 | 37100.37400.37600.38800.39800.41200.42200.75000.1305900 | Door Frame Fixing | 10.12d | 2026-02-27 | 2026-03-08 | 4140, 4155 |  | GC1 | 8849264 |
| 4157 | 37100.37400.37600.38800.39800.41200.42200.75000.1306000 | Internal Plumbing Works | 11.25d | 2026-03-02 | 2026-03-12 | 4141, 4155 |  | GC1 | 8849274 |
| 4158 | 37100.37400.37600.38800.39800.41200.42200.75000.1306100 | Waterproofing | 7.88d | 2026-03-12 | 2026-03-19 | 4142, 4157 |  | GC1 | 8849284 |
| 4159 | 37100.37400.37600.38800.39800.41200.42200.75000.1306200 | Internal Plaster | 5.62d | 2026-03-09 | 2026-03-14 | 4143FS+0.25d, 4156FS+0.25d |  | GC1 | 8849294 |
| 4160 | 37100.37400.37600.38800.39800.41200.42200.75000.1306300 | IPS flooring work | 10.12d | 2026-03-19 | 2026-03-28 | 4144, 4156, 4157, 4158 |  | GC1 | 8849304 |
| 4161 | 37100.37400.37600.38800.39800.41200.42200.75000.1306400 | Toilet dado work | 9d | 2026-03-19 | 2026-03-27 | 4145, 4158, 4159 |  | GC1 | 8849314 |
| 4162 | 37100.37400.37600.38800.39800.41200.42200.75000.1306500 | Toilet flooring work | 7.88d | 2026-03-27 | 2026-04-03 | 4146, 4161 |  | GC1 | 8849324 |
| 4163 | 37100.37400.37600.38800.39800.41200.42200.75000.1306600 | Living dinning flooring | 13.5d | 2026-04-19 | 2026-04-30 | 4147, 4156, 4162 |  | GC1 | 8849334 |
| 4164 | 37100.37400.37600.38800.39800.41200.42200.75000.1306700 | Aluminium door-window fixing | 13.5d | 2026-06-22 | 2026-07-04 | 4148, 4160, 4163 |  | GC1 | 8849344 |
| 4165 | 37100.37400.37600.38800.39800.41200.42200.75000.1306800 | Putty primer coat | 6.75d | 2026-05-01 | 2026-05-06 | 4149, 4163 |  | GC1 | 8849354 |
| 4166 | 37100.37400.37600.38800.39800.41200.42200.75000.1306900 | Door shutter fixing | 9d | 2026-05-01 | 2026-05-08 | 4150, 4163 |  | GC1 | 8849364 |
| 4167 | 37100.37400.37600.38800.39800.41200.42200.75000.1307000 | Electrical wiring work | 13.5d | 2026-06-12 | 2026-06-24 | 4151, 4166 |  | GC1 | 8849374 |
| 4168 | 37100.37400.37600.38800.39800.41200.42200.75000.1307100 | Painting 1st coat | 13.5d | 2026-06-24 | 2026-07-06 | 4152, 4165, 4166, 4167 |  | GC1 | 8849384 |
| 4169 | 37100.37400.37600.38800.39800.41200.42200.75000.1307200 | False ceiling | 11.25d | 2026-07-06 | 2026-07-16 | 4153, 4168 |  | GC1 | 8849394 |
| 4170 | 37100.37400.37600.38800.39800.41200.42200.75100 | **16th Floor** | 171.75d | 2026-02-25 | 2026-07-28 |  | start no earlier than 2026-02-25 | GC1 | 8807744 |
| 4171 | 37100.37400.37600.38800.39800.41200.42200.75100.1307300 | Block Work | 9d | 2026-02-25 | 2026-03-05 | 4155FS+0.25d |  | GC1 | 8849404 |
| 4172 | 37100.37400.37600.38800.39800.41200.42200.75100.1307400 | Door Frame Fixing | 10.12d | 2026-03-08 | 2026-03-17 | 4156, 4171 |  | GC1 | 8849414 |
| 4173 | 37100.37400.37600.38800.39800.41200.42200.75100.1307500 | Internal Plumbing Works | 11.25d | 2026-03-12 | 2026-03-22 | 4157, 4171 |  | GC1 | 8849424 |
| 4174 | 37100.37400.37600.38800.39800.41200.42200.75100.1307600 | Waterproofing | 13.5d | 2026-03-22 | 2026-04-03 | 4158, 4173 |  | GC1 | 8849434 |
| 4175 | 37100.37400.37600.38800.39800.41200.42200.75100.1307700 | Internal Plaster | 10.12d | 2026-04-03 | 2026-04-12 | 4159, 4172, 4173, 4174 |  | GC1 | 8849444 |
| 4176 | 37100.37400.37600.38800.39800.41200.42200.75100.1307800 | IPS flooring work | 10.12d | 2026-04-03 | 2026-04-12 | 4160, 4172, 4173, 4174 |  | GC1 | 8849454 |
| 4177 | 37100.37400.37600.38800.39800.41200.42200.75100.1307900 | Toilet dado work | 9d | 2026-04-12 | 2026-04-20 | 4161, 4174, 4175 |  | GC1 | 8849464 |
| 4178 | 37100.37400.37600.38800.39800.41200.42200.75100.1308000 | Toilet flooring work | 7.88d | 2026-04-20 | 2026-04-27 | 4162, 4177 |  | GC1 | 8849474 |
| 4179 | 37100.37400.37600.38800.39800.41200.42200.75100.1308100 | Living dinning flooring | 13.5d | 2026-05-01 | 2026-05-12 | 4163, 4172, 4178 |  | GC1 | 8849484 |
| 4180 | 37100.37400.37600.38800.39800.41200.42200.75100.1308200 | Aluminium door-window fixing | 13.5d | 2026-07-04 | 2026-07-16 | 4164, 4176, 4179 |  | GC1 | 8849494 |
| 4181 | 37100.37400.37600.38800.39800.41200.42200.75100.1308300 | Putty primer coat | 6.75d | 2026-05-13 | 2026-05-18 | 4165, 4179 |  | GC1 | 8849504 |
| 4182 | 37100.37400.37600.38800.39800.41200.42200.75100.1308400 | Door shutter fixing | 9d | 2026-05-13 | 2026-05-20 | 4166, 4179 |  | GC1 | 8849514 |
| 4183 | 37100.37400.37600.38800.39800.41200.42200.75100.1308500 | Electrical wiring work | 13.5d | 2026-06-24 | 2026-07-06 | 4167, 4182 |  | GC1 | 8849524 |
| 4184 | 37100.37400.37600.38800.39800.41200.42200.75100.1308600 | Painting 1st coat | 13.5d | 2026-07-06 | 2026-07-18 | 4168, 4181, 4182, 4183 |  | GC1 | 8849534 |
| 4185 | 37100.37400.37600.38800.39800.41200.42200.75100.1308700 | False ceiling | 11.25d | 2026-07-18 | 2026-07-28 | 4169, 4184 |  | GC1 | 8849544 |

| ID | WBS | Task | Duration | Start | Finish | Predecessors | Constraint | Calendar | Unique_Task_ID |
| --- | --- | --- | --- | --- | --- | --- | --- | --- | --- |
| 4186 | 37100.37400.37600.38800.39800.41200.42200.75200 | **17th Floor** | 121.5d | 2026-05-29 | 2026-09-13 |  | start no earlier than 2026-05-29 | GC1 | 8807754 |
| 4187 | 37100.37400.37600.38800.39800.41200.42200.75200.1308800 | Block Work | 9d | 2026-05-29 | 2026-06-05 | 3909, 4171 |  | GC1 | 8849554 |
| 4188 | 37100.37400.37600.38800.39800.41200.42200.75200.1308900 | Door Frame Fixing | 10.12d | 2026-06-06 | 2026-06-14 | 4172, 4187 |  | GC1 | 8849564 |
| 4189 | 37100.37400.37600.38800.39800.41200.42200.75200.1309000 | Internal Plumbing Works | 11.25d | 2026-06-06 | 2026-06-15 | 4173, 4187 |  | GC1 | 8849574 |
| 4190 | 37100.37400.37600.38800.39800.41200.42200.75200.1309100 | Waterproofing | 13.5d | 2026-06-16 | 2026-06-27 | 4174, 4189 |  | GC1 | 8849584 |
| 4191 | 37100.37400.37600.38800.39800.41200.42200.75200.1309200 | Internal Plaster | 10.12d | 2026-06-28 | 2026-07-06 | 4175, 4188, 4189, 4190 |  | GC1 | 8849594 |
| 4192 | 37100.37400.37600.38800.39800.41200.42200.75200.1309300 | IPS flooring work | 10.12d | 2026-06-28 | 2026-07-06 | 4176, 4188, 4189, 4190 |  | GC1 | 8849604 |
| 4193 | 37100.37400.37600.38800.39800.41200.42200.75200.1309400 | Toilet dado work | 9d | 2026-07-07 | 2026-07-14 | 4177, 4190, 4191 |  | GC1 | 8849614 |
| 4194 | 37100.37400.37600.38800.39800.41200.42200.75200.1309500 | Toilet flooring work | 7.88d | 2026-07-15 | 2026-07-21 | 4178, 4193 |  | GC1 | 8849624 |
| 4195 | 37100.37400.37600.38800.39800.41200.42200.75200.1309600 | Living dinning flooring | 13.5d | 2026-07-22 | 2026-08-02 | 4179, 4188, 4194 |  | GC1 | 8849634 |
| 4196 | 37100.37400.37600.38800.39800.41200.42200.75200.1309700 | Aluminium door-window fixing | 13.5d | 2026-08-03 | 2026-08-14 | 4180, 4192, 4195 |  | GC1 | 8849644 |
| 4197 | 37100.37400.37600.38800.39800.41200.42200.75200.1309800 | Putty primer coat | 6.75d | 2026-08-03 | 2026-08-08 | 4181, 4195 |  | GC1 | 8849654 |
| 4198 | 37100.37400.37600.38800.39800.41200.42200.75200.1309900 | Door shutter fixing | 9d | 2026-08-03 | 2026-08-10 | 4182, 4195 |  | GC1 | 8849664 |
| 4199 | 37100.37400.37600.38800.39800.41200.42200.75200.1310000 | Electrical wiring work | 13.5d | 2026-08-11 | 2026-08-22 | 4183, 4198 |  | GC1 | 8849674 |
| 4200 | 37100.37400.37600.38800.39800.41200.42200.75200.1310100 | Painting 1st coat | 13.5d | 2026-08-23 | 2026-09-03 | 4184, 4197, 4198, 4199 |  | GC1 | 8849684 |
| 4201 | 37100.37400.37600.38800.39800.41200.42200.75200.1310200 | False ceiling | 11.25d | 2026-09-04 | 2026-09-13 | 4185, 4200 |  | GC1 | 8849694 |
| 4202 | 37100.37400.37600.38800.39800.41200.42200.75300 | **18th Floor** | 122.62d | 2026-06-09 | 2026-09-25 |  | start no earlier than 2026-06-09 | GC1 | 8807764 |
| 4203 | 37100.37400.37600.38800.39800.41200.42200.75300.1310300 | Block Work | 9d | 2026-06-09 | 2026-06-16 | 3910, 4187 |  | GC1 | 8849704 |
| 4204 | 37100.37400.37600.38800.39800.41200.42200.75300.1310400 | Door Frame Fixing | 10.12d | 2026-06-17 | 2026-06-25 | 4188, 4203 |  | GC1 | 8849714 |
| 4205 | 37100.37400.37600.38800.39800.41200.42200.75300.1310500 | Internal Plumbing Works | 11.25d | 2026-06-17 | 2026-06-26 | 4189, 4203 |  | GC1 | 8849724 |
| 4206 | 37100.37400.37600.38800.39800.41200.42200.75300.1310600 | Waterproofing | 13.5d | 2026-06-28 | 2026-07-09 | 4190, 4205 |  | GC1 | 8849734 |
| 4207 | 37100.37400.37600.38800.39800.41200.42200.75300.1310700 | Internal Plaster | 10.12d | 2026-07-10 | 2026-07-18 | 4191, 4204, 4205, 4206 |  | GC1 | 8849744 |
| 4208 | 37100.37400.37600.38800.39800.41200.42200.75300.1310800 | IPS flooring work | 10.12d | 2026-07-10 | 2026-07-18 | 4192, 4204, 4205, 4206 |  | GC1 | 8849754 |
| 4209 | 37100.37400.37600.38800.39800.41200.42200.75300.1310900 | Toilet dado work | 9d | 2026-07-19 | 2026-07-26 | 4193, 4206, 4207 |  | GC1 | 8849764 |
| 4210 | 37100.37400.37600.38800.39800.41200.42200.75300.1311000 | Toilet flooring work | 7.88d | 2026-07-27 | 2026-08-02 | 4194, 4209 |  | GC1 | 8849774 |
| 4211 | 37100.37400.37600.38800.39800.41200.42200.75300.1311100 | Living dinning flooring | 13.5d | 2026-08-03 | 2026-08-14 | 4195, 4204, 4210 |  | GC1 | 8849784 |
| 4212 | 37100.37400.37600.38800.39800.41200.42200.75300.1311200 | Aluminium door-window fixing | 13.5d | 2026-08-15 | 2026-08-26 | 4196, 4208, 4211 |  | GC1 | 8849794 |
| 4213 | 37100.37400.37600.38800.39800.41200.42200.75300.1311300 | Putty primer coat | 6.75d | 2026-08-15 | 2026-08-20 | 4197, 4211 |  | GC1 | 8849804 |
| 4214 | 37100.37400.37600.38800.39800.41200.42200.75300.1311400 | Door shutter fixing | 9d | 2026-08-15 | 2026-08-22 | 4198, 4211 |  | GC1 | 8849814 |
| 4215 | 37100.37400.37600.38800.39800.41200.42200.75300.1311500 | Electrical wiring work | 13.5d | 2026-08-23 | 2026-09-03 | 4199, 4214 |  | GC1 | 8849824 |
| 4216 | 37100.37400.37600.38800.39800.41200.42200.75300.1311600 | Painting 1st coat | 13.5d | 2026-09-04 | 2026-09-15 | 4200, 4213, 4214, 4215 |  | GC1 | 8849834 |
| 4217 | 37100.37400.37600.38800.39800.41200.42200.75300.1311700 | False ceiling | 11.25d | 2026-09-16 | 2026-09-25 | 4201, 4216 |  | GC1 | 8849844 |

| ID | WBS | Task | Duration | Start | Finish | Predecessors | Constraint | Calendar | Unique_Task_ID |
| --- | --- | --- | --- | --- | --- | --- | --- | --- | --- |
| 4218 | 37100.37400.37600.38800.39800.41200.42200.75400 | **19th Floor** | 123.75d | 2026-06-20 | 2026-10-07 |  | start no earlier than 2026-06-20 | GC1 | 8807774 |
| 4219 | 37100.37400.37600.38800.39800.41200.42200.75400.1311800 | Block Work | 9d | 2026-06-20 | 2026-06-27 | 3911, 4203 |  | GC1 | 8849854 |
| 4220 | 37100.37400.37600.38800.39800.41200.42200.75400.1311900 | Door Frame Fixing | 10.12d | 2026-06-28 | 2026-07-06 | 4204, 4219 |  | GC1 | 8849864 |
| 4221 | 37100.37400.37600.38800.39800.41200.42200.75400.1312000 | Internal Plumbing Works | 11.25d | 2026-06-28 | 2026-07-07 | 4205, 4219 |  | GC1 | 8849874 |
| 4222 | 37100.37400.37600.38800.39800.41200.42200.75400.1312100 | Waterproofing | 13.5d | 2026-07-10 | 2026-07-21 | 4206, 4221 |  | GC1 | 8849884 |
| 4223 | 37100.37400.37600.38800.39800.41200.42200.75400.1312200 | Internal Plaster | 10.12d | 2026-07-22 | 2026-07-30 | 4207, 4220, 4221, 4222 |  | GC1 | 8849894 |
| 4224 | 37100.37400.37600.38800.39800.41200.42200.75400.1312300 | IPS flooring work | 10.12d | 2026-07-31 | 2026-08-08 | 4208, 4220, 4222, 4223 |  | GC1 | 8849904 |
| 4225 | 37100.37400.37600.38800.39800.41200.42200.75400.1312400 | Toilet dado work | 9d | 2026-07-31 | 2026-08-07 | 4209, 4222, 4223 |  | GC1 | 8849914 |
| 4226 | 37100.37400.37600.38800.39800.41200.42200.75400.1312500 | Toilet flooring work | 7.88d | 2026-08-08 | 2026-08-14 | 4210, 4225 |  | GC1 | 8849924 |
| 4227 | 37100.37400.37600.38800.39800.41200.42200.75400.1312600 | Living dinning flooring | 13.5d | 2026-08-15 | 2026-08-26 | 4211, 4220, 4226 |  | GC1 | 8849934 |
| 4228 | 37100.37400.37600.38800.39800.41200.42200.75400.1312700 | Aluminium door-window fixing | 13.5d | 2026-08-27 | 2026-09-07 | 4212, 4224, 4227 |  | GC1 | 8849944 |
| 4229 | 37100.37400.37600.38800.39800.41200.42200.75400.1312800 | Putty primer coat | 6.75d | 2026-08-27 | 2026-09-01 | 4213, 4227 |  | GC1 | 8849954 |
| 4230 | 37100.37400.37600.38800.39800.41200.42200.75400.1312900 | Door shutter fixing | 9d | 2026-08-27 | 2026-09-03 | 4214, 4227 |  | GC1 | 8849964 |
| 4231 | 37100.37400.37600.38800.39800.41200.42200.75400.1313000 | Electrical wiring work | 13.5d | 2026-09-04 | 2026-09-15 | 4215, 4230 |  | GC1 | 8849974 |
| 4232 | 37100.37400.37600.38800.39800.41200.42200.75400.1313100 | Painting 1st coat | 13.5d | 2026-09-16 | 2026-09-27 | 4216, 4229, 4230, 4231 |  | GC1 | 8849984 |
| 4233 | 37100.37400.37600.38800.39800.41200.42200.75400.1313200 | False ceiling | 11.25d | 2026-09-28 | 2026-10-07 | 4217, 4232 |  | GC1 | 8849994 |
| 4234 | 37100.37400.37600.38800.39800.41200.42200.75500 | **20th Floor** | 124.88d | 2026-07-01 | 2026-10-19 |  | start no earlier than 2026-07-01 | GC1 | 8807784 |
| 4235 | 37100.37400.37600.38800.39800.41200.42200.75500.1313300 | Block Work | 9d | 2026-07-01 | 2026-07-08 | 3912, 4219 |  | GC1 | 8850004 |
| 4236 | 37100.37400.37600.38800.39800.41200.42200.75500.1313400 | Door Frame Fixing | 10.12d | 2026-07-09 | 2026-07-17 | 4220, 4235 |  | GC1 | 8850014 |
| 4237 | 37100.37400.37600.38800.39800.41200.42200.75500.1313500 | Internal Plumbing Works | 11.25d | 2026-07-09 | 2026-07-18 | 4221, 4235 |  | GC1 | 8850024 |
| 4238 | 37100.37400.37600.38800.39800.41200.42200.75500.1313600 | Waterproofing | 13.5d | 2026-07-22 | 2026-08-02 | 4222, 4237 |  | GC1 | 8850034 |
| 4239 | 37100.37400.37600.38800.39800.41200.42200.75500.1313700 | Internal Plaster | 10.12d | 2026-08-03 | 2026-08-11 | 4223, 4236, 4237, 4238 |  | GC1 | 8850044 |
| 4240 | 37100.37400.37600.38800.39800.41200.42200.75500.1313800 | IPS flooring work | 10.12d | 2026-08-12 | 2026-08-20 | 4224, 4236, 4238, 4239 |  | GC1 | 8850054 |
| 4241 | 37100.37400.37600.38800.39800.41200.42200.75500.1313900 | Toilet dado work | 9d | 2026-08-12 | 2026-08-19 | 4225, 4238, 4239 |  | GC1 | 8850064 |
| 4242 | 37100.37400.37600.38800.39800.41200.42200.75500.1314000 | Toilet flooring work | 7.88d | 2026-08-20 | 2026-08-26 | 4226, 4241 |  | GC1 | 8850074 |
| 4243 | 37100.37400.37600.38800.39800.41200.42200.75500.1314100 | Living dinning flooring | 13.5d | 2026-08-27 | 2026-09-07 | 4227, 4236, 4242 |  | GC1 | 8850084 |
| 4244 | 37100.37400.37600.38800.39800.41200.42200.75500.1314200 | Aluminium door-window fixing | 13.5d | 2026-09-08 | 2026-09-19 | 4228, 4240, 4243 |  | GC1 | 8850094 |
| 4245 | 37100.37400.37600.38800.39800.41200.42200.75500.1314300 | Putty primer coat | 6.75d | 2026-09-08 | 2026-09-13 | 4229, 4243 |  | GC1 | 8850104 |
| 4246 | 37100.37400.37600.38800.39800.41200.42200.75500.1314400 | Door shutter fixing | 9d | 2026-09-08 | 2026-09-15 | 4230, 4243 |  | GC1 | 8850114 |
| 4247 | 37100.37400.37600.38800.39800.41200.42200.75500.1314500 | Electrical wiring work | 13.5d | 2026-09-16 | 2026-09-27 | 4231, 4246 |  | GC1 | 8850124 |
| 4248 | 37100.37400.37600.38800.39800.41200.42200.75500.1314600 | Painting 1st coat | 13.5d | 2026-09-28 | 2026-10-09 | 4232, 4245, 4246, 4247 |  | GC1 | 8850134 |
| 4249 | 37100.37400.37600.38800.39800.41200.42200.75500.1314700 | False ceiling | 11.25d | 2026-10-10 | 2026-10-19 | 4233, 4248 |  | GC1 | 8850144 |

| ID | WBS | Task | Duration | Start | Finish | Predecessors | Constraint | Calendar | Unique_Task_ID |
| --- | --- | --- | --- | --- | --- | --- | --- | --- | --- |
| 4250 | 37100.37400.37600.38800.39800.41200.42200.75600 | **21st Floor** | 126d | 2026-07-12 | 2026-10-31 |  | start no earlier than 2026-07-12 | GC1 | 8807794 |
| 4251 | 37100.37400.37600.38800.39800.41200.42200.75600.1314800 | Block Work | 9d | 2026-07-12 | 2026-07-19 | 3913, 4235 |  | GC1 | 8850154 |
| 4252 | 37100.37400.37600.38800.39800.41200.42200.75600.1314900 | Door Frame Fixing | 10.12d | 2026-07-20 | 2026-07-28 | 4236, 4251 |  | GC1 | 8850164 |
| 4253 | 37100.37400.37600.38800.39800.41200.42200.75600.1315000 | Internal Plumbing Works | 11.25d | 2026-07-20 | 2026-07-29 | 4237, 4251 |  | GC1 | 8850174 |
| 4254 | 37100.37400.37600.38800.39800.41200.42200.75600.1315100 | Waterproofing | 13.5d | 2026-08-03 | 2026-08-14 | 4238, 4253 |  | GC1 | 8850184 |
| 4255 | 37100.37400.37600.38800.39800.41200.42200.75600.1315200 | Internal Plaster | 10.12d | 2026-08-15 | 2026-08-23 | 4239, 4252, 4253, 4254 |  | GC1 | 8850194 |
| 4256 | 37100.37400.37600.38800.39800.41200.42200.75600.1315300 | IPS flooring work | 10.12d | 2026-08-24 | 2026-09-01 | 4240, 4252, 4254, 4255 |  | GC1 | 8850204 |
| 4257 | 37100.37400.37600.38800.39800.41200.42200.75600.1315400 | Toilet dado work | 9d | 2026-08-24 | 2026-08-31 | 4241, 4254, 4255 |  | GC1 | 8850214 |
| 4258 | 37100.37400.37600.38800.39800.41200.42200.75600.1315500 | Toilet flooring work | 7.88d | 2026-09-01 | 2026-09-07 | 4242, 4257 |  | GC1 | 8850224 |
| 4259 | 37100.37400.37600.38800.39800.41200.42200.75600.1315600 | Living dinning flooring | 13.5d | 2026-09-08 | 2026-09-19 | 4243, 4252, 4258 |  | GC1 | 8850234 |
| 4260 | 37100.37400.37600.38800.39800.41200.42200.75600.1315700 | Aluminium door-window fixing | 13.5d | 2026-09-20 | 2026-10-01 | 4244, 4256, 4259 |  | GC1 | 8850244 |
| 4261 | 37100.37400.37600.38800.39800.41200.42200.75600.1315800 | Putty primer coat | 6.75d | 2026-09-20 | 2026-09-25 | 4245, 4259 |  | GC1 | 8850254 |
| 4262 | 37100.37400.37600.38800.39800.41200.42200.75600.1315900 | Door shutter fixing | 9d | 2026-09-20 | 2026-09-27 | 4246, 4259 |  | GC1 | 8850264 |
| 4263 | 37100.37400.37600.38800.39800.41200.42200.75600.1316000 | Electrical wiring work | 13.5d | 2026-09-28 | 2026-10-09 | 4247, 4262 |  | GC1 | 8850274 |
| 4264 | 37100.37400.37600.38800.39800.41200.42200.75600.1316100 | Painting 1st coat | 13.5d | 2026-10-10 | 2026-10-21 | 4248, 4261, 4262, 4263 |  | GC1 | 8850284 |
| 4265 | 37100.37400.37600.38800.39800.41200.42200.75600.1316200 | False ceiling | 11.25d | 2026-10-22 | 2026-10-31 | 4249, 4264 |  | GC1 | 8850294 |
| 4266 | 37100.37400.37600.38800.39800.41200.42200.75700 | **22nd Floor** | 127.12d | 2026-07-23 | 2026-12-27 |  | start no earlier than 2026-07-23 | GC1 | 8807804 |
| 4267 | 37100.37400.37600.38800.39800.41200.42200.75700.1316300 | Block Work | 9d | 2026-07-23 | 2026-07-30 | 3914, 4251 |  | GC1 | 8850304 |
| 4268 | 37100.37400.37600.38800.39800.41200.42200.75700.1316400 | Door Frame Fixing | 10.12d | 2026-07-31 | 2026-08-08 | 4252, 4267 |  | GC1 | 8850314 |
| 4269 | 37100.37400.37600.38800.39800.41200.42200.75700.1316500 | Internal Plumbing Works | 11.25d | 2026-07-31 | 2026-08-09 | 4253, 4267 |  | GC1 | 8850324 |
| 4270 | 37100.37400.37600.38800.39800.41200.42200.75700.1316600 | Waterproofing | 13.5d | 2026-08-15 | 2026-08-26 | 4254, 4269 |  | GC1 | 8850334 |
| 4271 | 37100.37400.37600.38800.39800.41200.42200.75700.1316700 | Internal Plaster | 10.12d | 2026-08-27 | 2026-09-04 | 4255, 4268, 4269, 4270 |  | GC1 | 8850344 |
| 4272 | 37100.37400.37600.38800.39800.41200.42200.75700.1316800 | IPS flooring work | 10.12d | 2026-09-05 | 2026-09-13 | 4256, 4268, 4270, 4271 |  | GC1 | 8850354 |
| 4273 | 37100.37400.37600.38800.39800.41200.42200.75700.1316900 | Toilet dado work | 9d | 2026-09-05 | 2026-09-12 | 4257, 4270, 4271 |  | GC1 | 8850364 |
| 4274 | 37100.37400.37600.38800.39800.41200.42200.75700.1317000 | Toilet flooring work | 7.88d | 2026-09-13 | 2026-09-19 | 4258, 4273 |  | GC1 | 8850374 |
| 4275 | 37100.37400.37600.38800.39800.41200.42200.75700.1317100 | Living dinning flooring | 13.5d | 2026-09-20 | 2026-10-01 | 4259, 4268, 4274 |  | GC1 | 8850384 |
| 4276 | 37100.37400.37600.38800.39800.41200.42200.75700.1317200 | Aluminium door-window fixing | 13.5d | 2026-10-02 | 2026-10-13 | 4260, 4272, 4275 |  | GC1 | 8850394 |
| 4277 | 37100.37400.37600.38800.39800.41200.42200.75700.1317300 | Putty primer coat | 6.75d | 2026-10-02 | 2026-10-07 | 4261, 4275 |  | GC1 | 8850404 |
| 4278 | 37100.37400.37600.38800.39800.41200.42200.75700.1317400 | Door shutter fixing | 9d | 2026-10-02 | 2026-10-09 | 4262, 4275 |  | GC1 | 8850414 |
| 4279 | 37100.37400.37600.38800.39800.41200.42200.75700.1317500 | Electrical wiring work | 13.5d | 2026-10-10 | 2026-10-21 | 4263, 4278 |  | GC1 | 8850424 |
| 4280 | 37100.37400.37600.38800.39800.41200.42200.75700.1317600 | Painting 1st coat | 13.5d | 2026-10-22 | 2026-12-17 | 4264, 4277, 4278, 4279 |  | GC1 | 8850434 |
| 4281 | 37100.37400.37600.38800.39800.41200.42200.75700.1317700 | False ceiling | 11.25d | 2026-12-18 | 2026-12-27 | 4265, 4280 |  | GC1 | 8850444 |

| ID | WBS | Task | Duration | Start | Finish | Predecessors | Constraint | Calendar | Unique_Task_ID |
| --- | --- | --- | --- | --- | --- | --- | --- | --- | --- |
| 4282 | 37100.37400.37600.38800.39800.41200.42200.75800 | **23rd Floor** | 131.62d | 2026-08-03 | 2027-01-11 |  | start no earlier than 2026-08-03 | GC1 | 8807814 |
| 4283 | 37100.37400.37600.38800.39800.41200.42200.75800.1317800 | Block Work | 9d | 2026-08-03 | 2026-08-10 | 3915, 4267 |  | GC1 | 8850454 |
| 4284 | 37100.37400.37600.38800.39800.41200.42200.75800.1317900 | Door Frame Fixing | 10.12d | 2026-08-11 | 2026-08-19 | 4268, 4283 |  | GC1 | 8850464 |
| 4285 | 37100.37400.37600.38800.39800.41200.42200.75800.1318000 | Internal Plumbing Works | 11.25d | 2026-08-11 | 2026-08-20 | 4269, 4283 |  | GC1 | 8850474 |
| 4286 | 37100.37400.37600.38800.39800.41200.42200.75800.1318100 | Waterproofing | 13.5d | 2026-08-27 | 2026-09-07 | 4270, 4285 |  | GC1 | 8850484 |
| 4287 | 37100.37400.37600.38800.39800.41200.42200.75800.1318200 | Internal Plaster | 10.12d | 2026-09-08 | 2026-09-16 | 4271, 4284, 4285, 4286 |  | GC1 | 8850494 |
| 4288 | 37100.37400.37600.38800.39800.41200.42200.75800.1318300 | IPS flooring work | 10.12d | 2026-09-17 | 2026-09-25 | 4272, 4284, 4286, 4287 |  | GC1 | 8850504 |
| 4289 | 37100.37400.37600.38800.39800.41200.42200.75800.1318400 | Toilet dado work | 9d | 2026-09-17 | 2026-09-24 | 4273, 4286, 4287 |  | GC1 | 8850514 |
| 4290 | 37100.37400.37600.38800.39800.41200.42200.75800.1318500 | Toilet flooring work | 7.88d | 2026-09-25 | 2026-10-01 | 4274, 4289 |  | GC1 | 8850524 |
| 4291 | 37100.37400.37600.38800.39800.41200.42200.75800.1318600 | Living dinning flooring | 16.88d | 2026-10-02 | 2026-10-16 | 4275, 4284, 4290 |  | GC1 | 8850534 |
| 4292 | 37100.37400.37600.38800.39800.41200.42200.75800.1318700 | Aluminium door-window fixing | 16.88d | 2026-10-17 | 2026-10-31 | 4276, 4288, 4291 |  | GC1 | 8850544 |
| 4293 | 37100.37400.37600.38800.39800.41200.42200.75800.1318800 | Putty primer coat | 6.75d | 2026-10-17 | 2026-10-22 | 4277, 4291 |  | GC1 | 8850554 |
| 4294 | 37100.37400.37600.38800.39800.41200.42200.75800.1318900 | Door shutter fixing | 9d | 2026-10-17 | 2026-10-24 | 4278, 4291 |  | GC1 | 8850564 |
| 4295 | 37100.37400.37600.38800.39800.41200.42200.75800.1319000 | Electrical wiring work | 13.5d | 2026-10-25 | 2026-12-20 | 4279, 4294 |  | GC1 | 8850574 |
| 4296 | 37100.37400.37600.38800.39800.41200.42200.75800.1319100 | Painting 1st coat | 13.5d | 2026-12-21 | 2027-01-01 | 4280, 4293, 4294, 4295 |  | GC1 | 8850584 |
| 4297 | 37100.37400.37600.38800.39800.41200.42200.75800.1319200 | False ceiling | 11.25d | 2027-01-02 | 2027-01-11 | 4281, 4296 |  | GC1 | 8850594 |
| 4298 | 37100.37400.37600.38800.39800.41200.42200.75900 | **24th Floor** | 136.12d | 2026-08-14 | 2027-01-26 |  | start no earlier than 2026-08-14 | GC1 | 8807824 |
| 4299 | 37100.37400.37600.38800.39800.41200.42200.75900.1319300 | Block Work | 9d | 2026-08-14 | 2026-08-21 | 3916, 4283 |  | GC1 | 8850604 |
| 4300 | 37100.37400.37600.38800.39800.41200.42200.75900.1319400 | Door Frame Fixing | 10.12d | 2026-08-22 | 2026-08-30 | 4284, 4299 |  | GC1 | 8850614 |
| 4301 | 37100.37400.37600.38800.39800.41200.42200.75900.1319500 | Internal Plumbing Works | 11.25d | 2026-08-22 | 2026-08-31 | 4285, 4299 |  | GC1 | 8850624 |
| 4302 | 37100.37400.37600.38800.39800.41200.42200.75900.1319600 | Waterproofing | 13.5d | 2026-09-08 | 2026-09-19 | 4286, 4301 |  | GC1 | 8850634 |
| 4303 | 37100.37400.37600.38800.39800.41200.42200.75900.1319700 | Internal Plaster | 10.12d | 2026-09-20 | 2026-09-28 | 4287, 4300, 4301, 4302 |  | GC1 | 8850644 |
| 4304 | 37100.37400.37600.38800.39800.41200.42200.75900.1319800 | IPS flooring work | 10.12d | 2026-09-29 | 2026-10-07 | 4288, 4300, 4302, 4303 |  | GC1 | 8850654 |
| 4305 | 37100.37400.37600.38800.39800.41200.42200.75900.1319900 | Toilet dado work | 9d | 2026-09-29 | 2026-10-06 | 4289, 4302, 4303 |  | GC1 | 8850664 |
| 4306 | 37100.37400.37600.38800.39800.41200.42200.75900.1320000 | Toilet flooring work | 7.88d | 2026-10-07 | 2026-10-13 | 4290, 4305 |  | GC1 | 8850674 |
| 4307 | 37100.37400.37600.38800.39800.41200.42200.75900.1320100 | Living dinning flooring | 16.88d | 2026-10-17 | 2026-10-31 | 4291, 4300, 4306 |  | GC1 | 8850684 |
| 4308 | 37100.37400.37600.38800.39800.41200.42200.75900.1320200 | Aluminium door-window fixing | 16.88d | 2026-12-16 | 2026-12-30 | 4292, 4304, 4307 |  | GC1 | 8850694 |
| 4309 | 37100.37400.37600.38800.39800.41200.42200.75900.1320300 | Putty primer coat | 6.75d | 2026-12-16 | 2026-12-21 | 4293, 4307 |  | GC1 | 8850704 |
| 4310 | 37100.37400.37600.38800.39800.41200.42200.75900.1320400 | Door shutter fixing | 9d | 2026-12-16 | 2026-12-23 | 4294, 4307 |  | GC1 | 8850714 |
| 4311 | 37100.37400.37600.38800.39800.41200.42200.75900.1320500 | Electrical wiring work | 13.5d | 2026-12-24 | 2027-01-04 | 4295, 4310 |  | GC1 | 8850724 |
| 4312 | 37100.37400.37600.38800.39800.41200.42200.75900.1320600 | Painting 1st coat | 13.5d | 2027-01-05 | 2027-01-16 | 4296, 4309, 4310, 4311 |  | GC1 | 8850734 |
| 4313 | 37100.37400.37600.38800.39800.41200.42200.75900.1320700 | False ceiling | 11.25d | 2027-01-17 | 2027-01-26 | 4297, 4312 |  | GC1 | 8850744 |

| ID | WBS | Task | Duration | Start | Finish | Predecessors | Constraint | Calendar | Unique_Task_ID |
| --- | --- | --- | --- | --- | --- | --- | --- | --- | --- |
| 4314 | 37100.37400.37600.38800.39800.41200.42200.76000 | **25th Floor** | 140.62d | 2026-08-25 | 2027-02-10 |  | start no earlier than 2026-08-25 | GC1 | 8807834 |
| 4315 | 37100.37400.37600.38800.39800.41200.42200.76000.1320800 | Block Work | 9d | 2026-08-25 | 2026-09-01 | 3917, 4299 |  | GC1 | 8850754 |
| 4316 | 37100.37400.37600.38800.39800.41200.42200.76000.1320900 | Door Frame Fixing | 10.12d | 2026-09-02 | 2026-09-10 | 4300, 4315 |  | GC1 | 8850764 |
| 4317 | 37100.37400.37600.38800.39800.41200.42200.76000.1321000 | Internal Plumbing Works | 11.25d | 2026-09-02 | 2026-09-11 | 4301, 4315 |  | GC1 | 8850774 |
| 4318 | 37100.37400.37600.38800.39800.41200.42200.76000.1321100 | Waterproofing | 13.5d | 2026-09-20 | 2026-10-01 | 4302, 4317 |  | GC1 | 8850784 |
| 4319 | 37100.37400.37600.38800.39800.41200.42200.76000.1321200 | Internal Plaster | 10.12d | 2026-10-02 | 2026-10-10 | 4303, 4316, 4317, 4318 |  | GC1 | 8850794 |
| 4320 | 37100.37400.37600.38800.39800.41200.42200.76000.1321300 | IPS flooring work | 10.12d | 2026-10-11 | 2026-10-19 | 4304, 4316, 4318, 4319 |  | GC1 | 8850804 |
| 4321 | 37100.37400.37600.38800.39800.41200.42200.76000.1321400 | Toilet dado work | 9d | 2026-10-11 | 2026-10-18 | 4305, 4318, 4319 |  | GC1 | 8850814 |
| 4322 | 37100.37400.37600.38800.39800.41200.42200.76000.1321500 | Toilet flooring work | 7.88d | 2026-10-19 | 2026-10-25 | 4306, 4321 |  | GC1 | 8850824 |
| 4323 | 37100.37400.37600.38800.39800.41200.42200.76000.1321600 | Living dinning flooring | 16.88d | 2026-12-16 | 2026-12-30 | 4307, 4316, 4322 |  | GC1 | 8850834 |
| 4324 | 37100.37400.37600.38800.39800.41200.42200.76000.1321700 | Aluminium door-window fixing | 16.88d | 2026-12-31 | 2027-01-14 | 4308, 4320, 4323 |  | GC1 | 8850844 |
| 4325 | 37100.37400.37600.38800.39800.41200.42200.76000.1321800 | Putty primer coat | 6.75d | 2026-12-31 | 2027-01-05 | 4309, 4323 |  | GC1 | 8850854 |
| 4326 | 37100.37400.37600.38800.39800.41200.42200.76000.1321900 | Door shutter fixing | 9d | 2026-12-31 | 2027-01-07 | 4310, 4323 |  | GC1 | 8850864 |
| 4327 | 37100.37400.37600.38800.39800.41200.42200.76000.1322000 | Electrical wiring work | 13.5d | 2027-01-08 | 2027-01-19 | 4311, 4326 |  | GC1 | 8850874 |
| 4328 | 37100.37400.37600.38800.39800.41200.42200.76000.1322100 | Painting 1st coat | 13.5d | 2027-01-20 | 2027-01-31 | 4312, 4325, 4326, 4327 |  | GC1 | 8850884 |
| 4329 | 37100.37400.37600.38800.39800.41200.42200.76000.1322200 | False ceiling | 11.25d | 2027-02-01 | 2027-02-10 | 4313, 4328 |  | GC1 | 8850894 |
| 4330 | 37100.37400.37600.38800.39800.41200.42200.76100 | **26th Floor** | 145.12d | 2026-09-05 | 2027-02-25 |  | start no earlier than 2026-09-05 | GC1 | 8807844 |
| 4331 | 37100.37400.37600.38800.39800.41200.42200.76100.1322300 | Block Work | 9d | 2026-09-05 | 2026-09-12 | 3918, 4315 |  | GC1 | 8850904 |
| 4332 | 37100.37400.37600.38800.39800.41200.42200.76100.1322400 | Door Frame Fixing | 10.12d | 2026-09-13 | 2026-09-21 | 4316, 4331 |  | GC1 | 8850914 |
| 4333 | 37100.37400.37600.38800.39800.41200.42200.76100.1322500 | Internal Plumbing Works | 11.25d | 2026-09-13 | 2026-09-22 | 4317, 4331 |  | GC1 | 8850924 |
| 4334 | 37100.37400.37600.38800.39800.41200.42200.76100.1322600 | Waterproofing | 13.5d | 2026-10-02 | 2026-10-13 | 4318, 4333 |  | GC1 | 8850934 |
| 4335 | 37100.37400.37600.38800.39800.41200.42200.76100.1322700 | Internal Plaster | 10.12d | 2026-10-14 | 2026-10-22 | 4319, 4332, 4333, 4334 |  | GC1 | 8850944 |
| 4336 | 37100.37400.37600.38800.39800.41200.42200.76100.1322800 | IPS flooring work | 10.12d | 2026-10-23 | 2026-10-31 | 4320, 4332, 4334, 4335 |  | GC1 | 8850954 |
| 4337 | 37100.37400.37600.38800.39800.41200.42200.76100.1322900 | Toilet dado work | 9d | 2026-10-23 | 2026-10-30 | 4321, 4334, 4335 |  | GC1 | 8850964 |
| 4338 | 37100.37400.37600.38800.39800.41200.42200.76100.1323000 | Toilet flooring work | 7.88d | 2026-10-31 | 2026-12-21 | 4322, 4337 |  | GC1 | 8850974 |
| 4339 | 37100.37400.37600.38800.39800.41200.42200.76100.1323100 | Living dinning flooring | 16.88d | 2026-12-31 | 2027-01-14 | 4323, 4332, 4338 |  | GC1 | 8850984 |
| 4340 | 37100.37400.37600.38800.39800.41200.42200.76100.1323200 | Aluminium door-window fixing | 16.88d | 2027-01-15 | 2027-01-29 | 4324, 4336, 4339 |  | GC1 | 8850994 |
| 4341 | 37100.37400.37600.38800.39800.41200.42200.76100.1323300 | Putty primer coat | 6.75d | 2027-01-15 | 2027-01-20 | 4325, 4339 |  | GC1 | 8851004 |
| 4342 | 37100.37400.37600.38800.39800.41200.42200.76100.1323400 | Door shutter fixing | 9d | 2027-01-15 | 2027-01-22 | 4326, 4339 |  | GC1 | 8851014 |
| 4343 | 37100.37400.37600.38800.39800.41200.42200.76100.1323500 | Electrical wiring work | 13.5d | 2027-01-23 | 2027-02-03 | 4327, 4342 |  | GC1 | 8851024 |
| 4344 | 37100.37400.37600.38800.39800.41200.42200.76100.1323600 | Painting 1st coat | 13.5d | 2027-02-04 | 2027-02-15 | 4328, 4341, 4342, 4343 |  | GC1 | 8851034 |
| 4345 | 37100.37400.37600.38800.39800.41200.42200.76100.1323700 | False ceiling | 11.25d | 2027-02-16 | 2027-02-25 | 4329, 4344 |  | GC1 | 8851044 |

| ID | WBS | Task | Duration | Start | Finish | Predecessors | Constraint | Calendar | Unique_Task_ID |
| --- | --- | --- | --- | --- | --- | --- | --- | --- | --- |
| 4346 | 37100.37400.37600.38800.39800.41200.42200.76200 | **27th Floor** | 149.62d | 2026-09-16 | 2027-03-12 |  | start no earlier than 2026-09-16 | GC1 | 8807854 |
| 4347 | 37100.37400.37600.38800.39800.41200.42200.76200.1323800 | Block Work | 9d | 2026-09-16 | 2026-09-23 | 3919, 4331 |  | GC1 | 8851054 |
| 4348 | 37100.37400.37600.38800.39800.41200.42200.76200.1323900 | Door Frame Fixing | 10.12d | 2026-09-24 | 2026-10-02 | 4332, 4347 |  | GC1 | 8851064 |
| 4349 | 37100.37400.37600.38800.39800.41200.42200.76200.1324000 | Internal Plumbing Works | 11.25d | 2026-09-24 | 2026-10-03 | 4333, 4347 |  | GC1 | 8851074 |
| 4350 | 37100.37400.37600.38800.39800.41200.42200.76200.1324100 | Waterproofing | 13.5d | 2026-10-14 | 2026-10-25 | 4334, 4349 |  | GC1 | 8851084 |
| 4351 | 37100.37400.37600.38800.39800.41200.42200.76200.1324200 | Internal Plaster | 10.12d | 2026-10-26 | 2026-12-18 | 4335, 4348, 4349, 4350 |  | GC1 | 8851094 |
| 4352 | 37100.37400.37600.38800.39800.41200.42200.76200.1324300 | IPS flooring work | 10.12d | 2026-12-19 | 2026-12-27 | 4336, 4348, 4350, 4351 |  | GC1 | 8851104 |
| 4353 | 37100.37400.37600.38800.39800.41200.42200.76200.1324400 | Toilet dado work | 9d | 2026-12-19 | 2026-12-26 | 4337, 4350, 4351 |  | GC1 | 8851114 |
| 4354 | 37100.37400.37600.38800.39800.41200.42200.76200.1324500 | Toilet flooring work | 7.88d | 2026-12-27 | 2027-01-02 | 4338, 4353 |  | GC1 | 8851124 |
| 4355 | 37100.37400.37600.38800.39800.41200.42200.76200.1324600 | Living dinning flooring | 16.88d | 2027-01-15 | 2027-01-29 | 4339, 4348, 4354 |  | GC1 | 8851134 |
| 4356 | 37100.37400.37600.38800.39800.41200.42200.76200.1324700 | Aluminium door-window fixing | 16.88d | 2027-01-30 | 2027-02-13 | 4340, 4352, 4355 |  | GC1 | 8851144 |
| 4357 | 37100.37400.37600.38800.39800.41200.42200.76200.1324800 | Putty primer coat | 6.75d | 2027-01-30 | 2027-02-04 | 4341, 4355 |  | GC1 | 8851154 |
| 4358 | 37100.37400.37600.38800.39800.41200.42200.76200.1324900 | Door shutter fixing | 9d | 2027-01-30 | 2027-02-06 | 4342, 4355 |  | GC1 | 8851164 |
| 4359 | 37100.37400.37600.38800.39800.41200.42200.76200.1325000 | Electrical wiring work | 13.5d | 2027-02-07 | 2027-02-18 | 4343, 4358 |  | GC1 | 8851174 |
| 4360 | 37100.37400.37600.38800.39800.41200.42200.76200.1325100 | Painting 1st coat | 13.5d | 2027-02-19 | 2027-03-02 | 4344, 4357, 4358, 4359 |  | GC1 | 8851184 |
| 4361 | 37100.37400.37600.38800.39800.41200.42200.76200.1325200 | False ceiling | 11.25d | 2027-03-03 | 2027-03-12 | 4345, 4360 |  | GC1 | 8851194 |
| 4362 | 37100.37400.37600.38800.39800.41200.42200.76300 | **28th Floor** | 154.12d | 2026-09-27 | 2027-03-27 |  | start no earlier than 2026-09-27 | GC1 | 8807864 |
| 4363 | 37100.37400.37600.38800.39800.41200.42200.76300.1325300 | Block Work | 9d | 2026-09-27 | 2026-10-04 | 3920, 4347 |  | GC1 | 8851204 |
| 4364 | 37100.37400.37600.38800.39800.41200.42200.76300.1325400 | Door Frame Fixing | 10.12d | 2026-10-05 | 2026-10-13 | 4348, 4363 |  | GC1 | 8851214 |
| 4365 | 37100.37400.37600.38800.39800.41200.42200.76300.1325500 | Internal Plumbing Works | 11.25d | 2026-10-05 | 2026-10-14 | 4349, 4363 |  | GC1 | 8851224 |
| 4366 | 37100.37400.37600.38800.39800.41200.42200.76300.1325600 | Waterproofing | 13.5d | 2026-10-26 | 2026-12-21 | 4350, 4365 |  | GC1 | 8851234 |
| 4367 | 37100.37400.37600.38800.39800.41200.42200.76300.1325700 | Internal Plaster | 10.12d | 2026-12-22 | 2026-12-30 | 4351, 4364, 4365, 4366 |  | GC1 | 8851244 |
| 4368 | 37100.37400.37600.38800.39800.41200.42200.76300.1325800 | IPS flooring work | 10.12d | 2026-12-31 | 2027-01-08 | 4352, 4364, 4366, 4367 |  | GC1 | 8851254 |
| 4369 | 37100.37400.37600.38800.39800.41200.42200.76300.1325900 | Toilet dado work | 9d | 2026-12-31 | 2027-01-07 | 4353, 4366, 4367 |  | GC1 | 8851264 |
| 4370 | 37100.37400.37600.38800.39800.41200.42200.76300.1326000 | Toilet flooring work | 7.88d | 2027-01-08 | 2027-01-14 | 4354, 4369 |  | GC1 | 8851274 |
| 4371 | 37100.37400.37600.38800.39800.41200.42200.76300.1326100 | Living dinning flooring | 16.88d | 2027-01-30 | 2027-02-13 | 4355, 4364, 4370 |  | GC1 | 8851284 |
| 4372 | 37100.37400.37600.38800.39800.41200.42200.76300.1326200 | Aluminium door-window fixing | 16.88d | 2027-02-14 | 2027-02-28 | 4356, 4368, 4371 |  | GC1 | 8851294 |
| 4373 | 37100.37400.37600.38800.39800.41200.42200.76300.1326300 | Putty primer coat | 6.75d | 2027-02-14 | 2027-02-19 | 4357, 4371 |  | GC1 | 8851304 |
| 4374 | 37100.37400.37600.38800.39800.41200.42200.76300.1326400 | Door shutter fixing | 9d | 2027-02-14 | 2027-02-21 | 4358, 4371 |  | GC1 | 8851314 |
| 4375 | 37100.37400.37600.38800.39800.41200.42200.76300.1326500 | Electrical wiring work | 13.5d | 2027-02-22 | 2027-03-05 | 4359, 4374 |  | GC1 | 8851324 |
| 4376 | 37100.37400.37600.38800.39800.41200.42200.76300.1326600 | Painting 1st coat | 13.5d | 2027-03-06 | 2027-03-17 | 4360, 4373, 4374, 4375 |  | GC1 | 8851334 |
| 4377 | 37100.37400.37600.38800.39800.41200.42200.76300.1326700 | False ceiling | 11.25d | 2027-03-18 | 2027-03-27 | 4361, 4376 |  | GC1 | 8851344 |

| ID | WBS | Task | Duration | Start | Finish | Predecessors | Constraint | Calendar | Unique_Task_ID |
| --- | --- | --- | --- | --- | --- | --- | --- | --- | --- |
| 4378 | 37100.37400.37600.38800.39800.41200.42200.76400 | **29th Floor** | 158.62d | 2026-10-08 | 2027-04-11 |  | start no earlier than 2026-10-08 | GC1 | 8807874 |
| 4379 | 37100.37400.37600.38800.39800.41200.42200.76400.1326800 | Block Work | 9d | 2026-10-08 | 2026-10-15 | 3921, 4363 |  | GC1 | 8851354 |
| 4380 | 37100.37400.37600.38800.39800.41200.42200.76400.1326900 | Door Frame Fixing | 10.12d | 2026-10-16 | 2026-10-24 | 4364, 4379 |  | GC1 | 8851364 |
| 4381 | 37100.37400.37600.38800.39800.41200.42200.76400.1327000 | Internal Plumbing Works | 11.25d | 2026-10-16 | 2026-10-25 | 4365, 4379 |  | GC1 | 8851374 |
| 4382 | 37100.37400.37600.38800.39800.41200.42200.76400.1327100 | Waterproofing | 13.5d | 2026-12-22 | 2027-01-02 | 4366, 4381 |  | GC1 | 8851384 |
| 4383 | 37100.37400.37600.38800.39800.41200.42200.76400.1327200 | Internal Plaster | 10.12d | 2027-01-03 | 2027-01-11 | 4367, 4380, 4381, 4382 |  | GC1 | 8851394 |
| 4384 | 37100.37400.37600.38800.39800.41200.42200.76400.1327300 | IPS flooring work | 10.12d | 2027-01-12 | 2027-01-20 | 4368, 4380, 4382, 4383 |  | GC1 | 8851404 |
| 4385 | 37100.37400.37600.38800.39800.41200.42200.76400.1327400 | Toilet dado work | 9d | 2027-01-12 | 2027-01-19 | 4369, 4382, 4383 |  | GC1 | 8851414 |
| 4386 | 37100.37400.37600.38800.39800.41200.42200.76400.1327500 | Toilet flooring work | 7.88d | 2027-01-20 | 2027-01-26 | 4370, 4385 |  | GC1 | 8851424 |
| 4387 | 37100.37400.37600.38800.39800.41200.42200.76400.1327600 | Living dinning flooring | 16.88d | 2027-02-14 | 2027-02-28 | 4371, 4380, 4386 |  | GC1 | 8851434 |
| 4388 | 37100.37400.37600.38800.39800.41200.42200.76400.1327700 | Aluminium door-window fixing | 16.88d | 2027-03-01 | 2027-03-15 | 4372, 4384, 4387 |  | GC1 | 8851444 |
| 4389 | 37100.37400.37600.38800.39800.41200.42200.76400.1327800 | Putty primer coat | 6.75d | 2027-03-01 | 2027-03-06 | 4373, 4387 |  | GC1 | 8851454 |
| 4390 | 37100.37400.37600.38800.39800.41200.42200.76400.1327900 | Door shutter fixing | 9d | 2027-03-01 | 2027-03-08 | 4374, 4387 |  | GC1 | 8851464 |
| 4391 | 37100.37400.37600.38800.39800.41200.42200.76400.1328000 | Electrical wiring work | 13.5d | 2027-03-09 | 2027-03-20 | 4375, 4390 |  | GC1 | 8851474 |
| 4392 | 37100.37400.37600.38800.39800.41200.42200.76400.1328100 | Painting 1st coat | 13.5d | 2027-03-21 | 2027-04-01 | 4376, 4389, 4390, 4391 |  | GC1 | 8851484 |
| 4393 | 37100.37400.37600.38800.39800.41200.42200.76400.1328200 | False ceiling | 11.25d | 2027-04-02 | 2027-04-11 | 4377, 4392 |  | GC1 | 8851494 |
| 4394 | 37100.37400.37600.38800.39800.41200.42200.76500 | **30th Floor** | 169.88d | 2026-10-19 | 2027-05-02 |  | start no earlier than 2026-10-19 | GC1 | 8807884 |
| 4395 | 37100.37400.37600.38800.39800.41200.42200.76500.1328300 | Block Work | 9d | 2026-10-19 | 2026-10-26 | 3922, 4379 |  | GC1 | 8851504 |
| 4396 | 37100.37400.37600.38800.39800.41200.42200.76500.1328400 | Door Frame Fixing | 10.12d | 2026-10-27 | 2026-12-19 | 4380, 4395 |  | GC1 | 8851514 |
| 4397 | 37100.37400.37600.38800.39800.41200.42200.76500.1328500 | Internal Plumbing Works | 11.25d | 2026-10-27 | 2026-12-20 | 4381, 4395 |  | GC1 | 8851524 |
| 4398 | 37100.37400.37600.38800.39800.41200.42200.76500.1328600 | Waterproofing | 13.5d | 2027-01-03 | 2027-01-14 | 4382, 4397 |  | GC1 | 8851534 |
| 4399 | 37100.37400.37600.38800.39800.41200.42200.76500.1328700 | Internal Plaster | 10.12d | 2027-01-15 | 2027-01-23 | 4383, 4396, 4397, 4398 |  | GC1 | 8851544 |
| 4400 | 37100.37400.37600.38800.39800.41200.42200.76500.1328800 | IPS flooring work | 10.12d | 2027-01-24 | 2027-02-01 | 4384, 4396, 4398, 4399 |  | GC1 | 8851554 |
| 4401 | 37100.37400.37600.38800.39800.41200.42200.76500.1328900 | Toilet dado work | 9d | 2027-01-24 | 2027-01-31 | 4385, 4398, 4399 |  | GC1 | 8851564 |
| 4402 | 37100.37400.37600.38800.39800.41200.42200.76500.1329000 | Toilet flooring work | 7.88d | 2027-02-01 | 2027-02-07 | 4386, 4401 |  | GC1 | 8851574 |
| 4403 | 37100.37400.37600.38800.39800.41200.42200.76500.1329100 | Living dinning flooring | 16.88d | 2027-03-01 | 2027-03-15 | 4387, 4396, 4402 |  | GC1 | 8851584 |
| 4404 | 37100.37400.37600.38800.39800.41200.42200.76500.1329200 | Aluminium door-window fixing | 16.88d | 2027-03-16 | 2027-03-30 | 4388, 4400, 4403 |  | GC1 | 8851594 |
| 4405 | 37100.37400.37600.38800.39800.41200.42200.76500.1329300 | Putty primer coat | 6.75d | 2027-03-16 | 2027-03-21 | 4389, 4403 |  | GC1 | 8851604 |
| 4406 | 37100.37400.37600.38800.39800.41200.42200.76500.1329400 | Door shutter fixing | 9d | 2027-03-16 | 2027-03-23 | 4390, 4403 |  | GC1 | 8851614 |
| 4407 | 37100.37400.37600.38800.39800.41200.42200.76500.1329500 | Electrical wiring work | 16.88d | 2027-03-24 | 2027-04-07 | 4391, 4406 |  | GC1 | 8851624 |
| 4408 | 37100.37400.37600.38800.39800.41200.42200.76500.1329600 | Painting 1st coat | 16.88d | 2027-04-08 | 2027-04-22 | 4392, 4405, 4406, 4407 |  | GC1 | 8851634 |
| 4409 | 37100.37400.37600.38800.39800.41200.42200.76500.1329700 | False ceiling | 11.25d | 2027-04-23 | 2027-05-02 | 4393, 4408 |  | GC1 | 8851644 |

| ID | WBS | Task | Duration | Start | Finish | Predecessors | Constraint | Calendar | Unique_Task_ID |
| --- | --- | --- | --- | --- | --- | --- | --- | --- | --- |
| 4410 | 37100.37400.37600.38800.39800.41200.42200.76600 | **31st Floor** | 177.75d | 2026-10-27 | 2027-05-17 |  | start no earlier than 2026-10-27 | GC1 | 8807894 |
| 4411 | 37100.37400.37600.38800.39800.41200.42200.76600.1329800 | Block Work | 9d | 2026-10-27 | 2026-12-18 | 3923, 4395 |  | GC1 | 8851654 |
| 4412 | 37100.37400.37600.38800.39800.41200.42200.76600.1329900 | Door Frame Fixing | 10.12d | 2026-12-20 | 2026-12-28 | 4396, 4411 |  | GC1 | 8851664 |
| 4413 | 37100.37400.37600.38800.39800.41200.42200.76600.1330000 | Internal Plumbing Works | 11.25d | 2026-12-21 | 2026-12-30 | 4397, 4411 |  | GC1 | 8851674 |
| 4414 | 37100.37400.37600.38800.39800.41200.42200.76600.1330100 | Waterproofing | 13.5d | 2027-01-15 | 2027-01-26 | 4398, 4413 |  | GC1 | 8851684 |
| 4415 | 37100.37400.37600.38800.39800.41200.42200.76600.1330200 | Internal Plaster | 10.12d | 2027-01-27 | 2027-02-04 | 4399, 4412, 4413, 4414 |  | GC1 | 8851694 |
| 4416 | 37100.37400.37600.38800.39800.41200.42200.76600.1330300 | IPS flooring work | 10.12d | 2027-02-05 | 2027-02-13 | 4400, 4412, 4414, 4415 |  | GC1 | 8851704 |
| 4417 | 37100.37400.37600.38800.39800.41200.42200.76600.1330400 | Toilet dado work | 9d | 2027-02-05 | 2027-02-12 | 4401, 4414, 4415 |  | GC1 | 8851714 |
| 4418 | 37100.37400.37600.38800.39800.41200.42200.76600.1330500 | Toilet flooring work | 7.88d | 2027-02-13 | 2027-02-19 | 4402, 4417 |  | GC1 | 8851724 |
| 4419 | 37100.37400.37600.38800.39800.41200.42200.76600.1330600 | Living dinning flooring | 16.88d | 2027-03-16 | 2027-03-30 | 4403, 4412, 4418 |  | GC1 | 8851734 |
| 4420 | 37100.37400.37600.38800.39800.41200.42200.76600.1330700 | Aluminium door-window fixing | 13.5d | 2027-03-31 | 2027-04-11 | 4404, 4416, 4419 |  | GC1 | 8851744 |
| 4421 | 37100.37400.37600.38800.39800.41200.42200.76600.1330800 | Putty primer coat | 6.75d | 2027-03-31 | 2027-04-05 | 4405, 4419 |  | GC1 | 8851754 |
| 4422 | 37100.37400.37600.38800.39800.41200.42200.76600.1330900 | Door shutter fixing | 9d | 2027-03-31 | 2027-04-07 | 4406, 4419 |  | GC1 | 8851764 |
| 4423 | 37100.37400.37600.38800.39800.41200.42200.76600.1331000 | Electrical wiring work | 16.88d | 2027-04-08 | 2027-04-22 | 4407, 4422 |  | GC1 | 8851774 |
| 4424 | 37100.37400.37600.38800.39800.41200.42200.76600.1331100 | Painting 1st coat | 16.88d | 2027-04-23 | 2027-05-07 | 4408, 4421, 4422, 4423 |  | GC1 | 8851784 |
| 4425 | 37100.37400.37600.38800.39800.41200.42200.76600.1331200 | False ceiling | 11.25d | 2027-05-08 | 2027-05-17 | 4409, 4424 |  | GC1 | 8851794 |
| 4426 | 37100.37400.37600.38800.39800.41200.42200.76700 | **32nd Floor** | 185.62d | 2026-12-19 | 2027-06-01 |  | start no earlier than 2026-12-19 | GC1 | 8807904 |
| 4427 | 37100.37400.37600.38800.39800.41200.42200.76700.1331300 | Block Work | 9d | 2026-12-19 | 2026-12-26 | 3924, 4411 |  | GC1 | 8851804 |
| 4428 | 37100.37400.37600.38800.39800.41200.42200.76700.1331400 | Door Frame Fixing | 10.12d | 2026-12-29 | 2027-01-06 | 4412, 4427 |  | GC1 | 8851814 |
| 4429 | 37100.37400.37600.38800.39800.41200.42200.76700.1331500 | Internal Plumbing Works | 11.25d | 2026-12-31 | 2027-01-09 | 4413, 4427 |  | GC1 | 8851824 |
| 4430 | 37100.37400.37600.38800.39800.41200.42200.76700.1331600 | Waterproofing | 13.5d | 2027-01-27 | 2027-02-07 | 4414, 4429 |  | GC1 | 8851834 |
| 4431 | 37100.37400.37600.38800.39800.41200.42200.76700.1331700 | Internal Plaster | 10.12d | 2027-02-08 | 2027-02-16 | 4415, 4428, 4429, 4430 |  | GC1 | 8851844 |
| 4432 | 37100.37400.37600.38800.39800.41200.42200.76700.1331800 | IPS flooring work | 10.12d | 2027-02-17 | 2027-02-25 | 4416, 4428, 4430, 4431 |  | GC1 | 8851854 |
| 4433 | 37100.37400.37600.38800.39800.41200.42200.76700.1331900 | Toilet dado work | 9d | 2027-02-17 | 2027-02-24 | 4417, 4430, 4431 |  | GC1 | 8851864 |
| 4434 | 37100.37400.37600.38800.39800.41200.42200.76700.1332000 | Toilet flooring work | 7.88d | 2027-02-25 | 2027-03-03 | 4418, 4433 |  | GC1 | 8851874 |
| 4435 | 37100.37400.37600.38800.39800.41200.42200.76700.1332100 | Living dinning flooring | 16.88d | 2027-03-31 | 2027-04-14 | 4419, 4428, 4434 |  | GC1 | 8851884 |
| 4436 | 37100.37400.37600.38800.39800.41200.42200.76700.1332200 | Aluminium door-window fixing | 13.5d | 2027-04-15 | 2027-04-26 | 4420, 4432, 4435 |  | GC1 | 8851894 |
| 4437 | 37100.37400.37600.38800.39800.41200.42200.76700.1332300 | Putty primer coat | 6.75d | 2027-04-15 | 2027-04-20 | 4421, 4435 |  | GC1 | 8851904 |
| 4438 | 37100.37400.37600.38800.39800.41200.42200.76700.1332400 | Door shutter fixing | 9d | 2027-04-15 | 2027-04-22 | 4422, 4435 |  | GC1 | 8851914 |
| 4439 | 37100.37400.37600.38800.39800.41200.42200.76700.1332500 | Electrical wiring work | 16.88d | 2027-04-23 | 2027-05-07 | 4423, 4438 |  | GC1 | 8851924 |
| 4440 | 37100.37400.37600.38800.39800.41200.42200.76700.1332600 | Painting 1st coat | 16.88d | 2027-05-08 | 2027-05-22 | 4424, 4437, 4438, 4439 |  | GC1 | 8851934 |
| 4441 | 37100.37400.37600.38800.39800.41200.42200.76700.1332700 | False ceiling | 11.25d | 2027-05-23 | 2027-06-01 | 4425, 4440 |  | GC1 | 8851944 |

| ID | WBS | Task | Duration | Start | Finish | Predecessors | Constraint | Calendar | Unique_Task_ID |
| --- | --- | --- | --- | --- | --- | --- | --- | --- | --- |
| 4442 | 37100.37400.37600.38800.39800.41200.42200.76800 | **33rd Floor** | 190.12d | 2026-12-27 | 2027-06-13 |  | start no earlier than 2026-12-27 | GC1 | 8807914 |
| 4443 | 37100.37400.37600.38800.39800.41200.42200.76800.1332800 | Block Work | 9d | 2026-12-27 | 2027-01-03 | 3925, 4427 |  | GC1 | 8851954 |
| 4444 | 37100.37400.37600.38800.39800.41200.42200.76800.1332900 | Door Frame Fixing | 10.12d | 2027-01-07 | 2027-01-15 | 4428, 4443 |  | GC1 | 8851964 |
| 4445 | 37100.37400.37600.38800.39800.41200.42200.76800.1333000 | Internal Plumbing Works | 11.25d | 2027-01-10 | 2027-01-19 | 4429, 4443 |  | GC1 | 8851974 |
| 4446 | 37100.37400.37600.38800.39800.41200.42200.76800.1333100 | Waterproofing | 13.5d | 2027-02-08 | 2027-02-19 | 4430, 4445 |  | GC1 | 8851984 |
| 4447 | 37100.37400.37600.38800.39800.41200.42200.76800.1333200 | Internal Plaster | 10.12d | 2027-02-20 | 2027-02-28 | 4431, 4444, 4445, 4446 |  | GC1 | 8851994 |
| 4448 | 37100.37400.37600.38800.39800.41200.42200.76800.1333300 | IPS flooring work | 10.12d | 2027-03-01 | 2027-03-09 | 4432, 4444, 4446, 4447 |  | GC1 | 8852004 |
| 4449 | 37100.37400.37600.38800.39800.41200.42200.76800.1333400 | Toilet dado work | 9d | 2027-03-01 | 2027-03-08 | 4433, 4446, 4447 |  | GC1 | 8852014 |
| 4450 | 37100.37400.37600.38800.39800.41200.42200.76800.1333500 | Toilet flooring work | 7.88d | 2027-03-09 | 2027-03-15 | 4434, 4449 |  | GC1 | 8852024 |
| 4451 | 37100.37400.37600.38800.39800.41200.42200.76800.1333600 | Living dinning flooring | 16.88d | 2027-04-15 | 2027-04-29 | 4435, 4444, 4450 |  | GC1 | 8852034 |
| 4452 | 37100.37400.37600.38800.39800.41200.42200.76800.1333700 | Aluminium door-window fixing | 16.88d | 2027-04-30 | 2027-05-14 | 4436, 4448, 4451 |  | GC1 | 8852044 |
| 4453 | 37100.37400.37600.38800.39800.41200.42200.76800.1333800 | Putty primer coat | 6.75d | 2027-04-30 | 2027-05-05 | 4437, 4451 |  | GC1 | 8852054 |
| 4454 | 37100.37400.37600.38800.39800.41200.42200.76800.1333900 | Door shutter fixing | 9d | 2027-04-30 | 2027-05-07 | 4438, 4451 |  | GC1 | 8852064 |
| 4455 | 37100.37400.37600.38800.39800.41200.42200.76800.1334000 | Electrical wiring work | 13.5d | 2027-05-08 | 2027-05-19 | 4439, 4454 |  | GC1 | 8852074 |
| 4456 | 37100.37400.37600.38800.39800.41200.42200.76800.1334100 | Painting 1st coat | 13.5d | 2027-05-23 | 2027-06-03 | 4440, 4453, 4454, 4455 |  | GC1 | 8852084 |
| 4457 | 37100.37400.37600.38800.39800.41200.42200.76800.1334200 | False ceiling | 11.25d | 2027-06-04 | 2027-06-13 | 4441, 4456 |  | GC1 | 8852094 |
| 4458 | 37100.37400.37600.38800.39800.41200.42200.76900 | **34th Floor** | 194.62d | 2027-01-04 | 2027-06-25 |  | start no earlier than 2027-01-04 | GC1 | 8807924 |
| 4459 | 37100.37400.37600.38800.39800.41200.42200.76900.1334300 | Block Work | 9d | 2027-01-04 | 2027-01-11 | 3926, 4443 |  | GC1 | 8852104 |
| 4460 | 37100.37400.37600.38800.39800.41200.42200.76900.1334400 | Door Frame Fixing | 10.12d | 2027-01-16 | 2027-01-24 | 4444, 4459 |  | GC1 | 8852114 |
| 4461 | 37100.37400.37600.38800.39800.41200.42200.76900.1334500 | Internal Plumbing Works | 11.25d | 2027-01-20 | 2027-01-29 | 4445, 4459 |  | GC1 | 8852124 |
| 4462 | 37100.37400.37600.38800.39800.41200.42200.76900.1334600 | Waterproofing | 13.5d | 2027-02-20 | 2027-03-03 | 4446, 4461 |  | GC1 | 8852134 |
| 4463 | 37100.37400.37600.38800.39800.41200.42200.76900.1334700 | Internal Plaster | 10.12d | 2027-03-04 | 2027-03-12 | 4447, 4460, 4461, 4462 |  | GC1 | 8852144 |
| 4464 | 37100.37400.37600.38800.39800.41200.42200.76900.1334800 | IPS flooring work | 10.12d | 2027-03-13 | 2027-03-21 | 4448, 4460, 4462, 4463 |  | GC1 | 8852154 |
| 4465 | 37100.37400.37600.38800.39800.41200.42200.76900.1334900 | Toilet dado work | 9d | 2027-03-13 | 2027-03-20 | 4449, 4462, 4463 |  | GC1 | 8852164 |
| 4466 | 37100.37400.37600.38800.39800.41200.42200.76900.1335000 | Toilet flooring work | 7.88d | 2027-03-21 | 2027-03-27 | 4450, 4465 |  | GC1 | 8852174 |
| 4467 | 37100.37400.37600.38800.39800.41200.42200.76900.1335100 | Living dinning flooring | 16.88d | 2027-04-30 | 2027-05-14 | 4451, 4460, 4466 |  | GC1 | 8852184 |
| 4468 | 37100.37400.37600.38800.39800.41200.42200.76900.1335200 | Aluminium door-window fixing | 16.88d | 2027-05-15 | 2027-05-29 | 4452, 4464, 4467 |  | GC1 | 8852194 |
| 4469 | 37100.37400.37600.38800.39800.41200.42200.76900.1335300 | Putty primer coat | 6.75d | 2027-05-15 | 2027-05-20 | 4453, 4467 |  | GC1 | 8852204 |
| 4470 | 37100.37400.37600.38800.39800.41200.42200.76900.1335400 | Door shutter fixing | 9d | 2027-05-15 | 2027-05-22 | 4454, 4467 |  | GC1 | 8852214 |
| 4471 | 37100.37400.37600.38800.39800.41200.42200.76900.1335500 | Electrical wiring work | 13.5d | 2027-05-23 | 2027-06-03 | 4455, 4470 |  | GC1 | 8852224 |
| 4472 | 37100.37400.37600.38800.39800.41200.42200.76900.1335600 | Painting 1st coat | 13.5d | 2027-06-04 | 2027-06-15 | 4456, 4469, 4470, 4471 |  | GC1 | 8852234 |
| 4473 | 37100.37400.37600.38800.39800.41200.42200.76900.1335700 | False ceiling | 11.25d | 2027-06-16 | 2027-06-25 | 4457, 4472 |  | GC1 | 8852244 |

| ID | WBS | Task | Duration | Start | Finish | Predecessors | Constraint | Calendar | Unique_Task_ID |
| --- | --- | --- | --- | --- | --- | --- | --- | --- | --- |
| 4474 | 37100.37400.37600.38800.39800.41200.42200.77000 | **35th Floor** | 202.5d | 2027-01-12 | 2027-07-10 |  | start no earlier than 2027-01-12 | GC1 | 8807934 |
| 4475 | 37100.37400.37600.38800.39800.41200.42200.77000.1335800 | Block Work | 9d | 2027-01-12 | 2027-01-19 | 3927, 4459 |  | GC1 | 8852254 |
| 4476 | 37100.37400.37600.38800.39800.41200.42200.77000.1335900 | Door Frame Fixing | 10.12d | 2027-01-25 | 2027-02-02 | 4460, 4475 |  | GC1 | 8852264 |
| 4477 | 37100.37400.37600.38800.39800.41200.42200.77000.1336000 | Internal Plumbing Works | 11.25d | 2027-01-30 | 2027-02-08 | 4461, 4475 |  | GC1 | 8852274 |
| 4478 | 37100.37400.37600.38800.39800.41200.42200.77000.1336100 | Waterproofing | 11.25d | 2027-02-09 | 2027-02-18 | 4477 |  | GC1 | 8852284 |
| 4479 | 37100.37400.37600.38800.39800.41200.42200.77000.1336200 | Internal Plaster | 10.12d | 2027-02-19 | 2027-02-27 | 4476, 4477, 4478 |  | GC1 | 8852294 |
| 4480 | 37100.37400.37600.38800.39800.41200.42200.77000.1336300 | IPS flooring work | 10.12d | 2027-03-22 | 2027-03-30 | 4464, 4476, 4478, 4479 |  | GC1 | 8852304 |
| 4481 | 37100.37400.37600.38800.39800.41200.42200.77000.1336400 | Toilet dado work | 9d | 2027-03-21 | 2027-03-28 | 4465, 4478, 4479 |  | GC1 | 8852314 |
| 4482 | 37100.37400.37600.38800.39800.41200.42200.77000.1336500 | Toilet flooring work | 7.88d | 2027-03-29 | 2027-04-04 | 4466, 4481 |  | GC1 | 8852324 |
| 4483 | 37100.37400.37600.38800.39800.41200.42200.77000.1336600 | Living dinning flooring | 16.88d | 2027-05-15 | 2027-05-29 | 4467, 4476, 4482 |  | GC1 | 8852334 |
| 4484 | 37100.37400.37600.38800.39800.41200.42200.77000.1336700 | Aluminium door-window fixing | 16.88d | 2027-05-30 | 2027-06-13 | 4468, 4480, 4483 |  | GC1 | 8852344 |
| 4485 | 37100.37400.37600.38800.39800.41200.42200.77000.1336800 | Putty primer coat | 6.75d | 2027-05-30 | 2027-06-04 | 4469, 4483 |  | GC1 | 8852354 |
| 4486 | 37100.37400.37600.38800.39800.41200.42200.77000.1336900 | Door shutter fixing | 9d | 2027-05-30 | 2027-06-06 | 4470, 4483 |  | GC1 | 8852364 |
| 4487 | 37100.37400.37600.38800.39800.41200.42200.77000.1337000 | Electrical wiring work | 13.5d | 2027-06-07 | 2027-06-18 | 4471, 4486 |  | GC1 | 8852374 |
| 4488 | 37100.37400.37600.38800.39800.41200.42200.77000.1337100 | Painting 1st coat | 13.5d | 2027-06-19 | 2027-06-30 | 4472, 4485, 4486, 4487 |  | GC1 | 8852384 |
| 4489 | 37100.37400.37600.38800.39800.41200.42200.77000.1337200 | False ceiling | 11.25d | 2027-07-01 | 2027-07-10 | 4473, 4488 |  | GC1 | 8852394 |
| 4490 | 37100.37400.37600.38800.39800.41200.190200 | **Terrace Finishing** | 90d | 2026-09-30 | 2027-02-01 |  | start no earlier than 2026-09-30 | GC1 | 8810754 |
| 4491 | 37100.37400.37600.38800.39800.41200.190200.575300 | Terrace waterproofing | 45d | 2026-09-30 | 2026-12-23 | 3884 |  | GC1 | 8825674 |
| 4492 | 37100.37400.37600.38800.39800.41200.190200.575400 | Terrace finishing | 45d | 2026-12-24 | 2027-02-01 | 4491 |  | GC1 | 8825684 |
| 4493 | 37100.37400.37600.38800.39800.41200.98800 | **Common Area Finishing** | 343.12d | 2026-12-24 | 2027-10-24 |  | start no earlier than 2026-12-24 | GC1 | 8808084 |
| 4494 | 37100.37400.37600.38800.39800.41200.98800.575500 | Block Work | 84.38d | 2026-12-24 | 2027-03-08 | 3889 |  | GC1 | 8825694 |
| 4495 | 37100.37400.37600.38800.39800.41200.98800.575600 | Internal Plaster | 135d | 2027-02-12 | 2027-06-11 | 4500SS+33.75d |  | GC1 | 8825704 |
| 4496 | 37100.37400.37600.38800.39800.41200.98800.575700 | Staircase railing fixing | 168.75d | 2027-05-28 | 2027-10-24 | 4498SS+33.75d, 4497SS+33.75d |  | GC1 | 8825714 |
| 4497 | 37100.37400.37600.38800.39800.41200.98800.575800 | Main staircase flooring | 168.75d | 2027-04-28 | 2027-09-24 | 4498SS+16.88d |  | GC1 | 8825724 |
| 4498 | 37100.37400.37600.38800.39800.41200.98800.575900 | Fire staircase flooring | 168.75d | 2027-04-13 | 2027-09-09 | 4495SS+16.88d, 4502SS+33.75d |  | GC1 | 8825734 |
| 4499 | 37100.37400.37600.38800.39800.41200.98800.576000 | Fire door work | 67.5d | 2027-05-28 | 2027-07-26 | 4497SS+33.75d, 4498SS+33.75d |  | GC1 | 8825744 |
| 4500 | 37100.37400.37600.38800.39800.41200.98800.576100 | Electrical wiring work | 135d | 2027-01-13 | 2027-05-12 | 4494SS+22.5d |  | GC1 | 8825754 |
| 4501 | 37100.37400.37600.38800.39800.41200.98800.576200 | Lobby flooring | 168.75d | 2027-01-16 | 2027-06-15 | 4500SS+4.12d |  | GC1 | 8825764 |
| 4502 | 37100.37400.37600.38800.39800.41200.98800.576300 | Ceiling & wall putty-primer | 123.75d | 2027-03-14 | 2027-07-01 | 4495SS+33.75d |  | GC1 | 8825774 |
| 4503 | 37100.37400.37600.38800.39800.41200.98800.576400 | Ceiling & wall painting | 112.5d | 2027-07-11 | 2027-10-18 | 4502SS+22.5d, 4489 |  | GC1 | 8825784 |
| 4504 | 37100.37400.37600.38800.39800.41200.98800.576500 | Light fixture supply & installation | 50.62d | 2027-09-09 | 2027-10-23 | 4503SS+67.5d |  | GC1 | 8825794 |

| ID | WBS | Task | Duration | Start | Finish | Predecessors | Constraint | Calendar | Unique_Task_ID |
| --- | --- | --- | --- | --- | --- | --- | --- | --- | --- |
| 4505 | 37100.37400.37600.38800.39800.41200.46300 | **Balcony Glass Railing** | 78.75d | 2027-07-13 | 2027-09-20 |  | start no earlier than 2027-07-13 | GC1 | 8806134 |
| 4506 | 37100.37400.37600.38800.39800.41200.46300.576600 | 1st Floor | 2.25d | 2027-07-13 | 2027-07-14 | 4574 |  | GC1 | 8825804 |
| 4507 | 37100.37400.37600.38800.39800.41200.46300.576700 | 2nd Floor | 2.25d | 2027-07-15 | 2027-07-16 | 4506 |  | GC1 | 8825814 |
| 4508 | 37100.37400.37600.38800.39800.41200.46300.576800 | 3rd Floor | 2.25d | 2027-07-17 | 2027-07-18 | 4507 |  | GC1 | 8825824 |
| 4509 | 37100.37400.37600.38800.39800.41200.46300.576900 | 4th Floor | 2.25d | 2027-07-19 | 2027-07-20 | 4508 |  | GC1 | 8825834 |
| 4510 | 37100.37400.37600.38800.39800.41200.46300.577000 | 5th Floor | 2.25d | 2027-07-21 | 2027-07-22 | 4509 |  | GC1 | 8825844 |
| 4511 | 37100.37400.37600.38800.39800.41200.46300.577100 | 6th Floor | 2.25d | 2027-07-23 | 2027-07-24 | 4510 |  | GC1 | 8825854 |
| 4512 | 37100.37400.37600.38800.39800.41200.46300.577200 | 7th Floor | 2.25d | 2027-07-25 | 2027-07-26 | 4511 |  | GC1 | 8825864 |
| 4513 | 37100.37400.37600.38800.39800.41200.46300.577300 | 8th Floor | 2.25d | 2027-07-27 | 2027-07-28 | 4512 |  | GC1 | 8825874 |
| 4514 | 37100.37400.37600.38800.39800.41200.46300.577400 | 9th Floor | 2.25d | 2027-07-29 | 2027-07-30 | 4513 |  | GC1 | 8825884 |
| 4515 | 37100.37400.37600.38800.39800.41200.46300.577500 | 10th Floor | 2.25d | 2027-07-31 | 2027-08-01 | 4514 |  | GC1 | 8825894 |
| 4516 | 37100.37400.37600.38800.39800.41200.46300.577600 | 11th Floor | 2.25d | 2027-08-02 | 2027-08-03 | 4515 |  | GC1 | 8825904 |
| 4517 | 37100.37400.37600.38800.39800.41200.46300.577700 | 12th Floor | 2.25d | 2027-08-04 | 2027-08-05 | 4516 |  | GC1 | 8825914 |
| 4518 | 37100.37400.37600.38800.39800.41200.46300.577800 | 13th Floor | 2.25d | 2027-08-06 | 2027-08-07 | 4517 |  | GC1 | 8825924 |
| 4519 | 37100.37400.37600.38800.39800.41200.46300.577900 | 14th Floor | 2.25d | 2027-08-08 | 2027-08-09 | 4518 |  | GC1 | 8825934 |
| 4520 | 37100.37400.37600.38800.39800.41200.46300.578000 | 15th Floor | 2.25d | 2027-08-10 | 2027-08-11 | 4519 |  | GC1 | 8825944 |
| 4521 | 37100.37400.37600.38800.39800.41200.46300.578100 | 16th Floor | 2.25d | 2027-08-12 | 2027-08-13 | 4520 |  | GC1 | 8825954 |
| 4522 | 37100.37400.37600.38800.39800.41200.46300.578200 | 17th Floor | 2.25d | 2027-08-14 | 2027-08-15 | 4521 |  | GC1 | 8825964 |
| 4523 | 37100.37400.37600.38800.39800.41200.46300.578300 | 18th Floor | 2.25d | 2027-08-16 | 2027-08-17 | 4522 |  | GC1 | 8825974 |
| 4524 | 37100.37400.37600.38800.39800.41200.46300.578400 | 19th Floor | 2.25d | 2027-08-18 | 2027-08-19 | 4523 |  | GC1 | 8825984 |
| 4525 | 37100.37400.37600.38800.39800.41200.46300.578500 | 20th Floor | 2.25d | 2027-08-20 | 2027-08-21 | 4524 |  | GC1 | 8825994 |
| 4526 | 37100.37400.37600.38800.39800.41200.46300.578600 | 21st Floor | 2.25d | 2027-08-22 | 2027-08-23 | 4525 |  | GC1 | 8826004 |
| 4527 | 37100.37400.37600.38800.39800.41200.46300.578700 | 22nd Floor | 2.25d | 2027-08-24 | 2027-08-25 | 4526 |  | GC1 | 8826014 |
| 4528 | 37100.37400.37600.38800.39800.41200.46300.578800 | 23rd Floor | 2.25d | 2027-08-26 | 2027-08-27 | 4527 |  | GC1 | 8826024 |
| 4529 | 37100.37400.37600.38800.39800.41200.46300.578900 | 24th Floor | 2.25d | 2027-08-28 | 2027-08-29 | 4528 |  | GC1 | 8826034 |
| 4530 | 37100.37400.37600.38800.39800.41200.46300.579000 | 25th Floor | 2.25d | 2027-08-30 | 2027-08-31 | 4529 |  | GC1 | 8826044 |
| 4531 | 37100.37400.37600.38800.39800.41200.46300.579100 | 26th Floor | 2.25d | 2027-09-01 | 2027-09-02 | 4530 |  | GC1 | 8826054 |
| 4532 | 37100.37400.37600.38800.39800.41200.46300.579200 | 27th Floor | 2.25d | 2027-09-03 | 2027-09-04 | 4531 |  | GC1 | 8826064 |
| 4533 | 37100.37400.37600.38800.39800.41200.46300.579300 | 28th Floor | 2.25d | 2027-09-05 | 2027-09-06 | 4532 |  | GC1 | 8826074 |
| 4534 | 37100.37400.37600.38800.39800.41200.46300.579400 | 29th Floor | 2.25d | 2027-09-07 | 2027-09-08 | 4533 |  | GC1 | 8826084 |
| 4535 | 37100.37400.37600.38800.39800.41200.46300.579500 | 30th Floor | 2.25d | 2027-09-09 | 2027-09-10 | 4534 |  | GC1 | 8826094 |
| 4536 | 37100.37400.37600.38800.39800.41200.46300.579600 | 31st Floor | 2.25d | 2027-09-11 | 2027-09-12 | 4535 |  | GC1 | 8826104 |
| 4537 | 37100.37400.37600.38800.39800.41200.46300.579700 | 32nd Floor | 2.25d | 2027-09-13 | 2027-09-14 | 4536 |  | GC1 | 8826114 |
| 4538 | 37100.37400.37600.38800.39800.41200.46300.579800 | 33rd Floor | 2.25d | 2027-09-15 | 2027-09-16 | 4537 |  | GC1 | 8826124 |
| 4539 | 37100.37400.37600.38800.39800.41200.46300.579900 | 34th Floor | 2.25d | 2027-09-17 | 2027-09-18 | 4538 |  | GC1 | 8826134 |
| 4540 | 37100.37400.37600.38800.39800.41200.46300.580000 | 35th Floor | 2.25d | 2027-09-19 | 2027-09-20 | 4539 |  | GC1 | 8826144 |

| ID | WBS | Task | Duration | Start | Finish | Predecessors | Constraint | Calendar | Unique_Task_ID |
| --- | --- | --- | --- | --- | --- | --- | --- | --- | --- |
| 4541 | 37100.37400.37600.38800.96000 | **MEP work** | 524.25d | 2026-12-24 | 2028-05-17 |  | start no earlier than 2026-12-24 | GC1 | 8807944 |
| 4542 | 37100.37400.37600.38800.96000.98100 | **Electrical work** | 303.75d | 2026-12-24 | 2027-09-19 |  | start no earlier than 2026-12-24 | GC1 | 8808014 |
| 4543 | 37100.37400.37600.38800.96000.98100.329700 | Cable Tray | 101.25d | 2026-12-24 | 2027-03-23 | 3889 |  | GC1 | 8815284 |
| 4544 | 37100.37400.37600.38800.96000.98100.329800 | Cable, main & sub main | 135d | 2027-02-07 | 2027-06-06 | 4543SS+50.62d |  | GC1 | 8815294 |
| 4545 | 37100.37400.37600.38800.96000.98100.329900 | LT panel & DB | 135d | 2027-04-03 | 2027-07-31 | 4543FS+11.25d |  | GC1 | 8815304 |
| 4546 | 37100.37400.37600.38800.96000.98100.330000 | Rising main | 135d | 2027-05-23 | 2027-09-19 | 4543FS+67.5d |  | GC1 | 8815314 |
| 4547 | 37100.37400.37600.38800.96000.98100.330100 | EARTHING Works | 67.5d | 2027-04-08 | 2027-06-06 | 4543FS+16.88d |  | GC1 | 8815324 |
| 4548 | 37100.37400.37600.38800.96000.98100.330200 | Advance lightening protection | 67.5d | 2027-02-02 | 2027-04-02 | 4492 |  | GC1 | 8815334 |
| 4549 | 37100.37400.37600.38800.96000.98100.330300 | Inverter | 39.38d | 2027-06-07 | 2027-07-11 | 4547 |  | GC1 | 8815344 |
| 4550 | 37100.37400.37600.38800.96000.98100.330400 | Energy meter | 67.5d | 2027-06-07 | 2027-08-05 | 4544 |  | GC1 | 8815354 |
| 4551 | 37100.37400.37600.38800.96000.98100.330500 | Exhast fan | 67.5d | 2027-04-20 | 2027-06-18 | 4484FF+5.62d |  | GC1 | 8815364 |
| 4552 | 37100.37400.37600.38800.96000.98100.330600 | FTTH | 67.5d | 2027-05-28 | 2027-07-26 | 4547FS-11.25d |  | GC1 | 8815374 |
| 4553 | 37100.37400.37600.38800.96000.98100.330700 | Security System - FA & PA | 61.88d | 2027-06-02 | 2027-07-26 | 4552FF |  | GC1 | 8815384 |
| 4554 | 37100.37400.37600.38800.96000.98100.330800 | Solar water heater | 67.5d | 2027-02-02 | 2027-04-02 | 4492 |  | GC1 | 8815394 |
| 4555 | 37100.37400.37600.38800.96000.123100 | **Plumbing work** | 281.25d | 2026-12-24 | 2027-08-30 |  | start no earlier than 2026-12-24 | GC1 | 8808384 |
| 4556 | 37100.37400.37600.38800.96000.123100.330900 | Terrace looping | 50.62d | 2026-12-24 | 2027-02-06 | 4491 |  | GC1 | 8815404 |
| 4557 | 37100.37400.37600.38800.96000.123100.331000 | Shaft Plumbing | 135d | 2027-02-07 | 2027-06-06 | 4556 |  | GC1 | 8815414 |
| 4558 | 37100.37400.37600.38800.96000.123100.331100 | CP sanitary fixture supply | 84.38d | 2027-06-04 | 2027-08-17 | 4479, 4482FS+67.5d |  | GC1 | 8815424 |
| 4559 | 37100.37400.37600.38800.96000.123100.331200 | Cold & flushing water supply | 101.25d | 2027-05-13 | 2027-08-10 | 4495SS+101.25d |  | GC1 | 8815434 |
| 4560 | 37100.37400.37600.38800.96000.123100.331300 | Misc work | 33.75d | 2027-08-01 | 2027-08-30 | 4559FS-11.25d |  | GC1 | 8815444 |
| 4561 | 37100.37400.37600.38800.96000.130300 | **Fire fighting work** | 360d | 2026-12-24 | 2027-12-23 |  | start no earlier than 2026-12-24 | GC1 | 8808564 |
| 4562 | 37100.37400.37600.38800.96000.130300.331400 | Fire hydrant work | 101.25d | 2027-04-13 | 2027-07-11 | 4495SS+67.5d |  | GC1 | 8815454 |
| 4563 | 37100.37400.37600.38800.96000.130300.331500 | Sprinkler & piping work | 101.25d | 2027-08-11 | 2027-12-23 | 4562FS+33.75d |  | GC1 | 8815464 |
| 4564 | 37100.37400.37600.38800.96000.130300.331600 | Shaft Downtake works | 101.25d | 2026-12-24 | 2027-03-23 | 4491 |  | GC1 | 8815474 |
| 4565 | 37100.37400.37600.38800.96000.130300.331700 | Connection to pump room | 33.75d | 2027-03-24 | 2027-04-22 | 4564 |  | GC1 | 8815484 |

| ID | WBS | Task | Duration | Start | Finish | Predecessors | Constraint | Calendar | Unique_Task_ID |
| --- | --- | --- | --- | --- | --- | --- | --- | --- | --- |
| 4566 | 37100.37400.37600.38800.96000.185000 | **Lift work** | 191.25d | 2026-12-24 | 2027-06-11 |  | start no earlier than 2026-12-24 | GC1 | 8810664 |
| 4567 | 37100.37400.37600.38800.96000.185000.331800 | Lift Shaft Handover | 45d | 2026-12-24 | 2027-02-01 | 3889 |  | GC1 | 8815494 |
| 4568 | 37100.37400.37600.38800.96000.185000.331900 | Lift installation work | 50.62d | 2027-02-02 | 2027-03-18 | 4567 |  | GC1 | 8815504 |
| 4569 | 37100.37400.37600.38800.96000.185000.332000 | Lift testing and commissioning | 95.62d | 2027-03-19 | 2027-06-11 | 4568 |  | GC1 | 8815514 |
| 4570 | 37100.37400.37600.38800.96000.194800 | **AC work** | 112.5d | 2028-02-08 | 2028-05-17 |  | start no earlier than 2028-02-08 | GC1 | 8810824 |
| 4571 | 37100.37400.37600.38800.96000.194800.332100 | Split AC | 112.5d | 2028-02-08 | 2028-05-17 | 4587FS-33.75d |  | GC1 | 8815524 |
| 4572 | 37100.37400.37600.38800.126800 | **Tower Completion** | 303.75d | 2027-01-14 | 2027-10-10 |  | start no earlier than 2027-01-14 | GC1 | 8808424 |
| 4573 | 37100.37400.37600.38800.126800.234600 | SURFACE PREPARATION | 90d | 2027-01-14 | 2027-04-03 | 3927FS+2.25d |  | GC1 | 8811644 |
| 4574 | 37100.37400.37600.38800.126800.234700 | External Painting | 112.5d | 2027-04-04 | 2027-07-12 | 4573 |  | GC1 | 8811654 |
| 4575 | 37100.37400.37600.38800.126800.234800 | Final coat of painting | 101.25d | 2027-07-13 | 2027-10-10 | 4574 |  | GC1 | 8811664 |
| 4576 | 37100.37400.37600.38800.126800.234900 | Misc. work | 67.5d | 2027-07-13 | 2027-09-10 | 4574 |  | GC1 | 8811674 |
| 4577 | 37100.37400.37600.38800.192200 | **Basement lobby** | 67.5d | 2027-06-15 | 2027-08-14 |  | start no earlier than 2027-06-15 | GC1 | 8810914 |
| 4578 | 37100.37400.37600.38800.192200.235000 | Basement lobby | 67.5d | 2027-06-15 | 2027-08-14 | 4501 |  | GC1 | 8811684 |
| 4579 | 37100.37400.37600.38800.109600 | **Post OC activities** | 415.12d | 2027-06-19 | 2028-08-05 |  | start no earlier than 2027-06-19 | GC1 | 8808284 |
| 4580 | 37100.37400.37600.38800.109600.235100 | Wardrobe installation | 202.5d | 2028-02-08 | 2028-08-05 | 4587FS-33.75d |  | GC1 | 8811694 |
| 4581 | 37100.37400.37600.38800.109600.235200 | CP & SANITARYWARE | 135d | 2028-02-08 | 2028-06-06 | 4587FS-33.75d, 4558 |  | GC1 | 8811704 |
| 4582 | 37100.37400.37600.38800.109600.235300 | Wooden Flooring | 202.5d | 2028-02-08 | 2028-08-05 | 4587FS-33.75d |  | GC1 | 8811714 |
| 4583 | 37100.37400.37600.38800.109600.235400 | Electrical Fixtures And Fittings | 135d | 2027-06-19 | 2027-10-16 | 4487 |  | GC1 | 8811724 |
| 4584 | 37100.37400.37600.38800.109600.235500 | Modular Kitchen | 202.5d | 2028-02-08 | 2028-08-05 | 4580SS |  | GC1 | 8811734 |
| 4585 | 37100.37400.37600.38800.109600.235600 | Final Coat Paint | 101.25d | 2028-02-23 | 2028-05-22 | 4587FS-16.88d, 4504 |  | GC1 | 8811744 |
| 4586 | 37100.37400.37600.38800.218900 | OC Application/Readiness | 1.12d | 2027-12-24 | 2027-12-24 | 3889, 4496FS+9d, 3680, 3701, 3702, 4499, 4540, 4545, 4546, 4548, 4549, 4550, 4551, 4553, 4554, 4557, 4560, 4563, 4565, 4569, 4576, 4575, 4578 |  | GC1 | 8811074 |
| 4587 | 37100.37400.37600.38800.219000 | OC Receipt | 16.88d | 2028-02-23 | 2028-03-08 | 4586FS+67.5d |  | GC1 | 8811084 |
| 4588 | 37100.37400.37600.38800.219100 | Offer To Possession | 12.38d | 2028-08-06 | 2028-08-16 | 4660FF-33.75d, 4580, 4581, 4582, 4583, 4584, 4585, 4571 |  | GC1 | 8811094 |
| 4589 | 37100.37400.37600.102500 | **External Infrastructure** | 698.62d | 2025-10-17 | 2027-09-27 |  | start no earlier than 2025-10-17 | GC1 | 8808154 |
| 4590 | 37100.37400.37600.102500.192100 | **External Firefightning Work** | 236.25d | 2026-10-20 | 2027-07-01 |  | start no earlier than 2026-10-20 | GC1 | 8810924 |
| 4591 | 37100.37400.37600.102500.192100.235700 | Excavation, Pipe Laying, Hyderent errection , Fitting , Testing & Commissioning | 236.25d | 2026-10-20 | 2027-07-01 | 4598FF |  | GC1 | 8811754 |

| ID | WBS | Task | Duration | Start | Finish | Predecessors | Complete | Constraint | Calendar | Unique_Task_ID |
| --- | --- | --- | --- | --- | --- | --- | --- | --- | --- | --- |
| 4592 | 37100.37400.37600.102500.109500 | **External Plumbing** | 270d | 2026-09-30 | 2027-07-11 |  |  | start no earlier than 2026-09-30 | GC1 | 8808294 |
| 4593 | 37100.37400.37600.102500.109500.194900 | **External Plumbing - Sewer** | 236.25d | 2026-09-30 | 2027-06-11 |  |  | start no earlier than 2026-09-30 | GC1 | 8810764 |
| 4594 | 37100.37400.37600.102500.109500.194900.332200 | Excavation, Pipe Laying, Filling , Testing & Commissioning | 236.25d | 2026-09-30 | 2027-06-11 | 3884 |  |  | GC1 | 8815534 |
| 4595 | 37100.37400.37600.102500.109500.195000 | **External Plumbing - Watersupply** | 236.25d | 2026-10-30 | 2027-07-11 |  |  | start no earlier than 2026-10-30 | GC1 | 8810774 |
| 4596 | 37100.37400.37600.102500.109500.195000.332300 | Excavation, Pipe Laying, Filling , Testing & Commissioning | 236.25d | 2026-10-30 | 2027-07-11 | 4591FF+11.25d |  |  | GC1 | 8815544 |
| 4597 | 37100.37400.37600.102500.109500.195100 | **External Plumbing - Storm Water** | 236.25d | 2026-10-20 | 2027-07-01 |  |  | start no earlier than 2026-10-20 | GC1 | 8810784 |
| 4598 | 37100.37400.37600.102500.109500.195100.332400 | Excavation, PCC, BBM , IPS, Cover fixing, Curing | 236.25d | 2026-10-20 | 2027-07-01 | 4594SS+22.5d |  |  | GC1 | 8815554 |
| 4599 | 37100.37400.37600.102500.109500.195200 | **Rain water Harvesting work** | 236.25d | 2026-10-20 | 2027-07-01 |  |  | start no earlier than 2026-10-20 | GC1 | 8810794 |
| 4600 | 37100.37400.37600.102500.109500.195200.332500 | Rain water Harvesting work | 236.25d | 2026-10-20 | 2027-07-01 | 4598FF |  |  | GC1 | 8815564 |
| 4601 | 37100.37400.37600.102500.123800 | **External Electrical Work** | 698.62d | 2025-10-17 | 2027-09-27 |  |  | start no earlier than 2025-10-17 | GC1 | 8808334 |
| 4602 | 37100.37400.37600.102500.123800.235800 | HV INSTALLATION | 101.25d | 2026-10-30 | 2027-03-13 | 3884FS+33.75d |  |  | GC1 | 8811764 |
| 4603 | 37100.37400.37600.102500.123800.235900 | HT CABLES & LT CONTROL CABLES | 135d | 2027-03-14 | 2027-07-11 | 4602 |  |  | GC1 | 8811774 |
| 4604 | 37100.37400.37600.102500.123800.236000 | Street Light Fixing | 135d | 2027-05-28 | 2027-09-24 | 4603SS+84.38d, 929, 1846, 2763 |  |  | GC1 | 8811784 |
| 4605 | 37100.37400.37600.102500.123800.236100 | External Road | 101.25d | 2025-10-17 | 2026-02-28 | 4608FF, 12 |  |  | GC1 | 8811794 |
| 4606 | 37100.37400.37600.102500.123800.236200 | Completion of External Infrastructure | 1.12d | 2027-09-27 | 2027-09-27 | 4607, 4605, 4596, 4600 |  |  | GC1 | 8811804 |
| 4607 | 37100.37400.37600.102500.219200 | Soft Scape Work | 7.88d | 2027-09-20 | 2027-09-26 | 4604FF+2.25d |  |  | GC1 | 8811104 |
| 4608 | 37100.37400.37600.102500.219300 | Hard Scape Work | 2.25d | 2026-02-27 | 2026-02-28 | 4632FS+33.75d |  |  | GC1 | 8811114 |
| 4609 | 37100.37400.37600.84100 | **NTA works** | 976.5d | 2024-12-26 | 2027-08-10 |  | 2% | start no earlier than 2024-12-26 | GC1 | 8806184 |
| 4610 | 37100.37400.37600.84100.219400 | Excavation | 101.06d | 2024-12-26 | 2025-05-11 | 3677FS-113.19d | 59% |  | GC1 | 8811124 |
| 4611 | 37100.37400.37600.84100.219500 | Backfilling | 10.12d | 2025-08-04 | 2025-08-12 | 4624SS-67.5d |  |  | GC1 | 8811134 |
| 4612 | 37100.37400.37600.84100.219600 | Boundary Wall | 7.88d | 2025-08-13 | 2025-08-19 | 4611 |  |  | GC1 | 8811144 |
| 4613 | 37100.37400.37600.84100.101900 | **RCC Works - Nontower area** | 736.62d | 2025-01-25 | 2027-02-08 |  | 1% | start no earlier than 2025-01-25 | GC1 | 8808144 |
| 4614 | 37100.37400.37600.84100.101900.124300 | **NTA Raft/Footing** | 469.12d | 2025-01-25 | 2026-05-01 |  | 11% | start no earlier than 2025-01-25 | GC1 | 8808374 |
| 4615 | 37100.37400.37600.84100.101900.124300.332600 | Anti Termite | 16.88d | 2026-04-17 | 2026-05-01 | 4619SS+241.88d |  |  | GC1 | 8815574 |
| 4616 | 37100.37400.37600.84100.101900.124300.205600 | PCC | 111.94d | 2025-01-25 | 2025-07-27 | 4610FF+22.5d, 1851FS-103.5d | 52% |  | GC1 | 8815584 |
| 4617 | 37100.37400.37600.84100.101900.124300.332700 | Reinforcement | 135d | 2025-06-19 | 2025-10-16 | 4616SS+163.12d |  |  | GC1 | 8815594 |
| 4618 | 37100.37400.37600.84100.101900.124300.332800 | Shuttering | 135d | 2025-06-29 | 2025-10-26 | 4617FF+11.25d |  |  | GC1 | 8815604 |
| 4619 | 37100.37400.37600.84100.101900.124300.332900 | Concreting | 101.25d | 2025-07-31 | 2025-10-28 | 4618FF+2.25d |  |  | GC1 | 8815614 |

| ID | WBS | Task | Duration | Start | Finish | Predecessors | Constraint | Calendar | Unique_Task_ID |
| --- | --- | --- | --- | --- | --- | --- | --- | --- | --- |
| 4620 | 37100.37400.37600.84100.101900.130400 | **Retaining wall** | 410.62d | 2025-04-01 | 2026-05-15 |  | start no earlier than 2025-04-01 | GC1 | 8810424 |
| 4621 | 37100.37400.37600.84100.101900.130400.333000 | Reinforcement | 275.62d | 2025-04-01 | 2026-01-15 | 4616SS+60d |  | GC1 | 8815624 |
| 4622 | 37100.37400.37600.84100.101900.130400.333100 | Shuttering | 270d | 2025-04-06 | 2026-01-15 | 4621SS+5.62d |  | GC1 | 8815634 |
| 4623 | 37100.37400.37600.84100.101900.130400.333200 | Concreting | 266.62d | 2025-04-12 | 2026-01-18 | 4622FF+3.38d |  | GC1 | 8815644 |
| 4624 | 37100.37400.37600.84100.101900.130400.333300 | Retaining wall waterproofing | 202.5d | 2025-10-03 | 2026-05-15 | 4623SS+7.88d | must start on 2025-10-03 | GC1 | 8815654 |
| 4625 | 37100.37400.37600.84100.101900.187000 | **NTA Basement B2 slab** | 354.38d | 2025-10-01 | 2026-09-25 |  | start no earlier than 2025-10-01 | GC1 | 8810454 |
| 4626 | 37100.37400.37600.84100.101900.187000.333400 | Reinforcement | 348.75d | 2025-10-01 | 2026-09-20 | 4623SS+16.88d | must start on 2025-10-01 | GC1 | 8815664 |
| 4627 | 37100.37400.37600.84100.101900.187000.333500 | Shuttering | 348.75d | 2025-10-06 | 2026-09-25 | 4626FF-3.38d | must start on 2025-10-06 | GC1 | 8815674 |
| 4628 | 37100.37400.37600.84100.101900.187000.333600 | Concreting | 349.88d | 2025-10-03 | 2026-09-23 | 4627FF+5.62d | must start on 2025-10-03 | GC1 | 8815684 |
| 4629 | 37100.37400.37600.84100.101900.187100 | **NTA Basement B1 slab** | 286.88d | 2025-07-17 | 2026-05-12 |  | start no earlier than 2025-07-17 | GC1 | 8810444 |
| 4630 | 37100.37400.37600.84100.101900.187100.333700 | Reinforcement | 191.25d | 2025-10-10 | 2026-05-12 | 4628FF+101.25d | must start on 2025-10-10 | GC1 | 8815694 |
| 4631 | 37100.37400.37600.84100.101900.187100.333800 | Shuttering | 67.5d | 2025-10-10 | 2026-01-22 | 4630FF-3.38d | must start on 2025-10-10 | GC1 | 8815704 |
| 4632 | 37100.37400.37600.84100.101900.187100.333900 | Concreting | 168.75d | 2025-07-17 | 2026-01-27 | 4631FF+5.62d |  | GC1 | 8815714 |
| 4633 | 37100.37400.37600.84100.101900.187300 | **NTA Podium slab** | 299d | 2026-04-04 | 2027-02-08 |  | start no earlier than 2026-04-04 | GC1 | 8810434 |
| 4634 | 37100.37400.37600.84100.101900.187300.334000 | Reinforcement | 226.12d | 2026-04-04 | 2026-10-21 | 4606, 4632SS+50.62d | must start on 2026-04-04 | GC1 | 8815724 |
| 4635 | 37100.37400.37600.84100.101900.187300.334100 | Shuttering | 202.5d | 2026-04-22 | 2026-10-18 | 4634FF-3.38d |  | GC1 | 8815734 |
| 4636 | 37100.37400.37600.84100.101900.187300.334200 | Concreting | 174.38d | 2026-07-23 | 2027-02-08 | 4612FS+0.25d, 4635FF+5.62d, 221FF |  | GC1 | 8815744 |
| 4637 | 37100.37400.37600.84100.126900 | **Basement and Podium Block work and Plaster finishing** | 180d | 2026-04-07 | 2026-09-13 |  | start no earlier than 2026-04-07 | GC1 | 8808414 |
| 4638 | 37100.37400.37600.84100.126900.236300 | Brick work/plaster | 112.5d | 2026-04-07 | 2026-07-15 | 4632SS+33.75d | must start on 2026-04-07 | GC1 | 8811814 |
| 4639 | 37100.37400.37600.84100.126900.236400 | Finishing work-White Goods | 67.5d | 2026-07-16 | 2026-09-13 | 4638 |  | GC1 | 8811824 |
| 4640 | 37100.37400.37600.84100.126900.236500 | Painting (1st Coat) | 67.5d | 2026-07-16 | 2026-09-13 | 4638 |  | GC1 | 8811834 |
| 4641 | 37100.37400.37600.84100.126900.236600 | Vacuum Dewatered Flooring | 135d | 2026-04-09 | 2026-08-06 | 4638SS+56.25d | must start on 2026-04-09 | GC1 | 8811844 |
| 4642 | 37100.37400.37600.84100.104000 | **Basement and Podium services** | 579.38d | 2026-01-28 | 2027-08-10 |  | start no earlier than 2026-01-28 | GC1 | 8808204 |
| 4643 | 37100.37400.37600.84100.104000.236700 | Waterproofing | 236.25d | 2026-01-28 | 2026-08-25 | 4632 |  | GC1 | 8811854 |
| 4644 | 37100.37400.37600.84100.104000.236800 | Plumbing | 236.25d | 2026-04-22 | 2027-01-01 | 4638SS+16.88d |  | GC1 | 8811864 |
| 4645 | 37100.37400.37600.84100.104000.236900 | Fire fighting | 270d | 2026-04-07 | 2027-01-16 | 4638SS |  | GC1 | 8811874 |
| 4646 | 37100.37400.37600.84100.104000.237000 | Ventilation | 202.5d | 2026-05-07 | 2026-12-17 | 4638SS+33.75d |  | GC1 | 8811884 |
| 4647 | 37100.37400.37600.84100.104000.237100 | Electrification | 281.25d | 2026-05-07 | 2027-02-25 | 4645SS+33.75d |  | GC1 | 8811894 |
| 4648 | 37100.37400.37600.84100.104000.237200 | Security installations | 101.25d | 2027-02-26 | 2027-05-26 | 4647 |  | GC1 | 8811904 |
| 4649 | 37100.37400.37600.84100.104000.237300 | Stack parking (no of car parks) | 135d | 2027-04-12 | 2027-08-09 | 4647FS+50.62d |  | GC1 | 8811914 |
| 4650 | 37100.37400.37600.84100.104000.237400 | Completion of NTA | 1.12d | 2027-08-10 | 2027-08-10 | 4639, 4643, 4644, 4646, 4648, 4649 |  | GC1 | 8811924 |

| ID | WBS | Task | Duration | Start | Finish | Predecessors | Complete | Constraint | Calendar | Unique_Task_ID |
| --- | --- | --- | --- | --- | --- | --- | --- | --- | --- | --- |
| 4651 | 37100.37400.37600.124500 | **Club House** | 25.88d | 2027-02-01 | 2027-02-24 |  |  | start no earlier than 2027-02-01 | GC1 | 8808354 |
| 4652 | 37100.37400.37600.124500.219700 | Structure Work | 7.88d | 2027-02-01 | 2027-02-08 | 4616, 221FF |  |  | GC1 | 8811154 |
| 4653 | 37100.37400.37600.124500.219800 | Finishing Work | 2.25d | 2027-02-08 | 2027-02-10 | 4652 |  |  | GC1 | 8811164 |
| 4654 | 37100.37400.37600.124500.219900 | Mep Work | 6.75d | 2027-02-08 | 2027-02-14 | 4652 |  |  | GC1 | 8811174 |
| 4655 | 37100.37400.37600.124500.220000 | Furnitures | 1.12d | 2027-02-14 | 2027-02-15 | 4653, 4654 |  |  | GC1 | 8811184 |
| 4656 | 37100.37400.37600.124500.220100 | Gym equipments | 10.12d | 2027-02-15 | 2027-02-24 | 4653, 4655 |  |  | GC1 | 8811194 |
| 4657 | 37100.37400.193300 | **Fire NOC** | 2.25d | 2027-08-11 | 2027-08-12 |  |  | start no earlier than 2027-08-11 | GC1 | 8810814 |
| 4658 | 37100.37400.193300.215200 | Fire NOC | 2.25d | 2027-08-11 | 2027-08-12 | 4596FF, 4656, 4650, 4640, 4641 |  |  | GC1 | 8810934 |
| 4659 | 37100.37400.193400 | **OC of Whole Project** | 297.88d | 2027-08-13 | 2028-06-17 |  |  | start no earlier than 2027-08-13 | GC1 | 8810804 |
| 4660 | 37100.37400.193400.215300 | OC of Plot B all 5 Towers | 1.12d | 2027-08-13 | 2027-08-14 | 4658FS+0.25d |  |  | GC1 | 8810944 |
| 4661 | 37100.37400.193400.1339100 | Possession | 13.5d | 2028-06-06 | 2028-06-17 |  |  | start no earlier than 2028-06-06 | GC1 | 9323584 |
| 4662 | 37100.37400.209100 | Escalation | 11.25d | 2025-07-01 | 2025-07-10 |  |  | start no earlier than 2025-07-01 | GC1 | 9446004 |
| 4663 | 37100.37400.197600 | Additional Pile | 146.62d | 2024-12-20 | 2025-08-06 |  | 71% | start no earlier than 2024-12-20 | GC1 | 9446014 |
| 4664 | 37100.37400.197500 | Solider Piling | 282.31d | 2024-12-05 | 2025-08-29 |  | 40% | start no earlier than 2024-12-05 | GC1 | 9446024 |
| 4665 | 37100.37400.1339800 | Solider Piling | 1d | 2025-07-01 | 2025-07-01 |  |  | start no earlier than 2025-07-01 | Indian Calendar | 9446025 |
| 4666 | 37100.37400.197400 | MS Bucket | 275.44d | 2024-11-04 | 2025-09-12 | 4664SS-34.69d | 57% |  | GC1 | 9446034 |
| 4668 | 37100.40100 | **Milestones** | 1101d | 2025-04-17 | 2028-10-21 |  |  | start no earlier than 2025-04-17 | Indian Calendar | 9446035 |
| 4669 | 37100.40100.209200 | On Completion of Tower Raft for Tower 1 | 6d | 2025-04-21 | 2025-04-26 | 3685FF |  |  | Indian Calendar | 9837106 |
| 4670 | 37100.40100.209300 | On Completion of Tower Raft for Tower 2 | 1d | 2025-05-03 | 2025-05-05 | 2768FF |  |  | Indian Calendar | 9837116 |
| 4671 | 37100.40100.209400 | On Completion of Tower Raft for Tower 3 | 9d | 2025-04-17 | 2025-04-26 | 1851FF |  |  | Indian Calendar | 9837126 |
| 4672 | 37100.40100.209500 | On Completion of Tower Raft for Tower 4 | 7d | 2025-04-24 | 2025-05-01 | 934FF |  |  | Indian Calendar | 9837136 |
| 4673 | 37100.40100.209600 | On Completion of Tower Raft for Tower 5 | 2d | 2025-05-24 | 2025-05-27 | 17FF |  |  | Indian Calendar | 9837146 |
| 4674 | 37100.40100.209700 | On Completion of Ground Floor for Tower 1 | 6d | 2025-06-09 | 2025-06-14 | 3693FF |  |  | Indian Calendar | 9837156 |
| 4675 | 37100.40100.209800 | On Completion of Ground Floor for Tower 2 | 1d | 2025-06-23 | 2025-06-24 | 2776FF |  |  | Indian Calendar | 9837166 |
| 4676 | 37100.40100.209900 | On Completion of Ground Floor for Tower 3 | 9d | 2025-06-05 | 2025-06-14 | 1859FF |  |  | Indian Calendar | 9837176 |
| 4677 | 37100.40100.210000 | On Completion of Ground Floor for Tower 4 | 7d | 2025-06-13 | 2025-06-20 | 942FF |  |  | Indian Calendar | 9837186 |
| 4678 | 37100.40100.210100 | On Completion of Ground Floor for Tower 5 | 2d | 2025-07-14 | 2025-07-16 | 25FF |  |  | Indian Calendar | 9837196 |
| 4679 | 37100.40100.210200 | On Completion of 10th Floor Slab for Tower 1 | 6d | 2025-12-23 | 2025-12-29 | 3754FF |  |  | Indian Calendar | 9837206 |
| 4680 | 37100.40100.210300 | On Completion of 10th Floor Slab for Tower 2 | 1d | 2026-01-06 | 2026-01-07 | 2837FF |  |  | Indian Calendar | 9837216 |
| 4681 | 37100.40100.210400 | On Completion of 10th Floor Slab for Tower 3 | 9d | 2025-12-19 | 2025-12-29 | 1920FF |  |  | Indian Calendar | 9837226 |
| 4682 | 37100.40100.210500 | On Completion of 10th Floor Slab for Tower 4 | 7d | 2025-12-27 | 2026-01-03 | 1003FF |  |  | Indian Calendar | 9837236 |
| 4683 | 37100.40100.210600 | On Completion of 10th Floor Slab for Tower 5 | 2d | 2026-01-27 | 2026-01-29 | 86FF |  |  | Indian Calendar | 9837246 |
| 4684 | 37100.40100.210700 | On Completion of 15th Floor slab for Tower 1 | 6d | 2026-02-06 | 2026-02-12 | 3779FF |  |  | Indian Calendar | 9837256 |
| 4685 | 37100.40100.210800 | On Completion of 15th Floor slab for Tower 2 | 1d | 2026-02-20 | 2026-02-21 | 2862FF |  |  | Indian Calendar | 9837266 |
| 4686 | 37100.40100.210900 | On Completion of 15th Floor slab for Tower 3 | 9d | 2026-02-03 | 2026-02-12 | 1945FF |  |  | Indian Calendar | 9837276 |
| 4687 | 37100.40100.211000 | On Completion of 15th Floor slab for Tower 4 | 7d | 2026-02-10 | 2026-02-17 | 1028FF |  |  | Indian Calendar | 9837286 |
| 4688 | 37100.40100.211100 | On Completion of 15th Floor slab for Tower 5 | 2d | 2026-03-13 | 2026-03-14 | 111FF |  |  | Indian Calendar | 9837296 |
| 4689 | 37100.40100.211200 | On Completion of 20th Floor slab for Tower 1 | 6d | 2026-03-24 | 2026-03-30 | 3804FF |  |  | Indian Calendar | 9837306 |
| 4690 | 37100.40100.211300 | On Completion of 20th Floor slab for Tower 2 | 1d | 2026-04-07 | 2026-04-08 | 2887FF |  |  | Indian Calendar | 9837316 |
| 4691 | 37100.40100.211400 | On Completion of 20th Floor slab for Tower 3 | 9d | 2026-03-20 | 2026-03-30 | 1970FF |  |  | Indian Calendar | 9837326 |
| 4692 | 37100.40100.211500 | On Completion of 20th Floor slab for Tower 4 | 7d | 2026-03-28 | 2026-04-04 | 1053FF |  |  | Indian Calendar | 9837336 |
| 4693 | 37100.40100.211600 | On Completion of 20th Floor slab for Tower 5 | 2d | 2026-05-04 | 2026-05-06 | 136FF |  |  | Indian Calendar | 9837346 |
| 4694 | 37100.40100.211700 | On Completion of 25th Floor Slab for Tower 1 | 6d | 2026-05-19 | 2026-05-25 | 3829FF |  |  | Indian Calendar | 9837356 |
| 4695 | 37100.40100.211800 | On Completion of 25th Floor Slab for Tower 2 | 1d | 2026-06-02 | 2026-06-03 | 2912FF |  |  | Indian Calendar | 9837366 |
| 4696 | 37100.40100.211900 | On Completion of 25th Floor Slab for Tower 3 | 9d | 2026-05-15 | 2026-05-25 | 1995FF |  |  | Indian Calendar | 9837376 |
| 4697 | 37100.40100.212000 | On Completion of 25th Floor Slab for Tower 4 | 7d | 2026-05-23 | 2026-05-30 | 1078FF |  |  | Indian Calendar | 9837386 |
| 4698 | 37100.40100.212100 | On Completion of 25th Floor Slab for Tower 5 | 2d | 2026-07-02 | 2026-07-04 | 161FF |  |  | Indian Calendar | 9837396 |
| 4699 | 37100.40100.212200 | On Completion of Terrace Slab for Tower 1 | 6d | 2026-09-23 | 2026-09-29 | 3884FF |  |  | Indian Calendar | 9837406 |
| 4700 | 37100.40100.212300 | On Completion of Terrace Slab for Tower 2 | 1d | 2026-10-07 | 2026-10-08 | 2967FF |  |  | Indian Calendar | 9837416 |
| 4701 | 37100.40100.212400 | On Completion of Terrace Slab for Tower 3 | 12d | 2026-09-01 | 2026-09-14 | 2045FF |  |  | Indian Calendar | 9837426 |
| 4702 | 37100.40100.212500 | On Completion of Terrace Slab for Tower 4 | 9d | 2026-09-24 | 2026-10-03 | 1133FF |  |  | Indian Calendar | 9837436 |
| 4703 | 37100.40100.212600 | On Completion of Terrace Slab for Tower 5 | 2d | 2026-12-25 | 2026-12-28 | 216FF |  |  | Indian Calendar | 9837446 |
| 4704 | 37100.40100.212700 | On Completion of Unit Internal plaster for Tower 1 | 9d | 2027-02-18 | 2027-02-27 | 4479FF |  |  | Indian Calendar | 9837456 |
| 4705 | 37100.40100.212800 | On Completion of Unit Internal plaster for Tower 2 | 1d | 2027-03-10 | 2027-03-11 | 3562FF |  |  | Indian Calendar | 9837466 |
| 4706 | 37100.40100.212900 | On Completion of Unit Internal plaster for Tower 3 | 9d | 2027-02-22 | 2027-03-03 | 2645FF |  |  | Indian Calendar | 9837476 |
| 4707 | 37100.40100.213000 | On Completion of Unit Internal plaster for Tower 4 | 7d | 2027-03-25 | 2027-04-01 | 1728FF |  |  | Indian Calendar | 9837486 |
| 4708 | 37100.40100.213100 | On Completion of Unit Internal plaster for Tower 5 | 2d | 2027-04-07 | 2027-04-08 | 811FF |  |  | Indian Calendar | 9837496 |
| 4709 | 37100.40100.213200 | On Completion of unit Flooring for Tower 1 | 6d | 2027-05-24 | 2027-05-29 | 4483FF |  |  | Indian Calendar | 9837506 |
| 4710 | 37100.40100.213300 | On Completion of unit Flooring for Tower 2 | 1d | 2027-06-05 | 2027-06-05 | 3566FF |  |  | Indian Calendar | 9837516 |
| 4711 | 37100.40100.213400 | On Completion of unit Flooring for Tower 3 | 9d | 2027-05-21 | 2027-05-31 | 2649FF |  |  | Indian Calendar | 9837526 |
| 4712 | 37100.40100.213500 | On Completion of unit Flooring for Tower 4 | 7d | 2027-05-29 | 2027-06-05 | 1732FF |  |  | Indian Calendar | 9837536 |
| 4713 | 37100.40100.213600 | On Completion of unit Flooring for Tower 5 | 2d | 2027-06-14 | 2027-06-15 | 815FF |  |  | Indian Calendar | 9837546 |
| 4714 | 37100.40100.213700 | On Application of Occupancy Certificate for Tower 1 | 6d | 2027-12-18 | 2027-12-24 | 4586FF |  |  | Indian Calendar | 9837556 |
| 4715 | 37100.40100.213800 | On Application of Occupancy Certificate for Tower 2 | 1d | 2028-04-01 | 2028-04-01 | 3669FF |  |  | Indian Calendar | 9837566 |
| 4716 | 37100.40100.213900 | On Application of Occupancy Certificate for Tower 3 | 8d | 2027-10-22 | 2027-10-30 | 2752FF |  |  | Indian Calendar | 9837576 |
| 4717 | 37100.40100.214000 | On Application of Occupancy Certificate for Tower 4 | 7d | 2028-01-11 | 2028-01-18 | 1835FF |  |  | Indian Calendar | 9837586 |
| 4718 | 37100.40100.214100 | On Application of Occupancy Certificate for Tower 5 | 2d | 2028-02-22 | 2028-02-24 | 918FF |  |  | Indian Calendar | 9837596 |
| 4719 | 37100.40100.214200 | On Offer of Possession for Tower 1 | 6d | 2028-08-10 | 2028-08-16 | 4588FF |  |  | Indian Calendar | 9837606 |
| 4720 | 37100.40100.214300 | On Offer of Possession for Tower 2 | 1d | 2028-01-25 | 2028-01-25 | 3671FF |  |  | Indian Calendar | 9837616 |
| 4721 | 37100.40100.214400 | On Offer of Possession for Tower 3 | 8d | 2028-08-03 | 2028-08-11 | 2754FF |  |  | Indian Calendar | 9837626 |

| ID | WBS | Task | Duration | Start | Finish | Predecessors | Calendar | Unique_Task_ID |
| --- | --- | --- | --- | --- | --- | --- | --- | --- |
| 4722 | 37100.40100.214500 | On Offer of Possession for Tower 4 | 7d | 2028-09-08 | 2028-09-15 | 1837FF | Indian Calendar | 9837636 |
| 4723 | 37100.40100.214600 | On Offer of Possession for Tower 5 | 2d | 2028-10-20 | 2028-10-21 | 920FF | Indian Calendar | 9837646 |
