Schedule from MS Project XML, 2025-01-02 to 2028-10-05.

## Calendars

- Standard: Mon-Fri 08:00-12:00, 13:00-17:00; Sat-Sun off. Exceptions (off unless hours are given): 2024-12-24 to 2025-01-05, 2025-04-18 to 2025-04-21, 2025-05-05, 2025-05-26, 2025-08-25, 2025-12-22 to 2026-01-04, 2026-03-27 to 2026-03-30, 2026-05-04, 2026-05-23 to 2026-05-25, 2026-08-29 to 2026-08-31, 2026-12-21 to 2027-01-03, 2027-04-16 to 2027-04-19, 2027-05-01 to 2027-05-03, 2027-05-29 to 2027-05-31, 2027-08-30, 2027-12-25 to 2028-01-09, 2028-03-31 to 2028-04-03, 2028-04-29 to 2028-05-01, 2028-05-27 to 2028-05-29, 2028-08-26 to 2028-08-28.
- Indian Calendar: Mon-Sat 08:00-12:00, 13:00-17:00; Sun off.
- Sector 43: Mon-Sun 08:00-12:00, 13:00-17:00. Exceptions (off unless hours are given): 2025-11-01 to 2025-12-15, 2026-11-01 to 2026-12-15, 2027-11-01 to 2027-12-15.
- Yashwantpur Finshing: Mon-Fri 08:00-12:00, 13:00-17:00; Sat-Sun off.

## Resources

| Resource |
| --- |
| Zenith |
| Project Costs |
| Aristocrat |
| Project Costs |

## Schedule

| ID | WBS | Task | Type | Duration | Start | Finish | Predecessors | Constraint | Calendar | Unique_Task_ID |
| --- | --- | --- | --- | --- | --- | --- | --- | --- | --- | --- |
| 1 | 37300 | **Miraya / Sec 43** |  | 981d | 2025-01-02 | 2028-10-05 |  | start no earlier than 2025-01-02 | Yashwantpur Finshing | 9697366 |
| 2 | 37300.37600 | **Godrej Miraya** |  | 1238d | 2025-01-02 | 2028-10-05 |  | start no earlier than 2025-01-02 | Sector 43 | 9697376 |
| 3 | 37300.37600.45900 | **Project Snapshot** |  | 1149d | 2025-04-01 | 2028-10-05 |  | start no earlier than 2025-04-01 | Sector 43 | 9698906 |
| 4 | 37300.37600.45900.222800 | **Project data** |  | 1149d | 2025-04-01 | 2028-10-05 |  | start no earlier than 2025-04-01 | Sector 43 | 9700456 |
| 5 | 37300.37600.45900.222800.893800 | Start of project | milestone | 0d | 2025-04-01 | 2025-04-01 |  | start no earlier than 2025-04-01 | Sector 43 | 9706466 |
| 6 | 37300.37600.45900.222800.893700 | Completion of project | milestone | 0d | 2028-10-05 | 2028-10-05 | 1955, 1087, 2847 |  | Sector 43 | 9706456 |
| 7 | 37300.37600.45900.47700 | **Intermediate milestones** |  | 892d | 2025-05-12 | 2028-03-03 |  | start no earlier than 2025-05-12 | Sector 43 | 9699116 |
| 8 | 37300.37600.45900.47700.893600 | Removal of soldier piles | milestone | 0d | 2026-03-20 | 2026-03-20 | 106, 107, 139 |  | Sector 43 | 9706446 |
| 9 | 37300.37600.45900.47700.287600 | Excavation Completion of Tower A |  | 1d | 2025-05-12 | 2025-05-12 | 67FS-11d |  | Indian Calendar | 9700547 |
| 10 | 37300.37600.45900.47700.287700 | Excavation Completion of Tower B |  | 1d | 2025-05-12 | 2025-05-12 | 66FS-11d |  | Indian Calendar | 9700548 |
| 11 | 37300.37600.45900.47700.287800 | Excavation Completion of Tower C |  | 1d | 2025-05-12 | 2025-05-12 | 66FS-11d |  | Indian Calendar | 9700549 |
| 12 | 37300.37600.45900.47700.287900 | Ground Floor Completion of Tower A |  | 1d | 2025-08-05 | 2025-08-05 | 77FS+31d |  | Indian Calendar | 9700550 |
| 13 | 37300.37600.45900.47700.288000 | Ground Floor Completion of Tower B |  | 1d | 2025-08-05 | 2025-08-05 | 77FS+31d |  | Indian Calendar | 9700551 |
| 14 | 37300.37600.45900.47700.288100 | Ground Floor Completion of Tower C |  | 1d | 2025-08-05 | 2025-08-05 | 77FS+31d |  | Indian Calendar | 9700552 |
| 15 | 37300.37600.45900.47700.288200 | Completion of 3rd Slab of Tower B |  | 1d | 2026-01-27 | 2026-01-27 | 1147FS+85d |  | Indian Calendar | 9700562 |
| 16 | 37300.37600.45900.47700.288300 | Completion of 3rd Slab of Tower C |  | 1d | 2025-10-02 | 2025-10-02 | 2015FS-15d |  | Indian Calendar | 9700572 |
| 17 | 37300.37600.45900.47700.288400 | Completion of 5th Slab of Tower A |  | 1d | 2025-09-17 | 2025-09-17 | 82FS+8d |  | Indian Calendar | 9700553 |
| 18 | 37300.37600.45900.47700.288500 | Completion of 5th Slab of Tower B |  | 1d | 2025-09-17 | 2025-09-17 | 82FS+8d |  | Indian Calendar | 9700554 |
| 19 | 37300.37600.45900.47700.288600 | Completion of 5th Slab of Tower C |  | 1d | 2025-09-17 | 2025-09-17 | 82FS+8d |  | Indian Calendar | 9700555 |
| 20 | 37300.37600.45900.47700.288700 | Completion of 10th Slab of Tower A |  | 1d | 2025-08-29 | 2025-08-29 | 314FS-141d |  | Indian Calendar | 9700565 |
| 21 | 37300.37600.45900.47700.288800 | Completion of 10th Slab of Tower B |  | 1d | 2026-04-16 | 2026-04-16 | 1157FS+94d |  | Indian Calendar | 9700575 |
| 22 | 37300.37600.45900.47700.288900 | Completion of 10th Slab of Tower C |  | 1d | 2026-02-03 | 2026-02-03 | 2025FS+32d |  | Indian Calendar | 9700585 |
| 23 | 37300.37600.45900.47700.289000 | Completion of 15th Slab of Tower B |  | 1d | 2026-05-21 | 2026-05-21 | 1207FS+47d |  | Indian Calendar | 10032289 |
| 24 | 37300.37600.45900.47700.289100 | Completion of 15th Slab of Tower C |  | 1d | 2026-03-10 | 2026-03-10 | 2075FS-15d |  | Indian Calendar | 10032299 |
| 25 | 37300.37600.45900.47700.289200 | Completion of 20th Slab of Tower A |  | 1d | 2026-01-12 | 2026-01-12 | 364FS-103d |  | Indian Calendar | 9700595 |
| 26 | 37300.37600.45900.47700.289300 | Completion of 20th Slab of Tower B |  | 1d | 2026-07-06 | 2026-07-06 | 1232FS+47d |  | Indian Calendar | 9700605 |
| 27 | 37300.37600.45900.47700.289400 | Completion of 20th Slab of Tower C |  | 1d | 2026-04-25 | 2026-04-25 | 2100FS-14d |  | Indian Calendar | 9700615 |
| 28 | 37300.37600.45900.47700.289500 | Completion of Terrace Slab of Tower A |  | 1d | 2026-05-12 | 2026-05-12 | 424FS-102d |  | Indian Calendar | 9700625 |
| 29 | 37300.37600.45900.47700.289600 | Completion of Terrace Slab of Tower B |  | 1d | 2026-12-18 | 2026-12-18 | 1292FS+87d |  | Indian Calendar | 9700635 |
| 30 | 37300.37600.45900.47700.289700 | Completion of Terrace Slab of Tower C |  | 1d | 2026-08-31 | 2026-08-31 | 2165FS-16d |  | Indian Calendar | 9700645 |
| 31 | 37300.37600.45900.47700.289800 | Completion of Internal Plaster Tower A |  | 1d | 2026-07-21 | 2026-07-21 | 982FS-140d |  | Indian Calendar | 9700655 |
| 32 | 37300.37600.45900.47700.289900 | Completion of Internal Plaster Tower B |  | 1d | 2027-02-27 | 2027-02-27 | 1850FS+49d |  | Indian Calendar | 9700665 |
| 33 | 37300.37600.45900.47700.290000 | Completion of Internal Plaster Tower C |  | 1d | 2026-12-25 | 2026-12-25 | 2741FS-14d |  | Indian Calendar | 9700675 |
| 34 | 37300.37600.45900.47700.290100 | Completion of Unit Flooring Tower A |  | 1d | 2026-09-24 | 2026-09-24 | 986FS-140d |  | Indian Calendar | 9700685 |
| 35 | 37300.37600.45900.47700.290200 | Completion of Unit Flooring Tower B |  | 1d | 2027-05-03 | 2027-05-03 | 1854FS+48d |  | Indian Calendar | 9700695 |
| 36 | 37300.37600.45900.47700.290300 | Completion of Unit Flooring Tower C |  | 1d | 2027-03-01 | 2027-03-01 | 2745FS-14d |  | Indian Calendar | 9700705 |
| 37 | 37300.37600.45900.47700.290400 | OC Application of Tower A |  | 1d | 2027-04-29 | 2027-04-29 | 1079FS-116d |  | Sector 43 | 9700546 |
| 38 | 37300.37600.45900.47700.290500 | OC Application of Tower B |  | 1d | 2027-10-20 | 2027-10-20 | 1947FS+59d |  | Sector 43 | 9700556 |
| 39 | 37300.37600.45900.47700.290600 | OC Application of Tower C |  | 1d | 2027-08-16 | 2027-08-16 | 2839FS-17d |  | Sector 43 | 9700566 |
| 40 | 37300.37600.45900.47700.290700 | On application of Possession Tower A |  | 1d | 2027-07-28 | 2027-07-28 | 1079FS-22d |  | Indian Calendar | 9700567 |
| 41 | 37300.37600.45900.47700.290800 | On application of Possession Tower B |  | 1d | 2028-03-03 | 2028-03-03 | 1947FS+166d |  | Indian Calendar | 9700568 |
| 42 | 37300.37600.45900.47700.290900 | On application of Possession Tower C |  | 1d | 2027-12-29 | 2027-12-29 | 2839FS+101d |  | Indian Calendar | 9700569 |
| 43 | 37300.37600.45900.47700.893500 | Completion of Landscape works | milestone | 0d | 2027-12-27 | 2027-12-27 | 212, 213, 214, 216, 217, 218 |  | Sector 43 | 9706436 |

| ID | WBS | Task | Duration | Start | Finish | Predecessors | Complete | Constraint | Calendar | Unique_Task_ID |
| --- | --- | --- | --- | --- | --- | --- | --- | --- | --- | --- |
| 46 | 37300.37600.121100 | **Soldier Piling & Excavation works** | 470d | 2025-01-02 | 2026-05-31 |  | 52% | start no earlier than 2025-01-02 | Sector 43 | 9698716 |
| 47 | 37300.37600.121100.125400 | **Phase 01 - Area excluding downramp for construction** | 142d | 2025-01-02 | 2025-05-23 |  | 58% | start no earlier than 2025-01-02 | Sector 43 | 9698816 |
| 48 | 37300.37600.121100.125400.215900 | **till 2m** | 88d | 2025-01-02 | 2025-03-30 |  | 100% | start no earlier than 2025-01-02 | Sector 43 | 9700436 |
| 49 | 37300.37600.121100.125400.215900.229100 | H beam pile driving - 15m | 30d | 2025-01-02 | 2025-02-27 | 5SS-28d | 100% | start no earlier than 2025-01-02 | Sector 43 | 9700816 |
| 50 | 37300.37600.121100.125400.215900.229000 | Excavation from NGL to 2m | 33d | 2025-01-08 | 2025-02-27 | 49FS-51d | 100% | start no earlier than 2025-01-08 | Sector 43 | 9700826 |
| 51 | 37300.37600.121100.125400.215900.228900 | Plank installation & anchoring till 2m | 31d | 2025-01-10 | 2025-03-30 | 50FS-53d | 100% | start no earlier than 2025-01-10 | Sector 43 | 9700836 |
| 52 | 37300.37600.121100.125400.217800 | **2 mts till 4 mts** | 60d | 2025-01-20 | 2025-03-20 |  | 100% | start no earlier than 2025-01-20 | Sector 43 | 9700466 |
| 53 | 37300.37600.121100.125400.217800.228800 | Excavation from 2m till 4m | 49d | 2025-01-31 | 2025-03-20 | 51FS-40d | 100% | start no earlier than 2025-01-31 | Sector 43 | 9700846 |
| 54 | 37300.37600.121100.125400.217800.228700 | Plank installation & anchoring - 2m till 4m | 58d | 2025-01-20 | 2025-03-18 | 53FS-50d | 100% | start no earlier than 2025-01-20 | Sector 43 | 9700856 |
| 55 | 37300.37600.121100.125400.217900 | **4 mts till 6 mts** | 46d | 2025-03-09 | 2025-04-23 |  | 15% | start no earlier than 2025-03-09 | Sector 43 | 9700476 |
| 56 | 37300.37600.121100.125400.217900.228600 | Excavation from 4m to 6m | 25d | 2025-03-09 | 2025-04-23 | 54FS-10d | 8% | start no earlier than 2025-03-09 | Sector 43 | 9700866 |
| 57 | 37300.37600.121100.125400.217900.228500 | Plank installation & anchoring - 4m till 6m | 20d | 2025-03-14 | 2025-04-18 | 56FS-41d | 25% |  | Sector 43 | 9700876 |
| 58 | 37300.37600.121100.125400.221300 | **6 mts till 8 mts** | 30d | 2025-04-09 | 2025-05-08 |  |  | start no earlier than 2025-04-09 | Sector 43 | 9700486 |
| 59 | 37300.37600.121100.125400.221300.385100 | Excavation from 6m to 8m | 30d | 2025-04-09 | 2025-05-08 | 57FS-10d |  |  | Sector 43 | 9700886 |
| 60 | 37300.37600.121100.125400.221300.385200 | Plank installation & anchoring - 6m till 8m | 20d | 2025-04-19 | 2025-05-08 | 59FS-20d |  |  | Sector 43 | 9700896 |
| 61 | 37300.37600.121100.125400.218000 | **8 mts till NTA footing bottom** | 23d | 2025-04-26 | 2025-05-18 |  |  | start no earlier than 2025-04-26 | Sector 43 | 9700426 |
| 62 | 37300.37600.121100.125400.218000.385300 | Excavation from 8m to footing PCC bottom | 20d | 2025-04-26 | 2025-05-15 | 60FS-13d |  |  | Sector 43 | 9700906 |
| 63 | 37300.37600.121100.125400.218000.385400 | Plank installation & anchoring from 8m to footing PCC bottom | 20d | 2025-04-26 | 2025-05-15 | 62FS-20d |  |  | Sector 43 | 9700916 |
| 64 | 37300.37600.121100.125400.218000.385500 | Surface dressing & compaction for grade slab area | 3d | 2025-05-16 | 2025-05-18 | 63 |  |  | Sector 43 | 9700926 |
| 65 | 37300.37600.121100.125400.221400 | **NTA footing bottom till Raft footing bottom** | 10d | 2025-05-14 | 2025-05-23 |  |  | start no earlier than 2025-05-14 | Sector 43 | 9700496 |
| 66 | 37300.37600.121100.125400.221400.385600 | TC & TB | 10d | 2025-05-14 | 2025-05-23 | 62FS-2d |  |  | Sector 43 | 9700936 |
| 67 | 37300.37600.121100.125400.221400.385700 | TA | 5d | 2025-05-19 | 2025-05-23 | 66FS-5d |  |  | Sector 43 | 9700946 |
| 68 | 37300.37600.121100.183500 | **Phase 02 - Area for downramp & CEC for construction** | 36d | 2026-04-26 | 2026-05-31 |  |  | start no earlier than 2026-04-26 | Sector 43 | 9699896 |
| 69 | 37300.37600.121100.183500.291000 | Demolition of CEC | 1d | 2026-04-26 | 2026-04-26 | 63FS+300d |  |  | Sector 43 | 9700576 |
| 70 | 37300.37600.121100.183500.291100 | 2 mts till 4 mts | 15d | 2026-04-27 | 2026-05-11 | 69 |  |  | Sector 43 | 9700586 |
| 71 | 37300.37600.121100.183500.291200 | 6 mts till 8 mts | 15d | 2026-05-12 | 2026-05-26 | 70 |  |  | Sector 43 | 9700596 |
| 72 | 37300.37600.121100.183500.291300 | 8 mts till NTA fotting bottom | 15d | 2026-05-17 | 2026-05-31 | 71FS-10d |  |  | Sector 43 | 9700606 |

| ID | WBS | Task | Duration | Start | Finish | Predecessors | Constraint | Calendar | Unique_Task_ID |
| --- | --- | --- | --- | --- | --- | --- | --- | --- | --- |
| 73 | 37300.37600.51900 | **NTA works** | 826d | 2025-05-10 | 2027-12-26 |  | start no earlier than 2025-05-10 | Sector 43 | 9697606 |
| 74 | 37300.37600.51900.52300 | **RCC works** | 392d | 2025-05-10 | 2026-07-20 |  | start no earlier than 2025-05-10 | Sector 43 | 9697616 |
| 75 | 37300.37600.51900.52300.64000 | **Phase 01 - Area excluding downramp for construction** | 392d | 2025-05-10 | 2026-07-20 |  | start no earlier than 2025-05-10 | Sector 43 | 9698596 |
| 76 | 37300.37600.51900.52300.64000.138100 | **Footings including grade slab** | 180d | 2025-05-10 | 2025-12-20 |  | start no earlier than 2025-05-10 | Sector 43 | 9699076 |
| 77 | 37300.37600.51900.52300.64000.138100.842000 | Excavation for isolated fottings of NTA | 50d | 2025-05-10 | 2025-06-28 | 225 |  | Sector 43 | 9701386 |
| 78 | 37300.37600.51900.52300.64000.138100.842100 | ATT | 60d | 2025-08-28 | 2025-10-26 | 77FS+60d |  | Sector 43 | 9701396 |
| 79 | 37300.37600.51900.52300.64000.138100.842200 | PCC | 10d | 2025-10-27 | 2025-12-20 | 78 |  | Sector 43 | 9701406 |
| 80 | 37300.37600.51900.52300.64000.138100.842300 | Reinforcement | 10d | 2025-10-07 | 2025-10-16 | 79FS-30d |  | Sector 43 | 9701416 |
| 81 | 37300.37600.51900.52300.64000.138100.842400 | Shuttering | 10d | 2025-09-17 | 2025-09-26 | 80FS-30d |  | Sector 43 | 9701426 |
| 82 | 37300.37600.51900.52300.64000.138100.842500 | Concreting - B2 stitch slab | 10d | 2025-08-28 | 2025-09-06 | 81FS-30d |  | Sector 43 | 9701436 |
| 83 | 37300.37600.51900.52300.64000.219300 | **Retaining walls - till 300mm below B1 slab bottom** | 57d | 2025-09-17 | 2025-12-27 |  | start no earlier than 2025-09-17 | Sector 43 | 9700406 |
| 84 | 37300.37600.51900.52300.64000.219300.842600 | Reinforcement | 50d | 2025-09-17 | 2025-12-20 | 80FS-30d |  | Sector 43 | 9701446 |
| 85 | 37300.37600.51900.52300.64000.219300.842700 | Shuttering | 55d | 2025-09-17 | 2025-12-25 | 84FS-50d |  | Sector 43 | 9701456 |
| 86 | 37300.37600.51900.52300.64000.219300.842800 | Concreting | 7d | 2025-12-21 | 2025-12-27 | 85FS-5d |  | Sector 43 | 9701466 |
| 87 | 37300.37600.51900.52300.64000.219400 | **B1 slab** | 75d | 2025-12-28 | 2026-03-12 |  | start no earlier than 2025-12-28 | Sector 43 | 9700396 |
| 88 | 37300.37600.51900.52300.64000.219400.842900 | Shuttering | 20d | 2025-12-28 | 2026-01-16 | 82, 86 |  | Sector 43 | 9701476 |
| 89 | 37300.37600.51900.52300.64000.219400.843000 | Reinforcement | 55d | 2026-01-12 | 2026-03-07 | 88FS-5d |  | Sector 43 | 9701486 |
| 90 | 37300.37600.51900.52300.64000.219400.843100 | Concreting | 5d | 2026-03-08 | 2026-03-12 | 89 |  | Sector 43 | 9701496 |
| 91 | 37300.37600.51900.52300.64000.219500 | **Retaining walls - B1 slab till 300mm below GF slab bottom** | 115d | 2025-10-29 | 2026-04-06 |  | start no earlier than 2025-10-29 | Sector 43 | 9700386 |
| 92 | 37300.37600.51900.52300.64000.219500.843200 | Reinforcement | 100d | 2025-10-29 | 2026-03-22 | 90FS-90d |  | Sector 43 | 9701506 |
| 93 | 37300.37600.51900.52300.64000.219500.843300 | Shuttering | 100d | 2025-12-23 | 2026-04-01 | 92FS-90d |  | Sector 43 | 9701516 |
| 94 | 37300.37600.51900.52300.64000.219500.843400 | Concreting | 95d | 2026-01-02 | 2026-04-06 | 93FS-90d |  | Sector 43 | 9701526 |
| 95 | 37300.37600.51900.52300.64000.219600 | **Ground floor slab (NTA top)** | 105d | 2026-04-07 | 2026-07-20 |  | start no earlier than 2026-04-07 | Sector 43 | 9700376 |
| 96 | 37300.37600.51900.52300.64000.219600.843500 | Shuttering | 50d | 2026-04-07 | 2026-05-26 | 94 |  | Sector 43 | 9701536 |
| 97 | 37300.37600.51900.52300.64000.219600.843600 | Reinforcement | 55d | 2026-05-22 | 2026-07-15 | 96FS-5d |  | Sector 43 | 9701546 |
| 98 | 37300.37600.51900.52300.64000.219600.843700 | Concreting | 5d | 2026-07-16 | 2026-07-20 | 97 |  | Sector 43 | 9701556 |

| ID | WBS | Task | Duration | Start | Finish | Predecessors | Constraint | Calendar | Unique_Task_ID |
| --- | --- | --- | --- | --- | --- | --- | --- | --- | --- |
| 99 | 37300.37600.51900.52300.64000.128100 | **W/P, Soldier piling de-stressing & backfilling** | 131d | 2025-09-05 | 2026-02-27 |  | start no earlier than 2025-09-05 | Sector 43 | 9698916 |
| 100 | 37300.37600.51900.52300.64000.128100.843800 | W/P of raft and retaining wall till 2nd level of anchoring | 35d | 2025-09-05 | 2025-10-09 | 82FS-2d |  | Sector 43 | 9701566 |
| 101 | 37300.37600.51900.52300.64000.128100.843900 | Backfilling till 2nd level of anchoring | 30d | 2025-09-29 | 2025-10-28 | 100FS-11d |  | Sector 43 | 9701576 |
| 102 | 37300.37600.51900.52300.64000.128100.844000 | De-stressing of 2nd level of anchoring of soldier piling | 20d | 2025-10-17 | 2025-12-20 | 101FS-12d |  | Sector 43 | 9701586 |
| 103 | 37300.37600.51900.52300.64000.128100.844100 | W/P of balance Retaining wall till B1 slab | 35d | 2025-10-27 | 2026-01-14 | 102FS-10d |  | Sector 43 | 9701596 |
| 104 | 37300.37600.51900.52300.64000.128100.844200 | Backfilling till B1 slab | 20d | 2026-01-03 | 2026-01-22 | 103FS-12d |  | Sector 43 | 9701606 |
| 105 | 37300.37600.51900.52300.64000.128100.844300 | De-stressing of top anchor of soldier piling | 20d | 2026-01-11 | 2026-01-30 | 104FS-12d |  | Sector 43 | 9701616 |
| 106 | 37300.37600.51900.52300.64000.128100.844400 | Removal of soldier piles | 15d | 2026-01-19 | 2026-02-02 | 105FS-12d |  | Sector 43 | 9701626 |
| 107 | 37300.37600.51900.52300.64000.128100.844500 | W/P of Retaining wall till NTA top | 35d | 2026-01-24 | 2026-02-27 | 106FS-10d |  | Sector 43 | 9701636 |
| 108 | 37300.37600.51900.52300.114800 | **Phase 02 -Area for downramp & CEC for construction** | 227d | 2025-06-21 | 2026-03-19 |  | start no earlier than 2025-06-21 | Sector 43 | 9698616 |
| 109 | 37300.37600.51900.52300.114800.138000 | **Footings including grade slab** | 43d | 2025-06-21 | 2025-08-02 |  | start no earlier than 2025-06-21 | Sector 43 | 9699066 |
| 110 | 37300.37600.51900.52300.114800.138000.844600 | Excavation for isolated fottings of NTA | 5d | 2025-06-21 | 2025-06-25 | 72FS-300d |  | Sector 43 | 9701646 |
| 111 | 37300.37600.51900.52300.114800.138000.844700 | ATT | 5d | 2025-06-26 | 2025-06-30 | 110 |  | Sector 43 | 9701656 |
| 112 | 37300.37600.51900.52300.114800.138000.844800 | PCC | 5d | 2025-07-01 | 2025-07-05 | 111 |  | Sector 43 | 9701666 |
| 113 | 37300.37600.51900.52300.114800.138000.844900 | Reinforcement | 15d | 2025-07-06 | 2025-07-20 | 112 |  | Sector 43 | 9701676 |
| 114 | 37300.37600.51900.52300.114800.138000.845000 | Shuttering | 10d | 2025-07-21 | 2025-07-30 | 113 |  | Sector 43 | 9701686 |
| 115 | 37300.37600.51900.52300.114800.138000.845100 | Concreting - B2 slab | 3d | 2025-07-31 | 2025-08-02 | 114 |  | Sector 43 | 9701696 |
| 116 | 37300.37600.51900.52300.114800.219700 | **Retaining walls - till 300mm below B1 slab bottom** | 50d | 2025-07-24 | 2025-09-11 |  | start no earlier than 2025-07-24 | Sector 43 | 9700366 |
| 117 | 37300.37600.51900.52300.114800.219700.845200 | Reinforcement | 25d | 2025-07-24 | 2025-08-17 | 115FS-10d |  | Sector 43 | 9701706 |
| 118 | 37300.37600.51900.52300.114800.219700.845300 | Shuttering | 25d | 2025-08-13 | 2025-09-06 | 117FS-5d |  | Sector 43 | 9701716 |
| 119 | 37300.37600.51900.52300.114800.219700.845400 | Concreting | 10d | 2025-09-02 | 2025-09-11 | 118FS-5d |  | Sector 43 | 9701726 |
| 120 | 37300.37600.51900.52300.114800.219800 | **B1 slab** | 50d | 2025-09-07 | 2025-10-26 |  | start no earlier than 2025-09-07 | Sector 43 | 9700356 |
| 121 | 37300.37600.51900.52300.114800.219800.845500 | Shuttering | 25d | 2025-09-07 | 2025-10-01 | 119FS-5d |  | Sector 43 | 9701736 |
| 122 | 37300.37600.51900.52300.114800.219800.845600 | Reinforcement | 25d | 2025-09-27 | 2025-10-21 | 121FS-5d |  | Sector 43 | 9701746 |
| 123 | 37300.37600.51900.52300.114800.219800.845700 | Concreting | 10d | 2025-10-17 | 2025-10-26 | 122FS-5d |  | Sector 43 | 9701756 |

| ID | WBS | Task | Duration | Start | Finish | Predecessors | Constraint | Calendar | Unique_Task_ID |
| --- | --- | --- | --- | --- | --- | --- | --- | --- | --- |
| 124 | 37300.37600.51900.52300.114800.219900 | **Retaining walls - till 300mm below GF slab bottom** | 176d | 2025-06-21 | 2026-01-27 |  | start no earlier than 2025-06-21 | Sector 43 | 9700346 |
| 125 | 37300.37600.51900.52300.114800.219900.845800 | Reinforcement | 170d | 2025-06-21 | 2026-01-21 | 123FS-128d |  | Sector 43 | 9701766 |
| 126 | 37300.37600.51900.52300.114800.219900.845900 | Shuttering | 150d | 2025-07-15 | 2026-01-25 | 125FS-146d |  | Sector 43 | 9701776 |
| 127 | 37300.37600.51900.52300.114800.219900.846000 | Concreting | 150d | 2025-07-17 | 2026-01-27 | 126FS-148d |  | Sector 43 | 9701786 |
| 128 | 37300.37600.51900.52300.114800.220000 | **GF slab (NTA top)** | 180d | 2025-07-18 | 2026-02-27 |  | start no earlier than 2025-07-18 | Sector 43 | 9700336 |
| 129 | 37300.37600.51900.52300.114800.220000.846100 | Shuttering | 150d | 2025-07-18 | 2026-01-28 | 127FS-149d |  | Sector 43 | 9701796 |
| 130 | 37300.37600.51900.52300.114800.220000.846200 | Reinforcement | 150d | 2025-08-02 | 2026-02-12 | 129FS-135d |  | Sector 43 | 9701806 |
| 131 | 37300.37600.51900.52300.114800.220000.846300 | Concreting | 150d | 2025-08-17 | 2026-02-27 | 130FS-135d |  | Sector 43 | 9701816 |
| 132 | 37300.37600.51900.52300.114800.130900 | **W/P, Soldier piling de-stressing & backfilling** | 199d | 2025-07-19 | 2026-03-19 |  | start no earlier than 2025-07-19 | Sector 43 | 9698996 |
| 133 | 37300.37600.51900.52300.114800.130900.846400 | W/P of retaining wall till 2nd level of anchoring | 130d | 2025-07-19 | 2026-01-09 | 123FS-100d |  | Sector 43 | 9701826 |
| 134 | 37300.37600.51900.52300.114800.130900.846500 | Backfilling till 2nd level of anchoring - B1 slab | 130d | 2025-07-24 | 2026-01-14 | 133FS-125d |  | Sector 43 | 9701836 |
| 135 | 37300.37600.51900.52300.114800.130900.846600 | De-stressing of 2nd level of anchoring of soldier piling | 28d | 2025-12-21 | 2026-01-17 | 134FS-25d |  | Sector 43 | 9701846 |
| 136 | 37300.37600.51900.52300.114800.130900.846700 | W/P of balance Retaining wall till NTA slab | 130d | 2025-09-16 | 2026-03-09 | 131FS-120d |  | Sector 43 | 9701856 |
| 137 | 37300.37600.51900.52300.114800.130900.846800 | De-stressing of top anchor of soldier piling - 2m from NTA top | 28d | 2026-02-13 | 2026-03-12 | 136FS-25d |  | Sector 43 | 9701866 |
| 138 | 37300.37600.51900.52300.114800.130900.846900 | Backfilling till NTA top slab | 130d | 2025-09-21 | 2026-03-14 | 136FS-125d |  | Sector 43 | 9701876 |
| 139 | 37300.37600.51900.52300.114800.130900.847000 | Removal of soldier piles | 20d | 2026-02-28 | 2026-03-19 | 135, 137FS-15d, 138FS-15d |  | Sector 43 | 9701886 |
| 140 | 37300.37600.51900.117200 | **Finishing works** | 368d | 2026-04-14 | 2027-05-31 |  | start no earlier than 2026-04-14 | Sector 43 | 9698636 |
| 141 | 37300.37600.51900.117200.120200 | **Phase 01 - Area excluding downramp for construction** | 355d | 2026-04-27 | 2027-05-31 |  | start no earlier than 2026-04-27 | Sector 43 | 9698706 |
| 142 | 37300.37600.51900.117200.120200.128200 | **Basement 2** | 225d | 2026-04-27 | 2027-01-21 |  | start no earlier than 2026-04-27 | Sector 43 | 9698926 |
| 143 | 37300.37600.51900.117200.120200.128200.847100 | Masonary work | 30d | 2026-04-27 | 2026-05-26 | 90FS+45d |  | Sector 43 | 9701896 |
| 144 | 37300.37600.51900.117200.120200.128200.847200 | Structural steel | 45d | 2026-04-27 | 2026-06-10 | 90FS+45d |  | Sector 43 | 9701906 |
| 145 | 37300.37600.51900.117200.120200.128200.847300 | Plaster | 45d | 2026-05-27 | 2026-07-10 | 143, 144FS-15d |  | Sector 43 | 9701916 |
| 146 | 37300.37600.51900.117200.120200.128200.847400 | White Wash | 30d | 2026-07-11 | 2026-08-09 | 145 |  | Sector 43 | 9701926 |
| 147 | 37300.37600.51900.117200.120200.128200.847500 | VDF | 90d | 2026-05-27 | 2026-08-24 | 145FS-45d |  | Sector 43 | 9701936 |
| 148 | 37300.37600.51900.117200.120200.128200.847600 | Drain & Sump (incl. gratings) | 90d | 2026-07-26 | 2026-10-23 | 147FS-30d |  | Sector 43 | 9701946 |
| 149 | 37300.37600.51900.117200.120200.128200.847700 | Car parking marking | 45d | 2026-10-24 | 2027-01-21 | 146FS-15d, 148 |  | Sector 43 | 9701956 |
| 150 | 37300.37600.51900.117200.120200.128200.847800 | Signages | 45d | 2026-07-31 | 2026-09-13 | 146FS-10d |  | Sector 43 | 9701966 |

| ID | WBS | Task | Duration | Start | Finish | Predecessors | Constraint | Calendar | Unique_Task_ID |
| --- | --- | --- | --- | --- | --- | --- | --- | --- | --- |
| 151 | 37300.37600.51900.117200.120200.128300 | **Basement 1** | 225d | 2026-09-04 | 2027-05-31 |  | start no earlier than 2026-09-04 | Sector 43 | 9698936 |
| 152 | 37300.37600.51900.117200.120200.128300.847900 | Masonary work | 30d | 2026-09-04 | 2026-10-03 | 98FS+45d |  | Sector 43 | 9701976 |
| 153 | 37300.37600.51900.117200.120200.128300.848000 | Structural steel | 45d | 2026-09-04 | 2026-10-18 | 98FS+45d |  | Sector 43 | 9701986 |
| 154 | 37300.37600.51900.117200.120200.128300.848100 | Plaster | 45d | 2026-10-04 | 2027-01-01 | 152, 153FS-15d |  | Sector 43 | 9701996 |
| 155 | 37300.37600.51900.117200.120200.128300.848200 | White Wash | 30d | 2027-01-02 | 2027-01-31 | 154 |  | Sector 43 | 9702006 |
| 156 | 37300.37600.51900.117200.120200.128300.848300 | VDF | 90d | 2026-10-04 | 2027-02-15 | 154FS-45d |  | Sector 43 | 9702016 |
| 157 | 37300.37600.51900.117200.120200.128300.848400 | Drain & Sump (incl. gratings) | 90d | 2027-01-17 | 2027-04-16 | 156FS-30d |  | Sector 43 | 9702026 |
| 158 | 37300.37600.51900.117200.120200.128300.848500 | Car parking marking | 45d | 2027-04-17 | 2027-05-31 | 155FS-15d, 157 |  | Sector 43 | 9702036 |
| 159 | 37300.37600.51900.117200.120200.128300.848600 | Signages | 45d | 2026-09-16 | 2026-10-30 | 204FS-10d |  | Sector 43 | 9702046 |
| 160 | 37300.37600.51900.117200.129400 | **Phase 02 - Area of downramp for construction** | 175d | 2026-04-14 | 2026-10-05 |  | start no earlier than 2026-04-14 | Sector 43 | 9698826 |
| 161 | 37300.37600.51900.117200.129400.385800 | Masonary work | 25d | 2026-04-14 | 2026-05-08 | 131FS+45d |  | Sector 43 | 9700956 |
| 162 | 37300.37600.51900.117200.129400.385900 | Structural steel | 25d | 2026-04-14 | 2026-05-08 | 131FS+45d |  | Sector 43 | 9700966 |
| 163 | 37300.37600.51900.117200.129400.386000 | Plaster | 45d | 2026-05-09 | 2026-06-22 | 161, 162 |  | Sector 43 | 9700976 |
| 164 | 37300.37600.51900.117200.129400.386100 | White Wash | 20d | 2026-06-23 | 2026-07-12 | 163 |  | Sector 43 | 9700986 |
| 165 | 37300.37600.51900.117200.129400.386200 | VDF | 60d | 2026-05-09 | 2026-07-07 | 163FS-45d |  | Sector 43 | 9700996 |
| 166 | 37300.37600.51900.117200.129400.386300 | Drain & Sump (incl. gratings) | 60d | 2026-06-08 | 2026-08-06 | 165FS-30d |  | Sector 43 | 9701006 |
| 167 | 37300.37600.51900.117200.129400.386400 | Car parking marking | 20d | 2026-07-08 | 2026-07-27 | 164FS-15d, 166FS-30d |  | Sector 43 | 9701016 |
| 168 | 37300.37600.51900.117200.129400.386500 | Signages | 20d | 2026-09-16 | 2026-10-05 | 204FS-10d |  | Sector 43 | 9701026 |
| 169 | 37300.37600.51900.114500 | **Tanks, DG & Trafo yard works** | 277d | 2026-10-01 | 2027-08-18 |  | start no earlier than 2026-10-01 | Sector 43 | 9698606 |
| 170 | 37300.37600.51900.114500.164600 | **STP WTP RWH RW tanks & plant rooms works** | 277d | 2026-10-01 | 2027-08-18 |  | start no earlier than 2026-10-01 | Sector 43 | 9699156 |
| 171 | 37300.37600.51900.114500.164600.386600 | STP Works incl pumping station | 150d | 2026-12-30 | 2027-05-28 | 2816 |  | Sector 43 | 9701036 |
| 172 | 37300.37600.51900.114500.164600.386700 | WTP works incl Plant room | 150d | 2026-12-30 | 2027-05-28 | 2816 |  | Sector 43 | 9701046 |
| 173 | 37300.37600.51900.114500.164600.386800 | Raw water tank works | 150d | 2026-12-30 | 2027-05-28 | 2816 |  | Sector 43 | 9701056 |
| 174 | 37300.37600.51900.114500.164600.386900 | Fire fighting tank works incl Plant room | 150d | 2027-03-22 | 2027-08-18 | 2826FS-60d |  | Sector 43 | 9701066 |
| 175 | 37300.37600.51900.114500.164600.387000 | Rain water harvesting works incl Plant room | 150d | 2026-10-01 | 2027-04-13 | 2204 |  | Sector 43 | 9701076 |

| ID | WBS | Task | Duration | Start | Finish | Predecessors | Constraint | Calendar | Unique_Task_ID |
| --- | --- | --- | --- | --- | --- | --- | --- | --- | --- |
| 176 | 37300.37600.51900.114500.120300 | **DG & Trafo yard works** | 210d | 2026-10-01 | 2027-06-12 |  | start no earlier than 2026-10-01 | Sector 43 | 9698696 |
| 177 | 37300.37600.51900.114500.120300.128400 | **DG room (double height at Basement 2)** | 210d | 2026-10-01 | 2027-06-12 |  | start no earlier than 2026-10-01 | Sector 43 | 9698956 |
| 178 | 37300.37600.51900.114500.120300.128400.140500 | **DG installation works** | 210d | 2026-10-01 | 2027-06-12 |  | start no earlier than 2026-10-01 | Sector 43 | 9699096 |
| 179 | 37300.37600.51900.114500.120300.128400.140500.1083600 | DG foundation works | 15d | 2026-10-01 | 2026-10-15 | 2204 |  | Sector 43 | 9705346 |
| 180 | 37300.37600.51900.114500.120300.128400.140500.1083700 | DG room epoxy flooring | 10d | 2026-10-16 | 2026-10-25 | 179 |  | Sector 43 | 9705356 |
| 181 | 37300.37600.51900.114500.120300.128400.140500.1083800 | DG room acoustics | 90d | 2026-10-16 | 2027-02-27 | 179 |  | Sector 43 | 9705366 |
| 182 | 37300.37600.51900.114500.120300.128400.140500.1083900 | DG installation including day tank & motor | 30d | 2026-10-26 | 2027-01-08 | 180 |  | Sector 43 | 9705376 |
| 183 | 37300.37600.51900.114500.120300.128400.140500.1084000 | DG stack works including frame fabrication + frame erection + pipe erection + insulation wrapping + cladding (to be taken 1.5m above the highest point of the buidling) | 210d | 2026-10-01 | 2027-06-12 | 2204 |  | Sector 43 | 9705386 |
| 184 | 37300.37600.51900.114500.120300.128400.140500.1084100 | DG earthing | 30d | 2027-01-02 | 2027-01-31 | 182FS-7d |  | Sector 43 | 9705396 |
| 185 | 37300.37600.51900.114500.120300.128400.199200 | **DG T&C** | 137d | 2027-01-14 | 2027-05-30 |  | start no earlier than 2027-01-14 | Sector 43 | 9699736 |
| 186 | 37300.37600.51900.114500.120300.128400.199200.1084200 | DG stack joint radiography | 100d | 2027-01-14 | 2027-04-23 | 183FS-150d |  | Sector 43 | 9705406 |
| 187 | 37300.37600.51900.114500.120300.128400.199200.1084300 | DG sync panel installation | 30d | 2027-03-15 | 2027-04-13 | 181, 182, 183FS-90d, 184 |  | Sector 43 | 9705416 |
| 188 | 37300.37600.51900.114500.120300.128400.199200.1084400 | DG cranking (DG standalone testing) | 7d | 2027-04-24 | 2027-04-30 | 186, 187 |  | Sector 43 | 9705426 |
| 189 | 37300.37600.51900.114500.120300.128400.199200.1084500 | DG intergrated T&C with full load setting | 30d | 2027-05-01 | 2027-05-30 | 188 |  | Sector 43 | 9705436 |
| 190 | 37300.37600.51900.114500.120300.128500 | **Transformer room & VCB (Basement 1)** | 182d | 2026-10-01 | 2027-05-15 |  | start no earlier than 2026-10-01 | Sector 43 | 9698966 |
| 191 | 37300.37600.51900.114500.120300.128500.140600 | **Transformer & HT panel installation works** | 175d | 2026-10-01 | 2027-05-08 |  | start no earlier than 2026-10-01 | Sector 43 | 9699086 |
| 192 | 37300.37600.51900.114500.120300.128500.140600.1084600 | Transformer foundation works | 15d | 2026-10-01 | 2026-10-15 | 2204 |  | Sector 43 | 9705446 |
| 193 | 37300.37600.51900.114500.120300.128500.140600.1084700 | Room epoxy flooring | 10d | 2026-10-16 | 2026-10-25 | 192 |  | Sector 43 | 9705456 |
| 194 | 37300.37600.51900.114500.120300.128500.140600.1084800 | Room finishings | 30d | 2026-10-16 | 2026-12-29 | 192 |  | Sector 43 | 9705466 |
| 195 | 37300.37600.51900.114500.120300.128500.140600.1084900 | Tranformer & HT / LT panels installation | 30d | 2026-10-26 | 2027-01-08 | 193 |  | Sector 43 | 9705476 |
| 196 | 37300.37600.51900.114500.120300.128500.140600.1085000 | Transformer connection to HT / LT panels including cable laying | 120d | 2027-01-09 | 2027-05-08 | 195 |  | Sector 43 | 9705486 |
| 197 | 37300.37600.51900.114500.120300.128500.140600.1085100 | Equipment earthing | 30d | 2027-01-02 | 2027-01-31 | 195FS-7d |  | Sector 43 | 9705496 |
| 198 | 37300.37600.51900.114500.120300.128500.224900 | **Transformer T&C** | 37d | 2027-04-09 | 2027-05-15 |  | start no earlier than 2027-04-09 | Sector 43 | 9700536 |
| 199 | 37300.37600.51900.114500.120300.128500.224900.1085200 | HT / LT panel installation & terminations | 30d | 2027-04-09 | 2027-05-08 | 194, 195, 196FS-30d, 197 |  | Sector 43 | 9705506 |
| 200 | 37300.37600.51900.114500.120300.128500.224900.1085300 | Panel charging | 7d | 2027-05-09 | 2027-05-15 | 2805, 199 |  | Sector 43 | 9705516 |

| ID | WBS | Task | Duration | Start | Finish | Predecessors | Constraint | Calendar | Unique_Task_ID |
| --- | --- | --- | --- | --- | --- | --- | --- | --- | --- |
| 201 | 37300.37600.51900.216400 | **Basement Services** | 110d | 2026-06-08 | 2026-09-25 |  | start no earlier than 2026-06-08 | Sector 43 | 9700446 |
| 202 | 37300.37600.51900.216400.291400 | Fire | 100d | 2026-06-08 | 2026-09-15 | 161FS+30d |  | Sector 43 | 9700616 |
| 203 | 37300.37600.51900.216400.291500 | HVAC | 100d | 2026-06-08 | 2026-09-15 | 161FS+30d |  | Sector 43 | 9700626 |
| 204 | 37300.37600.51900.216400.291600 | Electrical | 100d | 2026-06-18 | 2026-09-25 | 202FS-90d, 203FS-90d, 161FS+30d |  | Sector 43 | 9700636 |
| 205 | 37300.37600.51900.156100 | **Boundary wall works** | 165d | 2026-10-18 | 2027-05-15 |  | start no earlier than 2026-10-18 | Sector 43 | 9699106 |
| 206 | 37300.37600.51900.156100.291700 | Removal of Temporary barricading | 60d | 2026-10-18 | 2027-01-30 | 2165FS+30d |  | Sector 43 | 9700646 |
| 207 | 37300.37600.51900.156100.291800 | Excavation works | 60d | 2026-10-23 | 2027-02-04 | 206FS-55d |  | Sector 43 | 9700656 |
| 208 | 37300.37600.51900.156100.291900 | Foundation works | 75d | 2026-10-28 | 2027-02-24 | 207FS-55d |  | Sector 43 | 9700666 |
| 209 | 37300.37600.51900.156100.292000 | Columns | 90d | 2027-01-01 | 2027-03-31 | 208FS-55d |  | Sector 43 | 9700676 |
| 210 | 37300.37600.51900.156100.292100 | Boundary wall erection works | 100d | 2027-02-05 | 2027-05-15 | 209FS-55d |  | Sector 43 | 9700686 |
| 211 | 37300.37600.51900.128600 | **Landscape works including Hardscaping, irrigation line installations, etc.** | 250d | 2027-03-07 | 2027-12-26 |  | start no earlier than 2027-03-07 | Sector 43 | 9698976 |
| 212 | 37300.37600.51900.128600.292200 | Landscape | 220d | 2027-03-07 | 2027-10-12 | 210FS-70d |  | Sector 43 | 9700696 |
| 213 | 37300.37600.51900.128600.292300 | Hardscape | 220d | 2027-03-07 | 2027-10-12 | 210FS-70d |  | Sector 43 | 9700706 |
| 214 | 37300.37600.51900.128600.292400 | Softscape | 240d | 2027-03-07 | 2027-12-16 | 210FS-70d |  | Sector 43 | 9700716 |
| 215 | 37300.37600.51900.128600.218100 | **External Services** | 250d | 2027-03-07 | 2027-12-26 |  | start no earlier than 2027-03-07 | Sector 43 | 9700416 |
| 216 | 37300.37600.51900.128600.218100.387100 | PHE | 160d | 2027-06-05 | 2027-12-26 | 218FS-120d |  | Sector 43 | 9701086 |
| 217 | 37300.37600.51900.128600.218100.387200 | Electrical | 160d | 2027-06-05 | 2027-12-26 | 218FS-120d |  | Sector 43 | 9701096 |
| 218 | 37300.37600.51900.128600.218100.387300 | Fire | 210d | 2027-03-07 | 2027-10-02 | 210FS-70d |  | Sector 43 | 9701106 |
| 219 | 37300.37600.38600 | **Tower area** | 1116d | 2025-05-04 | 2028-10-05 |  | start no earlier than 2025-05-04 | Sector 43 | 9697386 |
| 220 | 37300.37600.38600.40500 | **Tower A (2B+G+31)** | 1106d | 2025-05-04 | 2028-09-25 |  | start no earlier than 2025-05-04 | Sector 43 | 9697416 |
| 221 | 37300.37600.38600.40500.64100 | **Sub structure Works** | 187d | 2025-05-04 | 2025-12-21 |  | start no earlier than 2025-05-04 | Sector 43 | 9698586 |
| 222 | 37300.37600.38600.40500.64100.220100 | **Soil bed preparation** | 6d | 2025-05-04 | 2025-05-09 |  | start no earlier than 2025-05-04 | Sector 43 | 9700326 |
| 223 | 37300.37600.38600.40500.64100.220100.848700 | Surface dressing | 1d | 2025-05-04 | 2025-05-04 | 67FS-20d |  | Sector 43 | 9702056 |
| 224 | 37300.37600.38600.40500.64100.220100.848800 | ATT | 2d | 2025-05-05 | 2025-05-06 | 223 |  | Sector 43 | 9702066 |
| 225 | 37300.37600.38600.40500.64100.220100.848900 | PCC | 1d | 2025-05-09 | 2025-05-09 | 224FS+2d |  | Sector 43 | 9702076 |

| ID | WBS | Task | Duration | Start | Finish | Predecessors | Constraint | Calendar | Unique_Task_ID |
| --- | --- | --- | --- | --- | --- | --- | --- | --- | --- |
| 226 | 37300.37600.38600.40500.64100.124300 | **RCC works** | 92d | 2025-05-09 | 2025-08-08 |  | start no earlier than 2025-05-09 | Sector 43 | 9698796 |
| 227 | 37300.37600.38600.40500.64100.124300.127400 | **Raft including B2 slab** | 36d | 2025-05-09 | 2025-06-13 |  | start no earlier than 2025-05-09 | Sector 43 | 9698856 |
| 228 | 37300.37600.38600.40500.64100.124300.127400.1085400 | Reinforcement | 9d | 2025-05-09 | 2025-05-17 | 225FS-1d |  | Sector 43 | 9705526 |
| 229 | 37300.37600.38600.40500.64100.124300.127400.1085500 | Shuttering | 6d | 2025-05-10 | 2025-05-15 | 228FS-8d |  | Sector 43 | 9705536 |
| 230 | 37300.37600.38600.40500.64100.124300.127400.1085600 | Concreting of Raft | 2d | 2025-05-12 | 2025-05-13 | 229FS-4d |  | Sector 43 | 9705546 |
| 231 | 37300.37600.38600.40500.64100.124300.127400.1085700 | Column till bottom of B2 slab (stitch slab) | 10d | 2025-05-12 | 2025-05-21 | 230FS-2d |  | Sector 43 | 9705556 |
| 232 | 37300.37600.38600.40500.64100.124300.127400.1085800 | Backfilling till bottom of B2 slab | 11d | 2025-05-20 | 2025-05-30 | 231FS-2d |  | Sector 43 | 9705566 |
| 233 | 37300.37600.38600.40500.64100.124300.127400.1085900 | Reinforcement | 15d | 2025-05-21 | 2025-06-04 | 232FS-10d |  | Sector 43 | 9705576 |
| 234 | 37300.37600.38600.40500.64100.124300.127400.1086000 | Shuttering | 16d | 2025-05-29 | 2025-06-13 | 233FS-7d |  | Sector 43 | 9705586 |
| 235 | 37300.37600.38600.40500.64100.124300.127400.1086100 | Concreting of B2 Slab | 2d | 2025-06-12 | 2025-06-13 | 234FS-2d |  | Sector 43 | 9705596 |
| 236 | 37300.37600.38600.40500.64100.124300.220700 | **B1 slab** | 25d | 2025-06-14 | 2025-07-08 |  | start no earlier than 2025-06-14 | Sector 43 | 9700266 |
| 237 | 37300.37600.38600.40500.64100.124300.220700.1086200 | Shuttering | 17d | 2025-06-14 | 2025-06-30 | 235 |  | Sector 43 | 9705606 |
| 238 | 37300.37600.38600.40500.64100.124300.220700.1086300 | Reinforcement | 20d | 2025-06-18 | 2025-07-07 | 237FS-13d |  | Sector 43 | 9705616 |
| 239 | 37300.37600.38600.40500.64100.124300.220700.1086400 | Concreting | 2d | 2025-07-07 | 2025-07-08 | 238FS-1d |  | Sector 43 | 9705626 |
| 240 | 37300.37600.38600.40500.64100.124300.220800 | **Ground Floor Slab / NTA top (6.5 m height)** | 31d | 2025-07-09 | 2025-08-08 |  | start no earlier than 2025-07-09 | Sector 43 | 9700256 |
| 241 | 37300.37600.38600.40500.64100.124300.220800.1086500 | Shuttering | 28d | 2025-07-09 | 2025-08-05 | 239 |  | Sector 43 | 9705636 |
| 242 | 37300.37600.38600.40500.64100.124300.220800.1086600 | Reinforcement | 23d | 2025-07-17 | 2025-08-08 | 241FS-20d |  | Sector 43 | 9705646 |
| 243 | 37300.37600.38600.40500.64100.124300.220800.1086700 | Concreting | 2d | 2025-08-07 | 2025-08-08 | 242FS-2d |  | Sector 43 | 9705656 |
| 244 | 37300.37600.38600.40500.64100.120800 | **Sub structure finishing works** | 120d | 2025-07-10 | 2025-12-21 |  | start no earlier than 2025-07-10 | Sector 43 | 9698726 |
| 245 | 37300.37600.38600.40500.64100.120800.127500 | **Basement 2** | 90d | 2025-07-19 | 2025-10-16 |  | start no earlier than 2025-07-19 | Sector 43 | 9698846 |
| 246 | 37300.37600.38600.40500.64100.120800.127500.1086800 | Masonary | 30d | 2025-08-23 | 2025-09-21 | 239FS+45d |  | Sector 43 | 9705666 |
| 247 | 37300.37600.38600.40500.64100.120800.127500.1086900 | Structural steel | 20d | 2025-08-23 | 2025-09-11 | 239FS+45d |  | Sector 43 | 9705676 |
| 248 | 37300.37600.38600.40500.64100.120800.127500.1087000 | Plaster | 10d | 2025-09-02 | 2025-09-11 | 246FS-20d, 247FS-20d |  | Sector 43 | 9705686 |
| 249 | 37300.37600.38600.40500.64100.120800.127500.1087100 | White wash | 30d | 2025-08-13 | 2025-09-11 | 248FS-30d |  | Sector 43 | 9705696 |
| 250 | 37300.37600.38600.40500.64100.120800.127500.1087200 | VDF | 20d | 2025-07-29 | 2025-08-17 | 248FS-45d |  | Sector 43 | 9705706 |
| 251 | 37300.37600.38600.40500.64100.120800.127500.1087300 | Drain & Sump (incl. gratings) | 60d | 2025-07-19 | 2025-09-16 | 250FS-30d |  | Sector 43 | 9705716 |
| 252 | 37300.37600.38600.40500.64100.120800.127500.1087400 | Car parking marking | 30d | 2025-09-17 | 2025-10-16 | 249FS-15d, 251 |  | Sector 43 | 9705726 |
| 253 | 37300.37600.38600.40500.64100.120800.127500.1087500 | Signages | 30d | 2025-09-02 | 2025-10-01 | 249FS-10d |  | Sector 43 | 9705736 |

| ID | WBS | Task | Duration | Start | Finish | Predecessors | Constraint | Calendar | Unique_Task_ID |
| --- | --- | --- | --- | --- | --- | --- | --- | --- | --- |
| 254 | 37300.37600.38600.40500.64100.120800.127600 | **Basement 1** | 120d | 2025-07-10 | 2025-12-21 |  | start no earlier than 2025-07-10 | Sector 43 | 9698836 |
| 255 | 37300.37600.38600.40500.64100.120800.127600.1087600 | Masonary | 30d | 2025-09-23 | 2025-10-22 | 243FS+45d |  | Sector 43 | 9705746 |
| 256 | 37300.37600.38600.40500.64100.120800.127600.1087700 | Structural steel | 30d | 2025-09-23 | 2025-10-22 | 243FS+45d |  | Sector 43 | 9705756 |
| 257 | 37300.37600.38600.40500.64100.120800.127600.1087800 | Plaster | 30d | 2025-07-25 | 2025-08-23 | 255FS-90d, 256FS-90d |  | Sector 43 | 9705766 |
| 258 | 37300.37600.38600.40500.64100.120800.127600.1087900 | White wash | 30d | 2025-08-14 | 2025-09-12 | 257FS-10d |  | Sector 43 | 9705776 |
| 259 | 37300.37600.38600.40500.64100.120800.127600.1088000 | VDF | 60d | 2025-07-10 | 2025-09-07 | 257FS-45d |  | Sector 43 | 9705786 |
| 260 | 37300.37600.38600.40500.64100.120800.127600.1088100 | Drain & Sump (incl. gratings) | 60d | 2025-08-09 | 2025-10-07 | 259FS-30d |  | Sector 43 | 9705796 |
| 261 | 37300.37600.38600.40500.64100.120800.127600.1088200 | Car parking marking | 30d | 2025-10-08 | 2025-12-21 | 258FS-15d, 260 |  | Sector 43 | 9705806 |
| 262 | 37300.37600.38600.40500.64100.120800.127600.1088300 | Signages | 30d | 2025-09-03 | 2025-10-02 | 258FS-10d |  | Sector 43 | 9705816 |
| 263 | 37300.37600.38600.40500.45400 | **Super structure works** | 390d | 2025-08-09 | 2026-10-17 |  | start no earlier than 2025-08-09 | Sector 43 | 9697506 |
| 264 | 37300.37600.38600.40500.45400.46700 | **RCC works** | 390d | 2025-08-09 | 2026-10-17 |  | start no earlier than 2025-08-09 | Sector 43 | 9697536 |
| 265 | 37300.37600.38600.40500.45400.46700.199500 | **1st floor (Double ht)** | 31d | 2025-08-09 | 2025-09-08 |  | start no earlier than 2025-08-09 | Sector 43 | 9699966 |
| 266 | 37300.37600.38600.40500.45400.46700.199500.1088400 | Reinforcement | 24d | 2025-08-09 | 2025-09-01 | 243 |  | Sector 43 | 9705826 |
| 267 | 37300.37600.38600.40500.45400.46700.199500.1088500 | Wall/slab conduiting | 10d | 2025-08-23 | 2025-09-01 | 266FS-10d |  | Sector 43 | 9705836 |
| 268 | 37300.37600.38600.40500.45400.46700.199500.1088600 | Shuttering | 10d | 2025-08-28 | 2025-09-06 | 266FS-5d |  | Sector 43 | 9705846 |
| 269 | 37300.37600.38600.40500.45400.46700.199500.1088700 | Concreting | 2d | 2025-09-07 | 2025-09-08 | 266, 267, 268 |  | Sector 43 | 9705856 |
| 270 | 37300.37600.38600.40500.45400.46700.199600 | **2nd floor** | 19d | 2025-09-09 | 2025-09-27 |  | start no earlier than 2025-09-09 | Sector 43 | 9700026 |
| 271 | 37300.37600.38600.40500.45400.46700.199600.1088800 | Reinforcement | 10d | 2025-09-09 | 2025-09-18 | 269 |  | Sector 43 | 9705866 |
| 272 | 37300.37600.38600.40500.45400.46700.199600.1088900 | Wall/slab conduiting | 8d | 2025-09-17 | 2025-09-24 | 271FS-2d |  | Sector 43 | 9705876 |
| 273 | 37300.37600.38600.40500.45400.46700.199600.1089000 | Shuttering | 9d | 2025-09-17 | 2025-09-25 | 271FS-2d |  | Sector 43 | 9705886 |
| 274 | 37300.37600.38600.40500.45400.46700.199600.1089100 | Concreting | 2d | 2025-09-26 | 2025-09-27 | 271, 272, 273 |  | Sector 43 | 9705896 |
| 275 | 37300.37600.38600.40500.45400.46700.199700 | **3rd floor** | 21d | 2025-09-28 | 2025-10-18 |  | start no earlier than 2025-09-28 | Sector 43 | 9700076 |
| 276 | 37300.37600.38600.40500.45400.46700.199700.1089200 | Reinforcement | 19d | 2025-09-28 | 2025-10-16 | 274 |  | Sector 43 | 9705906 |
| 277 | 37300.37600.38600.40500.45400.46700.199700.1089300 | Wall/slab conduiting | 19d | 2025-09-28 | 2025-10-16 | 276FS-19d |  | Sector 43 | 9705916 |
| 278 | 37300.37600.38600.40500.45400.46700.199700.1089400 | Shuttering | 19d | 2025-09-28 | 2025-10-16 | 276FS-19d |  | Sector 43 | 9705926 |
| 279 | 37300.37600.38600.40500.45400.46700.199700.1089500 | Concreting | 2d | 2025-10-17 | 2025-10-18 | 276, 277, 278 |  | Sector 43 | 9705936 |

| ID | WBS | Task | Duration | Start | Finish | Predecessors | Constraint | Calendar | Unique_Task_ID |
| --- | --- | --- | --- | --- | --- | --- | --- | --- | --- |
| 280 | 37300.37600.38600.40500.45400.46700.199800 | **4th floor** | 15d | 2025-10-19 | 2025-12-17 |  | start no earlier than 2025-10-19 | Sector 43 | 9700096 |
| 281 | 37300.37600.38600.40500.45400.46700.199800.1089600 | Reinforcement | 12d | 2025-10-19 | 2025-10-30 | 279 |  | Sector 43 | 9705946 |
| 282 | 37300.37600.38600.40500.45400.46700.199800.1089700 | Wall/slab conduiting | 12d | 2025-10-19 | 2025-10-30 | 281FS-12d |  | Sector 43 | 9705956 |
| 283 | 37300.37600.38600.40500.45400.46700.199800.1089800 | Shuttering | 13d | 2025-10-19 | 2025-10-31 | 281FS-12d |  | Sector 43 | 9705966 |
| 284 | 37300.37600.38600.40500.45400.46700.199800.1089900 | Concreting | 2d | 2025-12-16 | 2025-12-17 | 281, 282, 283 |  | Sector 43 | 9705976 |
| 285 | 37300.37600.38600.40500.45400.46700.199900 | **5th floor** | 9d | 2025-12-18 | 2025-12-26 |  | start no earlier than 2025-12-18 | Sector 43 | 9700116 |
| 286 | 37300.37600.38600.40500.45400.46700.199900.1090000 | Reinforcement | 5d | 2025-12-18 | 2025-12-23 | 284 |  | Indian Calendar | 9700117 |
| 287 | 37300.37600.38600.40500.45400.46700.199900.1090100 | Wall/slab conduiting | 5d | 2025-12-18 | 2025-12-22 | 286FS-6d |  | Sector 43 | 9705996 |
| 288 | 37300.37600.38600.40500.45400.46700.199900.1090200 | Shuttering | 6d | 2025-12-18 | 2025-12-24 | 286FS-5d |  | Indian Calendar | 9705997 |
| 289 | 37300.37600.38600.40500.45400.46700.199900.1090300 | Concreting | 2d | 2025-12-25 | 2025-12-26 | 287, 288 |  | Sector 43 | 9706016 |
| 290 | 37300.37600.38600.40500.45400.46700.200000 | **6th floor** | 9d | 2025-12-27 | 2026-01-04 |  | start no earlier than 2025-12-27 | Sector 43 | 9699926 |
| 291 | 37300.37600.38600.40500.45400.46700.200000.1090400 | Reinforcement | 5d | 2025-12-27 | 2025-12-31 | 289 |  | Sector 43 | 9706026 |
| 292 | 37300.37600.38600.40500.45400.46700.200000.1090500 | Wall/slab conduiting | 5d | 2025-12-27 | 2025-12-31 | 291FS-5d |  | Sector 43 | 9706036 |
| 293 | 37300.37600.38600.40500.45400.46700.200000.1090600 | Shuttering | 7d | 2025-12-27 | 2026-01-02 | 291FS-5d |  | Sector 43 | 9706046 |
| 294 | 37300.37600.38600.40500.45400.46700.200000.1090700 | Concreting | 2d | 2026-01-03 | 2026-01-04 | 291, 292, 293 |  | Sector 43 | 9706056 |
| 295 | 37300.37600.38600.40500.45400.46700.200200 | **7th floor** | 9d | 2026-01-05 | 2026-01-13 |  | start no earlier than 2026-01-05 | Sector 43 | 9699916 |
| 296 | 37300.37600.38600.40500.45400.46700.200200.1090800 | Reinforcement | 5d | 2026-01-05 | 2026-01-09 | 294 |  | Sector 43 | 9706066 |
| 297 | 37300.37600.38600.40500.45400.46700.200200.1090900 | Wall/slab conduiting | 5d | 2026-01-05 | 2026-01-09 | 296FS-5d |  | Sector 43 | 9706076 |
| 298 | 37300.37600.38600.40500.45400.46700.200200.1091000 | Shuttering | 7d | 2026-01-05 | 2026-01-11 | 296FS-5d |  | Sector 43 | 9706086 |
| 299 | 37300.37600.38600.40500.45400.46700.200200.1091100 | Concreting | 2d | 2026-01-12 | 2026-01-13 | 296, 297, 298 |  | Sector 43 | 9706096 |
| 300 | 37300.37600.38600.40500.45400.46700.200300 | **8th floor** | 9d | 2026-01-14 | 2026-01-22 |  | start no earlier than 2026-01-14 | Sector 43 | 9699906 |
| 301 | 37300.37600.38600.40500.45400.46700.200300.1091200 | Reinforcement | 5d | 2026-01-14 | 2026-01-18 | 299 |  | Sector 43 | 9706106 |
| 302 | 37300.37600.38600.40500.45400.46700.200300.1091300 | Wall/slab conduiting | 5d | 2026-01-14 | 2026-01-18 | 301FS-5d |  | Sector 43 | 9706116 |
| 303 | 37300.37600.38600.40500.45400.46700.200300.1091400 | Shuttering | 7d | 2026-01-14 | 2026-01-20 | 301FS-5d |  | Sector 43 | 9706126 |
| 304 | 37300.37600.38600.40500.45400.46700.200300.1091500 | Concreting | 2d | 2026-01-21 | 2026-01-22 | 301, 302, 303 |  | Sector 43 | 9706136 |

| ID | WBS | Task | Duration | Start | Finish | Predecessors | Constraint | Calendar | Unique_Task_ID |
| --- | --- | --- | --- | --- | --- | --- | --- | --- | --- |
| 305 | 37300.37600.38600.40500.45400.46700.200600 | **9th floor** | 9d | 2026-01-23 | 2026-01-31 |  | start no earlier than 2026-01-23 | Sector 43 | 9699776 |
| 306 | 37300.37600.38600.40500.45400.46700.200600.1091600 | Reinforcement | 5d | 2026-01-23 | 2026-01-27 | 304 |  | Sector 43 | 9706146 |
| 307 | 37300.37600.38600.40500.45400.46700.200600.1091700 | Wall/slab conduiting | 5d | 2026-01-23 | 2026-01-27 | 306FS-5d |  | Sector 43 | 9706156 |
| 308 | 37300.37600.38600.40500.45400.46700.200600.1091800 | Shuttering | 7d | 2026-01-23 | 2026-01-29 | 306FS-5d |  | Sector 43 | 9706166 |
| 309 | 37300.37600.38600.40500.45400.46700.200600.1091900 | Concreting | 2d | 2026-01-30 | 2026-01-31 | 306, 307, 308 |  | Sector 43 | 9706176 |
| 310 | 37300.37600.38600.40500.45400.46700.200700 | **10th floor** | 9d | 2026-02-01 | 2026-02-09 |  | start no earlier than 2026-02-01 | Sector 43 | 9699766 |
| 311 | 37300.37600.38600.40500.45400.46700.200700.1092000 | Reinforcement | 5d | 2026-02-01 | 2026-02-05 | 309 |  | Sector 43 | 9706186 |
| 312 | 37300.37600.38600.40500.45400.46700.200700.1092100 | Wall/slab conduiting | 5d | 2026-02-01 | 2026-02-05 | 311FS-5d |  | Sector 43 | 9706196 |
| 313 | 37300.37600.38600.40500.45400.46700.200700.1092200 | Shuttering | 7d | 2026-02-01 | 2026-02-07 | 311FS-5d |  | Sector 43 | 9706206 |
| 314 | 37300.37600.38600.40500.45400.46700.200700.1092300 | Concreting | 2d | 2026-02-08 | 2026-02-09 | 311, 312, 313 |  | Sector 43 | 9706216 |
| 315 | 37300.37600.38600.40500.45400.46700.200900 | **11th floor** | 9d | 2026-02-10 | 2026-02-18 |  | start no earlier than 2026-02-10 | Sector 43 | 9699756 |
| 316 | 37300.37600.38600.40500.45400.46700.200900.1092400 | Reinforcement | 5d | 2026-02-10 | 2026-02-14 | 314 |  | Sector 43 | 9706226 |
| 317 | 37300.37600.38600.40500.45400.46700.200900.1092500 | Wall/slab conduiting | 5d | 2026-02-10 | 2026-02-14 | 316FS-5d |  | Sector 43 | 9706236 |
| 318 | 37300.37600.38600.40500.45400.46700.200900.1092600 | Shuttering | 7d | 2026-02-10 | 2026-02-16 | 316FS-5d |  | Sector 43 | 9706246 |
| 319 | 37300.37600.38600.40500.45400.46700.200900.1092700 | Concreting | 2d | 2026-02-17 | 2026-02-18 | 316, 317, 318 |  | Sector 43 | 9706256 |
| 320 | 37300.37600.38600.40500.45400.46700.201000 | **12th floor** | 9d | 2026-02-19 | 2026-02-27 |  | start no earlier than 2026-02-19 | Sector 43 | 9699746 |
| 321 | 37300.37600.38600.40500.45400.46700.201000.1092800 | Reinforcement | 5d | 2026-02-19 | 2026-02-23 | 319 |  | Sector 43 | 9706266 |
| 322 | 37300.37600.38600.40500.45400.46700.201000.1092900 | Wall/slab conduiting | 5d | 2026-02-19 | 2026-02-23 | 321FS-5d |  | Sector 43 | 9706276 |
| 323 | 37300.37600.38600.40500.45400.46700.201000.1093000 | Shuttering | 7d | 2026-02-19 | 2026-02-25 | 321FS-5d |  | Sector 43 | 9706286 |
| 324 | 37300.37600.38600.40500.45400.46700.201000.1093100 | Concreting | 2d | 2026-02-26 | 2026-02-27 | 321, 322, 323 |  | Sector 43 | 9706296 |
| 325 | 37300.37600.38600.40500.45400.46700.201100 | **13th floor** | 9d | 2026-02-28 | 2026-03-08 |  | start no earlier than 2026-02-28 | Sector 43 | 9699706 |
| 326 | 37300.37600.38600.40500.45400.46700.201100.1093200 | Reinforcement | 5d | 2026-02-28 | 2026-03-04 | 324 |  | Sector 43 | 9706306 |
| 327 | 37300.37600.38600.40500.45400.46700.201100.1093300 | Wall/slab conduiting | 5d | 2026-02-28 | 2026-03-04 | 326FS-5d |  | Sector 43 | 9706316 |
| 328 | 37300.37600.38600.40500.45400.46700.201100.1093400 | Shuttering | 7d | 2026-02-28 | 2026-03-06 | 326FS-5d |  | Sector 43 | 9706326 |
| 329 | 37300.37600.38600.40500.45400.46700.201100.1093500 | Concreting | 2d | 2026-03-07 | 2026-03-08 | 326, 327, 328 |  | Sector 43 | 9706336 |

| ID | WBS | Task | Duration | Start | Finish | Predecessors | Constraint | Calendar | Unique_Task_ID |
| --- | --- | --- | --- | --- | --- | --- | --- | --- | --- |
| 330 | 37300.37600.38600.40500.45400.46700.201300 | **14th floor** | 9d | 2026-03-09 | 2026-03-17 |  | start no earlier than 2026-03-09 | Sector 43 | 9699696 |
| 331 | 37300.37600.38600.40500.45400.46700.201300.1093600 | Reinforcement | 5d | 2026-03-09 | 2026-03-13 | 329 |  | Sector 43 | 9706346 |
| 332 | 37300.37600.38600.40500.45400.46700.201300.1093700 | Wall/slab conduiting | 5d | 2026-03-09 | 2026-03-13 | 331FS-5d |  | Sector 43 | 9706356 |
| 333 | 37300.37600.38600.40500.45400.46700.201300.1093800 | Shuttering | 7d | 2026-03-09 | 2026-03-15 | 331FS-5d |  | Sector 43 | 9706366 |
| 334 | 37300.37600.38600.40500.45400.46700.201300.1093900 | Concreting | 2d | 2026-03-16 | 2026-03-17 | 331, 332, 333 |  | Sector 43 | 9706376 |
| 335 | 37300.37600.38600.40500.45400.46700.201400 | **15th floor** | 9d | 2026-03-18 | 2026-03-26 |  | start no earlier than 2026-03-18 | Sector 43 | 9699686 |
| 336 | 37300.37600.38600.40500.45400.46700.201400.1094000 | Reinforcement | 5d | 2026-03-18 | 2026-03-22 | 334 |  | Sector 43 | 9706386 |
| 337 | 37300.37600.38600.40500.45400.46700.201400.1094100 | Wall/slab conduiting | 5d | 2026-03-18 | 2026-03-22 | 336FS-5d |  | Sector 43 | 9706396 |
| 338 | 37300.37600.38600.40500.45400.46700.201400.1094200 | Shuttering | 7d | 2026-03-18 | 2026-03-24 | 336FS-5d |  | Sector 43 | 9706406 |
| 339 | 37300.37600.38600.40500.45400.46700.201400.1094300 | Concreting | 2d | 2026-03-25 | 2026-03-26 | 336, 337, 338 |  | Sector 43 | 9706416 |
| 340 | 37300.37600.38600.40500.45400.46700.201500 | **16th floor** | 9d | 2026-03-27 | 2026-04-04 |  | start no earlier than 2026-03-27 | Sector 43 | 9699676 |
| 341 | 37300.37600.38600.40500.45400.46700.201500.1094400 | Reinforcement | 5d | 2026-03-27 | 2026-03-31 | 339 |  | Sector 43 | 9706426 |
| 342 | 37300.37600.38600.40500.45400.46700.201500.1094500 | Wall/slab conduiting | 5d | 2026-03-27 | 2026-03-31 | 341FS-5d |  | Sector 43 | 9706476 |
| 343 | 37300.37600.38600.40500.45400.46700.201500.1094600 | Shuttering | 7d | 2026-03-27 | 2026-04-02 | 341FS-5d |  | Sector 43 | 9706486 |
| 344 | 37300.37600.38600.40500.45400.46700.201500.1094700 | Concreting | 2d | 2026-04-03 | 2026-04-04 | 341, 342, 343 |  | Sector 43 | 9706496 |
| 345 | 37300.37600.38600.40500.45400.46700.201600 | **17th floor - Refuge Floor** | 12d | 2026-04-05 | 2026-04-16 |  | start no earlier than 2026-04-05 | Sector 43 | 9699666 |
| 346 | 37300.37600.38600.40500.45400.46700.201600.1094800 | Reinforcement | 10d | 2026-04-05 | 2026-04-14 | 344 |  | Sector 43 | 9706506 |
| 347 | 37300.37600.38600.40500.45400.46700.201600.1094900 | Wall/slab conduiting | 9d | 2026-04-06 | 2026-04-14 | 346FS-9d |  | Sector 43 | 9706516 |
| 348 | 37300.37600.38600.40500.45400.46700.201600.1095000 | Shuttering | 9d | 2026-04-06 | 2026-04-14 | 346FS-9d |  | Sector 43 | 9706526 |
| 349 | 37300.37600.38600.40500.45400.46700.201600.1095100 | Concreting | 2d | 2026-04-15 | 2026-04-16 | 346, 347, 348 |  | Sector 43 | 9706536 |
| 350 | 37300.37600.38600.40500.45400.46700.201700 | **18th floor** | 9d | 2026-04-17 | 2026-04-25 |  | start no earlier than 2026-04-17 | Sector 43 | 9699656 |
| 351 | 37300.37600.38600.40500.45400.46700.201700.1095200 | Reinforcement | 5d | 2026-04-17 | 2026-04-21 | 349 |  | Sector 43 | 9706546 |
| 352 | 37300.37600.38600.40500.45400.46700.201700.1095300 | Wall/slab conduiting | 5d | 2026-04-17 | 2026-04-21 | 351FS-5d |  | Sector 43 | 9706556 |
| 353 | 37300.37600.38600.40500.45400.46700.201700.1095400 | Shuttering | 7d | 2026-04-17 | 2026-04-23 | 351FS-5d |  | Sector 43 | 9706566 |
| 354 | 37300.37600.38600.40500.45400.46700.201700.1095500 | Concreting | 2d | 2026-04-24 | 2026-04-25 | 351, 352, 353 |  | Sector 43 | 9706576 |

| ID | WBS | Task | Duration | Start | Finish | Predecessors | Constraint | Calendar | Unique_Task_ID |
| --- | --- | --- | --- | --- | --- | --- | --- | --- | --- |
| 355 | 37300.37600.38600.40500.45400.46700.201800 | **19th floor** | 8d | 2026-04-26 | 2026-05-03 |  | start no earlier than 2026-04-26 | Sector 43 | 9699646 |
| 356 | 37300.37600.38600.40500.45400.46700.201800.1095600 | Reinforcement | 6d | 2026-04-26 | 2026-05-01 | 354 |  | Sector 43 | 9706586 |
| 357 | 37300.37600.38600.40500.45400.46700.201800.1095700 | Wall/slab conduiting | 6d | 2026-04-26 | 2026-05-01 | 356FS-6d |  | Sector 43 | 9706596 |
| 358 | 37300.37600.38600.40500.45400.46700.201800.1095800 | Shuttering | 6d | 2026-04-26 | 2026-05-01 | 356FS-6d |  | Sector 43 | 9706606 |
| 359 | 37300.37600.38600.40500.45400.46700.201800.1095900 | Concreting | 2d | 2026-05-02 | 2026-05-03 | 356, 357, 358 |  | Sector 43 | 9706616 |
| 360 | 37300.37600.38600.40500.45400.46700.202200 | **20th floor** | 8d | 2026-05-04 | 2026-05-11 |  | start no earlier than 2026-05-04 | Sector 43 | 9699616 |
| 361 | 37300.37600.38600.40500.45400.46700.202200.1096000 | Reinforcement | 6d | 2026-05-04 | 2026-05-09 | 359 |  | Sector 43 | 9706626 |
| 362 | 37300.37600.38600.40500.45400.46700.202200.1096100 | Wall/slab conduiting | 6d | 2026-05-04 | 2026-05-09 | 361FS-6d |  | Sector 43 | 9706636 |
| 363 | 37300.37600.38600.40500.45400.46700.202200.1096200 | Shuttering | 6d | 2026-05-04 | 2026-05-09 | 361FS-6d |  | Sector 43 | 9706646 |
| 364 | 37300.37600.38600.40500.45400.46700.202200.1096300 | Concreting | 2d | 2026-05-10 | 2026-05-11 | 361, 362, 363 |  | Sector 43 | 9706656 |
| 365 | 37300.37600.38600.40500.45400.46700.202300 | **21st floor** | 8d | 2026-05-12 | 2026-05-19 |  | start no earlier than 2026-05-12 | Sector 43 | 9699606 |
| 366 | 37300.37600.38600.40500.45400.46700.202300.1096400 | Reinforcement | 6d | 2026-05-12 | 2026-05-17 | 364 |  | Sector 43 | 9706666 |
| 367 | 37300.37600.38600.40500.45400.46700.202300.1096500 | Wall/slab conduiting | 6d | 2026-05-12 | 2026-05-17 | 366FS-6d |  | Sector 43 | 9706676 |
| 368 | 37300.37600.38600.40500.45400.46700.202300.1096600 | Shuttering | 6d | 2026-05-12 | 2026-05-17 | 366FS-6d |  | Sector 43 | 9706686 |
| 369 | 37300.37600.38600.40500.45400.46700.202300.1096700 | Concreting | 2d | 2026-05-18 | 2026-05-19 | 366, 367, 368 |  | Sector 43 | 9706696 |
| 370 | 37300.37600.38600.40500.45400.46700.202500 | **22nd floor** | 8d | 2026-05-20 | 2026-05-27 |  | start no earlier than 2026-05-20 | Sector 43 | 9699596 |
| 371 | 37300.37600.38600.40500.45400.46700.202500.1096800 | Reinforcement | 6d | 2026-05-20 | 2026-05-25 | 369 |  | Sector 43 | 9706706 |
| 372 | 37300.37600.38600.40500.45400.46700.202500.1096900 | Wall/slab conduiting | 6d | 2026-05-20 | 2026-05-25 | 371FS-6d |  | Sector 43 | 9706716 |
| 373 | 37300.37600.38600.40500.45400.46700.202500.1097000 | Shuttering | 6d | 2026-05-20 | 2026-05-25 | 371FS-6d |  | Sector 43 | 9706726 |
| 374 | 37300.37600.38600.40500.45400.46700.202500.1097100 | Concreting | 2d | 2026-05-26 | 2026-05-27 | 371, 372, 373 |  | Sector 43 | 9706736 |
| 375 | 37300.37600.38600.40500.45400.46700.202600 | **23rd floor** | 8d | 2026-05-28 | 2026-06-04 |  | start no earlier than 2026-05-28 | Sector 43 | 9699586 |
| 376 | 37300.37600.38600.40500.45400.46700.202600.1097200 | Reinforcement | 6d | 2026-05-28 | 2026-06-02 | 374 |  | Sector 43 | 9706746 |
| 377 | 37300.37600.38600.40500.45400.46700.202600.1097300 | Wall/slab conduiting | 6d | 2026-05-28 | 2026-06-02 | 376FS-6d |  | Sector 43 | 9706756 |
| 378 | 37300.37600.38600.40500.45400.46700.202600.1097400 | Shuttering | 6d | 2026-05-28 | 2026-06-02 | 376FS-6d |  | Sector 43 | 9706766 |
| 379 | 37300.37600.38600.40500.45400.46700.202600.1097500 | Concreting | 2d | 2026-06-03 | 2026-06-04 | 376, 377, 378 |  | Sector 43 | 9706776 |

| ID | WBS | Task | Duration | Start | Finish | Predecessors | Constraint | Calendar | Unique_Task_ID |
| --- | --- | --- | --- | --- | --- | --- | --- | --- | --- |
| 380 | 37300.37600.38600.40500.45400.46700.202800 | **24th floor** | 8d | 2026-06-05 | 2026-06-12 |  | start no earlier than 2026-06-05 | Sector 43 | 9699456 |
| 381 | 37300.37600.38600.40500.45400.46700.202800.1097600 | Reinforcement | 6d | 2026-06-05 | 2026-06-10 | 379 |  | Sector 43 | 9706786 |
| 382 | 37300.37600.38600.40500.45400.46700.202800.1097700 | Wall/slab conduiting | 6d | 2026-06-05 | 2026-06-10 | 381FS-6d |  | Sector 43 | 9706796 |
| 383 | 37300.37600.38600.40500.45400.46700.202800.1097800 | Shuttering | 6d | 2026-06-05 | 2026-06-10 | 381FS-6d |  | Sector 43 | 9706806 |
| 384 | 37300.37600.38600.40500.45400.46700.202800.1097900 | Concreting | 2d | 2026-06-11 | 2026-06-12 | 381, 382, 383 |  | Sector 43 | 9706816 |
| 385 | 37300.37600.38600.40500.45400.46700.203100 | **25th floor - Refuge Floor** | 12d | 2026-06-13 | 2026-06-24 |  | start no earlier than 2026-06-13 | Sector 43 | 9699436 |
| 386 | 37300.37600.38600.40500.45400.46700.203100.1098000 | Reinforcement | 10d | 2026-06-13 | 2026-06-22 | 384 |  | Sector 43 | 9706826 |
| 387 | 37300.37600.38600.40500.45400.46700.203100.1098100 | Wall/slab conduiting | 6d | 2026-06-14 | 2026-06-19 | 386FS-9d |  | Sector 43 | 9706836 |
| 388 | 37300.37600.38600.40500.45400.46700.203100.1098200 | Shuttering | 8d | 2026-06-14 | 2026-06-21 | 386FS-9d |  | Sector 43 | 9706846 |
| 389 | 37300.37600.38600.40500.45400.46700.203100.1098300 | Concreting | 2d | 2026-06-23 | 2026-06-24 | 386, 387, 388 |  | Sector 43 | 9706856 |
| 390 | 37300.37600.38600.40500.45400.46700.203200 | **26th floor** | 8d | 2026-06-25 | 2026-07-02 |  | start no earlier than 2026-06-25 | Sector 43 | 9699426 |
| 391 | 37300.37600.38600.40500.45400.46700.203200.1098400 | Reinforcement | 6d | 2026-06-25 | 2026-06-30 | 389 |  | Sector 43 | 9706866 |
| 392 | 37300.37600.38600.40500.45400.46700.203200.1098500 | Wall/slab conduiting | 6d | 2026-06-25 | 2026-06-30 | 391FS-6d |  | Sector 43 | 9706876 |
| 393 | 37300.37600.38600.40500.45400.46700.203200.1098600 | Shuttering | 6d | 2026-06-25 | 2026-06-30 | 391FS-6d |  | Sector 43 | 9706886 |
| 394 | 37300.37600.38600.40500.45400.46700.203200.1098700 | Concreting | 2d | 2026-07-01 | 2026-07-02 | 391, 392, 393 |  | Sector 43 | 9706896 |
| 395 | 37300.37600.38600.40500.45400.46700.203300 | **27th floor** | 8d | 2026-07-03 | 2026-07-10 |  | start no earlier than 2026-07-03 | Sector 43 | 9699396 |
| 396 | 37300.37600.38600.40500.45400.46700.203300.1098800 | Reinforcement | 6d | 2026-07-03 | 2026-07-08 | 394 |  | Sector 43 | 9706906 |
| 397 | 37300.37600.38600.40500.45400.46700.203300.1098900 | Wall/slab conduiting | 6d | 2026-07-03 | 2026-07-08 | 396FS-6d |  | Sector 43 | 9706916 |
| 398 | 37300.37600.38600.40500.45400.46700.203300.1099000 | Shuttering | 6d | 2026-07-03 | 2026-07-08 | 396FS-6d |  | Sector 43 | 9706926 |
| 399 | 37300.37600.38600.40500.45400.46700.203300.1099100 | Concreting | 2d | 2026-07-09 | 2026-07-10 | 396, 397, 398 |  | Sector 43 | 9706936 |
| 400 | 37300.37600.38600.40500.45400.46700.203400 | **28th floor** | 8d | 2026-07-11 | 2026-07-18 |  | start no earlier than 2026-07-11 | Sector 43 | 9699366 |
| 401 | 37300.37600.38600.40500.45400.46700.203400.1099200 | Reinforcement | 6d | 2026-07-11 | 2026-07-16 | 399 |  | Sector 43 | 9706946 |
| 402 | 37300.37600.38600.40500.45400.46700.203400.1099300 | Wall/slab conduiting | 6d | 2026-07-11 | 2026-07-16 | 401FS-6d |  | Sector 43 | 9706956 |
| 403 | 37300.37600.38600.40500.45400.46700.203400.1099400 | Shuttering | 6d | 2026-07-11 | 2026-07-16 | 401FS-6d |  | Sector 43 | 9706966 |
| 404 | 37300.37600.38600.40500.45400.46700.203400.1099500 | Concreting | 2d | 2026-07-17 | 2026-07-18 | 401, 402, 403 |  | Sector 43 | 9706976 |

| ID | WBS | Task | Duration | Start | Finish | Predecessors | Constraint | Calendar | Unique_Task_ID |
| --- | --- | --- | --- | --- | --- | --- | --- | --- | --- |
| 405 | 37300.37600.38600.40500.45400.46700.203500 | **29th floor** | 8d | 2026-07-19 | 2026-07-26 |  | start no earlier than 2026-07-19 | Sector 43 | 9699306 |
| 406 | 37300.37600.38600.40500.45400.46700.203500.1099600 | Reinforcement | 6d | 2026-07-19 | 2026-07-24 | 404 |  | Sector 43 | 9706986 |
| 407 | 37300.37600.38600.40500.45400.46700.203500.1099700 | Wall/slab conduiting | 6d | 2026-07-19 | 2026-07-24 | 406FS-6d |  | Sector 43 | 9706996 |
| 408 | 37300.37600.38600.40500.45400.46700.203500.1099800 | Shuttering | 6d | 2026-07-19 | 2026-07-24 | 406FS-6d |  | Sector 43 | 9707006 |
| 409 | 37300.37600.38600.40500.45400.46700.203500.1099900 | Concreting | 2d | 2026-07-25 | 2026-07-26 | 406, 407, 408 |  | Sector 43 | 9707016 |
| 410 | 37300.37600.38600.40500.45400.46700.203600 | **30th floor** | 8d | 2026-07-27 | 2026-08-03 |  | start no earlier than 2026-07-27 | Sector 43 | 9699286 |
| 411 | 37300.37600.38600.40500.45400.46700.203600.1100000 | Reinforcement | 6d | 2026-07-27 | 2026-08-01 | 409 |  | Sector 43 | 9707026 |
| 412 | 37300.37600.38600.40500.45400.46700.203600.1100100 | Wall/slab conduiting | 6d | 2026-07-27 | 2026-08-01 | 411FS-6d |  | Sector 43 | 9707036 |
| 413 | 37300.37600.38600.40500.45400.46700.203600.1100200 | Shuttering | 6d | 2026-07-27 | 2026-08-01 | 411FS-6d |  | Sector 43 | 9707046 |
| 414 | 37300.37600.38600.40500.45400.46700.203600.1100300 | Concreting | 2d | 2026-08-02 | 2026-08-03 | 411, 412, 413 |  | Sector 43 | 9707056 |
| 415 | 37300.37600.38600.40500.45400.46700.203700 | **31st floor** | 10d | 2026-08-04 | 2026-08-13 |  | start no earlier than 2026-08-04 | Sector 43 | 9699196 |
| 416 | 37300.37600.38600.40500.45400.46700.203700.1100400 | Reinforcement | 6d | 2026-08-04 | 2026-08-09 | 414 |  | Sector 43 | 9707066 |
| 417 | 37300.37600.38600.40500.45400.46700.203700.1100500 | Wall/slab conduiting | 6d | 2026-08-04 | 2026-08-09 | 416FS-6d |  | Sector 43 | 9707076 |
| 418 | 37300.37600.38600.40500.45400.46700.203700.1100600 | Shuttering | 8d | 2026-08-04 | 2026-08-11 | 417FS-6d |  | Sector 43 | 9707086 |
| 419 | 37300.37600.38600.40500.45400.46700.203700.1100700 | Concreting | 2d | 2026-08-12 | 2026-08-13 | 416, 417, 418 |  | Sector 43 | 9707096 |
| 420 | 37300.37600.38600.40500.45400.46700.203900 | **Terrace floor** | 25d | 2026-08-14 | 2026-09-07 |  | start no earlier than 2026-08-14 | Sector 43 | 9699186 |
| 421 | 37300.37600.38600.40500.45400.46700.203900.1100800 | Reinforcement | 23d | 2026-08-14 | 2026-09-05 | 419 |  | Sector 43 | 9707106 |
| 422 | 37300.37600.38600.40500.45400.46700.203900.1100900 | Wall/slab conduiting | 20d | 2026-08-16 | 2026-09-04 | 421FS-21d |  | Sector 43 | 9707116 |
| 423 | 37300.37600.38600.40500.45400.46700.203900.1101000 | Shuttering | 20d | 2026-08-16 | 2026-09-04 | 421FS-21d |  | Sector 43 | 9707126 |
| 424 | 37300.37600.38600.40500.45400.46700.203900.1101100 | Concreting | 2d | 2026-09-06 | 2026-09-07 | 421, 422, 423 |  | Sector 43 | 9707136 |
| 425 | 37300.37600.38600.40500.45400.46700.204200 | **LMR, OHT & Mumty** | 40d | 2026-09-08 | 2026-10-17 |  | start no earlier than 2026-09-08 | Sector 43 | 9699166 |
| 426 | 37300.37600.38600.40500.45400.46700.204200.1101200 | Reinforcement | 36d | 2026-09-08 | 2026-10-13 | 424 |  | Sector 43 | 9707146 |
| 427 | 37300.37600.38600.40500.45400.46700.204200.1101300 | Wall conduiting | 20d | 2026-09-14 | 2026-10-03 | 426FS-30d |  | Sector 43 | 9707156 |
| 428 | 37300.37600.38600.40500.45400.46700.204200.1101400 | Shuttering | 20d | 2026-09-14 | 2026-10-03 | 426FS-30d |  | Sector 43 | 9707166 |
| 429 | 37300.37600.38600.40500.45400.46700.204200.1101500 | Concreting | 4d | 2026-10-14 | 2026-10-17 | 426, 427, 428 |  | Sector 43 | 9707176 |

| ID | WBS | Task | Duration | Start | Finish | Predecessors | Constraint | Calendar | Unique_Task_ID |
| --- | --- | --- | --- | --- | --- | --- | --- | --- | --- |
| 430 | 37300.37600.38600.40500.45400.49200 | **Post pour works** | 287d | 2025-12-18 | 2026-09-30 |  | start no earlier than 2025-12-18 | Sector 43 | 9697566 |
| 431 | 37300.37600.38600.40500.45400.49200.849000 | 1st floor | 7d | 2025-12-18 | 2025-12-24 | 284 |  | Sector 43 | 9702086 |
| 432 | 37300.37600.38600.40500.45400.49200.849100 | 2nd floor | 7d | 2025-12-27 | 2026-01-02 | 431, 289 |  | Sector 43 | 9702096 |
| 433 | 37300.37600.38600.40500.45400.49200.849200 | 3rd floor | 7d | 2026-01-05 | 2026-01-11 | 432, 294 |  | Sector 43 | 9702106 |
| 434 | 37300.37600.38600.40500.45400.49200.849300 | 4th floor | 7d | 2026-01-14 | 2026-01-20 | 433, 299 |  | Sector 43 | 9702116 |
| 435 | 37300.37600.38600.40500.45400.49200.849400 | 5th floor | 7d | 2026-01-23 | 2026-01-29 | 434, 304 |  | Sector 43 | 9702126 |
| 436 | 37300.37600.38600.40500.45400.49200.849500 | 6th floor | 7d | 2026-02-01 | 2026-02-07 | 435, 309 |  | Sector 43 | 9702136 |
| 437 | 37300.37600.38600.40500.45400.49200.849600 | 7th floor | 7d | 2026-02-10 | 2026-02-16 | 436, 314 |  | Sector 43 | 9702146 |
| 438 | 37300.37600.38600.40500.45400.49200.849700 | 8th floor | 7d | 2026-02-19 | 2026-02-25 | 437, 319 |  | Sector 43 | 9702156 |
| 439 | 37300.37600.38600.40500.45400.49200.849800 | 9th floor | 7d | 2026-02-28 | 2026-03-06 | 438, 324 |  | Sector 43 | 9702166 |
| 440 | 37300.37600.38600.40500.45400.49200.849900 | 10th floor | 7d | 2026-03-09 | 2026-03-15 | 439, 329 |  | Sector 43 | 9702176 |
| 441 | 37300.37600.38600.40500.45400.49200.850000 | 11th floor | 7d | 2026-03-18 | 2026-03-24 | 440, 334 |  | Sector 43 | 9702186 |
| 442 | 37300.37600.38600.40500.45400.49200.850100 | 12th floor | 7d | 2026-03-27 | 2026-04-02 | 441, 339 |  | Sector 43 | 9702196 |
| 443 | 37300.37600.38600.40500.45400.49200.850200 | 13th floor | 7d | 2026-04-05 | 2026-04-11 | 442, 344 |  | Sector 43 | 9702206 |
| 444 | 37300.37600.38600.40500.45400.49200.850300 | 14th floor | 7d | 2026-04-17 | 2026-04-23 | 443, 349 |  | Sector 43 | 9702216 |
| 445 | 37300.37600.38600.40500.45400.49200.850400 | 15th floor | 7d | 2026-04-26 | 2026-05-02 | 444, 354 |  | Sector 43 | 9702226 |
| 446 | 37300.37600.38600.40500.45400.49200.850500 | 16th floor | 7d | 2026-05-04 | 2026-05-10 | 445, 359 |  | Sector 43 | 9702236 |
| 447 | 37300.37600.38600.40500.45400.49200.850600 | 17th floor - Refuge Floor | 7d | 2026-05-12 | 2026-05-18 | 446, 364 |  | Sector 43 | 9702246 |
| 448 | 37300.37600.38600.40500.45400.49200.850700 | 18th floor | 7d | 2026-05-20 | 2026-05-26 | 447, 369 |  | Sector 43 | 9702256 |
| 449 | 37300.37600.38600.40500.45400.49200.850800 | 19th floor | 7d | 2026-05-28 | 2026-06-03 | 448, 374 |  | Sector 43 | 9702266 |
| 450 | 37300.37600.38600.40500.45400.49200.850900 | 20th floor | 7d | 2026-06-05 | 2026-06-11 | 449, 379 |  | Sector 43 | 9702276 |
| 451 | 37300.37600.38600.40500.45400.49200.851000 | 21st floor | 7d | 2026-06-13 | 2026-06-19 | 450, 384 |  | Sector 43 | 9702286 |
| 452 | 37300.37600.38600.40500.45400.49200.851100 | 22nd floor | 7d | 2026-06-25 | 2026-07-01 | 451, 389 |  | Sector 43 | 9702296 |
| 453 | 37300.37600.38600.40500.45400.49200.851200 | 23rd floor | 7d | 2026-07-03 | 2026-07-09 | 452, 394 |  | Sector 43 | 9702306 |
| 454 | 37300.37600.38600.40500.45400.49200.851300 | 24th floor | 7d | 2026-07-11 | 2026-07-17 | 453, 399 |  | Sector 43 | 9702316 |
| 455 | 37300.37600.38600.40500.45400.49200.851400 | 25th floor - Refuge Floor | 7d | 2026-07-19 | 2026-07-25 | 454, 404 |  | Sector 43 | 9702326 |
| 456 | 37300.37600.38600.40500.45400.49200.851500 | 26th floor | 7d | 2026-07-27 | 2026-08-02 | 455, 409 |  | Sector 43 | 9702336 |
| 457 | 37300.37600.38600.40500.45400.49200.851600 | 27th floor | 7d | 2026-08-04 | 2026-08-10 | 456, 414 |  | Sector 43 | 9702346 |
| 458 | 37300.37600.38600.40500.45400.49200.851700 | 28th floor | 7d | 2026-08-14 | 2026-08-20 | 457, 419 |  | Sector 43 | 9702356 |
| 459 | 37300.37600.38600.40500.45400.49200.851800 | 29th floor | 7d | 2026-08-21 | 2026-08-27 | 458 |  | Sector 43 | 9702366 |
| 460 | 37300.37600.38600.40500.45400.49200.851900 | 30th floor | 7d | 2026-08-28 | 2026-09-03 | 459 |  | Sector 43 | 9702376 |
| 461 | 37300.37600.38600.40500.45400.49200.852000 | 31st floor | 7d | 2026-09-04 | 2026-09-10 | 460 |  | Sector 43 | 9702386 |
| 462 | 37300.37600.38600.40500.45400.49200.852100 | Terrace floor | 10d | 2026-09-11 | 2026-09-20 | 461 |  | Sector 43 | 9702396 |
| 463 | 37300.37600.38600.40500.45400.49200.852200 | LMR, OHT & Mumty | 10d | 2026-09-21 | 2026-09-30 | 462 |  | Sector 43 | 9702406 |

| ID | WBS | Task | Duration | Start | Finish | Predecessors | Constraint | Calendar | Unique_Task_ID |
| --- | --- | --- | --- | --- | --- | --- | --- | --- | --- |
| 464 | 37300.37600.38600.40500.42800 | **Finishing works** | 557d | 2025-12-18 | 2027-08-11 |  | start no earlier than 2025-12-18 | Sector 43 | 9697436 |
| 465 | 37300.37600.38600.40500.42800.43900 | **Flat finishings** | 482d | 2025-12-18 | 2027-05-28 |  | start no earlier than 2025-12-18 | Sector 43 | 9697466 |
| 466 | 37300.37600.38600.40500.42800.43900.62400 | **1st floor** | 61d | 2025-12-18 | 2026-02-16 |  | start no earlier than 2025-12-18 | Sector 43 | 9697626 |
| 467 | 37300.37600.38600.40500.42800.43900.62400.1101600 | Blockwork | 10d | 2025-12-18 | 2025-12-29 | 284 |  | Indian Calendar | 9697627 |
| 468 | 37300.37600.38600.40500.42800.43900.62400.1101700 | Installation of temporary Main door | 4d | 2025-12-30 | 2026-01-02 | 467 |  | Sector 43 | 9707196 |
| 469 | 37300.37600.38600.40500.42800.43900.62400.1101800 | Fire sprinkler pipe fixing | 10d | 2025-12-30 | 2026-01-08 | 467 |  | Sector 43 | 9707206 |
| 470 | 37300.37600.38600.40500.42800.43900.62400.1101900 | Internal Plumbing Works | 10d | 2025-12-24 | 2026-01-02 | 467FS-6d |  | Sector 43 | 9707216 |
| 471 | 37300.37600.38600.40500.42800.43900.62400.1102000 | Waterproofing | 21d | 2025-12-29 | 2026-01-18 | 470FS-5d |  | Sector 43 | 9707226 |
| 472 | 37300.37600.38600.40500.42800.43900.62400.1102100 | Internal Plaster | 11d | 2025-12-29 | 2026-01-08 | 470FS-5d |  | Sector 43 | 9707236 |
| 473 | 37300.37600.38600.40500.42800.43900.62400.1102200 | IPS flooring work | 13d | 2025-12-30 | 2026-01-11 | 467 |  | Sector 43 | 9707246 |
| 474 | 37300.37600.38600.40500.42800.43900.62400.1102300 | Toilet dado work | 12d | 2026-01-17 | 2026-01-28 | 471FS-2d, 472 |  | Sector 43 | 9707256 |
| 475 | 37300.37600.38600.40500.42800.43900.62400.1102400 | Toilet flooring work | 15d | 2026-01-29 | 2026-02-12 | 474 |  | Sector 43 | 9707266 |
| 476 | 37300.37600.38600.40500.42800.43900.62400.1102500 | Living dinning flooring | 12d | 2026-01-24 | 2026-02-04 | 473, 475FS-20d |  | Sector 43 | 9707276 |
| 477 | 37300.37600.38600.40500.42800.43900.62400.1102600 | Electrical wiring work | 12d | 2026-02-05 | 2026-02-16 | 476 |  | Sector 43 | 9707286 |
| 478 | 37300.37600.38600.40500.42800.43900.62400.1102700 | Aluminium door-window fixing | 10d | 2026-01-03 | 2026-01-12 | 468 |  | Sector 43 | 9707296 |
| 479 | 37300.37600.38600.40500.42800.43900.62400.1102800 | Putty primer coat | 10d | 2026-01-05 | 2026-01-14 | 478FS-8d |  | Sector 43 | 9707306 |
| 480 | 37300.37600.38600.40500.42800.43900.62400.1102900 | Prehung door fixing | 8d | 2026-01-10 | 2026-01-17 | 479FS-5d |  | Sector 43 | 9707316 |
| 481 | 37300.37600.38600.40500.42800.43900.62400.1103000 | Painting 1st coat | 12d | 2026-01-18 | 2026-01-29 | 480 |  | Sector 43 | 9707326 |
| 482 | 37300.37600.38600.40500.42800.43900.62400.1103100 | False Cieling panel fixing | 10d | 2026-01-30 | 2026-02-08 | 481 |  | Sector 43 | 9707336 |
| 483 | 37300.37600.38600.40500.42800.43900.62300 | **2nd floor** | 63d | 2026-01-15 | 2026-03-18 |  | start no earlier than 2026-01-15 | Sector 43 | 9697636 |
| 484 | 37300.37600.38600.40500.42800.43900.62300.1103200 | Block Work | 10d | 2026-01-15 | 2026-01-24 | 434FS-6d |  | Sector 43 | 9707346 |
| 485 | 37300.37600.38600.40500.42800.43900.62300.1103300 | Installation of temporary Main door | 4d | 2026-01-25 | 2026-01-28 | 484 |  | Sector 43 | 9707356 |
| 486 | 37300.37600.38600.40500.42800.43900.62300.1103400 | Fire sprinkler pipe fixing | 10d | 2026-01-25 | 2026-02-03 | 469, 484 |  | Sector 43 | 9707366 |
| 487 | 37300.37600.38600.40500.42800.43900.62300.1103500 | Internal Plumbing Works | 10d | 2026-01-20 | 2026-01-29 | 484FS-5d |  | Sector 43 | 9707376 |
| 488 | 37300.37600.38600.40500.42800.43900.62300.1103600 | Waterproofing | 21d | 2026-01-25 | 2026-02-14 | 487FS-5d |  | Sector 43 | 9707386 |
| 489 | 37300.37600.38600.40500.42800.43900.62300.1103700 | Internal Plaster | 11d | 2026-01-25 | 2026-02-04 | 487FS-5d |  | Sector 43 | 9707396 |
| 490 | 37300.37600.38600.40500.42800.43900.62300.1103800 | IPS flooring work | 13d | 2026-01-25 | 2026-02-06 | 484 |  | Sector 43 | 9707406 |
| 491 | 37300.37600.38600.40500.42800.43900.62300.1103900 | Toilet dado work | 12d | 2026-02-13 | 2026-02-24 | 488FS-2d, 489 |  | Sector 43 | 9707416 |
| 492 | 37300.37600.38600.40500.42800.43900.62300.1104000 | Toilet flooring work | 15d | 2026-02-25 | 2026-03-11 | 491 |  | Sector 43 | 9707426 |
| 493 | 37300.37600.38600.40500.42800.43900.62300.1104100 | Living dinning flooring | 12d | 2026-02-23 | 2026-03-06 | 490, 492FS-17d |  | Sector 43 | 9707436 |
| 494 | 37300.37600.38600.40500.42800.43900.62300.1104200 | Electrical wiring work | 12d | 2026-03-07 | 2026-03-18 | 493 |  | Sector 43 | 9707446 |
| 495 | 37300.37600.38600.40500.42800.43900.62300.1104300 | Aluminium door-window fixing | 10d | 2026-01-29 | 2026-02-07 | 485 |  | Sector 43 | 9707456 |
| 496 | 37300.37600.38600.40500.42800.43900.62300.1104400 | Putty primer coat | 10d | 2026-01-31 | 2026-02-09 | 495FS-8d |  | Sector 43 | 9707466 |
| 497 | 37300.37600.38600.40500.42800.43900.62300.1104500 | Prehung door fixing | 8d | 2026-02-05 | 2026-02-12 | 496FS-5d |  | Sector 43 | 9707476 |
| 498 | 37300.37600.38600.40500.42800.43900.62300.1104600 | Painting 1st coat | 12d | 2026-02-13 | 2026-02-24 | 497 |  | Sector 43 | 9707486 |
| 499 | 37300.37600.38600.40500.42800.43900.62300.1104700 | False Cieling panel fixing | 10d | 2026-02-25 | 2026-03-06 | 482, 498 |  | Sector 43 | 9707496 |

| ID | WBS | Task | Duration | Start | Finish | Predecessors | Constraint | Calendar | Unique_Task_ID |
| --- | --- | --- | --- | --- | --- | --- | --- | --- | --- |
| 500 | 37300.37600.38600.40500.42800.43900.62200 | **3rd Floor** | 60d | 2026-01-24 | 2026-04-03 |  | start no earlier than 2026-01-24 | Indian Calendar | 9707506 |
| 501 | 37300.37600.38600.40500.42800.43900.62200.1104800 | Blockwork | 10d | 2026-01-24 | 2026-02-04 | 435FS-5d |  | Indian Calendar | 9707516 |
| 502 | 37300.37600.38600.40500.42800.43900.62200.1104900 | Installation of temporary Main door | 4d | 2026-02-05 | 2026-02-09 | 501 |  | Indian Calendar | 9707526 |
| 503 | 37300.37600.38600.40500.42800.43900.62200.1105000 | Fire Sprinkler pipe ficing | 10d | 2026-02-05 | 2026-02-16 | 486, 501 |  | Indian Calendar | 9707536 |
| 504 | 37300.37600.38600.40500.42800.43900.62200.1105100 | Internal Plumbing Works | 10d | 2026-01-30 | 2026-02-10 | 501FS-5d |  | Indian Calendar | 9707546 |
| 505 | 37300.37600.38600.40500.42800.43900.62200.1105200 | Waterproofing | 21d | 2026-02-05 | 2026-02-28 | 504FS-5d |  | Indian Calendar | 9707556 |
| 506 | 37300.37600.38600.40500.42800.43900.62200.1105300 | Internal Plaster | 11d | 2026-02-05 | 2026-02-17 | 504FS-5d |  | Indian Calendar | 9707566 |
| 507 | 37300.37600.38600.40500.42800.43900.62200.1105400 | IPS flooring work | 13d | 2026-02-05 | 2026-02-19 | 501 |  | Indian Calendar | 9707576 |
| 508 | 37300.37600.38600.40500.42800.43900.62200.1105500 | Toilet dado work | 12d | 2026-02-27 | 2026-03-12 | 505FS-2d, 506 |  | Indian Calendar | 9707586 |
| 509 | 37300.37600.38600.40500.42800.43900.62200.1105600 | Toilet flooring work | 15d | 2026-03-13 | 2026-03-30 | 508 |  | Indian Calendar | 9707596 |
| 510 | 37300.37600.38600.40500.42800.43900.62200.1105700 | Living dining flooring | 12d | 2026-03-07 | 2026-03-20 | 507, 509FS-20d |  | Indian Calendar | 9707606 |
| 511 | 37300.37600.38600.40500.42800.43900.62200.1105800 | Electrical wiring work | 12d | 2026-03-21 | 2026-04-03 | 510 |  | Indian Calendar | 9707616 |
| 512 | 37300.37600.38600.40500.42800.43900.62200.1105900 | Aluminium door-window fixing | 10d | 2026-02-10 | 2026-02-20 | 502 |  | Indian Calendar | 9707626 |
| 513 | 37300.37600.38600.40500.42800.43900.62200.1106000 | Putty primer coat | 10d | 2026-02-12 | 2026-02-23 | 512FS-8d |  | Indian Calendar | 9707636 |
| 514 | 37300.37600.38600.40500.42800.43900.62200.1106100 | Prehung door fixing | 8d | 2026-02-18 | 2026-02-26 | 513FS-5d |  | Indian Calendar | 9707646 |
| 515 | 37300.37600.38600.40500.42800.43900.62200.1106200 | Painting 1st coat | 12d | 2026-02-27 | 2026-03-12 | 514 |  | Indian Calendar | 9707656 |
| 516 | 37300.37600.38600.40500.42800.43900.62200.1106300 | False Ceiling panel fixing | 10d | 2026-03-13 | 2026-03-24 | 499, 515 |  | Indian Calendar | 10039949 |
| 517 | 37300.37600.38600.40500.42800.43900.62100 | **4th floor** | 66d | 2026-02-05 | 2026-04-11 |  | start no earlier than 2026-02-05 | Sector 43 | 9697656 |
| 518 | 37300.37600.38600.40500.42800.43900.62100.1106400 | Block Work | 10d | 2026-02-05 | 2026-02-14 | 436FS-3d |  | Sector 43 | 9707666 |
| 519 | 37300.37600.38600.40500.42800.43900.62100.1106500 | Installation of temporary Main door | 4d | 2026-02-15 | 2026-02-18 | 518 |  | Sector 43 | 9707676 |
| 520 | 37300.37600.38600.40500.42800.43900.62100.1106600 | Fire sprinkler pipe fixing | 10d | 2026-02-17 | 2026-02-26 | 503, 518 |  | Sector 43 | 9707686 |
| 521 | 37300.37600.38600.40500.42800.43900.62100.1106700 | Internal Plumbing Works | 10d | 2026-02-10 | 2026-02-19 | 518FS-5d |  | Sector 43 | 9707696 |
| 522 | 37300.37600.38600.40500.42800.43900.62100.1106800 | Waterproofing | 21d | 2026-02-15 | 2026-03-07 | 521FS-5d |  | Sector 43 | 9707706 |
| 523 | 37300.37600.38600.40500.42800.43900.62100.1106900 | Internal Plaster | 11d | 2026-02-17 | 2026-02-27 | 521FS-3d |  | Sector 43 | 9707716 |
| 524 | 37300.37600.38600.40500.42800.43900.62100.1107000 | IPS flooring work | 13d | 2026-02-15 | 2026-02-27 | 518 |  | Sector 43 | 9707726 |
| 525 | 37300.37600.38600.40500.42800.43900.62100.1107100 | Toilet dado work | 12d | 2026-03-06 | 2026-03-17 | 522FS-2d, 523 |  | Sector 43 | 9707736 |
| 526 | 37300.37600.38600.40500.42800.43900.62100.1107200 | Toilet flooring work | 15d | 2026-03-18 | 2026-04-01 | 525 |  | Sector 43 | 9707746 |
| 527 | 37300.37600.38600.40500.42800.43900.62100.1107300 | Living dinning flooring | 12d | 2026-03-19 | 2026-03-30 | 524, 526FS-14d |  | Sector 43 | 9707756 |
| 528 | 37300.37600.38600.40500.42800.43900.62100.1107400 | Electrical wiring work | 12d | 2026-03-31 | 2026-04-11 | 527 |  | Sector 43 | 9707766 |
| 529 | 37300.37600.38600.40500.42800.43900.62100.1107500 | Aluminium door-window fixing | 10d | 2026-02-19 | 2026-02-28 | 519 |  | Sector 43 | 9707776 |
| 530 | 37300.37600.38600.40500.42800.43900.62100.1107600 | Putty primer coat | 10d | 2026-02-21 | 2026-03-02 | 529FS-8d |  | Sector 43 | 9707786 |
| 531 | 37300.37600.38600.40500.42800.43900.62100.1107700 | Prehung door fixing | 8d | 2026-02-26 | 2026-03-05 | 530FS-5d |  | Sector 43 | 9707796 |
| 532 | 37300.37600.38600.40500.42800.43900.62100.1107800 | Painting 1st coat | 12d | 2026-03-06 | 2026-03-17 | 531 |  | Sector 43 | 9707806 |
| 533 | 37300.37600.38600.40500.42800.43900.62100.1107900 | False Cieling panel fixing | 10d | 2026-03-25 | 2026-04-03 | 516, 532 |  | Sector 43 | 9707816 |

| ID | WBS | Task | Duration | Start | Finish | Predecessors | Constraint | Calendar | Unique_Task_ID |
| --- | --- | --- | --- | --- | --- | --- | --- | --- | --- |
| 534 | 37300.37600.38600.40500.42800.43900.62000 | **5th floor** | 58d | 2026-02-15 | 2026-04-13 |  | start no earlier than 2026-02-15 | Sector 43 | 9697666 |
| 535 | 37300.37600.38600.40500.42800.43900.62000.1108000 | Block Work | 10d | 2026-02-15 | 2026-02-24 | 437FS-2d |  | Sector 43 | 9707826 |
| 536 | 37300.37600.38600.40500.42800.43900.62000.1108100 | Installation of temporary Main door | 4d | 2026-02-25 | 2026-02-28 | 535 |  | Sector 43 | 9707836 |
| 537 | 37300.37600.38600.40500.42800.43900.62000.1108200 | Fire sprinkler pipe fixing | 10d | 2026-02-27 | 2026-03-08 | 520, 535 |  | Sector 43 | 9707846 |
| 538 | 37300.37600.38600.40500.42800.43900.62000.1108300 | Internal Plumbing Works | 10d | 2026-02-20 | 2026-03-01 | 535FS-5d |  | Sector 43 | 9707856 |
| 539 | 37300.37600.38600.40500.42800.43900.62000.1108400 | Waterproofing | 21d | 2026-02-25 | 2026-03-17 | 538FS-5d |  | Sector 43 | 9707866 |
| 540 | 37300.37600.38600.40500.42800.43900.62000.1108500 | Internal Plaster | 11d | 2026-02-28 | 2026-03-10 | 538FS-2d |  | Sector 43 | 9707876 |
| 541 | 37300.37600.38600.40500.42800.43900.62000.1108600 | IPS flooring work | 13d | 2026-02-25 | 2026-03-09 | 535 |  | Sector 43 | 9707886 |
| 542 | 37300.37600.38600.40500.42800.43900.62000.1108700 | Toilet dado work | 12d | 2026-03-16 | 2026-03-27 | 539FS-2d, 540 |  | Sector 43 | 9707896 |
| 543 | 37300.37600.38600.40500.42800.43900.62000.1108800 | Toilet flooring work | 15d | 2026-03-28 | 2026-04-11 | 542 |  | Sector 43 | 9707906 |
| 544 | 37300.37600.38600.40500.42800.43900.62000.1108900 | Living dinning flooring | 12d | 2026-03-17 | 2026-03-28 | 535FS+20d |  | Sector 43 | 9707916 |
| 545 | 37300.37600.38600.40500.42800.43900.62000.1109000 | Electrical wiring work | 12d | 2026-03-29 | 2026-04-09 | 544 |  | Sector 43 | 9707926 |
| 546 | 37300.37600.38600.40500.42800.43900.62000.1109100 | Aluminium door-window fixing | 10d | 2026-03-01 | 2026-03-10 | 536 |  | Sector 43 | 9707936 |
| 547 | 37300.37600.38600.40500.42800.43900.62000.1109200 | Putty primer coat | 10d | 2026-03-03 | 2026-03-12 | 546FS-8d |  | Sector 43 | 9707946 |
| 548 | 37300.37600.38600.40500.42800.43900.62000.1109300 | Prehung door fixing | 8d | 2026-03-08 | 2026-03-15 | 547FS-5d |  | Sector 43 | 9707956 |
| 549 | 37300.37600.38600.40500.42800.43900.62000.1109400 | Painting 1st coat | 12d | 2026-03-16 | 2026-03-27 | 548 |  | Sector 43 | 9707966 |
| 550 | 37300.37600.38600.40500.42800.43900.62000.1109500 | False Cieling panel fixing | 10d | 2026-04-04 | 2026-04-13 | 533, 549 |  | Sector 43 | 9707976 |
| 551 | 37300.37600.38600.40500.42800.43900.61900 | **6th floor** | 58d | 2026-02-25 | 2026-04-23 |  | start no earlier than 2026-02-25 | Sector 43 | 9697676 |
| 552 | 37300.37600.38600.40500.42800.43900.61900.1109600 | Block Work | 10d | 2026-02-25 | 2026-03-06 | 535 |  | Sector 43 | 9707986 |
| 553 | 37300.37600.38600.40500.42800.43900.61900.1109700 | Installation of temporary Main door | 4d | 2026-03-07 | 2026-03-10 | 552 |  | Sector 43 | 9707996 |
| 554 | 37300.37600.38600.40500.42800.43900.61900.1109800 | Fire sprinkler pipe fixing | 10d | 2026-03-09 | 2026-03-18 | 537, 552 |  | Sector 43 | 9708006 |
| 555 | 37300.37600.38600.40500.42800.43900.61900.1109900 | Internal Plumbing Works | 10d | 2026-03-02 | 2026-03-11 | 552FS-5d |  | Sector 43 | 9708016 |
| 556 | 37300.37600.38600.40500.42800.43900.61900.1110000 | Waterproofing | 21d | 2026-03-07 | 2026-03-27 | 555FS-5d |  | Sector 43 | 9708026 |
| 557 | 37300.37600.38600.40500.42800.43900.61900.1110100 | Internal Plaster | 11d | 2026-03-12 | 2026-03-22 | 555 |  | Sector 43 | 9708036 |
| 558 | 37300.37600.38600.40500.42800.43900.61900.1110200 | IPS flooring work | 13d | 2026-03-07 | 2026-03-19 | 552 |  | Sector 43 | 9708046 |
| 559 | 37300.37600.38600.40500.42800.43900.61900.1110300 | Toilet dado work | 12d | 2026-03-26 | 2026-04-06 | 556FS-2d, 557 |  | Sector 43 | 9708056 |
| 560 | 37300.37600.38600.40500.42800.43900.61900.1110400 | Toilet flooring work | 12d | 2026-04-07 | 2026-04-18 | 559 |  | Sector 43 | 9708066 |
| 561 | 37300.37600.38600.40500.42800.43900.61900.1110500 | Living dinning flooring | 12d | 2026-03-17 | 2026-03-28 | 552FS+10d |  | Sector 43 | 9708076 |
| 562 | 37300.37600.38600.40500.42800.43900.61900.1110600 | Electrical wiring work | 12d | 2026-03-29 | 2026-04-09 | 561 |  | Sector 43 | 9708086 |
| 563 | 37300.37600.38600.40500.42800.43900.61900.1110700 | Aluminium door-window fixing | 10d | 2026-03-11 | 2026-03-20 | 553 |  | Sector 43 | 9708096 |
| 564 | 37300.37600.38600.40500.42800.43900.61900.1110800 | Putty primer coat | 10d | 2026-03-13 | 2026-03-22 | 563FS-8d |  | Sector 43 | 9708106 |
| 565 | 37300.37600.38600.40500.42800.43900.61900.1110900 | Prehung door fixing | 8d | 2026-03-18 | 2026-03-25 | 564FS-5d |  | Sector 43 | 9708116 |
| 566 | 37300.37600.38600.40500.42800.43900.61900.1111000 | Painting 1st coat | 12d | 2026-03-26 | 2026-04-06 | 565 |  | Sector 43 | 9708126 |
| 567 | 37300.37600.38600.40500.42800.43900.61900.1111100 | False Cieling panel fixing | 10d | 2026-04-14 | 2026-04-23 | 550, 566 |  | Sector 43 | 9708136 |

| ID | WBS | Task | Duration | Start | Finish | Predecessors | Constraint | Calendar | Unique_Task_ID |
| --- | --- | --- | --- | --- | --- | --- | --- | --- | --- |
| 568 | 37300.37600.38600.40500.42800.43900.61800 | **7th floor** | 101d | 2026-02-28 | 2026-06-08 |  | start no earlier than 2026-02-28 | Sector 43 | 9697686 |
| 569 | 37300.37600.38600.40500.42800.43900.61800.1111200 | Block Work | 10d | 2026-03-07 | 2026-03-16 | 552 |  | Sector 43 | 9708146 |
| 570 | 37300.37600.38600.40500.42800.43900.61800.1111300 | Installation of temporary Main door | 4d | 2026-03-17 | 2026-03-20 | 569 |  | Sector 43 | 9708156 |
| 571 | 37300.37600.38600.40500.42800.43900.61800.1111400 | Fire sprinkler pipe fixing | 10d | 2026-03-19 | 2026-03-28 | 554, 569 |  | Sector 43 | 9708166 |
| 572 | 37300.37600.38600.40500.42800.43900.61800.1111500 | Internal Plumbing Works | 15d | 2026-03-17 | 2026-03-31 | 569 |  | Sector 43 | 9708176 |
| 573 | 37300.37600.38600.40500.42800.43900.61800.1111600 | Waterproofing | 21d | 2026-04-01 | 2026-04-21 | 572 |  | Sector 43 | 9708186 |
| 574 | 37300.37600.38600.40500.42800.43900.61800.1111700 | Internal Plaster | 15d | 2026-03-17 | 2026-03-31 | 572FS-15d |  | Sector 43 | 9708196 |
| 575 | 37300.37600.38600.40500.42800.43900.61800.1111800 | IPS flooring work | 13d | 2026-03-17 | 2026-03-29 | 569 |  | Sector 43 | 9708206 |
| 576 | 37300.37600.38600.40500.42800.43900.61800.1111900 | Toilet dado work | 25d | 2026-04-20 | 2026-05-14 | 573FS-2d, 574 |  | Sector 43 | 9708216 |
| 577 | 37300.37600.38600.40500.42800.43900.61800.1112000 | Toilet flooring work | 25d | 2026-05-15 | 2026-06-08 | 576 |  | Sector 43 | 9708226 |
| 578 | 37300.37600.38600.40500.42800.43900.61800.1112100 | Living dinning flooring | 31d | 2026-02-28 | 2026-03-30 | 569FS-17d |  | Sector 43 | 9708236 |
| 579 | 37300.37600.38600.40500.42800.43900.61800.1112200 | Electrical wiring work | 12d | 2026-03-21 | 2026-04-01 | 578FS-10d |  | Sector 43 | 9708246 |
| 580 | 37300.37600.38600.40500.42800.43900.61800.1112300 | Aluminium door-window fixing | 19d | 2026-03-25 | 2026-04-12 | 570, 579FS-8d |  | Sector 43 | 9708256 |
| 581 | 37300.37600.38600.40500.42800.43900.61800.1112400 | Putty primer coat | 10d | 2026-04-05 | 2026-04-14 | 580FS-8d |  | Sector 43 | 9708266 |
| 582 | 37300.37600.38600.40500.42800.43900.61800.1112500 | Prehung door fixing | 8d | 2026-04-10 | 2026-04-17 | 581FS-5d |  | Sector 43 | 9708276 |
| 583 | 37300.37600.38600.40500.42800.43900.61800.1112600 | Painting 1st coat | 12d | 2026-04-18 | 2026-04-29 | 582 |  | Sector 43 | 9708286 |
| 584 | 37300.37600.38600.40500.42800.43900.61800.1112700 | False Cieling panel fixing | 10d | 2026-04-30 | 2026-05-09 | 567, 583 |  | Sector 43 | 9708296 |
| 585 | 37300.37600.38600.40500.42800.43900.61700 | **8th floor** | 109d | 2026-02-25 | 2026-06-13 |  | start no earlier than 2026-02-25 | Sector 43 | 9697696 |
| 586 | 37300.37600.38600.40500.42800.43900.61700.1112800 | Block Work | 10d | 2026-03-17 | 2026-03-26 | 569 |  | Sector 43 | 9708306 |
| 587 | 37300.37600.38600.40500.42800.43900.61700.1112900 | Installation of temporary Main door | 4d | 2026-03-27 | 2026-03-30 | 586 |  | Sector 43 | 9708316 |
| 588 | 37300.37600.38600.40500.42800.43900.61700.1113000 | Fire sprinkler pipe fixing | 10d | 2026-03-29 | 2026-04-07 | 571, 586 |  | Sector 43 | 9708326 |
| 589 | 37300.37600.38600.40500.42800.43900.61700.1113100 | Internal Plumbing Works | 15d | 2026-03-22 | 2026-04-05 | 586FS-5d |  | Sector 43 | 9708336 |
| 590 | 37300.37600.38600.40500.42800.43900.61700.1113200 | Waterproofing | 21d | 2026-04-06 | 2026-04-26 | 589 |  | Sector 43 | 9708346 |
| 591 | 37300.37600.38600.40500.42800.43900.61700.1113300 | Internal Plaster | 15d | 2026-03-12 | 2026-03-26 | 586FS-15d |  | Sector 43 | 9708356 |
| 592 | 37300.37600.38600.40500.42800.43900.61700.1113400 | IPS flooring work | 13d | 2026-03-27 | 2026-04-08 | 586 |  | Sector 43 | 9708366 |
| 593 | 37300.37600.38600.40500.42800.43900.61700.1113500 | Toilet dado work | 25d | 2026-04-25 | 2026-05-19 | 590FS-2d, 591 |  | Sector 43 | 9708376 |
| 594 | 37300.37600.38600.40500.42800.43900.61700.1113600 | Toilet flooring work | 25d | 2026-05-20 | 2026-06-13 | 593 |  | Sector 43 | 9708386 |
| 595 | 37300.37600.38600.40500.42800.43900.61700.1113700 | Living dinning flooring | 31d | 2026-02-25 | 2026-03-27 | 586FS-30d |  | Sector 43 | 9708396 |
| 596 | 37300.37600.38600.40500.42800.43900.61700.1113800 | Electrical wiring work | 12d | 2026-03-18 | 2026-03-29 | 595FS-10d |  | Sector 43 | 9708406 |
| 597 | 37300.37600.38600.40500.42800.43900.61700.1113900 | Aluminium door-window fixing | 19d | 2026-03-31 | 2026-04-18 | 587, 596FS-8d |  | Sector 43 | 9708416 |
| 598 | 37300.37600.38600.40500.42800.43900.61700.1114000 | Putty primer coat | 10d | 2026-04-11 | 2026-04-20 | 597FS-8d |  | Sector 43 | 9708426 |
| 599 | 37300.37600.38600.40500.42800.43900.61700.1114100 | Prehung door fixing | 8d | 2026-04-16 | 2026-04-23 | 598FS-5d |  | Sector 43 | 9708436 |
| 600 | 37300.37600.38600.40500.42800.43900.61700.1114200 | Painting 1st coat | 12d | 2026-04-24 | 2026-05-05 | 599 |  | Sector 43 | 9708446 |
| 601 | 37300.37600.38600.40500.42800.43900.61700.1114300 | False Cieling panel fixing | 10d | 2026-05-10 | 2026-05-19 | 584, 600 |  | Sector 43 | 9708456 |

| ID | WBS | Task | Duration | Start | Finish | Predecessors | Constraint | Calendar | Unique_Task_ID |
| --- | --- | --- | --- | --- | --- | --- | --- | --- | --- |
| 602 | 37300.37600.38600.40500.42800.43900.61600 | **9th floor** | 112d | 2026-02-27 | 2026-06-18 |  | start no earlier than 2026-02-27 | Sector 43 | 9697706 |
| 603 | 37300.37600.38600.40500.42800.43900.61600.1114400 | Block Work | 8d | 2026-03-24 | 2026-03-31 | 586FS-3d |  | Sector 43 | 9708466 |
| 604 | 37300.37600.38600.40500.42800.43900.61600.1114500 | Installation of temporary Main door | 4d | 2026-04-01 | 2026-04-04 | 603 |  | Sector 43 | 9708476 |
| 605 | 37300.37600.38600.40500.42800.43900.61600.1114600 | Fire sprinkler pipe fixing | 10d | 2026-04-08 | 2026-04-17 | 588, 603 |  | Sector 43 | 9708486 |
| 606 | 37300.37600.38600.40500.42800.43900.61600.1114700 | Internal Plumbing Works | 15d | 2026-03-27 | 2026-04-10 | 603FS-5d |  | Sector 43 | 9708496 |
| 607 | 37300.37600.38600.40500.42800.43900.61600.1114800 | Waterproofing | 21d | 2026-04-11 | 2026-05-01 | 606 |  | Sector 43 | 9708506 |
| 608 | 37300.37600.38600.40500.42800.43900.61600.1114900 | Internal Plaster | 15d | 2026-03-17 | 2026-03-31 | 603FS-15d |  | Sector 43 | 9708516 |
| 609 | 37300.37600.38600.40500.42800.43900.61600.1115000 | IPS flooring work | 13d | 2026-04-01 | 2026-04-13 | 603 |  | Sector 43 | 9708526 |
| 610 | 37300.37600.38600.40500.42800.43900.61600.1115100 | Toilet dado work | 25d | 2026-04-30 | 2026-05-24 | 607FS-2d, 608 |  | Sector 43 | 9708536 |
| 611 | 37300.37600.38600.40500.42800.43900.61600.1115200 | Toilet flooring work | 25d | 2026-05-25 | 2026-06-18 | 610 |  | Sector 43 | 9708546 |
| 612 | 37300.37600.38600.40500.42800.43900.61600.1115300 | Living dinning flooring | 31d | 2026-02-27 | 2026-03-29 | 603FS-33d |  | Sector 43 | 9708556 |
| 613 | 37300.37600.38600.40500.42800.43900.61600.1115400 | Electrical wiring work | 12d | 2026-03-20 | 2026-03-31 | 612FS-10d |  | Sector 43 | 9708566 |
| 614 | 37300.37600.38600.40500.42800.43900.61600.1115500 | Aluminium door-window fixing | 19d | 2026-04-05 | 2026-04-23 | 604, 613FS-8d |  | Sector 43 | 9708576 |
| 615 | 37300.37600.38600.40500.42800.43900.61600.1115600 | Putty primer coat | 10d | 2026-04-16 | 2026-04-25 | 614FS-8d |  | Sector 43 | 9708586 |
| 616 | 37300.37600.38600.40500.42800.43900.61600.1115700 | Prehung door fixing | 8d | 2026-04-21 | 2026-04-28 | 615FS-5d |  | Sector 43 | 9708596 |
| 617 | 37300.37600.38600.40500.42800.43900.61600.1115800 | Painting 1st coat | 12d | 2026-04-29 | 2026-05-10 | 616 |  | Sector 43 | 9708606 |
| 618 | 37300.37600.38600.40500.42800.43900.61600.1115900 | False Cieling panel fixing | 10d | 2026-05-20 | 2026-05-29 | 601, 617 |  | Sector 43 | 9708616 |
| 619 | 37300.37600.38600.40500.42800.43900.61500 | **10th floor** | 86d | 2026-03-15 | 2026-06-08 |  | start no earlier than 2026-03-15 | Sector 43 | 9697716 |
| 620 | 37300.37600.38600.40500.42800.43900.61500.1116000 | Block Work | 8d | 2026-03-22 | 2026-03-29 | 586FS-5d |  | Sector 43 | 9708626 |
| 621 | 37300.37600.38600.40500.42800.43900.61500.1116100 | Installation of temporary Main door | 4d | 2026-03-30 | 2026-04-02 | 620 |  | Sector 43 | 9708636 |
| 622 | 37300.37600.38600.40500.42800.43900.61500.1116200 | Fire sprinkler pipe fixing | 10d | 2026-04-18 | 2026-04-27 | 605, 620 |  | Sector 43 | 9708646 |
| 623 | 37300.37600.38600.40500.42800.43900.61500.1116300 | Internal Plumbing Works | 15d | 2026-03-30 | 2026-04-13 | 620 |  | Sector 43 | 9708656 |
| 624 | 37300.37600.38600.40500.42800.43900.61500.1116400 | Waterproofing | 21d | 2026-04-14 | 2026-05-04 | 623 |  | Sector 43 | 9708666 |
| 625 | 37300.37600.38600.40500.42800.43900.61500.1116500 | Internal Plaster | 15d | 2026-03-15 | 2026-03-29 | 620FS-15d |  | Sector 43 | 9708676 |
| 626 | 37300.37600.38600.40500.42800.43900.61500.1116600 | IPS flooring work | 13d | 2026-03-30 | 2026-04-11 | 620 |  | Sector 43 | 9708686 |
| 627 | 37300.37600.38600.40500.42800.43900.61500.1116700 | Toilet dado work | 10d | 2026-05-03 | 2026-05-12 | 624FS-2d, 625 |  | Sector 43 | 9708696 |
| 628 | 37300.37600.38600.40500.42800.43900.61500.1116800 | Toilet flooring work | 12d | 2026-05-13 | 2026-05-24 | 627 |  | Sector 43 | 9708706 |
| 629 | 37300.37600.38600.40500.42800.43900.61500.1116900 | Living dinning flooring | 12d | 2026-03-15 | 2026-03-26 | 620FS-15d |  | Sector 43 | 9708716 |
| 630 | 37300.37600.38600.40500.42800.43900.61500.1117000 | Electrical wiring work | 12d | 2026-03-17 | 2026-03-28 | 629FS-10d |  | Sector 43 | 9708726 |
| 631 | 37300.37600.38600.40500.42800.43900.61500.1117100 | Aluminium door-window fixing | 19d | 2026-04-03 | 2026-04-21 | 621, 630FS-8d |  | Sector 43 | 9708736 |
| 632 | 37300.37600.38600.40500.42800.43900.61500.1117200 | Putty primer coat | 10d | 2026-04-14 | 2026-04-23 | 631FS-8d |  | Sector 43 | 9708746 |
| 633 | 37300.37600.38600.40500.42800.43900.61500.1117300 | Prehung door fixing | 8d | 2026-04-19 | 2026-04-26 | 632FS-5d |  | Sector 43 | 9708756 |
| 634 | 37300.37600.38600.40500.42800.43900.61500.1117400 | Painting 1st coat | 12d | 2026-04-27 | 2026-05-08 | 633 |  | Sector 43 | 9708766 |
| 635 | 37300.37600.38600.40500.42800.43900.61500.1117500 | False Cieling panel fixing | 10d | 2026-05-30 | 2026-06-08 | 618, 634 |  | Sector 43 | 9708776 |

| ID | WBS | Task | Duration | Start | Finish | Predecessors | Constraint | Calendar | Unique_Task_ID |
| --- | --- | --- | --- | --- | --- | --- | --- | --- | --- |
| 636 | 37300.37600.38600.40500.42800.43900.61400 | **11th floor** | 150d | 2026-03-15 | 2026-08-11 |  | start no earlier than 2026-03-15 | Sector 43 | 9697726 |
| 637 | 37300.37600.38600.40500.42800.43900.61400.1117600 | Block Work | 8d | 2026-03-22 | 2026-03-29 | 586FS-5d |  | Sector 43 | 9708786 |
| 638 | 37300.37600.38600.40500.42800.43900.61400.1117700 | Installation of temporary Main door | 4d | 2026-03-30 | 2026-04-02 | 637 |  | Sector 43 | 9708796 |
| 639 | 37300.37600.38600.40500.42800.43900.61400.1117800 | Fire sprinkler pipe fixing | 10d | 2026-04-28 | 2026-05-07 | 622, 637 |  | Sector 43 | 9708806 |
| 640 | 37300.37600.38600.40500.42800.43900.61400.1117900 | Internal Plumbing Works | 15d | 2026-03-30 | 2026-04-13 | 637 |  | Sector 43 | 9708816 |
| 641 | 37300.37600.38600.40500.42800.43900.61400.1118000 | Waterproofing | 21d | 2026-04-14 | 2026-05-04 | 640 |  | Sector 43 | 9708826 |
| 642 | 37300.37600.38600.40500.42800.43900.61400.1118100 | Internal Plaster | 15d | 2026-03-15 | 2026-03-29 | 637FS-15d |  | Sector 43 | 9708836 |
| 643 | 37300.37600.38600.40500.42800.43900.61400.1118200 | IPS flooring work | 13d | 2026-03-30 | 2026-04-11 | 637 |  | Sector 43 | 9708846 |
| 644 | 37300.37600.38600.40500.42800.43900.61400.1118300 | Toilet dado work | 25d | 2026-05-03 | 2026-05-27 | 641FS-2d, 642 |  | Sector 43 | 9708856 |
| 645 | 37300.37600.38600.40500.42800.43900.61400.1118400 | Toilet flooring work | 25d | 2026-05-28 | 2026-06-21 | 643, 644 |  | Sector 43 | 9708866 |
| 646 | 37300.37600.38600.40500.42800.43900.61400.1118500 | Living dinning flooring | 31d | 2026-06-02 | 2026-07-02 | 645FS-20d |  | Sector 43 | 9708876 |
| 647 | 37300.37600.38600.40500.42800.43900.61400.1118600 | Electrical wiring work | 12d | 2026-06-23 | 2026-07-04 | 646FS-10d |  | Sector 43 | 9708886 |
| 648 | 37300.37600.38600.40500.42800.43900.61400.1118700 | Aluminium door-window fixing | 19d | 2026-06-27 | 2026-07-15 | 638, 647FS-8d |  | Sector 43 | 9708896 |
| 649 | 37300.37600.38600.40500.42800.43900.61400.1118800 | Putty primer coat | 10d | 2026-07-08 | 2026-07-17 | 648FS-8d |  | Sector 43 | 9708906 |
| 650 | 37300.37600.38600.40500.42800.43900.61400.1118900 | Prehung door fixing | 8d | 2026-07-13 | 2026-07-20 | 649FS-5d |  | Sector 43 | 9708916 |
| 651 | 37300.37600.38600.40500.42800.43900.61400.1119000 | Painting 1st coat | 12d | 2026-07-21 | 2026-08-01 | 650 |  | Sector 43 | 9708926 |
| 652 | 37300.37600.38600.40500.42800.43900.61400.1119100 | False Cieling panel fixing | 10d | 2026-08-02 | 2026-08-11 | 635, 651 |  | Sector 43 | 9708936 |
| 653 | 37300.37600.38600.40500.42800.43900.61300 | **12th floor** | 160d | 2026-03-15 | 2026-08-21 |  | start no earlier than 2026-03-15 | Sector 43 | 9697736 |
| 654 | 37300.37600.38600.40500.42800.43900.61300.1119200 | Block Work | 8d | 2026-03-22 | 2026-03-29 | 586FS-5d |  | Sector 43 | 9708946 |
| 655 | 37300.37600.38600.40500.42800.43900.61300.1119300 | Installation of temporary Main door | 4d | 2026-03-30 | 2026-04-02 | 654 |  | Sector 43 | 9708956 |
| 656 | 37300.37600.38600.40500.42800.43900.61300.1119400 | Fire sprinkler pipe fixing | 10d | 2026-05-08 | 2026-05-17 | 639, 654 |  | Sector 43 | 9708966 |
| 657 | 37300.37600.38600.40500.42800.43900.61300.1119500 | Internal Plumbing Works | 15d | 2026-03-30 | 2026-04-13 | 654 |  | Sector 43 | 9708976 |
| 658 | 37300.37600.38600.40500.42800.43900.61300.1119600 | Waterproofing | 21d | 2026-04-14 | 2026-05-04 | 657 |  | Sector 43 | 9708986 |
| 659 | 37300.37600.38600.40500.42800.43900.61300.1119700 | Internal Plaster | 15d | 2026-03-15 | 2026-03-29 | 654FS-15d |  | Sector 43 | 9708996 |
| 660 | 37300.37600.38600.40500.42800.43900.61300.1119800 | IPS flooring work | 13d | 2026-03-30 | 2026-04-11 | 654 |  | Sector 43 | 9709006 |
| 661 | 37300.37600.38600.40500.42800.43900.61300.1119900 | Toilet dado work | 25d | 2026-05-03 | 2026-05-27 | 658FS-2d, 659 |  | Sector 43 | 9709016 |
| 662 | 37300.37600.38600.40500.42800.43900.61300.1120000 | Toilet flooring work | 25d | 2026-05-28 | 2026-06-21 | 661 |  | Sector 43 | 9709026 |
| 663 | 37300.37600.38600.40500.42800.43900.61300.1120100 | Living dinning flooring | 31d | 2026-06-02 | 2026-07-02 | 660, 662FS-20d |  | Sector 43 | 9709036 |
| 664 | 37300.37600.38600.40500.42800.43900.61300.1120200 | Electrical wiring work | 12d | 2026-06-23 | 2026-07-04 | 663FS-10d |  | Sector 43 | 9709046 |
| 665 | 37300.37600.38600.40500.42800.43900.61300.1120300 | Aluminium door-window fixing | 19d | 2026-06-27 | 2026-07-15 | 655, 664FS-8d |  | Sector 43 | 9709056 |
| 666 | 37300.37600.38600.40500.42800.43900.61300.1120400 | Putty primer coat | 10d | 2026-07-08 | 2026-07-17 | 665FS-8d |  | Sector 43 | 9709066 |
| 667 | 37300.37600.38600.40500.42800.43900.61300.1120500 | Prehung door fixing | 8d | 2026-07-13 | 2026-07-20 | 666FS-5d |  | Sector 43 | 9709076 |
| 668 | 37300.37600.38600.40500.42800.43900.61300.1120600 | Painting 1st coat | 12d | 2026-07-21 | 2026-08-01 | 667 |  | Sector 43 | 9709086 |
| 669 | 37300.37600.38600.40500.42800.43900.61300.1120700 | False Cieling panel fixing | 10d | 2026-08-12 | 2026-08-21 | 652, 668 |  | Sector 43 | 9709096 |

| ID | WBS | Task | Duration | Start | Finish | Predecessors | Constraint | Calendar | Unique_Task_ID |
| --- | --- | --- | --- | --- | --- | --- | --- | --- | --- |
| 670 | 37300.37600.38600.40500.42800.43900.61200 | **13th floor** | 163d | 2026-03-22 | 2026-08-31 |  | start no earlier than 2026-03-22 | Sector 43 | 9697746 |
| 671 | 37300.37600.38600.40500.42800.43900.61200.1120800 | Block Work | 8d | 2026-03-22 | 2026-03-29 | 586FS-5d |  | Sector 43 | 9709106 |
| 672 | 37300.37600.38600.40500.42800.43900.61200.1120900 | Installation of temporary Main door | 4d | 2026-03-30 | 2026-04-02 | 671 |  | Sector 43 | 9709116 |
| 673 | 37300.37600.38600.40500.42800.43900.61200.1121000 | Fire sprinkler pipe fixing | 10d | 2026-05-18 | 2026-05-27 | 656, 671 |  | Sector 43 | 9709126 |
| 674 | 37300.37600.38600.40500.42800.43900.61200.1121100 | Internal Plumbing Works | 15d | 2026-03-30 | 2026-04-13 | 671 |  | Sector 43 | 9709136 |
| 675 | 37300.37600.38600.40500.42800.43900.61200.1121200 | Waterproofing | 21d | 2026-04-14 | 2026-05-04 | 674 |  | Sector 43 | 9709146 |
| 676 | 37300.37600.38600.40500.42800.43900.61200.1121300 | Internal Plaster | 15d | 2026-04-14 | 2026-04-28 | 674 |  | Sector 43 | 9709156 |
| 677 | 37300.37600.38600.40500.42800.43900.61200.1121400 | IPS flooring work | 13d | 2026-03-30 | 2026-04-11 | 671 |  | Sector 43 | 9709166 |
| 678 | 37300.37600.38600.40500.42800.43900.61200.1121500 | Toilet dado work | 25d | 2026-05-03 | 2026-05-27 | 675FS-2d, 676 |  | Sector 43 | 9709176 |
| 679 | 37300.37600.38600.40500.42800.43900.61200.1121600 | Toilet flooring work | 25d | 2026-05-28 | 2026-06-21 | 678 |  | Sector 43 | 9709186 |
| 680 | 37300.37600.38600.40500.42800.43900.61200.1121700 | Living dinning flooring | 31d | 2026-06-02 | 2026-07-02 | 677, 679FS-20d |  | Sector 43 | 9709196 |
| 681 | 37300.37600.38600.40500.42800.43900.61200.1121800 | Electrical wiring work | 12d | 2026-06-23 | 2026-07-04 | 680FS-10d |  | Sector 43 | 9709206 |
| 682 | 37300.37600.38600.40500.42800.43900.61200.1121900 | Aluminium door-window fixing | 19d | 2026-06-27 | 2026-07-15 | 672, 681FS-8d |  | Sector 43 | 9709216 |
| 683 | 37300.37600.38600.40500.42800.43900.61200.1122000 | Putty primer coat | 10d | 2026-07-08 | 2026-07-17 | 682FS-8d |  | Sector 43 | 9709226 |
| 684 | 37300.37600.38600.40500.42800.43900.61200.1122100 | Prehung door fixing | 8d | 2026-07-13 | 2026-07-20 | 683FS-5d |  | Sector 43 | 9709236 |
| 685 | 37300.37600.38600.40500.42800.43900.61200.1122200 | Painting 1st coat | 12d | 2026-07-21 | 2026-08-01 | 684 |  | Sector 43 | 9709246 |
| 686 | 37300.37600.38600.40500.42800.43900.61200.1122300 | False Cieling panel fixing | 10d | 2026-08-22 | 2026-08-31 | 669, 685 |  | Sector 43 | 9709256 |
| 687 | 37300.37600.38600.40500.42800.43900.61100 | **14th floor** | 171d | 2026-04-24 | 2026-10-11 |  | start no earlier than 2026-04-24 | Sector 43 | 9697756 |
| 688 | 37300.37600.38600.40500.42800.43900.61100.1122400 | Block Work | 36d | 2026-04-24 | 2026-05-29 | 444 |  | Sector 43 | 9709266 |
| 689 | 37300.37600.38600.40500.42800.43900.61100.1122500 | Installation of temporary Main door | 4d | 2026-05-30 | 2026-06-02 | 688 |  | Sector 43 | 9709276 |
| 690 | 37300.37600.38600.40500.42800.43900.61100.1122600 | Fire sprinkler pipe fixing | 10d | 2026-05-30 | 2026-06-08 | 673, 688 |  | Sector 43 | 9709286 |
| 691 | 37300.37600.38600.40500.42800.43900.61100.1122700 | Internal Plumbing Works | 15d | 2026-05-30 | 2026-06-13 | 688 |  | Sector 43 | 9709296 |
| 692 | 37300.37600.38600.40500.42800.43900.61100.1122800 | Waterproofing | 21d | 2026-06-14 | 2026-07-04 | 691 |  | Sector 43 | 9709306 |
| 693 | 37300.37600.38600.40500.42800.43900.61100.1122900 | Internal Plaster | 15d | 2026-06-14 | 2026-06-28 | 691 |  | Sector 43 | 9709316 |
| 694 | 37300.37600.38600.40500.42800.43900.61100.1123000 | IPS flooring work | 13d | 2026-05-30 | 2026-06-11 | 688 |  | Sector 43 | 9709326 |
| 695 | 37300.37600.38600.40500.42800.43900.61100.1123100 | Toilet dado work | 25d | 2026-07-03 | 2026-07-27 | 692FS-2d, 693 |  | Sector 43 | 9709336 |
| 696 | 37300.37600.38600.40500.42800.43900.61100.1123200 | Toilet flooring work | 25d | 2026-07-28 | 2026-08-21 | 695 |  | Sector 43 | 9709346 |
| 697 | 37300.37600.38600.40500.42800.43900.61100.1123300 | Living dinning flooring | 31d | 2026-08-02 | 2026-09-01 | 694, 696FS-20d |  | Sector 43 | 9709356 |
| 698 | 37300.37600.38600.40500.42800.43900.61100.1123400 | Electrical wiring work | 12d | 2026-08-23 | 2026-09-03 | 697FS-10d |  | Sector 43 | 9709366 |
| 699 | 37300.37600.38600.40500.42800.43900.61100.1123500 | Aluminium door-window fixing | 19d | 2026-08-27 | 2026-09-14 | 689, 698FS-8d |  | Sector 43 | 9709376 |
| 700 | 37300.37600.38600.40500.42800.43900.61100.1123600 | Putty primer coat | 10d | 2026-09-07 | 2026-09-16 | 699FS-8d |  | Sector 43 | 9709386 |
| 701 | 37300.37600.38600.40500.42800.43900.61100.1123700 | Prehung door fixing | 8d | 2026-09-12 | 2026-09-19 | 700FS-5d |  | Sector 43 | 9709396 |
| 702 | 37300.37600.38600.40500.42800.43900.61100.1123800 | Painting 1st coat | 12d | 2026-09-20 | 2026-10-01 | 701 |  | Sector 43 | 9709406 |
| 703 | 37300.37600.38600.40500.42800.43900.61100.1123900 | False Cieling panel fixing | 10d | 2026-10-02 | 2026-10-11 | 686, 702 |  | Sector 43 | 9709416 |

| ID | WBS | Task | Duration | Start | Finish | Predecessors | Constraint | Calendar | Unique_Task_ID |
| --- | --- | --- | --- | --- | --- | --- | --- | --- | --- |
| 704 | 37300.37600.38600.40500.42800.43900.61000 | **15th floor** | 172d | 2026-05-03 | 2026-10-21 |  | start no earlier than 2026-05-03 | Sector 43 | 9697766 |
| 705 | 37300.37600.38600.40500.42800.43900.61000.1124000 | Block Work | 36d | 2026-05-03 | 2026-06-07 | 445 |  | Sector 43 | 9709426 |
| 706 | 37300.37600.38600.40500.42800.43900.61000.1124100 | Installation of temporary Main door | 4d | 2026-06-08 | 2026-06-11 | 705 |  | Sector 43 | 9709436 |
| 707 | 37300.37600.38600.40500.42800.43900.61000.1124200 | Fire sprinkler pipe fixing | 10d | 2026-06-09 | 2026-06-18 | 690, 705 |  | Sector 43 | 9709446 |
| 708 | 37300.37600.38600.40500.42800.43900.61000.1124300 | Internal Plumbing Works | 15d | 2026-06-08 | 2026-06-22 | 705 |  | Sector 43 | 9709456 |
| 709 | 37300.37600.38600.40500.42800.43900.61000.1124400 | Waterproofing | 21d | 2026-06-23 | 2026-07-13 | 708 |  | Sector 43 | 9709466 |
| 710 | 37300.37600.38600.40500.42800.43900.61000.1124500 | Internal Plaster | 15d | 2026-06-23 | 2026-07-07 | 708 |  | Sector 43 | 9709476 |
| 711 | 37300.37600.38600.40500.42800.43900.61000.1124600 | IPS flooring work | 13d | 2026-06-08 | 2026-06-20 | 705 |  | Sector 43 | 9709486 |
| 712 | 37300.37600.38600.40500.42800.43900.61000.1124700 | Toilet dado work | 25d | 2026-07-12 | 2026-08-05 | 709FS-2d, 710 |  | Sector 43 | 9709496 |
| 713 | 37300.37600.38600.40500.42800.43900.61000.1124800 | Toilet flooring work | 25d | 2026-08-06 | 2026-08-30 | 712 |  | Sector 43 | 9709506 |
| 714 | 37300.37600.38600.40500.42800.43900.61000.1124900 | Living dinning flooring | 31d | 2026-08-11 | 2026-09-10 | 711, 713FS-20d |  | Sector 43 | 9709516 |
| 715 | 37300.37600.38600.40500.42800.43900.61000.1125000 | Electrical wiring work | 12d | 2026-09-01 | 2026-09-12 | 714FS-10d |  | Sector 43 | 9709526 |
| 716 | 37300.37600.38600.40500.42800.43900.61000.1125100 | Aluminium door-window fixing | 19d | 2026-09-05 | 2026-09-23 | 706, 715FS-8d |  | Sector 43 | 9709536 |
| 717 | 37300.37600.38600.40500.42800.43900.61000.1125200 | Putty primer coat | 10d | 2026-09-16 | 2026-09-25 | 716FS-8d |  | Sector 43 | 9709546 |
| 718 | 37300.37600.38600.40500.42800.43900.61000.1125300 | Prehung door fixing | 8d | 2026-09-21 | 2026-09-28 | 717FS-5d |  | Sector 43 | 9709556 |
| 719 | 37300.37600.38600.40500.42800.43900.61000.1125400 | Painting 1st coat | 12d | 2026-09-29 | 2026-10-10 | 718 |  | Sector 43 | 9709566 |
| 720 | 37300.37600.38600.40500.42800.43900.61000.1125500 | False Cieling panel fixing | 10d | 2026-10-12 | 2026-10-21 | 703, 719 |  | Sector 43 | 9709576 |
| 721 | 37300.37600.38600.40500.42800.43900.60900 | **16th floor** | 174d | 2026-05-11 | 2026-10-31 |  | start no earlier than 2026-05-11 | Sector 43 | 9697776 |
| 722 | 37300.37600.38600.40500.42800.43900.60900.1125600 | Block Work | 36d | 2026-05-11 | 2026-06-15 | 446 |  | Sector 43 | 9709586 |
| 723 | 37300.37600.38600.40500.42800.43900.60900.1125700 | Installation of temporary Main door | 4d | 2026-06-16 | 2026-06-19 | 722 |  | Sector 43 | 9709596 |
| 724 | 37300.37600.38600.40500.42800.43900.60900.1125800 | Fire sprinkler pipe fixing | 10d | 2026-06-19 | 2026-06-28 | 707, 722 |  | Sector 43 | 9709606 |
| 725 | 37300.37600.38600.40500.42800.43900.60900.1125900 | Internal Plumbing Works | 15d | 2026-06-16 | 2026-06-30 | 722 |  | Sector 43 | 9709616 |
| 726 | 37300.37600.38600.40500.42800.43900.60900.1126000 | Waterproofing | 21d | 2026-07-01 | 2026-07-21 | 725 |  | Sector 43 | 9709626 |
| 727 | 37300.37600.38600.40500.42800.43900.60900.1126100 | Internal Plaster | 15d | 2026-07-01 | 2026-07-15 | 725 |  | Sector 43 | 9709636 |
| 728 | 37300.37600.38600.40500.42800.43900.60900.1126200 | IPS flooring work | 13d | 2026-06-16 | 2026-06-28 | 722 |  | Sector 43 | 9709646 |
| 729 | 37300.37600.38600.40500.42800.43900.60900.1126300 | Toilet dado work | 25d | 2026-07-20 | 2026-08-13 | 726FS-2d, 727 |  | Sector 43 | 9709656 |
| 730 | 37300.37600.38600.40500.42800.43900.60900.1126400 | Toilet flooring work | 25d | 2026-08-14 | 2026-09-07 | 729 |  | Sector 43 | 9709666 |
| 731 | 37300.37600.38600.40500.42800.43900.60900.1126500 | Living dinning flooring | 31d | 2026-08-19 | 2026-09-18 | 728, 730FS-20d |  | Sector 43 | 9709676 |
| 732 | 37300.37600.38600.40500.42800.43900.60900.1126600 | Electrical wiring work | 12d | 2026-09-09 | 2026-09-20 | 731FS-10d |  | Sector 43 | 9709686 |
| 733 | 37300.37600.38600.40500.42800.43900.60900.1126700 | Aluminium door-window fixing | 19d | 2026-09-13 | 2026-10-01 | 723, 732FS-8d |  | Sector 43 | 9709696 |
| 734 | 37300.37600.38600.40500.42800.43900.60900.1126800 | Putty primer coat | 10d | 2026-09-24 | 2026-10-03 | 733FS-8d |  | Sector 43 | 9709706 |
| 735 | 37300.37600.38600.40500.42800.43900.60900.1126900 | Prehung door fixing | 8d | 2026-09-29 | 2026-10-06 | 734FS-5d |  | Sector 43 | 9709716 |
| 736 | 37300.37600.38600.40500.42800.43900.60900.1127000 | Painting 1st coat | 12d | 2026-10-07 | 2026-10-18 | 735 |  | Sector 43 | 9709726 |
| 737 | 37300.37600.38600.40500.42800.43900.60900.1127100 | False Cieling panel fixing | 10d | 2026-10-22 | 2026-10-31 | 720, 736 |  | Sector 43 | 9709736 |

| ID | WBS | Task | Duration | Start | Finish | Predecessors | Constraint | Calendar | Unique_Task_ID |
| --- | --- | --- | --- | --- | --- | --- | --- | --- | --- |
| 738 | 37300.37600.38600.40500.42800.43900.60800 | **17th floor** | 176d | 2026-05-19 | 2026-12-25 |  | start no earlier than 2026-05-19 | Sector 43 | 9697786 |
| 739 | 37300.37600.38600.40500.42800.43900.60800.1127200 | Block Work | 36d | 2026-05-19 | 2026-06-23 | 447 |  | Sector 43 | 9709746 |
| 740 | 37300.37600.38600.40500.42800.43900.60800.1127300 | Installation of temporary Main door | 4d | 2026-06-24 | 2026-06-27 | 739 |  | Sector 43 | 9709756 |
| 741 | 37300.37600.38600.40500.42800.43900.60800.1127400 | Fire sprinkler pipe fixing | 10d | 2026-06-29 | 2026-07-08 | 724, 739 |  | Sector 43 | 9709766 |
| 742 | 37300.37600.38600.40500.42800.43900.60800.1127500 | Internal Plumbing Works | 15d | 2026-06-24 | 2026-07-08 | 739 |  | Sector 43 | 9709776 |
| 743 | 37300.37600.38600.40500.42800.43900.60800.1127600 | Waterproofing | 21d | 2026-07-09 | 2026-07-29 | 742 |  | Sector 43 | 9709786 |
| 744 | 37300.37600.38600.40500.42800.43900.60800.1127700 | Internal Plaster | 15d | 2026-07-09 | 2026-07-23 | 742 |  | Sector 43 | 9709796 |
| 745 | 37300.37600.38600.40500.42800.43900.60800.1127800 | IPS flooring work | 13d | 2026-06-24 | 2026-07-06 | 739 |  | Sector 43 | 9709806 |
| 746 | 37300.37600.38600.40500.42800.43900.60800.1127900 | Toilet dado work | 25d | 2026-07-28 | 2026-08-21 | 743FS-2d, 744 |  | Sector 43 | 9709816 |
| 747 | 37300.37600.38600.40500.42800.43900.60800.1128000 | Toilet flooring work | 25d | 2026-08-22 | 2026-09-15 | 746 |  | Sector 43 | 9709826 |
| 748 | 37300.37600.38600.40500.42800.43900.60800.1128100 | Living dinning flooring | 31d | 2026-08-27 | 2026-09-26 | 745, 747FS-20d |  | Sector 43 | 9709836 |
| 749 | 37300.37600.38600.40500.42800.43900.60800.1128200 | Electrical wiring work | 12d | 2026-09-17 | 2026-09-28 | 748FS-10d |  | Sector 43 | 9709846 |
| 750 | 37300.37600.38600.40500.42800.43900.60800.1128300 | Aluminium door-window fixing | 19d | 2026-09-21 | 2026-10-09 | 740, 749FS-8d |  | Sector 43 | 9709856 |
| 751 | 37300.37600.38600.40500.42800.43900.60800.1128400 | Putty primer coat | 10d | 2026-10-02 | 2026-10-11 | 750FS-8d |  | Sector 43 | 9709866 |
| 752 | 37300.37600.38600.40500.42800.43900.60800.1128500 | Prehung door fixing | 8d | 2026-10-07 | 2026-10-14 | 751FS-5d |  | Sector 43 | 9709876 |
| 753 | 37300.37600.38600.40500.42800.43900.60800.1128600 | Painting 1st coat | 12d | 2026-10-15 | 2026-10-26 | 752 |  | Sector 43 | 9709886 |
| 754 | 37300.37600.38600.40500.42800.43900.60800.1128700 | False Cieling panel fixing | 10d | 2026-12-16 | 2026-12-25 | 737, 753 |  | Sector 43 | 9709896 |
| 755 | 37300.37600.38600.40500.42800.43900.60700 | **18th floor** | 178d | 2026-05-27 | 2027-01-04 |  | start no earlier than 2026-05-27 | Sector 43 | 9697796 |
| 756 | 37300.37600.38600.40500.42800.43900.60700.1128800 | Block Work | 36d | 2026-05-27 | 2026-07-01 | 448 |  | Sector 43 | 9709906 |
| 757 | 37300.37600.38600.40500.42800.43900.60700.1128900 | Installation of temporary Main door | 4d | 2026-07-02 | 2026-07-05 | 756 |  | Sector 43 | 9709916 |
| 758 | 37300.37600.38600.40500.42800.43900.60700.1129000 | Fire sprinkler pipe fixing | 10d | 2026-07-09 | 2026-07-18 | 741, 756 |  | Sector 43 | 9709926 |
| 759 | 37300.37600.38600.40500.42800.43900.60700.1129100 | Internal Plumbing Works | 15d | 2026-07-02 | 2026-07-16 | 756 |  | Sector 43 | 9709936 |
| 760 | 37300.37600.38600.40500.42800.43900.60700.1129200 | Waterproofing | 21d | 2026-07-17 | 2026-08-06 | 759 |  | Sector 43 | 9709946 |
| 761 | 37300.37600.38600.40500.42800.43900.60700.1129300 | Internal Plaster | 15d | 2026-07-17 | 2026-07-31 | 759 |  | Sector 43 | 9709956 |
| 762 | 37300.37600.38600.40500.42800.43900.60700.1129400 | IPS flooring work | 13d | 2026-07-02 | 2026-07-14 | 756 |  | Sector 43 | 9709966 |
| 763 | 37300.37600.38600.40500.42800.43900.60700.1129500 | Toilet dado work | 25d | 2026-08-05 | 2026-08-29 | 760FS-2d, 761 |  | Sector 43 | 9709976 |
| 764 | 37300.37600.38600.40500.42800.43900.60700.1129600 | Toilet flooring work | 25d | 2026-08-30 | 2026-09-23 | 763 |  | Sector 43 | 9709986 |
| 765 | 37300.37600.38600.40500.42800.43900.60700.1129700 | Living dinning flooring | 31d | 2026-09-04 | 2026-10-04 | 762, 764FS-20d |  | Sector 43 | 9709996 |
| 766 | 37300.37600.38600.40500.42800.43900.60700.1129800 | Electrical wiring work | 12d | 2026-09-25 | 2026-10-06 | 765FS-10d |  | Sector 43 | 9710006 |
| 767 | 37300.37600.38600.40500.42800.43900.60700.1129900 | Aluminium door-window fixing | 19d | 2026-09-29 | 2026-10-17 | 757, 766FS-8d |  | Sector 43 | 9710016 |
| 768 | 37300.37600.38600.40500.42800.43900.60700.1130000 | Putty primer coat | 10d | 2026-10-10 | 2026-10-19 | 767FS-8d |  | Sector 43 | 9710026 |
| 769 | 37300.37600.38600.40500.42800.43900.60700.1130100 | Prehung door fixing | 8d | 2026-10-15 | 2026-10-22 | 768FS-5d |  | Sector 43 | 9710036 |
| 770 | 37300.37600.38600.40500.42800.43900.60700.1130200 | Painting 1st coat | 12d | 2026-10-23 | 2026-12-18 | 769 |  | Sector 43 | 9710046 |
| 771 | 37300.37600.38600.40500.42800.43900.60700.1130300 | False Cieling panel fixing | 10d | 2026-12-26 | 2027-01-04 | 754, 770 |  | Sector 43 | 9710056 |

| ID | WBS | Task | Duration | Start | Finish | Predecessors | Constraint | Calendar | Unique_Task_ID |
| --- | --- | --- | --- | --- | --- | --- | --- | --- | --- |
| 772 | 37300.37600.38600.40500.42800.43900.60600 | **19th floor** | 180d | 2026-06-04 | 2027-01-14 |  | start no earlier than 2026-06-04 | Sector 43 | 9697806 |
| 773 | 37300.37600.38600.40500.42800.43900.60600.1130400 | Block Work | 36d | 2026-06-04 | 2026-07-09 | 449 |  | Sector 43 | 9710066 |
| 774 | 37300.37600.38600.40500.42800.43900.60600.1130500 | Installation of temporary Main door | 4d | 2026-07-10 | 2026-07-13 | 773 |  | Sector 43 | 9710076 |
| 775 | 37300.37600.38600.40500.42800.43900.60600.1130600 | Fire sprinkler pipe fixing | 10d | 2026-07-19 | 2026-07-28 | 758, 773 |  | Sector 43 | 9710086 |
| 776 | 37300.37600.38600.40500.42800.43900.60600.1130700 | Internal Plumbing Works | 15d | 2026-07-10 | 2026-07-24 | 773 |  | Sector 43 | 9710096 |
| 777 | 37300.37600.38600.40500.42800.43900.60600.1130800 | Waterproofing | 21d | 2026-07-25 | 2026-08-14 | 776 |  | Sector 43 | 9710106 |
| 778 | 37300.37600.38600.40500.42800.43900.60600.1130900 | Internal Plaster | 15d | 2026-07-25 | 2026-08-08 | 776 |  | Sector 43 | 9710116 |
| 779 | 37300.37600.38600.40500.42800.43900.60600.1131000 | IPS flooring work | 13d | 2026-07-10 | 2026-07-22 | 773 |  | Sector 43 | 9710126 |
| 780 | 37300.37600.38600.40500.42800.43900.60600.1131100 | Toilet dado work | 25d | 2026-08-13 | 2026-09-06 | 777FS-2d, 778 |  | Sector 43 | 9710136 |
| 781 | 37300.37600.38600.40500.42800.43900.60600.1131200 | Toilet flooring work | 25d | 2026-09-07 | 2026-10-01 | 780 |  | Sector 43 | 9710146 |
| 782 | 37300.37600.38600.40500.42800.43900.60600.1131300 | Living dinning flooring | 31d | 2026-09-12 | 2026-10-12 | 779, 781FS-20d |  | Sector 43 | 9710156 |
| 783 | 37300.37600.38600.40500.42800.43900.60600.1131400 | Electrical wiring work | 12d | 2026-10-03 | 2026-10-14 | 782FS-10d |  | Sector 43 | 9710166 |
| 784 | 37300.37600.38600.40500.42800.43900.60600.1131500 | Aluminium door-window fixing | 19d | 2026-10-07 | 2026-10-25 | 774, 783FS-8d |  | Sector 43 | 9710176 |
| 785 | 37300.37600.38600.40500.42800.43900.60600.1131600 | Putty primer coat | 10d | 2026-10-18 | 2026-10-27 | 784FS-8d |  | Sector 43 | 9710186 |
| 786 | 37300.37600.38600.40500.42800.43900.60600.1131700 | Prehung door fixing | 8d | 2026-10-23 | 2026-10-30 | 785FS-5d |  | Sector 43 | 9710196 |
| 787 | 37300.37600.38600.40500.42800.43900.60600.1131800 | Painting 1st coat | 12d | 2026-10-31 | 2026-12-26 | 786 |  | Sector 43 | 9710206 |
| 788 | 37300.37600.38600.40500.42800.43900.60600.1131900 | False Cieling panel fixing | 10d | 2027-01-05 | 2027-01-14 | 771, 787 |  | Sector 43 | 9710216 |
| 789 | 37300.37600.38600.40500.42800.43900.60500 | **20th floor** | 182d | 2026-06-12 | 2027-01-24 |  | start no earlier than 2026-06-12 | Sector 43 | 9697816 |
| 790 | 37300.37600.38600.40500.42800.43900.60500.1132000 | Block Work | 36d | 2026-06-12 | 2026-07-17 | 450 |  | Sector 43 | 9710226 |
| 791 | 37300.37600.38600.40500.42800.43900.60500.1132100 | Installation of temporary Main door | 4d | 2026-07-18 | 2026-07-21 | 790 |  | Sector 43 | 9710236 |
| 792 | 37300.37600.38600.40500.42800.43900.60500.1132200 | Fire sprinkler pipe fixing | 10d | 2026-07-29 | 2026-08-07 | 775, 790 |  | Sector 43 | 9710246 |
| 793 | 37300.37600.38600.40500.42800.43900.60500.1132300 | Internal Plumbing Works | 15d | 2026-07-18 | 2026-08-01 | 790 |  | Sector 43 | 9710256 |
| 794 | 37300.37600.38600.40500.42800.43900.60500.1132400 | Waterproofing | 21d | 2026-08-02 | 2026-08-22 | 793 |  | Sector 43 | 9710266 |
| 795 | 37300.37600.38600.40500.42800.43900.60500.1132500 | Internal Plaster | 15d | 2026-08-02 | 2026-08-16 | 793 |  | Sector 43 | 9710276 |
| 796 | 37300.37600.38600.40500.42800.43900.60500.1132600 | IPS flooring work | 13d | 2026-07-18 | 2026-07-30 | 790 |  | Sector 43 | 9710286 |
| 797 | 37300.37600.38600.40500.42800.43900.60500.1132700 | Toilet dado work | 25d | 2026-08-21 | 2026-09-14 | 794FS-2d, 795 |  | Sector 43 | 9710296 |
| 798 | 37300.37600.38600.40500.42800.43900.60500.1132800 | Toilet flooring work | 25d | 2026-09-15 | 2026-10-09 | 797 |  | Sector 43 | 9710306 |
| 799 | 37300.37600.38600.40500.42800.43900.60500.1132900 | Living dinning flooring | 31d | 2026-09-20 | 2026-10-20 | 798FS-20d |  | Sector 43 | 9710316 |
| 800 | 37300.37600.38600.40500.42800.43900.60500.1133000 | Electrical wiring work | 12d | 2026-10-11 | 2026-10-22 | 796, 799FS-10d |  | Sector 43 | 9710326 |
| 801 | 37300.37600.38600.40500.42800.43900.60500.1133100 | Aluminium door-window fixing | 19d | 2026-10-15 | 2026-12-17 | 791, 800FS-8d |  | Sector 43 | 9710336 |
| 802 | 37300.37600.38600.40500.42800.43900.60500.1133200 | Putty primer coat | 10d | 2026-10-26 | 2026-12-19 | 801FS-8d |  | Sector 43 | 9710346 |
| 803 | 37300.37600.38600.40500.42800.43900.60500.1133300 | Prehung door fixing | 8d | 2026-10-31 | 2026-12-22 | 802FS-5d |  | Sector 43 | 9710356 |
| 804 | 37300.37600.38600.40500.42800.43900.60500.1133400 | Painting 1st coat | 12d | 2026-12-23 | 2027-01-03 | 803 |  | Sector 43 | 9710366 |
| 805 | 37300.37600.38600.40500.42800.43900.60500.1133500 | False Cieling panel fixing | 10d | 2027-01-15 | 2027-01-24 | 788, 804 |  | Sector 43 | 9710376 |

| ID | WBS | Task | Duration | Start | Finish | Predecessors | Constraint | Calendar | Unique_Task_ID |
| --- | --- | --- | --- | --- | --- | --- | --- | --- | --- |
| 806 | 37300.37600.38600.40500.42800.43900.60400 | **21st floor** | 184d | 2026-06-20 | 2027-02-03 |  | start no earlier than 2026-06-20 | Sector 43 | 9697826 |
| 807 | 37300.37600.38600.40500.42800.43900.60400.1133600 | Block Work | 36d | 2026-06-20 | 2026-07-25 | 451 |  | Sector 43 | 9710386 |
| 808 | 37300.37600.38600.40500.42800.43900.60400.1133700 | Installation of temporary Main door | 4d | 2026-07-26 | 2026-07-29 | 807 |  | Sector 43 | 9710396 |
| 809 | 37300.37600.38600.40500.42800.43900.60400.1133800 | Fire sprinkler pipe fixing | 10d | 2026-08-08 | 2026-08-17 | 792, 807 |  | Sector 43 | 9710406 |
| 810 | 37300.37600.38600.40500.42800.43900.60400.1133900 | Internal Plumbing Works | 15d | 2026-07-26 | 2026-08-09 | 807 |  | Sector 43 | 9710416 |
| 811 | 37300.37600.38600.40500.42800.43900.60400.1134000 | Waterproofing | 21d | 2026-08-10 | 2026-08-30 | 810 |  | Sector 43 | 9710426 |
| 812 | 37300.37600.38600.40500.42800.43900.60400.1134100 | Internal Plaster | 15d | 2026-08-10 | 2026-08-24 | 810 |  | Sector 43 | 9710436 |
| 813 | 37300.37600.38600.40500.42800.43900.60400.1134200 | IPS flooring work | 13d | 2026-07-26 | 2026-08-07 | 807 |  | Sector 43 | 9710446 |
| 814 | 37300.37600.38600.40500.42800.43900.60400.1134300 | Toilet dado work | 25d | 2026-08-29 | 2026-09-22 | 811FS-2d, 812 |  | Sector 43 | 9710456 |
| 815 | 37300.37600.38600.40500.42800.43900.60400.1134400 | Toilet flooring work | 25d | 2026-09-23 | 2026-10-17 | 814 |  | Sector 43 | 9710466 |
| 816 | 37300.37600.38600.40500.42800.43900.60400.1134500 | Living dinning flooring | 31d | 2026-09-28 | 2026-10-28 | 813, 815FS-20d |  | Sector 43 | 9710476 |
| 817 | 37300.37600.38600.40500.42800.43900.60400.1134600 | Electrical wiring work | 12d | 2026-10-19 | 2026-10-30 | 816FS-10d |  | Sector 43 | 9710486 |
| 818 | 37300.37600.38600.40500.42800.43900.60400.1134700 | Aluminium door-window fixing | 19d | 2026-10-23 | 2026-12-25 | 808, 817FS-8d |  | Sector 43 | 9710496 |
| 819 | 37300.37600.38600.40500.42800.43900.60400.1134800 | Putty primer coat | 10d | 2026-12-18 | 2026-12-27 | 818FS-8d |  | Sector 43 | 9710506 |
| 820 | 37300.37600.38600.40500.42800.43900.60400.1134900 | Prehung door fixing | 8d | 2026-12-23 | 2026-12-30 | 819FS-5d |  | Sector 43 | 9710516 |
| 821 | 37300.37600.38600.40500.42800.43900.60400.1135000 | Painting 1st coat | 12d | 2026-12-31 | 2027-01-11 | 820 |  | Sector 43 | 9710526 |
| 822 | 37300.37600.38600.40500.42800.43900.60400.1135100 | False Cieling panel fixing | 10d | 2027-01-25 | 2027-02-03 | 805, 821 |  | Sector 43 | 9710536 |
| 823 | 37300.37600.38600.40500.42800.43900.60300 | **22nd floor** | 182d | 2026-07-02 | 2027-02-13 |  | start no earlier than 2026-07-02 | Sector 43 | 9697836 |
| 824 | 37300.37600.38600.40500.42800.43900.60300.1135200 | Block Work | 36d | 2026-07-02 | 2026-08-06 | 452 |  | Sector 43 | 9710546 |
| 825 | 37300.37600.38600.40500.42800.43900.60300.1135300 | Installation of temporary Main door | 4d | 2026-08-07 | 2026-08-10 | 824 |  | Sector 43 | 9710556 |
| 826 | 37300.37600.38600.40500.42800.43900.60300.1135400 | Fire sprinkler pipe fixing | 10d | 2026-08-18 | 2026-08-27 | 809, 824 |  | Sector 43 | 9710566 |
| 827 | 37300.37600.38600.40500.42800.43900.60300.1135500 | Internal Plumbing Works | 15d | 2026-08-07 | 2026-08-21 | 824 |  | Sector 43 | 9710576 |
| 828 | 37300.37600.38600.40500.42800.43900.60300.1135600 | Waterproofing | 21d | 2026-08-22 | 2026-09-11 | 827 |  | Sector 43 | 9710586 |
| 829 | 37300.37600.38600.40500.42800.43900.60300.1135700 | Internal Plaster | 15d | 2026-08-22 | 2026-09-05 | 827 |  | Sector 43 | 9710596 |
| 830 | 37300.37600.38600.40500.42800.43900.60300.1135800 | IPS flooring work | 13d | 2026-08-07 | 2026-08-19 | 824 |  | Sector 43 | 9710606 |
| 831 | 37300.37600.38600.40500.42800.43900.60300.1135900 | Toilet dado work | 25d | 2026-09-10 | 2026-10-04 | 828FS-2d, 829 |  | Sector 43 | 9710616 |
| 832 | 37300.37600.38600.40500.42800.43900.60300.1136000 | Toilet flooring work | 25d | 2026-10-05 | 2026-10-29 | 831 |  | Sector 43 | 9710626 |
| 833 | 37300.37600.38600.40500.42800.43900.60300.1136100 | Living dinning flooring | 31d | 2026-10-10 | 2026-12-24 | 830, 832FS-20d |  | Sector 43 | 9710636 |
| 834 | 37300.37600.38600.40500.42800.43900.60300.1136200 | Electrical wiring work | 12d | 2026-10-31 | 2026-12-26 | 833FS-10d |  | Sector 43 | 9710646 |
| 835 | 37300.37600.38600.40500.42800.43900.60300.1136300 | Aluminium door-window fixing | 19d | 2026-12-19 | 2027-01-06 | 825, 834FS-8d |  | Sector 43 | 9710656 |
| 836 | 37300.37600.38600.40500.42800.43900.60300.1136400 | Putty primer coat | 10d | 2026-12-30 | 2027-01-08 | 835FS-8d |  | Sector 43 | 9710666 |
| 837 | 37300.37600.38600.40500.42800.43900.60300.1136500 | Prehung door fixing | 8d | 2027-01-04 | 2027-01-11 | 836FS-5d |  | Sector 43 | 9710676 |
| 838 | 37300.37600.38600.40500.42800.43900.60300.1136600 | Painting 1st coat | 12d | 2027-01-12 | 2027-01-23 | 837 |  | Sector 43 | 9710686 |
| 839 | 37300.37600.38600.40500.42800.43900.60300.1136700 | False Cieling panel fixing | 10d | 2027-02-04 | 2027-02-13 | 822, 838 |  | Sector 43 | 9710696 |

| ID | WBS | Task | Duration | Start | Finish | Predecessors | Constraint | Calendar | Unique_Task_ID |
| --- | --- | --- | --- | --- | --- | --- | --- | --- | --- |
| 840 | 37300.37600.38600.40500.42800.43900.60200 | **23rd floor** | 184d | 2026-07-10 | 2027-02-23 |  | start no earlier than 2026-07-10 | Sector 43 | 9697846 |
| 841 | 37300.37600.38600.40500.42800.43900.60200.1136800 | Block Work | 36d | 2026-07-10 | 2026-08-14 | 453 |  | Sector 43 | 9710706 |
| 842 | 37300.37600.38600.40500.42800.43900.60200.1136900 | Installation of temporary Main door | 4d | 2026-08-15 | 2026-08-18 | 841 |  | Sector 43 | 9710716 |
| 843 | 37300.37600.38600.40500.42800.43900.60200.1137000 | Fire sprinkler pipe fixing | 10d | 2026-08-28 | 2026-09-06 | 826, 841 |  | Sector 43 | 9710726 |
| 844 | 37300.37600.38600.40500.42800.43900.60200.1137100 | Internal Plumbing Works | 15d | 2026-08-15 | 2026-08-29 | 841 |  | Sector 43 | 9710736 |
| 845 | 37300.37600.38600.40500.42800.43900.60200.1137200 | Waterproofing | 21d | 2026-08-30 | 2026-09-19 | 844 |  | Sector 43 | 9710746 |
| 846 | 37300.37600.38600.40500.42800.43900.60200.1137300 | Internal Plaster | 15d | 2026-08-30 | 2026-09-13 | 844 |  | Sector 43 | 9710756 |
| 847 | 37300.37600.38600.40500.42800.43900.60200.1137400 | IPS flooring work | 13d | 2026-08-15 | 2026-08-27 | 841 |  | Sector 43 | 9710766 |
| 848 | 37300.37600.38600.40500.42800.43900.60200.1137500 | Toilet dado work | 25d | 2026-09-18 | 2026-10-12 | 845FS-2d, 846 |  | Sector 43 | 9710776 |
| 849 | 37300.37600.38600.40500.42800.43900.60200.1137600 | Toilet flooring work | 25d | 2026-10-13 | 2026-12-21 | 848 |  | Sector 43 | 9710786 |
| 850 | 37300.37600.38600.40500.42800.43900.60200.1137700 | Living dinning flooring | 31d | 2026-10-18 | 2027-01-01 | 847, 849FS-20d |  | Sector 43 | 9710796 |
| 851 | 37300.37600.38600.40500.42800.43900.60200.1137800 | Electrical wiring work | 12d | 2026-12-23 | 2027-01-03 | 850FS-10d |  | Sector 43 | 9710806 |
| 852 | 37300.37600.38600.40500.42800.43900.60200.1137900 | Aluminium door-window fixing | 19d | 2026-12-27 | 2027-01-14 | 842, 851FS-8d |  | Sector 43 | 9710816 |
| 853 | 37300.37600.38600.40500.42800.43900.60200.1138000 | Putty primer coat | 10d | 2027-01-07 | 2027-01-16 | 852FS-8d |  | Sector 43 | 9710826 |
| 854 | 37300.37600.38600.40500.42800.43900.60200.1138100 | Prehung door fixing | 8d | 2027-01-12 | 2027-01-19 | 853FS-5d |  | Sector 43 | 9710836 |
| 855 | 37300.37600.38600.40500.42800.43900.60200.1138200 | Painting 1st coat | 12d | 2027-01-20 | 2027-01-31 | 854 |  | Sector 43 | 9710846 |
| 856 | 37300.37600.38600.40500.42800.43900.60200.1138300 | False Cieling panel fixing | 10d | 2027-02-14 | 2027-02-23 | 839, 855 |  | Sector 43 | 9710856 |
| 857 | 37300.37600.38600.40500.42800.43900.60100 | **24th floor** | 186d | 2026-07-18 | 2027-03-05 |  | start no earlier than 2026-07-18 | Sector 43 | 9697856 |
| 858 | 37300.37600.38600.40500.42800.43900.60100.1138400 | Block Work | 36d | 2026-07-18 | 2026-08-22 | 454 |  | Sector 43 | 9710866 |
| 859 | 37300.37600.38600.40500.42800.43900.60100.1138500 | Installation of temporary Main door | 4d | 2026-08-23 | 2026-08-26 | 858 |  | Sector 43 | 9710876 |
| 860 | 37300.37600.38600.40500.42800.43900.60100.1138600 | Fire sprinkler pipe fixing | 10d | 2026-09-07 | 2026-09-16 | 843, 858 |  | Sector 43 | 9710886 |
| 861 | 37300.37600.38600.40500.42800.43900.60100.1138700 | Internal Plumbing Works | 15d | 2026-08-23 | 2026-09-06 | 858 |  | Sector 43 | 9710896 |
| 862 | 37300.37600.38600.40500.42800.43900.60100.1138800 | Waterproofing | 21d | 2026-09-07 | 2026-09-27 | 861 |  | Sector 43 | 9710906 |
| 863 | 37300.37600.38600.40500.42800.43900.60100.1138900 | Internal Plaster | 15d | 2026-09-07 | 2026-09-21 | 861 |  | Sector 43 | 9710916 |
| 864 | 37300.37600.38600.40500.42800.43900.60100.1139000 | IPS flooring work | 13d | 2026-08-23 | 2026-09-04 | 858 |  | Sector 43 | 9710926 |
| 865 | 37300.37600.38600.40500.42800.43900.60100.1139100 | Toilet dado work | 25d | 2026-09-26 | 2026-10-20 | 862FS-2d, 863 |  | Sector 43 | 9710936 |
| 866 | 37300.37600.38600.40500.42800.43900.60100.1139200 | Toilet flooring work | 25d | 2026-10-21 | 2026-12-29 | 865 |  | Sector 43 | 9710946 |
| 867 | 37300.37600.38600.40500.42800.43900.60100.1139300 | Living dinning flooring | 31d | 2026-10-26 | 2027-01-09 | 864, 866FS-20d |  | Sector 43 | 9710956 |
| 868 | 37300.37600.38600.40500.42800.43900.60100.1139400 | Electrical wiring work | 12d | 2026-12-31 | 2027-01-11 | 867FS-10d |  | Sector 43 | 9710966 |
| 869 | 37300.37600.38600.40500.42800.43900.60100.1139500 | Aluminium door-window fixing | 19d | 2027-01-04 | 2027-01-22 | 859, 868FS-8d |  | Sector 43 | 9710976 |
| 870 | 37300.37600.38600.40500.42800.43900.60100.1139600 | Putty primer coat | 10d | 2027-01-15 | 2027-01-24 | 869FS-8d |  | Sector 43 | 9710986 |
| 871 | 37300.37600.38600.40500.42800.43900.60100.1139700 | Prehung door fixing | 8d | 2027-01-20 | 2027-01-27 | 870FS-5d |  | Sector 43 | 9710996 |
| 872 | 37300.37600.38600.40500.42800.43900.60100.1139800 | Painting 1st coat | 12d | 2027-01-28 | 2027-02-08 | 871 |  | Sector 43 | 9711006 |
| 873 | 37300.37600.38600.40500.42800.43900.60100.1139900 | False Cieling panel fixing | 10d | 2027-02-24 | 2027-03-05 | 856, 872 |  | Sector 43 | 9711016 |

| ID | WBS | Task | Duration | Start | Finish | Predecessors | Constraint | Calendar | Unique_Task_ID |
| --- | --- | --- | --- | --- | --- | --- | --- | --- | --- |
| 874 | 37300.37600.38600.40500.42800.43900.60000 | **25th floor** | 188d | 2026-07-26 | 2027-03-15 |  | start no earlier than 2026-07-26 | Sector 43 | 9697866 |
| 875 | 37300.37600.38600.40500.42800.43900.60000.1140000 | Block Work | 36d | 2026-07-26 | 2026-08-30 | 455 |  | Sector 43 | 9711026 |
| 876 | 37300.37600.38600.40500.42800.43900.60000.1140100 | Installation of temporary Main door | 4d | 2026-08-31 | 2026-09-03 | 875 |  | Sector 43 | 9711036 |
| 877 | 37300.37600.38600.40500.42800.43900.60000.1140200 | Fire sprinkler pipe fixing | 10d | 2026-09-17 | 2026-09-26 | 860, 875 |  | Sector 43 | 9711046 |
| 878 | 37300.37600.38600.40500.42800.43900.60000.1140300 | Internal Plumbing Works | 15d | 2026-08-31 | 2026-09-14 | 875 |  | Sector 43 | 9711056 |
| 879 | 37300.37600.38600.40500.42800.43900.60000.1140400 | Waterproofing | 21d | 2026-09-15 | 2026-10-05 | 878 |  | Sector 43 | 9711066 |
| 880 | 37300.37600.38600.40500.42800.43900.60000.1140500 | Internal Plaster | 15d | 2026-09-15 | 2026-09-29 | 878 |  | Sector 43 | 9711076 |
| 881 | 37300.37600.38600.40500.42800.43900.60000.1140600 | IPS flooring work | 13d | 2026-08-31 | 2026-09-12 | 875 |  | Sector 43 | 9711086 |
| 882 | 37300.37600.38600.40500.42800.43900.60000.1140700 | Toilet dado work | 25d | 2026-10-04 | 2026-10-28 | 879FS-2d, 880 |  | Sector 43 | 9711096 |
| 883 | 37300.37600.38600.40500.42800.43900.60000.1140800 | Toilet flooring work | 25d | 2026-10-29 | 2027-01-06 | 882 |  | Sector 43 | 9711106 |
| 884 | 37300.37600.38600.40500.42800.43900.60000.1140900 | Living dinning flooring | 31d | 2026-12-18 | 2027-01-17 | 881, 883FS-20d |  | Sector 43 | 9711116 |
| 885 | 37300.37600.38600.40500.42800.43900.60000.1141000 | Electrical wiring work | 12d | 2027-01-08 | 2027-01-19 | 884FS-10d |  | Sector 43 | 9711126 |
| 886 | 37300.37600.38600.40500.42800.43900.60000.1141100 | Aluminium door-window fixing | 19d | 2027-01-12 | 2027-01-30 | 876, 885FS-8d |  | Sector 43 | 9711136 |
| 887 | 37300.37600.38600.40500.42800.43900.60000.1141200 | Putty primer coat | 10d | 2027-01-23 | 2027-02-01 | 886FS-8d |  | Sector 43 | 9711146 |
| 888 | 37300.37600.38600.40500.42800.43900.60000.1141300 | Prehung door fixing | 8d | 2027-01-28 | 2027-02-04 | 887FS-5d |  | Sector 43 | 9711156 |
| 889 | 37300.37600.38600.40500.42800.43900.60000.1141400 | Painting 1st coat | 12d | 2027-02-05 | 2027-02-16 | 888 |  | Sector 43 | 9711166 |
| 890 | 37300.37600.38600.40500.42800.43900.60000.1141500 | False Cieling panel fixing | 10d | 2027-03-06 | 2027-03-15 | 873, 889 |  | Sector 43 | 9711176 |
| 891 | 37300.37600.38600.40500.42800.43900.59900 | **26th floor** | 190d | 2026-08-03 | 2027-03-25 |  | start no earlier than 2026-08-03 | Sector 43 | 9697876 |
| 892 | 37300.37600.38600.40500.42800.43900.59900.1141600 | Block Work | 36d | 2026-08-03 | 2026-09-07 | 456 |  | Sector 43 | 9711186 |
| 893 | 37300.37600.38600.40500.42800.43900.59900.1141700 | Installation of temporary Main door | 4d | 2026-09-08 | 2026-09-11 | 892 |  | Sector 43 | 9711196 |
| 894 | 37300.37600.38600.40500.42800.43900.59900.1141800 | Fire sprinkler pipe fixing | 10d | 2026-09-27 | 2026-10-06 | 877, 892 |  | Sector 43 | 9711206 |
| 895 | 37300.37600.38600.40500.42800.43900.59900.1141900 | Internal Plumbing Works | 15d | 2026-09-08 | 2026-09-22 | 892 |  | Sector 43 | 9711216 |
| 896 | 37300.37600.38600.40500.42800.43900.59900.1142000 | Waterproofing | 21d | 2026-09-23 | 2026-10-13 | 895 |  | Sector 43 | 9711226 |
| 897 | 37300.37600.38600.40500.42800.43900.59900.1142100 | Internal Plaster | 15d | 2026-09-23 | 2026-10-07 | 895 |  | Sector 43 | 9711236 |
| 898 | 37300.37600.38600.40500.42800.43900.59900.1142200 | IPS flooring work | 13d | 2026-09-08 | 2026-09-20 | 892 |  | Sector 43 | 9711246 |
| 899 | 37300.37600.38600.40500.42800.43900.59900.1142300 | Toilet dado work | 25d | 2026-10-12 | 2026-12-20 | 896FS-2d, 897 |  | Sector 43 | 9711256 |
| 900 | 37300.37600.38600.40500.42800.43900.59900.1142400 | Toilet flooring work | 25d | 2026-12-21 | 2027-01-14 | 899 |  | Sector 43 | 9711266 |
| 901 | 37300.37600.38600.40500.42800.43900.59900.1142500 | Living dinning flooring | 31d | 2026-12-26 | 2027-01-25 | 898, 900FS-20d |  | Sector 43 | 9711276 |
| 902 | 37300.37600.38600.40500.42800.43900.59900.1142600 | Electrical wiring work | 12d | 2027-01-16 | 2027-01-27 | 901FS-10d |  | Sector 43 | 9711286 |
| 903 | 37300.37600.38600.40500.42800.43900.59900.1142700 | Aluminium door-window fixing | 19d | 2027-01-20 | 2027-02-07 | 893, 902FS-8d |  | Sector 43 | 9711296 |
| 904 | 37300.37600.38600.40500.42800.43900.59900.1142800 | Putty primer coat | 10d | 2027-01-31 | 2027-02-09 | 903FS-8d |  | Sector 43 | 9711306 |
| 905 | 37300.37600.38600.40500.42800.43900.59900.1142900 | Prehung door fixing | 8d | 2027-02-05 | 2027-02-12 | 904FS-5d |  | Sector 43 | 9711316 |
| 906 | 37300.37600.38600.40500.42800.43900.59900.1143000 | Painting 1st coat | 12d | 2027-02-13 | 2027-02-24 | 905 |  | Sector 43 | 9711326 |
| 907 | 37300.37600.38600.40500.42800.43900.59900.1143100 | False Cieling panel fixing | 10d | 2027-03-16 | 2027-03-25 | 890, 906 |  | Sector 43 | 9711336 |

| ID | WBS | Task | Duration | Start | Finish | Predecessors | Constraint | Calendar | Unique_Task_ID |
| --- | --- | --- | --- | --- | --- | --- | --- | --- | --- |
| 908 | 37300.37600.38600.40500.42800.43900.59800 | **27th floor** | 192d | 2026-08-11 | 2027-04-04 |  | start no earlier than 2026-08-11 | Sector 43 | 9697886 |
| 909 | 37300.37600.38600.40500.42800.43900.59800.1143200 | Block Work | 36d | 2026-08-11 | 2026-09-15 | 457 |  | Sector 43 | 9711346 |
| 910 | 37300.37600.38600.40500.42800.43900.59800.1143300 | Installation of temporary Main door | 4d | 2026-09-16 | 2026-09-19 | 909 |  | Sector 43 | 9711356 |
| 911 | 37300.37600.38600.40500.42800.43900.59800.1143400 | Fire sprinkler pipe fixing | 10d | 2026-10-07 | 2026-10-16 | 894, 909 |  | Sector 43 | 9711366 |
| 912 | 37300.37600.38600.40500.42800.43900.59800.1143500 | Internal Plumbing Works | 15d | 2026-09-16 | 2026-09-30 | 909 |  | Sector 43 | 9711376 |
| 913 | 37300.37600.38600.40500.42800.43900.59800.1143600 | Waterproofing | 21d | 2026-10-01 | 2026-10-21 | 912 |  | Sector 43 | 9711386 |
| 914 | 37300.37600.38600.40500.42800.43900.59800.1143700 | Internal Plaster | 15d | 2026-10-01 | 2026-10-15 | 912 |  | Sector 43 | 9711396 |
| 915 | 37300.37600.38600.40500.42800.43900.59800.1143800 | IPS flooring work | 13d | 2026-09-16 | 2026-09-28 | 909 |  | Sector 43 | 9711406 |
| 916 | 37300.37600.38600.40500.42800.43900.59800.1143900 | Toilet dado work | 25d | 2026-10-20 | 2026-12-28 | 913FS-2d, 914 |  | Sector 43 | 9711416 |
| 917 | 37300.37600.38600.40500.42800.43900.59800.1144000 | Toilet flooring work | 25d | 2026-12-29 | 2027-01-22 | 916 |  | Sector 43 | 9711426 |
| 918 | 37300.37600.38600.40500.42800.43900.59800.1144100 | Living dinning flooring | 31d | 2027-01-03 | 2027-02-02 | 915, 917FS-20d |  | Sector 43 | 9711436 |
| 919 | 37300.37600.38600.40500.42800.43900.59800.1144200 | Electrical wiring work | 12d | 2027-01-24 | 2027-02-04 | 918FS-10d |  | Sector 43 | 9711446 |
| 920 | 37300.37600.38600.40500.42800.43900.59800.1144300 | Aluminium door-window fixing | 19d | 2027-01-28 | 2027-02-15 | 910, 919FS-8d |  | Sector 43 | 9711456 |
| 921 | 37300.37600.38600.40500.42800.43900.59800.1144400 | Putty primer coat | 10d | 2027-02-08 | 2027-02-17 | 920FS-8d |  | Sector 43 | 9711466 |
| 922 | 37300.37600.38600.40500.42800.43900.59800.1144500 | Prehung door fixing | 8d | 2027-02-13 | 2027-02-20 | 921FS-5d |  | Sector 43 | 9711476 |
| 923 | 37300.37600.38600.40500.42800.43900.59800.1144600 | Painting 1st coat | 12d | 2027-02-21 | 2027-03-04 | 922 |  | Sector 43 | 9711486 |
| 924 | 37300.37600.38600.40500.42800.43900.59800.1144700 | False Cieling panel fixing | 10d | 2027-03-26 | 2027-04-04 | 907, 923 |  | Sector 43 | 9711496 |
| 925 | 37300.37600.38600.40500.42800.43900.59700 | **28th floor** | 206d | 2026-08-21 | 2027-04-28 |  | start no earlier than 2026-08-21 | Sector 43 | 9697896 |
| 926 | 37300.37600.38600.40500.42800.43900.59700.1144800 | Block Work | 36d | 2026-08-21 | 2026-09-25 | 458 |  | Sector 43 | 9711506 |
| 927 | 37300.37600.38600.40500.42800.43900.59700.1144900 | Installation of temporary Main door | 4d | 2026-09-26 | 2026-09-29 | 926 |  | Sector 43 | 9711516 |
| 928 | 37300.37600.38600.40500.42800.43900.59700.1145000 | Fire sprinkler pipe fixing | 10d | 2026-10-17 | 2026-10-26 | 911, 926 |  | Sector 43 | 9711526 |
| 929 | 37300.37600.38600.40500.42800.43900.59700.1145100 | Internal Plumbing Works | 15d | 2026-09-26 | 2026-10-10 | 926 |  | Sector 43 | 9711536 |
| 930 | 37300.37600.38600.40500.42800.43900.59700.1145200 | Waterproofing | 21d | 2026-10-11 | 2026-10-31 | 929 |  | Sector 43 | 9711546 |
| 931 | 37300.37600.38600.40500.42800.43900.59700.1145300 | Internal Plaster | 15d | 2026-10-11 | 2026-10-25 | 929 |  | Sector 43 | 9711556 |
| 932 | 37300.37600.38600.40500.42800.43900.59700.1145400 | IPS flooring work | 13d | 2026-09-26 | 2026-10-08 | 926 |  | Sector 43 | 9711566 |
| 933 | 37300.37600.38600.40500.42800.43900.59700.1145500 | Toilet dado work | 60d | 2026-10-30 | 2027-02-11 | 930FS-2d, 931 |  | Sector 43 | 9711576 |
| 934 | 37300.37600.38600.40500.42800.43900.59700.1145600 | Toilet flooring work | 25d | 2027-02-12 | 2027-03-08 | 933 |  | Sector 43 | 9711586 |
| 935 | 37300.37600.38600.40500.42800.43900.59700.1145700 | Living dinning flooring | 31d | 2027-02-17 | 2027-03-19 | 932, 934FS-20d |  | Sector 43 | 9711596 |
| 936 | 37300.37600.38600.40500.42800.43900.59700.1145800 | Electrical wiring work | 12d | 2027-03-10 | 2027-03-21 | 935FS-10d |  | Sector 43 | 9711606 |
| 937 | 37300.37600.38600.40500.42800.43900.59700.1145900 | Aluminium door-window fixing | 19d | 2027-03-14 | 2027-04-01 | 927, 936FS-8d |  | Sector 43 | 9711616 |
| 938 | 37300.37600.38600.40500.42800.43900.59700.1146000 | Putty primer coat | 10d | 2027-03-25 | 2027-04-03 | 937FS-8d |  | Sector 43 | 9711626 |
| 939 | 37300.37600.38600.40500.42800.43900.59700.1146100 | Prehung door fixing | 8d | 2027-03-30 | 2027-04-06 | 938FS-5d |  | Sector 43 | 9711636 |
| 940 | 37300.37600.38600.40500.42800.43900.59700.1146200 | Painting 1st coat | 12d | 2027-04-07 | 2027-04-18 | 939 |  | Sector 43 | 9711646 |
| 941 | 37300.37600.38600.40500.42800.43900.59700.1146300 | False Cieling panel fixing | 10d | 2027-04-19 | 2027-04-28 | 924, 940 |  | Sector 43 | 9711656 |

| ID | WBS | Task | Duration | Start | Finish | Predecessors | Constraint | Calendar | Unique_Task_ID |
| --- | --- | --- | --- | --- | --- | --- | --- | --- | --- |
| 942 | 37300.37600.38600.40500.42800.43900.59600 | **29th floor** | 209d | 2026-08-28 | 2027-05-08 |  | start no earlier than 2026-08-28 | Sector 43 | 9697906 |
| 943 | 37300.37600.38600.40500.42800.43900.59600.1146400 | Block Work | 36d | 2026-08-28 | 2026-10-02 | 459 |  | Sector 43 | 9711666 |
| 944 | 37300.37600.38600.40500.42800.43900.59600.1146500 | Installation of temporary Main door | 4d | 2026-10-03 | 2026-10-06 | 943 |  | Sector 43 | 9711676 |
| 945 | 37300.37600.38600.40500.42800.43900.59600.1146600 | Fire sprinkler pipe fixing | 10d | 2026-10-27 | 2026-12-20 | 928, 943 |  | Sector 43 | 9711686 |
| 946 | 37300.37600.38600.40500.42800.43900.59600.1146700 | Internal Plumbing Works | 15d | 2026-10-03 | 2026-10-17 | 943 |  | Sector 43 | 9711696 |
| 947 | 37300.37600.38600.40500.42800.43900.59600.1146800 | Waterproofing | 21d | 2026-10-18 | 2026-12-22 | 946 |  | Sector 43 | 9711706 |
| 948 | 37300.37600.38600.40500.42800.43900.59600.1146900 | Internal Plaster | 15d | 2026-10-18 | 2026-12-16 | 946 |  | Sector 43 | 9711716 |
| 949 | 37300.37600.38600.40500.42800.43900.59600.1147000 | IPS flooring work | 13d | 2026-10-03 | 2026-10-15 | 943 |  | Sector 43 | 9711726 |
| 950 | 37300.37600.38600.40500.42800.43900.59600.1147100 | Toilet dado work | 25d | 2026-12-21 | 2027-01-14 | 947FS-2d, 948 |  | Sector 43 | 9711736 |
| 951 | 37300.37600.38600.40500.42800.43900.59600.1147200 | Toilet flooring work | 25d | 2027-01-15 | 2027-02-08 | 950 |  | Sector 43 | 9711746 |
| 952 | 37300.37600.38600.40500.42800.43900.59600.1147300 | Living dinning flooring | 31d | 2027-01-20 | 2027-02-19 | 949, 951FS-20d |  | Sector 43 | 9711756 |
| 953 | 37300.37600.38600.40500.42800.43900.59600.1147400 | Electrical wiring work | 12d | 2027-02-10 | 2027-02-21 | 952FS-10d |  | Sector 43 | 9711766 |
| 954 | 37300.37600.38600.40500.42800.43900.59600.1147500 | Aluminium door-window fixing | 19d | 2027-02-14 | 2027-03-04 | 944, 953FS-8d |  | Sector 43 | 9711776 |
| 955 | 37300.37600.38600.40500.42800.43900.59600.1147600 | Putty primer coat | 10d | 2027-02-25 | 2027-03-06 | 954FS-8d |  | Sector 43 | 9711786 |
| 956 | 37300.37600.38600.40500.42800.43900.59600.1147700 | Prehung door fixing | 8d | 2027-03-02 | 2027-03-09 | 955FS-5d |  | Sector 43 | 9711796 |
| 957 | 37300.37600.38600.40500.42800.43900.59600.1147800 | Painting 1st coat | 12d | 2027-03-10 | 2027-03-21 | 956 |  | Sector 43 | 9711806 |
| 958 | 37300.37600.38600.40500.42800.43900.59600.1147900 | False Cieling panel fixing | 10d | 2027-04-29 | 2027-05-08 | 941, 957 |  | Sector 43 | 9711816 |
| 959 | 37300.37600.38600.40500.42800.43900.59500 | **30th floor** | 212d | 2026-09-04 | 2027-05-18 |  | start no earlier than 2026-09-04 | Sector 43 | 9697916 |
| 960 | 37300.37600.38600.40500.42800.43900.59500.1148000 | Block Work | 36d | 2026-09-04 | 2026-10-09 | 460 |  | Sector 43 | 9711826 |
| 961 | 37300.37600.38600.40500.42800.43900.59500.1148100 | Installation of temporary Main door | 4d | 2026-10-10 | 2026-10-13 | 960 |  | Sector 43 | 9711836 |
| 962 | 37300.37600.38600.40500.42800.43900.59500.1148200 | Fire sprinkler pipe fixing | 10d | 2026-12-21 | 2026-12-30 | 945, 960 |  | Sector 43 | 9711846 |
| 963 | 37300.37600.38600.40500.42800.43900.59500.1148300 | Internal Plumbing Works | 15d | 2026-10-10 | 2026-10-24 | 960 |  | Sector 43 | 9711856 |
| 964 | 37300.37600.38600.40500.42800.43900.59500.1148400 | Waterproofing | 21d | 2026-10-25 | 2026-12-29 | 963 |  | Sector 43 | 9711866 |
| 965 | 37300.37600.38600.40500.42800.43900.59500.1148500 | Internal Plaster | 15d | 2026-10-25 | 2026-12-23 | 963 |  | Sector 43 | 9711876 |
| 966 | 37300.37600.38600.40500.42800.43900.59500.1148600 | IPS flooring work | 13d | 2026-10-10 | 2026-10-22 | 960 |  | Sector 43 | 9711886 |
| 967 | 37300.37600.38600.40500.42800.43900.59500.1148700 | Toilet dado work | 25d | 2026-12-28 | 2027-01-21 | 964FS-2d, 965 |  | Sector 43 | 9711896 |
| 968 | 37300.37600.38600.40500.42800.43900.59500.1148800 | Toilet flooring work | 25d | 2027-01-22 | 2027-02-15 | 967 |  | Sector 43 | 9711906 |
| 969 | 37300.37600.38600.40500.42800.43900.59500.1148900 | Living dinning flooring | 31d | 2027-01-27 | 2027-02-26 | 966, 968FS-20d |  | Sector 43 | 9711916 |
| 970 | 37300.37600.38600.40500.42800.43900.59500.1149000 | Electrical wiring work | 12d | 2027-02-17 | 2027-02-28 | 969FS-10d |  | Sector 43 | 9711926 |
| 971 | 37300.37600.38600.40500.42800.43900.59500.1149100 | Aluminium door-window fixing | 19d | 2027-02-21 | 2027-03-11 | 961, 970FS-8d |  | Sector 43 | 9711936 |
| 972 | 37300.37600.38600.40500.42800.43900.59500.1149200 | Putty primer coat | 10d | 2027-03-04 | 2027-03-13 | 971FS-8d |  | Sector 43 | 9711946 |
| 973 | 37300.37600.38600.40500.42800.43900.59500.1149300 | Prehung door fixing | 8d | 2027-03-09 | 2027-03-16 | 972FS-5d |  | Sector 43 | 9711956 |
| 974 | 37300.37600.38600.40500.42800.43900.59500.1149400 | Painting 1st coat | 12d | 2027-03-17 | 2027-03-28 | 973 |  | Sector 43 | 9711966 |
| 975 | 37300.37600.38600.40500.42800.43900.59500.1149500 | False Cieling panel fixing | 10d | 2027-05-09 | 2027-05-18 | 958, 974 |  | Sector 43 | 9711976 |

| ID | WBS | Task | Duration | Start | Finish | Predecessors | Constraint | Calendar | Unique_Task_ID |
| --- | --- | --- | --- | --- | --- | --- | --- | --- | --- |
| 976 | 37300.37600.38600.40500.42800.43900.59400 | **31st floor** | 215d | 2026-09-11 | 2027-05-28 |  | start no earlier than 2026-09-11 | Sector 43 | 9697926 |
| 977 | 37300.37600.38600.40500.42800.43900.59400.1149600 | Block Work | 36d | 2026-09-11 | 2026-10-16 | 461 |  | Sector 43 | 9711986 |
| 978 | 37300.37600.38600.40500.42800.43900.59400.1149700 | Installation of temporary Main door | 4d | 2026-10-17 | 2026-10-20 | 977 |  | Sector 43 | 9711996 |
| 979 | 37300.37600.38600.40500.42800.43900.59400.1149800 | Fire sprinkler pipe fixing | 10d | 2026-12-31 | 2027-01-09 | 962, 977 |  | Sector 43 | 9712006 |
| 980 | 37300.37600.38600.40500.42800.43900.59400.1149900 | Internal Plumbing Works | 15d | 2026-10-17 | 2026-10-31 | 977 |  | Sector 43 | 9712016 |
| 981 | 37300.37600.38600.40500.42800.43900.59400.1150000 | Waterproofing | 21d | 2026-12-16 | 2027-01-05 | 980 |  | Sector 43 | 9712026 |
| 982 | 37300.37600.38600.40500.42800.43900.59400.1150100 | Internal Plaster | 15d | 2026-12-16 | 2026-12-30 | 980 |  | Sector 43 | 9712036 |
| 983 | 37300.37600.38600.40500.42800.43900.59400.1150200 | IPS flooring work | 13d | 2026-10-17 | 2026-10-29 | 977 |  | Sector 43 | 9712046 |
| 984 | 37300.37600.38600.40500.42800.43900.59400.1150300 | Toilet dado work | 25d | 2027-01-04 | 2027-01-28 | 981FS-2d, 982 |  | Sector 43 | 9712056 |
| 985 | 37300.37600.38600.40500.42800.43900.59400.1150400 | Toilet flooring work | 25d | 2027-01-29 | 2027-02-22 | 984 |  | Sector 43 | 9712066 |
| 986 | 37300.37600.38600.40500.42800.43900.59400.1150500 | Living dinning flooring | 31d | 2027-02-03 | 2027-03-05 | 983, 985FS-20d |  | Sector 43 | 9712076 |
| 987 | 37300.37600.38600.40500.42800.43900.59400.1150600 | Electrical wiring work | 12d | 2027-02-24 | 2027-03-07 | 986FS-10d |  | Sector 43 | 9712086 |
| 988 | 37300.37600.38600.40500.42800.43900.59400.1150700 | Aluminium door-window fixing | 19d | 2027-02-28 | 2027-03-18 | 978, 987FS-8d |  | Sector 43 | 9712096 |
| 989 | 37300.37600.38600.40500.42800.43900.59400.1150800 | Putty primer coat | 10d | 2027-03-11 | 2027-03-20 | 988FS-8d |  | Sector 43 | 9712106 |
| 990 | 37300.37600.38600.40500.42800.43900.59400.1150900 | Prehung door fixing | 8d | 2027-03-16 | 2027-03-23 | 989FS-5d |  | Sector 43 | 9712116 |
| 991 | 37300.37600.38600.40500.42800.43900.59400.1151000 | Painting 1st coat | 12d | 2027-03-24 | 2027-04-04 | 990 |  | Sector 43 | 9712126 |
| 992 | 37300.37600.38600.40500.42800.43900.59400.1151100 | False Cieling panel fixing | 10d | 2027-05-19 | 2027-05-28 | 975, 991 |  | Sector 43 | 9712136 |
| 993 | 37300.37600.38600.40500.42800.223900 | **Terrace finishing** | 100d | 2027-05-04 | 2027-08-11 |  | start no earlier than 2027-05-04 | Sector 43 | 9700506 |
| 994 | 37300.37600.38600.40500.42800.223900.852300 | Terrace waterproofing | 40d | 2027-05-04 | 2027-06-12 | 1077FS+10d, 463 |  | Sector 43 | 9702416 |
| 995 | 37300.37600.38600.40500.42800.223900.852400 | Terrace finishing | 60d | 2027-06-13 | 2027-08-11 | 994 |  | Sector 43 | 9702426 |
| 996 | 37300.37600.38600.40500.42800.116400 | **Common area finishing** | 274d | 2026-09-08 | 2027-07-23 |  | start no earlier than 2026-09-08 | Sector 43 | 9698656 |
| 997 | 37300.37600.38600.40500.42800.116400.852500 | Masonary Work | 60d | 2026-09-08 | 2026-12-21 | 424 |  | Sector 43 | 9702436 |
| 998 | 37300.37600.38600.40500.42800.116400.852600 | Fire sprinkler pipe fixing | 90d | 2026-09-18 | 2027-01-30 | 424FS+10d |  | Sector 43 | 9702446 |
| 999 | 37300.37600.38600.40500.42800.116400.852700 | Corridoor, staircase, shaft Plaster & whitewash | 90d | 2026-10-28 | 2027-03-11 | 997FS-10d |  | Sector 43 | 9702456 |
| 1000 | 37300.37600.38600.40500.42800.116400.852800 | Staircase railing fixing | 45d | 2026-10-18 | 2027-01-15 | 997FS-20d |  | Sector 43 | 9702466 |
| 1001 | 37300.37600.38600.40500.42800.116400.852900 | Fire staircase flooring | 60d | 2026-12-27 | 2027-02-24 | 1000FS-20d |  | Sector 43 | 9702476 |
| 1002 | 37300.37600.38600.40500.42800.116400.853000 | Main staircase flooring | 60d | 2026-12-27 | 2027-02-24 | 1000FS-20d |  | Sector 43 | 9702486 |
| 1003 | 37300.37600.38600.40500.42800.116400.853100 | Fire door work | 45d | 2027-01-26 | 2027-03-11 | 1001FS-30d |  | Sector 43 | 9702496 |
| 1004 | 37300.37600.38600.40500.42800.116400.853200 | Lobby flooring & Corridor | 114d | 2027-01-06 | 2027-04-29 | 1002FS-50d |  | Sector 43 | 9702506 |
| 1005 | 37300.37600.38600.40500.42800.116400.853300 | Ceiling & wall putty-primer | 60d | 2027-03-16 | 2027-05-14 | 1004FS-45d |  | Sector 43 | 9702516 |
| 1006 | 37300.37600.38600.40500.42800.116400.853400 | Ceiling & wall painting | 90d | 2027-03-31 | 2027-06-28 | 1005FS-45d |  | Sector 43 | 9702526 |
| 1007 | 37300.37600.38600.40500.42800.116400.853500 | Electrical wiring work | 60d | 2027-05-05 | 2027-07-03 | 1005FS-10d |  | Sector 43 | 9702536 |
| 1008 | 37300.37600.38600.40500.42800.116400.853600 | Light fixture supply & installation | 30d | 2027-06-24 | 2027-07-23 | 1007FS-10d |  | Sector 43 | 9702546 |
| 1009 | 37300.37600.38600.40500.42800.116400.853700 | Installation of fire signages including Basements | 30d | 2027-06-19 | 2027-07-18 | 1006FS-10d |  | Sector 43 | 9702556 |

| ID | WBS | Task | Duration | Start | Finish | Predecessors | Constraint | Calendar | Unique_Task_ID |
| --- | --- | --- | --- | --- | --- | --- | --- | --- | --- |
| 1010 | 37300.37600.38600.40500.42800.50300 | **Balcony Glass Railing** | 217d | 2025-12-30 | 2026-08-03 |  | start no earlier than 2025-12-30 | Sector 43 | 9697586 |
| 1011 | 37300.37600.38600.40500.42800.50300.853800 | 1st Floor | 7d | 2025-12-30 | 2026-01-05 | 467 |  | Sector 43 | 9702566 |
| 1012 | 37300.37600.38600.40500.42800.50300.853900 | 2nd Floor | 7d | 2026-01-06 | 2026-01-12 | 1011 |  | Sector 43 | 9702576 |
| 1013 | 37300.37600.38600.40500.42800.50300.854000 | 3rd Floor | 7d | 2026-01-13 | 2026-01-19 | 1012 |  | Sector 43 | 9702586 |
| 1014 | 37300.37600.38600.40500.42800.50300.854100 | 4th Floor | 7d | 2026-01-20 | 2026-01-26 | 1013 |  | Sector 43 | 9702596 |
| 1015 | 37300.37600.38600.40500.42800.50300.854200 | 5th Floor | 7d | 2026-01-27 | 2026-02-02 | 1014 |  | Sector 43 | 9702606 |
| 1016 | 37300.37600.38600.40500.42800.50300.854300 | 6th Floor | 7d | 2026-02-03 | 2026-02-09 | 1015 |  | Sector 43 | 9702616 |
| 1017 | 37300.37600.38600.40500.42800.50300.854400 | 7th Floor | 7d | 2026-02-10 | 2026-02-16 | 1016 |  | Sector 43 | 9702626 |
| 1018 | 37300.37600.38600.40500.42800.50300.854500 | 8th Floor | 7d | 2026-02-17 | 2026-02-23 | 1017 |  | Sector 43 | 9702636 |
| 1019 | 37300.37600.38600.40500.42800.50300.854600 | 9th Floor | 7d | 2026-02-24 | 2026-03-02 | 1018 |  | Sector 43 | 9702646 |
| 1020 | 37300.37600.38600.40500.42800.50300.854700 | 10th Floor | 7d | 2026-03-03 | 2026-03-09 | 1019 |  | Sector 43 | 9702656 |
| 1021 | 37300.37600.38600.40500.42800.50300.854800 | 11th Floor | 7d | 2026-03-10 | 2026-03-16 | 1020 |  | Sector 43 | 9702666 |
| 1022 | 37300.37600.38600.40500.42800.50300.854900 | 12th Floor | 7d | 2026-03-17 | 2026-03-23 | 1021 |  | Sector 43 | 9702676 |
| 1023 | 37300.37600.38600.40500.42800.50300.855000 | 13th Floor | 7d | 2026-03-24 | 2026-03-30 | 1022 |  | Sector 43 | 9702686 |
| 1024 | 37300.37600.38600.40500.42800.50300.855100 | 14th Floor | 7d | 2026-03-31 | 2026-04-06 | 1023 |  | Sector 43 | 9702696 |
| 1025 | 37300.37600.38600.40500.42800.50300.855200 | 15th Floor | 7d | 2026-04-07 | 2026-04-13 | 1024 |  | Sector 43 | 9702706 |
| 1026 | 37300.37600.38600.40500.42800.50300.855300 | 16th Floor | 7d | 2026-04-14 | 2026-04-20 | 1025 |  | Sector 43 | 9702716 |
| 1027 | 37300.37600.38600.40500.42800.50300.855400 | 17th Floor | 7d | 2026-04-21 | 2026-04-27 | 1026 |  | Sector 43 | 9702726 |
| 1028 | 37300.37600.38600.40500.42800.50300.855500 | 18th Floor | 7d | 2026-04-28 | 2026-05-04 | 1027 |  | Sector 43 | 9702736 |
| 1029 | 37300.37600.38600.40500.42800.50300.855600 | 19th Floor | 7d | 2026-05-05 | 2026-05-11 | 1028 |  | Sector 43 | 9702746 |
| 1030 | 37300.37600.38600.40500.42800.50300.855700 | 20th Floor | 7d | 2026-05-12 | 2026-05-18 | 1029 |  | Sector 43 | 9702756 |
| 1031 | 37300.37600.38600.40500.42800.50300.855800 | 21st Floor | 7d | 2026-05-19 | 2026-05-25 | 1030 |  | Sector 43 | 9702766 |
| 1032 | 37300.37600.38600.40500.42800.50300.855900 | 22nd Floor | 7d | 2026-05-26 | 2026-06-01 | 1031 |  | Sector 43 | 9702776 |
| 1033 | 37300.37600.38600.40500.42800.50300.856000 | 23rd Floor | 7d | 2026-06-02 | 2026-06-08 | 1032 |  | Sector 43 | 9702786 |
| 1034 | 37300.37600.38600.40500.42800.50300.856100 | 24th Floor | 7d | 2026-06-09 | 2026-06-15 | 1033 |  | Sector 43 | 9702796 |
| 1035 | 37300.37600.38600.40500.42800.50300.856200 | 25th Floor | 7d | 2026-06-16 | 2026-06-22 | 1034 |  | Sector 43 | 9702806 |
| 1036 | 37300.37600.38600.40500.42800.50300.856300 | 26th Floor | 7d | 2026-06-23 | 2026-06-29 | 1035 |  | Sector 43 | 9702816 |
| 1037 | 37300.37600.38600.40500.42800.50300.856400 | 27th Floor | 7d | 2026-06-30 | 2026-07-06 | 1036 |  | Sector 43 | 9702826 |
| 1038 | 37300.37600.38600.40500.42800.50300.856500 | 28th Floor | 7d | 2026-07-07 | 2026-07-13 | 1037 |  | Sector 43 | 9702836 |
| 1039 | 37300.37600.38600.40500.42800.50300.856600 | 29th Floor | 7d | 2026-07-14 | 2026-07-20 | 1038 |  | Sector 43 | 9702846 |
| 1040 | 37300.37600.38600.40500.42800.50300.856700 | 30th Floor | 7d | 2026-07-21 | 2026-07-27 | 1039 |  | Sector 43 | 9702856 |
| 1041 | 37300.37600.38600.40500.42800.50300.856800 | 31st Floor | 7d | 2026-07-28 | 2026-08-03 | 1040 |  | Sector 43 | 9702866 |

| ID | WBS | Task | Duration | Start | Finish | Predecessors | Constraint | Calendar | Unique_Task_ID |
| --- | --- | --- | --- | --- | --- | --- | --- | --- | --- |
| 1042 | 37300.37600.38600.40500.116300 | **MEP work** | 332d | 2026-09-21 | 2027-10-02 |  | start no earlier than 2026-09-21 | Sector 43 | 9698686 |
| 1043 | 37300.37600.38600.40500.116300.121000 | **Electrical work** | 298d | 2026-10-18 | 2027-09-25 |  | start no earlier than 2026-10-18 | Sector 43 | 9698736 |
| 1044 | 37300.37600.38600.40500.116300.121000.856900 | Cable Tray | 90d | 2026-10-18 | 2027-03-01 | 429 |  | Sector 43 | 9702876 |
| 1045 | 37300.37600.38600.40500.116300.121000.857000 | Cable, main & sub main | 90d | 2026-10-18 | 2027-03-01 | 1044FS-90d |  | Sector 43 | 9702886 |
| 1046 | 37300.37600.38600.40500.116300.121000.857100 | LT panel & DB | 90d | 2027-01-01 | 2027-03-31 | 1044FS-60d |  | Sector 43 | 9702896 |
| 1047 | 37300.37600.38600.40500.116300.121000.857200 | Earthing Works | 60d | 2027-03-02 | 2027-04-30 | 1044 |  | Sector 43 | 9702906 |
| 1048 | 37300.37600.38600.40500.116300.121000.857300 | Advanced Lightening Protection system | 45d | 2027-04-06 | 2027-05-20 | 1047FS-25d |  | Sector 43 | 9702916 |
| 1049 | 37300.37600.38600.40500.116300.121000.857400 | Energy meter | 60d | 2027-03-02 | 2027-04-30 | 1045 |  | Sector 43 | 9702926 |
| 1050 | 37300.37600.38600.40500.116300.121000.857500 | Inverter / UPS | 70d | 2027-04-26 | 2027-07-04 | 1045, 1046, 1049FS-5d |  | Sector 43 | 9702936 |
| 1051 | 37300.37600.38600.40500.116300.121000.857600 | HVAC & Exhast fan | 120d | 2027-01-31 | 2027-05-30 | 1044FS-30d |  | Sector 43 | 9702946 |
| 1052 | 37300.37600.38600.40500.116300.121000.857700 | FTTH | 45d | 2027-03-07 | 2027-04-20 | 1046FS-25d |  | Sector 43 | 9702956 |
| 1053 | 37300.37600.38600.40500.116300.121000.857800 | Security System - FA & PA | 45d | 2027-03-07 | 2027-04-20 | 1046FS-25d |  | Sector 43 | 9702966 |
| 1054 | 37300.37600.38600.40500.116300.121000.857900 | T&C of complete system | 64d | 2027-07-24 | 2027-09-25 | 1008, 1046, 1048, 1049, 1050, 1051, 1052, 1053 |  | Sector 43 | 9702976 |
| 1055 | 37300.37600.38600.40500.116300.130200 | **Plumbing work** | 332d | 2026-09-21 | 2027-10-02 |  | start no earlier than 2026-09-21 | Sector 43 | 9699006 |
| 1056 | 37300.37600.38600.40500.116300.130200.858000 | Terrace looping | 45d | 2026-09-21 | 2026-12-19 | 462 |  | Sector 43 | 9702986 |
| 1057 | 37300.37600.38600.40500.116300.130200.858100 | Shaft Plumbing | 120d | 2027-02-10 | 2027-06-09 | 999FS-30d, 1056 |  | Sector 43 | 9702996 |
| 1058 | 37300.37600.38600.40500.116300.130200.858200 | CP sanitary fixture supply | 45d | 2027-06-10 | 2027-07-24 | 1057 |  | Sector 43 | 9703006 |
| 1059 | 37300.37600.38600.40500.116300.130200.858300 | Cold & flushing water supply | 45d | 2027-06-10 | 2027-07-24 | 1057 |  | Sector 43 | 9703016 |
| 1060 | 37300.37600.38600.40500.116300.130200.858400 | Misc work | 30d | 2027-07-05 | 2027-08-03 | 1059FS-20d |  | Sector 43 | 9703026 |
| 1061 | 37300.37600.38600.40500.116300.130200.858500 | Installation of PHE pumps | 60d | 2026-12-20 | 2027-02-17 | 1056 |  | Sector 43 | 9703036 |
| 1062 | 37300.37600.38600.40500.116300.130200.858600 | T&C of complete system | 60d | 2027-08-04 | 2027-10-02 | 1056, 1057, 1059, 1060, 1061 |  | Sector 43 | 9703046 |
| 1063 | 37300.37600.38600.40500.116300.137500 | **Fire fighting work** | 210d | 2027-02-10 | 2027-09-07 |  | start no earlier than 2027-02-10 | Sector 43 | 9699056 |
| 1064 | 37300.37600.38600.40500.116300.137500.858700 | Fire hydrant work | 90d | 2027-02-10 | 2027-05-10 | 999FS-30d |  | Sector 43 | 9703056 |
| 1065 | 37300.37600.38600.40500.116300.137500.858800 | Pipe connection & sprinkler installation | 60d | 2027-05-11 | 2027-07-09 | 1064 |  | Sector 43 | 9703066 |
| 1066 | 37300.37600.38600.40500.116300.137500.858900 | Shaft Downtake works | 90d | 2027-02-10 | 2027-05-10 | 462, 999FS-30d |  | Sector 43 | 9703076 |
| 1067 | 37300.37600.38600.40500.116300.137500.859000 | Connection to pump room | 45d | 2027-05-11 | 2027-06-24 | 1066 |  | Sector 43 | 9703086 |
| 1068 | 37300.37600.38600.40500.116300.137500.859100 | Installation of FF pumps | 60d | 2027-05-11 | 2027-07-09 | 1064, 1066 |  | Sector 43 | 9703096 |
| 1069 | 37300.37600.38600.40500.116300.137500.859200 | T&C of complete system | 60d | 2027-07-10 | 2027-09-07 | 998, 1003, 1009FS-20d, 1065, 1067, 1068, 979 |  | Sector 43 | 9703106 |

| ID | WBS | Task | Duration | Start | Finish | Predecessors | Constraint | Calendar | Unique_Task_ID |
| --- | --- | --- | --- | --- | --- | --- | --- | --- | --- |
| 1070 | 37300.37600.38600.40500.116300.220200 | **Lift work** | 99d | 2026-10-18 | 2027-03-10 |  | start no earlier than 2026-10-18 | Sector 43 | 9700316 |
| 1071 | 37300.37600.38600.40500.116300.220200.859300 | Lift Shaft/Pit Handover | 30d | 2026-10-18 | 2026-12-31 | 429 |  | Sector 43 | 9703116 |
| 1072 | 37300.37600.38600.40500.116300.220200.859400 | Lift installation work | 50d | 2026-12-21 | 2027-02-08 | 1071FS-11d |  | Sector 43 | 9703126 |
| 1073 | 37300.37600.38600.40500.116300.220200.859500 | Lift testing and commissioning | 30d | 2027-02-09 | 2027-03-10 | 1072 |  | Sector 43 | 9703136 |
| 1074 | 37300.37600.38600.40500.215500 | **External Paint Works** | 170d | 2026-09-21 | 2027-04-23 |  | start no earlier than 2026-09-21 | Sector 43 | 9699816 |
| 1075 | 37300.37600.38600.40500.215500.387400 | Surface prepration | 70d | 2026-09-21 | 2027-01-13 | 462 |  | Sector 43 | 9701116 |
| 1076 | 37300.37600.38600.40500.215500.387500 | External Painting (Primer, texture & first coat) | 90d | 2027-01-14 | 2027-04-13 | 1075 |  | Sector 43 | 9701126 |
| 1077 | 37300.37600.38600.40500.215500.387600 | Final coat of painting | 80d | 2027-02-03 | 2027-04-23 | 1076FS-70d |  | Sector 43 | 9701136 |
| 1078 | 37300.37600.38600.40500.215500.387700 | Misc. work | 50d | 2027-01-14 | 2027-03-04 | 1075 |  | Sector 43 | 9701146 |
| 1079 | 37300.37600.38600.40500.292500 | OC Application/Readiness | 1d | 2027-08-22 | 2027-08-22 | 1041FS-60d, 1054FS-60d, 1062FS-42d, 1069FS-50d, 1073, 995, 1001, 1002, 1004, 992FS-60d |  | Sector 43 | 9700726 |
| 1080 | 37300.37600.38600.40500.292600 | OC Receipt | 30d | 2027-08-23 | 2027-09-21 | 1079, 252, 253, 261, 262 |  | Sector 43 | 9700736 |
| 1081 | 37300.37600.38600.40500.164500 | **Post OC Activities** | 205d | 2027-08-23 | 2028-04-28 |  | start no earlier than 2027-08-23 | Sector 43 | 9699146 |
| 1082 | 37300.37600.38600.40500.164500.387800 | CP & Sanitaryware installation | 120d | 2027-08-23 | 2028-02-03 | 1080FS-30d, 1058 |  | Sector 43 | 9701156 |
| 1083 | 37300.37600.38600.40500.164500.387900 | Electrical Fixtures And Fittings installations | 120d | 2027-08-23 | 2028-02-03 | 1080FS-30d |  | Sector 43 | 9701166 |
| 1084 | 37300.37600.38600.40500.164500.388000 | Final Coat Paint Internal | 90d | 2027-08-23 | 2028-01-04 | 1080FS-30d |  | Sector 43 | 9701176 |
| 1085 | 37300.37600.38600.40500.164500.388100 | Split AC Units installation | 100d | 2028-01-20 | 2028-04-28 | 1084FS+15d |  | Sector 43 | 9701186 |
| 1086 | 37300.37600.38600.40500.164500.388200 | Wooden Flooring | 180d | 2027-08-23 | 2028-04-03 | 1080FS-30d |  | Sector 43 | 9701196 |
| 1087 | 37300.37600.38600.40500.292700 | Offer to possession | 150d | 2028-04-29 | 2028-09-25 | 1080FS+120d, 1078, 1082, 1083, 1085, 1086 |  | Sector 43 | 9700746 |
| 1088 | 37300.37600.38600.40600 | **Tower B (2B+G+31)** | 1092d | 2025-05-17 | 2028-09-24 |  | start no earlier than 2025-05-17 | Sector 43 | 9697406 |
| 1089 | 37300.37600.38600.40600.64200 | **Sub structure Works** | 264d | 2025-05-17 | 2026-03-21 |  | start no earlier than 2025-05-17 | Sector 43 | 9698576 |
| 1090 | 37300.37600.38600.40600.64200.220300 | **Soil bed preparation** | 23d | 2025-05-24 | 2025-06-15 |  | start no earlier than 2025-05-24 | Sector 43 | 9700306 |
| 1091 | 37300.37600.38600.40600.64200.220300.859600 | Surface dressing | 20d | 2025-05-24 | 2025-06-12 | 66 |  | Sector 43 | 9703146 |
| 1092 | 37300.37600.38600.40600.64200.220300.859700 | ATT | 2d | 2025-06-13 | 2025-06-14 | 1091 |  | Sector 43 | 9703156 |
| 1093 | 37300.37600.38600.40600.64200.220300.859800 | PCC | 1d | 2025-06-15 | 2025-06-15 | 1092 |  | Sector 43 | 9703166 |

| ID | WBS | Task | Duration | Start | Finish | Predecessors | Constraint | Calendar | Unique_Task_ID |
| --- | --- | --- | --- | --- | --- | --- | --- | --- | --- |
| 1094 | 37300.37600.38600.40600.64200.124400 | **RCC works** | 84d | 2025-05-17 | 2025-08-08 |  | start no earlier than 2025-05-17 | Sector 43 | 9698806 |
| 1095 | 37300.37600.38600.40600.64200.124400.129600 | **Raft including B2 slab** | 28d | 2025-05-17 | 2025-06-13 |  | start no earlier than 2025-05-17 | Sector 43 | 9698876 |
| 1096 | 37300.37600.38600.40600.64200.124400.129600.1151200 | Reinforcement | 12d | 2025-05-17 | 2025-05-28 | 1093FS-30d |  | Sector 43 | 9712146 |
| 1097 | 37300.37600.38600.40600.64200.124400.129600.1151300 | Shuttering | 6d | 2025-05-19 | 2025-05-24 | 1096FS-10d |  | Sector 43 | 9712156 |
| 1098 | 37300.37600.38600.40600.64200.124400.129600.1151400 | Concreting of Raft | 2d | 2025-05-21 | 2025-05-22 | 1097FS-4d |  | Sector 43 | 9712166 |
| 1099 | 37300.37600.38600.40600.64200.124400.129600.1151500 | Column till bottom of B2 slab (stitch slab) | 10d | 2025-05-18 | 2025-05-27 | 1098FS-5d |  | Sector 43 | 9712176 |
| 1100 | 37300.37600.38600.40600.64200.124400.129600.1151600 | Backfilling till bottom of B2 slab | 12d | 2025-05-28 | 2025-06-08 | 1099 |  | Sector 43 | 9712186 |
| 1101 | 37300.37600.38600.40600.64200.124400.129600.1151700 | Reinforcement | 13d | 2025-05-30 | 2025-06-11 | 1100FS-10d |  | Sector 43 | 9712196 |
| 1102 | 37300.37600.38600.40600.64200.124400.129600.1151800 | Shuttering | 12d | 2025-06-02 | 2025-06-13 | 1101FS-10d |  | Sector 43 | 9712206 |
| 1103 | 37300.37600.38600.40600.64200.124400.129600.1151900 | Concreting of B2 Slab | 2d | 2025-06-12 | 2025-06-13 | 1102FS-2d |  | Sector 43 | 9712216 |
| 1104 | 37300.37600.38600.40600.64200.124400.220900 | **B1 slab** | 25d | 2025-06-14 | 2025-07-08 |  | start no earlier than 2025-06-14 | Sector 43 | 9700246 |
| 1105 | 37300.37600.38600.40600.64200.124400.220900.1152000 | Shuttering | 25d | 2025-06-14 | 2025-07-08 | 1103 |  | Sector 43 | 9712226 |
| 1106 | 37300.37600.38600.40600.64200.124400.220900.1152100 | Reinforcement | 20d | 2025-06-19 | 2025-07-08 | 1105FS-20d |  | Sector 43 | 9712236 |
| 1107 | 37300.37600.38600.40600.64200.124400.220900.1152200 | Concreting | 2d | 2025-07-07 | 2025-07-08 | 1106FS-2d |  | Sector 43 | 9712246 |
| 1108 | 37300.37600.38600.40600.64200.124400.221000 | **Ground Floor Slab / NTA top** | 31d | 2025-07-09 | 2025-08-08 |  | start no earlier than 2025-07-09 | Sector 43 | 9700236 |
| 1109 | 37300.37600.38600.40600.64200.124400.221000.1152300 | Shuttering | 23d | 2025-07-09 | 2025-07-31 | 1107 |  | Sector 43 | 9712256 |
| 1110 | 37300.37600.38600.40600.64200.124400.221000.1152400 | Reinforcement | 23d | 2025-07-17 | 2025-08-08 | 1109FS-15d |  | Sector 43 | 9712266 |
| 1111 | 37300.37600.38600.40600.64200.124400.221000.1152500 | Concreting | 2d | 2025-08-07 | 2025-08-08 | 1110FS-2d |  | Sector 43 | 9712276 |
| 1112 | 37300.37600.38600.40600.64200.121300 | **Sub structure finishing works** | 166d | 2025-08-23 | 2026-03-21 |  | start no earlier than 2025-08-23 | Sector 43 | 9698746 |
| 1113 | 37300.37600.38600.40600.64200.121300.129200 | **Basement 2** | 135d | 2025-08-23 | 2026-02-18 |  | start no earlier than 2025-08-23 | Sector 43 | 9698886 |
| 1114 | 37300.37600.38600.40600.64200.121300.129200.1152600 | Masonary | 30d | 2025-08-23 | 2025-09-21 | 1107FS+45d |  | Sector 43 | 9712286 |
| 1115 | 37300.37600.38600.40600.64200.121300.129200.1152700 | Structural steel | 30d | 2025-08-23 | 2025-09-21 | 1107FS+45d |  | Sector 43 | 9712296 |
| 1116 | 37300.37600.38600.40600.64200.121300.129200.1152800 | Plaster | 30d | 2025-09-22 | 2025-10-21 | 1114, 1115 |  | Sector 43 | 9712306 |
| 1117 | 37300.37600.38600.40600.64200.121300.129200.1152900 | White wash | 30d | 2025-10-22 | 2026-01-04 | 1116 |  | Sector 43 | 9712316 |
| 1118 | 37300.37600.38600.40600.64200.121300.129200.1153000 | VDF | 60d | 2025-09-07 | 2025-12-20 | 1116FS-45d |  | Sector 43 | 9712326 |
| 1119 | 37300.37600.38600.40600.64200.121300.129200.1153100 | Drain & Sump (incl. gratings) | 60d | 2025-10-07 | 2026-01-19 | 1118FS-30d |  | Sector 43 | 9712336 |
| 1120 | 37300.37600.38600.40600.64200.121300.129200.1153200 | Car parking marking | 30d | 2026-01-20 | 2026-02-18 | 1117FS-15d, 1119 |  | Sector 43 | 9712346 |
| 1121 | 37300.37600.38600.40600.64200.121300.129200.1153300 | Signages | 30d | 2025-12-26 | 2026-01-24 | 1117FS-10d |  | Sector 43 | 9712356 |

| ID | WBS | Task | Duration | Start | Finish | Predecessors | Constraint | Calendar | Unique_Task_ID |
| --- | --- | --- | --- | --- | --- | --- | --- | --- | --- |
| 1122 | 37300.37600.38600.40600.64200.121300.129300 | **Basement 1** | 135d | 2025-09-23 | 2026-03-21 |  | start no earlier than 2025-09-23 | Sector 43 | 9698896 |
| 1123 | 37300.37600.38600.40600.64200.121300.129300.1153400 | Masonary | 30d | 2025-09-23 | 2025-10-22 | 1111FS+45d |  | Sector 43 | 9712366 |
| 1124 | 37300.37600.38600.40600.64200.121300.129300.1153500 | Structural steel | 30d | 2025-09-23 | 2025-10-22 | 1111FS+45d |  | Sector 43 | 9712376 |
| 1125 | 37300.37600.38600.40600.64200.121300.129300.1153600 | Plaster | 30d | 2025-10-23 | 2026-01-05 | 1123, 1124 |  | Sector 43 | 9712386 |
| 1126 | 37300.37600.38600.40600.64200.121300.129300.1153700 | White wash | 30d | 2026-01-06 | 2026-02-04 | 1125 |  | Sector 43 | 9712396 |
| 1127 | 37300.37600.38600.40600.64200.121300.129300.1153800 | VDF | 60d | 2025-10-08 | 2026-01-20 | 1125FS-45d |  | Sector 43 | 9712406 |
| 1128 | 37300.37600.38600.40600.64200.121300.129300.1153900 | Drain & Sump (incl. gratings) | 60d | 2025-12-22 | 2026-02-19 | 1127FS-30d |  | Sector 43 | 9712416 |
| 1129 | 37300.37600.38600.40600.64200.121300.129300.1154000 | Car parking marking | 30d | 2026-02-20 | 2026-03-21 | 1126FS-15d, 1128 |  | Sector 43 | 9712426 |
| 1130 | 37300.37600.38600.40600.64200.121300.129300.1154100 | Signages | 30d | 2026-01-26 | 2026-02-24 | 1126FS-10d |  | Sector 43 | 9712436 |
| 1131 | 37300.37600.38600.40600.45600 | **Super structure works** | 390d | 2025-08-09 | 2026-10-17 |  | start no earlier than 2025-08-09 | Sector 43 | 9697496 |
| 1132 | 37300.37600.38600.40600.45600.46600 | **RCC works** | 390d | 2025-08-09 | 2026-10-17 |  | start no earlier than 2025-08-09 | Sector 43 | 9697526 |
| 1133 | 37300.37600.38600.40600.45600.46600.210900 | **1st floor** | 31d | 2025-08-09 | 2025-09-08 |  | start no earlier than 2025-08-09 | Sector 43 | 9700036 |
| 1134 | 37300.37600.38600.40600.45600.46600.210900.1154200 | Reinforcement | 27d | 2025-08-09 | 2025-09-04 | 1111 |  | Sector 43 | 9712446 |
| 1135 | 37300.37600.38600.40600.45600.46600.210900.1154300 | Wall/slab conduiting | 22d | 2025-08-16 | 2025-09-06 | 1134FS-20d |  | Sector 43 | 9712456 |
| 1136 | 37300.37600.38600.40600.45600.46600.210900.1154400 | Shuttering | 22d | 2025-08-16 | 2025-09-06 | 1134FS-20d |  | Sector 43 | 9712466 |
| 1137 | 37300.37600.38600.40600.45600.46600.210900.1154500 | Concreting | 2d | 2025-09-07 | 2025-09-08 | 1134, 1135, 1136 |  | Sector 43 | 9712476 |
| 1138 | 37300.37600.38600.40600.45600.46600.211100 | **2nd floor** | 19d | 2025-09-09 | 2025-09-27 |  | start no earlier than 2025-09-09 | Sector 43 | 9700046 |
| 1139 | 37300.37600.38600.40600.45600.46600.211100.1154600 | Reinforcement | 15d | 2025-09-09 | 2025-09-23 | 1137 |  | Sector 43 | 9712486 |
| 1140 | 37300.37600.38600.40600.45600.46600.211100.1154700 | Wall/slab conduiting | 16d | 2025-09-10 | 2025-09-25 | 1139FS-14d |  | Sector 43 | 9712496 |
| 1141 | 37300.37600.38600.40600.45600.46600.211100.1154800 | Shuttering | 16d | 2025-09-10 | 2025-09-25 | 1139FS-14d |  | Sector 43 | 9712506 |
| 1142 | 37300.37600.38600.40600.45600.46600.211100.1154900 | Concreting | 2d | 2025-09-26 | 2025-09-27 | 1139, 1140, 1141 |  | Sector 43 | 9712516 |
| 1143 | 37300.37600.38600.40600.45600.46600.211600 | **3rd floor** | 21d | 2025-09-28 | 2025-10-18 |  | start no earlier than 2025-09-28 | Sector 43 | 9700056 |
| 1144 | 37300.37600.38600.40600.45600.46600.211600.1155000 | Reinforcement | 19d | 2025-09-28 | 2025-10-16 | 1142 |  | Sector 43 | 9712526 |
| 1145 | 37300.37600.38600.40600.45600.46600.211600.1155100 | Wall/slab conduiting | 19d | 2025-09-28 | 2025-10-16 | 1144FS-19d |  | Sector 43 | 9712536 |
| 1146 | 37300.37600.38600.40600.45600.46600.211600.1155200 | Shuttering | 19d | 2025-09-28 | 2025-10-16 | 1144FS-19d |  | Sector 43 | 9712546 |
| 1147 | 37300.37600.38600.40600.45600.46600.211600.1155300 | Concreting | 2d | 2025-10-17 | 2025-10-18 | 1144, 1145, 1146 |  | Sector 43 | 9712556 |

| ID | WBS | Task | Duration | Start | Finish | Predecessors | Constraint | Calendar | Unique_Task_ID |
| --- | --- | --- | --- | --- | --- | --- | --- | --- | --- |
| 1148 | 37300.37600.38600.40600.45600.46600.211700 | **4th floor** | 15d | 2025-10-19 | 2025-12-17 |  | start no earlier than 2025-10-19 | Sector 43 | 9700106 |
| 1149 | 37300.37600.38600.40600.45600.46600.211700.1155400 | Reinforcement | 13d | 2025-10-19 | 2025-10-31 | 1147 |  | Sector 43 | 9712566 |
| 1150 | 37300.37600.38600.40600.45600.46600.211700.1155500 | Wall/slab conduiting | 12d | 2025-10-20 | 2025-10-31 | 1149FS-12d |  | Sector 43 | 9712576 |
| 1151 | 37300.37600.38600.40600.45600.46600.211700.1155600 | Shuttering | 12d | 2025-10-20 | 2025-10-31 | 1149FS-12d |  | Sector 43 | 9712586 |
| 1152 | 37300.37600.38600.40600.45600.46600.211700.1155700 | Concreting | 2d | 2025-12-16 | 2025-12-17 | 1149, 1150, 1151 |  | Sector 43 | 9712596 |
| 1153 | 37300.37600.38600.40600.45600.46600.212000 | **5th floor** | 9d | 2025-12-18 | 2025-12-26 |  | start no earlier than 2025-12-18 | Sector 43 | 9700136 |
| 1154 | 37300.37600.38600.40600.45600.46600.212000.1155800 | Reinforcement | 7d | 2025-12-18 | 2025-12-24 | 1152 |  | Sector 43 | 9712606 |
| 1155 | 37300.37600.38600.40600.45600.46600.212000.1155900 | Wall/slab conduiting | 5d | 2025-12-20 | 2025-12-24 | 1154FS-5d |  | Sector 43 | 9712616 |
| 1156 | 37300.37600.38600.40600.45600.46600.212000.1156000 | Shuttering | 5d | 2025-12-20 | 2025-12-24 | 1154FS-5d |  | Sector 43 | 9712626 |
| 1157 | 37300.37600.38600.40600.45600.46600.212000.1156100 | Concreting | 2d | 2025-12-25 | 2025-12-26 | 1154, 1155, 1156 |  | Sector 43 | 9712636 |
| 1158 | 37300.37600.38600.40600.45600.46600.212100 | **6th floor** | 9d | 2025-12-27 | 2026-01-04 |  | start no earlier than 2025-12-27 | Sector 43 | 9700146 |
| 1159 | 37300.37600.38600.40600.45600.46600.212100.1156200 | Reinforcement | 7d | 2025-12-27 | 2026-01-02 | 1157 |  | Sector 43 | 9712646 |
| 1160 | 37300.37600.38600.40600.45600.46600.212100.1156300 | Wall/slab conduiting | 5d | 2025-12-29 | 2026-01-02 | 1159FS-5d |  | Sector 43 | 9712656 |
| 1161 | 37300.37600.38600.40600.45600.46600.212100.1156400 | Shuttering | 5d | 2025-12-29 | 2026-01-02 | 1159FS-5d |  | Sector 43 | 9712666 |
| 1162 | 37300.37600.38600.40600.45600.46600.212100.1156500 | Concreting | 2d | 2026-01-03 | 2026-01-04 | 1159, 1160, 1161 |  | Sector 43 | 9712676 |
| 1163 | 37300.37600.38600.40600.45600.46600.212200 | **7th floor** | 9d | 2026-01-05 | 2026-01-13 |  | start no earlier than 2026-01-05 | Sector 43 | 9700156 |
| 1164 | 37300.37600.38600.40600.45600.46600.212200.1156600 | Reinforcement | 7d | 2026-01-05 | 2026-01-11 | 1162 |  | Sector 43 | 9712686 |
| 1165 | 37300.37600.38600.40600.45600.46600.212200.1156700 | Wall/slab conduiting | 5d | 2026-01-07 | 2026-01-11 | 1164FS-5d |  | Sector 43 | 9712696 |
| 1166 | 37300.37600.38600.40600.45600.46600.212200.1156800 | Shuttering | 5d | 2026-01-07 | 2026-01-11 | 1164FS-5d |  | Sector 43 | 9712706 |
| 1167 | 37300.37600.38600.40600.45600.46600.212200.1156900 | Concreting | 2d | 2026-01-12 | 2026-01-13 | 1164, 1165, 1166 |  | Sector 43 | 9712716 |
| 1168 | 37300.37600.38600.40600.45600.46600.212300 | **8th floor** | 9d | 2026-01-14 | 2026-01-22 |  | start no earlier than 2026-01-14 | Sector 43 | 9700166 |
| 1169 | 37300.37600.38600.40600.45600.46600.212300.1157000 | Reinforcement | 7d | 2026-01-14 | 2026-01-20 | 1167 |  | Sector 43 | 9712726 |
| 1170 | 37300.37600.38600.40600.45600.46600.212300.1157100 | Wall/slab conduiting | 5d | 2026-01-16 | 2026-01-20 | 1169FS-5d |  | Sector 43 | 9712736 |
| 1171 | 37300.37600.38600.40600.45600.46600.212300.1157200 | Shuttering | 5d | 2026-01-16 | 2026-01-20 | 1169FS-5d |  | Sector 43 | 9712746 |
| 1172 | 37300.37600.38600.40600.45600.46600.212300.1157300 | Concreting | 2d | 2026-01-21 | 2026-01-22 | 1169, 1170, 1171 |  | Sector 43 | 9712756 |

| ID | WBS | Task | Duration | Start | Finish | Predecessors | Constraint | Calendar | Unique_Task_ID |
| --- | --- | --- | --- | --- | --- | --- | --- | --- | --- |
| 1173 | 37300.37600.38600.40600.45600.46600.212400 | **9th floor** | 9d | 2026-01-23 | 2026-01-31 |  | start no earlier than 2026-01-23 | Sector 43 | 9700186 |
| 1174 | 37300.37600.38600.40600.45600.46600.212400.1157400 | Reinforcement | 7d | 2026-01-23 | 2026-01-29 | 1172 |  | Sector 43 | 9712766 |
| 1175 | 37300.37600.38600.40600.45600.46600.212400.1157500 | Wall/slab conduiting | 5d | 2026-01-25 | 2026-01-29 | 1174FS-5d |  | Sector 43 | 9712776 |
| 1176 | 37300.37600.38600.40600.45600.46600.212400.1157600 | Shuttering | 5d | 2026-01-25 | 2026-01-29 | 1174FS-5d |  | Sector 43 | 9712786 |
| 1177 | 37300.37600.38600.40600.45600.46600.212400.1157700 | Concreting | 2d | 2026-01-30 | 2026-01-31 | 1174, 1175, 1176 |  | Sector 43 | 9712796 |
| 1178 | 37300.37600.38600.40600.45600.46600.212500 | **10th floor** | 9d | 2026-02-01 | 2026-02-09 |  | start no earlier than 2026-02-01 | Sector 43 | 9700196 |
| 1179 | 37300.37600.38600.40600.45600.46600.212500.1157800 | Reinforcement | 7d | 2026-02-01 | 2026-02-07 | 1177 |  | Sector 43 | 9712806 |
| 1180 | 37300.37600.38600.40600.45600.46600.212500.1157900 | Wall/slab conduiting | 5d | 2026-02-03 | 2026-02-07 | 1179FS-5d |  | Sector 43 | 9712816 |
| 1181 | 37300.37600.38600.40600.45600.46600.212500.1158000 | Shuttering | 5d | 2026-02-03 | 2026-02-07 | 1179FS-5d |  | Sector 43 | 9712826 |
| 1182 | 37300.37600.38600.40600.45600.46600.212500.1158100 | Concreting | 2d | 2026-02-08 | 2026-02-09 | 1179, 1180, 1181 |  | Sector 43 | 9712836 |
| 1183 | 37300.37600.38600.40600.45600.46600.212600 | **11th floor** | 9d | 2026-02-10 | 2026-02-18 |  | start no earlier than 2026-02-10 | Sector 43 | 9700206 |
| 1184 | 37300.37600.38600.40600.45600.46600.212600.1158200 | Reinforcement | 7d | 2026-02-10 | 2026-02-16 | 1182 |  | Sector 43 | 9712846 |
| 1185 | 37300.37600.38600.40600.45600.46600.212600.1158300 | Wall/slab conduiting | 5d | 2026-02-12 | 2026-02-16 | 1184FS-5d |  | Sector 43 | 9712856 |
| 1186 | 37300.37600.38600.40600.45600.46600.212600.1158400 | Shuttering | 5d | 2026-02-12 | 2026-02-16 | 1184FS-5d |  | Sector 43 | 9712866 |
| 1187 | 37300.37600.38600.40600.45600.46600.212600.1158500 | Concreting | 2d | 2026-02-17 | 2026-02-18 | 1184, 1185, 1186 |  | Sector 43 | 9712876 |
| 1188 | 37300.37600.38600.40600.45600.46600.212700 | **12th floor** | 9d | 2026-02-19 | 2026-02-27 |  | start no earlier than 2026-02-19 | Sector 43 | 9700176 |
| 1189 | 37300.37600.38600.40600.45600.46600.212700.1158600 | Reinforcement | 7d | 2026-02-19 | 2026-02-25 | 1187 |  | Sector 43 | 9712886 |
| 1190 | 37300.37600.38600.40600.45600.46600.212700.1158700 | Wall/slab conduiting | 5d | 2026-02-21 | 2026-02-25 | 1189FS-5d |  | Sector 43 | 9712896 |
| 1191 | 37300.37600.38600.40600.45600.46600.212700.1158800 | Shuttering | 5d | 2026-02-21 | 2026-02-25 | 1189FS-5d |  | Sector 43 | 9712906 |
| 1192 | 37300.37600.38600.40600.45600.46600.212700.1158900 | Concreting | 2d | 2026-02-26 | 2026-02-27 | 1189, 1190, 1191 |  | Sector 43 | 9712916 |
| 1193 | 37300.37600.38600.40600.45600.46600.212800 | **13th floor** | 9d | 2026-02-28 | 2026-03-08 |  | start no earlier than 2026-02-28 | Sector 43 | 9700126 |
| 1194 | 37300.37600.38600.40600.45600.46600.212800.1159000 | Reinforcement | 7d | 2026-02-28 | 2026-03-06 | 1192 |  | Sector 43 | 9712926 |
| 1195 | 37300.37600.38600.40600.45600.46600.212800.1159100 | Wall/slab conduiting | 5d | 2026-03-02 | 2026-03-06 | 1194FS-5d |  | Sector 43 | 9712936 |
| 1196 | 37300.37600.38600.40600.45600.46600.212800.1159200 | Shuttering | 5d | 2026-03-02 | 2026-03-06 | 1194FS-5d |  | Sector 43 | 9712946 |
| 1197 | 37300.37600.38600.40600.45600.46600.212800.1159300 | Concreting | 2d | 2026-03-07 | 2026-03-08 | 1194, 1195, 1196 |  | Sector 43 | 9712956 |

| ID | WBS | Task | Duration | Start | Finish | Predecessors | Constraint | Calendar | Unique_Task_ID |
| --- | --- | --- | --- | --- | --- | --- | --- | --- | --- |
| 1198 | 37300.37600.38600.40600.45600.46600.212900 | **14th floor** | 9d | 2026-03-09 | 2026-03-17 |  | start no earlier than 2026-03-09 | Sector 43 | 9700086 |
| 1199 | 37300.37600.38600.40600.45600.46600.212900.1159400 | Reinforcement | 7d | 2026-03-09 | 2026-03-15 | 1197 |  | Sector 43 | 9712966 |
| 1200 | 37300.37600.38600.40600.45600.46600.212900.1159500 | Wall/slab conduiting | 5d | 2026-03-11 | 2026-03-15 | 1199FS-5d |  | Sector 43 | 9712976 |
| 1201 | 37300.37600.38600.40600.45600.46600.212900.1159600 | Shuttering | 5d | 2026-03-11 | 2026-03-15 | 1199FS-5d |  | Sector 43 | 9712986 |
| 1202 | 37300.37600.38600.40600.45600.46600.212900.1159700 | Concreting | 2d | 2026-03-16 | 2026-03-17 | 1199, 1200, 1201 |  | Sector 43 | 9712996 |
| 1203 | 37300.37600.38600.40600.45600.46600.213200 | **15th floor** | 9d | 2026-03-18 | 2026-03-26 |  | start no earlier than 2026-03-18 | Sector 43 | 9700066 |
| 1204 | 37300.37600.38600.40600.45600.46600.213200.1159800 | Reinforcement | 7d | 2026-03-18 | 2026-03-24 | 1202 |  | Sector 43 | 9713006 |
| 1205 | 37300.37600.38600.40600.45600.46600.213200.1159900 | Wall/slab conduiting | 5d | 2026-03-20 | 2026-03-24 | 1204FS-5d |  | Sector 43 | 9713016 |
| 1206 | 37300.37600.38600.40600.45600.46600.213200.1160000 | Shuttering | 5d | 2026-03-20 | 2026-03-24 | 1204FS-5d |  | Sector 43 | 9713026 |
| 1207 | 37300.37600.38600.40600.45600.46600.213200.1160100 | Concreting | 2d | 2026-03-25 | 2026-03-26 | 1204, 1205, 1206 |  | Sector 43 | 9713036 |
| 1208 | 37300.37600.38600.40600.45600.46600.213300 | **16th floor** | 9d | 2026-03-27 | 2026-04-04 |  | start no earlier than 2026-03-27 | Sector 43 | 9700016 |
| 1209 | 37300.37600.38600.40600.45600.46600.213300.1160200 | Reinforcement | 7d | 2026-03-27 | 2026-04-02 | 1207 |  | Sector 43 | 9713046 |
| 1210 | 37300.37600.38600.40600.45600.46600.213300.1160300 | Wall/slab conduiting | 5d | 2026-03-29 | 2026-04-02 | 1209FS-5d |  | Sector 43 | 9713056 |
| 1211 | 37300.37600.38600.40600.45600.46600.213300.1160400 | Shuttering | 5d | 2026-03-29 | 2026-04-02 | 1209FS-5d |  | Sector 43 | 9713066 |
| 1212 | 37300.37600.38600.40600.45600.46600.213300.1160500 | Concreting | 2d | 2026-04-03 | 2026-04-04 | 1209, 1210, 1211 |  | Sector 43 | 9713076 |
| 1213 | 37300.37600.38600.40600.45600.46600.213400 | **17th floor - Refuge Floor** | 12d | 2026-04-05 | 2026-04-16 |  | start no earlier than 2026-04-05 | Sector 43 | 9700006 |
| 1214 | 37300.37600.38600.40600.45600.46600.213400.1160600 | Reinforcement | 10d | 2026-04-05 | 2026-04-14 | 1212 |  | Sector 43 | 9713086 |
| 1215 | 37300.37600.38600.40600.45600.46600.213400.1160700 | Wall/slab conduiting | 9d | 2026-04-06 | 2026-04-14 | 1214FS-9d |  | Sector 43 | 9713096 |
| 1216 | 37300.37600.38600.40600.45600.46600.213400.1160800 | Shuttering | 9d | 2026-04-06 | 2026-04-14 | 1214FS-9d |  | Sector 43 | 9713106 |
| 1217 | 37300.37600.38600.40600.45600.46600.213400.1160900 | Concreting | 2d | 2026-04-15 | 2026-04-16 | 1214, 1215, 1216 |  | Sector 43 | 9713116 |
| 1218 | 37300.37600.38600.40600.45600.46600.213500 | **18th floor** | 9d | 2026-04-17 | 2026-04-25 |  | start no earlier than 2026-04-17 | Sector 43 | 9699996 |
| 1219 | 37300.37600.38600.40600.45600.46600.213500.1161000 | Reinforcement | 7d | 2026-04-17 | 2026-04-23 | 1217 |  | Sector 43 | 9713126 |
| 1220 | 37300.37600.38600.40600.45600.46600.213500.1161100 | Wall/slab conduiting | 5d | 2026-04-19 | 2026-04-23 | 1219FS-5d |  | Sector 43 | 9713136 |
| 1221 | 37300.37600.38600.40600.45600.46600.213500.1161200 | Shuttering | 5d | 2026-04-19 | 2026-04-23 | 1219FS-5d |  | Sector 43 | 9713146 |
| 1222 | 37300.37600.38600.40600.45600.46600.213500.1161300 | Concreting | 2d | 2026-04-24 | 2026-04-25 | 1219, 1220, 1221 |  | Sector 43 | 9713156 |

| ID | WBS | Task | Duration | Start | Finish | Predecessors | Constraint | Calendar | Unique_Task_ID |
| --- | --- | --- | --- | --- | --- | --- | --- | --- | --- |
| 1223 | 37300.37600.38600.40600.45600.46600.213900 | **19th floor** | 8d | 2026-04-26 | 2026-05-03 |  | start no earlier than 2026-04-26 | Sector 43 | 9699986 |
| 1224 | 37300.37600.38600.40600.45600.46600.213900.1161400 | Reinforcement | 6d | 2026-04-26 | 2026-05-01 | 1222 |  | Sector 43 | 9713166 |
| 1225 | 37300.37600.38600.40600.45600.46600.213900.1161500 | Wall/slab conduiting | 6d | 2026-04-26 | 2026-05-01 | 1224FS-6d |  | Sector 43 | 9713176 |
| 1226 | 37300.37600.38600.40600.45600.46600.213900.1161600 | Shuttering | 6d | 2026-04-26 | 2026-05-01 | 1224FS-6d |  | Sector 43 | 9713186 |
| 1227 | 37300.37600.38600.40600.45600.46600.213900.1161700 | Concreting | 2d | 2026-05-02 | 2026-05-03 | 1224, 1225, 1226 |  | Sector 43 | 9713196 |
| 1228 | 37300.37600.38600.40600.45600.46600.214000 | **20th floor** | 8d | 2026-05-04 | 2026-05-11 |  | start no earlier than 2026-05-04 | Sector 43 | 9699976 |
| 1229 | 37300.37600.38600.40600.45600.46600.214000.1161800 | Reinforcement | 6d | 2026-05-04 | 2026-05-09 | 1227 |  | Sector 43 | 9713206 |
| 1230 | 37300.37600.38600.40600.45600.46600.214000.1161900 | Wall/slab conduiting | 6d | 2026-05-04 | 2026-05-09 | 1229FS-6d |  | Sector 43 | 9713216 |
| 1231 | 37300.37600.38600.40600.45600.46600.214000.1162000 | Shuttering | 6d | 2026-05-04 | 2026-05-09 | 1229FS-6d |  | Sector 43 | 9713226 |
| 1232 | 37300.37600.38600.40600.45600.46600.214000.1162100 | Concreting | 2d | 2026-05-10 | 2026-05-11 | 1229, 1230, 1231 |  | Sector 43 | 9713236 |
| 1233 | 37300.37600.38600.40600.45600.46600.214400 | **21st floor** | 8d | 2026-05-12 | 2026-05-19 |  | start no earlier than 2026-05-12 | Sector 43 | 9699956 |
| 1234 | 37300.37600.38600.40600.45600.46600.214400.1162200 | Reinforcement | 6d | 2026-05-12 | 2026-05-17 | 1232 |  | Sector 43 | 9713246 |
| 1235 | 37300.37600.38600.40600.45600.46600.214400.1162300 | Wall/slab conduiting | 6d | 2026-05-12 | 2026-05-17 | 1234FS-6d |  | Sector 43 | 9713256 |
| 1236 | 37300.37600.38600.40600.45600.46600.214400.1162400 | Shuttering | 6d | 2026-05-12 | 2026-05-17 | 1234FS-6d |  | Sector 43 | 9713266 |
| 1237 | 37300.37600.38600.40600.45600.46600.214400.1162500 | Concreting | 2d | 2026-05-18 | 2026-05-19 | 1234, 1235, 1236 |  | Sector 43 | 9713276 |
| 1238 | 37300.37600.38600.40600.45600.46600.214500 | **22nd floor** | 8d | 2026-05-20 | 2026-05-27 |  | start no earlier than 2026-05-20 | Sector 43 | 9699946 |
| 1239 | 37300.37600.38600.40600.45600.46600.214500.1162600 | Reinforcement | 6d | 2026-05-20 | 2026-05-25 | 1237 |  | Sector 43 | 9713286 |
| 1240 | 37300.37600.38600.40600.45600.46600.214500.1162700 | Wall/slab conduiting | 6d | 2026-05-20 | 2026-05-25 | 1239FS-6d |  | Sector 43 | 9713296 |
| 1241 | 37300.37600.38600.40600.45600.46600.214500.1162800 | Shuttering | 6d | 2026-05-20 | 2026-05-25 | 1239FS-6d |  | Sector 43 | 9713306 |
| 1242 | 37300.37600.38600.40600.45600.46600.214500.1162900 | Concreting | 2d | 2026-05-26 | 2026-05-27 | 1239, 1240, 1241 |  | Sector 43 | 9713316 |
| 1243 | 37300.37600.38600.40600.45600.46600.214600 | **23rd floor** | 8d | 2026-05-28 | 2026-06-04 |  | start no earlier than 2026-05-28 | Sector 43 | 9699936 |
| 1244 | 37300.37600.38600.40600.45600.46600.214600.1163000 | Reinforcement | 6d | 2026-05-28 | 2026-06-02 | 1242 |  | Sector 43 | 9713326 |
| 1245 | 37300.37600.38600.40600.45600.46600.214600.1163100 | Wall/slab conduiting | 6d | 2026-05-28 | 2026-06-02 | 1244FS-6d |  | Sector 43 | 9713336 |
| 1246 | 37300.37600.38600.40600.45600.46600.214600.1163200 | Shuttering | 6d | 2026-05-28 | 2026-06-02 | 1244FS-6d |  | Sector 43 | 9713346 |
| 1247 | 37300.37600.38600.40600.45600.46600.214600.1163300 | Concreting | 2d | 2026-06-03 | 2026-06-04 | 1244, 1245, 1246 |  | Sector 43 | 9713356 |

| ID | WBS | Task | Duration | Start | Finish | Predecessors | Constraint | Calendar | Unique_Task_ID |
| --- | --- | --- | --- | --- | --- | --- | --- | --- | --- |
| 1248 | 37300.37600.38600.40600.45600.46600.215800 | **24th floor** | 8d | 2026-06-05 | 2026-06-12 |  | start no earlier than 2026-06-05 | Sector 43 | 9699886 |
| 1249 | 37300.37600.38600.40600.45600.46600.215800.1163400 | Reinforcement | 6d | 2026-06-05 | 2026-06-10 | 1247 |  | Sector 43 | 9713366 |
| 1250 | 37300.37600.38600.40600.45600.46600.215800.1163500 | Wall/slab conduiting | 6d | 2026-06-05 | 2026-06-10 | 1249FS-6d |  | Sector 43 | 9713376 |
| 1251 | 37300.37600.38600.40600.45600.46600.215800.1163600 | Shuttering | 6d | 2026-06-05 | 2026-06-10 | 1249FS-6d |  | Sector 43 | 9713386 |
| 1252 | 37300.37600.38600.40600.45600.46600.215800.1163700 | Concreting | 2d | 2026-06-11 | 2026-06-12 | 1249, 1250, 1251 |  | Sector 43 | 9713396 |
| 1253 | 37300.37600.38600.40600.45600.46600.215600 | **25th floor - Refuge Floor** | 12d | 2026-06-13 | 2026-06-24 |  | start no earlier than 2026-06-13 | Sector 43 | 9699876 |
| 1254 | 37300.37600.38600.40600.45600.46600.215600.1163800 | Reinforcement | 10d | 2026-06-13 | 2026-06-22 | 1252 |  | Sector 43 | 9713406 |
| 1255 | 37300.37600.38600.40600.45600.46600.215600.1163900 | Wall/slab conduiting | 7d | 2026-06-14 | 2026-06-20 | 1254FS-9d |  | Sector 43 | 9713416 |
| 1256 | 37300.37600.38600.40600.45600.46600.215600.1164000 | Shuttering | 7d | 2026-06-14 | 2026-06-20 | 1254FS-9d |  | Sector 43 | 9713426 |
| 1257 | 37300.37600.38600.40600.45600.46600.215600.1164100 | Concreting | 2d | 2026-06-23 | 2026-06-24 | 1254, 1255, 1256 |  | Sector 43 | 9713436 |
| 1258 | 37300.37600.38600.40600.45600.46600.214900 | **26th floor** | 8d | 2026-06-25 | 2026-07-02 |  | start no earlier than 2026-06-25 | Sector 43 | 9699866 |
| 1259 | 37300.37600.38600.40600.45600.46600.214900.1164200 | Reinforcement | 6d | 2026-06-25 | 2026-06-30 | 1257 |  | Sector 43 | 9713446 |
| 1260 | 37300.37600.38600.40600.45600.46600.214900.1164300 | Wall/slab conduiting | 6d | 2026-06-25 | 2026-06-30 | 1259FS-6d |  | Sector 43 | 9713456 |
| 1261 | 37300.37600.38600.40600.45600.46600.214900.1164400 | Shuttering | 6d | 2026-06-25 | 2026-06-30 | 1259FS-6d |  | Sector 43 | 9713466 |
| 1262 | 37300.37600.38600.40600.45600.46600.214900.1164500 | Concreting | 2d | 2026-07-01 | 2026-07-02 | 1259, 1260, 1261 |  | Sector 43 | 9713476 |
| 1263 | 37300.37600.38600.40600.45600.46600.213600 | **27th floor** | 8d | 2026-07-03 | 2026-07-10 |  | start no earlier than 2026-07-03 | Sector 43 | 9699856 |
| 1264 | 37300.37600.38600.40600.45600.46600.213600.1164600 | Reinforcement | 6d | 2026-07-03 | 2026-07-08 | 1262 |  | Sector 43 | 9713486 |
| 1265 | 37300.37600.38600.40600.45600.46600.213600.1164700 | Wall/slab conduiting | 6d | 2026-07-03 | 2026-07-08 | 1264FS-6d |  | Sector 43 | 9713496 |
| 1266 | 37300.37600.38600.40600.45600.46600.213600.1164800 | Shuttering | 6d | 2026-07-03 | 2026-07-08 | 1264FS-6d |  | Sector 43 | 9713506 |
| 1267 | 37300.37600.38600.40600.45600.46600.213600.1164900 | Concreting | 2d | 2026-07-09 | 2026-07-10 | 1264, 1265, 1266 |  | Sector 43 | 9713516 |
| 1268 | 37300.37600.38600.40600.45600.46600.211200 | **28th floor** | 8d | 2026-07-11 | 2026-07-18 |  | start no earlier than 2026-07-11 | Sector 43 | 9699846 |
| 1269 | 37300.37600.38600.40600.45600.46600.211200.1165000 | Reinforcement | 6d | 2026-07-11 | 2026-07-16 | 1267 |  | Sector 43 | 9713526 |
| 1270 | 37300.37600.38600.40600.45600.46600.211200.1165100 | Wall/slab conduiting | 6d | 2026-07-11 | 2026-07-16 | 1269FS-6d |  | Sector 43 | 9713536 |
| 1271 | 37300.37600.38600.40600.45600.46600.211200.1165200 | Shuttering | 6d | 2026-07-11 | 2026-07-16 | 1269FS-6d |  | Sector 43 | 9713546 |
| 1272 | 37300.37600.38600.40600.45600.46600.211200.1165300 | Concreting | 2d | 2026-07-17 | 2026-07-18 | 1269, 1270, 1271 |  | Sector 43 | 9713556 |

| ID | WBS | Task | Duration | Start | Finish | Predecessors | Constraint | Calendar | Unique_Task_ID |
| --- | --- | --- | --- | --- | --- | --- | --- | --- | --- |
| 1273 | 37300.37600.38600.40600.45600.46600.184600 | **29th floor** | 8d | 2026-07-19 | 2026-07-26 |  | start no earlier than 2026-07-19 | Sector 43 | 9699836 |
| 1274 | 37300.37600.38600.40600.45600.46600.184600.1165400 | Reinforcement | 6d | 2026-07-19 | 2026-07-24 | 1272 |  | Sector 43 | 9713566 |
| 1275 | 37300.37600.38600.40600.45600.46600.184600.1165500 | Wall/slab conduiting | 6d | 2026-07-19 | 2026-07-24 | 1274FS-6d |  | Sector 43 | 9713576 |
| 1276 | 37300.37600.38600.40600.45600.46600.184600.1165600 | Shuttering | 6d | 2026-07-19 | 2026-07-24 | 1274FS-6d |  | Sector 43 | 9713586 |
| 1277 | 37300.37600.38600.40600.45600.46600.184600.1165700 | Concreting | 2d | 2026-07-25 | 2026-07-26 | 1274, 1275, 1276 |  | Sector 43 | 9713596 |
| 1278 | 37300.37600.38600.40600.45600.46600.184500 | **30th floor** | 8d | 2026-07-27 | 2026-08-03 |  | start no earlier than 2026-07-27 | Sector 43 | 9699826 |
| 1279 | 37300.37600.38600.40600.45600.46600.184500.1165800 | Reinforcement | 6d | 2026-07-27 | 2026-08-01 | 1277 |  | Sector 43 | 9713606 |
| 1280 | 37300.37600.38600.40600.45600.46600.184500.1165900 | Wall/slab conduiting | 6d | 2026-07-27 | 2026-08-01 | 1279FS-6d |  | Sector 43 | 9713616 |
| 1281 | 37300.37600.38600.40600.45600.46600.184500.1166000 | Shuttering | 6d | 2026-07-27 | 2026-08-01 | 1279FS-6d |  | Sector 43 | 9713626 |
| 1282 | 37300.37600.38600.40600.45600.46600.184500.1166100 | Concreting | 2d | 2026-08-02 | 2026-08-03 | 1279, 1280, 1281 |  | Sector 43 | 9713636 |
| 1283 | 37300.37600.38600.40600.45600.46600.184300 | **31st floor** | 10d | 2026-08-04 | 2026-08-13 |  | start no earlier than 2026-08-04 | Sector 43 | 9699806 |
| 1284 | 37300.37600.38600.40600.45600.46600.184300.1166200 | Reinforcement | 8d | 2026-08-04 | 2026-08-11 | 1282 |  | Sector 43 | 9713646 |
| 1285 | 37300.37600.38600.40600.45600.46600.184300.1166300 | Wall/slab conduiting | 6d | 2026-08-06 | 2026-08-11 | 1284FS-6d |  | Sector 43 | 9713656 |
| 1286 | 37300.37600.38600.40600.45600.46600.184300.1166400 | Shuttering | 6d | 2026-08-06 | 2026-08-11 | 1285FS-6d |  | Sector 43 | 9713666 |
| 1287 | 37300.37600.38600.40600.45600.46600.184300.1166500 | Concreting | 2d | 2026-08-12 | 2026-08-13 | 1284, 1285, 1286 |  | Sector 43 | 9713676 |
| 1288 | 37300.37600.38600.40600.45600.46600.183600 | **Terrace floor** | 25d | 2026-08-14 | 2026-09-07 |  | start no earlier than 2026-08-14 | Sector 43 | 9699796 |
| 1289 | 37300.37600.38600.40600.45600.46600.183600.1166600 | Reinforcement | 23d | 2026-08-14 | 2026-09-05 | 1287 |  | Sector 43 | 9713686 |
| 1290 | 37300.37600.38600.40600.45600.46600.183600.1166700 | Wall/slab conduiting | 20d | 2026-08-16 | 2026-09-04 | 1289FS-21d |  | Sector 43 | 9713696 |
| 1291 | 37300.37600.38600.40600.45600.46600.183600.1166800 | Shuttering | 20d | 2026-08-16 | 2026-09-04 | 1289FS-21d |  | Sector 43 | 9713706 |
| 1292 | 37300.37600.38600.40600.45600.46600.183600.1166900 | Concreting | 2d | 2026-09-06 | 2026-09-07 | 1289, 1290, 1291 |  | Sector 43 | 9713716 |
| 1293 | 37300.37600.38600.40600.45600.46600.166900 | **LMR, OHT & Mumty** | 40d | 2026-09-08 | 2026-10-17 |  | start no earlier than 2026-09-08 | Sector 43 | 9699786 |
| 1294 | 37300.37600.38600.40600.45600.46600.166900.1167000 | Reinforcement | 36d | 2026-09-08 | 2026-10-13 | 1292 |  | Sector 43 | 9713726 |
| 1295 | 37300.37600.38600.40600.45600.46600.166900.1167100 | Wall conduiting | 20d | 2026-09-14 | 2026-10-03 | 1294FS-30d |  | Sector 43 | 9713736 |
| 1296 | 37300.37600.38600.40600.45600.46600.166900.1167200 | Shuttering | 20d | 2026-09-14 | 2026-10-03 | 1294FS-30d |  | Sector 43 | 9713746 |
| 1297 | 37300.37600.38600.40600.45600.46600.166900.1167300 | Concreting | 4d | 2026-10-14 | 2026-10-17 | 1294, 1295, 1296 |  | Sector 43 | 9713756 |

| ID | WBS | Task | Duration | Start | Finish | Predecessors | Constraint | Calendar | Unique_Task_ID |
| --- | --- | --- | --- | --- | --- | --- | --- | --- | --- |
| 1298 | 37300.37600.38600.40600.45600.49300 | **Post pour works** | 287d | 2025-12-18 | 2026-09-30 |  | start no earlier than 2025-12-18 | Sector 43 | 9697556 |
| 1299 | 37300.37600.38600.40600.45600.49300.859900 | 1st floor | 7d | 2025-12-18 | 2025-12-24 | 1152 |  | Sector 43 | 9703176 |
| 1300 | 37300.37600.38600.40600.45600.49300.860000 | 2nd floor | 7d | 2025-12-27 | 2026-01-02 | 1299, 1157 |  | Sector 43 | 9703186 |
| 1301 | 37300.37600.38600.40600.45600.49300.860100 | 3rd floor | 7d | 2026-01-05 | 2026-01-11 | 1300, 1162 |  | Sector 43 | 9703196 |
| 1302 | 37300.37600.38600.40600.45600.49300.860200 | 4th floor | 7d | 2026-01-14 | 2026-01-20 | 1301, 1167 |  | Sector 43 | 9703206 |
| 1303 | 37300.37600.38600.40600.45600.49300.860300 | 5th floor | 7d | 2026-01-23 | 2026-01-29 | 1302, 1172 |  | Sector 43 | 9703216 |
| 1304 | 37300.37600.38600.40600.45600.49300.860400 | 6th floor | 7d | 2026-02-01 | 2026-02-07 | 1303, 1177 |  | Sector 43 | 9703226 |
| 1305 | 37300.37600.38600.40600.45600.49300.860500 | 7th floor | 7d | 2026-02-10 | 2026-02-16 | 1304, 1182 |  | Sector 43 | 9703236 |
| 1306 | 37300.37600.38600.40600.45600.49300.860600 | 8th floor | 7d | 2026-02-19 | 2026-02-25 | 1305, 1187 |  | Sector 43 | 9703246 |
| 1307 | 37300.37600.38600.40600.45600.49300.860700 | 9th floor | 7d | 2026-02-28 | 2026-03-06 | 1306, 1192 |  | Sector 43 | 9703256 |
| 1308 | 37300.37600.38600.40600.45600.49300.860800 | 10th floor | 7d | 2026-03-09 | 2026-03-15 | 1307, 1197 |  | Sector 43 | 9703266 |
| 1309 | 37300.37600.38600.40600.45600.49300.860900 | 11th floor | 7d | 2026-03-18 | 2026-03-24 | 1308, 1202 |  | Sector 43 | 9703276 |
| 1310 | 37300.37600.38600.40600.45600.49300.861000 | 12th floor | 7d | 2026-03-27 | 2026-04-02 | 1309, 1207 |  | Sector 43 | 9703286 |
| 1311 | 37300.37600.38600.40600.45600.49300.861100 | 13th floor | 7d | 2026-04-05 | 2026-04-11 | 1310, 1212 |  | Sector 43 | 9703296 |
| 1312 | 37300.37600.38600.40600.45600.49300.861200 | 14th floor | 7d | 2026-04-17 | 2026-04-23 | 1311, 1217 |  | Sector 43 | 9703306 |
| 1313 | 37300.37600.38600.40600.45600.49300.861300 | 15th floor | 7d | 2026-04-26 | 2026-05-02 | 1312, 1222 |  | Sector 43 | 9703316 |
| 1314 | 37300.37600.38600.40600.45600.49300.861400 | 16th floor | 7d | 2026-05-04 | 2026-05-10 | 1313, 1227 |  | Sector 43 | 9703326 |
| 1315 | 37300.37600.38600.40600.45600.49300.861500 | 17th floor - Refuge Floor | 7d | 2026-05-12 | 2026-05-18 | 1314, 1232 |  | Sector 43 | 9703336 |
| 1316 | 37300.37600.38600.40600.45600.49300.861600 | 18th floor | 7d | 2026-05-20 | 2026-05-26 | 1315, 1237 |  | Sector 43 | 9703346 |
| 1317 | 37300.37600.38600.40600.45600.49300.861700 | 19th floor | 7d | 2026-05-28 | 2026-06-03 | 1316, 1242 |  | Sector 43 | 9703356 |
| 1318 | 37300.37600.38600.40600.45600.49300.861800 | 20th floor | 7d | 2026-06-05 | 2026-06-11 | 1317, 1247 |  | Sector 43 | 9703366 |
| 1319 | 37300.37600.38600.40600.45600.49300.861900 | 21st floor | 7d | 2026-06-13 | 2026-06-19 | 1318, 1252 |  | Sector 43 | 9703376 |
| 1320 | 37300.37600.38600.40600.45600.49300.862000 | 22nd floor | 7d | 2026-06-25 | 2026-07-01 | 1319, 1257 |  | Sector 43 | 9703386 |
| 1321 | 37300.37600.38600.40600.45600.49300.862100 | 23rd floor | 7d | 2026-07-03 | 2026-07-09 | 1320, 1262 |  | Sector 43 | 9703396 |
| 1322 | 37300.37600.38600.40600.45600.49300.862200 | 24th floor | 7d | 2026-07-11 | 2026-07-17 | 1321, 1267 |  | Sector 43 | 9703406 |
| 1323 | 37300.37600.38600.40600.45600.49300.862300 | 25th floor - Refuge Floor | 7d | 2026-07-19 | 2026-07-25 | 1322, 1272 |  | Sector 43 | 9703416 |
| 1324 | 37300.37600.38600.40600.45600.49300.862400 | 26th floor | 7d | 2026-07-27 | 2026-08-02 | 1323, 1277 |  | Sector 43 | 9703426 |
| 1325 | 37300.37600.38600.40600.45600.49300.862500 | 27th floor | 7d | 2026-08-04 | 2026-08-10 | 1324, 1282 |  | Sector 43 | 9703436 |
| 1326 | 37300.37600.38600.40600.45600.49300.862600 | 28th floor | 7d | 2026-08-14 | 2026-08-20 | 1325, 1287 |  | Sector 43 | 9703446 |
| 1327 | 37300.37600.38600.40600.45600.49300.862700 | 29th floor | 7d | 2026-08-21 | 2026-08-27 | 1326 |  | Sector 43 | 9703456 |
| 1328 | 37300.37600.38600.40600.45600.49300.862800 | 30th floor | 7d | 2026-08-28 | 2026-09-03 | 1327 |  | Sector 43 | 9703466 |
| 1329 | 37300.37600.38600.40600.45600.49300.862900 | 31st floor | 7d | 2026-09-04 | 2026-09-10 | 1328 |  | Sector 43 | 9703476 |
| 1330 | 37300.37600.38600.40600.45600.49300.863000 | Terrace floor | 10d | 2026-09-11 | 2026-09-20 | 1329 |  | Sector 43 | 9703486 |
| 1331 | 37300.37600.38600.40600.45600.49300.863100 | LMR, OHT & Mumty | 10d | 2026-09-21 | 2026-09-30 | 1330 |  | Sector 43 | 9703496 |

| ID | WBS | Task | Duration | Start | Finish | Predecessors | Constraint | Calendar | Unique_Task_ID |
| --- | --- | --- | --- | --- | --- | --- | --- | --- | --- |
| 1332 | 37300.37600.38600.40600.42900 | **Finishing works** | 545d | 2025-12-30 | 2027-08-11 |  | start no earlier than 2025-12-30 | Sector 43 | 9697446 |
| 1333 | 37300.37600.38600.40600.42900.44000 | **Flat finishings** | 470d | 2025-12-30 | 2027-05-28 |  | start no earlier than 2025-12-30 | Sector 43 | 9697476 |
| 1334 | 37300.37600.38600.40600.42900.44000.59300 | **1st floor** | 92d | 2025-12-30 | 2026-03-31 |  | start no earlier than 2025-12-30 | Sector 43 | 9697936 |
| 1335 | 37300.37600.38600.40600.42900.44000.59300.1167400 | Block Work | 10d | 2025-12-30 | 2026-01-08 | 1301FS-13d |  | Sector 43 | 9713766 |
| 1336 | 37300.37600.38600.40600.42900.44000.59300.1167500 | Installation of temporary Main door | 4d | 2026-01-09 | 2026-01-12 | 1335 |  | Sector 43 | 9713776 |
| 1337 | 37300.37600.38600.40600.42900.44000.59300.1167600 | Fire sprinkler pipe fixing | 10d | 2026-01-09 | 2026-01-18 | 1335 |  | Sector 43 | 9713786 |
| 1338 | 37300.37600.38600.40600.42900.44000.59300.1167700 | Internal Plumbing Works | 10d | 2026-01-09 | 2026-01-18 | 1335 |  | Sector 43 | 9713796 |
| 1339 | 37300.37600.38600.40600.42900.44000.59300.1167800 | Waterproofing | 21d | 2026-01-09 | 2026-01-29 | 1338FS-10d |  | Sector 43 | 9713806 |
| 1340 | 37300.37600.38600.40600.42900.44000.59300.1167900 | Internal Plaster | 11d | 2026-01-09 | 2026-01-19 | 1338FS-10d |  | Sector 43 | 9713816 |
| 1341 | 37300.37600.38600.40600.42900.44000.59300.1168000 | IPS flooring work | 13d | 2026-01-09 | 2026-01-21 | 1335 |  | Sector 43 | 9713826 |
| 1342 | 37300.37600.38600.40600.42900.44000.59300.1168100 | Toilet dado work | 10d | 2026-01-28 | 2026-02-06 | 1339FS-2d, 1340 |  | Sector 43 | 9713836 |
| 1343 | 37300.37600.38600.40600.42900.44000.59300.1168200 | Toilet flooring work | 10d | 2026-02-07 | 2026-02-16 | 1342 |  | Sector 43 | 9713846 |
| 1344 | 37300.37600.38600.40600.42900.44000.59300.1168300 | Living dinning flooring | 10d | 2026-02-10 | 2026-02-19 | 1341, 1343FS-7d |  | Sector 43 | 9713856 |
| 1345 | 37300.37600.38600.40600.42900.44000.59300.1168400 | Electrical wiring work | 12d | 2026-02-10 | 2026-02-21 | 1344FS-10d |  | Sector 43 | 9713866 |
| 1346 | 37300.37600.38600.40600.42900.44000.59300.1168500 | Aluminium door-window fixing | 19d | 2026-02-14 | 2026-03-04 | 1336, 1345FS-8d |  | Sector 43 | 9713876 |
| 1347 | 37300.37600.38600.40600.42900.44000.59300.1168600 | Putty primer coat | 10d | 2026-02-25 | 2026-03-06 | 1346FS-8d |  | Sector 43 | 9713886 |
| 1348 | 37300.37600.38600.40600.42900.44000.59300.1168700 | Prehung door fixing | 8d | 2026-03-02 | 2026-03-09 | 1347FS-5d |  | Sector 43 | 9713896 |
| 1349 | 37300.37600.38600.40600.42900.44000.59300.1168800 | Painting 1st coat | 12d | 2026-03-10 | 2026-03-21 | 1348 |  | Sector 43 | 9713906 |
| 1350 | 37300.37600.38600.40600.42900.44000.59300.1168900 | False Cieling panel fixing | 10d | 2026-03-22 | 2026-03-31 | 1349 |  | Sector 43 | 9713916 |
| 1351 | 37300.37600.38600.40600.42900.44000.59100 | **2nd floor** | 92d | 2026-01-09 | 2026-04-10 |  | start no earlier than 2026-01-09 | Sector 43 | 9697946 |
| 1352 | 37300.37600.38600.40600.42900.44000.59100.1169000 | Block Work | 10d | 2026-01-09 | 2026-01-18 | 1335 |  | Sector 43 | 9713926 |
| 1353 | 37300.37600.38600.40600.42900.44000.59100.1169100 | Installation of temporary Main door | 4d | 2026-01-19 | 2026-01-22 | 1352 |  | Sector 43 | 9713936 |
| 1354 | 37300.37600.38600.40600.42900.44000.59100.1169200 | Fire sprinkler pipe fixing | 10d | 2026-01-19 | 2026-01-28 | 1337, 1352 |  | Sector 43 | 9713946 |
| 1355 | 37300.37600.38600.40600.42900.44000.59100.1169300 | Internal Plumbing Works | 10d | 2026-01-19 | 2026-01-28 | 1352 |  | Sector 43 | 9713956 |
| 1356 | 37300.37600.38600.40600.42900.44000.59100.1169400 | Waterproofing | 21d | 2026-01-19 | 2026-02-08 | 1355FS-10d |  | Sector 43 | 9713966 |
| 1357 | 37300.37600.38600.40600.42900.44000.59100.1169500 | Internal Plaster | 15d | 2026-01-19 | 2026-02-02 | 1355FS-10d |  | Sector 43 | 9713976 |
| 1358 | 37300.37600.38600.40600.42900.44000.59100.1169600 | IPS flooring work | 10d | 2026-01-19 | 2026-01-28 | 1352 |  | Sector 43 | 9713986 |
| 1359 | 37300.37600.38600.40600.42900.44000.59100.1169700 | Toilet dado work | 12d | 2026-02-07 | 2026-02-18 | 1356FS-2d, 1357FS-5d |  | Sector 43 | 9713996 |
| 1360 | 37300.37600.38600.40600.42900.44000.59100.1169800 | Toilet flooring work | 10d | 2026-02-14 | 2026-02-23 | 1359FS-5d |  | Sector 43 | 9714006 |
| 1361 | 37300.37600.38600.40600.42900.44000.59100.1169900 | Living dinning flooring | 10d | 2026-02-17 | 2026-02-26 | 1358, 1360FS-7d |  | Sector 43 | 9714016 |
| 1362 | 37300.37600.38600.40600.42900.44000.59100.1170000 | Electrical wiring work | 12d | 2026-02-17 | 2026-02-28 | 1361FS-10d |  | Sector 43 | 9714026 |
| 1363 | 37300.37600.38600.40600.42900.44000.59100.1170100 | Aluminium door-window fixing | 19d | 2026-02-21 | 2026-03-11 | 1353, 1362FS-8d |  | Sector 43 | 9714036 |
| 1364 | 37300.37600.38600.40600.42900.44000.59100.1170200 | Putty primer coat | 10d | 2026-03-04 | 2026-03-13 | 1363FS-8d |  | Sector 43 | 9714046 |
| 1365 | 37300.37600.38600.40600.42900.44000.59100.1170300 | Prehung door fixing | 8d | 2026-03-09 | 2026-03-16 | 1364FS-5d |  | Sector 43 | 9714056 |
| 1366 | 37300.37600.38600.40600.42900.44000.59100.1170400 | Painting 1st coat | 12d | 2026-03-17 | 2026-03-28 | 1365 |  | Sector 43 | 9714066 |
| 1367 | 37300.37600.38600.40600.42900.44000.59100.1170500 | False Cieling panel fixing | 10d | 2026-04-01 | 2026-04-10 | 1350, 1366 |  | Sector 43 | 9714076 |

| ID | WBS | Task | Duration | Start | Finish | Predecessors | Constraint | Calendar | Unique_Task_ID |
| --- | --- | --- | --- | --- | --- | --- | --- | --- | --- |
| 1368 | 37300.37600.38600.40600.42900.44000.59000 | **3rd floor** | 93d | 2026-01-19 | 2026-04-21 |  | start no earlier than 2026-01-19 | Sector 43 | 9697956 |
| 1369 | 37300.37600.38600.40600.42900.44000.59000.1170600 | Block Work | 10d | 2026-01-19 | 2026-01-28 | 1352 |  | Sector 43 | 9714086 |
| 1370 | 37300.37600.38600.40600.42900.44000.59000.1170700 | Installation of temporary Main door | 4d | 2026-01-29 | 2026-02-01 | 1369 |  | Sector 43 | 9714096 |
| 1371 | 37300.37600.38600.40600.42900.44000.59000.1170800 | Fire sprinkler pipe fixing | 10d | 2026-01-29 | 2026-02-07 | 1354, 1369 |  | Sector 43 | 9714106 |
| 1372 | 37300.37600.38600.40600.42900.44000.59000.1170900 | Internal Plumbing Works | 10d | 2026-01-29 | 2026-02-07 | 1369 |  | Sector 43 | 9714116 |
| 1373 | 37300.37600.38600.40600.42900.44000.59000.1171000 | Waterproofing | 21d | 2026-02-08 | 2026-02-28 | 1372 |  | Sector 43 | 9714126 |
| 1374 | 37300.37600.38600.40600.42900.44000.59000.1171100 | Internal Plaster | 11d | 2026-01-31 | 2026-02-10 | 1372FS-8d |  | Sector 43 | 9714136 |
| 1375 | 37300.37600.38600.40600.42900.44000.59000.1171200 | IPS flooring work | 13d | 2026-01-29 | 2026-02-10 | 1369 |  | Sector 43 | 9714146 |
| 1376 | 37300.37600.38600.40600.42900.44000.59000.1171300 | Toilet dado work | 10d | 2026-02-27 | 2026-03-08 | 1373FS-2d, 1374 |  | Sector 43 | 9714156 |
| 1377 | 37300.37600.38600.40600.42900.44000.59000.1171400 | Toilet flooring work | 12d | 2026-03-09 | 2026-03-20 | 1376 |  | Sector 43 | 9714166 |
| 1378 | 37300.37600.38600.40600.42900.44000.59000.1171500 | Living dinning flooring | 12d | 2026-03-01 | 2026-03-12 | 1375, 1377FS-20d |  | Sector 43 | 9714176 |
| 1379 | 37300.37600.38600.40600.42900.44000.59000.1171600 | Electrical wiring work | 12d | 2026-03-03 | 2026-03-14 | 1378FS-10d |  | Sector 43 | 9714186 |
| 1380 | 37300.37600.38600.40600.42900.44000.59000.1171700 | Aluminium door-window fixing | 19d | 2026-03-07 | 2026-03-25 | 1370, 1379FS-8d |  | Sector 43 | 9714196 |
| 1381 | 37300.37600.38600.40600.42900.44000.59000.1171800 | Putty primer coat | 10d | 2026-03-18 | 2026-03-27 | 1380FS-8d |  | Sector 43 | 9714206 |
| 1382 | 37300.37600.38600.40600.42900.44000.59000.1171900 | Prehung door fixing | 8d | 2026-03-23 | 2026-03-30 | 1381FS-5d |  | Sector 43 | 9714216 |
| 1383 | 37300.37600.38600.40600.42900.44000.59000.1172000 | Painting 1st coat | 12d | 2026-03-31 | 2026-04-11 | 1382 |  | Sector 43 | 9714226 |
| 1384 | 37300.37600.38600.40600.42900.44000.59000.1172100 | False Cieling panel fixing | 10d | 2026-04-12 | 2026-04-21 | 1367, 1383 |  | Sector 43 | 9714236 |
| 1385 | 37300.37600.38600.40600.42900.44000.58800 | **4th floor** | 93d | 2026-01-29 | 2026-05-01 |  | start no earlier than 2026-01-29 | Sector 43 | 9697966 |
| 1386 | 37300.37600.38600.40600.42900.44000.58800.1172200 | Block Work | 10d | 2026-01-29 | 2026-02-07 | 1369 |  | Sector 43 | 9714246 |
| 1387 | 37300.37600.38600.40600.42900.44000.58800.1172300 | Installation of temporary Main door | 4d | 2026-02-08 | 2026-02-11 | 1386 |  | Sector 43 | 9714256 |
| 1388 | 37300.37600.38600.40600.42900.44000.58800.1172400 | Fire sprinkler pipe fixing | 10d | 2026-02-08 | 2026-02-17 | 1371, 1386 |  | Sector 43 | 9714266 |
| 1389 | 37300.37600.38600.40600.42900.44000.58800.1172500 | Internal Plumbing Works | 10d | 2026-02-08 | 2026-02-17 | 1386 |  | Sector 43 | 9714276 |
| 1390 | 37300.37600.38600.40600.42900.44000.58800.1172600 | Waterproofing | 21d | 2026-02-18 | 2026-03-10 | 1389 |  | Sector 43 | 9714286 |
| 1391 | 37300.37600.38600.40600.42900.44000.58800.1172700 | Internal Plaster | 10d | 2026-02-11 | 2026-02-20 | 1389FS-7d |  | Sector 43 | 9714296 |
| 1392 | 37300.37600.38600.40600.42900.44000.58800.1172800 | IPS flooring work | 13d | 2026-02-08 | 2026-02-20 | 1386 |  | Sector 43 | 9714306 |
| 1393 | 37300.37600.38600.40600.42900.44000.58800.1172900 | Toilet dado work | 10d | 2026-03-09 | 2026-03-18 | 1390FS-2d, 1391 |  | Sector 43 | 9714316 |
| 1394 | 37300.37600.38600.40600.42900.44000.58800.1173000 | Toilet flooring work | 12d | 2026-03-19 | 2026-03-30 | 1393 |  | Sector 43 | 9714326 |
| 1395 | 37300.37600.38600.40600.42900.44000.58800.1173100 | Living dinning flooring | 12d | 2026-03-11 | 2026-03-22 | 1392, 1394FS-20d |  | Sector 43 | 9714336 |
| 1396 | 37300.37600.38600.40600.42900.44000.58800.1173200 | Electrical wiring work | 12d | 2026-03-13 | 2026-03-24 | 1395FS-10d |  | Sector 43 | 9714346 |
| 1397 | 37300.37600.38600.40600.42900.44000.58800.1173300 | Aluminium door-window fixing | 19d | 2026-03-10 | 2026-03-28 | 1387, 1396FS-15d |  | Sector 43 | 9714356 |
| 1398 | 37300.37600.38600.40600.42900.44000.58800.1173400 | Putty primer coat | 10d | 2026-03-21 | 2026-03-30 | 1397FS-8d |  | Sector 43 | 9714366 |
| 1399 | 37300.37600.38600.40600.42900.44000.58800.1173500 | Prehung door fixing | 8d | 2026-03-26 | 2026-04-02 | 1398FS-5d |  | Sector 43 | 9714376 |
| 1400 | 37300.37600.38600.40600.42900.44000.58800.1173600 | Painting 1st coat | 12d | 2026-04-03 | 2026-04-14 | 1399 |  | Sector 43 | 9714386 |
| 1401 | 37300.37600.38600.40600.42900.44000.58800.1173700 | False Cieling panel fixing | 10d | 2026-04-22 | 2026-05-01 | 1384, 1400 |  | Sector 43 | 9714396 |

| ID | WBS | Task | Duration | Start | Finish | Predecessors | Constraint | Calendar | Unique_Task_ID |
| --- | --- | --- | --- | --- | --- | --- | --- | --- | --- |
| 1402 | 37300.37600.38600.40600.42900.44000.58700 | **5th floor** | 93d | 2026-02-08 | 2026-05-11 |  | start no earlier than 2026-02-08 | Sector 43 | 9697976 |
| 1403 | 37300.37600.38600.40600.42900.44000.58700.1173800 | Block Work | 10d | 2026-02-08 | 2026-02-17 | 1386 |  | Sector 43 | 9714406 |
| 1404 | 37300.37600.38600.40600.42900.44000.58700.1173900 | Installation of temporary Main door | 4d | 2026-02-18 | 2026-02-21 | 1403 |  | Sector 43 | 9714416 |
| 1405 | 37300.37600.38600.40600.42900.44000.58700.1174000 | Fire sprinkler pipe fixing | 10d | 2026-02-18 | 2026-02-27 | 1388, 1403 |  | Sector 43 | 9714426 |
| 1406 | 37300.37600.38600.40600.42900.44000.58700.1174100 | Internal Plumbing Works | 15d | 2026-02-18 | 2026-03-04 | 1403 |  | Sector 43 | 9714436 |
| 1407 | 37300.37600.38600.40600.42900.44000.58700.1174200 | Waterproofing | 21d | 2026-03-05 | 2026-03-25 | 1406 |  | Sector 43 | 9714446 |
| 1408 | 37300.37600.38600.40600.42900.44000.58700.1174300 | Internal Plaster | 15d | 2026-03-05 | 2026-03-19 | 1406 |  | Sector 43 | 9714456 |
| 1409 | 37300.37600.38600.40600.42900.44000.58700.1174400 | IPS flooring work | 13d | 2026-02-18 | 2026-03-02 | 1403 |  | Sector 43 | 9714466 |
| 1410 | 37300.37600.38600.40600.42900.44000.58700.1174500 | Toilet dado work | 10d | 2026-03-24 | 2026-04-02 | 1407FS-2d, 1408 |  | Sector 43 | 9714476 |
| 1411 | 37300.37600.38600.40600.42900.44000.58700.1174600 | Toilet flooring work | 12d | 2026-04-03 | 2026-04-14 | 1410 |  | Sector 43 | 9714486 |
| 1412 | 37300.37600.38600.40600.42900.44000.58700.1174700 | Living dinning flooring | 12d | 2026-03-10 | 2026-03-21 | 1403FS+20d |  | Sector 43 | 9714496 |
| 1413 | 37300.37600.38600.40600.42900.44000.58700.1174800 | Electrical wiring work | 12d | 2026-03-12 | 2026-03-23 | 1412FS-10d |  | Sector 43 | 9714506 |
| 1414 | 37300.37600.38600.40600.42900.44000.58700.1174900 | Aluminium door-window fixing | 19d | 2026-03-09 | 2026-03-27 | 1404, 1413FS-15d |  | Sector 43 | 9714516 |
| 1415 | 37300.37600.38600.40600.42900.44000.58700.1175000 | Putty primer coat | 10d | 2026-03-20 | 2026-03-29 | 1414FS-8d |  | Sector 43 | 9714526 |
| 1416 | 37300.37600.38600.40600.42900.44000.58700.1175100 | Prehung door fixing | 8d | 2026-03-25 | 2026-04-01 | 1415FS-5d |  | Sector 43 | 9714536 |
| 1417 | 37300.37600.38600.40600.42900.44000.58700.1175200 | Painting 1st coat | 12d | 2026-04-02 | 2026-04-13 | 1416 |  | Sector 43 | 9714546 |
| 1418 | 37300.37600.38600.40600.42900.44000.58700.1175300 | False Cieling panel fixing | 10d | 2026-05-02 | 2026-05-11 | 1401, 1417 |  | Sector 43 | 9714556 |
| 1419 | 37300.37600.38600.40600.42900.44000.58600 | **6th floor** | 93d | 2026-02-18 | 2026-05-21 |  | start no earlier than 2026-02-18 | Sector 43 | 9697986 |
| 1420 | 37300.37600.38600.40600.42900.44000.58600.1175400 | Block Work | 10d | 2026-02-18 | 2026-02-27 | 1403 |  | Sector 43 | 9714566 |
| 1421 | 37300.37600.38600.40600.42900.44000.58600.1175500 | Installation of temporary Main door | 4d | 2026-02-28 | 2026-03-03 | 1420 |  | Sector 43 | 9714576 |
| 1422 | 37300.37600.38600.40600.42900.44000.58600.1175600 | Fire sprinkler pipe fixing | 10d | 2026-02-28 | 2026-03-09 | 1405, 1420 |  | Sector 43 | 9714586 |
| 1423 | 37300.37600.38600.40600.42900.44000.58600.1175700 | Internal Plumbing Works | 15d | 2026-02-28 | 2026-03-14 | 1420 |  | Sector 43 | 9714596 |
| 1424 | 37300.37600.38600.40600.42900.44000.58600.1175800 | Waterproofing | 21d | 2026-03-15 | 2026-04-04 | 1423 |  | Sector 43 | 9714606 |
| 1425 | 37300.37600.38600.40600.42900.44000.58600.1175900 | Internal Plaster | 15d | 2026-02-28 | 2026-03-14 | 1423FS-15d |  | Sector 43 | 9714616 |
| 1426 | 37300.37600.38600.40600.42900.44000.58600.1176000 | IPS flooring work | 13d | 2026-02-28 | 2026-03-12 | 1420 |  | Sector 43 | 9714626 |
| 1427 | 37300.37600.38600.40600.42900.44000.58600.1176100 | Toilet dado work | 10d | 2026-04-03 | 2026-04-12 | 1424FS-2d, 1425 |  | Sector 43 | 9714636 |
| 1428 | 37300.37600.38600.40600.42900.44000.58600.1176200 | Toilet flooring work | 10d | 2026-04-13 | 2026-04-22 | 1427 |  | Sector 43 | 9714646 |
| 1429 | 37300.37600.38600.40600.42900.44000.58600.1176300 | Living dinning flooring | 10d | 2026-03-10 | 2026-03-19 | 1420FS+10d |  | Sector 43 | 9714656 |
| 1430 | 37300.37600.38600.40600.42900.44000.58600.1176400 | Electrical wiring work | 12d | 2026-03-10 | 2026-03-21 | 1429FS-10d |  | Sector 43 | 9714666 |
| 1431 | 37300.37600.38600.40600.42900.44000.58600.1176500 | Aluminium door-window fixing | 19d | 2026-03-14 | 2026-04-01 | 1421, 1430FS-8d |  | Sector 43 | 9714676 |
| 1432 | 37300.37600.38600.40600.42900.44000.58600.1176600 | Putty primer coat | 10d | 2026-03-25 | 2026-04-03 | 1431FS-8d |  | Sector 43 | 9714686 |
| 1433 | 37300.37600.38600.40600.42900.44000.58600.1176700 | Prehung door fixing | 8d | 2026-03-30 | 2026-04-06 | 1432FS-5d |  | Sector 43 | 9714696 |
| 1434 | 37300.37600.38600.40600.42900.44000.58600.1176800 | Painting 1st coat | 12d | 2026-04-07 | 2026-04-18 | 1433 |  | Sector 43 | 9714706 |
| 1435 | 37300.37600.38600.40600.42900.44000.58600.1176900 | False Cieling panel fixing | 10d | 2026-05-12 | 2026-05-21 | 1418, 1434 |  | Sector 43 | 9714716 |

| ID | WBS | Task | Duration | Start | Finish | Predecessors | Constraint | Calendar | Unique_Task_ID |
| --- | --- | --- | --- | --- | --- | --- | --- | --- | --- |
| 1436 | 37300.37600.38600.40600.42900.44000.58400 | **7th floor** | 93d | 2026-02-28 | 2026-05-31 |  | start no earlier than 2026-02-28 | Sector 43 | 9697996 |
| 1437 | 37300.37600.38600.40600.42900.44000.58400.1177000 | Block Work | 10d | 2026-02-28 | 2026-03-09 | 1420 |  | Sector 43 | 9714726 |
| 1438 | 37300.37600.38600.40600.42900.44000.58400.1177100 | Installation of temporary Main door | 4d | 2026-03-10 | 2026-03-13 | 1437 |  | Sector 43 | 9714736 |
| 1439 | 37300.37600.38600.40600.42900.44000.58400.1177200 | Fire sprinkler pipe fixing | 10d | 2026-03-10 | 2026-03-19 | 1422, 1437 |  | Sector 43 | 9714746 |
| 1440 | 37300.37600.38600.40600.42900.44000.58400.1177300 | Internal Plumbing Works | 15d | 2026-03-10 | 2026-03-24 | 1437 |  | Sector 43 | 9714756 |
| 1441 | 37300.37600.38600.40600.42900.44000.58400.1177400 | Waterproofing | 21d | 2026-03-25 | 2026-04-14 | 1440 |  | Sector 43 | 9714766 |
| 1442 | 37300.37600.38600.40600.42900.44000.58400.1177500 | Internal Plaster | 15d | 2026-03-11 | 2026-03-25 | 1440FS-14d |  | Sector 43 | 9714776 |
| 1443 | 37300.37600.38600.40600.42900.44000.58400.1177600 | IPS flooring work | 13d | 2026-03-10 | 2026-03-22 | 1437 |  | Sector 43 | 9714786 |
| 1444 | 37300.37600.38600.40600.42900.44000.58400.1177700 | Toilet dado work | 10d | 2026-04-13 | 2026-04-22 | 1441FS-2d, 1442 |  | Sector 43 | 9714796 |
| 1445 | 37300.37600.38600.40600.42900.44000.58400.1177800 | Toilet flooring work | 10d | 2026-04-23 | 2026-05-02 | 1444 |  | Sector 43 | 9714806 |
| 1446 | 37300.37600.38600.40600.42900.44000.58400.1177900 | Living dinning flooring | 10d | 2026-03-20 | 2026-03-29 | 1437FS+10d |  | Sector 43 | 9714816 |
| 1447 | 37300.37600.38600.40600.42900.44000.58400.1178000 | Electrical wiring work | 12d | 2026-03-20 | 2026-03-31 | 1446FS-10d |  | Sector 43 | 9714826 |
| 1448 | 37300.37600.38600.40600.42900.44000.58400.1178100 | Aluminium door-window fixing | 19d | 2026-03-24 | 2026-04-11 | 1438, 1447FS-8d |  | Sector 43 | 9714836 |
| 1449 | 37300.37600.38600.40600.42900.44000.58400.1178200 | Putty primer coat | 10d | 2026-04-04 | 2026-04-13 | 1448FS-8d |  | Sector 43 | 9714846 |
| 1450 | 37300.37600.38600.40600.42900.44000.58400.1178300 | Prehung door fixing | 8d | 2026-04-09 | 2026-04-16 | 1449FS-5d |  | Sector 43 | 9714856 |
| 1451 | 37300.37600.38600.40600.42900.44000.58400.1178400 | Painting 1st coat | 12d | 2026-04-17 | 2026-04-28 | 1450 |  | Sector 43 | 9714866 |
| 1452 | 37300.37600.38600.40600.42900.44000.58400.1178500 | False Cieling panel fixing | 10d | 2026-05-22 | 2026-05-31 | 1435, 1451 |  | Sector 43 | 9714876 |
| 1453 | 37300.37600.38600.40600.42900.44000.58300 | **8th floor** | 98d | 2026-03-05 | 2026-06-10 |  | start no earlier than 2026-03-05 | Sector 43 | 9698006 |
| 1454 | 37300.37600.38600.40600.42900.44000.58300.1178600 | Block Work | 10d | 2026-03-10 | 2026-03-19 | 1437 |  | Sector 43 | 9714886 |
| 1455 | 37300.37600.38600.40600.42900.44000.58300.1178700 | Installation of temporary Main door | 4d | 2026-03-20 | 2026-03-23 | 1454 |  | Sector 43 | 9714896 |
| 1456 | 37300.37600.38600.40600.42900.44000.58300.1178800 | Fire sprinkler pipe fixing | 10d | 2026-03-20 | 2026-03-29 | 1439, 1454 |  | Sector 43 | 9714906 |
| 1457 | 37300.37600.38600.40600.42900.44000.58300.1178900 | Internal Plumbing Works | 15d | 2026-03-20 | 2026-04-03 | 1454 |  | Sector 43 | 9714916 |
| 1458 | 37300.37600.38600.40600.42900.44000.58300.1179000 | Waterproofing | 21d | 2026-04-04 | 2026-04-24 | 1457 |  | Sector 43 | 9714926 |
| 1459 | 37300.37600.38600.40600.42900.44000.58300.1179100 | Internal Plaster | 15d | 2026-03-05 | 2026-03-19 | 1457FS-30d |  | Sector 43 | 9714936 |
| 1460 | 37300.37600.38600.40600.42900.44000.58300.1179200 | IPS flooring work | 13d | 2026-03-20 | 2026-04-01 | 1454 |  | Sector 43 | 9714946 |
| 1461 | 37300.37600.38600.40600.42900.44000.58300.1179300 | Toilet dado work | 10d | 2026-04-23 | 2026-05-02 | 1458FS-2d, 1459 |  | Sector 43 | 9714956 |
| 1462 | 37300.37600.38600.40600.42900.44000.58300.1179400 | Toilet flooring work | 10d | 2026-05-03 | 2026-05-12 | 1461 |  | Sector 43 | 9714966 |
| 1463 | 37300.37600.38600.40600.42900.44000.58300.1179500 | Living dinning flooring | 10d | 2026-03-20 | 2026-03-29 | 1455FS-4d |  | Sector 43 | 9714976 |
| 1464 | 37300.37600.38600.40600.42900.44000.58300.1179600 | Electrical wiring work | 12d | 2026-03-20 | 2026-03-31 | 1463FS-10d |  | Sector 43 | 9714986 |
| 1465 | 37300.37600.38600.40600.42900.44000.58300.1179700 | Aluminium door-window fixing | 19d | 2026-03-24 | 2026-04-11 | 1455, 1464FS-8d |  | Sector 43 | 9714996 |
| 1466 | 37300.37600.38600.40600.42900.44000.58300.1179800 | Putty primer coat | 10d | 2026-04-04 | 2026-04-13 | 1465FS-8d |  | Sector 43 | 9715006 |
| 1467 | 37300.37600.38600.40600.42900.44000.58300.1179900 | Prehung door fixing | 8d | 2026-04-09 | 2026-04-16 | 1466FS-5d |  | Sector 43 | 9715016 |
| 1468 | 37300.37600.38600.40600.42900.44000.58300.1180000 | Painting 1st coat | 12d | 2026-04-17 | 2026-04-28 | 1467 |  | Sector 43 | 9715026 |
| 1469 | 37300.37600.38600.40600.42900.44000.58300.1180100 | False Cieling panel fixing | 10d | 2026-06-01 | 2026-06-10 | 1452, 1468 |  | Sector 43 | 9715036 |

| ID | WBS | Task | Duration | Start | Finish | Predecessors | Constraint | Calendar | Unique_Task_ID |
| --- | --- | --- | --- | --- | --- | --- | --- | --- | --- |
| 1470 | 37300.37600.38600.40600.42900.44000.58200 | **9th floor** | 103d | 2026-03-10 | 2026-06-20 |  | start no earlier than 2026-03-10 | Sector 43 | 9698016 |
| 1471 | 37300.37600.38600.40600.42900.44000.58200.1180200 | Block Work | 10d | 2026-03-20 | 2026-03-29 | 1454 |  | Sector 43 | 9715046 |
| 1472 | 37300.37600.38600.40600.42900.44000.58200.1180300 | Installation of temporary Main door | 4d | 2026-03-30 | 2026-04-02 | 1471 |  | Sector 43 | 9715056 |
| 1473 | 37300.37600.38600.40600.42900.44000.58200.1180400 | Fire sprinkler pipe fixing | 10d | 2026-03-30 | 2026-04-08 | 1456, 1471 |  | Sector 43 | 9715066 |
| 1474 | 37300.37600.38600.40600.42900.44000.58200.1180500 | Internal Plumbing Works | 15d | 2026-03-25 | 2026-04-08 | 1471FS-5d |  | Sector 43 | 9715076 |
| 1475 | 37300.37600.38600.40600.42900.44000.58200.1180600 | Waterproofing | 21d | 2026-04-09 | 2026-04-29 | 1474 |  | Sector 43 | 9715086 |
| 1476 | 37300.37600.38600.40600.42900.44000.58200.1180700 | Internal Plaster | 15d | 2026-03-10 | 2026-03-24 | 1474FS-30d |  | Sector 43 | 9715096 |
| 1477 | 37300.37600.38600.40600.42900.44000.58200.1180800 | IPS flooring work | 13d | 2026-03-30 | 2026-04-11 | 1471 |  | Sector 43 | 9715106 |
| 1478 | 37300.37600.38600.40600.42900.44000.58200.1180900 | Toilet dado work | 10d | 2026-04-28 | 2026-05-07 | 1475FS-2d, 1476 |  | Sector 43 | 9715116 |
| 1479 | 37300.37600.38600.40600.42900.44000.58200.1181000 | Toilet flooring work | 10d | 2026-05-08 | 2026-05-17 | 1478 |  | Sector 43 | 9715126 |
| 1480 | 37300.37600.38600.40600.42900.44000.58200.1181100 | Living dinning flooring | 10d | 2026-03-20 | 2026-03-29 | 1471FS-10d |  | Sector 43 | 9715136 |
| 1481 | 37300.37600.38600.40600.42900.44000.58200.1181200 | Electrical wiring work | 12d | 2026-03-20 | 2026-03-31 | 1480FS-10d |  | Sector 43 | 9715146 |
| 1482 | 37300.37600.38600.40600.42900.44000.58200.1181300 | Aluminium door-window fixing | 19d | 2026-04-03 | 2026-04-21 | 1472, 1481FS-8d |  | Sector 43 | 9715156 |
| 1483 | 37300.37600.38600.40600.42900.44000.58200.1181400 | Putty primer coat | 10d | 2026-04-14 | 2026-04-23 | 1482FS-8d |  | Sector 43 | 9715166 |
| 1484 | 37300.37600.38600.40600.42900.44000.58200.1181500 | Prehung door fixing | 8d | 2026-04-19 | 2026-04-26 | 1483FS-5d |  | Sector 43 | 9715176 |
| 1485 | 37300.37600.38600.40600.42900.44000.58200.1181600 | Painting 1st coat | 12d | 2026-04-27 | 2026-05-08 | 1484 |  | Sector 43 | 9715186 |
| 1486 | 37300.37600.38600.40600.42900.44000.58200.1181700 | False Cieling panel fixing | 10d | 2026-06-11 | 2026-06-20 | 1469, 1485 |  | Sector 43 | 9715196 |
| 1487 | 37300.37600.38600.40600.42900.44000.58100 | **10th floor** | 150d | 2026-03-15 | 2026-08-11 |  | start no earlier than 2026-03-15 | Sector 43 | 9698026 |
| 1488 | 37300.37600.38600.40600.42900.44000.58100.1181800 | Block Work | 10d | 2026-03-20 | 2026-03-29 | 1454 |  | Sector 43 | 9715206 |
| 1489 | 37300.37600.38600.40600.42900.44000.58100.1181900 | Installation of temporary Main door | 4d | 2026-03-30 | 2026-04-02 | 1488 |  | Sector 43 | 9715216 |
| 1490 | 37300.37600.38600.40600.42900.44000.58100.1182000 | Fire sprinkler pipe fixing | 10d | 2026-04-09 | 2026-04-18 | 1473, 1488 |  | Sector 43 | 9715226 |
| 1491 | 37300.37600.38600.40600.42900.44000.58100.1182100 | Internal Plumbing Works | 15d | 2026-03-30 | 2026-04-13 | 1488 |  | Sector 43 | 9715236 |
| 1492 | 37300.37600.38600.40600.42900.44000.58100.1182200 | Waterproofing | 21d | 2026-04-14 | 2026-05-04 | 1491 |  | Sector 43 | 9715246 |
| 1493 | 37300.37600.38600.40600.42900.44000.58100.1182300 | Internal Plaster | 15d | 2026-03-15 | 2026-03-29 | 1491FS-30d |  | Sector 43 | 9715256 |
| 1494 | 37300.37600.38600.40600.42900.44000.58100.1182400 | IPS flooring work | 13d | 2026-03-30 | 2026-04-11 | 1488 |  | Sector 43 | 9715266 |
| 1495 | 37300.37600.38600.40600.42900.44000.58100.1182500 | Toilet dado work | 25d | 2026-05-03 | 2026-05-27 | 1492FS-2d, 1493 |  | Sector 43 | 9715276 |
| 1496 | 37300.37600.38600.40600.42900.44000.58100.1182600 | Toilet flooring work | 25d | 2026-05-28 | 2026-06-21 | 1495 |  | Sector 43 | 9715286 |
| 1497 | 37300.37600.38600.40600.42900.44000.58100.1182700 | Living dinning flooring | 31d | 2026-06-02 | 2026-07-02 | 1494, 1496FS-20d |  | Sector 43 | 9715296 |
| 1498 | 37300.37600.38600.40600.42900.44000.58100.1182800 | Electrical wiring work | 12d | 2026-06-23 | 2026-07-04 | 1497FS-10d |  | Sector 43 | 9715306 |
| 1499 | 37300.37600.38600.40600.42900.44000.58100.1182900 | Aluminium door-window fixing | 19d | 2026-06-27 | 2026-07-15 | 1489, 1498FS-8d |  | Sector 43 | 9715316 |
| 1500 | 37300.37600.38600.40600.42900.44000.58100.1183000 | Putty primer coat | 10d | 2026-07-08 | 2026-07-17 | 1499FS-8d |  | Sector 43 | 9715326 |
| 1501 | 37300.37600.38600.40600.42900.44000.58100.1183100 | Prehung door fixing | 8d | 2026-07-13 | 2026-07-20 | 1500FS-5d |  | Sector 43 | 9715336 |
| 1502 | 37300.37600.38600.40600.42900.44000.58100.1183200 | Painting 1st coat | 12d | 2026-07-21 | 2026-08-01 | 1501 |  | Sector 43 | 9715346 |
| 1503 | 37300.37600.38600.40600.42900.44000.58100.1183300 | False Cieling panel fixing | 10d | 2026-08-02 | 2026-08-11 | 1486, 1502 |  | Sector 43 | 9715356 |

| ID | WBS | Task | Duration | Start | Finish | Predecessors | Constraint | Calendar | Unique_Task_ID |
| --- | --- | --- | --- | --- | --- | --- | --- | --- | --- |
| 1504 | 37300.37600.38600.40600.42900.44000.58000 | **11th floor** | 160d | 2026-03-15 | 2026-08-21 |  | start no earlier than 2026-03-15 | Sector 43 | 9698036 |
| 1505 | 37300.37600.38600.40600.42900.44000.58000.1183400 | Block Work | 10d | 2026-03-20 | 2026-03-29 | 1454 |  | Sector 43 | 9715366 |
| 1506 | 37300.37600.38600.40600.42900.44000.58000.1183500 | Installation of temporary Main door | 4d | 2026-03-30 | 2026-04-02 | 1505 |  | Sector 43 | 9715376 |
| 1507 | 37300.37600.38600.40600.42900.44000.58000.1183600 | Fire sprinkler pipe fixing | 10d | 2026-04-19 | 2026-04-28 | 1490, 1505 |  | Sector 43 | 9715386 |
| 1508 | 37300.37600.38600.40600.42900.44000.58000.1183700 | Internal Plumbing Works | 15d | 2026-03-30 | 2026-04-13 | 1505 |  | Sector 43 | 9715396 |
| 1509 | 37300.37600.38600.40600.42900.44000.58000.1183800 | Waterproofing | 21d | 2026-04-14 | 2026-05-04 | 1508 |  | Sector 43 | 9715406 |
| 1510 | 37300.37600.38600.40600.42900.44000.58000.1183900 | Internal Plaster | 15d | 2026-03-15 | 2026-03-29 | 1508FS-30d |  | Sector 43 | 9715416 |
| 1511 | 37300.37600.38600.40600.42900.44000.58000.1184000 | IPS flooring work | 13d | 2026-03-30 | 2026-04-11 | 1505 |  | Sector 43 | 9715426 |
| 1512 | 37300.37600.38600.40600.42900.44000.58000.1184100 | Toilet dado work | 25d | 2026-05-03 | 2026-05-27 | 1509FS-2d, 1510 |  | Sector 43 | 9715436 |
| 1513 | 37300.37600.38600.40600.42900.44000.58000.1184200 | Toilet flooring work | 25d | 2026-05-28 | 2026-06-21 | 1511, 1512 |  | Sector 43 | 9715446 |
| 1514 | 37300.37600.38600.40600.42900.44000.58000.1184300 | Living dinning flooring | 31d | 2026-06-02 | 2026-07-02 | 1513FS-20d |  | Sector 43 | 9715456 |
| 1515 | 37300.37600.38600.40600.42900.44000.58000.1184400 | Electrical wiring work | 12d | 2026-06-23 | 2026-07-04 | 1514FS-10d |  | Sector 43 | 9715466 |
| 1516 | 37300.37600.38600.40600.42900.44000.58000.1184500 | Aluminium door-window fixing | 19d | 2026-06-27 | 2026-07-15 | 1506, 1515FS-8d |  | Sector 43 | 9715476 |
| 1517 | 37300.37600.38600.40600.42900.44000.58000.1184600 | Putty primer coat | 10d | 2026-07-08 | 2026-07-17 | 1516FS-8d |  | Sector 43 | 9715486 |
| 1518 | 37300.37600.38600.40600.42900.44000.58000.1184700 | Prehung door fixing | 8d | 2026-07-13 | 2026-07-20 | 1517FS-5d |  | Sector 43 | 9715496 |
| 1519 | 37300.37600.38600.40600.42900.44000.58000.1184800 | Painting 1st coat | 12d | 2026-07-21 | 2026-08-01 | 1518 |  | Sector 43 | 9715506 |
| 1520 | 37300.37600.38600.40600.42900.44000.58000.1184900 | False Cieling panel fixing | 10d | 2026-08-12 | 2026-08-21 | 1503, 1519 |  | Sector 43 | 9715516 |
| 1521 | 37300.37600.38600.40600.42900.44000.57900 | **12th floor** | 165d | 2026-03-20 | 2026-08-31 |  | start no earlier than 2026-03-20 | Sector 43 | 9698046 |
| 1522 | 37300.37600.38600.40600.42900.44000.57900.1185000 | Block Work | 10d | 2026-03-20 | 2026-03-29 | 1454 |  | Sector 43 | 9715526 |
| 1523 | 37300.37600.38600.40600.42900.44000.57900.1185100 | Installation of temporary Main door | 4d | 2026-03-30 | 2026-04-02 | 1522 |  | Sector 43 | 9715536 |
| 1524 | 37300.37600.38600.40600.42900.44000.57900.1185200 | Fire sprinkler pipe fixing | 10d | 2026-04-29 | 2026-05-08 | 1507, 1522 |  | Sector 43 | 9715546 |
| 1525 | 37300.37600.38600.40600.42900.44000.57900.1185300 | Internal Plumbing Works | 15d | 2026-03-30 | 2026-04-13 | 1522 |  | Sector 43 | 9715556 |
| 1526 | 37300.37600.38600.40600.42900.44000.57900.1185400 | Waterproofing | 21d | 2026-04-14 | 2026-05-04 | 1525 |  | Sector 43 | 9715566 |
| 1527 | 37300.37600.38600.40600.42900.44000.57900.1185500 | Internal Plaster | 15d | 2026-04-14 | 2026-04-28 | 1525 |  | Sector 43 | 9715576 |
| 1528 | 37300.37600.38600.40600.42900.44000.57900.1185600 | IPS flooring work | 13d | 2026-03-30 | 2026-04-11 | 1522 |  | Sector 43 | 9715586 |
| 1529 | 37300.37600.38600.40600.42900.44000.57900.1185700 | Toilet dado work | 25d | 2026-05-03 | 2026-05-27 | 1526FS-2d, 1527 |  | Sector 43 | 9715596 |
| 1530 | 37300.37600.38600.40600.42900.44000.57900.1185800 | Toilet flooring work | 25d | 2026-05-28 | 2026-06-21 | 1529 |  | Sector 43 | 9715606 |
| 1531 | 37300.37600.38600.40600.42900.44000.57900.1185900 | Living dinning flooring | 31d | 2026-06-02 | 2026-07-02 | 1528, 1530FS-20d |  | Sector 43 | 9715616 |
| 1532 | 37300.37600.38600.40600.42900.44000.57900.1186000 | Electrical wiring work | 12d | 2026-06-23 | 2026-07-04 | 1531FS-10d |  | Sector 43 | 9715626 |
| 1533 | 37300.37600.38600.40600.42900.44000.57900.1186100 | Aluminium door-window fixing | 19d | 2026-06-27 | 2026-07-15 | 1523, 1532FS-8d |  | Sector 43 | 9715636 |
| 1534 | 37300.37600.38600.40600.42900.44000.57900.1186200 | Putty primer coat | 10d | 2026-07-08 | 2026-07-17 | 1533FS-8d |  | Sector 43 | 9715646 |
| 1535 | 37300.37600.38600.40600.42900.44000.57900.1186300 | Prehung door fixing | 8d | 2026-07-13 | 2026-07-20 | 1534FS-5d |  | Sector 43 | 9715656 |
| 1536 | 37300.37600.38600.40600.42900.44000.57900.1186400 | Painting 1st coat | 12d | 2026-07-21 | 2026-08-01 | 1535 |  | Sector 43 | 9715666 |
| 1537 | 37300.37600.38600.40600.42900.44000.57900.1186500 | False Cieling panel fixing | 10d | 2026-08-22 | 2026-08-31 | 1520, 1536 |  | Sector 43 | 9715676 |

| ID | WBS | Task | Duration | Start | Finish | Predecessors | Constraint | Calendar | Unique_Task_ID |
| --- | --- | --- | --- | --- | --- | --- | --- | --- | --- |
| 1538 | 37300.37600.38600.40600.42900.44000.57800 | **13th floor** | 171d | 2026-04-12 | 2026-09-29 |  | start no earlier than 2026-04-12 | Sector 43 | 9698056 |
| 1539 | 37300.37600.38600.40600.42900.44000.57800.1186600 | Block Work | 36d | 2026-04-12 | 2026-05-17 | 1311 |  | Sector 43 | 9715686 |
| 1540 | 37300.37600.38600.40600.42900.44000.57800.1186700 | Installation of temporary Main door | 4d | 2026-05-18 | 2026-05-21 | 1539 |  | Sector 43 | 9715696 |
| 1541 | 37300.37600.38600.40600.42900.44000.57800.1186800 | Fire sprinkler pipe fixing | 10d | 2026-05-18 | 2026-05-27 | 1524, 1539 |  | Sector 43 | 9715706 |
| 1542 | 37300.37600.38600.40600.42900.44000.57800.1186900 | Internal Plumbing Works | 15d | 2026-05-18 | 2026-06-01 | 1539 |  | Sector 43 | 9715716 |
| 1543 | 37300.37600.38600.40600.42900.44000.57800.1187000 | Waterproofing | 21d | 2026-06-02 | 2026-06-22 | 1542 |  | Sector 43 | 9715726 |
| 1544 | 37300.37600.38600.40600.42900.44000.57800.1187100 | Internal Plaster | 15d | 2026-06-02 | 2026-06-16 | 1542 |  | Sector 43 | 9715736 |
| 1545 | 37300.37600.38600.40600.42900.44000.57800.1187200 | IPS flooring work | 13d | 2026-05-18 | 2026-05-30 | 1539 |  | Sector 43 | 9715746 |
| 1546 | 37300.37600.38600.40600.42900.44000.57800.1187300 | Toilet dado work | 25d | 2026-06-21 | 2026-07-15 | 1543FS-2d, 1544 |  | Sector 43 | 9715756 |
| 1547 | 37300.37600.38600.40600.42900.44000.57800.1187400 | Toilet flooring work | 25d | 2026-07-16 | 2026-08-09 | 1546 |  | Sector 43 | 9715766 |
| 1548 | 37300.37600.38600.40600.42900.44000.57800.1187500 | Living dinning flooring | 31d | 2026-07-21 | 2026-08-20 | 1545, 1547FS-20d |  | Sector 43 | 9715776 |
| 1549 | 37300.37600.38600.40600.42900.44000.57800.1187600 | Electrical wiring work | 12d | 2026-08-11 | 2026-08-22 | 1548FS-10d |  | Sector 43 | 9715786 |
| 1550 | 37300.37600.38600.40600.42900.44000.57800.1187700 | Aluminium door-window fixing | 19d | 2026-08-15 | 2026-09-02 | 1540, 1549FS-8d |  | Sector 43 | 9715796 |
| 1551 | 37300.37600.38600.40600.42900.44000.57800.1187800 | Putty primer coat | 10d | 2026-08-26 | 2026-09-04 | 1550FS-8d |  | Sector 43 | 9715806 |
| 1552 | 37300.37600.38600.40600.42900.44000.57800.1187900 | Prehung door fixing | 8d | 2026-08-31 | 2026-09-07 | 1551FS-5d |  | Sector 43 | 9715816 |
| 1553 | 37300.37600.38600.40600.42900.44000.57800.1188000 | Painting 1st coat | 12d | 2026-09-08 | 2026-09-19 | 1552 |  | Sector 43 | 9715826 |
| 1554 | 37300.37600.38600.40600.42900.44000.57800.1188100 | False Cieling panel fixing | 10d | 2026-09-20 | 2026-09-29 | 1537, 1553 |  | Sector 43 | 9715836 |
| 1555 | 37300.37600.38600.40600.42900.44000.57700 | **14th floor** | 171d | 2026-04-24 | 2026-10-11 |  | start no earlier than 2026-04-24 | Sector 43 | 9698066 |
| 1556 | 37300.37600.38600.40600.42900.44000.57700.1188200 | Block Work | 36d | 2026-04-24 | 2026-05-29 | 1312 |  | Sector 43 | 9715846 |
| 1557 | 37300.37600.38600.40600.42900.44000.57700.1188300 | Installation of temporary Main door | 4d | 2026-05-30 | 2026-06-02 | 1556 |  | Sector 43 | 9715856 |
| 1558 | 37300.37600.38600.40600.42900.44000.57700.1188400 | Fire sprinkler pipe fixing | 10d | 2026-05-30 | 2026-06-08 | 1541, 1556 |  | Sector 43 | 9715866 |
| 1559 | 37300.37600.38600.40600.42900.44000.57700.1188500 | Internal Plumbing Works | 15d | 2026-05-30 | 2026-06-13 | 1556 |  | Sector 43 | 9715876 |
| 1560 | 37300.37600.38600.40600.42900.44000.57700.1188600 | Waterproofing | 21d | 2026-06-14 | 2026-07-04 | 1559 |  | Sector 43 | 9715886 |
| 1561 | 37300.37600.38600.40600.42900.44000.57700.1188700 | Internal Plaster | 15d | 2026-06-14 | 2026-06-28 | 1559 |  | Sector 43 | 9715896 |
| 1562 | 37300.37600.38600.40600.42900.44000.57700.1188800 | IPS flooring work | 13d | 2026-05-30 | 2026-06-11 | 1556 |  | Sector 43 | 9715906 |
| 1563 | 37300.37600.38600.40600.42900.44000.57700.1188900 | Toilet dado work | 25d | 2026-07-03 | 2026-07-27 | 1560FS-2d, 1561 |  | Sector 43 | 9715916 |
| 1564 | 37300.37600.38600.40600.42900.44000.57700.1189000 | Toilet flooring work | 25d | 2026-07-28 | 2026-08-21 | 1563 |  | Sector 43 | 9715926 |
| 1565 | 37300.37600.38600.40600.42900.44000.57700.1189100 | Living dinning flooring | 31d | 2026-08-02 | 2026-09-01 | 1562, 1564FS-20d |  | Sector 43 | 9715936 |
| 1566 | 37300.37600.38600.40600.42900.44000.57700.1189200 | Electrical wiring work | 12d | 2026-08-23 | 2026-09-03 | 1565FS-10d |  | Sector 43 | 9715946 |
| 1567 | 37300.37600.38600.40600.42900.44000.57700.1189300 | Aluminium door-window fixing | 19d | 2026-08-27 | 2026-09-14 | 1557, 1566FS-8d |  | Sector 43 | 9715956 |
| 1568 | 37300.37600.38600.40600.42900.44000.57700.1189400 | Putty primer coat | 10d | 2026-09-07 | 2026-09-16 | 1567FS-8d |  | Sector 43 | 9715966 |
| 1569 | 37300.37600.38600.40600.42900.44000.57700.1189500 | Prehung door fixing | 8d | 2026-09-12 | 2026-09-19 | 1568FS-5d |  | Sector 43 | 9715976 |
| 1570 | 37300.37600.38600.40600.42900.44000.57700.1189600 | Painting 1st coat | 12d | 2026-09-20 | 2026-10-01 | 1569 |  | Sector 43 | 9715986 |
| 1571 | 37300.37600.38600.40600.42900.44000.57700.1189700 | False Cieling panel fixing | 10d | 2026-10-02 | 2026-10-11 | 1554, 1570 |  | Sector 43 | 9715996 |

| ID | WBS | Task | Duration | Start | Finish | Predecessors | Constraint | Calendar | Unique_Task_ID |
| --- | --- | --- | --- | --- | --- | --- | --- | --- | --- |
| 1572 | 37300.37600.38600.40600.42900.44000.57600 | **15th floor** | 172d | 2026-05-03 | 2026-10-21 |  | start no earlier than 2026-05-03 | Sector 43 | 9698076 |
| 1573 | 37300.37600.38600.40600.42900.44000.57600.1189800 | Block Work | 36d | 2026-05-03 | 2026-06-07 | 1313 |  | Sector 43 | 9716006 |
| 1574 | 37300.37600.38600.40600.42900.44000.57600.1189900 | Installation of temporary Main door | 4d | 2026-06-08 | 2026-06-11 | 1573 |  | Sector 43 | 9716016 |
| 1575 | 37300.37600.38600.40600.42900.44000.57600.1190000 | Fire sprinkler pipe fixing | 10d | 2026-06-09 | 2026-06-18 | 1558, 1573 |  | Sector 43 | 9716026 |
| 1576 | 37300.37600.38600.40600.42900.44000.57600.1190100 | Internal Plumbing Works | 15d | 2026-06-08 | 2026-06-22 | 1573 |  | Sector 43 | 9716036 |
| 1577 | 37300.37600.38600.40600.42900.44000.57600.1190200 | Waterproofing | 21d | 2026-06-23 | 2026-07-13 | 1576 |  | Sector 43 | 9716046 |
| 1578 | 37300.37600.38600.40600.42900.44000.57600.1190300 | Internal Plaster | 15d | 2026-06-23 | 2026-07-07 | 1576 |  | Sector 43 | 9716056 |
| 1579 | 37300.37600.38600.40600.42900.44000.57600.1190400 | IPS flooring work | 13d | 2026-06-08 | 2026-06-20 | 1573 |  | Sector 43 | 9716066 |
| 1580 | 37300.37600.38600.40600.42900.44000.57600.1190500 | Toilet dado work | 25d | 2026-07-12 | 2026-08-05 | 1577FS-2d, 1578 |  | Sector 43 | 9716076 |
| 1581 | 37300.37600.38600.40600.42900.44000.57600.1190600 | Toilet flooring work | 25d | 2026-08-06 | 2026-08-30 | 1580 |  | Sector 43 | 9716086 |
| 1582 | 37300.37600.38600.40600.42900.44000.57600.1190700 | Living dinning flooring | 31d | 2026-08-11 | 2026-09-10 | 1579, 1581FS-20d |  | Sector 43 | 9716096 |
| 1583 | 37300.37600.38600.40600.42900.44000.57600.1190800 | Electrical wiring work | 12d | 2026-09-01 | 2026-09-12 | 1582FS-10d |  | Sector 43 | 9716106 |
| 1584 | 37300.37600.38600.40600.42900.44000.57600.1190900 | Aluminium door-window fixing | 19d | 2026-09-05 | 2026-09-23 | 1574, 1583FS-8d |  | Sector 43 | 9716116 |
| 1585 | 37300.37600.38600.40600.42900.44000.57600.1191000 | Putty primer coat | 10d | 2026-09-16 | 2026-09-25 | 1584FS-8d |  | Sector 43 | 9716126 |
| 1586 | 37300.37600.38600.40600.42900.44000.57600.1191100 | Prehung door fixing | 8d | 2026-09-21 | 2026-09-28 | 1585FS-5d |  | Sector 43 | 9716136 |
| 1587 | 37300.37600.38600.40600.42900.44000.57600.1191200 | Painting 1st coat | 12d | 2026-09-29 | 2026-10-10 | 1586 |  | Sector 43 | 9716146 |
| 1588 | 37300.37600.38600.40600.42900.44000.57600.1191300 | False Cieling panel fixing | 10d | 2026-10-12 | 2026-10-21 | 1571, 1587 |  | Sector 43 | 9716156 |
| 1589 | 37300.37600.38600.40600.42900.44000.57500 | **16th floor** | 174d | 2026-05-11 | 2026-10-31 |  | start no earlier than 2026-05-11 | Sector 43 | 9698086 |
| 1590 | 37300.37600.38600.40600.42900.44000.57500.1191400 | Block Work | 36d | 2026-05-11 | 2026-06-15 | 1314 |  | Sector 43 | 9716166 |
| 1591 | 37300.37600.38600.40600.42900.44000.57500.1191500 | Installation of temporary Main door | 4d | 2026-06-16 | 2026-06-19 | 1590 |  | Sector 43 | 9716176 |
| 1592 | 37300.37600.38600.40600.42900.44000.57500.1191600 | Fire sprinkler pipe fixing | 10d | 2026-06-19 | 2026-06-28 | 1575, 1590 |  | Sector 43 | 9716186 |
| 1593 | 37300.37600.38600.40600.42900.44000.57500.1191700 | Internal Plumbing Works | 15d | 2026-06-16 | 2026-06-30 | 1590 |  | Sector 43 | 9716196 |
| 1594 | 37300.37600.38600.40600.42900.44000.57500.1191800 | Waterproofing | 21d | 2026-07-01 | 2026-07-21 | 1593 |  | Sector 43 | 9716206 |
| 1595 | 37300.37600.38600.40600.42900.44000.57500.1191900 | Internal Plaster | 15d | 2026-07-01 | 2026-07-15 | 1593 |  | Sector 43 | 9716216 |
| 1596 | 37300.37600.38600.40600.42900.44000.57500.1192000 | IPS flooring work | 13d | 2026-06-16 | 2026-06-28 | 1590 |  | Sector 43 | 9716226 |
| 1597 | 37300.37600.38600.40600.42900.44000.57500.1192100 | Toilet dado work | 25d | 2026-07-20 | 2026-08-13 | 1594FS-2d, 1595 |  | Sector 43 | 9716236 |
| 1598 | 37300.37600.38600.40600.42900.44000.57500.1192200 | Toilet flooring work | 25d | 2026-08-14 | 2026-09-07 | 1597 |  | Sector 43 | 9716246 |
| 1599 | 37300.37600.38600.40600.42900.44000.57500.1192300 | Living dinning flooring | 31d | 2026-08-19 | 2026-09-18 | 1596, 1598FS-20d |  | Sector 43 | 9716256 |
| 1600 | 37300.37600.38600.40600.42900.44000.57500.1192400 | Electrical wiring work | 12d | 2026-09-09 | 2026-09-20 | 1599FS-10d |  | Sector 43 | 9716266 |
| 1601 | 37300.37600.38600.40600.42900.44000.57500.1192500 | Aluminium door-window fixing | 19d | 2026-09-13 | 2026-10-01 | 1591, 1600FS-8d |  | Sector 43 | 9716276 |
| 1602 | 37300.37600.38600.40600.42900.44000.57500.1192600 | Putty primer coat | 10d | 2026-09-24 | 2026-10-03 | 1601FS-8d |  | Sector 43 | 9716286 |
| 1603 | 37300.37600.38600.40600.42900.44000.57500.1192700 | Prehung door fixing | 8d | 2026-09-29 | 2026-10-06 | 1602FS-5d |  | Sector 43 | 9716296 |
| 1604 | 37300.37600.38600.40600.42900.44000.57500.1192800 | Painting 1st coat | 12d | 2026-10-07 | 2026-10-18 | 1603 |  | Sector 43 | 9716306 |
| 1605 | 37300.37600.38600.40600.42900.44000.57500.1192900 | False Cieling panel fixing | 10d | 2026-10-22 | 2026-10-31 | 1588, 1604 |  | Sector 43 | 9716316 |

| ID | WBS | Task | Duration | Start | Finish | Predecessors | Constraint | Calendar | Unique_Task_ID |
| --- | --- | --- | --- | --- | --- | --- | --- | --- | --- |
| 1606 | 37300.37600.38600.40600.42900.44000.57400 | **17th floor** | 176d | 2026-05-19 | 2026-12-25 |  | start no earlier than 2026-05-19 | Sector 43 | 9698096 |
| 1607 | 37300.37600.38600.40600.42900.44000.57400.1193000 | Block Work | 36d | 2026-05-19 | 2026-06-23 | 1315 |  | Sector 43 | 9716326 |
| 1608 | 37300.37600.38600.40600.42900.44000.57400.1193100 | Installation of temporary Main door | 4d | 2026-06-24 | 2026-06-27 | 1607 |  | Sector 43 | 9716336 |
| 1609 | 37300.37600.38600.40600.42900.44000.57400.1193200 | Fire sprinkler pipe fixing | 10d | 2026-06-29 | 2026-07-08 | 1592, 1607 |  | Sector 43 | 9716346 |
| 1610 | 37300.37600.38600.40600.42900.44000.57400.1193300 | Internal Plumbing Works | 15d | 2026-06-24 | 2026-07-08 | 1607 |  | Sector 43 | 9716356 |
| 1611 | 37300.37600.38600.40600.42900.44000.57400.1193400 | Waterproofing | 21d | 2026-07-09 | 2026-07-29 | 1610 |  | Sector 43 | 9716366 |
| 1612 | 37300.37600.38600.40600.42900.44000.57400.1193500 | Internal Plaster | 15d | 2026-07-09 | 2026-07-23 | 1610 |  | Sector 43 | 9716376 |
| 1613 | 37300.37600.38600.40600.42900.44000.57400.1193600 | IPS flooring work | 13d | 2026-06-24 | 2026-07-06 | 1607 |  | Sector 43 | 9716386 |
| 1614 | 37300.37600.38600.40600.42900.44000.57400.1193700 | Toilet dado work | 25d | 2026-07-28 | 2026-08-21 | 1611FS-2d, 1612 |  | Sector 43 | 9716396 |
| 1615 | 37300.37600.38600.40600.42900.44000.57400.1193800 | Toilet flooring work | 25d | 2026-08-22 | 2026-09-15 | 1614 |  | Sector 43 | 9716406 |
| 1616 | 37300.37600.38600.40600.42900.44000.57400.1193900 | Living dinning flooring | 31d | 2026-08-27 | 2026-09-26 | 1613, 1615FS-20d |  | Sector 43 | 9716416 |
| 1617 | 37300.37600.38600.40600.42900.44000.57400.1194000 | Electrical wiring work | 12d | 2026-09-17 | 2026-09-28 | 1616FS-10d |  | Sector 43 | 9716426 |
| 1618 | 37300.37600.38600.40600.42900.44000.57400.1194100 | Aluminium door-window fixing | 19d | 2026-09-21 | 2026-10-09 | 1608, 1617FS-8d |  | Sector 43 | 9716436 |
| 1619 | 37300.37600.38600.40600.42900.44000.57400.1194200 | Putty primer coat | 10d | 2026-10-02 | 2026-10-11 | 1618FS-8d |  | Sector 43 | 9716446 |
| 1620 | 37300.37600.38600.40600.42900.44000.57400.1194300 | Prehung door fixing | 8d | 2026-10-07 | 2026-10-14 | 1619FS-5d |  | Sector 43 | 9716456 |
| 1621 | 37300.37600.38600.40600.42900.44000.57400.1194400 | Painting 1st coat | 12d | 2026-10-15 | 2026-10-26 | 1620 |  | Sector 43 | 9716466 |
| 1622 | 37300.37600.38600.40600.42900.44000.57400.1194500 | False Cieling panel fixing | 10d | 2026-12-16 | 2026-12-25 | 1605, 1621 |  | Sector 43 | 9716476 |
| 1623 | 37300.37600.38600.40600.42900.44000.57300 | **18th floor** | 178d | 2026-05-27 | 2027-01-04 |  | start no earlier than 2026-05-27 | Sector 43 | 9698106 |
| 1624 | 37300.37600.38600.40600.42900.44000.57300.1194600 | Block Work | 36d | 2026-05-27 | 2026-07-01 | 1316 |  | Sector 43 | 9716486 |
| 1625 | 37300.37600.38600.40600.42900.44000.57300.1194700 | Installation of temporary Main door | 4d | 2026-07-02 | 2026-07-05 | 1624 |  | Sector 43 | 9716496 |
| 1626 | 37300.37600.38600.40600.42900.44000.57300.1194800 | Fire sprinkler pipe fixing | 10d | 2026-07-09 | 2026-07-18 | 1609, 1624 |  | Sector 43 | 9716506 |
| 1627 | 37300.37600.38600.40600.42900.44000.57300.1194900 | Internal Plumbing Works | 15d | 2026-07-02 | 2026-07-16 | 1624 |  | Sector 43 | 9716516 |
| 1628 | 37300.37600.38600.40600.42900.44000.57300.1195000 | Waterproofing | 21d | 2026-07-17 | 2026-08-06 | 1627 |  | Sector 43 | 9716526 |
| 1629 | 37300.37600.38600.40600.42900.44000.57300.1195100 | Internal Plaster | 15d | 2026-07-17 | 2026-07-31 | 1627 |  | Sector 43 | 9716536 |
| 1630 | 37300.37600.38600.40600.42900.44000.57300.1195200 | IPS flooring work | 13d | 2026-07-02 | 2026-07-14 | 1624 |  | Sector 43 | 9716546 |
| 1631 | 37300.37600.38600.40600.42900.44000.57300.1195300 | Toilet dado work | 25d | 2026-08-05 | 2026-08-29 | 1628FS-2d, 1629 |  | Sector 43 | 9716556 |
| 1632 | 37300.37600.38600.40600.42900.44000.57300.1195400 | Toilet flooring work | 25d | 2026-08-30 | 2026-09-23 | 1631 |  | Sector 43 | 9716566 |
| 1633 | 37300.37600.38600.40600.42900.44000.57300.1195500 | Living dinning flooring | 31d | 2026-09-04 | 2026-10-04 | 1630, 1632FS-20d |  | Sector 43 | 9716576 |
| 1634 | 37300.37600.38600.40600.42900.44000.57300.1195600 | Electrical wiring work | 12d | 2026-09-25 | 2026-10-06 | 1633FS-10d |  | Sector 43 | 9716586 |
| 1635 | 37300.37600.38600.40600.42900.44000.57300.1195700 | Aluminium door-window fixing | 19d | 2026-09-29 | 2026-10-17 | 1625, 1634FS-8d |  | Sector 43 | 9716596 |
| 1636 | 37300.37600.38600.40600.42900.44000.57300.1195800 | Putty primer coat | 10d | 2026-10-10 | 2026-10-19 | 1635FS-8d |  | Sector 43 | 9716606 |
| 1637 | 37300.37600.38600.40600.42900.44000.57300.1195900 | Prehung door fixing | 8d | 2026-10-15 | 2026-10-22 | 1636FS-5d |  | Sector 43 | 9716616 |
| 1638 | 37300.37600.38600.40600.42900.44000.57300.1196000 | Painting 1st coat | 12d | 2026-10-23 | 2026-12-18 | 1637 |  | Sector 43 | 9716626 |
| 1639 | 37300.37600.38600.40600.42900.44000.57300.1196100 | False Cieling panel fixing | 10d | 2026-12-26 | 2027-01-04 | 1622, 1638 |  | Sector 43 | 9716636 |

| ID | WBS | Task | Duration | Start | Finish | Predecessors | Constraint | Calendar | Unique_Task_ID |
| --- | --- | --- | --- | --- | --- | --- | --- | --- | --- |
| 1640 | 37300.37600.38600.40600.42900.44000.57200 | **19th floor** | 180d | 2026-06-04 | 2027-01-14 |  | start no earlier than 2026-06-04 | Sector 43 | 9698116 |
| 1641 | 37300.37600.38600.40600.42900.44000.57200.1196200 | Block Work | 36d | 2026-06-04 | 2026-07-09 | 1317 |  | Sector 43 | 9716646 |
| 1642 | 37300.37600.38600.40600.42900.44000.57200.1196300 | Installation of temporary Main door | 4d | 2026-07-10 | 2026-07-13 | 1641 |  | Sector 43 | 9716656 |
| 1643 | 37300.37600.38600.40600.42900.44000.57200.1196400 | Fire sprinkler pipe fixing | 10d | 2026-07-19 | 2026-07-28 | 1626, 1641 |  | Sector 43 | 9716666 |
| 1644 | 37300.37600.38600.40600.42900.44000.57200.1196500 | Internal Plumbing Works | 15d | 2026-07-10 | 2026-07-24 | 1641 |  | Sector 43 | 9716676 |
| 1645 | 37300.37600.38600.40600.42900.44000.57200.1196600 | Waterproofing | 21d | 2026-07-25 | 2026-08-14 | 1644 |  | Sector 43 | 9716686 |
| 1646 | 37300.37600.38600.40600.42900.44000.57200.1196700 | Internal Plaster | 15d | 2026-07-25 | 2026-08-08 | 1644 |  | Sector 43 | 9716696 |
| 1647 | 37300.37600.38600.40600.42900.44000.57200.1196800 | IPS flooring work | 13d | 2026-07-10 | 2026-07-22 | 1641 |  | Sector 43 | 9716706 |
| 1648 | 37300.37600.38600.40600.42900.44000.57200.1196900 | Toilet dado work | 25d | 2026-08-13 | 2026-09-06 | 1645FS-2d, 1646 |  | Sector 43 | 9716716 |
| 1649 | 37300.37600.38600.40600.42900.44000.57200.1197000 | Toilet flooring work | 25d | 2026-09-07 | 2026-10-01 | 1648 |  | Sector 43 | 9716726 |
| 1650 | 37300.37600.38600.40600.42900.44000.57200.1197100 | Living dinning flooring | 31d | 2026-09-12 | 2026-10-12 | 1647, 1649FS-20d |  | Sector 43 | 9716736 |
| 1651 | 37300.37600.38600.40600.42900.44000.57200.1197200 | Electrical wiring work | 12d | 2026-10-03 | 2026-10-14 | 1650FS-10d |  | Sector 43 | 9716746 |
| 1652 | 37300.37600.38600.40600.42900.44000.57200.1197300 | Aluminium door-window fixing | 19d | 2026-10-07 | 2026-10-25 | 1642, 1651FS-8d |  | Sector 43 | 9716756 |
| 1653 | 37300.37600.38600.40600.42900.44000.57200.1197400 | Putty primer coat | 10d | 2026-10-18 | 2026-10-27 | 1652FS-8d |  | Sector 43 | 9716766 |
| 1654 | 37300.37600.38600.40600.42900.44000.57200.1197500 | Prehung door fixing | 8d | 2026-10-23 | 2026-10-30 | 1653FS-5d |  | Sector 43 | 9716776 |
| 1655 | 37300.37600.38600.40600.42900.44000.57200.1197600 | Painting 1st coat | 12d | 2026-10-31 | 2026-12-26 | 1654 |  | Sector 43 | 9716786 |
| 1656 | 37300.37600.38600.40600.42900.44000.57200.1197700 | False Cieling panel fixing | 10d | 2027-01-05 | 2027-01-14 | 1639, 1655 |  | Sector 43 | 9716796 |
| 1657 | 37300.37600.38600.40600.42900.44000.57100 | **20th floor** | 182d | 2026-06-12 | 2027-01-24 |  | start no earlier than 2026-06-12 | Sector 43 | 9698126 |
| 1658 | 37300.37600.38600.40600.42900.44000.57100.1197800 | Block Work | 36d | 2026-06-12 | 2026-07-17 | 1318 |  | Sector 43 | 9716806 |
| 1659 | 37300.37600.38600.40600.42900.44000.57100.1197900 | Installation of temporary Main door | 4d | 2026-07-18 | 2026-07-21 | 1658 |  | Sector 43 | 9716816 |
| 1660 | 37300.37600.38600.40600.42900.44000.57100.1198000 | Fire sprinkler pipe fixing | 10d | 2026-07-29 | 2026-08-07 | 1643, 1658 |  | Sector 43 | 9716826 |
| 1661 | 37300.37600.38600.40600.42900.44000.57100.1198100 | Internal Plumbing Works | 15d | 2026-07-18 | 2026-08-01 | 1658 |  | Sector 43 | 9716836 |
| 1662 | 37300.37600.38600.40600.42900.44000.57100.1198200 | Waterproofing | 21d | 2026-08-02 | 2026-08-22 | 1661 |  | Sector 43 | 9716846 |
| 1663 | 37300.37600.38600.40600.42900.44000.57100.1198300 | Internal Plaster | 15d | 2026-08-02 | 2026-08-16 | 1661 |  | Sector 43 | 9716856 |
| 1664 | 37300.37600.38600.40600.42900.44000.57100.1198400 | IPS flooring work | 13d | 2026-07-18 | 2026-07-30 | 1658 |  | Sector 43 | 9716866 |
| 1665 | 37300.37600.38600.40600.42900.44000.57100.1198500 | Toilet dado work | 25d | 2026-08-21 | 2026-09-14 | 1662FS-2d, 1663 |  | Sector 43 | 9716876 |
| 1666 | 37300.37600.38600.40600.42900.44000.57100.1198600 | Toilet flooring work | 25d | 2026-09-15 | 2026-10-09 | 1665 |  | Sector 43 | 9716886 |
| 1667 | 37300.37600.38600.40600.42900.44000.57100.1198700 | Living dinning flooring | 31d | 2026-09-20 | 2026-10-20 | 1666FS-20d |  | Sector 43 | 9716896 |
| 1668 | 37300.37600.38600.40600.42900.44000.57100.1198800 | Electrical wiring work | 12d | 2026-10-11 | 2026-10-22 | 1664, 1667FS-10d |  | Sector 43 | 9716906 |
| 1669 | 37300.37600.38600.40600.42900.44000.57100.1198900 | Aluminium door-window fixing | 19d | 2026-10-15 | 2026-12-17 | 1659, 1668FS-8d |  | Sector 43 | 9716916 |
| 1670 | 37300.37600.38600.40600.42900.44000.57100.1199000 | Putty primer coat | 10d | 2026-10-26 | 2026-12-19 | 1669FS-8d |  | Sector 43 | 9716926 |
| 1671 | 37300.37600.38600.40600.42900.44000.57100.1199100 | Prehung door fixing | 8d | 2026-10-31 | 2026-12-22 | 1670FS-5d |  | Sector 43 | 9716936 |
| 1672 | 37300.37600.38600.40600.42900.44000.57100.1199200 | Painting 1st coat | 12d | 2026-12-23 | 2027-01-03 | 1671 |  | Sector 43 | 9716946 |
| 1673 | 37300.37600.38600.40600.42900.44000.57100.1199300 | False Cieling panel fixing | 10d | 2027-01-15 | 2027-01-24 | 1656, 1672 |  | Sector 43 | 9716956 |

| ID | WBS | Task | Duration | Start | Finish | Predecessors | Constraint | Calendar | Unique_Task_ID |
| --- | --- | --- | --- | --- | --- | --- | --- | --- | --- |
| 1674 | 37300.37600.38600.40600.42900.44000.57000 | **21st floor** | 184d | 2026-06-20 | 2027-02-03 |  | start no earlier than 2026-06-20 | Sector 43 | 9698136 |
| 1675 | 37300.37600.38600.40600.42900.44000.57000.1199400 | Block Work | 36d | 2026-06-20 | 2026-07-25 | 1319 |  | Sector 43 | 9716966 |
| 1676 | 37300.37600.38600.40600.42900.44000.57000.1199500 | Installation of temporary Main door | 4d | 2026-07-26 | 2026-07-29 | 1675 |  | Sector 43 | 9716976 |
| 1677 | 37300.37600.38600.40600.42900.44000.57000.1199600 | Fire sprinkler pipe fixing | 10d | 2026-08-08 | 2026-08-17 | 1660, 1675 |  | Sector 43 | 9716986 |
| 1678 | 37300.37600.38600.40600.42900.44000.57000.1199700 | Internal Plumbing Works | 15d | 2026-07-26 | 2026-08-09 | 1675 |  | Sector 43 | 9716996 |
| 1679 | 37300.37600.38600.40600.42900.44000.57000.1199800 | Waterproofing | 21d | 2026-08-10 | 2026-08-30 | 1678 |  | Sector 43 | 9717006 |
| 1680 | 37300.37600.38600.40600.42900.44000.57000.1199900 | Internal Plaster | 15d | 2026-08-10 | 2026-08-24 | 1678 |  | Sector 43 | 9717016 |
| 1681 | 37300.37600.38600.40600.42900.44000.57000.1200000 | IPS flooring work | 13d | 2026-07-26 | 2026-08-07 | 1675 |  | Sector 43 | 9717026 |
| 1682 | 37300.37600.38600.40600.42900.44000.57000.1200100 | Toilet dado work | 25d | 2026-08-29 | 2026-09-22 | 1679FS-2d, 1680 |  | Sector 43 | 9717036 |
| 1683 | 37300.37600.38600.40600.42900.44000.57000.1200200 | Toilet flooring work | 25d | 2026-09-23 | 2026-10-17 | 1682 |  | Sector 43 | 9717046 |
| 1684 | 37300.37600.38600.40600.42900.44000.57000.1200300 | Living dinning flooring | 31d | 2026-09-28 | 2026-10-28 | 1681, 1683FS-20d |  | Sector 43 | 9717056 |
| 1685 | 37300.37600.38600.40600.42900.44000.57000.1200400 | Electrical wiring work | 12d | 2026-10-19 | 2026-10-30 | 1684FS-10d |  | Sector 43 | 9717066 |
| 1686 | 37300.37600.38600.40600.42900.44000.57000.1200500 | Aluminium door-window fixing | 19d | 2026-10-23 | 2026-12-25 | 1676, 1685FS-8d |  | Sector 43 | 9717076 |
| 1687 | 37300.37600.38600.40600.42900.44000.57000.1200600 | Putty primer coat | 10d | 2026-12-18 | 2026-12-27 | 1686FS-8d |  | Sector 43 | 9717086 |
| 1688 | 37300.37600.38600.40600.42900.44000.57000.1200700 | Prehung door fixing | 8d | 2026-12-23 | 2026-12-30 | 1687FS-5d |  | Sector 43 | 9717096 |
| 1689 | 37300.37600.38600.40600.42900.44000.57000.1200800 | Painting 1st coat | 12d | 2026-12-31 | 2027-01-11 | 1688 |  | Sector 43 | 9717106 |
| 1690 | 37300.37600.38600.40600.42900.44000.57000.1200900 | False Cieling panel fixing | 10d | 2027-01-25 | 2027-02-03 | 1673, 1689 |  | Sector 43 | 9717116 |
| 1691 | 37300.37600.38600.40600.42900.44000.56900 | **22nd floor** | 182d | 2026-07-02 | 2027-02-13 |  | start no earlier than 2026-07-02 | Sector 43 | 9698146 |
| 1692 | 37300.37600.38600.40600.42900.44000.56900.1201000 | Block Work | 36d | 2026-07-02 | 2026-08-06 | 1320 |  | Sector 43 | 9717126 |
| 1693 | 37300.37600.38600.40600.42900.44000.56900.1201100 | Installation of temporary Main door | 4d | 2026-08-07 | 2026-08-10 | 1692 |  | Sector 43 | 9717136 |
| 1694 | 37300.37600.38600.40600.42900.44000.56900.1201200 | Fire sprinkler pipe fixing | 10d | 2026-08-18 | 2026-08-27 | 1677, 1692 |  | Sector 43 | 9717146 |
| 1695 | 37300.37600.38600.40600.42900.44000.56900.1201300 | Internal Plumbing Works | 15d | 2026-08-07 | 2026-08-21 | 1692 |  | Sector 43 | 9717156 |
| 1696 | 37300.37600.38600.40600.42900.44000.56900.1201400 | Waterproofing | 21d | 2026-08-22 | 2026-09-11 | 1695 |  | Sector 43 | 9717166 |
| 1697 | 37300.37600.38600.40600.42900.44000.56900.1201500 | Internal Plaster | 15d | 2026-08-22 | 2026-09-05 | 1695 |  | Sector 43 | 9717176 |
| 1698 | 37300.37600.38600.40600.42900.44000.56900.1201600 | IPS flooring work | 13d | 2026-08-07 | 2026-08-19 | 1692 |  | Sector 43 | 9717186 |
| 1699 | 37300.37600.38600.40600.42900.44000.56900.1201700 | Toilet dado work | 25d | 2026-09-10 | 2026-10-04 | 1696FS-2d, 1697 |  | Sector 43 | 9717196 |
| 1700 | 37300.37600.38600.40600.42900.44000.56900.1201800 | Toilet flooring work | 25d | 2026-10-05 | 2026-10-29 | 1699 |  | Sector 43 | 9717206 |
| 1701 | 37300.37600.38600.40600.42900.44000.56900.1201900 | Living dinning flooring | 31d | 2026-10-10 | 2026-12-24 | 1698, 1700FS-20d |  | Sector 43 | 9717216 |
| 1702 | 37300.37600.38600.40600.42900.44000.56900.1202000 | Electrical wiring work | 12d | 2026-10-31 | 2026-12-26 | 1701FS-10d |  | Sector 43 | 9717226 |
| 1703 | 37300.37600.38600.40600.42900.44000.56900.1202100 | Aluminium door-window fixing | 19d | 2026-12-19 | 2027-01-06 | 1693, 1702FS-8d |  | Sector 43 | 9717236 |
| 1704 | 37300.37600.38600.40600.42900.44000.56900.1202200 | Putty primer coat | 10d | 2026-12-30 | 2027-01-08 | 1703FS-8d |  | Sector 43 | 9717246 |
| 1705 | 37300.37600.38600.40600.42900.44000.56900.1202300 | Prehung door fixing | 8d | 2027-01-04 | 2027-01-11 | 1704FS-5d |  | Sector 43 | 9717256 |
| 1706 | 37300.37600.38600.40600.42900.44000.56900.1202400 | Painting 1st coat | 12d | 2027-01-12 | 2027-01-23 | 1705 |  | Sector 43 | 9717266 |
| 1707 | 37300.37600.38600.40600.42900.44000.56900.1202500 | False Cieling panel fixing | 10d | 2027-02-04 | 2027-02-13 | 1690, 1706 |  | Sector 43 | 9717276 |

| ID | WBS | Task | Duration | Start | Finish | Predecessors | Constraint | Calendar | Unique_Task_ID |
| --- | --- | --- | --- | --- | --- | --- | --- | --- | --- |
| 1708 | 37300.37600.38600.40600.42900.44000.56800 | **23rd floor** | 184d | 2026-07-10 | 2027-02-23 |  | start no earlier than 2026-07-10 | Sector 43 | 9698156 |
| 1709 | 37300.37600.38600.40600.42900.44000.56800.1202600 | Block Work | 36d | 2026-07-10 | 2026-08-14 | 1321 |  | Sector 43 | 9717286 |
| 1710 | 37300.37600.38600.40600.42900.44000.56800.1202700 | Installation of temporary Main door | 4d | 2026-08-15 | 2026-08-18 | 1709 |  | Sector 43 | 9717296 |
| 1711 | 37300.37600.38600.40600.42900.44000.56800.1202800 | Fire sprinkler pipe fixing | 10d | 2026-08-28 | 2026-09-06 | 1694, 1709 |  | Sector 43 | 9717306 |
| 1712 | 37300.37600.38600.40600.42900.44000.56800.1202900 | Internal Plumbing Works | 15d | 2026-08-15 | 2026-08-29 | 1709 |  | Sector 43 | 9717316 |
| 1713 | 37300.37600.38600.40600.42900.44000.56800.1203000 | Waterproofing | 21d | 2026-08-30 | 2026-09-19 | 1712 |  | Sector 43 | 9717326 |
| 1714 | 37300.37600.38600.40600.42900.44000.56800.1203100 | Internal Plaster | 15d | 2026-08-30 | 2026-09-13 | 1712 |  | Sector 43 | 9717336 |
| 1715 | 37300.37600.38600.40600.42900.44000.56800.1203200 | IPS flooring work | 13d | 2026-08-15 | 2026-08-27 | 1709 |  | Sector 43 | 9717346 |
| 1716 | 37300.37600.38600.40600.42900.44000.56800.1203300 | Toilet dado work | 25d | 2026-09-18 | 2026-10-12 | 1713FS-2d, 1714 |  | Sector 43 | 9717356 |
| 1717 | 37300.37600.38600.40600.42900.44000.56800.1203400 | Toilet flooring work | 25d | 2026-10-13 | 2026-12-21 | 1716 |  | Sector 43 | 9717366 |
| 1718 | 37300.37600.38600.40600.42900.44000.56800.1203500 | Living dinning flooring | 31d | 2026-10-18 | 2027-01-01 | 1715, 1717FS-20d |  | Sector 43 | 9717376 |
| 1719 | 37300.37600.38600.40600.42900.44000.56800.1203600 | Electrical wiring work | 12d | 2026-12-23 | 2027-01-03 | 1718FS-10d |  | Sector 43 | 9717386 |
| 1720 | 37300.37600.38600.40600.42900.44000.56800.1203700 | Aluminium door-window fixing | 19d | 2026-12-27 | 2027-01-14 | 1710, 1719FS-8d |  | Sector 43 | 9717396 |
| 1721 | 37300.37600.38600.40600.42900.44000.56800.1203800 | Putty primer coat | 10d | 2027-01-07 | 2027-01-16 | 1720FS-8d |  | Sector 43 | 9717406 |
| 1722 | 37300.37600.38600.40600.42900.44000.56800.1203900 | Prehung door fixing | 8d | 2027-01-12 | 2027-01-19 | 1721FS-5d |  | Sector 43 | 9717416 |
| 1723 | 37300.37600.38600.40600.42900.44000.56800.1204000 | Painting 1st coat | 12d | 2027-01-20 | 2027-01-31 | 1722 |  | Sector 43 | 9717426 |
| 1724 | 37300.37600.38600.40600.42900.44000.56800.1204100 | False Cieling panel fixing | 10d | 2027-02-14 | 2027-02-23 | 1707, 1723 |  | Sector 43 | 9717436 |
| 1725 | 37300.37600.38600.40600.42900.44000.56700 | **24th floor** | 186d | 2026-07-18 | 2027-03-05 |  | start no earlier than 2026-07-18 | Sector 43 | 9698166 |
| 1726 | 37300.37600.38600.40600.42900.44000.56700.1204200 | Block Work | 36d | 2026-07-18 | 2026-08-22 | 1322 |  | Sector 43 | 9717446 |
| 1727 | 37300.37600.38600.40600.42900.44000.56700.1204300 | Installation of temporary Main door | 4d | 2026-08-23 | 2026-08-26 | 1726 |  | Sector 43 | 9717456 |
| 1728 | 37300.37600.38600.40600.42900.44000.56700.1204400 | Fire sprinkler pipe fixing | 10d | 2026-09-07 | 2026-09-16 | 1711, 1726 |  | Sector 43 | 9717466 |
| 1729 | 37300.37600.38600.40600.42900.44000.56700.1204500 | Internal Plumbing Works | 15d | 2026-08-23 | 2026-09-06 | 1726 |  | Sector 43 | 9717476 |
| 1730 | 37300.37600.38600.40600.42900.44000.56700.1204600 | Waterproofing | 21d | 2026-09-07 | 2026-09-27 | 1729 |  | Sector 43 | 9717486 |
| 1731 | 37300.37600.38600.40600.42900.44000.56700.1204700 | Internal Plaster | 15d | 2026-09-07 | 2026-09-21 | 1729 |  | Sector 43 | 9717496 |
| 1732 | 37300.37600.38600.40600.42900.44000.56700.1204800 | IPS flooring work | 13d | 2026-08-23 | 2026-09-04 | 1726 |  | Sector 43 | 9717506 |
| 1733 | 37300.37600.38600.40600.42900.44000.56700.1204900 | Toilet dado work | 25d | 2026-09-26 | 2026-10-20 | 1730FS-2d, 1731 |  | Sector 43 | 9717516 |
| 1734 | 37300.37600.38600.40600.42900.44000.56700.1205000 | Toilet flooring work | 25d | 2026-10-21 | 2026-12-29 | 1733 |  | Sector 43 | 9717526 |
| 1735 | 37300.37600.38600.40600.42900.44000.56700.1205100 | Living dinning flooring | 31d | 2026-10-26 | 2027-01-09 | 1732, 1734FS-20d |  | Sector 43 | 9717536 |
| 1736 | 37300.37600.38600.40600.42900.44000.56700.1205200 | Electrical wiring work | 12d | 2026-12-31 | 2027-01-11 | 1735FS-10d |  | Sector 43 | 9717546 |
| 1737 | 37300.37600.38600.40600.42900.44000.56700.1205300 | Aluminium door-window fixing | 19d | 2027-01-04 | 2027-01-22 | 1727, 1736FS-8d |  | Sector 43 | 9717556 |
| 1738 | 37300.37600.38600.40600.42900.44000.56700.1205400 | Putty primer coat | 10d | 2027-01-15 | 2027-01-24 | 1737FS-8d |  | Sector 43 | 9717566 |
| 1739 | 37300.37600.38600.40600.42900.44000.56700.1205500 | Prehung door fixing | 8d | 2027-01-20 | 2027-01-27 | 1738FS-5d |  | Sector 43 | 9717576 |
| 1740 | 37300.37600.38600.40600.42900.44000.56700.1205600 | Painting 1st coat | 12d | 2027-01-28 | 2027-02-08 | 1739 |  | Sector 43 | 9717586 |
| 1741 | 37300.37600.38600.40600.42900.44000.56700.1205700 | False Cieling panel fixing | 10d | 2027-02-24 | 2027-03-05 | 1724, 1740 |  | Sector 43 | 9717596 |

| ID | WBS | Task | Duration | Start | Finish | Predecessors | Constraint | Calendar | Unique_Task_ID |
| --- | --- | --- | --- | --- | --- | --- | --- | --- | --- |
| 1742 | 37300.37600.38600.40600.42900.44000.56600 | **25th floor** | 188d | 2026-07-26 | 2027-03-15 |  | start no earlier than 2026-07-26 | Sector 43 | 9698176 |
| 1743 | 37300.37600.38600.40600.42900.44000.56600.1205800 | Block Work | 36d | 2026-07-26 | 2026-08-30 | 1323 |  | Sector 43 | 9717606 |
| 1744 | 37300.37600.38600.40600.42900.44000.56600.1205900 | Installation of temporary Main door | 4d | 2026-08-31 | 2026-09-03 | 1743 |  | Sector 43 | 9717616 |
| 1745 | 37300.37600.38600.40600.42900.44000.56600.1206000 | Fire sprinkler pipe fixing | 10d | 2026-09-17 | 2026-09-26 | 1728, 1743 |  | Sector 43 | 9717626 |
| 1746 | 37300.37600.38600.40600.42900.44000.56600.1206100 | Internal Plumbing Works | 15d | 2026-08-31 | 2026-09-14 | 1743 |  | Sector 43 | 9717636 |
| 1747 | 37300.37600.38600.40600.42900.44000.56600.1206200 | Waterproofing | 21d | 2026-09-15 | 2026-10-05 | 1746 |  | Sector 43 | 9717646 |
| 1748 | 37300.37600.38600.40600.42900.44000.56600.1206300 | Internal Plaster | 15d | 2026-09-15 | 2026-09-29 | 1746 |  | Sector 43 | 9717656 |
| 1749 | 37300.37600.38600.40600.42900.44000.56600.1206400 | IPS flooring work | 13d | 2026-08-31 | 2026-09-12 | 1743 |  | Sector 43 | 9717666 |
| 1750 | 37300.37600.38600.40600.42900.44000.56600.1206500 | Toilet dado work | 25d | 2026-10-04 | 2026-10-28 | 1747FS-2d, 1748 |  | Sector 43 | 9717676 |
| 1751 | 37300.37600.38600.40600.42900.44000.56600.1206600 | Toilet flooring work | 25d | 2026-10-29 | 2027-01-06 | 1750 |  | Sector 43 | 9717686 |
| 1752 | 37300.37600.38600.40600.42900.44000.56600.1206700 | Living dinning flooring | 31d | 2026-12-18 | 2027-01-17 | 1749, 1751FS-20d |  | Sector 43 | 9717696 |
| 1753 | 37300.37600.38600.40600.42900.44000.56600.1206800 | Electrical wiring work | 12d | 2027-01-08 | 2027-01-19 | 1752FS-10d |  | Sector 43 | 9717706 |
| 1754 | 37300.37600.38600.40600.42900.44000.56600.1206900 | Aluminium door-window fixing | 19d | 2027-01-12 | 2027-01-30 | 1744, 1753FS-8d |  | Sector 43 | 9717716 |
| 1755 | 37300.37600.38600.40600.42900.44000.56600.1207000 | Putty primer coat | 10d | 2027-01-23 | 2027-02-01 | 1754FS-8d |  | Sector 43 | 9717726 |
| 1756 | 37300.37600.38600.40600.42900.44000.56600.1207100 | Prehung door fixing | 8d | 2027-01-28 | 2027-02-04 | 1755FS-5d |  | Sector 43 | 9717736 |
| 1757 | 37300.37600.38600.40600.42900.44000.56600.1207200 | Painting 1st coat | 12d | 2027-02-05 | 2027-02-16 | 1756 |  | Sector 43 | 9717746 |
| 1758 | 37300.37600.38600.40600.42900.44000.56600.1207300 | False Cieling panel fixing | 10d | 2027-03-06 | 2027-03-15 | 1741, 1757 |  | Sector 43 | 9717756 |
| 1759 | 37300.37600.38600.40600.42900.44000.56500 | **26th floor** | 190d | 2026-08-03 | 2027-03-25 |  | start no earlier than 2026-08-03 | Sector 43 | 9698186 |
| 1760 | 37300.37600.38600.40600.42900.44000.56500.1207400 | Block Work | 36d | 2026-08-03 | 2026-09-07 | 1324 |  | Sector 43 | 9717766 |
| 1761 | 37300.37600.38600.40600.42900.44000.56500.1207500 | Installation of temporary Main door | 4d | 2026-09-08 | 2026-09-11 | 1760 |  | Sector 43 | 9717776 |
| 1762 | 37300.37600.38600.40600.42900.44000.56500.1207600 | Fire sprinkler pipe fixing | 10d | 2026-09-27 | 2026-10-06 | 1745, 1760 |  | Sector 43 | 9717786 |
| 1763 | 37300.37600.38600.40600.42900.44000.56500.1207700 | Internal Plumbing Works | 15d | 2026-09-08 | 2026-09-22 | 1760 |  | Sector 43 | 9717796 |
| 1764 | 37300.37600.38600.40600.42900.44000.56500.1207800 | Waterproofing | 21d | 2026-09-23 | 2026-10-13 | 1763 |  | Sector 43 | 9717806 |
| 1765 | 37300.37600.38600.40600.42900.44000.56500.1207900 | Internal Plaster | 15d | 2026-09-23 | 2026-10-07 | 1763 |  | Sector 43 | 9717816 |
| 1766 | 37300.37600.38600.40600.42900.44000.56500.1208000 | IPS flooring work | 13d | 2026-09-08 | 2026-09-20 | 1760 |  | Sector 43 | 9717826 |
| 1767 | 37300.37600.38600.40600.42900.44000.56500.1208100 | Toilet dado work | 25d | 2026-10-12 | 2026-12-20 | 1764FS-2d, 1765 |  | Sector 43 | 9717836 |
| 1768 | 37300.37600.38600.40600.42900.44000.56500.1208200 | Toilet flooring work | 25d | 2026-12-21 | 2027-01-14 | 1767 |  | Sector 43 | 9717846 |
| 1769 | 37300.37600.38600.40600.42900.44000.56500.1208300 | Living dinning flooring | 31d | 2026-12-26 | 2027-01-25 | 1766, 1768FS-20d |  | Sector 43 | 9717856 |
| 1770 | 37300.37600.38600.40600.42900.44000.56500.1208400 | Electrical wiring work | 12d | 2027-01-16 | 2027-01-27 | 1769FS-10d |  | Sector 43 | 9717866 |
| 1771 | 37300.37600.38600.40600.42900.44000.56500.1208500 | Aluminium door-window fixing | 19d | 2027-01-20 | 2027-02-07 | 1761, 1770FS-8d |  | Sector 43 | 9717876 |
| 1772 | 37300.37600.38600.40600.42900.44000.56500.1208600 | Putty primer coat | 10d | 2027-01-31 | 2027-02-09 | 1771FS-8d |  | Sector 43 | 9717886 |
| 1773 | 37300.37600.38600.40600.42900.44000.56500.1208700 | Prehung door fixing | 8d | 2027-02-05 | 2027-02-12 | 1772FS-5d |  | Sector 43 | 9717896 |
| 1774 | 37300.37600.38600.40600.42900.44000.56500.1208800 | Painting 1st coat | 12d | 2027-02-13 | 2027-02-24 | 1773 |  | Sector 43 | 9717906 |
| 1775 | 37300.37600.38600.40600.42900.44000.56500.1208900 | False Cieling panel fixing | 10d | 2027-03-16 | 2027-03-25 | 1758, 1774 |  | Sector 43 | 9717916 |

| ID | WBS | Task | Duration | Start | Finish | Predecessors | Constraint | Calendar | Unique_Task_ID |
| --- | --- | --- | --- | --- | --- | --- | --- | --- | --- |
| 1776 | 37300.37600.38600.40600.42900.44000.56400 | **27th floor** | 192d | 2026-08-11 | 2027-04-04 |  | start no earlier than 2026-08-11 | Sector 43 | 9698196 |
| 1777 | 37300.37600.38600.40600.42900.44000.56400.1209000 | Block Work | 36d | 2026-08-11 | 2026-09-15 | 1325 |  | Sector 43 | 9717926 |
| 1778 | 37300.37600.38600.40600.42900.44000.56400.1209100 | Installation of temporary Main door | 4d | 2026-09-16 | 2026-09-19 | 1777 |  | Sector 43 | 9717936 |
| 1779 | 37300.37600.38600.40600.42900.44000.56400.1209200 | Fire sprinkler pipe fixing | 10d | 2026-10-07 | 2026-10-16 | 1762, 1777 |  | Sector 43 | 9717946 |
| 1780 | 37300.37600.38600.40600.42900.44000.56400.1209300 | Internal Plumbing Works | 15d | 2026-09-16 | 2026-09-30 | 1777 |  | Sector 43 | 9717956 |
| 1781 | 37300.37600.38600.40600.42900.44000.56400.1209400 | Waterproofing | 21d | 2026-10-01 | 2026-10-21 | 1780 |  | Sector 43 | 9717966 |
| 1782 | 37300.37600.38600.40600.42900.44000.56400.1209500 | Internal Plaster | 15d | 2026-10-01 | 2026-10-15 | 1780 |  | Sector 43 | 9717976 |
| 1783 | 37300.37600.38600.40600.42900.44000.56400.1209600 | IPS flooring work | 13d | 2026-09-16 | 2026-09-28 | 1777 |  | Sector 43 | 9717986 |
| 1784 | 37300.37600.38600.40600.42900.44000.56400.1209700 | Toilet dado work | 25d | 2026-10-20 | 2026-12-28 | 1781FS-2d, 1782 |  | Sector 43 | 9717996 |
| 1785 | 37300.37600.38600.40600.42900.44000.56400.1209800 | Toilet flooring work | 25d | 2026-12-29 | 2027-01-22 | 1784 |  | Sector 43 | 9718006 |
| 1786 | 37300.37600.38600.40600.42900.44000.56400.1209900 | Living dinning flooring | 31d | 2027-01-03 | 2027-02-02 | 1783, 1785FS-20d |  | Sector 43 | 9718016 |
| 1787 | 37300.37600.38600.40600.42900.44000.56400.1210000 | Electrical wiring work | 12d | 2027-01-24 | 2027-02-04 | 1786FS-10d |  | Sector 43 | 9718026 |
| 1788 | 37300.37600.38600.40600.42900.44000.56400.1210100 | Aluminium door-window fixing | 19d | 2027-01-28 | 2027-02-15 | 1778, 1787FS-8d |  | Sector 43 | 9718036 |
| 1789 | 37300.37600.38600.40600.42900.44000.56400.1210200 | Putty primer coat | 10d | 2027-02-08 | 2027-02-17 | 1788FS-8d |  | Sector 43 | 9718046 |
| 1790 | 37300.37600.38600.40600.42900.44000.56400.1210300 | Prehung door fixing | 8d | 2027-02-13 | 2027-02-20 | 1789FS-5d |  | Sector 43 | 9718056 |
| 1791 | 37300.37600.38600.40600.42900.44000.56400.1210400 | Painting 1st coat | 12d | 2027-02-21 | 2027-03-04 | 1790 |  | Sector 43 | 9718066 |
| 1792 | 37300.37600.38600.40600.42900.44000.56400.1210500 | False Cieling panel fixing | 10d | 2027-03-26 | 2027-04-04 | 1775, 1791 |  | Sector 43 | 9718076 |
| 1793 | 37300.37600.38600.40600.42900.44000.56300 | **28th floor** | 206d | 2026-08-21 | 2027-04-28 |  | start no earlier than 2026-08-21 | Sector 43 | 9698206 |
| 1794 | 37300.37600.38600.40600.42900.44000.56300.1210600 | Block Work | 36d | 2026-08-21 | 2026-09-25 | 1326 |  | Sector 43 | 9718086 |
| 1795 | 37300.37600.38600.40600.42900.44000.56300.1210700 | Installation of temporary Main door | 4d | 2026-09-26 | 2026-09-29 | 1794 |  | Sector 43 | 9718096 |
| 1796 | 37300.37600.38600.40600.42900.44000.56300.1210800 | Fire sprinkler pipe fixing | 10d | 2026-10-17 | 2026-10-26 | 1779, 1794 |  | Sector 43 | 9718106 |
| 1797 | 37300.37600.38600.40600.42900.44000.56300.1210900 | Internal Plumbing Works | 15d | 2026-09-26 | 2026-10-10 | 1794 |  | Sector 43 | 9718116 |
| 1798 | 37300.37600.38600.40600.42900.44000.56300.1211000 | Waterproofing | 21d | 2026-10-11 | 2026-10-31 | 1797 |  | Sector 43 | 9718126 |
| 1799 | 37300.37600.38600.40600.42900.44000.56300.1211100 | Internal Plaster | 15d | 2026-10-11 | 2026-10-25 | 1797 |  | Sector 43 | 9718136 |
| 1800 | 37300.37600.38600.40600.42900.44000.56300.1211200 | IPS flooring work | 13d | 2026-09-26 | 2026-10-08 | 1794 |  | Sector 43 | 9718146 |
| 1801 | 37300.37600.38600.40600.42900.44000.56300.1211300 | Toilet dado work | 60d | 2026-10-30 | 2027-02-11 | 1798FS-2d, 1799 |  | Sector 43 | 9718156 |
| 1802 | 37300.37600.38600.40600.42900.44000.56300.1211400 | Toilet flooring work | 25d | 2027-02-12 | 2027-03-08 | 1801 |  | Sector 43 | 9718166 |
| 1803 | 37300.37600.38600.40600.42900.44000.56300.1211500 | Living dinning flooring | 31d | 2027-02-17 | 2027-03-19 | 1800, 1802FS-20d |  | Sector 43 | 9718176 |
| 1804 | 37300.37600.38600.40600.42900.44000.56300.1211600 | Electrical wiring work | 12d | 2027-03-10 | 2027-03-21 | 1803FS-10d |  | Sector 43 | 9718186 |
| 1805 | 37300.37600.38600.40600.42900.44000.56300.1211700 | Aluminium door-window fixing | 19d | 2027-03-14 | 2027-04-01 | 1795, 1804FS-8d |  | Sector 43 | 9718196 |
| 1806 | 37300.37600.38600.40600.42900.44000.56300.1211800 | Putty primer coat | 10d | 2027-03-25 | 2027-04-03 | 1805FS-8d |  | Sector 43 | 9718206 |
| 1807 | 37300.37600.38600.40600.42900.44000.56300.1211900 | Prehung door fixing | 8d | 2027-03-30 | 2027-04-06 | 1806FS-5d |  | Sector 43 | 9718216 |
| 1808 | 37300.37600.38600.40600.42900.44000.56300.1212000 | Painting 1st coat | 12d | 2027-04-07 | 2027-04-18 | 1807 |  | Sector 43 | 9718226 |
| 1809 | 37300.37600.38600.40600.42900.44000.56300.1212100 | False Cieling panel fixing | 10d | 2027-04-19 | 2027-04-28 | 1792, 1808 |  | Sector 43 | 9718236 |

| ID | WBS | Task | Duration | Start | Finish | Predecessors | Constraint | Calendar | Unique_Task_ID |
| --- | --- | --- | --- | --- | --- | --- | --- | --- | --- |
| 1810 | 37300.37600.38600.40600.42900.44000.56200 | **29th floor** | 209d | 2026-08-28 | 2027-05-08 |  | start no earlier than 2026-08-28 | Sector 43 | 9698216 |
| 1811 | 37300.37600.38600.40600.42900.44000.56200.1212200 | Block Work | 36d | 2026-08-28 | 2026-10-02 | 1327 |  | Sector 43 | 9718246 |
| 1812 | 37300.37600.38600.40600.42900.44000.56200.1212300 | Installation of temporary Main door | 4d | 2026-10-03 | 2026-10-06 | 1811 |  | Sector 43 | 9718256 |
| 1813 | 37300.37600.38600.40600.42900.44000.56200.1212400 | Fire sprinkler pipe fixing | 10d | 2026-10-27 | 2026-12-20 | 1796, 1811 |  | Sector 43 | 9718266 |
| 1814 | 37300.37600.38600.40600.42900.44000.56200.1212500 | Internal Plumbing Works | 15d | 2026-10-03 | 2026-10-17 | 1811 |  | Sector 43 | 9718276 |
| 1815 | 37300.37600.38600.40600.42900.44000.56200.1212600 | Waterproofing | 21d | 2026-10-18 | 2026-12-22 | 1814 |  | Sector 43 | 9718286 |
| 1816 | 37300.37600.38600.40600.42900.44000.56200.1212700 | Internal Plaster | 15d | 2026-10-18 | 2026-12-16 | 1814 |  | Sector 43 | 9718296 |
| 1817 | 37300.37600.38600.40600.42900.44000.56200.1212800 | IPS flooring work | 13d | 2026-10-03 | 2026-10-15 | 1811 |  | Sector 43 | 9718306 |
| 1818 | 37300.37600.38600.40600.42900.44000.56200.1212900 | Toilet dado work | 25d | 2026-12-21 | 2027-01-14 | 1815FS-2d, 1816 |  | Sector 43 | 9718316 |
| 1819 | 37300.37600.38600.40600.42900.44000.56200.1213000 | Toilet flooring work | 25d | 2027-01-15 | 2027-02-08 | 1818 |  | Sector 43 | 9718326 |
| 1820 | 37300.37600.38600.40600.42900.44000.56200.1213100 | Living dinning flooring | 31d | 2027-01-20 | 2027-02-19 | 1817, 1819FS-20d |  | Sector 43 | 9718336 |
| 1821 | 37300.37600.38600.40600.42900.44000.56200.1213200 | Electrical wiring work | 12d | 2027-02-10 | 2027-02-21 | 1820FS-10d |  | Sector 43 | 9718346 |
| 1822 | 37300.37600.38600.40600.42900.44000.56200.1213300 | Aluminium door-window fixing | 19d | 2027-02-14 | 2027-03-04 | 1812, 1821FS-8d |  | Sector 43 | 9718356 |
| 1823 | 37300.37600.38600.40600.42900.44000.56200.1213400 | Putty primer coat | 10d | 2027-02-25 | 2027-03-06 | 1822FS-8d |  | Sector 43 | 9718366 |
| 1824 | 37300.37600.38600.40600.42900.44000.56200.1213500 | Prehung door fixing | 8d | 2027-03-02 | 2027-03-09 | 1823FS-5d |  | Sector 43 | 9718376 |
| 1825 | 37300.37600.38600.40600.42900.44000.56200.1213600 | Painting 1st coat | 12d | 2027-03-10 | 2027-03-21 | 1824 |  | Sector 43 | 9718386 |
| 1826 | 37300.37600.38600.40600.42900.44000.56200.1213700 | False Cieling panel fixing | 10d | 2027-04-29 | 2027-05-08 | 1809, 1825 |  | Sector 43 | 9718396 |
| 1827 | 37300.37600.38600.40600.42900.44000.56100 | **30th floor** | 212d | 2026-09-04 | 2027-05-18 |  | start no earlier than 2026-09-04 | Sector 43 | 9698226 |
| 1828 | 37300.37600.38600.40600.42900.44000.56100.1213800 | Block Work | 36d | 2026-09-04 | 2026-10-09 | 1328 |  | Sector 43 | 9718406 |
| 1829 | 37300.37600.38600.40600.42900.44000.56100.1213900 | Installation of temporary Main door | 4d | 2026-10-10 | 2026-10-13 | 1828 |  | Sector 43 | 9718416 |
| 1830 | 37300.37600.38600.40600.42900.44000.56100.1214000 | Fire sprinkler pipe fixing | 10d | 2026-12-21 | 2026-12-30 | 1813, 1828 |  | Sector 43 | 9718426 |
| 1831 | 37300.37600.38600.40600.42900.44000.56100.1214100 | Internal Plumbing Works | 15d | 2026-10-10 | 2026-10-24 | 1828 |  | Sector 43 | 9718436 |
| 1832 | 37300.37600.38600.40600.42900.44000.56100.1214200 | Waterproofing | 21d | 2026-10-25 | 2026-12-29 | 1831 |  | Sector 43 | 9718446 |
| 1833 | 37300.37600.38600.40600.42900.44000.56100.1214300 | Internal Plaster | 15d | 2026-10-25 | 2026-12-23 | 1831 |  | Sector 43 | 9718456 |
| 1834 | 37300.37600.38600.40600.42900.44000.56100.1214400 | IPS flooring work | 13d | 2026-10-10 | 2026-10-22 | 1828 |  | Sector 43 | 9718466 |
| 1835 | 37300.37600.38600.40600.42900.44000.56100.1214500 | Toilet dado work | 25d | 2026-12-28 | 2027-01-21 | 1832FS-2d, 1833 |  | Sector 43 | 9718476 |
| 1836 | 37300.37600.38600.40600.42900.44000.56100.1214600 | Toilet flooring work | 25d | 2027-01-22 | 2027-02-15 | 1835 |  | Sector 43 | 9718486 |
| 1837 | 37300.37600.38600.40600.42900.44000.56100.1214700 | Living dinning flooring | 31d | 2027-01-27 | 2027-02-26 | 1834, 1836FS-20d |  | Sector 43 | 9718496 |
| 1838 | 37300.37600.38600.40600.42900.44000.56100.1214800 | Electrical wiring work | 12d | 2027-02-17 | 2027-02-28 | 1837FS-10d |  | Sector 43 | 9718506 |
| 1839 | 37300.37600.38600.40600.42900.44000.56100.1214900 | Aluminium door-window fixing | 19d | 2027-02-21 | 2027-03-11 | 1829, 1838FS-8d |  | Sector 43 | 9718516 |
| 1840 | 37300.37600.38600.40600.42900.44000.56100.1215000 | Putty primer coat | 10d | 2027-03-04 | 2027-03-13 | 1839FS-8d |  | Sector 43 | 9718526 |
| 1841 | 37300.37600.38600.40600.42900.44000.56100.1215100 | Prehung door fixing | 8d | 2027-03-09 | 2027-03-16 | 1840FS-5d |  | Sector 43 | 9718536 |
| 1842 | 37300.37600.38600.40600.42900.44000.56100.1215200 | Painting 1st coat | 12d | 2027-03-17 | 2027-03-28 | 1841 |  | Sector 43 | 9718546 |
| 1843 | 37300.37600.38600.40600.42900.44000.56100.1215300 | False Cieling panel fixing | 10d | 2027-05-09 | 2027-05-18 | 1826, 1842 |  | Sector 43 | 9718556 |

| ID | WBS | Task | Duration | Start | Finish | Predecessors | Constraint | Calendar | Unique_Task_ID |
| --- | --- | --- | --- | --- | --- | --- | --- | --- | --- |
| 1844 | 37300.37600.38600.40600.42900.44000.56000 | **31st Floor** | 215d | 2026-09-11 | 2027-05-28 |  | start no earlier than 2026-09-11 | Sector 43 | 9698236 |
| 1845 | 37300.37600.38600.40600.42900.44000.56000.1215400 | Block Work | 37d | 2026-09-11 | 2026-10-17 | 1329 |  | Sector 43 | 9718566 |
| 1846 | 37300.37600.38600.40600.42900.44000.56000.1215500 | Installation of temporary Main door | 4d | 2026-10-18 | 2026-10-21 | 1845 |  | Sector 43 | 9718576 |
| 1847 | 37300.37600.38600.40600.42900.44000.56000.1215600 | Fire sprinkler pipe fixing | 10d | 2026-12-31 | 2027-01-09 | 1830, 1845 |  | Sector 43 | 9718586 |
| 1848 | 37300.37600.38600.40600.42900.44000.56000.1215700 | Internal Plumbing Works | 15d | 2026-10-18 | 2026-12-16 | 1845 |  | Sector 43 | 9718596 |
| 1849 | 37300.37600.38600.40600.42900.44000.56000.1215800 | Waterproofing | 21d | 2026-12-17 | 2027-01-06 | 1848 |  | Sector 43 | 9718606 |
| 1850 | 37300.37600.38600.40600.42900.44000.56000.1215900 | Internal Plaster | 15d | 2026-12-17 | 2026-12-31 | 1848 |  | Sector 43 | 9718616 |
| 1851 | 37300.37600.38600.40600.42900.44000.56000.1216000 | IPS flooring work | 13d | 2026-10-18 | 2026-10-30 | 1845 |  | Sector 43 | 9718626 |
| 1852 | 37300.37600.38600.40600.42900.44000.56000.1216100 | Toilet dado work | 25d | 2027-01-05 | 2027-01-29 | 1849FS-2d, 1850 |  | Sector 43 | 9718636 |
| 1853 | 37300.37600.38600.40600.42900.44000.56000.1216200 | Toilet flooring work | 25d | 2027-01-30 | 2027-02-23 | 1852 |  | Sector 43 | 9718646 |
| 1854 | 37300.37600.38600.40600.42900.44000.56000.1216300 | Living dinning flooring | 31d | 2027-02-04 | 2027-03-06 | 1851, 1853FS-20d |  | Sector 43 | 9718656 |
| 1855 | 37300.37600.38600.40600.42900.44000.56000.1216400 | Electrical wiring work | 12d | 2027-02-25 | 2027-03-08 | 1854FS-10d |  | Sector 43 | 9718666 |
| 1856 | 37300.37600.38600.40600.42900.44000.56000.1216500 | Aluminium door-window fixing | 19d | 2027-03-01 | 2027-03-19 | 1846, 1855FS-8d |  | Sector 43 | 9718676 |
| 1857 | 37300.37600.38600.40600.42900.44000.56000.1216600 | Putty primer coat | 10d | 2027-03-12 | 2027-03-21 | 1856FS-8d |  | Sector 43 | 9718686 |
| 1858 | 37300.37600.38600.40600.42900.44000.56000.1216700 | Prehung door fixing | 8d | 2027-03-17 | 2027-03-24 | 1857FS-5d |  | Sector 43 | 9718696 |
| 1859 | 37300.37600.38600.40600.42900.44000.56000.1216800 | Painting 1st coat | 12d | 2027-03-25 | 2027-04-05 | 1858 |  | Sector 43 | 9718706 |
| 1860 | 37300.37600.38600.40600.42900.44000.56000.1216900 | False Cieling panel fixing | 10d | 2027-05-19 | 2027-05-28 | 1843, 1859 |  | Sector 43 | 9718716 |
| 1861 | 37300.37600.38600.40600.42900.224000 | **Terrace finishing** | 100d | 2027-05-04 | 2027-08-11 |  | start no earlier than 2027-05-04 | Sector 43 | 9700516 |
| 1862 | 37300.37600.38600.40600.42900.224000.863200 | Terrace waterproofing | 40d | 2027-05-04 | 2027-06-12 | 1945FS+10d, 1331 |  | Sector 43 | 9703506 |
| 1863 | 37300.37600.38600.40600.42900.224000.863300 | Terrace finishing | 60d | 2027-06-13 | 2027-08-11 | 1862 |  | Sector 43 | 9703516 |
| 1864 | 37300.37600.38600.40600.42900.116500 | **Common area finishing** | 274d | 2026-09-08 | 2027-07-23 |  | start no earlier than 2026-09-08 | Sector 43 | 9698646 |
| 1865 | 37300.37600.38600.40600.42900.116500.863400 | Masonary Work | 60d | 2026-09-08 | 2026-12-21 | 1292 |  | Sector 43 | 9703526 |
| 1866 | 37300.37600.38600.40600.42900.116500.863500 | Fire sprinkler pipe fixing | 90d | 2026-09-18 | 2027-01-30 | 1292FS+10d |  | Sector 43 | 9703536 |
| 1867 | 37300.37600.38600.40600.42900.116500.863600 | Corridoor, staircase, shaft Plaster & whitewash | 90d | 2026-10-28 | 2027-03-11 | 1865FS-10d |  | Sector 43 | 9703546 |
| 1868 | 37300.37600.38600.40600.42900.116500.863700 | Staircase railing fixing | 45d | 2026-10-18 | 2027-01-15 | 1865FS-20d |  | Sector 43 | 9703556 |
| 1869 | 37300.37600.38600.40600.42900.116500.863800 | Fire staircase flooring | 60d | 2026-12-27 | 2027-02-24 | 1868FS-20d |  | Sector 43 | 9703566 |
| 1870 | 37300.37600.38600.40600.42900.116500.863900 | Main staircase flooring | 60d | 2026-12-27 | 2027-02-24 | 1868FS-20d |  | Sector 43 | 9703576 |
| 1871 | 37300.37600.38600.40600.42900.116500.864000 | Fire door work | 45d | 2027-01-26 | 2027-03-11 | 1869FS-30d |  | Sector 43 | 9703586 |
| 1872 | 37300.37600.38600.40600.42900.116500.864100 | Lobby flooring & Corridor | 114d | 2027-01-06 | 2027-04-29 | 1870FS-50d |  | Sector 43 | 9703596 |
| 1873 | 37300.37600.38600.40600.42900.116500.864200 | Ceiling & wall putty-primer | 60d | 2027-03-16 | 2027-05-14 | 1872FS-45d |  | Sector 43 | 9703606 |
| 1874 | 37300.37600.38600.40600.42900.116500.864300 | Ceiling & wall painting | 90d | 2027-03-31 | 2027-06-28 | 1873FS-45d |  | Sector 43 | 9703616 |
| 1875 | 37300.37600.38600.40600.42900.116500.864400 | Electrical wiring work | 60d | 2027-05-05 | 2027-07-03 | 1873FS-10d |  | Sector 43 | 9703626 |
| 1876 | 37300.37600.38600.40600.42900.116500.864500 | Light fixture supply & installation | 30d | 2027-06-24 | 2027-07-23 | 1875FS-10d |  | Sector 43 | 9703636 |
| 1877 | 37300.37600.38600.40600.42900.116500.864600 | Installation of fire signages including Basements | 30d | 2027-06-19 | 2027-07-18 | 1874FS-10d |  | Sector 43 | 9703646 |

| ID | WBS | Task | Duration | Start | Finish | Predecessors | Constraint | Calendar | Unique_Task_ID |
| --- | --- | --- | --- | --- | --- | --- | --- | --- | --- |
| 1878 | 37300.37600.38600.40600.42900.50200 | **Balcony Glass Railing** | 217d | 2026-01-09 | 2026-08-13 |  | start no earlier than 2026-01-09 | Sector 43 | 9697596 |
| 1879 | 37300.37600.38600.40600.42900.50200.864700 | 1st Floor | 7d | 2026-01-09 | 2026-01-15 | 1335 |  | Sector 43 | 9703656 |
| 1880 | 37300.37600.38600.40600.42900.50200.864800 | 2nd Floor | 7d | 2026-01-16 | 2026-01-22 | 1879 |  | Sector 43 | 9703666 |
| 1881 | 37300.37600.38600.40600.42900.50200.864900 | 3rd Floor | 7d | 2026-01-23 | 2026-01-29 | 1880 |  | Sector 43 | 9703676 |
| 1882 | 37300.37600.38600.40600.42900.50200.865000 | 4th Floor | 7d | 2026-01-30 | 2026-02-05 | 1881 |  | Sector 43 | 9703686 |
| 1883 | 37300.37600.38600.40600.42900.50200.865100 | 5th Floor | 7d | 2026-02-06 | 2026-02-12 | 1882 |  | Sector 43 | 9703696 |
| 1884 | 37300.37600.38600.40600.42900.50200.865200 | 6th Floor | 7d | 2026-02-13 | 2026-02-19 | 1883 |  | Sector 43 | 9703706 |
| 1885 | 37300.37600.38600.40600.42900.50200.865300 | 7th Floor | 7d | 2026-02-20 | 2026-02-26 | 1884 |  | Sector 43 | 9703716 |
| 1886 | 37300.37600.38600.40600.42900.50200.865400 | 8th Floor | 7d | 2026-02-27 | 2026-03-05 | 1885 |  | Sector 43 | 9703726 |
| 1887 | 37300.37600.38600.40600.42900.50200.865500 | 9th Floor | 7d | 2026-03-06 | 2026-03-12 | 1886 |  | Sector 43 | 9703736 |
| 1888 | 37300.37600.38600.40600.42900.50200.865600 | 10th Floor | 7d | 2026-03-13 | 2026-03-19 | 1887 |  | Sector 43 | 9703746 |
| 1889 | 37300.37600.38600.40600.42900.50200.865700 | 11th Floor | 7d | 2026-03-20 | 2026-03-26 | 1888 |  | Sector 43 | 9703756 |
| 1890 | 37300.37600.38600.40600.42900.50200.865800 | 12th Floor | 7d | 2026-03-27 | 2026-04-02 | 1889 |  | Sector 43 | 9703766 |
| 1891 | 37300.37600.38600.40600.42900.50200.865900 | 13th Floor | 7d | 2026-04-03 | 2026-04-09 | 1890 |  | Sector 43 | 9703776 |
| 1892 | 37300.37600.38600.40600.42900.50200.866000 | 14th Floor | 7d | 2026-04-10 | 2026-04-16 | 1891 |  | Sector 43 | 9703786 |
| 1893 | 37300.37600.38600.40600.42900.50200.866100 | 15th Floor | 7d | 2026-04-17 | 2026-04-23 | 1892 |  | Sector 43 | 9703796 |
| 1894 | 37300.37600.38600.40600.42900.50200.866200 | 16th Floor | 7d | 2026-04-24 | 2026-04-30 | 1893 |  | Sector 43 | 9703806 |
| 1895 | 37300.37600.38600.40600.42900.50200.866300 | 17th Floor | 7d | 2026-05-01 | 2026-05-07 | 1894 |  | Sector 43 | 9703816 |
| 1896 | 37300.37600.38600.40600.42900.50200.866400 | 18th Floor | 7d | 2026-05-08 | 2026-05-14 | 1895 |  | Sector 43 | 9703826 |
| 1897 | 37300.37600.38600.40600.42900.50200.866500 | 19th Floor | 7d | 2026-05-15 | 2026-05-21 | 1896 |  | Sector 43 | 9703836 |
| 1898 | 37300.37600.38600.40600.42900.50200.866600 | 20th Floor | 7d | 2026-05-22 | 2026-05-28 | 1897 |  | Sector 43 | 9703846 |
| 1899 | 37300.37600.38600.40600.42900.50200.866700 | 21st Floor | 7d | 2026-05-29 | 2026-06-04 | 1898 |  | Sector 43 | 9703856 |
| 1900 | 37300.37600.38600.40600.42900.50200.866800 | 22nd Floor | 7d | 2026-06-05 | 2026-06-11 | 1899 |  | Sector 43 | 9703866 |
| 1901 | 37300.37600.38600.40600.42900.50200.866900 | 23rd Floor | 7d | 2026-06-12 | 2026-06-18 | 1900 |  | Sector 43 | 9703876 |
| 1902 | 37300.37600.38600.40600.42900.50200.867000 | 24th Floor | 7d | 2026-06-19 | 2026-06-25 | 1901 |  | Sector 43 | 9703886 |
| 1903 | 37300.37600.38600.40600.42900.50200.867100 | 25th Floor | 7d | 2026-06-26 | 2026-07-02 | 1902 |  | Sector 43 | 9703896 |
| 1904 | 37300.37600.38600.40600.42900.50200.867200 | 26th Floor | 7d | 2026-07-03 | 2026-07-09 | 1903 |  | Sector 43 | 9703906 |
| 1905 | 37300.37600.38600.40600.42900.50200.867300 | 27th Floor | 7d | 2026-07-10 | 2026-07-16 | 1904 |  | Sector 43 | 9703916 |
| 1906 | 37300.37600.38600.40600.42900.50200.867400 | 28th Floor | 7d | 2026-07-17 | 2026-07-23 | 1905 |  | Sector 43 | 9703926 |
| 1907 | 37300.37600.38600.40600.42900.50200.867500 | 29th Floor | 7d | 2026-07-24 | 2026-07-30 | 1906 |  | Sector 43 | 9703936 |
| 1908 | 37300.37600.38600.40600.42900.50200.867600 | 30th Floor | 7d | 2026-07-31 | 2026-08-06 | 1907 |  | Sector 43 | 9703946 |
| 1909 | 37300.37600.38600.40600.42900.50200.867700 | 31st Floor | 7d | 2026-08-07 | 2026-08-13 | 1908 |  | Sector 43 | 9703956 |

| ID | WBS | Task | Duration | Start | Finish | Predecessors | Constraint | Calendar | Unique_Task_ID |
| --- | --- | --- | --- | --- | --- | --- | --- | --- | --- |
| 1910 | 37300.37600.38600.40600.116100 | **MEP work** | 332d | 2026-09-21 | 2027-10-02 |  | start no earlier than 2026-09-21 | Sector 43 | 9698676 |
| 1911 | 37300.37600.38600.40600.116100.121700 | **Electrical work** | 298d | 2026-10-18 | 2027-09-25 |  | start no earlier than 2026-10-18 | Sector 43 | 9698756 |
| 1912 | 37300.37600.38600.40600.116100.121700.867800 | Cable Tray | 90d | 2026-10-18 | 2027-03-01 | 1297 |  | Sector 43 | 9703966 |
| 1913 | 37300.37600.38600.40600.116100.121700.867900 | Cable, main & sub main | 90d | 2026-10-18 | 2027-03-01 | 1912FS-90d |  | Sector 43 | 9703976 |
| 1914 | 37300.37600.38600.40600.116100.121700.868000 | LT panel & DB | 90d | 2027-01-01 | 2027-03-31 | 1912FS-60d |  | Sector 43 | 9703986 |
| 1915 | 37300.37600.38600.40600.116100.121700.868100 | Earthing Works | 60d | 2027-03-02 | 2027-04-30 | 1912 |  | Sector 43 | 9703996 |
| 1916 | 37300.37600.38600.40600.116100.121700.868200 | Advanced Lightening Protection system | 45d | 2027-04-06 | 2027-05-20 | 1915FS-25d |  | Sector 43 | 9704006 |
| 1917 | 37300.37600.38600.40600.116100.121700.868300 | Energy meter | 60d | 2027-03-02 | 2027-04-30 | 1913 |  | Sector 43 | 9704016 |
| 1918 | 37300.37600.38600.40600.116100.121700.868400 | Inverter / UPS | 70d | 2027-04-26 | 2027-07-04 | 1913, 1914, 1917FS-5d |  | Sector 43 | 9704026 |
| 1919 | 37300.37600.38600.40600.116100.121700.868500 | HVAC & Exhast fan | 120d | 2027-01-31 | 2027-05-30 | 1912FS-30d |  | Sector 43 | 9704036 |
| 1920 | 37300.37600.38600.40600.116100.121700.868600 | FTTH | 45d | 2027-03-07 | 2027-04-20 | 1914FS-25d |  | Sector 43 | 9704046 |
| 1921 | 37300.37600.38600.40600.116100.121700.868700 | Security System - FA & PA | 45d | 2027-03-07 | 2027-04-20 | 1914FS-25d |  | Sector 43 | 9704056 |
| 1922 | 37300.37600.38600.40600.116100.121700.868800 | T&C of complete system | 64d | 2027-07-24 | 2027-09-25 | 1876, 1914, 1916, 1917, 1918, 1919, 1920, 1921 |  | Sector 43 | 9704066 |
| 1923 | 37300.37600.38600.40600.116100.130700 | **Plumbing work** | 332d | 2026-09-21 | 2027-10-02 |  | start no earlier than 2026-09-21 | Sector 43 | 9699016 |
| 1924 | 37300.37600.38600.40600.116100.130700.868900 | Terrace looping | 45d | 2026-09-21 | 2026-12-19 | 1330 |  | Sector 43 | 9704076 |
| 1925 | 37300.37600.38600.40600.116100.130700.869000 | Shaft Plumbing | 120d | 2027-02-10 | 2027-06-09 | 1867FS-30d, 1924 |  | Sector 43 | 9704086 |
| 1926 | 37300.37600.38600.40600.116100.130700.869100 | CP sanitary fixture supply | 45d | 2027-06-10 | 2027-07-24 | 1925 |  | Sector 43 | 9704096 |
| 1927 | 37300.37600.38600.40600.116100.130700.869200 | Cold & flushing water supply | 45d | 2027-06-10 | 2027-07-24 | 1925 |  | Sector 43 | 9704106 |
| 1928 | 37300.37600.38600.40600.116100.130700.869300 | Misc work | 30d | 2027-07-05 | 2027-08-03 | 1927FS-20d |  | Sector 43 | 9704116 |
| 1929 | 37300.37600.38600.40600.116100.130700.869400 | Installation of PHE pumps | 60d | 2026-12-20 | 2027-02-17 | 1924 |  | Sector 43 | 9704126 |
| 1930 | 37300.37600.38600.40600.116100.130700.869500 | T&C of complete system | 60d | 2027-08-04 | 2027-10-02 | 1924, 1925, 1927, 1928, 1929 |  | Sector 43 | 9704136 |
| 1931 | 37300.37600.38600.40600.116100.137000 | **Fire fighting work** | 210d | 2027-02-10 | 2027-09-07 |  | start no earlier than 2027-02-10 | Sector 43 | 9699046 |
| 1932 | 37300.37600.38600.40600.116100.137000.869600 | Fire hydrant work | 90d | 2027-02-10 | 2027-05-10 | 1867FS-30d |  | Sector 43 | 9704146 |
| 1933 | 37300.37600.38600.40600.116100.137000.869700 | Pipe connection & sprinkler installation | 60d | 2027-05-11 | 2027-07-09 | 1932 |  | Sector 43 | 9704156 |
| 1934 | 37300.37600.38600.40600.116100.137000.869800 | Shaft Downtake works | 90d | 2027-02-10 | 2027-05-10 | 1330, 1867FS-30d |  | Sector 43 | 9704166 |
| 1935 | 37300.37600.38600.40600.116100.137000.869900 | Connection to pump room | 45d | 2027-05-11 | 2027-06-24 | 1934 |  | Sector 43 | 9704176 |
| 1936 | 37300.37600.38600.40600.116100.137000.870000 | Installation of FF pumps | 60d | 2027-05-11 | 2027-07-09 | 1932, 1934 |  | Sector 43 | 9704186 |
| 1937 | 37300.37600.38600.40600.116100.137000.870100 | T&C of complete system | 60d | 2027-07-10 | 2027-09-07 | 1866, 1871, 1877FS-20d, 1933, 1935, 1936, 1847 |  | Sector 43 | 9704196 |

| ID | WBS | Task | Duration | Start | Finish | Predecessors | Constraint | Calendar | Unique_Task_ID |
| --- | --- | --- | --- | --- | --- | --- | --- | --- | --- |
| 1938 | 37300.37600.38600.40600.116100.220400 | **Lift work** | 99d | 2026-10-18 | 2027-03-10 |  | start no earlier than 2026-10-18 | Sector 43 | 9700296 |
| 1939 | 37300.37600.38600.40600.116100.220400.870200 | Lift Shaft/Pit Handover | 30d | 2026-10-18 | 2026-12-31 | 1297 |  | Sector 43 | 9704206 |
| 1940 | 37300.37600.38600.40600.116100.220400.870300 | Lift installation work | 50d | 2026-12-21 | 2027-02-08 | 1939FS-11d |  | Sector 43 | 9704216 |
| 1941 | 37300.37600.38600.40600.116100.220400.870400 | Lift testing and commissioning | 30d | 2027-02-09 | 2027-03-10 | 1940 |  | Sector 43 | 9704226 |
| 1942 | 37300.37600.38600.40600.215400 | **External Paint Works** | 170d | 2026-09-21 | 2027-04-23 |  | start no earlier than 2026-09-21 | Sector 43 | 9699726 |
| 1943 | 37300.37600.38600.40600.215400.388300 | Surface prepration | 70d | 2026-09-21 | 2027-01-13 | 1330 |  | Sector 43 | 9701206 |
| 1944 | 37300.37600.38600.40600.215400.388400 | External Painting (Primer, texture & first coat) | 90d | 2027-01-14 | 2027-04-13 | 1943 |  | Sector 43 | 9701216 |
| 1945 | 37300.37600.38600.40600.215400.388500 | Final coat of painting | 80d | 2027-02-03 | 2027-04-23 | 1944FS-70d |  | Sector 43 | 9701226 |
| 1946 | 37300.37600.38600.40600.215400.388600 | Misc. work | 50d | 2027-01-14 | 2027-03-04 | 1943 |  | Sector 43 | 9701236 |
| 1947 | 37300.37600.38600.40600.292800 | OC Application/Readiness | 1d | 2027-08-21 | 2027-08-21 | 1909FS-45d, 1922FS-43d, 1930FS-43d, 1937FS-35d, 1941FS-40d, 1863FS-30d, 1869, 1870, 1872, 1860 |  | Sector 43 | 9700756 |
| 1948 | 37300.37600.38600.40600.292900 | OC Receipt | 30d | 2027-08-22 | 2027-09-20 | 1947, 1120, 1121, 1129, 1130 |  | Sector 43 | 9700766 |
| 1949 | 37300.37600.38600.40600.164400 | **Post OC Activities** | 205d | 2027-08-22 | 2028-04-27 |  | start no earlier than 2027-08-22 | Sector 43 | 9699136 |
| 1950 | 37300.37600.38600.40600.164400.388700 | CP & Sanitaryware installation | 120d | 2027-08-22 | 2028-02-02 | 1948FS-30d, 1926 |  | Sector 43 | 9701246 |
| 1951 | 37300.37600.38600.40600.164400.388800 | Electrical Fixtures And Fittings installations | 120d | 2027-08-22 | 2028-02-02 | 1948FS-30d |  | Sector 43 | 9701256 |
| 1952 | 37300.37600.38600.40600.164400.388900 | Final Coat Paint Internal | 90d | 2027-08-22 | 2028-01-03 | 1948FS-30d |  | Sector 43 | 9701266 |
| 1953 | 37300.37600.38600.40600.164400.389000 | Split AC Units installation | 100d | 2028-01-19 | 2028-04-27 | 1952FS+15d |  | Sector 43 | 9701276 |
| 1954 | 37300.37600.38600.40600.164400.389100 | Wooden Flooring | 180d | 2027-08-22 | 2028-04-02 | 1948FS-30d |  | Sector 43 | 9701286 |
| 1955 | 37300.37600.38600.40600.293000 | Offer to possession | 150d | 2028-04-28 | 2028-09-24 | 1948FS+120d, 1946, 1950, 1951, 1953, 1954 |  | Sector 43 | 9700776 |
| 1956 | 37300.37600.38600.40000 | **Tower C (2B+G+32)** | 1096d | 2025-05-24 | 2028-10-05 |  | start no earlier than 2025-05-24 | Sector 43 | 9697396 |
| 1957 | 37300.37600.38600.40000.64300 | **Sub structure Works** | 257d | 2025-05-24 | 2026-03-21 |  | start no earlier than 2025-05-24 | Sector 43 | 9698566 |
| 1958 | 37300.37600.38600.40000.64300.220500 | **Soil bed preparation** | 4d | 2025-05-24 | 2025-05-27 |  | start no earlier than 2025-05-24 | Sector 43 | 9700286 |
| 1959 | 37300.37600.38600.40000.64300.220500.870500 | Surface dressing | 1d | 2025-05-24 | 2025-05-24 | 66 |  | Sector 43 | 9704236 |
| 1960 | 37300.37600.38600.40000.64300.220500.870600 | ATT | 2d | 2025-05-25 | 2025-05-26 | 1959 |  | Sector 43 | 9704246 |
| 1961 | 37300.37600.38600.40000.64300.220500.870700 | PCC | 1d | 2025-05-27 | 2025-05-27 | 1960 |  | Sector 43 | 9704256 |

| ID | WBS | Task | Duration | Start | Finish | Predecessors | Constraint | Calendar | Unique_Task_ID |
| --- | --- | --- | --- | --- | --- | --- | --- | --- | --- |
| 1962 | 37300.37600.38600.40000.64300.124500 | **RCC works** | 74d | 2025-05-27 | 2025-08-08 |  | start no earlier than 2025-05-27 | Sector 43 | 9698786 |
| 1963 | 37300.37600.38600.40000.64300.124500.127900 | **Raft including B2 slab (234.150 AMSL)** | 18d | 2025-05-27 | 2025-06-13 |  | start no earlier than 2025-05-27 | Sector 43 | 9698866 |
| 1964 | 37300.37600.38600.40000.64300.124500.127900.1217000 | Reinforcement | 10d | 2025-05-27 | 2025-06-05 | 1961FS-1d |  | Sector 43 | 9718726 |
| 1965 | 37300.37600.38600.40000.64300.124500.127900.1217100 | Shuttering | 8d | 2025-05-29 | 2025-06-05 | 1964FS-8d |  | Sector 43 | 9718736 |
| 1966 | 37300.37600.38600.40000.64300.124500.127900.1217200 | Concreting of Raft | 2d | 2025-06-03 | 2025-06-04 | 1965FS-3d |  | Sector 43 | 9718746 |
| 1967 | 37300.37600.38600.40000.64300.124500.127900.1217300 | Column till bottom of B2 slab (stitch slab) | 6d | 2025-06-03 | 2025-06-08 | 1966FS-2d |  | Sector 43 | 9718756 |
| 1968 | 37300.37600.38600.40000.64300.124500.127900.1217400 | Backfilling till bottom of B2 slab | 3d | 2025-06-09 | 2025-06-11 | 1967 |  | Sector 43 | 9718766 |
| 1969 | 37300.37600.38600.40000.64300.124500.127900.1217500 | Reinforcement | 10d | 2025-06-02 | 2025-06-11 | 1968FS-10d |  | Sector 43 | 9718776 |
| 1970 | 37300.37600.38600.40000.64300.124500.127900.1217600 | Shuttering | 11d | 2025-06-02 | 2025-06-12 | 1969FS-10d |  | Sector 43 | 9718786 |
| 1971 | 37300.37600.38600.40000.64300.124500.127900.1217700 | Concreting of B2 Slab | 2d | 2025-06-12 | 2025-06-13 | 1970FS-1d |  | Sector 43 | 9718796 |
| 1972 | 37300.37600.38600.40000.64300.124500.221100 | **B1 slab (238.050 AMSL)** | 25d | 2025-06-14 | 2025-07-08 |  | start no earlier than 2025-06-14 | Sector 43 | 9700226 |
| 1973 | 37300.37600.38600.40000.64300.124500.221100.1217800 | Shuttering | 20d | 2025-06-14 | 2025-07-03 | 1971 |  | Sector 43 | 9718806 |
| 1974 | 37300.37600.38600.40000.64300.124500.221100.1217900 | Reinforcement | 20d | 2025-06-19 | 2025-07-08 | 1973FS-15d |  | Sector 43 | 9718816 |
| 1975 | 37300.37600.38600.40000.64300.124500.221100.1218000 | Concreting | 2d | 2025-07-07 | 2025-07-08 | 1974FS-2d |  | Sector 43 | 9718826 |
| 1976 | 37300.37600.38600.40000.64300.124500.221200 | **Ground Floor Slab / NTA top - 243.850 AMSL** | 31d | 2025-07-09 | 2025-08-08 |  | start no earlier than 2025-07-09 | Sector 43 | 9700216 |
| 1977 | 37300.37600.38600.40000.64300.124500.221200.1218100 | Shuttering | 23d | 2025-07-09 | 2025-07-31 | 1975 |  | Sector 43 | 9718836 |
| 1978 | 37300.37600.38600.40000.64300.124500.221200.1218200 | Reinforcement | 23d | 2025-07-17 | 2025-08-08 | 1977FS-15d |  | Sector 43 | 9718846 |
| 1979 | 37300.37600.38600.40000.64300.124500.221200.1218300 | Concreting | 2d | 2025-08-07 | 2025-08-08 | 1978FS-2d |  | Sector 43 | 9718856 |
| 1980 | 37300.37600.38600.40000.64300.121900 | **Sub structure finishing works** | 166d | 2025-08-23 | 2026-03-21 |  | start no earlier than 2025-08-23 | Sector 43 | 9698766 |
| 1981 | 37300.37600.38600.40000.64300.121900.127800 | **Basement 2** | 135d | 2025-08-23 | 2026-02-18 |  | start no earlier than 2025-08-23 | Sector 43 | 9698946 |
| 1982 | 37300.37600.38600.40000.64300.121900.127800.1218400 | Masonary | 30d | 2025-08-23 | 2025-09-21 | 1975FS+45d |  | Sector 43 | 9718866 |
| 1983 | 37300.37600.38600.40000.64300.121900.127800.1218500 | Structural steel | 30d | 2025-08-23 | 2025-09-21 | 1975FS+45d |  | Sector 43 | 9718876 |
| 1984 | 37300.37600.38600.40000.64300.121900.127800.1218600 | Plaster | 30d | 2025-09-22 | 2025-10-21 | 1982, 1983 |  | Sector 43 | 9718886 |
| 1985 | 37300.37600.38600.40000.64300.121900.127800.1218700 | White wash | 30d | 2025-10-22 | 2026-01-04 | 1984 |  | Sector 43 | 9718896 |
| 1986 | 37300.37600.38600.40000.64300.121900.127800.1218800 | VDF | 60d | 2025-09-07 | 2025-12-20 | 1984FS-45d |  | Sector 43 | 9718906 |
| 1987 | 37300.37600.38600.40000.64300.121900.127800.1218900 | Drain & Sump (incl. gratings) | 60d | 2025-10-07 | 2026-01-19 | 1986FS-30d |  | Sector 43 | 9718916 |
| 1988 | 37300.37600.38600.40000.64300.121900.127800.1219000 | Car parking marking | 30d | 2026-01-20 | 2026-02-18 | 1985FS-15d, 1987 |  | Sector 43 | 9718926 |
| 1989 | 37300.37600.38600.40000.64300.121900.127800.1219100 | Signages | 30d | 2025-12-26 | 2026-01-24 | 1985FS-10d |  | Sector 43 | 9718936 |

| ID | WBS | Task | Duration | Start | Finish | Predecessors | Constraint | Calendar | Unique_Task_ID |
| --- | --- | --- | --- | --- | --- | --- | --- | --- | --- |
| 1990 | 37300.37600.38600.40000.64300.121900.127700 | **Basement 1** | 135d | 2025-09-23 | 2026-03-21 |  | start no earlier than 2025-09-23 | Sector 43 | 9698986 |
| 1991 | 37300.37600.38600.40000.64300.121900.127700.1219200 | Masonary | 30d | 2025-09-23 | 2025-10-22 | 1979FS+45d |  | Sector 43 | 9718946 |
| 1992 | 37300.37600.38600.40000.64300.121900.127700.1219300 | Structural steel | 30d | 2025-09-23 | 2025-10-22 | 1979FS+45d |  | Sector 43 | 9718956 |
| 1993 | 37300.37600.38600.40000.64300.121900.127700.1219400 | Plaster | 30d | 2025-10-23 | 2026-01-05 | 1991, 1992 |  | Sector 43 | 9718966 |
| 1994 | 37300.37600.38600.40000.64300.121900.127700.1219500 | White wash | 30d | 2026-01-06 | 2026-02-04 | 1993 |  | Sector 43 | 9718976 |
| 1995 | 37300.37600.38600.40000.64300.121900.127700.1219600 | VDF | 60d | 2025-10-08 | 2026-01-20 | 1993FS-45d |  | Sector 43 | 9718986 |
| 1996 | 37300.37600.38600.40000.64300.121900.127700.1219700 | Drain & Sump (incl. gratings) | 60d | 2025-12-22 | 2026-02-19 | 1995FS-30d |  | Sector 43 | 9718996 |
| 1997 | 37300.37600.38600.40000.64300.121900.127700.1219800 | Car parking marking | 30d | 2026-02-20 | 2026-03-21 | 1994FS-15d, 1996 |  | Sector 43 | 9719006 |
| 1998 | 37300.37600.38600.40000.64300.121900.127700.1219900 | Signages | 30d | 2026-01-26 | 2026-02-24 | 1994FS-10d |  | Sector 43 | 9719016 |
| 1999 | 37300.37600.38600.40000.44300 | **Super structure works** | 400d | 2025-08-09 | 2026-10-27 |  | start no earlier than 2025-08-09 | Sector 43 | 9697486 |
| 2000 | 37300.37600.38600.40000.44300.46100 | **RCC works** | 400d | 2025-08-09 | 2026-10-27 |  | start no earlier than 2025-08-09 | Sector 43 | 9697516 |
| 2001 | 37300.37600.38600.40000.44300.46100.210100 | **1st floor** | 31d | 2025-08-09 | 2025-09-08 |  | start no earlier than 2025-08-09 | Sector 43 | 9699636 |
| 2002 | 37300.37600.38600.40000.44300.46100.210100.1220000 | Reinforcement | 27d | 2025-08-09 | 2025-09-04 | 1979 |  | Sector 43 | 9719026 |
| 2003 | 37300.37600.38600.40000.44300.46100.210100.1220100 | Wall/slab conduiting | 22d | 2025-08-16 | 2025-09-06 | 2002FS-20d |  | Sector 43 | 9719036 |
| 2004 | 37300.37600.38600.40000.44300.46100.210100.1220200 | Shuttering | 22d | 2025-08-16 | 2025-09-06 | 2002FS-20d |  | Sector 43 | 9719046 |
| 2005 | 37300.37600.38600.40000.44300.46100.210100.1220300 | Concreting | 2d | 2025-09-07 | 2025-09-08 | 2002, 2003, 2004 |  | Sector 43 | 9719056 |
| 2006 | 37300.37600.38600.40000.44300.46100.209500 | **2nd floor** | 19d | 2025-09-09 | 2025-09-27 |  | start no earlier than 2025-09-09 | Sector 43 | 9699626 |
| 2007 | 37300.37600.38600.40000.44300.46100.209500.1220400 | Reinforcement | 15d | 2025-09-09 | 2025-09-23 | 2005 |  | Sector 43 | 9719066 |
| 2008 | 37300.37600.38600.40000.44300.46100.209500.1220500 | Wall/slab conduiting | 16d | 2025-09-10 | 2025-09-25 | 2007FS-14d |  | Sector 43 | 9719076 |
| 2009 | 37300.37600.38600.40000.44300.46100.209500.1220600 | Shuttering | 15d | 2025-09-10 | 2025-09-24 | 2007FS-14d |  | Sector 43 | 9719086 |
| 2010 | 37300.37600.38600.40000.44300.46100.209500.1220700 | Concreting | 2d | 2025-09-26 | 2025-09-27 | 2007, 2008, 2009 |  | Sector 43 | 9719096 |
| 2011 | 37300.37600.38600.40000.44300.46100.209300 | **3rd floor** | 21d | 2025-09-28 | 2025-10-18 |  | start no earlier than 2025-09-28 | Sector 43 | 9699576 |
| 2012 | 37300.37600.38600.40000.44300.46100.209300.1220800 | Reinforcement | 19d | 2025-09-28 | 2025-10-16 | 2010 |  | Sector 43 | 9719106 |
| 2013 | 37300.37600.38600.40000.44300.46100.209300.1220900 | Wall/slab conduiting | 19d | 2025-09-28 | 2025-10-16 | 2012FS-19d |  | Sector 43 | 9719116 |
| 2014 | 37300.37600.38600.40000.44300.46100.209300.1221000 | Shuttering | 19d | 2025-09-28 | 2025-10-16 | 2012FS-19d |  | Sector 43 | 9719126 |
| 2015 | 37300.37600.38600.40000.44300.46100.209300.1221100 | Concreting | 2d | 2025-10-17 | 2025-10-18 | 2012, 2013, 2014 |  | Sector 43 | 9719136 |

| ID | WBS | Task | Duration | Start | Finish | Predecessors | Constraint | Calendar | Unique_Task_ID |
| --- | --- | --- | --- | --- | --- | --- | --- | --- | --- |
| 2016 | 37300.37600.38600.40000.44300.46100.209200 | **4th floor** | 15d | 2025-10-19 | 2025-12-17 |  | start no earlier than 2025-10-19 | Sector 43 | 9699536 |
| 2017 | 37300.37600.38600.40000.44300.46100.209200.1221200 | Reinforcement | 13d | 2025-10-19 | 2025-10-31 | 2015 |  | Sector 43 | 9719146 |
| 2018 | 37300.37600.38600.40000.44300.46100.209200.1221300 | Wall/slab conduiting | 12d | 2025-10-20 | 2025-10-31 | 2017FS-12d |  | Sector 43 | 9719156 |
| 2019 | 37300.37600.38600.40000.44300.46100.209200.1221400 | Shuttering | 12d | 2025-10-20 | 2025-10-31 | 2017FS-12d |  | Sector 43 | 9719166 |
| 2020 | 37300.37600.38600.40000.44300.46100.209200.1221500 | Concreting | 2d | 2025-12-16 | 2025-12-17 | 2017, 2018, 2019 |  | Sector 43 | 9719176 |
| 2021 | 37300.37600.38600.40000.44300.46100.209100 | **5th floor** | 9d | 2025-12-18 | 2025-12-26 |  | start no earlier than 2025-12-18 | Sector 43 | 9699486 |
| 2022 | 37300.37600.38600.40000.44300.46100.209100.1221600 | Reinforcement | 5d | 2025-12-18 | 2025-12-22 | 2020 |  | Sector 43 | 9719186 |
| 2023 | 37300.37600.38600.40000.44300.46100.209100.1221700 | Wall/slab conduiting | 7d | 2025-12-18 | 2025-12-24 | 2022FS-5d |  | Sector 43 | 9719196 |
| 2024 | 37300.37600.38600.40000.44300.46100.209100.1221800 | Shuttering | 7d | 2025-12-18 | 2025-12-24 | 2022FS-5d |  | Sector 43 | 9719206 |
| 2025 | 37300.37600.38600.40000.44300.46100.209100.1221900 | Concreting | 2d | 2025-12-25 | 2025-12-26 | 2022, 2023, 2024 |  | Sector 43 | 9719216 |
| 2026 | 37300.37600.38600.40000.44300.46100.209000 | **6th floor** | 9d | 2025-12-27 | 2026-01-04 |  | start no earlier than 2025-12-27 | Sector 43 | 9699476 |
| 2027 | 37300.37600.38600.40000.44300.46100.209000.1222000 | Reinforcement | 5d | 2025-12-27 | 2025-12-31 | 2025 |  | Sector 43 | 9719226 |
| 2028 | 37300.37600.38600.40000.44300.46100.209000.1222100 | Wall/slab conduiting | 7d | 2025-12-27 | 2026-01-02 | 2027FS-5d |  | Sector 43 | 9719236 |
| 2029 | 37300.37600.38600.40000.44300.46100.209000.1222200 | Shuttering | 7d | 2025-12-27 | 2026-01-02 | 2027FS-5d |  | Sector 43 | 9719246 |
| 2030 | 37300.37600.38600.40000.44300.46100.209000.1222300 | Concreting | 2d | 2026-01-03 | 2026-01-04 | 2027, 2028, 2029 |  | Sector 43 | 9719256 |
| 2031 | 37300.37600.38600.40000.44300.46100.208900 | **7th floor** | 9d | 2026-01-05 | 2026-01-13 |  | start no earlier than 2026-01-05 | Sector 43 | 9699336 |
| 2032 | 37300.37600.38600.40000.44300.46100.208900.1222400 | Reinforcement | 5d | 2026-01-05 | 2026-01-09 | 2030 |  | Sector 43 | 9719266 |
| 2033 | 37300.37600.38600.40000.44300.46100.208900.1222500 | Wall/slab conduiting | 7d | 2026-01-05 | 2026-01-11 | 2032FS-5d |  | Sector 43 | 9719276 |
| 2034 | 37300.37600.38600.40000.44300.46100.208900.1222600 | Shuttering | 7d | 2026-01-05 | 2026-01-11 | 2032FS-5d |  | Sector 43 | 9719286 |
| 2035 | 37300.37600.38600.40000.44300.46100.208900.1222700 | Concreting | 2d | 2026-01-12 | 2026-01-13 | 2032, 2033, 2034 |  | Sector 43 | 9719296 |
| 2036 | 37300.37600.38600.40000.44300.46100.208600 | **8th floor** | 9d | 2026-01-14 | 2026-01-22 |  | start no earlier than 2026-01-14 | Sector 43 | 9699326 |
| 2037 | 37300.37600.38600.40000.44300.46100.208600.1222800 | Reinforcement | 5d | 2026-01-14 | 2026-01-18 | 2035 |  | Sector 43 | 9719306 |
| 2038 | 37300.37600.38600.40000.44300.46100.208600.1222900 | Wall/slab conduiting | 7d | 2026-01-14 | 2026-01-20 | 2037FS-5d |  | Sector 43 | 9719316 |
| 2039 | 37300.37600.38600.40000.44300.46100.208600.1223000 | Shuttering | 7d | 2026-01-14 | 2026-01-20 | 2037FS-5d |  | Sector 43 | 9719326 |
| 2040 | 37300.37600.38600.40000.44300.46100.208600.1223100 | Concreting | 2d | 2026-01-21 | 2026-01-22 | 2037, 2038, 2039 |  | Sector 43 | 9719336 |

| ID | WBS | Task | Duration | Start | Finish | Predecessors | Constraint | Calendar | Unique_Task_ID |
| --- | --- | --- | --- | --- | --- | --- | --- | --- | --- |
| 2041 | 37300.37600.38600.40000.44300.46100.208300 | **9th floor** | 9d | 2026-01-23 | 2026-01-31 |  | start no earlier than 2026-01-23 | Sector 43 | 9699276 |
| 2042 | 37300.37600.38600.40000.44300.46100.208300.1223200 | Reinforcement | 5d | 2026-01-23 | 2026-01-27 | 2040 |  | Sector 43 | 9719346 |
| 2043 | 37300.37600.38600.40000.44300.46100.208300.1223300 | Wall/slab conduiting | 7d | 2026-01-23 | 2026-01-29 | 2042FS-5d |  | Sector 43 | 9719356 |
| 2044 | 37300.37600.38600.40000.44300.46100.208300.1223400 | Shuttering | 7d | 2026-01-23 | 2026-01-29 | 2042FS-5d |  | Sector 43 | 9719366 |
| 2045 | 37300.37600.38600.40000.44300.46100.208300.1223500 | Concreting | 2d | 2026-01-30 | 2026-01-31 | 2042, 2043, 2044 |  | Sector 43 | 9719376 |
| 2046 | 37300.37600.38600.40000.44300.46100.208200 | **10th floor** | 9d | 2026-02-01 | 2026-02-09 |  | start no earlier than 2026-02-01 | Sector 43 | 9699226 |
| 2047 | 37300.37600.38600.40000.44300.46100.208200.1223600 | Reinforcement | 5d | 2026-02-01 | 2026-02-05 | 2045 |  | Sector 43 | 9719386 |
| 2048 | 37300.37600.38600.40000.44300.46100.208200.1223700 | Wall/slab conduiting | 7d | 2026-02-01 | 2026-02-07 | 2047FS-5d |  | Sector 43 | 9719396 |
| 2049 | 37300.37600.38600.40000.44300.46100.208200.1223800 | Shuttering | 7d | 2026-02-01 | 2026-02-07 | 2047FS-5d |  | Sector 43 | 9719406 |
| 2050 | 37300.37600.38600.40000.44300.46100.208200.1223900 | Concreting | 2d | 2026-02-08 | 2026-02-09 | 2047, 2048, 2049 |  | Sector 43 | 9719416 |
| 2051 | 37300.37600.38600.40000.44300.46100.207800 | **11th floor** | 9d | 2026-02-10 | 2026-02-18 |  | start no earlier than 2026-02-10 | Sector 43 | 9699216 |
| 2052 | 37300.37600.38600.40000.44300.46100.207800.1224000 | Reinforcement | 5d | 2026-02-10 | 2026-02-14 | 2050 |  | Sector 43 | 9719426 |
| 2053 | 37300.37600.38600.40000.44300.46100.207800.1224100 | Wall/slab conduiting | 7d | 2026-02-10 | 2026-02-16 | 2052FS-5d |  | Sector 43 | 9719436 |
| 2054 | 37300.37600.38600.40000.44300.46100.207800.1224200 | Shuttering | 7d | 2026-02-10 | 2026-02-16 | 2052FS-5d |  | Sector 43 | 9719446 |
| 2055 | 37300.37600.38600.40000.44300.46100.207800.1224300 | Concreting | 2d | 2026-02-17 | 2026-02-18 | 2052, 2053, 2054 |  | Sector 43 | 9719456 |
| 2056 | 37300.37600.38600.40000.44300.46100.207700 | **12th floor** | 9d | 2026-02-19 | 2026-02-27 |  | start no earlier than 2026-02-19 | Sector 43 | 9699176 |
| 2057 | 37300.37600.38600.40000.44300.46100.207700.1224400 | Reinforcement | 5d | 2026-02-19 | 2026-02-23 | 2055 |  | Sector 43 | 9719466 |
| 2058 | 37300.37600.38600.40000.44300.46100.207700.1224500 | Wall/slab conduiting | 7d | 2026-02-19 | 2026-02-25 | 2057FS-5d |  | Sector 43 | 9719476 |
| 2059 | 37300.37600.38600.40000.44300.46100.207700.1224600 | Shuttering | 7d | 2026-02-19 | 2026-02-25 | 2057FS-5d |  | Sector 43 | 9719486 |
| 2060 | 37300.37600.38600.40000.44300.46100.207700.1224700 | Concreting | 2d | 2026-02-26 | 2026-02-27 | 2057, 2058, 2059 |  | Sector 43 | 9719496 |
| 2061 | 37300.37600.38600.40000.44300.46100.207600 | **13th floor** | 9d | 2026-02-28 | 2026-03-08 |  | start no earlier than 2026-02-28 | Sector 43 | 9699206 |
| 2062 | 37300.37600.38600.40000.44300.46100.207600.1224800 | Reinforcement | 5d | 2026-02-28 | 2026-03-04 | 2060 |  | Sector 43 | 9719506 |
| 2063 | 37300.37600.38600.40000.44300.46100.207600.1224900 | Wall/slab conduiting | 7d | 2026-02-28 | 2026-03-06 | 2062FS-5d |  | Sector 43 | 9719516 |
| 2064 | 37300.37600.38600.40000.44300.46100.207600.1225000 | Shuttering | 7d | 2026-02-28 | 2026-03-06 | 2062FS-5d |  | Sector 43 | 9719526 |
| 2065 | 37300.37600.38600.40000.44300.46100.207600.1225100 | Concreting | 2d | 2026-03-07 | 2026-03-08 | 2062, 2063, 2064 |  | Sector 43 | 9719536 |

| ID | WBS | Task | Duration | Start | Finish | Predecessors | Constraint | Calendar | Unique_Task_ID |
| --- | --- | --- | --- | --- | --- | --- | --- | --- | --- |
| 2066 | 37300.37600.38600.40000.44300.46100.207500 | **14th floor** | 9d | 2026-03-09 | 2026-03-17 |  | start no earlier than 2026-03-09 | Sector 43 | 9699236 |
| 2067 | 37300.37600.38600.40000.44300.46100.207500.1225200 | Reinforcement | 5d | 2026-03-09 | 2026-03-13 | 2065 |  | Sector 43 | 9719546 |
| 2068 | 37300.37600.38600.40000.44300.46100.207500.1225300 | Wall/slab conduiting | 7d | 2026-03-09 | 2026-03-15 | 2067FS-5d |  | Sector 43 | 9719556 |
| 2069 | 37300.37600.38600.40000.44300.46100.207500.1225400 | Shuttering | 7d | 2026-03-09 | 2026-03-15 | 2067FS-5d |  | Sector 43 | 9719566 |
| 2070 | 37300.37600.38600.40000.44300.46100.207500.1225500 | Concreting | 2d | 2026-03-16 | 2026-03-17 | 2067, 2068, 2069 |  | Sector 43 | 9719576 |
| 2071 | 37300.37600.38600.40000.44300.46100.206900 | **15th floor** | 9d | 2026-03-18 | 2026-03-26 |  | start no earlier than 2026-03-18 | Sector 43 | 9699246 |
| 2072 | 37300.37600.38600.40000.44300.46100.206900.1225600 | Reinforcement | 5d | 2026-03-18 | 2026-03-22 | 2070 |  | Sector 43 | 9719586 |
| 2073 | 37300.37600.38600.40000.44300.46100.206900.1225700 | Wall/slab conduiting | 7d | 2026-03-18 | 2026-03-24 | 2072FS-5d |  | Sector 43 | 9719596 |
| 2074 | 37300.37600.38600.40000.44300.46100.206900.1225800 | Shuttering | 7d | 2026-03-18 | 2026-03-24 | 2072FS-5d |  | Sector 43 | 9719606 |
| 2075 | 37300.37600.38600.40000.44300.46100.206900.1225900 | Concreting | 2d | 2026-03-25 | 2026-03-26 | 2072, 2073, 2074 |  | Sector 43 | 9719616 |
| 2076 | 37300.37600.38600.40000.44300.46100.206800 | **16th floor** | 9d | 2026-03-27 | 2026-04-04 |  | start no earlier than 2026-03-27 | Sector 43 | 9699256 |
| 2077 | 37300.37600.38600.40000.44300.46100.206800.1226000 | Reinforcement | 5d | 2026-03-27 | 2026-03-31 | 2075 |  | Sector 43 | 9719626 |
| 2078 | 37300.37600.38600.40000.44300.46100.206800.1226100 | Wall/slab conduiting | 7d | 2026-03-27 | 2026-04-02 | 2077FS-5d |  | Sector 43 | 9719636 |
| 2079 | 37300.37600.38600.40000.44300.46100.206800.1226200 | Shuttering | 7d | 2026-03-27 | 2026-04-02 | 2077FS-5d |  | Sector 43 | 9719646 |
| 2080 | 37300.37600.38600.40000.44300.46100.206800.1226300 | Concreting | 2d | 2026-04-03 | 2026-04-04 | 2077, 2078, 2079 |  | Sector 43 | 9719656 |
| 2081 | 37300.37600.38600.40000.44300.46100.206700 | **17th floor - Refuge Floor** | 12d | 2026-04-05 | 2026-04-16 |  | start no earlier than 2026-04-05 | Sector 43 | 9699266 |
| 2082 | 37300.37600.38600.40000.44300.46100.206700.1226400 | Reinforcement | 10d | 2026-04-05 | 2026-04-14 | 2080 |  | Sector 43 | 9719666 |
| 2083 | 37300.37600.38600.40000.44300.46100.206700.1226500 | Wall/slab conduiting | 9d | 2026-04-06 | 2026-04-14 | 2082FS-9d |  | Sector 43 | 9719676 |
| 2084 | 37300.37600.38600.40000.44300.46100.206700.1226600 | Shuttering | 9d | 2026-04-06 | 2026-04-14 | 2082FS-9d |  | Sector 43 | 9719686 |
| 2085 | 37300.37600.38600.40000.44300.46100.206700.1226700 | Concreting | 2d | 2026-04-15 | 2026-04-16 | 2082, 2083, 2084 |  | Sector 43 | 9719696 |
| 2086 | 37300.37600.38600.40000.44300.46100.206600 | **18th floor** | 9d | 2026-04-17 | 2026-04-25 |  | start no earlier than 2026-04-17 | Sector 43 | 9699296 |
| 2087 | 37300.37600.38600.40000.44300.46100.206600.1226800 | Reinforcement | 5d | 2026-04-17 | 2026-04-21 | 2085 |  | Sector 43 | 9719706 |
| 2088 | 37300.37600.38600.40000.44300.46100.206600.1226900 | Wall/slab conduiting | 7d | 2026-04-17 | 2026-04-23 | 2087FS-5d |  | Sector 43 | 9719716 |
| 2089 | 37300.37600.38600.40000.44300.46100.206600.1227000 | Shuttering | 7d | 2026-04-17 | 2026-04-23 | 2087FS-5d |  | Sector 43 | 9719726 |
| 2090 | 37300.37600.38600.40000.44300.46100.206600.1227100 | Concreting | 2d | 2026-04-24 | 2026-04-25 | 2087, 2088, 2089 |  | Sector 43 | 9719736 |

| ID | WBS | Task | Duration | Start | Finish | Predecessors | Constraint | Calendar | Unique_Task_ID |
| --- | --- | --- | --- | --- | --- | --- | --- | --- | --- |
| 2091 | 37300.37600.38600.40000.44300.46100.206500 | **19th floor** | 9d | 2026-04-25 | 2026-05-03 |  | start no earlier than 2026-04-25 | Sector 43 | 9699316 |
| 2092 | 37300.37600.38600.40000.44300.46100.206500.1227200 | Reinforcement | 5d | 2026-04-26 | 2026-04-30 | 2090 |  | Sector 43 | 9719746 |
| 2093 | 37300.37600.38600.40000.44300.46100.206500.1227300 | Wall/slab conduiting | 7d | 2026-04-25 | 2026-05-01 | 2092FS-6d |  | Sector 43 | 9719756 |
| 2094 | 37300.37600.38600.40000.44300.46100.206500.1227400 | Shuttering | 7d | 2026-04-25 | 2026-05-01 | 2092FS-6d |  | Sector 43 | 9719766 |
| 2095 | 37300.37600.38600.40000.44300.46100.206500.1227500 | Concreting | 2d | 2026-05-02 | 2026-05-03 | 2092, 2093, 2094 |  | Sector 43 | 9719776 |
| 2096 | 37300.37600.38600.40000.44300.46100.206400 | **20th floor** | 9d | 2026-05-03 | 2026-05-11 |  | start no earlier than 2026-05-03 | Sector 43 | 9699346 |
| 2097 | 37300.37600.38600.40000.44300.46100.206400.1227600 | Reinforcement | 5d | 2026-05-04 | 2026-05-08 | 2095 |  | Sector 43 | 9719786 |
| 2098 | 37300.37600.38600.40000.44300.46100.206400.1227700 | Wall/slab conduiting | 7d | 2026-05-03 | 2026-05-09 | 2097FS-6d |  | Sector 43 | 9719796 |
| 2099 | 37300.37600.38600.40000.44300.46100.206400.1227800 | Shuttering | 7d | 2026-05-03 | 2026-05-09 | 2097FS-6d |  | Sector 43 | 9719806 |
| 2100 | 37300.37600.38600.40000.44300.46100.206400.1227900 | Concreting | 2d | 2026-05-10 | 2026-05-11 | 2097, 2098, 2099 |  | Sector 43 | 9719816 |
| 2101 | 37300.37600.38600.40000.44300.46100.206300 | **21st floor** | 9d | 2026-05-11 | 2026-05-19 |  | start no earlier than 2026-05-11 | Sector 43 | 9699356 |
| 2102 | 37300.37600.38600.40000.44300.46100.206300.1228000 | Reinforcement | 5d | 2026-05-12 | 2026-05-16 | 2100 |  | Sector 43 | 9719826 |
| 2103 | 37300.37600.38600.40000.44300.46100.206300.1228100 | Wall/slab conduiting | 7d | 2026-05-11 | 2026-05-17 | 2102FS-6d |  | Sector 43 | 9719836 |
| 2104 | 37300.37600.38600.40000.44300.46100.206300.1228200 | Shuttering | 7d | 2026-05-11 | 2026-05-17 | 2102FS-6d |  | Sector 43 | 9719846 |
| 2105 | 37300.37600.38600.40000.44300.46100.206300.1228300 | Concreting | 2d | 2026-05-18 | 2026-05-19 | 2102, 2103, 2104 |  | Sector 43 | 9719856 |
| 2106 | 37300.37600.38600.40000.44300.46100.206200 | **22nd floor** | 9d | 2026-05-19 | 2026-05-27 |  | start no earlier than 2026-05-19 | Sector 43 | 9699376 |
| 2107 | 37300.37600.38600.40000.44300.46100.206200.1228400 | Reinforcement | 5d | 2026-05-20 | 2026-05-24 | 2105 |  | Sector 43 | 9719866 |
| 2108 | 37300.37600.38600.40000.44300.46100.206200.1228500 | Wall/slab conduiting | 7d | 2026-05-19 | 2026-05-25 | 2107FS-6d |  | Sector 43 | 9719876 |
| 2109 | 37300.37600.38600.40000.44300.46100.206200.1228600 | Shuttering | 7d | 2026-05-19 | 2026-05-25 | 2107FS-6d |  | Sector 43 | 9719886 |
| 2110 | 37300.37600.38600.40000.44300.46100.206200.1228700 | Concreting | 2d | 2026-05-26 | 2026-05-27 | 2107, 2108, 2109 |  | Sector 43 | 9719896 |
| 2111 | 37300.37600.38600.40000.44300.46100.206000 | **23rd floor** | 9d | 2026-05-27 | 2026-06-04 |  | start no earlier than 2026-05-27 | Sector 43 | 9699386 |
| 2112 | 37300.37600.38600.40000.44300.46100.206000.1228800 | Reinforcement | 5d | 2026-05-28 | 2026-06-01 | 2110 |  | Sector 43 | 9719906 |
| 2113 | 37300.37600.38600.40000.44300.46100.206000.1228900 | Wall/slab conduiting | 7d | 2026-05-27 | 2026-06-02 | 2112FS-6d |  | Sector 43 | 9719916 |
| 2114 | 37300.37600.38600.40000.44300.46100.206000.1229000 | Shuttering | 7d | 2026-05-27 | 2026-06-02 | 2112FS-6d |  | Sector 43 | 9719926 |
| 2115 | 37300.37600.38600.40000.44300.46100.206000.1229100 | Concreting | 2d | 2026-06-03 | 2026-06-04 | 2112, 2113, 2114 |  | Sector 43 | 9719936 |

| ID | WBS | Task | Duration | Start | Finish | Predecessors | Constraint | Calendar | Unique_Task_ID |
| --- | --- | --- | --- | --- | --- | --- | --- | --- | --- |
| 2116 | 37300.37600.38600.40000.44300.46100.205900 | **24th floor** | 9d | 2026-06-04 | 2026-06-12 |  | start no earlier than 2026-06-04 | Sector 43 | 9699406 |
| 2117 | 37300.37600.38600.40000.44300.46100.205900.1229200 | Reinforcement | 5d | 2026-06-05 | 2026-06-09 | 2115 |  | Sector 43 | 9719946 |
| 2118 | 37300.37600.38600.40000.44300.46100.205900.1229300 | Wall/slab conduiting | 7d | 2026-06-04 | 2026-06-10 | 2117FS-6d |  | Sector 43 | 9719956 |
| 2119 | 37300.37600.38600.40000.44300.46100.205900.1229400 | Shuttering | 7d | 2026-06-04 | 2026-06-10 | 2117FS-6d |  | Sector 43 | 9719966 |
| 2120 | 37300.37600.38600.40000.44300.46100.205900.1229500 | Concreting | 2d | 2026-06-11 | 2026-06-12 | 2117, 2118, 2119 |  | Sector 43 | 9719976 |
| 2121 | 37300.37600.38600.40000.44300.46100.205700 | **25th floor - Refuge Floor** | 12d | 2026-06-13 | 2026-06-24 |  | start no earlier than 2026-06-13 | Sector 43 | 9699416 |
| 2122 | 37300.37600.38600.40000.44300.46100.205700.1229600 | Reinforcement | 10d | 2026-06-13 | 2026-06-22 | 2120 |  | Sector 43 | 9719986 |
| 2123 | 37300.37600.38600.40000.44300.46100.205700.1229700 | Wall/slab conduiting | 7d | 2026-06-14 | 2026-06-20 | 2122FS-9d |  | Sector 43 | 9719996 |
| 2124 | 37300.37600.38600.40000.44300.46100.205700.1229800 | Shuttering | 7d | 2026-06-14 | 2026-06-20 | 2122FS-9d |  | Sector 43 | 9720006 |
| 2125 | 37300.37600.38600.40000.44300.46100.205700.1229900 | Concreting | 2d | 2026-06-23 | 2026-06-24 | 2122, 2123, 2124 |  | Sector 43 | 9720016 |
| 2126 | 37300.37600.38600.40000.44300.46100.205600 | **26th floor** | 9d | 2026-06-24 | 2026-07-02 |  | start no earlier than 2026-06-24 | Sector 43 | 9699446 |
| 2127 | 37300.37600.38600.40000.44300.46100.205600.1230000 | Reinforcement | 5d | 2026-06-25 | 2026-06-29 | 2125 |  | Sector 43 | 9720026 |
| 2128 | 37300.37600.38600.40000.44300.46100.205600.1230100 | Wall/slab conduiting | 7d | 2026-06-24 | 2026-06-30 | 2127FS-6d |  | Sector 43 | 9720036 |
| 2129 | 37300.37600.38600.40000.44300.46100.205600.1230200 | Shuttering | 7d | 2026-06-24 | 2026-06-30 | 2127FS-6d |  | Sector 43 | 9720046 |
| 2130 | 37300.37600.38600.40000.44300.46100.205600.1230300 | Concreting | 2d | 2026-07-01 | 2026-07-02 | 2127, 2128, 2129 |  | Sector 43 | 9720056 |
| 2131 | 37300.37600.38600.40000.44300.46100.205500 | **27th floor** | 9d | 2026-07-02 | 2026-07-10 |  | start no earlier than 2026-07-02 | Sector 43 | 9699466 |
| 2132 | 37300.37600.38600.40000.44300.46100.205500.1230400 | Reinforcement | 5d | 2026-07-03 | 2026-07-07 | 2130 |  | Sector 43 | 9720066 |
| 2133 | 37300.37600.38600.40000.44300.46100.205500.1230500 | Wall/slab conduiting | 7d | 2026-07-02 | 2026-07-08 | 2132FS-6d |  | Sector 43 | 9720076 |
| 2134 | 37300.37600.38600.40000.44300.46100.205500.1230600 | Shuttering | 7d | 2026-07-02 | 2026-07-08 | 2132FS-6d |  | Sector 43 | 9720086 |
| 2135 | 37300.37600.38600.40000.44300.46100.205500.1230700 | Concreting | 2d | 2026-07-09 | 2026-07-10 | 2132, 2133, 2134 |  | Sector 43 | 9720096 |
| 2136 | 37300.37600.38600.40000.44300.46100.205400 | **28th floor** | 9d | 2026-07-10 | 2026-07-18 |  | start no earlier than 2026-07-10 | Sector 43 | 9699496 |
| 2137 | 37300.37600.38600.40000.44300.46100.205400.1230800 | Reinforcement | 5d | 2026-07-11 | 2026-07-15 | 2135 |  | Sector 43 | 9720106 |
| 2138 | 37300.37600.38600.40000.44300.46100.205400.1230900 | Wall/slab conduiting | 7d | 2026-07-10 | 2026-07-16 | 2137FS-6d |  | Sector 43 | 9720116 |
| 2139 | 37300.37600.38600.40000.44300.46100.205400.1231000 | Shuttering | 7d | 2026-07-10 | 2026-07-16 | 2137FS-6d |  | Sector 43 | 9720126 |
| 2140 | 37300.37600.38600.40000.44300.46100.205400.1231100 | Concreting | 2d | 2026-07-17 | 2026-07-18 | 2137, 2138, 2139 |  | Sector 43 | 9720136 |

| ID | WBS | Task | Duration | Start | Finish | Predecessors | Constraint | Calendar | Unique_Task_ID |
| --- | --- | --- | --- | --- | --- | --- | --- | --- | --- |
| 2141 | 37300.37600.38600.40000.44300.46100.205200 | **29th floor** | 9d | 2026-07-18 | 2026-07-26 |  | start no earlier than 2026-07-18 | Sector 43 | 9699506 |
| 2142 | 37300.37600.38600.40000.44300.46100.205200.1231200 | Reinforcement | 5d | 2026-07-19 | 2026-07-23 | 2140 |  | Sector 43 | 9720146 |
| 2143 | 37300.37600.38600.40000.44300.46100.205200.1231300 | Wall/slab conduiting | 7d | 2026-07-18 | 2026-07-24 | 2142FS-6d |  | Sector 43 | 9720156 |
| 2144 | 37300.37600.38600.40000.44300.46100.205200.1231400 | Shuttering | 7d | 2026-07-18 | 2026-07-24 | 2142FS-6d |  | Sector 43 | 9720166 |
| 2145 | 37300.37600.38600.40000.44300.46100.205200.1231500 | Concreting | 2d | 2026-07-25 | 2026-07-26 | 2142, 2143, 2144 |  | Sector 43 | 9720176 |
| 2146 | 37300.37600.38600.40000.44300.46100.205100 | **30th floor** | 9d | 2026-07-26 | 2026-08-03 |  | start no earlier than 2026-07-26 | Sector 43 | 9699516 |
| 2147 | 37300.37600.38600.40000.44300.46100.205100.1231600 | Reinforcement | 5d | 2026-07-27 | 2026-07-31 | 2145 |  | Sector 43 | 9720186 |
| 2148 | 37300.37600.38600.40000.44300.46100.205100.1231700 | Wall/slab conduiting | 7d | 2026-07-26 | 2026-08-01 | 2147FS-6d |  | Sector 43 | 9720196 |
| 2149 | 37300.37600.38600.40000.44300.46100.205100.1231800 | Shuttering | 7d | 2026-07-26 | 2026-08-01 | 2147FS-6d |  | Sector 43 | 9720206 |
| 2150 | 37300.37600.38600.40000.44300.46100.205100.1231900 | Concreting | 2d | 2026-08-02 | 2026-08-03 | 2147, 2148, 2149 |  | Sector 43 | 9720216 |
| 2151 | 37300.37600.38600.40000.44300.46100.205000 | **31st floor** | 10d | 2026-08-04 | 2026-08-13 |  | start no earlier than 2026-08-04 | Sector 43 | 9699526 |
| 2152 | 37300.37600.38600.40000.44300.46100.205000.1232000 | Reinforcement | 7d | 2026-08-04 | 2026-08-10 | 2150 |  | Sector 43 | 9720226 |
| 2153 | 37300.37600.38600.40000.44300.46100.205000.1232100 | Wall/slab conduiting | 7d | 2026-08-05 | 2026-08-11 | 2152FS-6d |  | Sector 43 | 9720236 |
| 2154 | 37300.37600.38600.40000.44300.46100.205000.1232200 | Shuttering | 7d | 2026-08-05 | 2026-08-11 | 2152FS-6d |  | Sector 43 | 9720246 |
| 2155 | 37300.37600.38600.40000.44300.46100.205000.1232300 | Concreting | 2d | 2026-08-12 | 2026-08-13 | 2152, 2153, 2154 |  | Sector 43 | 9720256 |
| 2156 | 37300.37600.38600.40000.44300.46100.204900 | **32nd floor** | 10d | 2026-08-14 | 2026-08-23 |  | start no earlier than 2026-08-14 | Sector 43 | 9699546 |
| 2157 | 37300.37600.38600.40000.44300.46100.204900.1232400 | Reinforcement | 6d | 2026-08-14 | 2026-08-19 | 2155 |  | Sector 43 | 9720266 |
| 2158 | 37300.37600.38600.40000.44300.46100.204900.1232500 | Wall/slab conduiting | 7d | 2026-08-14 | 2026-08-20 | 2157FS-6d |  | Sector 43 | 9720276 |
| 2159 | 37300.37600.38600.40000.44300.46100.204900.1232600 | Shuttering | 7d | 2026-08-15 | 2026-08-21 | 2158FS-6d |  | Sector 43 | 9720286 |
| 2160 | 37300.37600.38600.40000.44300.46100.204900.1232700 | Concreting | 2d | 2026-08-22 | 2026-08-23 | 2157, 2158, 2159 |  | Sector 43 | 9720296 |
| 2161 | 37300.37600.38600.40000.44300.46100.204800 | **Terrace floor** | 25d | 2026-08-24 | 2026-09-17 |  | start no earlier than 2026-08-24 | Sector 43 | 9699556 |
| 2162 | 37300.37600.38600.40000.44300.46100.204800.1232800 | Reinforcement | 23d | 2026-08-24 | 2026-09-15 | 2160 |  | Sector 43 | 9720306 |
| 2163 | 37300.37600.38600.40000.44300.46100.204800.1232900 | Wall/slab conduiting | 20d | 2026-08-26 | 2026-09-14 | 2162FS-21d |  | Sector 43 | 9720316 |
| 2164 | 37300.37600.38600.40000.44300.46100.204800.1233000 | Shuttering | 20d | 2026-08-26 | 2026-09-14 | 2162FS-21d |  | Sector 43 | 9720326 |
| 2165 | 37300.37600.38600.40000.44300.46100.204800.1233100 | Concreting | 2d | 2026-09-16 | 2026-09-17 | 2162, 2163, 2164 |  | Sector 43 | 9720336 |

| ID | WBS | Task | Duration | Start | Finish | Predecessors | Constraint | Calendar | Unique_Task_ID |
| --- | --- | --- | --- | --- | --- | --- | --- | --- | --- |
| 2166 | 37300.37600.38600.40000.44300.46100.204700 | **LMR, OHT & Mumty** | 40d | 2026-09-18 | 2026-10-27 |  | start no earlier than 2026-09-18 | Sector 43 | 9699566 |
| 2167 | 37300.37600.38600.40000.44300.46100.204700.1233200 | Reinforcement | 36d | 2026-09-18 | 2026-10-23 | 2165 |  | Sector 43 | 9720346 |
| 2168 | 37300.37600.38600.40000.44300.46100.204700.1233300 | Wall conduiting | 20d | 2026-09-24 | 2026-10-13 | 2167FS-30d |  | Sector 43 | 9720356 |
| 2169 | 37300.37600.38600.40000.44300.46100.204700.1233400 | Shuttering | 20d | 2026-09-24 | 2026-10-13 | 2167FS-30d |  | Sector 43 | 9720366 |
| 2170 | 37300.37600.38600.40000.44300.46100.204700.1233500 | Concreting | 4d | 2026-10-24 | 2026-10-27 | 2167, 2168, 2169 |  | Sector 43 | 9720376 |
| 2171 | 37300.37600.38600.40000.44300.49000 | **Post pour works** | 297d | 2025-12-18 | 2026-10-10 |  | start no earlier than 2025-12-18 | Sector 43 | 9697546 |
| 2172 | 37300.37600.38600.40000.44300.49000.870800 | 1st floor | 7d | 2025-12-18 | 2025-12-24 | 2020 |  | Sector 43 | 9704266 |
| 2173 | 37300.37600.38600.40000.44300.49000.870900 | 2nd floor | 7d | 2025-12-27 | 2026-01-02 | 2172, 2025 |  | Sector 43 | 9704276 |
| 2174 | 37300.37600.38600.40000.44300.49000.871000 | 3rd floor | 7d | 2026-01-05 | 2026-01-11 | 2173, 2030 |  | Sector 43 | 9704286 |
| 2175 | 37300.37600.38600.40000.44300.49000.871100 | 4th floor | 7d | 2026-01-14 | 2026-01-20 | 2174, 2035 |  | Sector 43 | 9704296 |
| 2176 | 37300.37600.38600.40000.44300.49000.871200 | 5th floor | 7d | 2026-01-23 | 2026-01-29 | 2175, 2040 |  | Sector 43 | 9704306 |
| 2177 | 37300.37600.38600.40000.44300.49000.871300 | 6th floor | 7d | 2026-02-01 | 2026-02-07 | 2176, 2045 |  | Sector 43 | 9704316 |
| 2178 | 37300.37600.38600.40000.44300.49000.871400 | 7th floor | 7d | 2026-02-10 | 2026-02-16 | 2177, 2050 |  | Sector 43 | 9704326 |
| 2179 | 37300.37600.38600.40000.44300.49000.871500 | 8th floor | 7d | 2026-02-19 | 2026-02-25 | 2178, 2055 |  | Sector 43 | 9704336 |
| 2180 | 37300.37600.38600.40000.44300.49000.871600 | 9th floor | 7d | 2026-02-28 | 2026-03-06 | 2179, 2060 |  | Sector 43 | 9704346 |
| 2181 | 37300.37600.38600.40000.44300.49000.871700 | 10th floor | 7d | 2026-03-09 | 2026-03-15 | 2180, 2065 |  | Sector 43 | 9704356 |
| 2182 | 37300.37600.38600.40000.44300.49000.871800 | 11th floor | 7d | 2026-03-18 | 2026-03-24 | 2181, 2070 |  | Sector 43 | 9704366 |
| 2183 | 37300.37600.38600.40000.44300.49000.871900 | 12th floor | 7d | 2026-03-27 | 2026-04-02 | 2182, 2075 |  | Sector 43 | 9704376 |
| 2184 | 37300.37600.38600.40000.44300.49000.872000 | 13th floor | 7d | 2026-04-05 | 2026-04-11 | 2183, 2080 |  | Sector 43 | 9704386 |
| 2185 | 37300.37600.38600.40000.44300.49000.872100 | 14th floor | 7d | 2026-04-17 | 2026-04-23 | 2184, 2085 |  | Sector 43 | 9704396 |
| 2186 | 37300.37600.38600.40000.44300.49000.872200 | 15th floor | 7d | 2026-04-26 | 2026-05-02 | 2185, 2090 |  | Sector 43 | 9704406 |
| 2187 | 37300.37600.38600.40000.44300.49000.872300 | 16th floor | 7d | 2026-05-04 | 2026-05-10 | 2186, 2095 |  | Sector 43 | 9704416 |
| 2188 | 37300.37600.38600.40000.44300.49000.872400 | 17th floor - Refuge Floor | 7d | 2026-05-12 | 2026-05-18 | 2187, 2100 |  | Sector 43 | 9704426 |
| 2189 | 37300.37600.38600.40000.44300.49000.872500 | 18th floor | 7d | 2026-05-20 | 2026-05-26 | 2188, 2105 |  | Sector 43 | 9704436 |
| 2190 | 37300.37600.38600.40000.44300.49000.872600 | 19th floor | 7d | 2026-05-28 | 2026-06-03 | 2189, 2110 |  | Sector 43 | 9704446 |
| 2191 | 37300.37600.38600.40000.44300.49000.872700 | 20th floor | 7d | 2026-06-05 | 2026-06-11 | 2190, 2115 |  | Sector 43 | 9704456 |
| 2192 | 37300.37600.38600.40000.44300.49000.872800 | 21st floor | 7d | 2026-06-13 | 2026-06-19 | 2191, 2120 |  | Sector 43 | 9704466 |
| 2193 | 37300.37600.38600.40000.44300.49000.872900 | 22nd floor | 7d | 2026-06-25 | 2026-07-01 | 2192, 2125 |  | Sector 43 | 9704476 |
| 2194 | 37300.37600.38600.40000.44300.49000.873000 | 23rd floor | 7d | 2026-07-03 | 2026-07-09 | 2193, 2130 |  | Sector 43 | 9704486 |
| 2195 | 37300.37600.38600.40000.44300.49000.873100 | 24th floor | 7d | 2026-07-11 | 2026-07-17 | 2194, 2135 |  | Sector 43 | 9704496 |
| 2196 | 37300.37600.38600.40000.44300.49000.873200 | 25th floor - Refuge Floor | 7d | 2026-07-19 | 2026-07-25 | 2195, 2140 |  | Sector 43 | 9704506 |
| 2197 | 37300.37600.38600.40000.44300.49000.873300 | 26th floor | 7d | 2026-07-27 | 2026-08-02 | 2196, 2145 |  | Sector 43 | 9704516 |
| 2198 | 37300.37600.38600.40000.44300.49000.873400 | 27th floor | 7d | 2026-08-04 | 2026-08-10 | 2197, 2150 |  | Sector 43 | 9704526 |
| 2199 | 37300.37600.38600.40000.44300.49000.873500 | 28th floor | 7d | 2026-08-14 | 2026-08-20 | 2198, 2155 |  | Sector 43 | 9704536 |
| 2200 | 37300.37600.38600.40000.44300.49000.873600 | 29th floor | 7d | 2026-08-24 | 2026-08-30 | 2199, 2160 |  | Sector 43 | 9704546 |
| 2201 | 37300.37600.38600.40000.44300.49000.873700 | 30th floor | 7d | 2026-08-31 | 2026-09-06 | 2200 |  | Sector 43 | 9704556 |
| 2202 | 37300.37600.38600.40000.44300.49000.873800 | 31st floor | 7d | 2026-09-07 | 2026-09-13 | 2201 |  | Sector 43 | 9704566 |
| 2203 | 37300.37600.38600.40000.44300.49000.873900 | 32nd floor | 7d | 2026-09-14 | 2026-09-20 | 2202 |  | Sector 43 | 9704576 |
| 2204 | 37300.37600.38600.40000.44300.49000.874000 | Terrace floor | 10d | 2026-09-21 | 2026-09-30 | 2203 |  | Sector 43 | 9704586 |
| 2205 | 37300.37600.38600.40000.44300.49000.874100 | LMR, OHT & Mumty | 10d | 2026-10-01 | 2026-10-10 | 2204 |  | Sector 43 | 9704596 |

| ID | WBS | Task | Duration | Start | Finish | Predecessors | Constraint | Calendar | Unique_Task_ID |
| --- | --- | --- | --- | --- | --- | --- | --- | --- | --- |
| 2206 | 37300.37600.38600.40000.42500 | **Finishing works** | 575d | 2025-10-26 | 2027-08-21 |  | start no earlier than 2025-10-26 | Sector 43 | 9697426 |
| 2207 | 37300.37600.38600.40000.42500.43300 | **Flat finishings** | 500d | 2025-10-26 | 2027-06-07 |  | start no earlier than 2025-10-26 | Sector 43 | 9697456 |
| 2208 | 37300.37600.38600.40000.42500.43300.55900 | **1st floor** | 88d | 2025-10-26 | 2026-03-07 |  | start no earlier than 2025-10-26 | Sector 43 | 9698246 |
| 2209 | 37300.37600.38600.40000.42500.43300.55900.1233600 | Block Work | 10d | 2025-10-26 | 2025-12-19 | 2011FS+7d |  | Sector 43 | 9720386 |
| 2210 | 37300.37600.38600.40000.42500.43300.55900.1233700 | Installation of temporary Main door | 4d | 2025-12-20 | 2025-12-23 | 2209 |  | Sector 43 | 9720396 |
| 2211 | 37300.37600.38600.40000.42500.43300.55900.1233800 | Fire sprinkler pipe fixing | 10d | 2025-12-20 | 2025-12-29 | 2209 |  | Sector 43 | 9720406 |
| 2212 | 37300.37600.38600.40000.42500.43300.55900.1233900 | Internal Plumbing Works | 10d | 2025-12-20 | 2025-12-29 | 2209 |  | Sector 43 | 9720416 |
| 2213 | 37300.37600.38600.40000.42500.43300.55900.1234000 | Waterproofing | 21d | 2025-12-30 | 2026-01-19 | 2212 |  | Sector 43 | 9720426 |
| 2214 | 37300.37600.38600.40000.42500.43300.55900.1234100 | Internal Plaster | 10d | 2025-12-20 | 2025-12-29 | 2212FS-10d |  | Sector 43 | 9720436 |
| 2215 | 37300.37600.38600.40000.42500.43300.55900.1234200 | IPS flooring work | 13d | 2025-12-20 | 2026-01-01 | 2209 |  | Sector 43 | 9720446 |
| 2216 | 37300.37600.38600.40000.42500.43300.55900.1234300 | Toilet dado work | 12d | 2026-01-18 | 2026-01-29 | 2213FS-2d, 2214 |  | Sector 43 | 9720456 |
| 2217 | 37300.37600.38600.40000.42500.43300.55900.1234400 | Toilet flooring work | 12d | 2026-01-23 | 2026-02-03 | 2216FS-7d |  | Sector 43 | 9720466 |
| 2218 | 37300.37600.38600.40000.42500.43300.55900.1234500 | Living dinning flooring | 12d | 2026-01-15 | 2026-01-26 | 2215, 2217FS-20d |  | Sector 43 | 9720476 |
| 2219 | 37300.37600.38600.40000.42500.43300.55900.1234600 | Electrical wiring work | 12d | 2026-01-17 | 2026-01-28 | 2218FS-10d |  | Sector 43 | 9720486 |
| 2220 | 37300.37600.38600.40000.42500.43300.55900.1234700 | Aluminium door-window fixing | 19d | 2026-01-21 | 2026-02-08 | 2210, 2219FS-8d |  | Sector 43 | 9720496 |
| 2221 | 37300.37600.38600.40000.42500.43300.55900.1234800 | Putty primer coat | 10d | 2026-02-01 | 2026-02-10 | 2220FS-8d |  | Sector 43 | 9720506 |
| 2222 | 37300.37600.38600.40000.42500.43300.55900.1234900 | Prehung door fixing | 8d | 2026-02-06 | 2026-02-13 | 2221FS-5d |  | Sector 43 | 9720516 |
| 2223 | 37300.37600.38600.40000.42500.43300.55900.1235000 | Painting 1st coat | 12d | 2026-02-14 | 2026-02-25 | 2222 |  | Sector 43 | 9720526 |
| 2224 | 37300.37600.38600.40000.42500.43300.55900.1235100 | False Cieling panel fixing | 10d | 2026-02-26 | 2026-03-07 | 2223 |  | Sector 43 | 9720536 |
| 2225 | 37300.37600.38600.40000.42500.43300.55800 | **2nd floor** | 90d | 2025-12-20 | 2026-03-19 |  | start no earlier than 2025-12-20 | Sector 43 | 9698256 |
| 2226 | 37300.37600.38600.40000.42500.43300.55800.1235200 | Block Work | 10d | 2025-12-20 | 2025-12-29 | 2209 |  | Sector 43 | 9720546 |
| 2227 | 37300.37600.38600.40000.42500.43300.55800.1235300 | Installation of temporary Main door | 4d | 2025-12-30 | 2026-01-02 | 2226 |  | Sector 43 | 9720556 |
| 2228 | 37300.37600.38600.40000.42500.43300.55800.1235400 | Fire sprinkler pipe fixing | 10d | 2025-12-30 | 2026-01-08 | 2211, 2226 |  | Sector 43 | 9720566 |
| 2229 | 37300.37600.38600.40000.42500.43300.55800.1235500 | Internal Plumbing Works | 15d | 2025-12-30 | 2026-01-13 | 2226 |  | Sector 43 | 9720576 |
| 2230 | 37300.37600.38600.40000.42500.43300.55800.1235600 | Waterproofing | 21d | 2026-01-14 | 2026-02-03 | 2229 |  | Sector 43 | 9720586 |
| 2231 | 37300.37600.38600.40000.42500.43300.55800.1235700 | Internal Plaster | 12d | 2025-12-30 | 2026-01-10 | 2229FS-15d |  | Sector 43 | 9720596 |
| 2232 | 37300.37600.38600.40000.42500.43300.55800.1235800 | IPS flooring work | 13d | 2025-12-30 | 2026-01-11 | 2226 |  | Sector 43 | 9720606 |
| 2233 | 37300.37600.38600.40000.42500.43300.55800.1235900 | Toilet dado work | 12d | 2026-02-02 | 2026-02-13 | 2230FS-2d, 2231 |  | Sector 43 | 9720616 |
| 2234 | 37300.37600.38600.40000.42500.43300.55800.1236000 | Toilet flooring work | 12d | 2026-02-04 | 2026-02-15 | 2233FS-10d |  | Sector 43 | 9720626 |
| 2235 | 37300.37600.38600.40000.42500.43300.55800.1236100 | Living dinning flooring | 12d | 2026-01-27 | 2026-02-07 | 2232, 2234FS-20d |  | Sector 43 | 9720636 |
| 2236 | 37300.37600.38600.40000.42500.43300.55800.1236200 | Electrical wiring work | 12d | 2026-01-29 | 2026-02-09 | 2235FS-10d |  | Sector 43 | 9720646 |
| 2237 | 37300.37600.38600.40000.42500.43300.55800.1236300 | Aluminium door-window fixing | 19d | 2026-02-02 | 2026-02-20 | 2227, 2236FS-8d |  | Sector 43 | 9720656 |
| 2238 | 37300.37600.38600.40000.42500.43300.55800.1236400 | Putty primer coat | 10d | 2026-02-13 | 2026-02-22 | 2237FS-8d |  | Sector 43 | 9720666 |
| 2239 | 37300.37600.38600.40000.42500.43300.55800.1236500 | Prehung door fixing | 8d | 2026-02-18 | 2026-02-25 | 2238FS-5d |  | Sector 43 | 9720676 |
| 2240 | 37300.37600.38600.40000.42500.43300.55800.1236600 | Painting 1st coat | 12d | 2026-02-26 | 2026-03-09 | 2239 |  | Sector 43 | 9720686 |
| 2241 | 37300.37600.38600.40000.42500.43300.55800.1236700 | False Cieling panel fixing | 10d | 2026-03-10 | 2026-03-19 | 2224, 2240 |  | Sector 43 | 9720696 |

| ID | WBS | Task | Duration | Start | Finish | Predecessors | Constraint | Calendar | Unique_Task_ID |
| --- | --- | --- | --- | --- | --- | --- | --- | --- | --- |
| 2242 | 37300.37600.38600.40000.42500.43300.55700 | **3rd floor** | 92d | 2025-12-30 | 2026-03-31 |  | start no earlier than 2025-12-30 | Sector 43 | 9698266 |
| 2243 | 37300.37600.38600.40000.42500.43300.55700.1236800 | Block Work | 10d | 2025-12-30 | 2026-01-08 | 2226 |  | Sector 43 | 9720706 |
| 2244 | 37300.37600.38600.40000.42500.43300.55700.1236900 | Installation of temporary Main door | 4d | 2026-01-09 | 2026-01-12 | 2243 |  | Sector 43 | 9720716 |
| 2245 | 37300.37600.38600.40000.42500.43300.55700.1237000 | Fire sprinkler pipe fixing | 10d | 2026-01-09 | 2026-01-18 | 2228, 2243 |  | Sector 43 | 9720726 |
| 2246 | 37300.37600.38600.40000.42500.43300.55700.1237100 | Internal Plumbing Works | 15d | 2026-01-09 | 2026-01-23 | 2243 |  | Sector 43 | 9720736 |
| 2247 | 37300.37600.38600.40000.42500.43300.55700.1237200 | Waterproofing | 21d | 2026-01-24 | 2026-02-13 | 2246 |  | Sector 43 | 9720746 |
| 2248 | 37300.37600.38600.40000.42500.43300.55700.1237300 | Internal Plaster | 12d | 2026-01-09 | 2026-01-20 | 2246FS-15d |  | Sector 43 | 9720756 |
| 2249 | 37300.37600.38600.40000.42500.43300.55700.1237400 | IPS flooring work | 13d | 2026-01-09 | 2026-01-21 | 2243 |  | Sector 43 | 9720766 |
| 2250 | 37300.37600.38600.40000.42500.43300.55700.1237500 | Toilet dado work | 12d | 2026-02-12 | 2026-02-23 | 2247FS-2d, 2248 |  | Sector 43 | 9720776 |
| 2251 | 37300.37600.38600.40000.42500.43300.55700.1237600 | Toilet flooring work | 12d | 2026-02-16 | 2026-02-27 | 2250FS-8d |  | Sector 43 | 9720786 |
| 2252 | 37300.37600.38600.40000.42500.43300.55700.1237700 | Living dinning flooring | 12d | 2026-02-08 | 2026-02-19 | 2249, 2251FS-20d |  | Sector 43 | 9720796 |
| 2253 | 37300.37600.38600.40000.42500.43300.55700.1237800 | Electrical wiring work | 12d | 2026-02-10 | 2026-02-21 | 2252FS-10d |  | Sector 43 | 9720806 |
| 2254 | 37300.37600.38600.40000.42500.43300.55700.1237900 | Aluminium door-window fixing | 19d | 2026-02-14 | 2026-03-04 | 2244, 2253FS-8d |  | Sector 43 | 9720816 |
| 2255 | 37300.37600.38600.40000.42500.43300.55700.1238000 | Putty primer coat | 10d | 2026-02-25 | 2026-03-06 | 2254FS-8d |  | Sector 43 | 9720826 |
| 2256 | 37300.37600.38600.40000.42500.43300.55700.1238100 | Prehung door fixing | 8d | 2026-03-02 | 2026-03-09 | 2255FS-5d |  | Sector 43 | 9720836 |
| 2257 | 37300.37600.38600.40000.42500.43300.55700.1238200 | Painting 1st coat | 12d | 2026-03-10 | 2026-03-21 | 2256 |  | Sector 43 | 9720846 |
| 2258 | 37300.37600.38600.40000.42500.43300.55700.1238300 | False Cieling panel fixing | 10d | 2026-03-22 | 2026-03-31 | 2241, 2257 |  | Sector 43 | 9720856 |
| 2259 | 37300.37600.38600.40000.42500.43300.55600 | **4th floor** | 93d | 2026-01-09 | 2026-04-11 |  | start no earlier than 2026-01-09 | Sector 43 | 9698276 |
| 2260 | 37300.37600.38600.40000.42500.43300.55600.1238400 | Block Work | 10d | 2026-01-09 | 2026-01-18 | 2243 |  | Sector 43 | 9720866 |
| 2261 | 37300.37600.38600.40000.42500.43300.55600.1238500 | Installation of temporary Main door | 4d | 2026-01-19 | 2026-01-22 | 2260 |  | Sector 43 | 9720876 |
| 2262 | 37300.37600.38600.40000.42500.43300.55600.1238600 | Fire sprinkler pipe fixing | 10d | 2026-01-19 | 2026-01-28 | 2245, 2260 |  | Sector 43 | 9720886 |
| 2263 | 37300.37600.38600.40000.42500.43300.55600.1238700 | Internal Plumbing Works | 15d | 2026-01-19 | 2026-02-02 | 2260 |  | Sector 43 | 9720896 |
| 2264 | 37300.37600.38600.40000.42500.43300.55600.1238800 | Waterproofing | 21d | 2026-02-03 | 2026-02-23 | 2263 |  | Sector 43 | 9720906 |
| 2265 | 37300.37600.38600.40000.42500.43300.55600.1238900 | Internal Plaster | 10d | 2026-01-22 | 2026-01-31 | 2263FS-12d |  | Sector 43 | 9720916 |
| 2266 | 37300.37600.38600.40000.42500.43300.55600.1239000 | IPS flooring work | 13d | 2026-01-19 | 2026-01-31 | 2260 |  | Sector 43 | 9720926 |
| 2267 | 37300.37600.38600.40000.42500.43300.55600.1239100 | Toilet dado work | 12d | 2026-02-22 | 2026-03-05 | 2264FS-2d, 2265 |  | Sector 43 | 9720936 |
| 2268 | 37300.37600.38600.40000.42500.43300.55600.1239200 | Toilet flooring work | 12d | 2026-02-27 | 2026-03-10 | 2267FS-7d |  | Sector 43 | 9720946 |
| 2269 | 37300.37600.38600.40000.42500.43300.55600.1239300 | Living dinning flooring | 12d | 2026-02-19 | 2026-03-02 | 2266, 2268FS-20d |  | Sector 43 | 9720956 |
| 2270 | 37300.37600.38600.40000.42500.43300.55600.1239400 | Electrical wiring work | 12d | 2026-02-21 | 2026-03-04 | 2269FS-10d |  | Sector 43 | 9720966 |
| 2271 | 37300.37600.38600.40000.42500.43300.55600.1239500 | Aluminium door-window fixing | 19d | 2026-02-25 | 2026-03-15 | 2261, 2270FS-8d |  | Sector 43 | 9720976 |
| 2272 | 37300.37600.38600.40000.42500.43300.55600.1239600 | Putty primer coat | 10d | 2026-03-08 | 2026-03-17 | 2271FS-8d |  | Sector 43 | 9720986 |
| 2273 | 37300.37600.38600.40000.42500.43300.55600.1239700 | Prehung door fixing | 8d | 2026-03-13 | 2026-03-20 | 2272FS-5d |  | Sector 43 | 9720996 |
| 2274 | 37300.37600.38600.40000.42500.43300.55600.1239800 | Painting 1st coat | 12d | 2026-03-21 | 2026-04-01 | 2273 |  | Sector 43 | 9721006 |
| 2275 | 37300.37600.38600.40000.42500.43300.55600.1239900 | False Cieling panel fixing | 10d | 2026-04-02 | 2026-04-11 | 2258, 2274 |  | Sector 43 | 9721016 |

| ID | WBS | Task | Duration | Start | Finish | Predecessors | Constraint | Calendar | Unique_Task_ID |
| --- | --- | --- | --- | --- | --- | --- | --- | --- | --- |
| 2276 | 37300.37600.38600.40000.42500.43300.55500 | **5th floor** | 101d | 2026-01-19 | 2026-04-29 |  | start no earlier than 2026-01-19 | Sector 43 | 9698286 |
| 2277 | 37300.37600.38600.40000.42500.43300.55500.1240000 | Block Work | 10d | 2026-01-19 | 2026-01-28 | 2260 |  | Sector 43 | 9721026 |
| 2278 | 37300.37600.38600.40000.42500.43300.55500.1240100 | Installation of temporary Main door | 4d | 2026-01-29 | 2026-02-01 | 2277 |  | Sector 43 | 9721036 |
| 2279 | 37300.37600.38600.40000.42500.43300.55500.1240200 | Fire sprinkler pipe fixing | 10d | 2026-01-29 | 2026-02-07 | 2262, 2277 |  | Sector 43 | 9721046 |
| 2280 | 37300.37600.38600.40000.42500.43300.55500.1240300 | Internal Plumbing Works | 15d | 2026-01-29 | 2026-02-12 | 2277 |  | Sector 43 | 9721056 |
| 2281 | 37300.37600.38600.40000.42500.43300.55500.1240400 | Waterproofing | 21d | 2026-02-13 | 2026-03-05 | 2280 |  | Sector 43 | 9721066 |
| 2282 | 37300.37600.38600.40000.42500.43300.55500.1240500 | Internal Plaster | 10d | 2026-02-02 | 2026-02-11 | 2280FS-11d |  | Sector 43 | 9721076 |
| 2283 | 37300.37600.38600.40000.42500.43300.55500.1240600 | IPS flooring work | 13d | 2026-01-29 | 2026-02-10 | 2277 |  | Sector 43 | 9721086 |
| 2284 | 37300.37600.38600.40000.42500.43300.55500.1240700 | Toilet dado work | 12d | 2026-03-04 | 2026-03-15 | 2281FS-2d, 2282 |  | Sector 43 | 9721096 |
| 2285 | 37300.37600.38600.40000.42500.43300.55500.1240800 | Toilet flooring work | 12d | 2026-03-11 | 2026-03-22 | 2284FS-5d |  | Sector 43 | 9721106 |
| 2286 | 37300.37600.38600.40000.42500.43300.55500.1240900 | Living dinning flooring | 12d | 2026-03-03 | 2026-03-14 | 2283, 2285FS-20d |  | Sector 43 | 9721116 |
| 2287 | 37300.37600.38600.40000.42500.43300.55500.1241000 | Electrical wiring work | 12d | 2026-03-05 | 2026-03-16 | 2286FS-10d |  | Sector 43 | 9721126 |
| 2288 | 37300.37600.38600.40000.42500.43300.55500.1241100 | Aluminium door-window fixing | 25d | 2026-03-09 | 2026-04-02 | 2278, 2287FS-8d |  | Sector 43 | 9721136 |
| 2289 | 37300.37600.38600.40000.42500.43300.55500.1241200 | Putty primer coat | 10d | 2026-03-26 | 2026-04-04 | 2288FS-8d |  | Sector 43 | 9721146 |
| 2290 | 37300.37600.38600.40000.42500.43300.55500.1241300 | Prehung door fixing | 8d | 2026-03-31 | 2026-04-07 | 2289FS-5d |  | Sector 43 | 9721156 |
| 2291 | 37300.37600.38600.40000.42500.43300.55500.1241400 | Painting 1st coat | 12d | 2026-04-08 | 2026-04-19 | 2290 |  | Sector 43 | 9721166 |
| 2292 | 37300.37600.38600.40000.42500.43300.55500.1241500 | False Cieling panel fixing | 10d | 2026-04-20 | 2026-04-29 | 2275, 2291 |  | Sector 43 | 9721176 |
| 2293 | 37300.37600.38600.40000.42500.43300.55400 | **6th floor** | 101d | 2026-01-29 | 2026-05-09 |  | start no earlier than 2026-01-29 | Sector 43 | 9698296 |
| 2294 | 37300.37600.38600.40000.42500.43300.55400.1241600 | Block Work | 10d | 2026-01-29 | 2026-02-07 | 2277 |  | Sector 43 | 9721186 |
| 2295 | 37300.37600.38600.40000.42500.43300.55400.1241700 | Installation of temporary Main door | 4d | 2026-02-08 | 2026-02-11 | 2294 |  | Sector 43 | 9721196 |
| 2296 | 37300.37600.38600.40000.42500.43300.55400.1241800 | Fire sprinkler pipe fixing | 10d | 2026-02-08 | 2026-02-17 | 2279, 2294 |  | Sector 43 | 9721206 |
| 2297 | 37300.37600.38600.40000.42500.43300.55400.1241900 | Internal Plumbing Works | 15d | 2026-02-08 | 2026-02-22 | 2294 |  | Sector 43 | 9721216 |
| 2298 | 37300.37600.38600.40000.42500.43300.55400.1242000 | Waterproofing | 21d | 2026-02-23 | 2026-03-15 | 2297 |  | Sector 43 | 9721226 |
| 2299 | 37300.37600.38600.40000.42500.43300.55400.1242100 | Internal Plaster | 10d | 2026-02-13 | 2026-02-22 | 2297FS-10d |  | Sector 43 | 9721236 |
| 2300 | 37300.37600.38600.40000.42500.43300.55400.1242200 | IPS flooring work | 10d | 2026-02-08 | 2026-02-17 | 2294 |  | Sector 43 | 9721246 |
| 2301 | 37300.37600.38600.40000.42500.43300.55400.1242300 | Toilet dado work | 12d | 2026-03-14 | 2026-03-25 | 2298FS-2d, 2299 |  | Sector 43 | 9721256 |
| 2302 | 37300.37600.38600.40000.42500.43300.55400.1242400 | Toilet flooring work | 12d | 2026-03-26 | 2026-04-06 | 2301 |  | Sector 43 | 9721266 |
| 2303 | 37300.37600.38600.40000.42500.43300.55400.1242500 | Living dinning flooring | 12d | 2026-03-18 | 2026-03-29 | 2300, 2302FS-20d |  | Sector 43 | 9721276 |
| 2304 | 37300.37600.38600.40000.42500.43300.55400.1242600 | Electrical wiring work | 12d | 2026-03-20 | 2026-03-31 | 2303FS-10d |  | Sector 43 | 9721286 |
| 2305 | 37300.37600.38600.40000.42500.43300.55400.1242700 | Aluminium door-window fixing | 19d | 2026-03-24 | 2026-04-11 | 2295, 2304FS-8d |  | Sector 43 | 9721296 |
| 2306 | 37300.37600.38600.40000.42500.43300.55400.1242800 | Putty primer coat | 10d | 2026-04-04 | 2026-04-13 | 2305FS-8d |  | Sector 43 | 9721306 |
| 2307 | 37300.37600.38600.40000.42500.43300.55400.1242900 | Prehung door fixing | 8d | 2026-04-09 | 2026-04-16 | 2306FS-5d |  | Sector 43 | 9721316 |
| 2308 | 37300.37600.38600.40000.42500.43300.55400.1243000 | Painting 1st coat | 12d | 2026-04-17 | 2026-04-28 | 2307 |  | Sector 43 | 9721326 |
| 2309 | 37300.37600.38600.40000.42500.43300.55400.1243100 | False Cieling panel fixing | 10d | 2026-04-30 | 2026-05-09 | 2292, 2308 |  | Sector 43 | 9721336 |

| ID | WBS | Task | Duration | Start | Finish | Predecessors | Constraint | Calendar | Unique_Task_ID |
| --- | --- | --- | --- | --- | --- | --- | --- | --- | --- |
| 2310 | 37300.37600.38600.40000.42500.43300.55300 | **7th floor** | 101d | 2026-02-08 | 2026-05-19 |  | start no earlier than 2026-02-08 | Sector 43 | 9698306 |
| 2311 | 37300.37600.38600.40000.42500.43300.55300.1243200 | Block Work | 10d | 2026-02-08 | 2026-02-17 | 2294 |  | Sector 43 | 9721346 |
| 2312 | 37300.37600.38600.40000.42500.43300.55300.1243300 | Installation of temporary Main door | 4d | 2026-02-18 | 2026-02-21 | 2311 |  | Sector 43 | 9721356 |
| 2313 | 37300.37600.38600.40000.42500.43300.55300.1243400 | Fire sprinkler pipe fixing | 10d | 2026-02-18 | 2026-02-27 | 2296, 2311 |  | Sector 43 | 9721366 |
| 2314 | 37300.37600.38600.40000.42500.43300.55300.1243500 | Internal Plumbing Works | 15d | 2026-02-18 | 2026-03-04 | 2311 |  | Sector 43 | 9721376 |
| 2315 | 37300.37600.38600.40000.42500.43300.55300.1243600 | Waterproofing | 21d | 2026-03-05 | 2026-03-25 | 2314 |  | Sector 43 | 9721386 |
| 2316 | 37300.37600.38600.40000.42500.43300.55300.1243700 | Internal Plaster | 10d | 2026-02-23 | 2026-03-04 | 2314FS-10d |  | Sector 43 | 9721396 |
| 2317 | 37300.37600.38600.40000.42500.43300.55300.1243800 | IPS flooring work | 10d | 2026-02-18 | 2026-02-27 | 2311 |  | Sector 43 | 9721406 |
| 2318 | 37300.37600.38600.40000.42500.43300.55300.1243900 | Toilet dado work | 12d | 2026-03-24 | 2026-04-04 | 2315FS-2d, 2316 |  | Sector 43 | 9721416 |
| 2319 | 37300.37600.38600.40000.42500.43300.55300.1244000 | Toilet flooring work | 12d | 2026-04-05 | 2026-04-16 | 2318 |  | Sector 43 | 9721426 |
| 2320 | 37300.37600.38600.40000.42500.43300.55300.1244100 | Living dinning flooring | 12d | 2026-03-17 | 2026-03-28 | 2317, 2319FS-31d |  | Sector 43 | 9721436 |
| 2321 | 37300.37600.38600.40000.42500.43300.55300.1244200 | Electrical wiring work | 12d | 2026-03-19 | 2026-03-30 | 2320FS-10d |  | Sector 43 | 9721446 |
| 2322 | 37300.37600.38600.40000.42500.43300.55300.1244300 | Aluminium door-window fixing | 19d | 2026-03-23 | 2026-04-10 | 2312, 2321FS-8d |  | Sector 43 | 9721456 |
| 2323 | 37300.37600.38600.40000.42500.43300.55300.1244400 | Putty primer coat | 10d | 2026-04-03 | 2026-04-12 | 2322FS-8d |  | Sector 43 | 9721466 |
| 2324 | 37300.37600.38600.40000.42500.43300.55300.1244500 | Prehung door fixing | 8d | 2026-04-08 | 2026-04-15 | 2323FS-5d |  | Sector 43 | 9721476 |
| 2325 | 37300.37600.38600.40000.42500.43300.55300.1244600 | Painting 1st coat | 12d | 2026-04-16 | 2026-04-27 | 2324 |  | Sector 43 | 9721486 |
| 2326 | 37300.37600.38600.40000.42500.43300.55300.1244700 | False Cieling panel fixing | 10d | 2026-05-10 | 2026-05-19 | 2309, 2325 |  | Sector 43 | 9721496 |
| 2327 | 37300.37600.38600.40000.42500.43300.55200 | **8th floor** | 101d | 2026-02-18 | 2026-05-29 |  | start no earlier than 2026-02-18 | Sector 43 | 9698316 |
| 2328 | 37300.37600.38600.40000.42500.43300.55200.1244800 | Block Work | 10d | 2026-02-18 | 2026-02-27 | 2311 |  | Sector 43 | 9721506 |
| 2329 | 37300.37600.38600.40000.42500.43300.55200.1244900 | Installation of temporary Main door | 4d | 2026-02-28 | 2026-03-03 | 2328 |  | Sector 43 | 9721516 |
| 2330 | 37300.37600.38600.40000.42500.43300.55200.1245000 | Fire sprinkler pipe fixing | 10d | 2026-02-28 | 2026-03-09 | 2313, 2328 |  | Sector 43 | 9721526 |
| 2331 | 37300.37600.38600.40000.42500.43300.55200.1245100 | Internal Plumbing Works | 15d | 2026-02-28 | 2026-03-14 | 2328 |  | Sector 43 | 9721536 |
| 2332 | 37300.37600.38600.40000.42500.43300.55200.1245200 | Waterproofing | 21d | 2026-03-15 | 2026-04-04 | 2331 |  | Sector 43 | 9721546 |
| 2333 | 37300.37600.38600.40000.42500.43300.55200.1245300 | Internal Plaster | 10d | 2026-03-07 | 2026-03-16 | 2331FS-8d |  | Sector 43 | 9721556 |
| 2334 | 37300.37600.38600.40000.42500.43300.55200.1245400 | IPS flooring work | 13d | 2026-02-28 | 2026-03-12 | 2328 |  | Sector 43 | 9721566 |
| 2335 | 37300.37600.38600.40000.42500.43300.55200.1245500 | Toilet dado work | 10d | 2026-04-03 | 2026-04-12 | 2332FS-2d, 2333 |  | Sector 43 | 9721576 |
| 2336 | 37300.37600.38600.40000.42500.43300.55200.1245600 | Toilet flooring work | 10d | 2026-04-13 | 2026-04-22 | 2335 |  | Sector 43 | 9721586 |
| 2337 | 37300.37600.38600.40000.42500.43300.55200.1245700 | Living dinning flooring | 31d | 2026-02-28 | 2026-03-30 | 2328 |  | Sector 43 | 9721596 |
| 2338 | 37300.37600.38600.40000.42500.43300.55200.1245800 | Electrical wiring work | 12d | 2026-03-21 | 2026-04-01 | 2337FS-10d |  | Sector 43 | 9721606 |
| 2339 | 37300.37600.38600.40000.42500.43300.55200.1245900 | Aluminium door-window fixing | 19d | 2026-03-25 | 2026-04-12 | 2329, 2338FS-8d |  | Sector 43 | 9721616 |
| 2340 | 37300.37600.38600.40000.42500.43300.55200.1246000 | Putty primer coat | 10d | 2026-04-05 | 2026-04-14 | 2339FS-8d |  | Sector 43 | 9721626 |
| 2341 | 37300.37600.38600.40000.42500.43300.55200.1246100 | Prehung door fixing | 8d | 2026-04-10 | 2026-04-17 | 2340FS-5d |  | Sector 43 | 9721636 |
| 2342 | 37300.37600.38600.40000.42500.43300.55200.1246200 | Painting 1st coat | 12d | 2026-04-18 | 2026-04-29 | 2341 |  | Sector 43 | 9721646 |
| 2343 | 37300.37600.38600.40000.42500.43300.55200.1246300 | False Cieling panel fixing | 10d | 2026-05-20 | 2026-05-29 | 2326, 2342 |  | Sector 43 | 9721656 |

| ID | WBS | Task | Duration | Start | Finish | Predecessors | Constraint | Calendar | Unique_Task_ID |
| --- | --- | --- | --- | --- | --- | --- | --- | --- | --- |
| 2344 | 37300.37600.38600.40000.42500.43300.55100 | **9th floor** | 140d | 2026-02-28 | 2026-07-17 |  | start no earlier than 2026-02-28 | Sector 43 | 9698326 |
| 2345 | 37300.37600.38600.40000.42500.43300.55100.1246400 | Block Work | 10d | 2026-02-28 | 2026-03-09 | 2328 |  | Sector 43 | 9721666 |
| 2346 | 37300.37600.38600.40000.42500.43300.55100.1246500 | Installation of temporary Main door | 4d | 2026-03-10 | 2026-03-13 | 2345 |  | Sector 43 | 9721676 |
| 2347 | 37300.37600.38600.40000.42500.43300.55100.1246600 | Fire sprinkler pipe fixing | 10d | 2026-03-10 | 2026-03-19 | 2330, 2345 |  | Sector 43 | 9721686 |
| 2348 | 37300.37600.38600.40000.42500.43300.55100.1246700 | Internal Plumbing Works | 15d | 2026-03-05 | 2026-03-19 | 2345FS-5d |  | Sector 43 | 9721696 |
| 2349 | 37300.37600.38600.40000.42500.43300.55100.1246800 | Waterproofing | 21d | 2026-03-20 | 2026-04-09 | 2348 |  | Sector 43 | 9721706 |
| 2350 | 37300.37600.38600.40000.42500.43300.55100.1246900 | Internal Plaster | 15d | 2026-03-11 | 2026-03-25 | 2348FS-9d |  | Sector 43 | 9721716 |
| 2351 | 37300.37600.38600.40000.42500.43300.55100.1247000 | IPS flooring work | 13d | 2026-03-10 | 2026-03-22 | 2345 |  | Sector 43 | 9721726 |
| 2352 | 37300.37600.38600.40000.42500.43300.55100.1247100 | Toilet dado work | 25d | 2026-04-08 | 2026-05-02 | 2349FS-2d, 2350 |  | Sector 43 | 9721736 |
| 2353 | 37300.37600.38600.40000.42500.43300.55100.1247200 | Toilet flooring work | 25d | 2026-05-03 | 2026-05-27 | 2352 |  | Sector 43 | 9721746 |
| 2354 | 37300.37600.38600.40000.42500.43300.55100.1247300 | Living dinning flooring | 31d | 2026-05-08 | 2026-06-07 | 2351, 2353FS-20d |  | Sector 43 | 9721756 |
| 2355 | 37300.37600.38600.40000.42500.43300.55100.1247400 | Electrical wiring work | 12d | 2026-05-29 | 2026-06-09 | 2354FS-10d |  | Sector 43 | 9721766 |
| 2356 | 37300.37600.38600.40000.42500.43300.55100.1247500 | Aluminium door-window fixing | 19d | 2026-06-02 | 2026-06-20 | 2346, 2355FS-8d |  | Sector 43 | 9721776 |
| 2357 | 37300.37600.38600.40000.42500.43300.55100.1247600 | Putty primer coat | 10d | 2026-06-13 | 2026-06-22 | 2356FS-8d |  | Sector 43 | 9721786 |
| 2358 | 37300.37600.38600.40000.42500.43300.55100.1247700 | Prehung door fixing | 8d | 2026-06-18 | 2026-06-25 | 2357FS-5d |  | Sector 43 | 9721796 |
| 2359 | 37300.37600.38600.40000.42500.43300.55100.1247800 | Painting 1st coat | 12d | 2026-06-26 | 2026-07-07 | 2358 |  | Sector 43 | 9721806 |
| 2360 | 37300.37600.38600.40000.42500.43300.55100.1247900 | False Cieling panel fixing | 10d | 2026-07-08 | 2026-07-17 | 2343, 2359 |  | Sector 43 | 9721816 |
| 2361 | 37300.37600.38600.40000.42500.43300.55000 | **10th floor** | 140d | 2026-03-10 | 2026-07-27 |  | start no earlier than 2026-03-10 | Sector 43 | 9698336 |
| 2362 | 37300.37600.38600.40000.42500.43300.55000.1248000 | Block Work | 10d | 2026-03-10 | 2026-03-19 | 2345 |  | Sector 43 | 9721826 |
| 2363 | 37300.37600.38600.40000.42500.43300.55000.1248100 | Installation of temporary Main door | 4d | 2026-03-20 | 2026-03-23 | 2362 |  | Sector 43 | 9721836 |
| 2364 | 37300.37600.38600.40000.42500.43300.55000.1248200 | Fire sprinkler pipe fixing | 10d | 2026-03-20 | 2026-03-29 | 2347, 2362 |  | Sector 43 | 9721846 |
| 2365 | 37300.37600.38600.40000.42500.43300.55000.1248300 | Internal Plumbing Works | 5d | 2026-03-20 | 2026-03-24 | 2362 |  | Sector 43 | 9721856 |
| 2366 | 37300.37600.38600.40000.42500.43300.55000.1248400 | Waterproofing | 21d | 2026-03-25 | 2026-04-14 | 2365 |  | Sector 43 | 9721866 |
| 2367 | 37300.37600.38600.40000.42500.43300.55000.1248500 | Internal Plaster | 15d | 2026-03-16 | 2026-03-30 | 2365FS-9d |  | Sector 43 | 9721876 |
| 2368 | 37300.37600.38600.40000.42500.43300.55000.1248600 | IPS flooring work | 13d | 2026-03-20 | 2026-04-01 | 2362 |  | Sector 43 | 9721886 |
| 2369 | 37300.37600.38600.40000.42500.43300.55000.1248700 | Toilet dado work | 25d | 2026-04-13 | 2026-05-07 | 2366FS-2d, 2367 |  | Sector 43 | 9721896 |
| 2370 | 37300.37600.38600.40000.42500.43300.55000.1248800 | Toilet flooring work | 25d | 2026-05-08 | 2026-06-01 | 2369 |  | Sector 43 | 9721906 |
| 2371 | 37300.37600.38600.40000.42500.43300.55000.1248900 | Living dinning flooring | 31d | 2026-05-13 | 2026-06-12 | 2368, 2370FS-20d |  | Sector 43 | 9721916 |
| 2372 | 37300.37600.38600.40000.42500.43300.55000.1249000 | Electrical wiring work | 12d | 2026-06-03 | 2026-06-14 | 2371FS-10d |  | Sector 43 | 9721926 |
| 2373 | 37300.37600.38600.40000.42500.43300.55000.1249100 | Aluminium door-window fixing | 19d | 2026-06-07 | 2026-06-25 | 2363, 2372FS-8d |  | Sector 43 | 9721936 |
| 2374 | 37300.37600.38600.40000.42500.43300.55000.1249200 | Putty primer coat | 10d | 2026-06-18 | 2026-06-27 | 2373FS-8d |  | Sector 43 | 9721946 |
| 2375 | 37300.37600.38600.40000.42500.43300.55000.1249300 | Prehung door fixing | 8d | 2026-06-23 | 2026-06-30 | 2374FS-5d |  | Sector 43 | 9721956 |
| 2376 | 37300.37600.38600.40000.42500.43300.55000.1249400 | Painting 1st coat | 12d | 2026-07-01 | 2026-07-12 | 2375 |  | Sector 43 | 9721966 |
| 2377 | 37300.37600.38600.40000.42500.43300.55000.1249500 | False Cieling panel fixing | 10d | 2026-07-18 | 2026-07-27 | 2360, 2376 |  | Sector 43 | 9721976 |

| ID | WBS | Task | Duration | Start | Finish | Predecessors | Constraint | Calendar | Unique_Task_ID |
| --- | --- | --- | --- | --- | --- | --- | --- | --- | --- |
| 2378 | 37300.37600.38600.40000.42500.43300.54900 | **11th floor** | 145d | 2026-03-20 | 2026-08-11 |  | start no earlier than 2026-03-20 | Sector 43 | 9698346 |
| 2379 | 37300.37600.38600.40000.42500.43300.54900.1249600 | Block Work | 10d | 2026-03-20 | 2026-03-29 | 2362 |  | Sector 43 | 9721986 |
| 2380 | 37300.37600.38600.40000.42500.43300.54900.1249700 | Installation of temporary Main door | 4d | 2026-03-30 | 2026-04-02 | 2379 |  | Sector 43 | 9721996 |
| 2381 | 37300.37600.38600.40000.42500.43300.54900.1249800 | Fire sprinkler pipe fixing | 10d | 2026-03-30 | 2026-04-08 | 2364, 2379 |  | Sector 43 | 9722006 |
| 2382 | 37300.37600.38600.40000.42500.43300.54900.1249900 | Internal Plumbing Works | 15d | 2026-03-30 | 2026-04-13 | 2379 |  | Sector 43 | 9722016 |
| 2383 | 37300.37600.38600.40000.42500.43300.54900.1250000 | Waterproofing | 21d | 2026-04-14 | 2026-05-04 | 2382 |  | Sector 43 | 9722026 |
| 2384 | 37300.37600.38600.40000.42500.43300.54900.1250100 | Internal Plaster | 15d | 2026-04-14 | 2026-04-28 | 2382 |  | Sector 43 | 9722036 |
| 2385 | 37300.37600.38600.40000.42500.43300.54900.1250200 | IPS flooring work | 13d | 2026-03-30 | 2026-04-11 | 2379 |  | Sector 43 | 9722046 |
| 2386 | 37300.37600.38600.40000.42500.43300.54900.1250300 | Toilet dado work | 25d | 2026-05-03 | 2026-05-27 | 2383FS-2d, 2384 |  | Sector 43 | 9722056 |
| 2387 | 37300.37600.38600.40000.42500.43300.54900.1250400 | Toilet flooring work | 25d | 2026-05-28 | 2026-06-21 | 2385, 2386 |  | Sector 43 | 9722066 |
| 2388 | 37300.37600.38600.40000.42500.43300.54900.1250500 | Living dinning flooring | 31d | 2026-06-02 | 2026-07-02 | 2387FS-20d |  | Sector 43 | 9722076 |
| 2389 | 37300.37600.38600.40000.42500.43300.54900.1250600 | Electrical wiring work | 12d | 2026-06-23 | 2026-07-04 | 2388FS-10d |  | Sector 43 | 9722086 |
| 2390 | 37300.37600.38600.40000.42500.43300.54900.1250700 | Aluminium door-window fixing | 19d | 2026-06-27 | 2026-07-15 | 2380, 2389FS-8d |  | Sector 43 | 9722096 |
| 2391 | 37300.37600.38600.40000.42500.43300.54900.1250800 | Putty primer coat | 10d | 2026-07-08 | 2026-07-17 | 2390FS-8d |  | Sector 43 | 9722106 |
| 2392 | 37300.37600.38600.40000.42500.43300.54900.1250900 | Prehung door fixing | 8d | 2026-07-13 | 2026-07-20 | 2391FS-5d |  | Sector 43 | 9722116 |
| 2393 | 37300.37600.38600.40000.42500.43300.54900.1251000 | Painting 1st coat | 12d | 2026-07-21 | 2026-08-01 | 2392 |  | Sector 43 | 9722126 |
| 2394 | 37300.37600.38600.40000.42500.43300.54900.1251100 | False Cieling panel fixing | 10d | 2026-08-02 | 2026-08-11 | 2377, 2393 |  | Sector 43 | 9722136 |
| 2395 | 37300.37600.38600.40000.42500.43300.54800 | **12th floor** | 171d | 2026-04-03 | 2026-09-20 |  | start no earlier than 2026-04-03 | Sector 43 | 9698356 |
| 2396 | 37300.37600.38600.40000.42500.43300.54800.1251200 | Block Work | 36d | 2026-04-03 | 2026-05-08 | 2183 |  | Sector 43 | 9722146 |
| 2397 | 37300.37600.38600.40000.42500.43300.54800.1251300 | Installation of temporary Main door | 4d | 2026-05-09 | 2026-05-12 | 2396 |  | Sector 43 | 9722156 |
| 2398 | 37300.37600.38600.40000.42500.43300.54800.1251400 | Fire sprinkler pipe fixing | 10d | 2026-05-09 | 2026-05-18 | 2381, 2396 |  | Sector 43 | 9722166 |
| 2399 | 37300.37600.38600.40000.42500.43300.54800.1251500 | Internal Plumbing Works | 15d | 2026-05-09 | 2026-05-23 | 2396 |  | Sector 43 | 9722176 |
| 2400 | 37300.37600.38600.40000.42500.43300.54800.1251600 | Waterproofing | 21d | 2026-05-24 | 2026-06-13 | 2399 |  | Sector 43 | 9722186 |
| 2401 | 37300.37600.38600.40000.42500.43300.54800.1251700 | Internal Plaster | 15d | 2026-05-24 | 2026-06-07 | 2399 |  | Sector 43 | 9722196 |
| 2402 | 37300.37600.38600.40000.42500.43300.54800.1251800 | IPS flooring work | 13d | 2026-05-09 | 2026-05-21 | 2396 |  | Sector 43 | 9722206 |
| 2403 | 37300.37600.38600.40000.42500.43300.54800.1251900 | Toilet dado work | 25d | 2026-06-12 | 2026-07-06 | 2400FS-2d, 2401 |  | Sector 43 | 9722216 |
| 2404 | 37300.37600.38600.40000.42500.43300.54800.1252000 | Toilet flooring work | 25d | 2026-07-07 | 2026-07-31 | 2403 |  | Sector 43 | 9722226 |
| 2405 | 37300.37600.38600.40000.42500.43300.54800.1252100 | Living dinning flooring | 31d | 2026-07-12 | 2026-08-11 | 2402, 2404FS-20d |  | Sector 43 | 9722236 |
| 2406 | 37300.37600.38600.40000.42500.43300.54800.1252200 | Electrical wiring work | 12d | 2026-08-02 | 2026-08-13 | 2405FS-10d |  | Sector 43 | 9722246 |
| 2407 | 37300.37600.38600.40000.42500.43300.54800.1252300 | Aluminium door-window fixing | 19d | 2026-08-06 | 2026-08-24 | 2397, 2406FS-8d |  | Sector 43 | 9722256 |
| 2408 | 37300.37600.38600.40000.42500.43300.54800.1252400 | Putty primer coat | 10d | 2026-08-17 | 2026-08-26 | 2407FS-8d |  | Sector 43 | 9722266 |
| 2409 | 37300.37600.38600.40000.42500.43300.54800.1252500 | Prehung door fixing | 8d | 2026-08-22 | 2026-08-29 | 2408FS-5d |  | Sector 43 | 9722276 |
| 2410 | 37300.37600.38600.40000.42500.43300.54800.1252600 | Painting 1st coat | 12d | 2026-08-30 | 2026-09-10 | 2409 |  | Sector 43 | 9722286 |
| 2411 | 37300.37600.38600.40000.42500.43300.54800.1252700 | False Cieling panel fixing | 10d | 2026-09-11 | 2026-09-20 | 2394, 2410 |  | Sector 43 | 9722296 |

| ID | WBS | Task | Duration | Start | Finish | Predecessors | Constraint | Calendar | Unique_Task_ID |
| --- | --- | --- | --- | --- | --- | --- | --- | --- | --- |
| 2412 | 37300.37600.38600.40000.42500.43300.54700 | **13th floor** | 172d | 2026-04-12 | 2026-09-30 |  | start no earlier than 2026-04-12 | Sector 43 | 9698366 |
| 2413 | 37300.37600.38600.40000.42500.43300.54700.1252800 | Block Work | 36d | 2026-04-12 | 2026-05-17 | 2184 |  | Sector 43 | 9722306 |
| 2414 | 37300.37600.38600.40000.42500.43300.54700.1252900 | Installation of temporary Main door | 4d | 2026-05-18 | 2026-05-21 | 2413 |  | Sector 43 | 9722316 |
| 2415 | 37300.37600.38600.40000.42500.43300.54700.1253000 | Fire sprinkler pipe fixing | 10d | 2026-05-19 | 2026-05-28 | 2398, 2413 |  | Sector 43 | 9722326 |
| 2416 | 37300.37600.38600.40000.42500.43300.54700.1253100 | Internal Plumbing Works | 15d | 2026-05-18 | 2026-06-01 | 2413 |  | Sector 43 | 9722336 |
| 2417 | 37300.37600.38600.40000.42500.43300.54700.1253200 | Waterproofing | 21d | 2026-06-02 | 2026-06-22 | 2416 |  | Sector 43 | 9722346 |
| 2418 | 37300.37600.38600.40000.42500.43300.54700.1253300 | Internal Plaster | 15d | 2026-06-02 | 2026-06-16 | 2416 |  | Sector 43 | 9722356 |
| 2419 | 37300.37600.38600.40000.42500.43300.54700.1253400 | IPS flooring work | 13d | 2026-05-18 | 2026-05-30 | 2413 |  | Sector 43 | 9722366 |
| 2420 | 37300.37600.38600.40000.42500.43300.54700.1253500 | Toilet dado work | 25d | 2026-06-21 | 2026-07-15 | 2417FS-2d, 2418 |  | Sector 43 | 9722376 |
| 2421 | 37300.37600.38600.40000.42500.43300.54700.1253600 | Toilet flooring work | 25d | 2026-07-16 | 2026-08-09 | 2420 |  | Sector 43 | 9722386 |
| 2422 | 37300.37600.38600.40000.42500.43300.54700.1253700 | Living dinning flooring | 31d | 2026-07-21 | 2026-08-20 | 2419, 2421FS-20d |  | Sector 43 | 9722396 |
| 2423 | 37300.37600.38600.40000.42500.43300.54700.1253800 | Electrical wiring work | 12d | 2026-08-11 | 2026-08-22 | 2422FS-10d |  | Sector 43 | 9722406 |
| 2424 | 37300.37600.38600.40000.42500.43300.54700.1253900 | Aluminium door-window fixing | 19d | 2026-08-15 | 2026-09-02 | 2414, 2423FS-8d |  | Sector 43 | 9722416 |
| 2425 | 37300.37600.38600.40000.42500.43300.54700.1254000 | Putty primer coat | 10d | 2026-08-26 | 2026-09-04 | 2424FS-8d |  | Sector 43 | 9722426 |
| 2426 | 37300.37600.38600.40000.42500.43300.54700.1254100 | Prehung door fixing | 8d | 2026-08-31 | 2026-09-07 | 2425FS-5d |  | Sector 43 | 9722436 |
| 2427 | 37300.37600.38600.40000.42500.43300.54700.1254200 | Painting 1st coat | 12d | 2026-09-08 | 2026-09-19 | 2426 |  | Sector 43 | 9722446 |
| 2428 | 37300.37600.38600.40000.42500.43300.54700.1254300 | False Cieling panel fixing | 10d | 2026-09-21 | 2026-09-30 | 2411, 2427 |  | Sector 43 | 9722456 |
| 2429 | 37300.37600.38600.40000.42500.43300.54500 | **14th floor** | 171d | 2026-04-24 | 2026-10-11 |  | start no earlier than 2026-04-24 | Sector 43 | 9698376 |
| 2430 | 37300.37600.38600.40000.42500.43300.54500.1254400 | Block Work | 36d | 2026-04-24 | 2026-05-29 | 2185 |  | Sector 43 | 9722466 |
| 2431 | 37300.37600.38600.40000.42500.43300.54500.1254500 | Installation of temporary Main door | 4d | 2026-05-30 | 2026-06-02 | 2430 |  | Sector 43 | 9722476 |
| 2432 | 37300.37600.38600.40000.42500.43300.54500.1254600 | Fire sprinkler pipe fixing | 10d | 2026-05-30 | 2026-06-08 | 2415, 2430 |  | Sector 43 | 9722486 |
| 2433 | 37300.37600.38600.40000.42500.43300.54500.1254700 | Internal Plumbing Works | 15d | 2026-05-30 | 2026-06-13 | 2430 |  | Sector 43 | 9722496 |
| 2434 | 37300.37600.38600.40000.42500.43300.54500.1254800 | Waterproofing | 21d | 2026-06-14 | 2026-07-04 | 2433 |  | Sector 43 | 9722506 |
| 2435 | 37300.37600.38600.40000.42500.43300.54500.1254900 | Internal Plaster | 15d | 2026-06-14 | 2026-06-28 | 2433 |  | Sector 43 | 9722516 |
| 2436 | 37300.37600.38600.40000.42500.43300.54500.1255000 | IPS flooring work | 13d | 2026-05-30 | 2026-06-11 | 2430 |  | Sector 43 | 9722526 |
| 2437 | 37300.37600.38600.40000.42500.43300.54500.1255100 | Toilet dado work | 25d | 2026-07-03 | 2026-07-27 | 2434FS-2d, 2435 |  | Sector 43 | 9722536 |
| 2438 | 37300.37600.38600.40000.42500.43300.54500.1255200 | Toilet flooring work | 25d | 2026-07-28 | 2026-08-21 | 2437 |  | Sector 43 | 9722546 |
| 2439 | 37300.37600.38600.40000.42500.43300.54500.1255300 | Living dinning flooring | 31d | 2026-08-02 | 2026-09-01 | 2436, 2438FS-20d |  | Sector 43 | 9722556 |
| 2440 | 37300.37600.38600.40000.42500.43300.54500.1255400 | Electrical wiring work | 12d | 2026-08-23 | 2026-09-03 | 2439FS-10d |  | Sector 43 | 9722566 |
| 2441 | 37300.37600.38600.40000.42500.43300.54500.1255500 | Aluminium door-window fixing | 19d | 2026-08-27 | 2026-09-14 | 2431, 2440FS-8d |  | Sector 43 | 9722576 |
| 2442 | 37300.37600.38600.40000.42500.43300.54500.1255600 | Putty primer coat | 10d | 2026-09-07 | 2026-09-16 | 2441FS-8d |  | Sector 43 | 9722586 |
| 2443 | 37300.37600.38600.40000.42500.43300.54500.1255700 | Prehung door fixing | 8d | 2026-09-12 | 2026-09-19 | 2442FS-5d |  | Sector 43 | 9722596 |
| 2444 | 37300.37600.38600.40000.42500.43300.54500.1255800 | Painting 1st coat | 12d | 2026-09-20 | 2026-10-01 | 2443 |  | Sector 43 | 9722606 |
| 2445 | 37300.37600.38600.40000.42500.43300.54500.1255900 | False Cieling panel fixing | 10d | 2026-10-02 | 2026-10-11 | 2428, 2444 |  | Sector 43 | 9722616 |

| ID | WBS | Task | Duration | Start | Finish | Predecessors | Constraint | Calendar | Unique_Task_ID |
| --- | --- | --- | --- | --- | --- | --- | --- | --- | --- |
| 2446 | 37300.37600.38600.40000.42500.43300.54400 | **15th floor** | 172d | 2026-05-03 | 2026-10-21 |  | start no earlier than 2026-05-03 | Sector 43 | 9698386 |
| 2447 | 37300.37600.38600.40000.42500.43300.54400.1256000 | Block Work | 36d | 2026-05-03 | 2026-06-07 | 2186 |  | Sector 43 | 9722626 |
| 2448 | 37300.37600.38600.40000.42500.43300.54400.1256100 | Installation of temporary Main door | 4d | 2026-06-08 | 2026-06-11 | 2447 |  | Sector 43 | 9722636 |
| 2449 | 37300.37600.38600.40000.42500.43300.54400.1256200 | Fire sprinkler pipe fixing | 10d | 2026-06-09 | 2026-06-18 | 2432, 2447 |  | Sector 43 | 9722646 |
| 2450 | 37300.37600.38600.40000.42500.43300.54400.1256300 | Internal Plumbing Works | 15d | 2026-06-08 | 2026-06-22 | 2447 |  | Sector 43 | 9722656 |
| 2451 | 37300.37600.38600.40000.42500.43300.54400.1256400 | Waterproofing | 21d | 2026-06-23 | 2026-07-13 | 2450 |  | Sector 43 | 9722666 |
| 2452 | 37300.37600.38600.40000.42500.43300.54400.1256500 | Internal Plaster | 15d | 2026-06-23 | 2026-07-07 | 2450 |  | Sector 43 | 9722676 |
| 2453 | 37300.37600.38600.40000.42500.43300.54400.1256600 | IPS flooring work | 13d | 2026-06-08 | 2026-06-20 | 2447 |  | Sector 43 | 9722686 |
| 2454 | 37300.37600.38600.40000.42500.43300.54400.1256700 | Toilet dado work | 25d | 2026-07-12 | 2026-08-05 | 2451FS-2d, 2452 |  | Sector 43 | 9722696 |
| 2455 | 37300.37600.38600.40000.42500.43300.54400.1256800 | Toilet flooring work | 25d | 2026-08-06 | 2026-08-30 | 2454 |  | Sector 43 | 9722706 |
| 2456 | 37300.37600.38600.40000.42500.43300.54400.1256900 | Living dinning flooring | 31d | 2026-08-11 | 2026-09-10 | 2453, 2455FS-20d |  | Sector 43 | 9722716 |
| 2457 | 37300.37600.38600.40000.42500.43300.54400.1257000 | Electrical wiring work | 12d | 2026-09-01 | 2026-09-12 | 2456FS-10d |  | Sector 43 | 9722726 |
| 2458 | 37300.37600.38600.40000.42500.43300.54400.1257100 | Aluminium door-window fixing | 19d | 2026-09-05 | 2026-09-23 | 2448, 2457FS-8d |  | Sector 43 | 9722736 |
| 2459 | 37300.37600.38600.40000.42500.43300.54400.1257200 | Putty primer coat | 10d | 2026-09-16 | 2026-09-25 | 2458FS-8d |  | Sector 43 | 9722746 |
| 2460 | 37300.37600.38600.40000.42500.43300.54400.1257300 | Prehung door fixing | 8d | 2026-09-21 | 2026-09-28 | 2459FS-5d |  | Sector 43 | 9722756 |
| 2461 | 37300.37600.38600.40000.42500.43300.54400.1257400 | Painting 1st coat | 12d | 2026-09-29 | 2026-10-10 | 2460 |  | Sector 43 | 9722766 |
| 2462 | 37300.37600.38600.40000.42500.43300.54400.1257500 | False Cieling panel fixing | 10d | 2026-10-12 | 2026-10-21 | 2445, 2461 |  | Sector 43 | 9722776 |
| 2463 | 37300.37600.38600.40000.42500.43300.54300 | **16th floor** | 174d | 2026-05-11 | 2026-10-31 |  | start no earlier than 2026-05-11 | Sector 43 | 9698396 |
| 2464 | 37300.37600.38600.40000.42500.43300.54300.1257600 | Block Work | 36d | 2026-05-11 | 2026-06-15 | 2187 |  | Sector 43 | 9722786 |
| 2465 | 37300.37600.38600.40000.42500.43300.54300.1257700 | Installation of temporary Main door | 4d | 2026-06-16 | 2026-06-19 | 2464 |  | Sector 43 | 9722796 |
| 2466 | 37300.37600.38600.40000.42500.43300.54300.1257800 | Fire sprinkler pipe fixing | 10d | 2026-06-19 | 2026-06-28 | 2449, 2464 |  | Sector 43 | 9722806 |
| 2467 | 37300.37600.38600.40000.42500.43300.54300.1257900 | Internal Plumbing Works | 15d | 2026-06-16 | 2026-06-30 | 2464 |  | Sector 43 | 9722816 |
| 2468 | 37300.37600.38600.40000.42500.43300.54300.1258000 | Waterproofing | 21d | 2026-07-01 | 2026-07-21 | 2467 |  | Sector 43 | 9722826 |
| 2469 | 37300.37600.38600.40000.42500.43300.54300.1258100 | Internal Plaster | 15d | 2026-07-01 | 2026-07-15 | 2467 |  | Sector 43 | 9722836 |
| 2470 | 37300.37600.38600.40000.42500.43300.54300.1258200 | IPS flooring work | 13d | 2026-06-16 | 2026-06-28 | 2464 |  | Sector 43 | 9722846 |
| 2471 | 37300.37600.38600.40000.42500.43300.54300.1258300 | Toilet dado work | 25d | 2026-07-20 | 2026-08-13 | 2468FS-2d, 2469 |  | Sector 43 | 9722856 |
| 2472 | 37300.37600.38600.40000.42500.43300.54300.1258400 | Toilet flooring work | 25d | 2026-08-14 | 2026-09-07 | 2471 |  | Sector 43 | 9722866 |
| 2473 | 37300.37600.38600.40000.42500.43300.54300.1258500 | Living dinning flooring | 31d | 2026-08-19 | 2026-09-18 | 2470, 2472FS-20d |  | Sector 43 | 9722876 |
| 2474 | 37300.37600.38600.40000.42500.43300.54300.1258600 | Electrical wiring work | 12d | 2026-09-09 | 2026-09-20 | 2473FS-10d |  | Sector 43 | 9722886 |
| 2475 | 37300.37600.38600.40000.42500.43300.54300.1258700 | Aluminium door-window fixing | 19d | 2026-09-13 | 2026-10-01 | 2465, 2474FS-8d |  | Sector 43 | 9722896 |
| 2476 | 37300.37600.38600.40000.42500.43300.54300.1258800 | Putty primer coat | 10d | 2026-09-24 | 2026-10-03 | 2475FS-8d |  | Sector 43 | 9722906 |
| 2477 | 37300.37600.38600.40000.42500.43300.54300.1258900 | Prehung door fixing | 8d | 2026-09-29 | 2026-10-06 | 2476FS-5d |  | Sector 43 | 9722916 |
| 2478 | 37300.37600.38600.40000.42500.43300.54300.1259000 | Painting 1st coat | 12d | 2026-10-07 | 2026-10-18 | 2477 |  | Sector 43 | 9722926 |
| 2479 | 37300.37600.38600.40000.42500.43300.54300.1259100 | False Cieling panel fixing | 10d | 2026-10-22 | 2026-10-31 | 2462, 2478 |  | Sector 43 | 9722936 |

| ID | WBS | Task | Duration | Start | Finish | Predecessors | Constraint | Calendar | Unique_Task_ID |
| --- | --- | --- | --- | --- | --- | --- | --- | --- | --- |
| 2480 | 37300.37600.38600.40000.42500.43300.54200 | **17th floor** | 176d | 2026-05-19 | 2026-12-25 |  | start no earlier than 2026-05-19 | Sector 43 | 9698406 |
| 2481 | 37300.37600.38600.40000.42500.43300.54200.1259200 | Block Work | 36d | 2026-05-19 | 2026-06-23 | 2188 |  | Sector 43 | 9722946 |
| 2482 | 37300.37600.38600.40000.42500.43300.54200.1259300 | Installation of temporary Main door | 4d | 2026-06-24 | 2026-06-27 | 2481 |  | Sector 43 | 9722956 |
| 2483 | 37300.37600.38600.40000.42500.43300.54200.1259400 | Fire sprinkler pipe fixing | 10d | 2026-06-29 | 2026-07-08 | 2466, 2481 |  | Sector 43 | 9722966 |
| 2484 | 37300.37600.38600.40000.42500.43300.54200.1259500 | Internal Plumbing Works | 15d | 2026-06-24 | 2026-07-08 | 2481 |  | Sector 43 | 9722976 |
| 2485 | 37300.37600.38600.40000.42500.43300.54200.1259600 | Waterproofing | 21d | 2026-07-09 | 2026-07-29 | 2484 |  | Sector 43 | 9722986 |
| 2486 | 37300.37600.38600.40000.42500.43300.54200.1259700 | Internal Plaster | 15d | 2026-07-09 | 2026-07-23 | 2484 |  | Sector 43 | 9722996 |
| 2487 | 37300.37600.38600.40000.42500.43300.54200.1259800 | IPS flooring work | 13d | 2026-06-24 | 2026-07-06 | 2481 |  | Sector 43 | 9723006 |
| 2488 | 37300.37600.38600.40000.42500.43300.54200.1259900 | Toilet dado work | 25d | 2026-07-28 | 2026-08-21 | 2485FS-2d, 2486 |  | Sector 43 | 9723016 |
| 2489 | 37300.37600.38600.40000.42500.43300.54200.1260000 | Toilet flooring work | 25d | 2026-08-22 | 2026-09-15 | 2488 |  | Sector 43 | 9723026 |
| 2490 | 37300.37600.38600.40000.42500.43300.54200.1260100 | Living dinning flooring | 31d | 2026-08-27 | 2026-09-26 | 2487, 2489FS-20d |  | Sector 43 | 9723036 |
| 2491 | 37300.37600.38600.40000.42500.43300.54200.1260200 | Electrical wiring work | 12d | 2026-09-17 | 2026-09-28 | 2490FS-10d |  | Sector 43 | 9723046 |
| 2492 | 37300.37600.38600.40000.42500.43300.54200.1260300 | Aluminium door-window fixing | 19d | 2026-09-21 | 2026-10-09 | 2482, 2491FS-8d |  | Sector 43 | 9723056 |
| 2493 | 37300.37600.38600.40000.42500.43300.54200.1260400 | Putty primer coat | 10d | 2026-10-02 | 2026-10-11 | 2492FS-8d |  | Sector 43 | 9723066 |
| 2494 | 37300.37600.38600.40000.42500.43300.54200.1260500 | Prehung door fixing | 8d | 2026-10-07 | 2026-10-14 | 2493FS-5d |  | Sector 43 | 9723076 |
| 2495 | 37300.37600.38600.40000.42500.43300.54200.1260600 | Painting 1st coat | 12d | 2026-10-15 | 2026-10-26 | 2494 |  | Sector 43 | 9723086 |
| 2496 | 37300.37600.38600.40000.42500.43300.54200.1260700 | False Cieling panel fixing | 10d | 2026-12-16 | 2026-12-25 | 2479, 2495 |  | Sector 43 | 9723096 |
| 2497 | 37300.37600.38600.40000.42500.43300.54100 | **18th floor** | 178d | 2026-05-27 | 2027-01-04 |  | start no earlier than 2026-05-27 | Sector 43 | 9698416 |
| 2498 | 37300.37600.38600.40000.42500.43300.54100.1260800 | Block Work | 36d | 2026-05-27 | 2026-07-01 | 2189 |  | Sector 43 | 9723106 |
| 2499 | 37300.37600.38600.40000.42500.43300.54100.1260900 | Installation of temporary Main door | 4d | 2026-07-02 | 2026-07-05 | 2498 |  | Sector 43 | 9723116 |
| 2500 | 37300.37600.38600.40000.42500.43300.54100.1261000 | Fire sprinkler pipe fixing | 10d | 2026-07-09 | 2026-07-18 | 2483, 2498 |  | Sector 43 | 9723126 |
| 2501 | 37300.37600.38600.40000.42500.43300.54100.1261100 | Internal Plumbing Works | 15d | 2026-07-02 | 2026-07-16 | 2498 |  | Sector 43 | 9723136 |
| 2502 | 37300.37600.38600.40000.42500.43300.54100.1261200 | Waterproofing | 21d | 2026-07-17 | 2026-08-06 | 2501 |  | Sector 43 | 9723146 |
| 2503 | 37300.37600.38600.40000.42500.43300.54100.1261300 | Internal Plaster | 15d | 2026-07-17 | 2026-07-31 | 2501 |  | Sector 43 | 9723156 |
| 2504 | 37300.37600.38600.40000.42500.43300.54100.1261400 | IPS flooring work | 13d | 2026-07-02 | 2026-07-14 | 2498 |  | Sector 43 | 9723166 |
| 2505 | 37300.37600.38600.40000.42500.43300.54100.1261500 | Toilet dado work | 25d | 2026-08-05 | 2026-08-29 | 2502FS-2d, 2503 |  | Sector 43 | 9723176 |
| 2506 | 37300.37600.38600.40000.42500.43300.54100.1261600 | Toilet flooring work | 25d | 2026-08-30 | 2026-09-23 | 2505 |  | Sector 43 | 9723186 |
| 2507 | 37300.37600.38600.40000.42500.43300.54100.1261700 | Living dinning flooring | 31d | 2026-09-04 | 2026-10-04 | 2504, 2506FS-20d |  | Sector 43 | 9723196 |
| 2508 | 37300.37600.38600.40000.42500.43300.54100.1261800 | Electrical wiring work | 12d | 2026-09-25 | 2026-10-06 | 2507FS-10d |  | Sector 43 | 9723206 |
| 2509 | 37300.37600.38600.40000.42500.43300.54100.1261900 | Aluminium door-window fixing | 19d | 2026-09-29 | 2026-10-17 | 2499, 2508FS-8d |  | Sector 43 | 9723216 |
| 2510 | 37300.37600.38600.40000.42500.43300.54100.1262000 | Putty primer coat | 10d | 2026-10-10 | 2026-10-19 | 2509FS-8d |  | Sector 43 | 9723226 |
| 2511 | 37300.37600.38600.40000.42500.43300.54100.1262100 | Prehung door fixing | 8d | 2026-10-15 | 2026-10-22 | 2510FS-5d |  | Sector 43 | 9723236 |
| 2512 | 37300.37600.38600.40000.42500.43300.54100.1262200 | Painting 1st coat | 12d | 2026-10-23 | 2026-12-18 | 2511 |  | Sector 43 | 9723246 |
| 2513 | 37300.37600.38600.40000.42500.43300.54100.1262300 | False Cieling panel fixing | 10d | 2026-12-26 | 2027-01-04 | 2496, 2512 |  | Sector 43 | 9723256 |

| ID | WBS | Task | Duration | Start | Finish | Predecessors | Constraint | Calendar | Unique_Task_ID |
| --- | --- | --- | --- | --- | --- | --- | --- | --- | --- |
| 2514 | 37300.37600.38600.40000.42500.43300.54000 | **19th floor** | 180d | 2026-06-04 | 2027-01-14 |  | start no earlier than 2026-06-04 | Sector 43 | 9698426 |
| 2515 | 37300.37600.38600.40000.42500.43300.54000.1262400 | Block Work | 36d | 2026-06-04 | 2026-07-09 | 2190 |  | Sector 43 | 9723266 |
| 2516 | 37300.37600.38600.40000.42500.43300.54000.1262500 | Installation of temporary Main door | 4d | 2026-07-10 | 2026-07-13 | 2515 |  | Sector 43 | 9723276 |
| 2517 | 37300.37600.38600.40000.42500.43300.54000.1262600 | Fire sprinkler pipe fixing | 10d | 2026-07-19 | 2026-07-28 | 2500, 2515 |  | Sector 43 | 9723286 |
| 2518 | 37300.37600.38600.40000.42500.43300.54000.1262700 | Internal Plumbing Works | 15d | 2026-07-10 | 2026-07-24 | 2515 |  | Sector 43 | 9723296 |
| 2519 | 37300.37600.38600.40000.42500.43300.54000.1262800 | Waterproofing | 21d | 2026-07-25 | 2026-08-14 | 2518 |  | Sector 43 | 9723306 |
| 2520 | 37300.37600.38600.40000.42500.43300.54000.1262900 | Internal Plaster | 15d | 2026-07-25 | 2026-08-08 | 2518 |  | Sector 43 | 9723316 |
| 2521 | 37300.37600.38600.40000.42500.43300.54000.1263000 | IPS flooring work | 13d | 2026-07-10 | 2026-07-22 | 2515 |  | Sector 43 | 9723326 |
| 2522 | 37300.37600.38600.40000.42500.43300.54000.1263100 | Toilet dado work | 25d | 2026-08-13 | 2026-09-06 | 2519FS-2d, 2520 |  | Sector 43 | 9723336 |
| 2523 | 37300.37600.38600.40000.42500.43300.54000.1263200 | Toilet flooring work | 25d | 2026-09-07 | 2026-10-01 | 2522 |  | Sector 43 | 9723346 |
| 2524 | 37300.37600.38600.40000.42500.43300.54000.1263300 | Living dinning flooring | 31d | 2026-09-12 | 2026-10-12 | 2521, 2523FS-20d |  | Sector 43 | 9723356 |
| 2525 | 37300.37600.38600.40000.42500.43300.54000.1263400 | Electrical wiring work | 12d | 2026-10-03 | 2026-10-14 | 2524FS-10d |  | Sector 43 | 9723366 |
| 2526 | 37300.37600.38600.40000.42500.43300.54000.1263500 | Aluminium door-window fixing | 19d | 2026-10-07 | 2026-10-25 | 2516, 2525FS-8d |  | Sector 43 | 9723376 |
| 2527 | 37300.37600.38600.40000.42500.43300.54000.1263600 | Putty primer coat | 10d | 2026-10-18 | 2026-10-27 | 2526FS-8d |  | Sector 43 | 9723386 |
| 2528 | 37300.37600.38600.40000.42500.43300.54000.1263700 | Prehung door fixing | 8d | 2026-10-23 | 2026-10-30 | 2527FS-5d |  | Sector 43 | 9723396 |
| 2529 | 37300.37600.38600.40000.42500.43300.54000.1263800 | Painting 1st coat | 12d | 2026-10-31 | 2026-12-26 | 2528 |  | Sector 43 | 9723406 |
| 2530 | 37300.37600.38600.40000.42500.43300.54000.1263900 | False Cieling panel fixing | 10d | 2027-01-05 | 2027-01-14 | 2513, 2529 |  | Sector 43 | 9723416 |
| 2531 | 37300.37600.38600.40000.42500.43300.53900 | **20th floor** | 182d | 2026-06-12 | 2027-01-24 |  | start no earlier than 2026-06-12 | Sector 43 | 9698436 |
| 2532 | 37300.37600.38600.40000.42500.43300.53900.1264000 | Block Work | 36d | 2026-06-12 | 2026-07-17 | 2191 |  | Sector 43 | 9723426 |
| 2533 | 37300.37600.38600.40000.42500.43300.53900.1264100 | Installation of temporary Main door | 4d | 2026-07-18 | 2026-07-21 | 2532 |  | Sector 43 | 9723436 |
| 2534 | 37300.37600.38600.40000.42500.43300.53900.1264200 | Fire sprinkler pipe fixing | 10d | 2026-07-29 | 2026-08-07 | 2517, 2532 |  | Sector 43 | 9723446 |
| 2535 | 37300.37600.38600.40000.42500.43300.53900.1264300 | Internal Plumbing Works | 15d | 2026-07-18 | 2026-08-01 | 2532 |  | Sector 43 | 9723456 |
| 2536 | 37300.37600.38600.40000.42500.43300.53900.1264400 | Waterproofing | 21d | 2026-08-02 | 2026-08-22 | 2535 |  | Sector 43 | 9723466 |
| 2537 | 37300.37600.38600.40000.42500.43300.53900.1264500 | Internal Plaster | 15d | 2026-08-02 | 2026-08-16 | 2535 |  | Sector 43 | 9723476 |
| 2538 | 37300.37600.38600.40000.42500.43300.53900.1264600 | IPS flooring work | 13d | 2026-07-18 | 2026-07-30 | 2532 |  | Sector 43 | 9723486 |
| 2539 | 37300.37600.38600.40000.42500.43300.53900.1264700 | Toilet dado work | 25d | 2026-08-21 | 2026-09-14 | 2536FS-2d, 2537 |  | Sector 43 | 9723496 |
| 2540 | 37300.37600.38600.40000.42500.43300.53900.1264800 | Toilet flooring work | 25d | 2026-09-15 | 2026-10-09 | 2539 |  | Sector 43 | 9723506 |
| 2541 | 37300.37600.38600.40000.42500.43300.53900.1264900 | Living dinning flooring | 31d | 2026-09-20 | 2026-10-20 | 2540FS-20d |  | Sector 43 | 9723516 |
| 2542 | 37300.37600.38600.40000.42500.43300.53900.1265000 | Electrical wiring work | 12d | 2026-10-11 | 2026-10-22 | 2538, 2541FS-10d |  | Sector 43 | 9723526 |
| 2543 | 37300.37600.38600.40000.42500.43300.53900.1265100 | Aluminium door-window fixing | 19d | 2026-10-15 | 2026-12-17 | 2533, 2542FS-8d |  | Sector 43 | 9723536 |
| 2544 | 37300.37600.38600.40000.42500.43300.53900.1265200 | Putty primer coat | 10d | 2026-10-26 | 2026-12-19 | 2543FS-8d |  | Sector 43 | 9723546 |
| 2545 | 37300.37600.38600.40000.42500.43300.53900.1265300 | Prehung door fixing | 8d | 2026-10-31 | 2026-12-22 | 2544FS-5d |  | Sector 43 | 9723556 |
| 2546 | 37300.37600.38600.40000.42500.43300.53900.1265400 | Painting 1st coat | 12d | 2026-12-23 | 2027-01-03 | 2545 |  | Sector 43 | 9723566 |
| 2547 | 37300.37600.38600.40000.42500.43300.53900.1265500 | False Cieling panel fixing | 10d | 2027-01-15 | 2027-01-24 | 2530, 2546 |  | Sector 43 | 9723576 |

| ID | WBS | Task | Duration | Start | Finish | Predecessors | Constraint | Calendar | Unique_Task_ID |
| --- | --- | --- | --- | --- | --- | --- | --- | --- | --- |
| 2548 | 37300.37600.38600.40000.42500.43300.53800 | **21st floor** | 184d | 2026-06-20 | 2027-02-03 |  | start no earlier than 2026-06-20 | Sector 43 | 9698446 |
| 2549 | 37300.37600.38600.40000.42500.43300.53800.1265600 | Block Work | 36d | 2026-06-20 | 2026-07-25 | 2192 |  | Sector 43 | 9723586 |
| 2550 | 37300.37600.38600.40000.42500.43300.53800.1265700 | Installation of temporary Main door | 4d | 2026-07-26 | 2026-07-29 | 2549 |  | Sector 43 | 9723596 |
| 2551 | 37300.37600.38600.40000.42500.43300.53800.1265800 | Fire sprinkler pipe fixing | 10d | 2026-08-08 | 2026-08-17 | 2534, 2549 |  | Sector 43 | 9723606 |
| 2552 | 37300.37600.38600.40000.42500.43300.53800.1265900 | Internal Plumbing Works | 15d | 2026-07-26 | 2026-08-09 | 2549 |  | Sector 43 | 9723616 |
| 2553 | 37300.37600.38600.40000.42500.43300.53800.1266000 | Waterproofing | 21d | 2026-08-10 | 2026-08-30 | 2552 |  | Sector 43 | 9723626 |
| 2554 | 37300.37600.38600.40000.42500.43300.53800.1266100 | Internal Plaster | 15d | 2026-08-10 | 2026-08-24 | 2552 |  | Sector 43 | 9723636 |
| 2555 | 37300.37600.38600.40000.42500.43300.53800.1266200 | IPS flooring work | 13d | 2026-07-26 | 2026-08-07 | 2549 |  | Sector 43 | 9723646 |
| 2556 | 37300.37600.38600.40000.42500.43300.53800.1266300 | Toilet dado work | 25d | 2026-08-29 | 2026-09-22 | 2553FS-2d, 2554 |  | Sector 43 | 9723656 |
| 2557 | 37300.37600.38600.40000.42500.43300.53800.1266400 | Toilet flooring work | 25d | 2026-09-23 | 2026-10-17 | 2556 |  | Sector 43 | 9723666 |
| 2558 | 37300.37600.38600.40000.42500.43300.53800.1266500 | Living dinning flooring | 31d | 2026-09-28 | 2026-10-28 | 2555, 2557FS-20d |  | Sector 43 | 9723676 |
| 2559 | 37300.37600.38600.40000.42500.43300.53800.1266600 | Electrical wiring work | 12d | 2026-10-19 | 2026-10-30 | 2558FS-10d |  | Sector 43 | 9723686 |
| 2560 | 37300.37600.38600.40000.42500.43300.53800.1266700 | Aluminium door-window fixing | 19d | 2026-10-23 | 2026-12-25 | 2550, 2559FS-8d |  | Sector 43 | 9723696 |
| 2561 | 37300.37600.38600.40000.42500.43300.53800.1266800 | Putty primer coat | 10d | 2026-12-18 | 2026-12-27 | 2560FS-8d |  | Sector 43 | 9723706 |
| 2562 | 37300.37600.38600.40000.42500.43300.53800.1266900 | Prehung door fixing | 8d | 2026-12-23 | 2026-12-30 | 2561FS-5d |  | Sector 43 | 9723716 |
| 2563 | 37300.37600.38600.40000.42500.43300.53800.1267000 | Painting 1st coat | 12d | 2026-12-31 | 2027-01-11 | 2562 |  | Sector 43 | 9723726 |
| 2564 | 37300.37600.38600.40000.42500.43300.53800.1267100 | False Cieling panel fixing | 10d | 2027-01-25 | 2027-02-03 | 2547, 2563 |  | Sector 43 | 9723736 |
| 2565 | 37300.37600.38600.40000.42500.43300.53700 | **22nd floor** | 182d | 2026-07-02 | 2027-02-13 |  | start no earlier than 2026-07-02 | Sector 43 | 9698456 |
| 2566 | 37300.37600.38600.40000.42500.43300.53700.1267200 | Block Work | 36d | 2026-07-02 | 2026-08-06 | 2193 |  | Sector 43 | 9723746 |
| 2567 | 37300.37600.38600.40000.42500.43300.53700.1267300 | Installation of temporary Main door | 4d | 2026-08-07 | 2026-08-10 | 2566 |  | Sector 43 | 9723756 |
| 2568 | 37300.37600.38600.40000.42500.43300.53700.1267400 | Fire sprinkler pipe fixing | 10d | 2026-08-18 | 2026-08-27 | 2551, 2566 |  | Sector 43 | 9723766 |
| 2569 | 37300.37600.38600.40000.42500.43300.53700.1267500 | Internal Plumbing Works | 15d | 2026-08-07 | 2026-08-21 | 2566 |  | Sector 43 | 9723776 |
| 2570 | 37300.37600.38600.40000.42500.43300.53700.1267600 | Waterproofing | 21d | 2026-08-22 | 2026-09-11 | 2569 |  | Sector 43 | 9723786 |
| 2571 | 37300.37600.38600.40000.42500.43300.53700.1267700 | Internal Plaster | 15d | 2026-08-22 | 2026-09-05 | 2569 |  | Sector 43 | 9723796 |
| 2572 | 37300.37600.38600.40000.42500.43300.53700.1267800 | IPS flooring work | 13d | 2026-08-07 | 2026-08-19 | 2566 |  | Sector 43 | 9723806 |
| 2573 | 37300.37600.38600.40000.42500.43300.53700.1267900 | Toilet dado work | 25d | 2026-09-10 | 2026-10-04 | 2570FS-2d, 2571 |  | Sector 43 | 9723816 |
| 2574 | 37300.37600.38600.40000.42500.43300.53700.1268000 | Toilet flooring work | 25d | 2026-10-05 | 2026-10-29 | 2573 |  | Sector 43 | 9723826 |
| 2575 | 37300.37600.38600.40000.42500.43300.53700.1268100 | Living dinning flooring | 31d | 2026-10-10 | 2026-12-24 | 2572, 2574FS-20d |  | Sector 43 | 9723836 |
| 2576 | 37300.37600.38600.40000.42500.43300.53700.1268200 | Electrical wiring work | 12d | 2026-10-31 | 2026-12-26 | 2575FS-10d |  | Sector 43 | 9723846 |
| 2577 | 37300.37600.38600.40000.42500.43300.53700.1268300 | Aluminium door-window fixing | 19d | 2026-12-19 | 2027-01-06 | 2567, 2576FS-8d |  | Sector 43 | 9723856 |
| 2578 | 37300.37600.38600.40000.42500.43300.53700.1268400 | Putty primer coat | 10d | 2026-12-30 | 2027-01-08 | 2577FS-8d |  | Sector 43 | 9723866 |
| 2579 | 37300.37600.38600.40000.42500.43300.53700.1268500 | Prehung door fixing | 8d | 2027-01-04 | 2027-01-11 | 2578FS-5d |  | Sector 43 | 9723876 |
| 2580 | 37300.37600.38600.40000.42500.43300.53700.1268600 | Painting 1st coat | 12d | 2027-01-12 | 2027-01-23 | 2579 |  | Sector 43 | 9723886 |
| 2581 | 37300.37600.38600.40000.42500.43300.53700.1268700 | False Cieling panel fixing | 10d | 2027-02-04 | 2027-02-13 | 2564, 2580 |  | Sector 43 | 9723896 |

| ID | WBS | Task | Duration | Start | Finish | Predecessors | Constraint | Calendar | Unique_Task_ID |
| --- | --- | --- | --- | --- | --- | --- | --- | --- | --- |
| 2582 | 37300.37600.38600.40000.42500.43300.53500 | **23rd floor** | 184d | 2026-07-10 | 2027-02-23 |  | start no earlier than 2026-07-10 | Sector 43 | 9698466 |
| 2583 | 37300.37600.38600.40000.42500.43300.53500.1268800 | Block Work | 36d | 2026-07-10 | 2026-08-14 | 2194 |  | Sector 43 | 9723906 |
| 2584 | 37300.37600.38600.40000.42500.43300.53500.1268900 | Installation of temporary Main door | 4d | 2026-08-15 | 2026-08-18 | 2583 |  | Sector 43 | 9723916 |
| 2585 | 37300.37600.38600.40000.42500.43300.53500.1269000 | Fire sprinkler pipe fixing | 10d | 2026-08-28 | 2026-09-06 | 2568, 2583 |  | Sector 43 | 9723926 |
| 2586 | 37300.37600.38600.40000.42500.43300.53500.1269100 | Internal Plumbing Works | 15d | 2026-08-15 | 2026-08-29 | 2583 |  | Sector 43 | 9723936 |
| 2587 | 37300.37600.38600.40000.42500.43300.53500.1269200 | Waterproofing | 21d | 2026-08-30 | 2026-09-19 | 2586 |  | Sector 43 | 9723946 |
| 2588 | 37300.37600.38600.40000.42500.43300.53500.1269300 | Internal Plaster | 15d | 2026-08-30 | 2026-09-13 | 2586 |  | Sector 43 | 9723956 |
| 2589 | 37300.37600.38600.40000.42500.43300.53500.1269400 | IPS flooring work | 13d | 2026-08-15 | 2026-08-27 | 2583 |  | Sector 43 | 9723966 |
| 2590 | 37300.37600.38600.40000.42500.43300.53500.1269500 | Toilet dado work | 25d | 2026-09-18 | 2026-10-12 | 2587FS-2d, 2588 |  | Sector 43 | 9723976 |
| 2591 | 37300.37600.38600.40000.42500.43300.53500.1269600 | Toilet flooring work | 25d | 2026-10-13 | 2026-12-21 | 2590 |  | Sector 43 | 9723986 |
| 2592 | 37300.37600.38600.40000.42500.43300.53500.1269700 | Living dinning flooring | 31d | 2026-10-18 | 2027-01-01 | 2589, 2591FS-20d |  | Sector 43 | 9723996 |
| 2593 | 37300.37600.38600.40000.42500.43300.53500.1269800 | Electrical wiring work | 12d | 2026-12-23 | 2027-01-03 | 2592FS-10d |  | Sector 43 | 9724006 |
| 2594 | 37300.37600.38600.40000.42500.43300.53500.1269900 | Aluminium door-window fixing | 19d | 2026-12-27 | 2027-01-14 | 2584, 2593FS-8d |  | Sector 43 | 9724016 |
| 2595 | 37300.37600.38600.40000.42500.43300.53500.1270000 | Putty primer coat | 10d | 2027-01-07 | 2027-01-16 | 2594FS-8d |  | Sector 43 | 9724026 |
| 2596 | 37300.37600.38600.40000.42500.43300.53500.1270100 | Prehung door fixing | 8d | 2027-01-12 | 2027-01-19 | 2595FS-5d |  | Sector 43 | 9724036 |
| 2597 | 37300.37600.38600.40000.42500.43300.53500.1270200 | Painting 1st coat | 12d | 2027-01-20 | 2027-01-31 | 2596 |  | Sector 43 | 9724046 |
| 2598 | 37300.37600.38600.40000.42500.43300.53500.1270300 | False Cieling panel fixing | 10d | 2027-02-14 | 2027-02-23 | 2581, 2597 |  | Sector 43 | 9724056 |
| 2599 | 37300.37600.38600.40000.42500.43300.53400 | **24th floor** | 186d | 2026-07-18 | 2027-03-05 |  | start no earlier than 2026-07-18 | Sector 43 | 9698476 |
| 2600 | 37300.37600.38600.40000.42500.43300.53400.1270400 | Block Work | 36d | 2026-07-18 | 2026-08-22 | 2195 |  | Sector 43 | 9724066 |
| 2601 | 37300.37600.38600.40000.42500.43300.53400.1270500 | Installation of temporary Main door | 4d | 2026-08-23 | 2026-08-26 | 2600 |  | Sector 43 | 9724076 |
| 2602 | 37300.37600.38600.40000.42500.43300.53400.1270600 | Fire sprinkler pipe fixing | 10d | 2026-09-07 | 2026-09-16 | 2585, 2600 |  | Sector 43 | 9724086 |
| 2603 | 37300.37600.38600.40000.42500.43300.53400.1270700 | Internal Plumbing Works | 15d | 2026-08-23 | 2026-09-06 | 2600 |  | Sector 43 | 9724096 |
| 2604 | 37300.37600.38600.40000.42500.43300.53400.1270800 | Waterproofing | 21d | 2026-09-07 | 2026-09-27 | 2603 |  | Sector 43 | 9724106 |
| 2605 | 37300.37600.38600.40000.42500.43300.53400.1270900 | Internal Plaster | 15d | 2026-09-07 | 2026-09-21 | 2603 |  | Sector 43 | 9724116 |
| 2606 | 37300.37600.38600.40000.42500.43300.53400.1271000 | IPS flooring work | 13d | 2026-08-23 | 2026-09-04 | 2600 |  | Sector 43 | 9724126 |
| 2607 | 37300.37600.38600.40000.42500.43300.53400.1271100 | Toilet dado work | 25d | 2026-09-26 | 2026-10-20 | 2604FS-2d, 2605 |  | Sector 43 | 9724136 |
| 2608 | 37300.37600.38600.40000.42500.43300.53400.1271200 | Toilet flooring work | 25d | 2026-10-21 | 2026-12-29 | 2607 |  | Sector 43 | 9724146 |
| 2609 | 37300.37600.38600.40000.42500.43300.53400.1271300 | Living dinning flooring | 31d | 2026-10-26 | 2027-01-09 | 2606, 2608FS-20d |  | Sector 43 | 9724156 |
| 2610 | 37300.37600.38600.40000.42500.43300.53400.1271400 | Electrical wiring work | 12d | 2026-12-31 | 2027-01-11 | 2609FS-10d |  | Sector 43 | 9724166 |
| 2611 | 37300.37600.38600.40000.42500.43300.53400.1271500 | Aluminium door-window fixing | 19d | 2027-01-04 | 2027-01-22 | 2601, 2610FS-8d |  | Sector 43 | 9724176 |
| 2612 | 37300.37600.38600.40000.42500.43300.53400.1271600 | Putty primer coat | 10d | 2027-01-15 | 2027-01-24 | 2611FS-8d |  | Sector 43 | 9724186 |
| 2613 | 37300.37600.38600.40000.42500.43300.53400.1271700 | Prehung door fixing | 8d | 2027-01-20 | 2027-01-27 | 2612FS-5d |  | Sector 43 | 9724196 |
| 2614 | 37300.37600.38600.40000.42500.43300.53400.1271800 | Painting 1st coat | 12d | 2027-01-28 | 2027-02-08 | 2613 |  | Sector 43 | 9724206 |
| 2615 | 37300.37600.38600.40000.42500.43300.53400.1271900 | False Cieling panel fixing | 10d | 2027-02-24 | 2027-03-05 | 2598, 2614 |  | Sector 43 | 9724216 |

| ID | WBS | Task | Duration | Start | Finish | Predecessors | Constraint | Calendar | Unique_Task_ID |
| --- | --- | --- | --- | --- | --- | --- | --- | --- | --- |
| 2616 | 37300.37600.38600.40000.42500.43300.53300 | **25th floor** | 188d | 2026-07-26 | 2027-03-15 |  | start no earlier than 2026-07-26 | Sector 43 | 9698486 |
| 2617 | 37300.37600.38600.40000.42500.43300.53300.1272000 | Block Work | 36d | 2026-07-26 | 2026-08-30 | 2196 |  | Sector 43 | 9724226 |
| 2618 | 37300.37600.38600.40000.42500.43300.53300.1272100 | Installation of temporary Main door | 4d | 2026-08-31 | 2026-09-03 | 2617 |  | Sector 43 | 9724236 |
| 2619 | 37300.37600.38600.40000.42500.43300.53300.1272200 | Fire sprinkler pipe fixing | 10d | 2026-09-17 | 2026-09-26 | 2602, 2617 |  | Sector 43 | 9724246 |
| 2620 | 37300.37600.38600.40000.42500.43300.53300.1272300 | Internal Plumbing Works | 15d | 2026-08-31 | 2026-09-14 | 2617 |  | Sector 43 | 9724256 |
| 2621 | 37300.37600.38600.40000.42500.43300.53300.1272400 | Waterproofing | 21d | 2026-09-15 | 2026-10-05 | 2620 |  | Sector 43 | 9724266 |
| 2622 | 37300.37600.38600.40000.42500.43300.53300.1272500 | Internal Plaster | 15d | 2026-09-15 | 2026-09-29 | 2620 |  | Sector 43 | 9724276 |
| 2623 | 37300.37600.38600.40000.42500.43300.53300.1272600 | IPS flooring work | 13d | 2026-08-31 | 2026-09-12 | 2617 |  | Sector 43 | 9724286 |
| 2624 | 37300.37600.38600.40000.42500.43300.53300.1272700 | Toilet dado work | 25d | 2026-10-04 | 2026-10-28 | 2621FS-2d, 2622 |  | Sector 43 | 9724296 |
| 2625 | 37300.37600.38600.40000.42500.43300.53300.1272800 | Toilet flooring work | 25d | 2026-10-29 | 2027-01-06 | 2624 |  | Sector 43 | 9724306 |
| 2626 | 37300.37600.38600.40000.42500.43300.53300.1272900 | Living dinning flooring | 31d | 2026-12-18 | 2027-01-17 | 2623, 2625FS-20d |  | Sector 43 | 9724316 |
| 2627 | 37300.37600.38600.40000.42500.43300.53300.1273000 | Electrical wiring work | 12d | 2027-01-08 | 2027-01-19 | 2626FS-10d |  | Sector 43 | 9724326 |
| 2628 | 37300.37600.38600.40000.42500.43300.53300.1273100 | Aluminium door-window fixing | 19d | 2027-01-12 | 2027-01-30 | 2618, 2627FS-8d |  | Sector 43 | 9724336 |
| 2629 | 37300.37600.38600.40000.42500.43300.53300.1273200 | Putty primer coat | 10d | 2027-01-23 | 2027-02-01 | 2628FS-8d |  | Sector 43 | 9724346 |
| 2630 | 37300.37600.38600.40000.42500.43300.53300.1273300 | Prehung door fixing | 8d | 2027-01-28 | 2027-02-04 | 2629FS-5d |  | Sector 43 | 9724356 |
| 2631 | 37300.37600.38600.40000.42500.43300.53300.1273400 | Painting 1st coat | 12d | 2027-02-05 | 2027-02-16 | 2630 |  | Sector 43 | 9724366 |
| 2632 | 37300.37600.38600.40000.42500.43300.53300.1273500 | False Cieling panel fixing | 10d | 2027-03-06 | 2027-03-15 | 2615, 2631 |  | Sector 43 | 9724376 |
| 2633 | 37300.37600.38600.40000.42500.43300.53200 | **26th floor** | 190d | 2026-08-03 | 2027-03-25 |  | start no earlier than 2026-08-03 | Sector 43 | 9698496 |
| 2634 | 37300.37600.38600.40000.42500.43300.53200.1273600 | Block Work | 36d | 2026-08-03 | 2026-09-07 | 2197 |  | Sector 43 | 9724386 |
| 2635 | 37300.37600.38600.40000.42500.43300.53200.1273700 | Installation of temporary Main door | 4d | 2026-09-08 | 2026-09-11 | 2634 |  | Sector 43 | 9724396 |
| 2636 | 37300.37600.38600.40000.42500.43300.53200.1273800 | Fire sprinkler pipe fixing | 10d | 2026-09-27 | 2026-10-06 | 2619, 2634 |  | Sector 43 | 9724406 |
| 2637 | 37300.37600.38600.40000.42500.43300.53200.1273900 | Internal Plumbing Works | 15d | 2026-09-08 | 2026-09-22 | 2634 |  | Sector 43 | 9724416 |
| 2638 | 37300.37600.38600.40000.42500.43300.53200.1274000 | Waterproofing | 21d | 2026-09-23 | 2026-10-13 | 2637 |  | Sector 43 | 9724426 |
| 2639 | 37300.37600.38600.40000.42500.43300.53200.1274100 | Internal Plaster | 15d | 2026-09-23 | 2026-10-07 | 2637 |  | Sector 43 | 9724436 |
| 2640 | 37300.37600.38600.40000.42500.43300.53200.1274200 | IPS flooring work | 13d | 2026-09-08 | 2026-09-20 | 2634 |  | Sector 43 | 9724446 |
| 2641 | 37300.37600.38600.40000.42500.43300.53200.1274300 | Toilet dado work | 25d | 2026-10-12 | 2026-12-20 | 2638FS-2d, 2639 |  | Sector 43 | 9724456 |
| 2642 | 37300.37600.38600.40000.42500.43300.53200.1274400 | Toilet flooring work | 25d | 2026-12-21 | 2027-01-14 | 2641 |  | Sector 43 | 9724466 |
| 2643 | 37300.37600.38600.40000.42500.43300.53200.1274500 | Living dinning flooring | 31d | 2026-12-26 | 2027-01-25 | 2640, 2642FS-20d |  | Sector 43 | 9724476 |
| 2644 | 37300.37600.38600.40000.42500.43300.53200.1274600 | Electrical wiring work | 12d | 2027-01-16 | 2027-01-27 | 2643FS-10d |  | Sector 43 | 9724486 |
| 2645 | 37300.37600.38600.40000.42500.43300.53200.1274700 | Aluminium door-window fixing | 19d | 2027-01-20 | 2027-02-07 | 2635, 2644FS-8d |  | Sector 43 | 9724496 |
| 2646 | 37300.37600.38600.40000.42500.43300.53200.1274800 | Putty primer coat | 10d | 2027-01-31 | 2027-02-09 | 2645FS-8d |  | Sector 43 | 9724506 |
| 2647 | 37300.37600.38600.40000.42500.43300.53200.1274900 | Prehung door fixing | 8d | 2027-02-05 | 2027-02-12 | 2646FS-5d |  | Sector 43 | 9724516 |
| 2648 | 37300.37600.38600.40000.42500.43300.53200.1275000 | Painting 1st coat | 12d | 2027-02-13 | 2027-02-24 | 2647 |  | Sector 43 | 9724526 |
| 2649 | 37300.37600.38600.40000.42500.43300.53200.1275100 | False Cieling panel fixing | 10d | 2027-03-16 | 2027-03-25 | 2632, 2648 |  | Sector 43 | 9724536 |

| ID | WBS | Task | Duration | Start | Finish | Predecessors | Constraint | Calendar | Unique_Task_ID |
| --- | --- | --- | --- | --- | --- | --- | --- | --- | --- |
| 2650 | 37300.37600.38600.40000.42500.43300.53100 | **27th floor** | 192d | 2026-08-11 | 2027-04-04 |  | start no earlier than 2026-08-11 | Sector 43 | 9698506 |
| 2651 | 37300.37600.38600.40000.42500.43300.53100.1275200 | Block Work | 36d | 2026-08-11 | 2026-09-15 | 2198 |  | Sector 43 | 9724546 |
| 2652 | 37300.37600.38600.40000.42500.43300.53100.1275300 | Installation of temporary Main door | 4d | 2026-09-16 | 2026-09-19 | 2651 |  | Sector 43 | 9724556 |
| 2653 | 37300.37600.38600.40000.42500.43300.53100.1275400 | Fire sprinkler pipe fixing | 10d | 2026-10-07 | 2026-10-16 | 2636, 2651 |  | Sector 43 | 9724566 |
| 2654 | 37300.37600.38600.40000.42500.43300.53100.1275500 | Internal Plumbing Works | 15d | 2026-09-16 | 2026-09-30 | 2651 |  | Sector 43 | 9724576 |
| 2655 | 37300.37600.38600.40000.42500.43300.53100.1275600 | Waterproofing | 21d | 2026-10-01 | 2026-10-21 | 2654 |  | Sector 43 | 9724586 |
| 2656 | 37300.37600.38600.40000.42500.43300.53100.1275700 | Internal Plaster | 15d | 2026-10-01 | 2026-10-15 | 2654 |  | Sector 43 | 9724596 |
| 2657 | 37300.37600.38600.40000.42500.43300.53100.1275800 | IPS flooring work | 13d | 2026-09-16 | 2026-09-28 | 2651 |  | Sector 43 | 9724606 |
| 2658 | 37300.37600.38600.40000.42500.43300.53100.1275900 | Toilet dado work | 25d | 2026-10-20 | 2026-12-28 | 2655FS-2d, 2656 |  | Sector 43 | 9724616 |
| 2659 | 37300.37600.38600.40000.42500.43300.53100.1276000 | Toilet flooring work | 25d | 2026-12-29 | 2027-01-22 | 2658 |  | Sector 43 | 9724626 |
| 2660 | 37300.37600.38600.40000.42500.43300.53100.1276100 | Living dinning flooring | 31d | 2027-01-03 | 2027-02-02 | 2657, 2659FS-20d |  | Sector 43 | 9724636 |
| 2661 | 37300.37600.38600.40000.42500.43300.53100.1276200 | Electrical wiring work | 12d | 2027-01-24 | 2027-02-04 | 2660FS-10d |  | Sector 43 | 9724646 |
| 2662 | 37300.37600.38600.40000.42500.43300.53100.1276300 | Aluminium door-window fixing | 19d | 2027-01-28 | 2027-02-15 | 2652, 2661FS-8d |  | Sector 43 | 9724656 |
| 2663 | 37300.37600.38600.40000.42500.43300.53100.1276400 | Putty primer coat | 10d | 2027-02-08 | 2027-02-17 | 2662FS-8d |  | Sector 43 | 9724666 |
| 2664 | 37300.37600.38600.40000.42500.43300.53100.1276500 | Prehung door fixing | 8d | 2027-02-13 | 2027-02-20 | 2663FS-5d |  | Sector 43 | 9724676 |
| 2665 | 37300.37600.38600.40000.42500.43300.53100.1276600 | Painting 1st coat | 12d | 2027-02-21 | 2027-03-04 | 2664 |  | Sector 43 | 9724686 |
| 2666 | 37300.37600.38600.40000.42500.43300.53100.1276700 | False Cieling panel fixing | 10d | 2027-03-26 | 2027-04-04 | 2649, 2665 |  | Sector 43 | 9724696 |
| 2667 | 37300.37600.38600.40000.42500.43300.53000 | **28th floor** | 206d | 2026-08-21 | 2027-04-28 |  | start no earlier than 2026-08-21 | Sector 43 | 9698516 |
| 2668 | 37300.37600.38600.40000.42500.43300.53000.1276800 | Block Work | 36d | 2026-08-21 | 2026-09-25 | 2199 |  | Sector 43 | 9724706 |
| 2669 | 37300.37600.38600.40000.42500.43300.53000.1276900 | Installation of temporary Main door | 4d | 2026-09-26 | 2026-09-29 | 2668 |  | Sector 43 | 9724716 |
| 2670 | 37300.37600.38600.40000.42500.43300.53000.1277000 | Fire sprinkler pipe fixing | 10d | 2026-10-17 | 2026-10-26 | 2653, 2668 |  | Sector 43 | 9724726 |
| 2671 | 37300.37600.38600.40000.42500.43300.53000.1277100 | Internal Plumbing Works | 15d | 2026-09-26 | 2026-10-10 | 2668 |  | Sector 43 | 9724736 |
| 2672 | 37300.37600.38600.40000.42500.43300.53000.1277200 | Waterproofing | 21d | 2026-10-11 | 2026-10-31 | 2671 |  | Sector 43 | 9724746 |
| 2673 | 37300.37600.38600.40000.42500.43300.53000.1277300 | Internal Plaster | 15d | 2026-10-11 | 2026-10-25 | 2671 |  | Sector 43 | 9724756 |
| 2674 | 37300.37600.38600.40000.42500.43300.53000.1277400 | IPS flooring work | 13d | 2026-09-26 | 2026-10-08 | 2668 |  | Sector 43 | 9724766 |
| 2675 | 37300.37600.38600.40000.42500.43300.53000.1277500 | Toilet dado work | 60d | 2026-10-30 | 2027-02-11 | 2672FS-2d, 2673 |  | Sector 43 | 9724776 |
| 2676 | 37300.37600.38600.40000.42500.43300.53000.1277600 | Toilet flooring work | 25d | 2027-02-12 | 2027-03-08 | 2675 |  | Sector 43 | 9724786 |
| 2677 | 37300.37600.38600.40000.42500.43300.53000.1277700 | Living dinning flooring | 31d | 2027-02-17 | 2027-03-19 | 2674, 2676FS-20d |  | Sector 43 | 9724796 |
| 2678 | 37300.37600.38600.40000.42500.43300.53000.1277800 | Electrical wiring work | 12d | 2027-03-10 | 2027-03-21 | 2677FS-10d |  | Sector 43 | 9724806 |
| 2679 | 37300.37600.38600.40000.42500.43300.53000.1277900 | Aluminium door-window fixing | 19d | 2027-03-14 | 2027-04-01 | 2669, 2678FS-8d |  | Sector 43 | 9724816 |
| 2680 | 37300.37600.38600.40000.42500.43300.53000.1278000 | Putty primer coat | 10d | 2027-03-25 | 2027-04-03 | 2679FS-8d |  | Sector 43 | 9724826 |
| 2681 | 37300.37600.38600.40000.42500.43300.53000.1278100 | Prehung door fixing | 8d | 2027-03-30 | 2027-04-06 | 2680FS-5d |  | Sector 43 | 9724836 |
| 2682 | 37300.37600.38600.40000.42500.43300.53000.1278200 | Painting 1st coat | 12d | 2027-04-07 | 2027-04-18 | 2681 |  | Sector 43 | 9724846 |
| 2683 | 37300.37600.38600.40000.42500.43300.53000.1278300 | False Cieling panel fixing | 10d | 2027-04-19 | 2027-04-28 | 2666, 2682 |  | Sector 43 | 9724856 |

| ID | WBS | Task | Duration | Start | Finish | Predecessors | Constraint | Calendar | Unique_Task_ID |
| --- | --- | --- | --- | --- | --- | --- | --- | --- | --- |
| 2684 | 37300.37600.38600.40000.42500.43300.52900 | **29th floor** | 206d | 2026-08-31 | 2027-05-08 |  | start no earlier than 2026-08-31 | Sector 43 | 9698526 |
| 2685 | 37300.37600.38600.40000.42500.43300.52900.1278400 | Block Work | 36d | 2026-08-31 | 2026-10-05 | 2200 |  | Sector 43 | 9724866 |
| 2686 | 37300.37600.38600.40000.42500.43300.52900.1278500 | Installation of temporary Main door | 4d | 2026-10-06 | 2026-10-09 | 2685 |  | Sector 43 | 9724876 |
| 2687 | 37300.37600.38600.40000.42500.43300.52900.1278600 | Fire sprinkler pipe fixing | 10d | 2026-10-27 | 2026-12-20 | 2670, 2685 |  | Sector 43 | 9724886 |
| 2688 | 37300.37600.38600.40000.42500.43300.52900.1278700 | Internal Plumbing Works | 15d | 2026-10-06 | 2026-10-20 | 2685 |  | Sector 43 | 9724896 |
| 2689 | 37300.37600.38600.40000.42500.43300.52900.1278800 | Waterproofing | 21d | 2026-10-21 | 2026-12-25 | 2688 |  | Sector 43 | 9724906 |
| 2690 | 37300.37600.38600.40000.42500.43300.52900.1278900 | Internal Plaster | 15d | 2026-10-21 | 2026-12-19 | 2688 |  | Sector 43 | 9724916 |
| 2691 | 37300.37600.38600.40000.42500.43300.52900.1279000 | IPS flooring work | 13d | 2026-10-06 | 2026-10-18 | 2685 |  | Sector 43 | 9724926 |
| 2692 | 37300.37600.38600.40000.42500.43300.52900.1279100 | Toilet dado work | 25d | 2026-12-24 | 2027-01-17 | 2689FS-2d, 2690 |  | Sector 43 | 9724936 |
| 2693 | 37300.37600.38600.40000.42500.43300.52900.1279200 | Toilet flooring work | 25d | 2027-01-18 | 2027-02-11 | 2692 |  | Sector 43 | 9724946 |
| 2694 | 37300.37600.38600.40000.42500.43300.52900.1279300 | Living dinning flooring | 31d | 2027-01-23 | 2027-02-22 | 2691, 2693FS-20d |  | Sector 43 | 9724956 |
| 2695 | 37300.37600.38600.40000.42500.43300.52900.1279400 | Electrical wiring work | 12d | 2027-02-13 | 2027-02-24 | 2694FS-10d |  | Sector 43 | 9724966 |
| 2696 | 37300.37600.38600.40000.42500.43300.52900.1279500 | Aluminium door-window fixing | 19d | 2027-02-17 | 2027-03-07 | 2686, 2695FS-8d |  | Sector 43 | 9724976 |
| 2697 | 37300.37600.38600.40000.42500.43300.52900.1279600 | Putty primer coat | 10d | 2027-02-28 | 2027-03-09 | 2696FS-8d |  | Sector 43 | 9724986 |
| 2698 | 37300.37600.38600.40000.42500.43300.52900.1279700 | Prehung door fixing | 8d | 2027-03-05 | 2027-03-12 | 2697FS-5d |  | Sector 43 | 9724996 |
| 2699 | 37300.37600.38600.40000.42500.43300.52900.1279800 | Painting 1st coat | 12d | 2027-03-13 | 2027-03-24 | 2698 |  | Sector 43 | 9725006 |
| 2700 | 37300.37600.38600.40000.42500.43300.52900.1279900 | False Cieling panel fixing | 10d | 2027-04-29 | 2027-05-08 | 2683, 2699 |  | Sector 43 | 9725016 |
| 2701 | 37300.37600.38600.40000.42500.43300.52800 | **30th floor** | 209d | 2026-09-07 | 2027-05-18 |  | start no earlier than 2026-09-07 | Sector 43 | 9698536 |
| 2702 | 37300.37600.38600.40000.42500.43300.52800.1280000 | Block Work | 36d | 2026-09-07 | 2026-10-12 | 2201 |  | Sector 43 | 9725026 |
| 2703 | 37300.37600.38600.40000.42500.43300.52800.1280100 | Installation of temporary Main door | 4d | 2026-10-13 | 2026-10-16 | 2702 |  | Sector 43 | 9725036 |
| 2704 | 37300.37600.38600.40000.42500.43300.52800.1280200 | Fire sprinkler pipe fixing | 10d | 2026-12-21 | 2026-12-30 | 2687, 2702 |  | Sector 43 | 9725046 |
| 2705 | 37300.37600.38600.40000.42500.43300.52800.1280300 | Internal Plumbing Works | 15d | 2026-10-13 | 2026-10-27 | 2702 |  | Sector 43 | 9725056 |
| 2706 | 37300.37600.38600.40000.42500.43300.52800.1280400 | Waterproofing | 21d | 2026-10-28 | 2027-01-01 | 2705 |  | Sector 43 | 9725066 |
| 2707 | 37300.37600.38600.40000.42500.43300.52800.1280500 | Internal Plaster | 15d | 2026-10-28 | 2026-12-26 | 2705 |  | Sector 43 | 9725076 |
| 2708 | 37300.37600.38600.40000.42500.43300.52800.1280600 | IPS flooring work | 13d | 2026-10-13 | 2026-10-25 | 2702 |  | Sector 43 | 9725086 |
| 2709 | 37300.37600.38600.40000.42500.43300.52800.1280700 | Toilet dado work | 25d | 2026-12-31 | 2027-01-24 | 2706FS-2d, 2707 |  | Sector 43 | 9725096 |
| 2710 | 37300.37600.38600.40000.42500.43300.52800.1280800 | Toilet flooring work | 25d | 2027-01-25 | 2027-02-18 | 2709 |  | Sector 43 | 9725106 |
| 2711 | 37300.37600.38600.40000.42500.43300.52800.1280900 | Living dinning flooring | 31d | 2027-01-30 | 2027-03-01 | 2708, 2710FS-20d |  | Sector 43 | 9725116 |
| 2712 | 37300.37600.38600.40000.42500.43300.52800.1281000 | Electrical wiring work | 12d | 2027-02-20 | 2027-03-03 | 2711FS-10d |  | Sector 43 | 9725126 |
| 2713 | 37300.37600.38600.40000.42500.43300.52800.1281100 | Aluminium door-window fixing | 19d | 2027-02-24 | 2027-03-14 | 2703, 2712FS-8d |  | Sector 43 | 9725136 |
| 2714 | 37300.37600.38600.40000.42500.43300.52800.1281200 | Putty primer coat | 10d | 2027-03-07 | 2027-03-16 | 2713FS-8d |  | Sector 43 | 9725146 |
| 2715 | 37300.37600.38600.40000.42500.43300.52800.1281300 | Prehung door fixing | 8d | 2027-03-12 | 2027-03-19 | 2714FS-5d |  | Sector 43 | 9725156 |
| 2716 | 37300.37600.38600.40000.42500.43300.52800.1281400 | Painting 1st coat | 12d | 2027-03-20 | 2027-03-31 | 2715 |  | Sector 43 | 9725166 |
| 2717 | 37300.37600.38600.40000.42500.43300.52800.1281500 | False Cieling panel fixing | 10d | 2027-05-09 | 2027-05-18 | 2700, 2716 |  | Sector 43 | 9725176 |

| ID | WBS | Task | Duration | Start | Finish | Predecessors | Constraint | Calendar | Unique_Task_ID |
| --- | --- | --- | --- | --- | --- | --- | --- | --- | --- |
| 2718 | 37300.37600.38600.40000.42500.43300.52700 | **31st floor** | 212d | 2026-09-14 | 2027-05-28 |  | start no earlier than 2026-09-14 | Sector 43 | 9698546 |
| 2719 | 37300.37600.38600.40000.42500.43300.52700.1281600 | Block Work | 36d | 2026-09-14 | 2026-10-19 | 2202 |  | Sector 43 | 9725186 |
| 2720 | 37300.37600.38600.40000.42500.43300.52700.1281700 | Installation of temporary Main door | 4d | 2026-10-20 | 2026-10-23 | 2719 |  | Sector 43 | 9725196 |
| 2721 | 37300.37600.38600.40000.42500.43300.52700.1281800 | Fire sprinkler pipe fixing | 10d | 2026-12-31 | 2027-01-09 | 2704, 2719 |  | Sector 43 | 9725206 |
| 2722 | 37300.37600.38600.40000.42500.43300.52700.1281900 | Internal Plumbing Works | 15d | 2026-10-20 | 2026-12-18 | 2719 |  | Sector 43 | 9725216 |
| 2723 | 37300.37600.38600.40000.42500.43300.52700.1282000 | Waterproofing | 21d | 2026-12-19 | 2027-01-08 | 2722 |  | Sector 43 | 9725226 |
| 2724 | 37300.37600.38600.40000.42500.43300.52700.1282100 | Internal Plaster | 15d | 2026-12-19 | 2027-01-02 | 2722 |  | Sector 43 | 9725236 |
| 2725 | 37300.37600.38600.40000.42500.43300.52700.1282200 | IPS flooring work | 13d | 2026-10-20 | 2026-12-16 | 2719 |  | Sector 43 | 9725246 |
| 2726 | 37300.37600.38600.40000.42500.43300.52700.1282300 | Toilet dado work | 25d | 2027-01-07 | 2027-01-31 | 2723FS-2d, 2724 |  | Sector 43 | 9725256 |
| 2727 | 37300.37600.38600.40000.42500.43300.52700.1282400 | Toilet flooring work | 25d | 2027-02-01 | 2027-02-25 | 2726 |  | Sector 43 | 9725266 |
| 2728 | 37300.37600.38600.40000.42500.43300.52700.1282500 | Living dinning flooring | 31d | 2027-02-06 | 2027-03-08 | 2725, 2727FS-20d |  | Sector 43 | 9725276 |
| 2729 | 37300.37600.38600.40000.42500.43300.52700.1282600 | Electrical wiring work | 12d | 2027-02-27 | 2027-03-10 | 2728FS-10d |  | Sector 43 | 9725286 |
| 2730 | 37300.37600.38600.40000.42500.43300.52700.1282700 | Aluminium door-window fixing | 19d | 2027-03-03 | 2027-03-21 | 2720, 2729FS-8d |  | Sector 43 | 9725296 |
| 2731 | 37300.37600.38600.40000.42500.43300.52700.1282800 | Putty primer coat | 10d | 2027-03-14 | 2027-03-23 | 2730FS-8d |  | Sector 43 | 9725306 |
| 2732 | 37300.37600.38600.40000.42500.43300.52700.1282900 | Prehung door fixing | 8d | 2027-03-19 | 2027-03-26 | 2731FS-5d |  | Sector 43 | 9725316 |
| 2733 | 37300.37600.38600.40000.42500.43300.52700.1283000 | Painting 1st coat | 12d | 2027-03-27 | 2027-04-07 | 2732 |  | Sector 43 | 9725326 |
| 2734 | 37300.37600.38600.40000.42500.43300.52700.1283100 | False Cieling panel fixing | 10d | 2027-05-19 | 2027-05-28 | 2717, 2733 |  | Sector 43 | 9725336 |
| 2735 | 37300.37600.38600.40000.42500.43300.52600 | **32nd floor** | 215d | 2026-09-21 | 2027-06-07 |  | start no earlier than 2026-09-21 | Sector 43 | 9698556 |
| 2736 | 37300.37600.38600.40000.42500.43300.52600.1283200 | Block Work | 37d | 2026-09-21 | 2026-10-27 | 2203 |  | Sector 43 | 9725346 |
| 2737 | 37300.37600.38600.40000.42500.43300.52600.1283300 | Installation of temporary Main door | 4d | 2026-10-28 | 2026-10-31 | 2736 |  | Sector 43 | 9725356 |
| 2738 | 37300.37600.38600.40000.42500.43300.52600.1283400 | Fire sprinkler pipe fixing | 10d | 2027-01-10 | 2027-01-19 | 2721, 2736 |  | Sector 43 | 9725366 |
| 2739 | 37300.37600.38600.40000.42500.43300.52600.1283500 | Internal Plumbing Works | 15d | 2026-10-28 | 2026-12-26 | 2736 |  | Sector 43 | 9725376 |
| 2740 | 37300.37600.38600.40000.42500.43300.52600.1283600 | Waterproofing | 21d | 2026-12-27 | 2027-01-16 | 2739 |  | Sector 43 | 9725386 |
| 2741 | 37300.37600.38600.40000.42500.43300.52600.1283700 | Internal Plaster | 15d | 2026-12-27 | 2027-01-10 | 2739 |  | Sector 43 | 9725396 |
| 2742 | 37300.37600.38600.40000.42500.43300.52600.1283800 | IPS flooring work | 13d | 2026-10-28 | 2026-12-24 | 2736 |  | Sector 43 | 9725406 |
| 2743 | 37300.37600.38600.40000.42500.43300.52600.1283900 | Toilet dado work | 25d | 2027-01-15 | 2027-02-08 | 2740FS-2d, 2741 |  | Sector 43 | 9725416 |
| 2744 | 37300.37600.38600.40000.42500.43300.52600.1284000 | Toilet flooring work | 25d | 2027-02-09 | 2027-03-05 | 2743 |  | Sector 43 | 9725426 |
| 2745 | 37300.37600.38600.40000.42500.43300.52600.1284100 | Living dinning flooring | 31d | 2027-02-14 | 2027-03-16 | 2742, 2744FS-20d |  | Sector 43 | 9725436 |
| 2746 | 37300.37600.38600.40000.42500.43300.52600.1284200 | Electrical wiring work | 12d | 2027-03-07 | 2027-03-18 | 2745FS-10d |  | Sector 43 | 9725446 |
| 2747 | 37300.37600.38600.40000.42500.43300.52600.1284300 | Aluminium door-window fixing | 19d | 2027-03-11 | 2027-03-29 | 2737, 2746FS-8d |  | Sector 43 | 9725456 |
| 2748 | 37300.37600.38600.40000.42500.43300.52600.1284400 | Putty primer coat | 10d | 2027-03-22 | 2027-03-31 | 2747FS-8d |  | Sector 43 | 9725466 |
| 2749 | 37300.37600.38600.40000.42500.43300.52600.1284500 | Prehung door fixing | 8d | 2027-03-27 | 2027-04-03 | 2748FS-5d |  | Sector 43 | 9725476 |
| 2750 | 37300.37600.38600.40000.42500.43300.52600.1284600 | Painting 1st coat | 12d | 2027-04-04 | 2027-04-15 | 2749 |  | Sector 43 | 9725486 |
| 2751 | 37300.37600.38600.40000.42500.43300.52600.1284700 | False Cieling panel fixing | 10d | 2027-05-29 | 2027-06-07 | 2734, 2750 |  | Sector 43 | 9725496 |

| ID | WBS | Task | Duration | Start | Finish | Predecessors | Constraint | Calendar | Unique_Task_ID |
| --- | --- | --- | --- | --- | --- | --- | --- | --- | --- |
| 2752 | 37300.37600.38600.40000.42500.224200 | **Terrace finishing** | 100d | 2027-05-14 | 2027-08-21 |  | start no earlier than 2027-05-14 | Sector 43 | 9700526 |
| 2753 | 37300.37600.38600.40000.42500.224200.874200 | Terrace waterproofing | 40d | 2027-05-14 | 2027-06-22 | 2837FS+10d, 2205 |  | Sector 43 | 9704606 |
| 2754 | 37300.37600.38600.40000.42500.224200.874300 | Terrace finishing | 60d | 2027-06-23 | 2027-08-21 | 2753 |  | Sector 43 | 9704616 |
| 2755 | 37300.37600.38600.40000.42500.116600 | **Common area finishing** | 274d | 2026-09-18 | 2027-08-02 |  | start no earlier than 2026-09-18 | Sector 43 | 9698626 |
| 2756 | 37300.37600.38600.40000.42500.116600.874400 | Masonary Work | 60d | 2026-09-18 | 2026-12-31 | 2165 |  | Sector 43 | 9704626 |
| 2757 | 37300.37600.38600.40000.42500.116600.874500 | Fire sprinkler pipe fixing | 90d | 2026-09-28 | 2027-02-09 | 2165FS+10d |  | Sector 43 | 9704636 |
| 2758 | 37300.37600.38600.40000.42500.116600.874600 | Corridoor, staircase, shaft Plaster & whitewash | 90d | 2026-12-22 | 2027-03-21 | 2756FS-10d |  | Sector 43 | 9704646 |
| 2759 | 37300.37600.38600.40000.42500.116600.874700 | Staircase railing fixing | 45d | 2026-10-28 | 2027-01-25 | 2756FS-20d |  | Sector 43 | 9704656 |
| 2760 | 37300.37600.38600.40000.42500.116600.874800 | Fire staircase flooring | 60d | 2027-01-06 | 2027-03-06 | 2759FS-20d |  | Sector 43 | 9704666 |
| 2761 | 37300.37600.38600.40000.42500.116600.874900 | Main staircase flooring | 60d | 2027-01-06 | 2027-03-06 | 2759FS-20d |  | Sector 43 | 9704676 |
| 2762 | 37300.37600.38600.40000.42500.116600.875000 | Fire door work | 45d | 2027-02-05 | 2027-03-21 | 2760FS-30d |  | Sector 43 | 9704686 |
| 2763 | 37300.37600.38600.40000.42500.116600.875100 | Lobby flooring & Corridor | 114d | 2027-01-16 | 2027-05-09 | 2761FS-50d |  | Sector 43 | 9704696 |
| 2764 | 37300.37600.38600.40000.42500.116600.875200 | Ceiling & wall putty-primer | 60d | 2027-03-26 | 2027-05-24 | 2763FS-45d |  | Sector 43 | 9704706 |
| 2765 | 37300.37600.38600.40000.42500.116600.875300 | Ceiling & wall painting | 90d | 2027-04-10 | 2027-07-08 | 2764FS-45d |  | Sector 43 | 9704716 |
| 2766 | 37300.37600.38600.40000.42500.116600.875400 | Electrical wiring work | 60d | 2027-05-15 | 2027-07-13 | 2764FS-10d |  | Sector 43 | 9704726 |
| 2767 | 37300.37600.38600.40000.42500.116600.875500 | Light fixture supply & installation | 30d | 2027-07-04 | 2027-08-02 | 2766FS-10d |  | Sector 43 | 9704736 |
| 2768 | 37300.37600.38600.40000.42500.116600.875600 | Installation of fire signages including Basements | 30d | 2027-06-29 | 2027-07-28 | 2765FS-10d |  | Sector 43 | 9704746 |
| 2769 | 37300.37600.38600.40000.42500.49500 | **Balcony Glass Railing** | 224d | 2025-12-20 | 2026-07-31 |  | start no earlier than 2025-12-20 | Sector 43 | 9697576 |
| 2770 | 37300.37600.38600.40000.42500.49500.875700 | 1st Floor | 7d | 2025-12-20 | 2025-12-26 | 2209 |  | Sector 43 | 9704756 |
| 2771 | 37300.37600.38600.40000.42500.49500.875800 | 2nd Floor | 7d | 2025-12-27 | 2026-01-02 | 2770 |  | Sector 43 | 9704766 |
| 2772 | 37300.37600.38600.40000.42500.49500.875900 | 3rd Floor | 7d | 2026-01-03 | 2026-01-09 | 2771 |  | Sector 43 | 9704776 |
| 2773 | 37300.37600.38600.40000.42500.49500.876000 | 4th Floor | 7d | 2026-01-10 | 2026-01-16 | 2772 |  | Sector 43 | 9704786 |
| 2774 | 37300.37600.38600.40000.42500.49500.876100 | 5th Floor | 7d | 2026-01-17 | 2026-01-23 | 2773 |  | Sector 43 | 9704796 |
| 2775 | 37300.37600.38600.40000.42500.49500.876200 | 6th Floor | 7d | 2026-01-24 | 2026-01-30 | 2774 |  | Sector 43 | 9704806 |
| 2776 | 37300.37600.38600.40000.42500.49500.876300 | 7th Floor | 7d | 2026-01-31 | 2026-02-06 | 2775 |  | Sector 43 | 9704816 |
| 2777 | 37300.37600.38600.40000.42500.49500.876400 | 8th Floor | 7d | 2026-02-07 | 2026-02-13 | 2776 |  | Sector 43 | 9704826 |
| 2778 | 37300.37600.38600.40000.42500.49500.876500 | 9th Floor | 7d | 2026-02-14 | 2026-02-20 | 2777 |  | Sector 43 | 9704836 |
| 2779 | 37300.37600.38600.40000.42500.49500.876600 | 10th Floor | 7d | 2026-02-21 | 2026-02-27 | 2778 |  | Sector 43 | 9704846 |
| 2780 | 37300.37600.38600.40000.42500.49500.876700 | 11th Floor | 7d | 2026-02-28 | 2026-03-06 | 2779 |  | Sector 43 | 9704856 |
| 2781 | 37300.37600.38600.40000.42500.49500.876800 | 12th Floor | 7d | 2026-03-07 | 2026-03-13 | 2780 |  | Sector 43 | 9704866 |
| 2782 | 37300.37600.38600.40000.42500.49500.876900 | 13th Floor | 7d | 2026-03-14 | 2026-03-20 | 2781 |  | Sector 43 | 9704876 |
| 2783 | 37300.37600.38600.40000.42500.49500.877000 | 14th Floor | 7d | 2026-03-21 | 2026-03-27 | 2782 |  | Sector 43 | 9704886 |
| 2784 | 37300.37600.38600.40000.42500.49500.877100 | 15th Floor | 7d | 2026-03-28 | 2026-04-03 | 2783 |  | Sector 43 | 9704896 |
| 2785 | 37300.37600.38600.40000.42500.49500.877200 | 16th Floor | 7d | 2026-04-04 | 2026-04-10 | 2784 |  | Sector 43 | 9704906 |
| 2786 | 37300.37600.38600.40000.42500.49500.877300 | 17th Floor | 7d | 2026-04-11 | 2026-04-17 | 2785 |  | Sector 43 | 9704916 |
| 2787 | 37300.37600.38600.40000.42500.49500.877400 | 18th Floor | 7d | 2026-04-18 | 2026-04-24 | 2786 |  | Sector 43 | 9704926 |
| 2788 | 37300.37600.38600.40000.42500.49500.877500 | 19th Floor | 7d | 2026-04-25 | 2026-05-01 | 2787 |  | Sector 43 | 9704936 |
| 2789 | 37300.37600.38600.40000.42500.49500.877600 | 20th Floor | 7d | 2026-05-02 | 2026-05-08 | 2788 |  | Sector 43 | 9704946 |
| 2790 | 37300.37600.38600.40000.42500.49500.877700 | 21st Floor | 7d | 2026-05-09 | 2026-05-15 | 2789 |  | Sector 43 | 9704956 |
| 2791 | 37300.37600.38600.40000.42500.49500.877800 | 22nd Floor | 7d | 2026-05-16 | 2026-05-22 | 2790 |  | Sector 43 | 9704966 |
| 2792 | 37300.37600.38600.40000.42500.49500.877900 | 23rd Floor | 7d | 2026-05-23 | 2026-05-29 | 2791 |  | Sector 43 | 9704976 |
| 2793 | 37300.37600.38600.40000.42500.49500.878000 | 24th Floor | 7d | 2026-05-30 | 2026-06-05 | 2792 |  | Sector 43 | 9704986 |
| 2794 | 37300.37600.38600.40000.42500.49500.878100 | 25th Floor | 7d | 2026-06-06 | 2026-06-12 | 2793 |  | Sector 43 | 9704996 |
| 2795 | 37300.37600.38600.40000.42500.49500.878200 | 26th Floor | 7d | 2026-06-13 | 2026-06-19 | 2794 |  | Sector 43 | 9705006 |
| 2796 | 37300.37600.38600.40000.42500.49500.878300 | 27th Floor | 7d | 2026-06-20 | 2026-06-26 | 2795 |  | Sector 43 | 9705016 |
| 2797 | 37300.37600.38600.40000.42500.49500.878400 | 28th Floor | 7d | 2026-06-27 | 2026-07-03 | 2796 |  | Sector 43 | 9705026 |
| 2798 | 37300.37600.38600.40000.42500.49500.878500 | 29th Floor | 7d | 2026-07-04 | 2026-07-10 | 2797 |  | Sector 43 | 9705036 |
| 2799 | 37300.37600.38600.40000.42500.49500.878600 | 30th Floor | 7d | 2026-07-11 | 2026-07-17 | 2798 |  | Sector 43 | 9705046 |
| 2800 | 37300.37600.38600.40000.42500.49500.878700 | 31st Floor | 7d | 2026-07-18 | 2026-07-24 | 2799 |  | Sector 43 | 9705056 |
| 2801 | 37300.37600.38600.40000.42500.49500.878800 | 32nd Floor | 7d | 2026-07-25 | 2026-07-31 | 2800 |  | Sector 43 | 9705066 |

| ID | WBS | Task | Duration | Start | Finish | Predecessors | Constraint | Calendar | Unique_Task_ID |
| --- | --- | --- | --- | --- | --- | --- | --- | --- | --- |
| 2802 | 37300.37600.38600.40000.116000 | **MEP work** | 334d | 2026-10-01 | 2027-10-14 |  | start no earlier than 2026-10-01 | Sector 43 | 9698666 |
| 2803 | 37300.37600.38600.40000.116000.122100 | **Electrical work** | 298d | 2026-10-28 | 2027-10-05 |  | start no earlier than 2026-10-28 | Sector 43 | 9698776 |
| 2804 | 37300.37600.38600.40000.116000.122100.878900 | Cable Tray | 90d | 2026-10-28 | 2027-03-11 | 2170 |  | Sector 43 | 9705076 |
| 2805 | 37300.37600.38600.40000.116000.122100.879000 | Cable, main & sub main | 90d | 2026-10-28 | 2027-03-11 | 2804FS-90d |  | Sector 43 | 9705086 |
| 2806 | 37300.37600.38600.40000.116000.122100.879100 | LT panel & DB | 90d | 2027-01-11 | 2027-04-10 | 2804FS-60d |  | Sector 43 | 9705096 |
| 2807 | 37300.37600.38600.40000.116000.122100.879200 | Earthing Works | 60d | 2027-03-12 | 2027-05-10 | 2804 |  | Sector 43 | 9705106 |
| 2808 | 37300.37600.38600.40000.116000.122100.879300 | Advanced Lightening Protection system | 45d | 2027-04-16 | 2027-05-30 | 2807FS-25d |  | Sector 43 | 9705116 |
| 2809 | 37300.37600.38600.40000.116000.122100.879400 | Energy meter | 60d | 2027-03-12 | 2027-05-10 | 2805 |  | Sector 43 | 9705126 |
| 2810 | 37300.37600.38600.40000.116000.122100.879500 | Inverter / UPS | 70d | 2027-05-06 | 2027-07-14 | 2805, 2806, 2809FS-5d |  | Sector 43 | 9705136 |
| 2811 | 37300.37600.38600.40000.116000.122100.879600 | HVAC & Exhast fan | 120d | 2027-02-10 | 2027-06-09 | 2804FS-30d |  | Sector 43 | 9705146 |
| 2812 | 37300.37600.38600.40000.116000.122100.879700 | FTTH | 45d | 2027-03-17 | 2027-04-30 | 2806FS-25d |  | Sector 43 | 9705156 |
| 2813 | 37300.37600.38600.40000.116000.122100.879800 | Security System - FA & PA | 45d | 2027-03-17 | 2027-04-30 | 2806FS-25d |  | Sector 43 | 9705166 |
| 2814 | 37300.37600.38600.40000.116000.122100.879900 | T&C of complete system | 64d | 2027-08-03 | 2027-10-05 | 2767, 2806, 2808, 2809, 2810, 2811, 2812, 2813, 189FS-45d, 200 |  | Sector 43 | 9705176 |
| 2815 | 37300.37600.38600.40000.116000.131700 | **Plumbing work** | 332d | 2026-10-01 | 2027-10-12 |  | start no earlier than 2026-10-01 | Sector 43 | 9699026 |
| 2816 | 37300.37600.38600.40000.116000.131700.880000 | Terrace looping | 45d | 2026-10-01 | 2026-12-29 | 2204 |  | Sector 43 | 9705186 |
| 2817 | 37300.37600.38600.40000.116000.131700.880100 | Shaft Plumbing | 120d | 2027-02-20 | 2027-06-19 | 2758FS-30d, 2816 |  | Sector 43 | 9705196 |
| 2818 | 37300.37600.38600.40000.116000.131700.880200 | CP sanitary fixture supply | 45d | 2027-06-20 | 2027-08-03 | 2817 |  | Sector 43 | 9705206 |
| 2819 | 37300.37600.38600.40000.116000.131700.880300 | Cold & flushing water supply | 45d | 2027-06-20 | 2027-08-03 | 2817 |  | Sector 43 | 9705216 |
| 2820 | 37300.37600.38600.40000.116000.131700.880400 | Misc work | 30d | 2027-07-15 | 2027-08-13 | 2819FS-20d |  | Sector 43 | 9705226 |
| 2821 | 37300.37600.38600.40000.116000.131700.880500 | Installation of PHE pumps | 60d | 2026-12-30 | 2027-02-27 | 2816 |  | Sector 43 | 9705236 |
| 2822 | 37300.37600.38600.40000.116000.131700.880600 | T&C of complete system | 60d | 2027-08-14 | 2027-10-12 | 171, 172, 173, 2816, 2817, 2819, 2820, 2821 |  | Sector 43 | 9705246 |
| 2823 | 37300.37600.38600.40000.116000.136300 | **Fire fighting work** | 237d | 2027-02-20 | 2027-10-14 |  | start no earlier than 2027-02-20 | Sector 43 | 9699036 |
| 2824 | 37300.37600.38600.40000.116000.136300.880700 | Fire hydrant work | 90d | 2027-02-20 | 2027-05-20 | 2758FS-30d |  | Sector 43 | 9705256 |
| 2825 | 37300.37600.38600.40000.116000.136300.880800 | Pipe connection & sprinkler installation | 60d | 2027-05-21 | 2027-07-19 | 2824 |  | Sector 43 | 9705266 |
| 2826 | 37300.37600.38600.40000.116000.136300.880900 | Shaft Downtake works | 90d | 2027-02-20 | 2027-05-20 | 2204, 2758FS-30d |  | Sector 43 | 9705276 |
| 2827 | 37300.37600.38600.40000.116000.136300.881000 | Connection to pump room | 45d | 2027-05-21 | 2027-07-04 | 2826 |  | Sector 43 | 9705286 |
| 2828 | 37300.37600.38600.40000.116000.136300.881100 | Installation of FF pumps | 60d | 2027-05-21 | 2027-07-19 | 2824, 2826 |  | Sector 43 | 9705296 |
| 2829 | 37300.37600.38600.40000.116000.136300.881200 | T&C of complete system | 60d | 2027-08-16 | 2027-10-14 | 174FS-3d, 2757, 2762, 2768FS-20d, 2825, 2827, 2828, 2738 |  | Sector 43 | 9705306 |

| ID | WBS | Task | Duration | Start | Finish | Predecessors | Constraint | Calendar | Unique_Task_ID |
| --- | --- | --- | --- | --- | --- | --- | --- | --- | --- |
| 2830 | 37300.37600.38600.40000.116000.220600 | **Lift work** | 99d | 2026-10-28 | 2027-03-20 |  | start no earlier than 2026-10-28 | Sector 43 | 9700276 |
| 2831 | 37300.37600.38600.40000.116000.220600.881300 | Lift Shaft/Pit Handover | 30d | 2026-10-28 | 2027-01-10 | 2170 |  | Sector 43 | 9705316 |
| 2832 | 37300.37600.38600.40000.116000.220600.881400 | Lift installation work | 50d | 2026-12-31 | 2027-02-18 | 2831FS-11d |  | Sector 43 | 9705326 |
| 2833 | 37300.37600.38600.40000.116000.220600.881500 | Lift testing and commissioning | 30d | 2027-02-19 | 2027-03-20 | 2832 |  | Sector 43 | 9705336 |
| 2834 | 37300.37600.38600.40000.214800 | **External Paint Works** | 170d | 2026-10-01 | 2027-05-03 |  | start no earlier than 2026-10-01 | Sector 43 | 9699716 |
| 2835 | 37300.37600.38600.40000.214800.389200 | Surface prepration | 70d | 2026-10-01 | 2027-01-23 | 2204 |  | Sector 43 | 9701296 |
| 2836 | 37300.37600.38600.40000.214800.389300 | External Painting (Primer, texture & first coat) | 90d | 2027-01-24 | 2027-04-23 | 2835 |  | Sector 43 | 9701306 |
| 2837 | 37300.37600.38600.40000.214800.389400 | Final coat of painting | 80d | 2027-02-13 | 2027-05-03 | 2836FS-70d |  | Sector 43 | 9701316 |
| 2838 | 37300.37600.38600.40000.214800.389500 | Misc. work | 50d | 2027-01-24 | 2027-03-14 | 2835 |  | Sector 43 | 9701326 |
| 2839 | 37300.37600.38600.40000.293100 | OC Application/Readiness | 1d | 2027-09-01 | 2027-09-01 | 2801FS-45d, 2814FS-45d, 2822FS-45d, 2829FS-44d, 2833, 2754, 175FS+0.25d, 2760, 2761, 2763, 2751 |  | Sector 43 | 9700786 |
| 2840 | 37300.37600.38600.40000.293200 | OC Receipt | 30d | 2027-09-02 | 2027-10-01 | 2839 |  | Sector 43 | 9700796 |
| 2841 | 37300.37600.38600.40000.164300 | **Post OC Activities** | 205d | 2027-09-02 | 2028-05-08 |  | start no earlier than 2027-09-02 | Sector 43 | 9699126 |
| 2842 | 37300.37600.38600.40000.164300.389600 | CP & Sanitaryware installation | 120d | 2027-09-02 | 2028-02-13 | 2840FS-30d, 2818 |  | Sector 43 | 9701336 |
| 2843 | 37300.37600.38600.40000.164300.389700 | Electrical Fixtures And Fittings installations | 120d | 2027-09-02 | 2028-02-13 | 2840FS-30d |  | Sector 43 | 9701346 |
| 2844 | 37300.37600.38600.40000.164300.389800 | Final Coat Paint Internal | 90d | 2027-09-02 | 2028-01-14 | 2840FS-30d |  | Sector 43 | 9701356 |
| 2845 | 37300.37600.38600.40000.164300.389900 | Split AC Units installation | 100d | 2028-01-30 | 2028-05-08 | 2844FS+15d |  | Sector 43 | 9701366 |
| 2846 | 37300.37600.38600.40000.164300.390000 | Wooden Flooring | 180d | 2027-09-02 | 2028-04-13 | 2840FS-30d |  | Sector 43 | 9701376 |
| 2847 | 37300.37600.38600.40000.293300 | Offer to possession | 150d | 2028-05-09 | 2028-10-05 | 2840FS+120d, 2838, 2842, 2843, 2845, 2846 |  | Sector 43 | 9700806 |
