Schedule from MS Project XML, 2021-12-08 to 2030-03-13.

## Calendars

- Standard: Mon-Fri 08:00-12:00, 13:00-17:00; Sat-Sun off. Exceptions (off unless hours are given): 2021-12-25 to 2022-01-09, 2022-04-15 to 2022-04-18, 2022-05-02, 2022-06-02 to 2022-06-03, 2022-08-29, 2022-12-25 to 2023-01-08, 2023-04-07 to 2023-04-10, 2023-05-01, 2023-05-29, 2023-08-28, 2023-12-25 to 2024-01-07, 2024-03-29 to 2024-04-01, 2024-05-06, 2024-05-27, 2024-08-26, 2024-12-23 to 2025-01-05, 2025-04-18 to 2025-04-21, 2025-05-05, 2025-05-26, 2025-08-25, 2025-12-22 to 2026-01-04, 2026-03-27 to 2026-03-30, 2026-05-04, 2026-05-23 to 2026-05-25, 2026-08-29 to 2026-08-31, 2026-12-21 to 2027-01-03, 2027-04-16 to 2027-04-19, 2027-05-01 to 2027-05-03, 2027-05-29 to 2027-05-31, 2027-08-30, 2027-12-25 to 2028-01-09, 2028-03-31 to 2028-04-03, 2028-04-29 to 2028-05-01, 2028-05-27 to 2028-05-29, 2028-08-26 to 2028-08-28, 2028-12-23 to 2029-01-07, 2029-03-23 to 2029-03-26, 2029-05-07, 2029-05-28, 2029-08-27, 2029-12-24 to 2030-01-06.
- 7 day week No holidays: Mon-Sun 08:00-12:00, 13:00-17:00.
- Indian Calendar: Mon-Sat 08:00-12:00, 13:00-17:00; Sun off. Exceptions (off unless hours are given): 2023-11-15 to 2023-12-15, 2024-07-01 to 2024-07-06 08:00-10:00, 14:00-17:00, 2024-07-07, 2024-07-08 to 2024-07-13 08:00-10:00, 14:00-17:00, 2024-07-14, 2024-07-15 to 2024-07-20 08:00-10:00, 14:00-17:00, 2024-07-21, 2024-07-22 to 2024-07-27 08:00-10:00, 14:00-17:00, 2024-07-28, 2024-07-29 to 2024-07-31 08:00-10:00, 14:00-17:00, 2024-08-01 to 2024-08-03 08:00-10:00, 11:00-12:00, 13:00-17:00, 2024-08-04, 2024-08-05 to 2024-08-10 08:00-10:00, 11:00-12:00, 13:00-17:00, 2024-08-11, 2024-08-12 to 2024-08-17 08:00-10:00, 11:00-12:00, 13:00-17:00, 2024-08-18, 2024-08-19 to 2024-08-24 08:00-10:00, 11:00-12:00, 13:00-17:00, 2024-08-25, 2024-08-26 to 2024-08-31 08:00-10:00, 11:00-12:00, 13:00-17:00, 2024-09-01, 2024-09-02 to 2024-09-07 08:00-10:00, 11:00-12:00, 13:00-17:00, 2024-09-08, 2024-09-09 to 2024-09-14 08:00-10:00, 11:00-12:00, 13:00-17:00, 2024-09-15, 2024-09-16 to 2024-09-21 08:00-10:00, 11:00-12:00, 13:00-17:00, 2024-09-22, 2024-09-23 to 2024-09-28 08:00-10:00, 11:00-12:00, 13:00-17:00, 2024-09-29, 2024-09-30 08:00-10:00, 11:00-12:00, 13:00-17:00.
- 7 day week With NGT Ban: Mon-Sun 08:00-12:00, 13:00-17:00. Exceptions (off unless hours are given): 2023-11-01 to 2023-12-15, 2024-11-01 to 2024-12-04, 2024-12-05 to 2024-12-08 10:00-18:00, 2024-12-09 00:00-00:00, 2024-12-10 to 2024-12-15 08:00-18:00, 2025-11-01 to 2025-12-15, 2026-11-01 to 2026-12-15.

## Resources

| Resource |
| --- |
| Bigbull |
| Horizon cost centre |
| Bigbull |
| Project Costs |
| ONE M Cost |
| GPL Revenue |

## Schedule

| ID | WBS | Task | Duration | Start | Finish | Predecessors | Complete | Constraint | Calendar | Unique_Task_ID |
| --- | --- | --- | --- | --- | --- | --- | --- | --- | --- | --- |
| 1 | 37000 | **One M** | 3017.09ed | 2021-12-08 | 2030-03-13 |  | 15% | start no earlier than 2021-12-08 |  | 7196714 |
| 2 | 37000.37200 | **Tower A** | 2332.25d | 2023-02-01 | 2029-06-21 |  | 22% | start no earlier than 2023-02-01 | 7 day week No holidays | 7284364 |
| 3 | 37000.37200.41500 | **RCC Work** | 1405d | 2023-02-01 | 2026-12-06 |  | 64% | start no earlier than 2023-02-01 | 7 day week No holidays | 7284424 |
| 4 | 37000.37200.41500.401900 | **Aluform Mobilization** | 104d | 2025-04-01 | 2025-07-30 |  |  | start no earlier than 2025-04-01 | Indian Calendar | 7284425 |
| 5 | 37000.37200.41500.401900.522200 | Aluform-Order Date | 1d | 2025-04-01 | 2025-04-01 | 10FS+30d |  |  | 7 day week No holidays | 7284426 |
| 6 | 37000.37200.41500.401900.522300 | Aluform-Shop Drawing Approval Date | 60d | 2025-04-02 | 2025-05-31 | 5 |  |  | 7 day week No holidays | 7284427 |
| 7 | 37000.37200.41500.401900.522400 | Aluform-Start of Supply for first lot date | 60d | 2025-06-01 | 2025-07-30 | 6 |  |  | 7 day week No holidays | 7284437 |
| 8 | 37000.37200.41500.42100 | **RCC work above 15th Fl** | 1380d | 2023-02-01 | 2026-11-11 |  | 67% | start no earlier than 2023-02-01 | 7 day week No holidays | 7284434 |
| 9 | 37000.37200.41500.42100.522500 | RCC- 14th Floor | 33d | 2023-03-01 | 2023-04-07 |  | 100% | start no earlier than 2023-03-01 | Indian Calendar | 7284435 |
| 10 | 37000.37200.41500.42100.488000 | RCC - 15th Floor | 22d | 2023-06-20 | 2023-08-17 | 9FS-47.57d | 100% |  | 7 day week No holidays | 7289604 |
| 11 | 37000.37200.41500.42100.487900 | RCC - 16th Floor | 12d | 2023-09-20 | 2023-10-17 | 10FS+120.8d | 100% | start no earlier than 2023-09-20 | 7 day week No holidays | 7289614 |
| 12 | 37000.37200.41500.42100.487800 | RCC - 17th Floor | 35d | 2023-10-23 | 2023-11-26 | 11 | 100% | start no earlier than 2023-10-23 | 7 day week No holidays | 7289624 |
| 13 | 37000.37200.41500.42100.487700 | RCC - 18th Floor | 19d | 2023-11-23 | 2023-12-15 | 12FS+20d | 100% | start no earlier than 2023-11-23 | 7 day week No holidays | 7289634 |
| 14 | 37000.37200.41500.42100.487600 | RCC - 19th Floor | 16d | 2023-12-07 | 2023-12-31 | 13 | 100% | start no earlier than 2023-12-07 | 7 day week No holidays | 7289644 |
| 15 | 37000.37200.41500.42100.487500 | RCC - 20th Floor | 12d | 2023-12-25 | 2024-01-25 | 14 | 100% | start no earlier than 2023-12-25 | 7 day week No holidays | 7289654 |
| 16 | 37000.37200.41500.42100.487400 | RCC - 21st Floor | 22d | 2024-01-09 | 2024-02-12 | 15 | 100% | start no earlier than 2024-01-09 | 7 day week No holidays | 7289664 |
| 17 | 37000.37200.41500.42100.487300 | RCC - 22nd Floor | 15d | 2024-02-06 | 2024-03-01 | 16 | 100% | start no earlier than 2024-02-06 | 7 day week No holidays | 7289674 |
| 18 | 37000.37200.41500.42100.487200 | RCC - 23rd Floor | 15d | 2024-03-02 | 2024-03-18 | 17 | 100% | start no earlier than 2024-03-02 | 7 day week No holidays | 7289684 |
| 19 | 37000.37200.41500.42100.487100 | RCC - 24th Floor | 15d | 2024-03-08 | 2024-03-30 | 18 | 100% | start no earlier than 2024-03-08 | 7 day week No holidays | 7289694 |
| 20 | 37000.37200.41500.42100.487000 | RCC - 25th Floor | 9d | 2024-03-23 | 2024-04-10 | 19 | 100% | start no earlier than 2024-03-23 | 7 day week No holidays | 7289704 |
| 21 | 37000.37200.41500.42100.486900 | RCC - 26th Floor | 37d | 2024-03-17 | 2024-04-22 | 20FS+2d | 100% | start no earlier than 2024-03-17 | 7 day week No holidays | 7289714 |
| 22 | 37000.37200.41500.42100.486800 | RCC - 27th Floor | 23d | 2024-04-15 | 2024-05-07 | 21FS+77d | 100% | start no earlier than 2024-04-15 | 7 day week No holidays | 7289724 |
| 23 | 37000.37200.41500.42100.486700 | RCC - 28th Floor | 45d | 2024-04-15 | 2024-05-29 | 22 | 100% | start no earlier than 2024-04-15 | 7 day week No holidays | 7289734 |
| 24 | 37000.37200.41500.42100.486600 | RCC - 29th Floor | 66d | 2024-04-06 | 2024-06-10 | 23FS+90d | 100% | start no earlier than 2024-04-06 | 7 day week No holidays | 7289744 |
| 25 | 37000.37200.41500.42100.486500 | RCC - 30th Floor | 61d | 2024-04-24 | 2024-06-23 | 24FS+10d | 100% | start no earlier than 2024-04-24 | 7 day week No holidays | 7289754 |
| 26 | 37000.37200.41500.42100.486400 | RCC - 31st Floor | 22d | 2024-04-15 | 2024-07-07 | 25FS+11d | 100% | start no earlier than 2024-04-15 | 7 day week No holidays | 7289764 |
| 27 | 37000.37200.41500.42100.486300 | RCC - 32nd Floor | 10d | 2024-07-15 | 2024-07-24 | 26FS-1d | 100% | start no earlier than 2024-07-15 | 7 day week No holidays | 7289774 |
| 28 | 37000.37200.41500.42100.486200 | RCC - 33rd Floor | 15d | 2024-07-24 | 2024-08-07 | 27FS-1d | 100% | start no earlier than 2024-07-24 | 7 day week No holidays | 7289784 |
| 29 | 37000.37200.41500.42100.486100 | Tower A- Retrofitting | 900d | 2023-02-01 | 2025-10-04 | 28FS+4d | 79% | start no earlier than 2023-02-01 | 7 day week With NGT Ban | 7289785 |
| 30 | 37000.37200.41500.42100.486000 | RCC - 34th Floor | 12d | 2024-08-12 | 2024-08-23 | 28FS+4d | 100% | start no earlier than 2024-08-12 | 7 day week No holidays | 7289794 |
| 31 | 37000.37200.41500.42100.485900 | RCC - 35th Floor | 18d | 2024-08-19 | 2024-09-12 | 30FS-3d | 100% | start no earlier than 2024-08-19 | 7 day week No holidays | 7289804 |
| 32 | 37000.37200.41500.42100.485800 | RCC - 36th Floor | 52d | 2024-03-10 | 2024-09-28 | 31FS-179.25d | 100% | start no earlier than 2024-03-10 | 7 day week No holidays | 7289814 |
| 33 | 37000.37200.41500.42100.485700 | RCC - Service Floor | 45d | 2024-09-14 | 2024-11-28 | 32 | 100% | start no earlier than 2024-09-14 | 7 day week No holidays | 7289824 |
| 34 | 37000.37200.41500.42100.485600 | RCC - 37th Floor | 37d | 2024-11-24 | 2024-12-30 | 32, 33FS-9d | 100% | start no earlier than 2024-11-24 | 7 day week No holidays | 7289834 |
| 35 | 37000.37200.41500.42100.485500 | RCC - 38th Floor | 40d | 2024-12-31 | 2025-02-08 | 34FS+1d | 100% | start no earlier than 2024-12-31 | 7 day week No holidays | 7289844 |
| 36 | 37000.37200.41500.42100.485400 | RCC - 39th Floor | 99d | 2024-10-24 | 2025-01-30 | 35FS-33d | 100% | start no earlier than 2024-10-24 | 7 day week No holidays | 7289854 |
| 37 | 37000.37200.41500.42100.485300 | RCC - 40th Floor | 23d | 2025-01-08 | 2025-01-30 | 36 | 100% | start no earlier than 2025-01-08 | 7 day week No holidays | 7289864 |
| 38 | 37000.37200.41500.42100.485100 | RCC - 41st Floor | 15.25d | 2025-01-20 | 2025-03-20 | 37FS-5.25d | 100% | start no earlier than 2025-01-20 | 7 day week No holidays | 7289874 |
| 39 | 37000.37200.41500.42100.484900 | RCC - 42nd Floor | 28d | 2025-02-28 | 2025-03-30 | 38FS-13.25d | 100% | start no earlier than 2025-02-28 | 7 day week No holidays | 7289884 |
| 40 | 37000.37200.41500.42100.484800 | RCC - 43rd Floor | 18d | 2025-03-21 | 2025-04-15 | 39 | 16% | start no earlier than 2025-03-21 | 7 day week No holidays | 7289894 |
| 41 | 37000.37200.41500.42100.522600 | RCC - 44th Floor Refuge | 12d | 2025-04-16 | 2025-04-27 | 40 |  |  | 7 day week No holidays | 7289904 |
| 42 | 37000.37200.41500.42100.522700 | RCC - 45th Floor | 12d | 2025-04-28 | 2025-05-09 | 41 |  |  | 7 day week No holidays | 7289914 |
| 43 | 37000.37200.41500.42100.522800 | RCC - 46th Floor | 12d | 2025-05-10 | 2025-05-21 | 42 |  |  | 7 day week No holidays | 7289924 |
| 44 | 37000.37200.41500.42100.522900 | RCC - 47th Floor | 12d | 2025-05-22 | 2025-06-02 | 43 |  |  | 7 day week No holidays | 7289934 |
| 45 | 37000.37200.41500.42100.523000 | RCC - 48th Floor | 12d | 2025-06-03 | 2025-06-14 | 44 |  |  | 7 day week No holidays | 7289944 |
| 46 | 37000.37200.41500.42100.523100 | RCC - 49th Floor | 12d | 2025-06-15 | 2025-06-26 | 45 |  |  | 7 day week No holidays | 7289954 |
| 47 | 37000.37200.41500.42100.523200 | RCC - 50th Floor | 16d | 2025-06-27 | 2025-07-12 | 46 |  |  | 7 day week No holidays | 7289964 |
| 48 | 37000.37200.41500.42100.523300 | RCC - 51st Floor | 16d | 2025-07-13 | 2025-07-28 | 47 |  |  | 7 day week No holidays | 7289974 |
| 49 | 37000.37200.41500.42100.523400 | RCC - 52nd Floor | 16d | 2025-07-29 | 2025-08-13 | 48 |  |  | 7 day week No holidays | 7289984 |
| 50 | 37000.37200.41500.42100.523500 | RCC - 53rd Floor | 21d | 2025-08-14 | 2025-09-03 | 49 |  |  | 7 day week No holidays | 7289994 |
| 51 | 37000.37200.41500.42100.523600 | RCC - 54th Floor | 16d | 2025-09-04 | 2025-09-19 | 50 |  |  | 7 day week No holidays | 7290004 |
| 52 | 37000.37200.41500.42100.523700 | RCC - 55th Floor | 16d | 2025-09-20 | 2025-10-05 | 51 |  |  | 7 day week No holidays | 7290014 |
| 53 | 37000.37200.41500.42100.523800 | RCC - 56th Floor | 16d | 2025-10-06 | 2025-10-21 | 52 |  |  | 7 day week No holidays | 7290024 |
| 54 | 37000.37200.41500.42100.523900 | RCC - 57th Floor | 16d | 2025-10-22 | 2025-11-06 | 53 |  |  | 7 day week No holidays | 7290034 |
| 55 | 37000.37200.41500.42100.524000 | RCC - 58th Floor | 16d | 2025-11-07 | 2025-11-22 | 54 |  |  | 7 day week No holidays | 7290044 |
| 56 | 37000.37200.41500.42100.524100 | RCC - 59th Floor | 16d | 2025-11-23 | 2025-12-08 | 55 |  |  | 7 day week No holidays | 7290054 |
| 57 | 37000.37200.41500.42100.524200 | RCC - 60th Floor | 16d | 2025-12-09 | 2025-12-24 | 56 |  |  | 7 day week No holidays | 7290064 |
| 58 | 37000.37200.41500.42100.524300 | RCC - 61st Floor | 16d | 2025-12-25 | 2026-01-09 | 57 |  |  | 7 day week No holidays | 7290074 |
| 59 | 37000.37200.41500.42100.524400 | RCC - 62nd Floor | 16d | 2026-01-10 | 2026-01-25 | 58 |  |  | 7 day week No holidays | 7290084 |
| 60 | 37000.37200.41500.42100.524500 | RCC - 63rd Floor | 16d | 2026-01-26 | 2026-02-10 | 59 |  |  | 7 day week No holidays | 7290094 |
| 61 | 37000.37200.41500.42100.524600 | RCC - 64th Floor | 16d | 2026-02-11 | 2026-02-26 | 60 |  |  | 7 day week No holidays | 7290104 |
| 62 | 37000.37200.41500.42100.524700 | RCC - 65th Floor | 16d | 2026-02-27 | 2026-03-14 | 61 |  |  | 7 day week No holidays | 7290114 |
| 63 | 37000.37200.41500.42100.524800 | RCC - 66th Floor | 21d | 2026-03-15 | 2026-04-04 | 62 |  |  | 7 day week No holidays | 7290124 |
| 64 | 37000.37200.41500.42100.524900 | RCC - 67th Floor | 21d | 2026-04-05 | 2026-04-25 | 63 |  |  | 7 day week No holidays | 7290134 |
| 65 | 37000.37200.41500.42100.525000 | RCC - 68th Floor | 16d | 2026-04-26 | 2026-05-11 | 64 |  |  | 7 day week No holidays | 7290144 |
| 66 | 37000.37200.41500.42100.525100 | RCC - 69th Floor | 16d | 2026-05-12 | 2026-05-27 | 65 |  |  | 7 day week No holidays | 7290154 |
| 67 | 37000.37200.41500.42100.525200 | RCC - 70th Floor | 16d | 2026-05-28 | 2026-06-12 | 66 |  |  | 7 day week No holidays | 7290164 |
| 68 | 37000.37200.41500.42100.525300 | RCC - 71st Floor | 16d | 2026-06-13 | 2026-06-28 | 67 |  |  | 7 day week No holidays | 7290174 |
| 69 | 37000.37200.41500.42100.525400 | RCC - 72nd Floor | 16d | 2026-06-29 | 2026-07-14 | 68 |  |  | 7 day week No holidays | 7290184 |
| 70 | 37000.37200.41500.42100.525500 | RCC - Terrace | 30d | 2026-07-15 | 2026-08-13 | 69 |  |  | 7 day week No holidays | 7290194 |

| ID | WBS | Task | Duration | Start | Finish | Predecessors | Complete | Constraint | Calendar | Unique_Task_ID |
| --- | --- | --- | --- | --- | --- | --- | --- | --- | --- | --- |
| 71 | 37000.37200.41500.42100.525600 | RCC Work Above terrace | 90d | 2026-08-14 | 2026-11-11 | 70 |  |  | 7 day week No holidays | 7289304 |
| 73 | 37000.37200.41500.42800 | **Post pour works** | 1355d | 2023-03-23 | 2026-12-06 |  | 55% | start no earlier than 2023-03-23 | 7 day week No holidays | 7289305 |
| 74 | 37000.37200.41500.42800.484400 | 15th floor | 311d | 2023-03-23 | 2024-01-27 | 10FS+136.8d | 100% | start no earlier than 2023-03-23 | 7 day week No holidays | 7392824 |
| 75 | 37000.37200.41500.42800.484300 | 16th floor | 10d | 2024-01-29 | 2024-02-07 | 11FS+16d | 100% | start no earlier than 2024-01-29 | 7 day week No holidays | 7392834 |
| 76 | 37000.37200.41500.42800.484200 | 17th floor | 10d | 2024-02-21 | 2024-03-01 | 12FS+35d | 100% | start no earlier than 2024-02-21 | 7 day week No holidays | 7393084 |
| 77 | 37000.37200.41500.42800.484100 | 18th floor | 10d | 2024-03-14 | 2024-03-23 | 13FS+15d | 100% | start no earlier than 2024-03-14 | 7 day week No holidays | 7393074 |
| 78 | 37000.37200.41500.42800.484000 | 19th floor | 10d | 2024-05-30 | 2024-06-08 | 14FS+15d | 100% | start no earlier than 2024-05-30 | 7 day week No holidays | 7393064 |
| 79 | 37000.37200.41500.42800.483900 | 20th floor | 10d | 2024-06-21 | 2024-06-30 | 15FS+15d | 100% | start no earlier than 2024-06-21 | 7 day week No holidays | 7393054 |
| 80 | 37000.37200.41500.42800.483800 | 21st floor | 10d | 2024-07-14 | 2024-07-23 | 16FS+15d | 100% | start no earlier than 2024-07-14 | 7 day week No holidays | 7393044 |
| 81 | 37000.37200.41500.42800.483700 | 22nd floor | 10d | 2024-07-05 | 2024-07-14 | 17FS+15d | 100% | start no earlier than 2024-07-05 | 7 day week No holidays | 7393034 |
| 82 | 37000.37200.41500.42800.483600 | 23rd floor | 14d | 2024-07-13 | 2024-07-26 | 18FS+15d | 100% | start no earlier than 2024-07-13 | 7 day week No holidays | 7393024 |
| 83 | 37000.37200.41500.42800.483500 | 24th floor | 33d | 2024-07-31 | 2024-09-01 | 19FS+15d | 100% | start no earlier than 2024-07-31 | 7 day week No holidays | 7393014 |
| 84 | 37000.37200.41500.42800.483400 | 25th floor | 10d | 2024-08-04 | 2024-08-13 | 20FS+17d | 100% | start no earlier than 2024-08-04 | 7 day week No holidays | 7393004 |
| 85 | 37000.37200.41500.42800.483300 | 26th floor | 10d | 2024-08-07 | 2024-08-16 | 21FS+92d | 100% | start no earlier than 2024-08-07 | 7 day week No holidays | 7392994 |
| 86 | 37000.37200.41500.42800.483200 | 27th floor | 10d | 2024-08-07 | 2024-08-16 | 22FS+15d | 100% | start no earlier than 2024-08-07 | 7 day week No holidays | 7392984 |
| 87 | 37000.37200.41500.42800.483100 | 28th floor | 10d | 2024-11-14 | 2024-11-23 | 23FS+105d | 100% | start no earlier than 2024-11-14 | 7 day week No holidays | 7392974 |
| 88 | 37000.37200.41500.42800.483000 | 29th floor | 39d | 2024-09-30 | 2024-11-07 | 24FS+25d | 100% | start no earlier than 2024-09-30 | 7 day week No holidays | 7392964 |
| 89 | 37000.37200.41500.42800.482900 | 30th floor | 10d | 2024-11-14 | 2024-11-23 | 25FS+26d | 100% | start no earlier than 2024-11-14 | 7 day week No holidays | 7392954 |
| 90 | 37000.37200.41500.42800.482800 | 31st floor | 10d | 2024-11-26 | 2024-12-05 | 26FS+14d | 100% | start no earlier than 2024-11-26 | 7 day week No holidays | 7392944 |
| 91 | 37000.37200.41500.42800.482700 | 32nd floor | 10d | 2024-11-28 | 2024-12-07 | 27FS+14d | 100% | start no earlier than 2024-11-28 | 7 day week No holidays | 7392934 |
| 92 | 37000.37200.41500.42800.525700 | 33rd floor | 10d | 2025-04-01 | 2025-04-10 | 28FS+19d |  |  | 7 day week No holidays | 7392924 |
| 93 | 37000.37200.41500.42800.525800 | 34th floor | 10d | 2025-04-01 | 2025-04-10 | 30FS+12d |  |  | 7 day week No holidays | 7392914 |
| 94 | 37000.37200.41500.42800.525900 | 35th floor | 10d | 2025-04-01 | 2025-04-10 | 31FS+11d |  |  | 7 day week No holidays | 7392904 |
| 95 | 37000.37200.41500.42800.526000 | 36th floor | 10d | 2025-04-01 | 2025-04-10 | 32FS+15d |  |  | 7 day week No holidays | 7392894 |
| 96 | 37000.37200.41500.42800.526100 | Service floor | 10d | 2025-04-01 | 2025-04-10 | 33FS+6d |  |  | 7 day week No holidays | 7392884 |
| 97 | 37000.37200.41500.42800.526200 | 37th floor | 10d | 2025-04-01 | 2025-04-10 | 34FS+15d |  |  | 7 day week No holidays | 7392874 |
| 98 | 37000.37200.41500.42800.526300 | 38th floor | 10d | 2025-04-01 | 2025-04-10 | 35FS+15d |  |  | 7 day week No holidays | 7392864 |
| 99 | 37000.37200.41500.42800.526400 | 39th floor | 10d | 2025-04-01 | 2025-04-10 | 36FS+15d |  |  | 7 day week No holidays | 7392854 |
| 100 | 37000.37200.41500.42800.526500 | 40th floor | 10d | 2025-04-01 | 2025-04-10 | 37FS+15d |  |  | 7 day week No holidays | 7393254 |
| 101 | 37000.37200.41500.42800.526600 | 41th floor | 10d | 2025-04-13 | 2025-04-23 | 38FS+23.75d |  |  | 7 day week No holidays | 7393244 |
| 102 | 37000.37200.41500.42800.526700 | 42th floor | 10d | 2025-04-15 | 2025-04-24 | 39FS+15d |  |  | 7 day week No holidays | 7393234 |
| 103 | 37000.37200.41500.42800.526800 | 43th floor | 10d | 2025-05-01 | 2025-05-10 | 40FS+15d |  |  | 7 day week No holidays | 7393224 |
| 104 | 37000.37200.41500.42800.526900 | 44th floor | 10d | 2025-05-13 | 2025-05-22 | 41FS+15d |  |  | 7 day week No holidays | 7393214 |
| 105 | 37000.37200.41500.42800.527000 | 45th floor | 10d | 2025-05-25 | 2025-06-03 | 42FS+15d |  |  | 7 day week No holidays | 7393204 |
| 106 | 37000.37200.41500.42800.527100 | 46th floor | 10d | 2025-06-06 | 2025-06-15 | 43FS+15d |  |  | 7 day week No holidays | 7393194 |
| 107 | 37000.37200.41500.42800.527200 | 47th floor | 10d | 2025-06-18 | 2025-06-27 | 44FS+15d |  |  | 7 day week No holidays | 7393184 |
| 108 | 37000.37200.41500.42800.527300 | 48th floor | 10d | 2025-06-30 | 2025-07-09 | 45FS+15d |  |  | 7 day week No holidays | 7393174 |
| 109 | 37000.37200.41500.42800.527400 | 49th floor | 10d | 2025-07-12 | 2025-07-21 | 46FS+15d |  |  | 7 day week No holidays | 7393164 |
| 110 | 37000.37200.41500.42800.527500 | 50th floor | 10d | 2025-07-28 | 2025-08-06 | 47FS+15d |  |  | 7 day week No holidays | 7393154 |
| 111 | 37000.37200.41500.42800.527600 | 51st floor | 10d | 2025-08-13 | 2025-08-22 | 48FS+15d |  |  | 7 day week No holidays | 7393144 |
| 112 | 37000.37200.41500.42800.527700 | 52nd floor | 10d | 2025-08-29 | 2025-09-07 | 49FS+15d |  |  | 7 day week No holidays | 7393134 |
| 113 | 37000.37200.41500.42800.527800 | 53rd floor | 10d | 2025-09-19 | 2025-09-28 | 50FS+15d |  |  | 7 day week No holidays | 7393124 |
| 114 | 37000.37200.41500.42800.527900 | 54th floor | 10d | 2025-10-05 | 2025-10-14 | 51FS+15d |  |  | 7 day week No holidays | 7393114 |
| 115 | 37000.37200.41500.42800.528000 | 55th floor | 10d | 2025-10-21 | 2025-10-30 | 52FS+15d |  |  | 7 day week No holidays | 7393104 |
| 116 | 37000.37200.41500.42800.528100 | 56th floor | 10d | 2025-11-06 | 2025-11-15 | 53FS+15d |  |  | 7 day week No holidays | 7393094 |
| 117 | 37000.37200.41500.42800.528200 | 57th floor | 10d | 2025-11-22 | 2025-12-01 | 54FS+15d |  |  | 7 day week No holidays | 7393444 |
| 118 | 37000.37200.41500.42800.528300 | 58th floor | 10d | 2025-12-08 | 2025-12-17 | 55FS+15d |  |  | 7 day week No holidays | 7393434 |
| 119 | 37000.37200.41500.42800.528400 | 59th floor | 10d | 2025-12-24 | 2026-01-02 | 56FS+15d |  |  | 7 day week No holidays | 7393424 |
| 120 | 37000.37200.41500.42800.528500 | 60th floor | 10d | 2026-01-09 | 2026-01-18 | 57FS+15d |  |  | 7 day week No holidays | 7393414 |
| 121 | 37000.37200.41500.42800.528600 | 61th floor | 10d | 2026-01-25 | 2026-02-03 | 58FS+15d |  |  | 7 day week No holidays | 7393404 |
| 122 | 37000.37200.41500.42800.528700 | 62th floor | 10d | 2026-02-10 | 2026-02-19 | 59FS+15d |  |  | 7 day week No holidays | 7393394 |
| 123 | 37000.37200.41500.42800.528800 | 63th floor | 10d | 2026-02-26 | 2026-03-07 | 60FS+15d |  |  | 7 day week No holidays | 7393384 |
| 124 | 37000.37200.41500.42800.528900 | 64th floor | 10d | 2026-03-14 | 2026-03-23 | 61FS+15d |  |  | 7 day week No holidays | 7393374 |
| 125 | 37000.37200.41500.42800.529000 | 65th floor | 10d | 2026-03-30 | 2026-04-08 | 62FS+15d |  |  | 7 day week No holidays | 7393364 |
| 126 | 37000.37200.41500.42800.529100 | 66th floor | 10d | 2026-04-20 | 2026-04-29 | 63FS+15d |  |  | 7 day week No holidays | 7393354 |
| 127 | 37000.37200.41500.42800.529200 | 67th floor | 10d | 2026-05-11 | 2026-05-20 | 64FS+15d |  |  | 7 day week No holidays | 7393344 |
| 128 | 37000.37200.41500.42800.529300 | 68th floor | 10d | 2026-05-27 | 2026-06-05 | 65FS+15d |  |  | 7 day week No holidays | 7393334 |
| 129 | 37000.37200.41500.42800.529400 | 69th floor | 10d | 2026-06-12 | 2026-06-21 | 66FS+15d |  |  | 7 day week No holidays | 7393324 |
| 130 | 37000.37200.41500.42800.529500 | 70th floor | 10d | 2026-06-28 | 2026-07-07 | 67FS+15d |  |  | 7 day week No holidays | 7393314 |
| 131 | 37000.37200.41500.42800.529600 | 71th floor | 10d | 2026-07-14 | 2026-07-23 | 68FS+15d |  |  | 7 day week No holidays | 7393304 |
| 132 | 37000.37200.41500.42800.529700 | 72th floor | 10d | 2026-07-30 | 2026-08-08 | 69FS+15d |  |  | 7 day week No holidays | 7393294 |
| 133 | 37000.37200.41500.42800.529800 | Terrace | 10d | 2026-08-29 | 2026-09-07 | 70FS+15d |  |  | 7 day week No holidays | 7393284 |
| 134 | 37000.37200.41500.42800.529900 | Above Terrace | 10d | 2026-11-27 | 2026-12-06 | 71FS+15d |  |  | 7 day week No holidays | 7393274 |
| 135 | 37000.37200.41500.422700 | PRELIMS WO - Site initiation Activities | 89d | 2024-09-05 | 2025-01-30 |  | 100% | start no earlier than 2024-09-05 | 7 day week No holidays | 7289315 |
| 136 | 37000.37200.41500.422800 | MOSA- Reception Lobby Works GF | 70d | 2023-06-06 | 2023-09-03 | 10 | 100% | start no earlier than 2023-06-06 | 7 day week No holidays | 7393474 |
| 137 | 37000.37200.41500.422900 | MOSA- Sample Flat | 70d | 2023-06-05 | 2023-08-13 | 136FF+99.5d | 100% | start no earlier than 2023-06-05 | 7 day week No holidays | 7393484 |
| 138 | 37000.37200.41500.423200 | MOSA Sample flat 2104 | 90d | 2024-07-26 | 2025-08-12 |  | 76% | start no earlier than 2024-07-26 | 7 day week No holidays | 7393494 |

| ID | WBS | Task | Duration | Start | Finish | Predecessors | Complete | Constraint | Calendar | Unique_Task_ID |
| --- | --- | --- | --- | --- | --- | --- | --- | --- | --- | --- |
| 139 | 37000.37200.390300 | **Pending elements** | 360d | 2025-05-01 | 2026-06-24 |  |  | start no earlier than 2025-05-01 | Indian Calendar | 10032789 |
| 140 | 37000.37200.390300.513500 | Tie beams | 360d | 2025-05-01 | 2026-06-24 |  |  | start no earlier than 2025-05-01 | Indian Calendar | 10032799 |
| 141 | 37000.37200.390300.513600 | Service slabs | 230d | 2025-05-01 | 2026-01-23 |  |  | start no earlier than 2025-05-01 | Indian Calendar | 10032749 |
| 142 | 37000.37200.390300.513700 | UGT PR STP | 102d | 2025-06-16 | 2025-10-11 |  |  | start no earlier than 2025-06-16 | Indian Calendar | 10032759 |
| 143 | 37000.37200.390300.513800 | OTR water tanks | 115d | 2025-06-16 | 2025-10-27 |  |  | start no earlier than 2025-06-16 | Indian Calendar | 10032769 |
| 144 | 37000.37200.411600 | **Crash Deck** | 484d | 2025-04-15 | 2026-10-30 |  |  | start no earlier than 2025-04-15 | Indian Calendar | 10032790 |
| 145 | 37000.37200.411600.513900 | Crash deck | 484d | 2025-04-15 | 2026-10-30 |  |  | start no earlier than 2025-04-15 | Indian Calendar | 10032809 |
| 146 | 37000.37200.40100 | **Civil Finishing works (Brick work, Plaster,conduiting, concled plumbing, waterproofing)** | 1403.38d | 2023-05-15 | 2027-03-18 |  | 48% | start no earlier than 2023-05-15 | 7 day week No holidays | 7284404 |
| 147 | 37000.37200.40100.40600 | **Flat - Civil Work** | 1369.5d | 2023-05-15 | 2027-02-12 |  | 55% | start no earlier than 2023-05-15 | 7 day week No holidays | 7284414 |
| 148 | 37000.37200.40100.40600.381000 | **9th Floor** | 689d | 2023-06-15 | 2025-05-03 |  | 20% | start no earlier than 2023-06-15 | 7 day week No holidays | 7289184 |
| 149 | 37000.37200.40100.40600.381000.497200 | 9th Flr -Blockwork | 11d | 2023-06-15 | 2023-06-25 | 10FS+120.8d | 100% | start no earlier than 2023-06-15 | 7 day week No holidays | 7296024 |
| 150 | 37000.37200.40100.40600.381000.668000 | 9th Flr -Concealed electrical conduiting | 11d | 2025-04-01 | 2025-04-11 | 149 |  |  | 7 day week No holidays | 7296034 |
| 151 | 37000.37200.40100.40600.381000.668100 | 9th Flr -Backcoat Plaster | 11d | 2025-04-01 | 2025-04-11 | 149 |  |  | 7 day week No holidays | 7296044 |
| 152 | 37000.37200.40100.40600.381000.668200 | 9th Flr -Concealed Plumbing | 11d | 2025-04-12 | 2025-04-22 | 151 |  |  | 7 day week No holidays | 7296054 |
| 153 | 37000.37200.40100.40600.381000.668300 | 9th Flr -Waterproofing Work | 11d | 2025-04-23 | 2025-05-03 | 152 |  |  | 7 day week No holidays | 7296064 |
| 154 | 37000.37200.40100.40600.380900 | **10th Floor** | 136d | 2024-12-30 | 2025-05-14 |  | 5% | start no earlier than 2024-12-30 | 7 day week No holidays | 7289174 |
| 155 | 37000.37200.40100.40600.380900.497400 | 10th Flr -Blockwork | 1d | 2024-12-30 | 2024-12-30 | 149 | 100% | start no earlier than 2024-12-30 | 7 day week No holidays | 7296074 |
| 156 | 37000.37200.40100.40600.380900.497500 | 10th Flr -Concealed electrical conduiting | 1d | 2024-12-30 | 2024-12-30 | 155 | 100% | start no earlier than 2024-12-30 | 7 day week No holidays | 7296084 |
| 157 | 37000.37200.40100.40600.380900.668400 | 10th Flr -Backcoat Plaster | 11d | 2025-04-12 | 2025-04-22 | 151, 155 |  |  | 7 day week No holidays | 7296094 |
| 158 | 37000.37200.40100.40600.380900.668500 | 10th Flr -Concealed Plumbing | 11d | 2025-04-23 | 2025-05-03 | 152, 157 |  |  | 7 day week No holidays | 7296104 |
| 159 | 37000.37200.40100.40600.380900.668600 | 10th Flr -Waterproofing Work | 11d | 2025-05-04 | 2025-05-14 | 153, 158 |  |  | 7 day week No holidays | 7296114 |
| 160 | 37000.37200.40100.40600.380800 | **11th Floor** | 742d | 2023-05-15 | 2025-05-25 |  | 24% | start no earlier than 2023-05-15 | 7 day week No holidays | 7289164 |
| 161 | 37000.37200.40100.40600.380800.497600 | 11th Flr -Blockwork | 14d | 2023-05-15 | 2023-05-28 | 12FS+20d, 155 | 100% | start no earlier than 2023-05-15 | 7 day week No holidays | 7296124 |
| 162 | 37000.37200.40100.40600.380800.668700 | 11th Flr -Concealed electrical conduiting | 11d | 2025-04-01 | 2025-04-11 | 156, 161 |  |  | 7 day week No holidays | 7296134 |
| 163 | 37000.37200.40100.40600.380800.668800 | 11th Flr -Backcoat Plaster | 11d | 2025-04-23 | 2025-05-03 | 157, 161 |  |  | 7 day week No holidays | 7296144 |
| 164 | 37000.37200.40100.40600.380800.668900 | 11th Flr -Concealed Plumbing | 11d | 2025-05-04 | 2025-05-14 | 158, 163 |  |  | 7 day week No holidays | 7296154 |
| 165 | 37000.37200.40100.40600.380800.669000 | 11th Flr -Waterproofing Work | 11d | 2025-05-15 | 2025-05-25 | 159, 164 |  |  | 7 day week No holidays | 2493648 |

| ID | WBS | Task | Duration | Start | Finish | Predecessors | Complete | Constraint | Calendar | Unique_Task_ID |
| --- | --- | --- | --- | --- | --- | --- | --- | --- | --- | --- |
| 166 | 37000.37200.40100.40600.364400 | **12th Floor** | 497d | 2024-01-04 | 2025-05-14 |  | 88% | start no earlier than 2024-01-04 | 7 day week No holidays | 7289154 |
| 167 | 37000.37200.40100.40600.364400.497900 | 12th Flr -Blockwork | 49d | 2024-01-04 | 2024-02-21 | 13, 161 | 100% | start no earlier than 2024-01-04 | 7 day week No holidays | 2493658 |
| 168 | 37000.37200.40100.40600.364400.498000 | 12th Flr -Concealed electrical conduiting | 11d | 2024-07-08 | 2024-07-18 | 162, 167 | 100% | start no earlier than 2024-07-08 | 7 day week No holidays | 7296164 |
| 169 | 37000.37200.40100.40600.364400.669100 | 12th Flr -Backcoat Plaster | 11d | 2025-05-04 | 2025-05-14 | 163, 167 |  |  | 7 day week No holidays | 7296174 |
| 170 | 37000.37200.40100.40600.364400.498200 | 12th Flr -Concealed Plumbing | 11d | 2024-07-15 | 2024-07-25 | 164, 169 | 100% | start no earlier than 2024-07-15 | 7 day week No holidays | 7296184 |
| 171 | 37000.37200.40100.40600.364400.498300 | 12th Flr -Waterproofing Work | 11d | 2024-06-17 | 2024-06-27 | 165, 170 | 100% | start no earlier than 2024-06-17 | 7 day week No holidays | 7296194 |
| 172 | 37000.37200.40100.40600.380700 | **13th Floor** | 444d | 2024-08-15 | 2025-11-01 |  | 11% | start no earlier than 2024-08-15 | 7 day week No holidays | 7289144 |
| 173 | 37000.37200.40100.40600.380700.498400 | 13th Flr -Blockwork | 11d | 2024-08-15 | 2024-08-25 | 14, 167 | 100% | start no earlier than 2024-08-15 | 7 day week No holidays | 7296204 |
| 174 | 37000.37200.40100.40600.380700.498500 | 13th Flr -Concealed electrical conduiting | 11d | 2025-01-15 | 2025-01-25 | 168, 173 | 100% | start no earlier than 2025-01-15 | 7 day week No holidays | 7296214 |
| 175 | 37000.37200.40100.40600.380700.669200 | 13th Flr -Backcoat Plaster | 11d | 2025-05-15 | 2025-05-25 | 169, 173 |  |  | 7 day week No holidays | 7296224 |
| 176 | 37000.37200.40100.40600.380700.669300 | 13th Flr -Concealed Plumbing | 80d | 2025-05-26 | 2025-08-13 | 175, 170 |  |  | 7 day week No holidays | 7296234 |
| 177 | 37000.37200.40100.40600.380700.669400 | 13th Flr -Waterproofing Work | 80d | 2025-08-14 | 2025-11-01 | 176, 171 |  |  | 7 day week No holidays | 7296244 |
| 178 | 37000.37200.40100.40600.364300 | **14th Floor** | 459d | 2024-03-04 | 2025-06-05 |  | 81% | start no earlier than 2024-03-04 | 7 day week No holidays | 7289134 |
| 179 | 37000.37200.40100.40600.364300.498600 | 14th Flr -Blockwork | 15d | 2024-03-04 | 2024-03-30 | 15, 173 | 100% | start no earlier than 2024-03-04 | 7 day week No holidays | 7296254 |
| 180 | 37000.37200.40100.40600.364300.498700 | 14th Flr -Concealed electrical conduiting | 11d | 2024-07-20 | 2024-07-30 | 174, 179 | 100% | start no earlier than 2024-07-20 | 7 day week No holidays | 7296264 |
| 181 | 37000.37200.40100.40600.364300.669500 | 14th Flr -Backcoat Plaster | 11d | 2025-05-26 | 2025-06-05 | 175, 179 |  |  | 7 day week No holidays | 7296274 |
| 182 | 37000.37200.40100.40600.364300.498800 | 14th Flr -Concealed Plumbing | 11d | 2024-07-14 | 2024-07-24 | 176FS-5d, 181FS-5d | 100% | start no earlier than 2024-07-14 | 7 day week No holidays | 7296284 |
| 183 | 37000.37200.40100.40600.364300.498900 | 14th Flr -Waterproofing Work | 11d | 2024-09-15 | 2024-09-25 | 177, 182 | 100% | start no earlier than 2024-09-15 | 7 day week No holidays | 7296294 |
| 184 | 37000.37200.40100.40600.364200 | **15th Floor** | 521d | 2024-01-13 | 2025-06-16 |  | 90% | start no earlier than 2024-01-13 | 7 day week No holidays | 7289124 |
| 185 | 37000.37200.40100.40600.364200.499000 | 15th Flr -Blockwork | 76d | 2024-01-13 | 2024-03-28 | 11FS+0.25d | 100% | start no earlier than 2024-01-13 | 7 day week No holidays | 7296304 |
| 186 | 37000.37200.40100.40600.364200.499100 | 15th Flr -Concealed electrical conduiting | 11d | 2024-07-14 | 2024-07-24 | 180, 185 | 100% | start no earlier than 2024-07-14 | 7 day week No holidays | 7296314 |
| 187 | 37000.37200.40100.40600.364200.669600 | 15th Flr -Backcoat Plaster | 11d | 2025-06-06 | 2025-06-16 | 181, 185 |  |  | 7 day week No holidays | 7296324 |
| 188 | 37000.37200.40100.40600.364200.499200 | 15th Flr -Concealed Plumbing | 11d | 2024-09-15 | 2024-09-25 | 187, 182 | 100% | start no earlier than 2024-09-15 | 7 day week No holidays | 7296334 |
| 189 | 37000.37200.40100.40600.364200.499300 | 15th Flr -Waterproofing Work | 11d | 2024-09-19 | 2024-09-29 | 183FS+47d, 188FS-5d | 100% | start no earlier than 2024-09-19 | 7 day week No holidays | 7296344 |

| ID | WBS | Task | Duration | Start | Finish | Predecessors | Complete | Constraint | Calendar | Unique_Task_ID |
| --- | --- | --- | --- | --- | --- | --- | --- | --- | --- | --- |
| 190 | 37000.37200.40100.40600.364100 | **16th Floor** | 428d | 2024-04-26 | 2025-06-27 |  | 77% | start no earlier than 2024-04-26 | 7 day week No holidays | 7289094 |
| 191 | 37000.37200.40100.40600.364100.499400 | 16th Flr -Blockwork | 4d | 2024-04-26 | 2024-04-29 | 17, 185 | 100% | start no earlier than 2024-04-26 | 7 day week No holidays | 7296354 |
| 192 | 37000.37200.40100.40600.364100.499500 | 16th Flr -Concealed electrical conduiting | 11d | 2024-07-09 | 2024-07-19 | 186, 191FS+30d | 100% | start no earlier than 2024-07-09 | 7 day week No holidays | 7296364 |
| 193 | 37000.37200.40100.40600.364100.669700 | 16th Flr -Backcoat Plaster | 11d | 2025-06-17 | 2025-06-27 | 187, 191FS+30d |  |  | 7 day week No holidays | 7296374 |
| 194 | 37000.37200.40100.40600.364100.499600 | 16th Flr -Concealed Plumbing | 11d | 2024-09-30 | 2024-10-10 | 193, 188 | 100% | start no earlier than 2024-09-30 | 7 day week No holidays | 7296384 |
| 195 | 37000.37200.40100.40600.364100.499700 | 16th Flr -Waterproofing Work | 11d | 2024-09-19 | 2024-09-29 | 189FS+22d, 194FS-5.12d | 100% | start no earlier than 2024-09-19 | 7 day week No holidays | 7296394 |
| 196 | 37000.37200.40100.40600.364000 | **17th Floor** | 457d | 2024-04-19 | 2025-07-19 |  | 46% | start no earlier than 2024-04-19 | 7 day week No holidays | 7289054 |
| 197 | 37000.37200.40100.40600.364000.499800 | 17th Flr -Blockwork | 11d | 2024-04-19 | 2024-04-29 | 18, 191FS+30d | 100% | start no earlier than 2024-04-19 | 7 day week No holidays | 7296404 |
| 198 | 37000.37200.40100.40600.364000.499900 | 17th Flr -Concealed electrical conduiting | 5d | 2024-08-26 | 2024-08-30 | 192, 197 | 100% | start no earlier than 2024-08-26 | 7 day week No holidays | 7296414 |
| 199 | 37000.37200.40100.40600.364000.669800 | 17th Flr -Backcoat Plaster | 11d | 2025-06-28 | 2025-07-08 | 193, 197 |  |  | 7 day week No holidays | 7296424 |
| 200 | 37000.37200.40100.40600.364000.669900 | 17th Flr -Concealed Plumbing | 11d | 2025-07-09 | 2025-07-19 | 199, 194 |  |  | 7 day week No holidays | 7296434 |
| 201 | 37000.37200.40100.40600.364000.500100 | 17th Flr -Waterproofing Work | 3d | 2024-11-19 | 2024-11-21 | 200, 195 | 100% | start no earlier than 2024-11-19 | 7 day week No holidays | 7296444 |
| 202 | 37000.37200.40100.40600.363900 | **18th Floor** | 468d | 2024-04-08 | 2025-07-19 |  | 79% | start no earlier than 2024-04-08 | 7 day week No holidays | 7289044 |
| 203 | 37000.37200.40100.40600.363900.500200 | 18th Flr -Blockwork | 11d | 2024-04-08 | 2024-04-18 | 19, 197 | 100% | start no earlier than 2024-04-08 | 7 day week No holidays | 7296454 |
| 204 | 37000.37200.40100.40600.363900.500300 | 18th Flr -Concealed electrical conduiting | 11d | 2024-08-13 | 2024-08-23 | 198, 203 | 100% | start no earlier than 2024-08-13 | 7 day week No holidays | 7296464 |
| 205 | 37000.37200.40100.40600.363900.670000 | 18th Flr -Backcoat Plaster | 11d | 2025-07-09 | 2025-07-19 | 199, 203 |  |  | 7 day week No holidays | 7296474 |
| 206 | 37000.37200.40100.40600.363900.500400 | 18th Flr -Concealed Plumbing | 10d | 2024-12-06 | 2024-12-15 | 200, 205 | 100% | start no earlier than 2024-12-06 | 7 day week No holidays | 7296484 |
| 207 | 37000.37200.40100.40600.363900.500500 | 18th Flr -Waterproofing Work | 11d | 2024-11-25 | 2024-12-10 | 201, 206FS-10d | 100% | start no earlier than 2024-11-25 | 7 day week No holidays | 7296494 |
| 208 | 37000.37200.40100.40600.363800 | **19th Floor** | 384d | 2024-07-12 | 2025-07-30 |  | 84% | start no earlier than 2024-07-12 | 7 day week No holidays | 7289034 |
| 209 | 37000.37200.40100.40600.363800.500600 | 19th Flr -Blockwork | 2d | 2024-07-12 | 2024-07-13 | 20FS+2d, 203 | 100% | start no earlier than 2024-07-12 | 7 day week No holidays | 7296504 |
| 210 | 37000.37200.40100.40600.363800.500700 | 19th Flr -Concealed electrical conduiting | 11d | 2024-08-14 | 2024-08-24 | 204, 209 | 100% | start no earlier than 2024-08-14 | 7 day week No holidays | 7296514 |
| 211 | 37000.37200.40100.40600.363800.670100 | 19th Flr -Backcoat Plaster | 11d | 2025-07-20 | 2025-07-30 | 205, 209 |  |  | 7 day week No holidays | 7296524 |
| 212 | 37000.37200.40100.40600.363800.500800 | 19th Flr -Concealed Plumbing | 35d | 2024-11-26 | 2024-12-30 | 211, 206 | 100% | start no earlier than 2024-11-26 | 7 day week No holidays | 7296534 |
| 213 | 37000.37200.40100.40600.363800.500900 | 19th Flr -Waterproofing Work | 11d | 2024-11-18 | 2024-11-28 | 207, 212 | 100% | start no earlier than 2024-11-18 | 7 day week No holidays | 7296544 |

| ID | WBS | Task | Duration | Start | Finish | Predecessors | Complete | Constraint | Calendar | Unique_Task_ID |
| --- | --- | --- | --- | --- | --- | --- | --- | --- | --- | --- |
| 214 | 37000.37200.40100.40600.363700 | **20th Floor** | 411d | 2024-06-26 | 2025-08-10 |  | 95% | start no earlier than 2024-06-26 | 7 day week No holidays | 7289024 |
| 215 | 37000.37200.40100.40600.363700.501000 | 20th Flr -Blockwork | 35d | 2024-06-26 | 2024-07-30 | 21FS+77d, 209 | 100% | start no earlier than 2024-06-26 | 7 day week No holidays | 7296554 |
| 216 | 37000.37200.40100.40600.363700.501100 | 20th Flr -Concealed electrical conduiting | 20d | 2024-08-31 | 2024-09-19 | 210, 215 | 100% | start no earlier than 2024-08-31 | 7 day week No holidays | 7296564 |
| 217 | 37000.37200.40100.40600.363700.670200 | 20th Flr -Backcoat Plaster | 11d | 2025-07-31 | 2025-08-10 | 211, 215 |  |  | 7 day week No holidays | 7296574 |
| 218 | 37000.37200.40100.40600.363700.501200 | 20th Flr -Concealed Plumbing | 135d | 2024-08-18 | 2024-12-30 | 217, 212 | 100% | start no earlier than 2024-08-18 | 7 day week No holidays | 7296584 |
| 219 | 37000.37200.40100.40600.363700.501300 | 20th Flr -Waterproofing Work | 31d | 2024-11-12 | 2024-12-12 | 213, 218 | 100% | start no earlier than 2024-11-12 | 7 day week No holidays | 7296594 |
| 220 | 37000.37200.40100.40600.363600 | **21th Floor** | 428d | 2024-06-20 | 2025-08-21 |  | 78% | start no earlier than 2024-06-20 | 7 day week No holidays | 7289014 |
| 221 | 37000.37200.40100.40600.363600.501400 | 21th Flr -Blockwork | 11d | 2024-06-20 | 2024-06-30 | 22, 215 | 100% | start no earlier than 2024-06-20 | 7 day week No holidays | 7296604 |
| 222 | 37000.37200.40100.40600.363600.501500 | 21th Flr -Concealed electrical conduiting | 4d | 2024-09-11 | 2024-09-14 | 216, 221 | 100% | start no earlier than 2024-09-11 | 7 day week No holidays | 7296614 |
| 223 | 37000.37200.40100.40600.363600.670300 | 21th Flr -Backcoat Plaster | 11d | 2025-08-11 | 2025-08-21 | 217, 221 |  |  | 7 day week No holidays | 7296624 |
| 224 | 37000.37200.40100.40600.363600.501600 | 21th Flr -Concealed Plumbing | 13d | 2024-12-10 | 2024-12-22 | 223, 218 | 100% | start no earlier than 2024-12-10 | 7 day week No holidays | 7296634 |
| 225 | 37000.37200.40100.40600.363600.501700 | 21th Flr -Waterproofing Work | 11d | 2024-11-13 | 2024-12-25 | 219FS+20d, 224 | 100% | start no earlier than 2024-11-13 | 7 day week No holidays | 7296644 |
| 226 | 37000.37200.40100.40600.363500 | **22th Floor** | 461d | 2024-05-29 | 2025-09-01 |  | 96% | start no earlier than 2024-05-29 | 7 day week No holidays | 7289004 |
| 227 | 37000.37200.40100.40600.363500.501800 | 22nd Flr -Blockwork | 63d | 2024-05-29 | 2024-07-30 | 23FS+90d, 221 | 100% | start no earlier than 2024-05-29 | 7 day week No holidays | 7296654 |
| 228 | 37000.37200.40100.40600.363500.501900 | 22nd Flr -Concealed electrical conduiting | 18d | 2024-09-12 | 2024-09-29 | 222, 227 | 100% | start no earlier than 2024-09-12 | 7 day week No holidays | 7296664 |
| 229 | 37000.37200.40100.40600.363500.670400 | 22nd Flr -Backcoat Plaster | 11d | 2025-08-22 | 2025-09-01 | 223, 227 |  |  | 7 day week No holidays | 7296674 |
| 230 | 37000.37200.40100.40600.363500.502000 | 22nd Flr -Concealed Plumbing | 189d | 2024-07-26 | 2025-01-30 | 229, 224 | 100% | start no earlier than 2024-07-26 | 7 day week No holidays | 7296684 |
| 231 | 37000.37200.40100.40600.363500.502100 | 22nd Flr -Waterproofing Work | 11d | 2024-12-15 | 2024-12-25 | 225FS+19d, 230 | 100% | start no earlier than 2024-12-15 | 7 day week No holidays | 7296694 |
| 232 | 37000.37200.40100.40600.363400 | **23th Floor** | 415d | 2024-07-25 | 2025-09-12 |  | 95% | start no earlier than 2024-07-25 | 7 day week No holidays | 7288994 |
| 233 | 37000.37200.40100.40600.363400.502200 | 23rd Flr -Blockwork | 20d | 2024-08-31 | 2024-09-19 | 24FS+10d, 227 | 100% | start no earlier than 2024-08-31 | 7 day week No holidays | 7296704 |
| 234 | 37000.37200.40100.40600.363400.502300 | 23rd Flr -Concealed electrical conduiting | 11d | 2024-09-19 | 2024-09-29 | 228, 233FS-3d | 100% | start no earlier than 2024-09-19 | 7 day week No holidays | 7296714 |
| 235 | 37000.37200.40100.40600.363400.670500 | 23rd Flr -Backcoat Plaster | 11d | 2025-09-02 | 2025-09-12 | 229, 233FS-3d |  |  | 7 day week No holidays | 7296724 |
| 236 | 37000.37200.40100.40600.363400.502400 | 23rd Flr -Concealed Plumbing | 190d | 2024-07-25 | 2025-01-30 | 235, 230 | 100% | start no earlier than 2024-07-25 | 7 day week No holidays | 7296734 |
| 237 | 37000.37200.40100.40600.363400.502500 | 23rd Flr -Waterproofing Work | 11d | 2024-12-20 | 2024-12-30 | 231, 236 | 100% | start no earlier than 2024-12-20 | 7 day week No holidays | 7296744 |

| ID | WBS | Task | Duration | Start | Finish | Predecessors | Complete | Constraint | Calendar | Unique_Task_ID |
| --- | --- | --- | --- | --- | --- | --- | --- | --- | --- | --- |
| 238 | 37000.37200.40100.40600.363300 | **24th Floor** | 459d | 2024-06-22 | 2025-09-23 |  | 95% | start no earlier than 2024-06-22 | 7 day week No holidays | 7288984 |
| 239 | 37000.37200.40100.40600.363300.502600 | 24th Flr -Blockwork | 4d | 2024-09-08 | 2024-09-11 | 25FS+11d, 233FS-3d | 100% | start no earlier than 2024-09-08 | 7 day week No holidays | 7296754 |
| 240 | 37000.37200.40100.40600.363300.502700 | 24th Flr -Concealed electrical conduiting | 17d | 2024-09-13 | 2024-09-29 | 234, 239 | 100% | start no earlier than 2024-09-13 | 7 day week No holidays | 7296764 |
| 241 | 37000.37200.40100.40600.363300.670600 | 24th Flr -Backcoat Plaster | 11d | 2025-09-13 | 2025-09-23 | 235, 239 |  |  | 7 day week No holidays | 7296774 |
| 242 | 37000.37200.40100.40600.363300.502800 | 24th Flr -Concealed Plumbing | 223d | 2024-06-22 | 2025-01-30 | 241, 236 | 100% | start no earlier than 2024-06-22 | 7 day week No holidays | 7296784 |
| 243 | 37000.37200.40100.40600.363300.502900 | 24th Flr -Waterproofing Work | 11d | 2025-01-15 | 2025-01-25 | 237, 242 | 100% | start no earlier than 2025-01-15 | 7 day week No holidays | 7296794 |
| 244 | 37000.37200.40100.40600.363200 | **25th Floor** | 388d | 2024-09-12 | 2025-10-04 |  | 83% | start no earlier than 2024-09-12 | 7 day week No holidays | 7288974 |
| 245 | 37000.37200.40100.40600.363200.503000 | 25th Flr -Blockwork | 18d | 2024-09-12 | 2024-09-29 | 26FS-1d, 239 | 100% | start no earlier than 2024-09-12 | 7 day week No holidays | 7296804 |
| 246 | 37000.37200.40100.40600.363200.503100 | 25th Flr -Concealed electrical conduiting | 11d | 2024-10-10 | 2024-10-20 | 240, 245 | 100% | start no earlier than 2024-10-10 | 7 day week No holidays | 7296814 |
| 247 | 37000.37200.40100.40600.363200.670700 | 25th Flr -Backcoat Plaster | 11d | 2025-09-24 | 2025-10-04 | 241, 245 |  |  | 7 day week No holidays | 7296824 |
| 248 | 37000.37200.40100.40600.363200.504000 | 25th Flr -Concealed Plumbing | 15d | 2025-01-16 | 2025-01-30 | 247, 242 | 100% | start no earlier than 2025-01-16 | 7 day week No holidays | 7296834 |
| 249 | 37000.37200.40100.40600.363200.504100 | 25th Flr -Waterproofing Work | 11d | 2024-12-16 | 2024-12-26 | 243, 248 | 100% | start no earlier than 2024-12-16 | 7 day week No holidays | 7296844 |
| 250 | 37000.37200.40100.40600.363100 | **26th Floor** | 388d | 2024-09-23 | 2025-10-15 |  | 71% | start no earlier than 2024-09-23 | 7 day week No holidays | 7288964 |
| 251 | 37000.37200.40100.40600.363100.504200 | 26th Flr -Blockwork | 4d | 2024-09-23 | 2024-09-26 | 27FS-1d, 245 | 100% | start no earlier than 2024-09-23 | 7 day week No holidays | 7296854 |
| 252 | 37000.37200.40100.40600.363100.504300 | 26th Flr -Concealed electrical conduiting | 3d | 2024-12-28 | 2024-12-30 | 246FS-5d, 251 | 100% | start no earlier than 2024-12-28 | 7 day week No holidays | 7296864 |
| 253 | 37000.37200.40100.40600.363100.670800 | 26th Flr -Backcoat Plaster | 11d | 2025-10-05 | 2025-10-15 | 247, 251 |  |  | 7 day week No holidays | 7296874 |
| 254 | 37000.37200.40100.40600.363100.504400 | 26th Flr -Concealed Plumbing | 9d | 2025-01-22 | 2025-01-30 | 253, 248 | 100% | start no earlier than 2025-01-22 | 7 day week No holidays | 7296884 |
| 255 | 37000.37200.40100.40600.363100.504500 | 26th Flr -Waterproofing Work | 11d | 2024-12-20 | 2024-12-30 | 249 | 100% | start no earlier than 2024-12-20 | 7 day week No holidays | 7296894 |
| 256 | 37000.37200.40100.40600.363000 | **27th Floor** | 424d | 2024-08-29 | 2025-10-26 |  | 86% | start no earlier than 2024-08-29 | 7 day week No holidays | 7288954 |
| 257 | 37000.37200.40100.40600.363000.504600 | 27th Flr -Blockwork | 32d | 2024-08-29 | 2024-09-29 | 28FS+4d, 251 | 100% | start no earlier than 2024-08-29 | 7 day week No holidays | 7296904 |
| 258 | 37000.37200.40100.40600.363000.504700 | 27th Flr -Concealed electrical conduiting | 11d | 2024-11-28 | 2024-12-08 | 252, 257FS+1d | 100% | start no earlier than 2024-11-28 | 7 day week No holidays | 7296914 |
| 259 | 37000.37200.40100.40600.363000.670900 | 27th Flr -Backcoat Plaster | 11d | 2025-10-16 | 2025-10-26 | 253, 257FS+1d |  |  | 7 day week No holidays | 7296924 |
| 260 | 37000.37200.40100.40600.363000.504800 | 27th Flr -Concealed Plumbing | 11d | 2025-01-20 | 2025-01-30 | 259, 254 | 100% | start no earlier than 2025-01-20 | 7 day week No holidays | 7296934 |
| 261 | 37000.37200.40100.40600.363000.504900 | 27th Flr -Waterproofing Work | 17d | 2025-01-08 | 2025-01-24 | 255 | 100% | start no earlier than 2025-01-08 | 7 day week No holidays | 7296944 |

| ID | WBS | Task | Duration | Start | Finish | Predecessors | Complete | Constraint | Calendar | Unique_Task_ID |
| --- | --- | --- | --- | --- | --- | --- | --- | --- | --- | --- |
| 262 | 37000.37200.40100.40600.362900 | **28th Floor** | 519d | 2024-06-06 | 2025-11-06 |  | 96% | start no earlier than 2024-06-06 | 7 day week No holidays | 7288944 |
| 263 | 37000.37200.40100.40600.362900.505000 | 28th Flr -Blockwork | 22d | 2024-10-31 | 2024-11-21 | 30FS-3d, 257FS+1d | 100% | start no earlier than 2024-10-31 | 7 day week No holidays | 7296954 |
| 264 | 37000.37200.40100.40600.362900.505100 | 28th Flr -Concealed electrical conduiting | 23d | 2024-11-28 | 2024-12-20 | 258, 263 | 100% | start no earlier than 2024-11-28 | 7 day week No holidays | 7296964 |
| 265 | 37000.37200.40100.40600.362900.671000 | 28th Flr -Backcoat Plaster | 11d | 2025-10-27 | 2025-11-06 | 259, 263 |  |  | 7 day week No holidays | 7296974 |
| 266 | 37000.37200.40100.40600.362900.505200 | 28th Flr -Concealed Plumbing | 239d | 2024-06-06 | 2025-01-30 | 260, 265FS-233d | 100% | start no earlier than 2024-06-06 | 7 day week No holidays | 7296984 |
| 267 | 37000.37200.40100.40600.362900.505300 | 28th Flr -Waterproofing Work | 19d | 2025-01-12 | 2025-01-30 | 261 | 100% | start no earlier than 2025-01-12 | 7 day week No holidays | 7296994 |
| 268 | 37000.37200.40100.40600.362800 | **29th Floor** | 544d | 2024-05-23 | 2025-11-17 |  | 96% | start no earlier than 2024-05-23 | 7 day week No holidays | 7288934 |
| 269 | 37000.37200.40100.40600.362800.505400 | 29th Flr -Blockwork | 20d | 2024-11-30 | 2025-01-30 | 31FS-4d, 263 | 100% | start no earlier than 2024-11-30 | 7 day week No holidays | 7297004 |
| 270 | 37000.37200.40100.40600.362800.505500 | 29th Flr -Concealed electrical conduiting | 11d | 2024-12-12 | 2024-12-22 | 264, 269 | 100% | start no earlier than 2024-12-12 | 7 day week No holidays | 7297014 |
| 271 | 37000.37200.40100.40600.362800.671100 | 29th Flr -Backcoat Plaster | 11d | 2025-11-07 | 2025-11-17 | 265, 269 |  |  | 7 day week No holidays | 7297024 |
| 272 | 37000.37200.40100.40600.362800.505700 | 29th Flr -Concealed Plumbing | 253d | 2024-05-23 | 2025-01-30 | 266 | 100% | start no earlier than 2024-05-23 | 7 day week No holidays | 7297034 |
| 273 | 37000.37200.40100.40600.362800.505800 | 29th Flr -Waterproofing Work | 48d | 2024-12-14 | 2025-01-30 | 267FS-16d | 100% | start no earlier than 2024-12-14 | 7 day week No holidays | 7297044 |
| 274 | 37000.37200.40100.40600.362700 | **30th Floor** | 491d | 2024-07-26 | 2025-11-28 |  | 95% | start no earlier than 2024-07-26 | 7 day week No holidays | 7288924 |
| 275 | 37000.37200.40100.40600.362700.505900 | 30th Flr -Blockwork | 11d | 2024-11-11 | 2024-11-21 | 32, 269 | 100% | start no earlier than 2024-11-11 | 7 day week No holidays | 7297054 |
| 276 | 37000.37200.40100.40600.362700.506000 | 30th Flr -Concealed electrical conduiting | 11d | 2024-11-19 | 2024-11-29 | 270, 275 | 100% | start no earlier than 2024-11-19 | 7 day week No holidays | 7297064 |
| 277 | 37000.37200.40100.40600.362700.671200 | 30th Flr -Backcoat Plaster | 11d | 2025-11-18 | 2025-11-28 | 271, 275 |  |  | 7 day week No holidays | 7297074 |
| 278 | 37000.37200.40100.40600.362700.506100 | 30th Flr -Concealed Plumbing | 190d | 2024-07-26 | 2025-03-20 | 272 | 100% | start no earlier than 2024-07-26 | 7 day week No holidays | 7297084 |
| 279 | 37000.37200.40100.40600.362700.506200 | 30th Flr -Waterproofing Work | 21d | 2025-01-10 | 2025-01-30 | 273 | 100% | start no earlier than 2025-01-10 | 7 day week No holidays | 7297094 |
| 280 | 37000.37200.40100.40600.362600 | **31th Floor** | 379d | 2024-11-26 | 2025-12-09 |  | 86% | start no earlier than 2024-11-26 | 7 day week No holidays | 7288914 |
| 281 | 37000.37200.40100.40600.362600.506300 | 31st Flr -Blockwork | 19d | 2024-11-26 | 2024-12-14 | 33FS-9d, 275 | 100% | start no earlier than 2024-11-26 | 7 day week No holidays | 7297104 |
| 282 | 37000.37200.40100.40600.362600.506400 | 31st Flr -Concealed electrical conduiting | 11d | 2025-01-11 | 2025-01-21 | 276, 281 | 100% | start no earlier than 2025-01-11 | 7 day week No holidays | 7297114 |
| 283 | 37000.37200.40100.40600.362600.671300 | 31st Flr -Backcoat Plaster | 11d | 2025-11-29 | 2025-12-09 | 277, 281 |  |  | 7 day week No holidays | 7297124 |
| 284 | 37000.37200.40100.40600.362600.506600 | 31st Flr -Concealed Plumbing | 24d | 2025-03-07 | 2025-03-30 | 278 | 100% | start no earlier than 2025-03-07 | 7 day week No holidays | 7297134 |
| 285 | 37000.37200.40100.40600.362600.506700 | 31st Flr -Waterproofing Work | 17d | 2025-01-14 | 2025-01-30 | 279 | 100% | start no earlier than 2025-01-14 | 7 day week No holidays | 7297144 |

| ID | WBS | Task | Duration | Start | Finish | Predecessors | Complete | Constraint | Calendar | Unique_Task_ID |
| --- | --- | --- | --- | --- | --- | --- | --- | --- | --- | --- |
| 286 | 37000.37200.40100.40600.362500 | **32th Floor** | 693d | 2024-01-28 | 2025-12-20 |  | 97% | start no earlier than 2024-01-28 | 7 day week No holidays | 7288904 |
| 287 | 37000.37200.40100.40600.362500.506800 | 32nd Flr -Blockwork | 11d | 2024-12-20 | 2024-12-30 | 34, 281 | 100% | start no earlier than 2024-12-20 | 7 day week No holidays | 7297154 |
| 288 | 37000.37200.40100.40600.362500.506900 | 32nd Flr -Concealed electrical conduiting | 11d | 2025-01-20 | 2025-01-30 | 282, 287 | 100% | start no earlier than 2025-01-20 | 7 day week No holidays | 7297164 |
| 289 | 37000.37200.40100.40600.362500.671400 | 32nd Flr -Backcoat Plaster | 11d | 2025-12-10 | 2025-12-20 | 283, 287 |  |  | 7 day week No holidays | 7297174 |
| 290 | 37000.37200.40100.40600.362500.507000 | 32nd Flr -Concealed Plumbing | 1d | 2025-03-30 | 2025-03-30 | 284FS-40d | 100% | start no earlier than 2025-03-30 | 7 day week No holidays | 7297184 |
| 291 | 37000.37200.40100.40600.362500.507100 | 32nd Flr -Waterproofing Work | 369d | 2024-01-28 | 2025-01-30 | 290, 285 | 100% |  | 7 day week No holidays | 7297194 |
| 292 | 37000.37200.40100.40600.362400 | **33th Floor** | 705d | 2024-01-27 | 2025-12-31 |  | 97% | start no earlier than 2024-01-27 | 7 day week No holidays | 7288894 |
| 293 | 37000.37200.40100.40600.362400.507200 | 33rd Flr -Blockwork | 16d | 2025-01-15 | 2025-01-30 | 287 | 100% | start no earlier than 2025-01-15 | 7 day week No holidays | 7297204 |
| 294 | 37000.37200.40100.40600.362400.507300 | 33rd Flr -Concealed electrical conduiting | 11d | 2025-01-20 | 2025-01-30 | 288, 293 | 100% | start no earlier than 2025-01-20 | 7 day week No holidays | 7297214 |
| 295 | 37000.37200.40100.40600.362400.671500 | 33rd Flr -Backcoat Plaster | 11d | 2025-12-21 | 2025-12-31 | 289, 293 |  |  | 7 day week No holidays | 7297224 |
| 296 | 37000.37200.40100.40600.362400.507400 | 33rd Flr -Concealed Plumbing | 1d | 2025-03-30 | 2025-03-30 | 290FS-10d | 100% | start no earlier than 2025-03-30 | 7 day week No holidays | 7297234 |
| 297 | 37000.37200.40100.40600.362400.507500 | 33rd Flr -Waterproofing Work | 371d | 2024-01-27 | 2025-03-30 | 291FS-428d | 100% | start no earlier than 2024-01-27 | 7 day week No holidays | 7297244 |
| 298 | 37000.37200.40100.40600.380600 | **34th Floor** | 363d | 2025-01-14 | 2026-01-11 |  | 36% | start no earlier than 2025-01-14 | 7 day week No holidays | 7288884 |
| 299 | 37000.37200.40100.40600.380600.507600 | 34th Flr -Blockwork | 17d | 2025-01-14 | 2025-01-30 | 293FS-1d | 100% | start no earlier than 2025-01-14 | 7 day week No holidays | 7297254 |
| 300 | 37000.37200.40100.40600.380600.507700 | 34th Flr -Concealed electrical conduiting | 8d | 2025-03-13 | 2025-03-20 | 294, 299 | 100% | start no earlier than 2025-03-13 | 7 day week No holidays | 7297264 |
| 301 | 37000.37200.40100.40600.380600.671600 | 34th Flr -Backcoat Plaster | 11d | 2026-01-01 | 2026-01-11 | 295, 299 |  |  | 7 day week No holidays | 7297274 |
| 302 | 37000.37200.40100.40600.380600.671700 | 34th Flr -Concealed Plumbing | 17d | 2025-04-01 | 2025-04-17 | 296 |  |  | 7 day week No holidays | 7297284 |
| 303 | 37000.37200.40100.40600.380600.671800 | 34th Flr -Waterproofing Work | 15d | 2025-04-01 | 2025-04-15 | 297 |  |  | 7 day week No holidays | 7297294 |
| 304 | 37000.37200.40100.40600.362300 | **35th Floor** | 369d | 2025-01-19 | 2026-01-22 |  | 55% | start no earlier than 2025-01-19 | 7 day week No holidays | 7288874 |
| 305 | 37000.37200.40100.40600.362300.511200 | 35th Flr -Blockwork | 12d | 2025-01-19 | 2025-01-30 | 299 | 100% | start no earlier than 2025-01-19 | 7 day week No holidays | 7297304 |
| 306 | 37000.37200.40100.40600.362300.510600 | 35th Flr -Concealed electrical conduiting | 8d | 2025-03-27 | 2025-04-04 | 300, 305 | 50% | start no earlier than 2025-03-27 | 7 day week No holidays | 7297314 |
| 307 | 37000.37200.40100.40600.362300.671900 | 35th Flr -Backcoat Plaster | 11d | 2026-01-12 | 2026-01-22 | 301, 305 |  |  | 7 day week No holidays | 7297324 |
| 308 | 37000.37200.40100.40600.362300.672000 | 35th Flr -Concealed Plumbing | 10d | 2025-04-18 | 2025-04-27 | 302 |  |  | 7 day week No holidays | 7297334 |
| 309 | 37000.37200.40100.40600.362300.508600 | 35th Flr -Waterproofing Work | 15d | 2025-03-16 | 2025-03-30 | 303 | 100% | start no earlier than 2025-03-16 | 7 day week No holidays | 7297344 |

| ID | WBS | Task | Duration | Start | Finish | Predecessors | Complete | Constraint | Calendar | Unique_Task_ID |
| --- | --- | --- | --- | --- | --- | --- | --- | --- | --- | --- |
| 310 | 37000.37200.40100.40600.380500 | **36th Floor** | 323d | 2025-03-17 | 2026-02-02 |  | 25% | start no earlier than 2025-03-17 | 7 day week No holidays | 7288864 |
| 311 | 37000.37200.40100.40600.380500.508500 | 36th Flr -Blockwork | 14d | 2025-03-17 | 2025-03-30 | 305 | 100% | start no earlier than 2025-03-17 | 7 day week No holidays | 7297354 |
| 312 | 37000.37200.40100.40600.380500.672100 | 36th Flr -Concealed electrical conduiting | 10d | 2025-04-05 | 2025-04-14 | 306 |  |  | 7 day week No holidays | 7297364 |
| 313 | 37000.37200.40100.40600.380500.672200 | 36th Flr -Backcoat Plaster | 11d | 2026-01-23 | 2026-02-02 | 307, 311 |  |  | 7 day week No holidays | 7297374 |
| 314 | 37000.37200.40100.40600.380500.672300 | 36th Flr -Concealed Plumbing | 11d | 2025-04-28 | 2025-05-08 | 308 |  |  | 7 day week No holidays | 7297384 |
| 315 | 37000.37200.40100.40600.380500.672400 | 36th Flr -Waterproofing Work | 10d | 2025-04-01 | 2025-04-10 | 309 |  |  | 7 day week No holidays | 7297394 |
| 316 | 37000.37200.40100.40600.380400 | **37th Floor** | 336.62d | 2025-03-14 | 2026-02-13 |  | 15% | start no earlier than 2025-03-14 | 7 day week No holidays | 7288854 |
| 317 | 37000.37200.40100.40600.380400.508400 | 37th Flr -Blockwork | 10d | 2025-03-14 | 2025-03-24 | 311FS+4.38d | 100% | start no earlier than 2025-03-14 | 7 day week No holidays | 7297404 |
| 318 | 37000.37200.40100.40600.380400.672500 | 37th Flr -Concealed electrical conduiting | 11d | 2025-04-15 | 2025-04-25 | 312 |  |  | 7 day week No holidays | 7297414 |
| 319 | 37000.37200.40100.40600.380400.672600 | 37th Flr -Backcoat Plaster | 11d | 2026-02-03 | 2026-02-13 | 313, 317 |  |  | 7 day week No holidays | 7297424 |
| 320 | 37000.37200.40100.40600.380400.672700 | 37th Flr -Concealed Plumbing | 17d | 2025-05-09 | 2025-05-25 | 314 |  |  | 7 day week No holidays | 7297434 |
| 321 | 37000.37200.40100.40600.380400.672800 | 37th Flr -Waterproofing Work | 14d | 2025-04-11 | 2025-04-24 | 315 |  |  | 7 day week No holidays | 7297444 |
| 322 | 37000.37200.40100.40600.380300 | **38th Floor** | 335d | 2025-03-27 | 2026-02-24 |  | 6% | start no earlier than 2025-03-27 | 7 day week No holidays | 7288844 |
| 323 | 37000.37200.40100.40600.380300.508200 | 38th Flr -Blockwork | 18d | 2025-03-27 | 2025-04-14 | 317 | 22% | start no earlier than 2025-03-27 | 7 day week No holidays | 7297454 |
| 324 | 37000.37200.40100.40600.380300.672900 | 38th Flr -Concealed electrical conduiting | 11d | 2025-04-26 | 2025-05-06 | 318, 323 |  |  | 7 day week No holidays | 7297464 |
| 325 | 37000.37200.40100.40600.380300.673000 | 38th Flr -Backcoat Plaster | 11d | 2026-02-14 | 2026-02-24 | 319, 323 |  |  | 7 day week No holidays | 7297474 |
| 326 | 37000.37200.40100.40600.380300.673100 | 38th Flr -Concealed Plumbing | 11d | 2025-05-26 | 2025-06-05 | 320 |  |  | 7 day week No holidays | 7297484 |
| 327 | 37000.37200.40100.40600.380300.673200 | 38th Flr -Waterproofing Work | 15d | 2025-04-25 | 2025-05-09 | 321 |  |  | 7 day week No holidays | 7297494 |
| 328 | 37000.37200.40100.40600.380200 | **39th Floor** | 327d | 2025-04-15 | 2026-03-07 |  |  | start no earlier than 2025-04-15 | 7 day week No holidays | 7288834 |
| 329 | 37000.37200.40100.40600.380200.673300 | 39th Flr -Blockwork | 12d | 2025-04-15 | 2025-04-26 | 323 |  |  | 7 day week No holidays | 7297504 |
| 330 | 37000.37200.40100.40600.380200.673400 | 39th Flr -Concealed electrical conduiting | 11d | 2025-05-07 | 2025-05-17 | 324, 329 |  |  | 7 day week No holidays | 7297514 |
| 331 | 37000.37200.40100.40600.380200.673500 | 39th Flr -Backcoat Plaster | 11d | 2026-02-25 | 2026-03-07 | 325, 329 |  |  | 7 day week No holidays | 7297524 |
| 332 | 37000.37200.40100.40600.380200.673600 | 39th Flr -Concealed Plumbing | 11d | 2025-06-06 | 2025-06-16 | 326 |  |  | 7 day week No holidays | 7297534 |
| 333 | 37000.37200.40100.40600.380200.673700 | 39th Flr -Waterproofing Work | 11d | 2025-05-10 | 2025-05-20 | 327 |  |  | 7 day week No holidays | 7297544 |

| ID | WBS | Task | Duration | Start | Finish | Predecessors | Constraint | Calendar | Unique_Task_ID |
| --- | --- | --- | --- | --- | --- | --- | --- | --- | --- |
| 334 | 37000.37200.40100.40600.380100 | **40th Floor** | 326d | 2025-04-27 | 2026-03-18 |  | start no earlier than 2025-04-27 | 7 day week No holidays | 7288824 |
| 335 | 37000.37200.40100.40600.380100.673800 | 40th Flr -Blockwork | 12d | 2025-04-27 | 2025-05-08 | 329 |  | 7 day week No holidays | 7297554 |
| 336 | 37000.37200.40100.40600.380100.673900 | 40th Flr -Concealed electrical conduiting | 11d | 2025-05-18 | 2025-05-28 | 330, 335 |  | 7 day week No holidays | 7297564 |
| 337 | 37000.37200.40100.40600.380100.674000 | 40th Flr -Backcoat Plaster | 11d | 2026-03-08 | 2026-03-18 | 331, 335 |  | 7 day week No holidays | 7297574 |
| 338 | 37000.37200.40100.40600.380100.674100 | 40th Flr -Concealed Plumbing | 11d | 2025-06-17 | 2025-06-27 | 332 |  | 7 day week No holidays | 7297584 |
| 339 | 37000.37200.40100.40600.380100.674200 | 40th Flr -Waterproofing Work | 15d | 2025-05-21 | 2025-06-04 | 333 |  | 7 day week No holidays | 7297594 |
| 340 | 37000.37200.40100.40600.380000 | **41th Floor** | 325d | 2025-05-09 | 2026-03-29 |  | start no earlier than 2025-05-09 | 7 day week No holidays | 7288814 |
| 341 | 37000.37200.40100.40600.380000.674300 | 41st Flr -Blockwork | 10d | 2025-05-09 | 2025-05-18 | 335 |  | 7 day week No holidays | 7297604 |
| 342 | 37000.37200.40100.40600.380000.674400 | 41st Flr -Concealed electrical conduiting | 11d | 2025-05-29 | 2025-06-08 | 336, 341 |  | 7 day week No holidays | 7297614 |
| 343 | 37000.37200.40100.40600.380000.674500 | 41st Flr -Backcoat Plaster | 11d | 2026-03-19 | 2026-03-29 | 337, 341 |  | 7 day week No holidays | 7297624 |
| 344 | 37000.37200.40100.40600.380000.674600 | 41st Flr -Concealed Plumbing | 11d | 2025-06-28 | 2025-07-08 | 338 |  | 7 day week No holidays | 7297634 |
| 345 | 37000.37200.40100.40600.380000.674700 | 41st Flr -Waterproofing Work | 15d | 2025-06-05 | 2025-06-19 | 339 |  | 7 day week No holidays | 7297644 |
| 346 | 37000.37200.40100.40600.379900 | **42th Floor** | 311d | 2025-06-03 | 2026-04-09 |  | start no earlier than 2025-06-03 | 7 day week No holidays | 7288804 |
| 347 | 37000.37200.40100.40600.379900.674800 | 42nd Flr -Blockwork | 12d | 2025-06-03 | 2025-06-14 | 44, 341 |  | 7 day week No holidays | 7297654 |
| 348 | 37000.37200.40100.40600.379900.674900 | 42nd Flr -Concealed electrical conduiting | 11d | 2025-06-15 | 2025-06-25 | 342, 347 |  | 7 day week No holidays | 7297664 |
| 349 | 37000.37200.40100.40600.379900.675000 | 42nd Flr -Backcoat Plaster | 11d | 2026-03-30 | 2026-04-09 | 343, 347 |  | 7 day week No holidays | 7297674 |
| 350 | 37000.37200.40100.40600.379900.675100 | 42nd Flr -Concealed Plumbing | 15d | 2025-07-09 | 2025-07-23 | 344 |  | 7 day week No holidays | 7297684 |
| 351 | 37000.37200.40100.40600.379900.675200 | 42nd Flr -Waterproofing Work | 15d | 2025-06-20 | 2025-07-04 | 345 |  | 7 day week No holidays | 7297694 |
| 352 | 37000.37200.40100.40600.379800 | **43th Floor** | 310d | 2025-06-15 | 2026-04-20 |  | start no earlier than 2025-06-15 | 7 day week No holidays | 7288794 |
| 353 | 37000.37200.40100.40600.379800.675300 | 43rd Flr -Blockwork | 12d | 2025-06-15 | 2025-06-26 | 45, 347 |  | 7 day week No holidays | 7297704 |
| 354 | 37000.37200.40100.40600.379800.675400 | 43rd Flr -Concealed electrical conduiting | 11d | 2025-06-27 | 2025-07-07 | 348, 353 |  | 7 day week No holidays | 7297714 |
| 355 | 37000.37200.40100.40600.379800.675500 | 43rd Flr -Backcoat Plaster | 11d | 2026-04-10 | 2026-04-20 | 349, 353 |  | 7 day week No holidays | 7297724 |
| 356 | 37000.37200.40100.40600.379800.675600 | 43rd Flr -Concealed Plumbing | 15d | 2025-07-24 | 2025-08-07 | 350 |  | 7 day week No holidays | 7297734 |
| 357 | 37000.37200.40100.40600.379800.675700 | 43rd Flr -Waterproofing Work | 15d | 2025-07-05 | 2025-07-19 | 351 |  | 7 day week No holidays | 7297744 |

| ID | WBS | Task | Duration | Start | Finish | Predecessors | Constraint | Calendar | Unique_Task_ID |
| --- | --- | --- | --- | --- | --- | --- | --- | --- | --- |
| 358 | 37000.37200.40100.40600.379700 | **44th Floor** | 309d | 2025-06-27 | 2026-05-01 |  | start no earlier than 2025-06-27 | 7 day week No holidays | 7288784 |
| 359 | 37000.37200.40100.40600.379700.675800 | 44th Flr -Blockwork | 11d | 2025-06-27 | 2025-07-07 | 46, 353 |  | 7 day week No holidays | 7297754 |
| 360 | 37000.37200.40100.40600.379700.675900 | 44th Flr -Concealed electrical conduiting | 11d | 2025-07-08 | 2025-07-18 | 354, 359 |  | 7 day week No holidays | 7297764 |
| 361 | 37000.37200.40100.40600.379700.676000 | 44th Flr -Backcoat Plaster | 11d | 2026-04-21 | 2026-05-01 | 355, 359 |  | 7 day week No holidays | 7297774 |
| 362 | 37000.37200.40100.40600.379700.676100 | 44th Flr -Concealed Plumbing | 15d | 2025-08-08 | 2025-08-22 | 356 |  | 7 day week No holidays | 7297784 |
| 363 | 37000.37200.40100.40600.379700.676200 | 44th Flr -Waterproofing Work | 12d | 2025-07-20 | 2025-07-31 | 357 |  | 7 day week No holidays | 7297794 |
| 364 | 37000.37200.40100.40600.379600 | **45th Floor** | 309d | 2025-07-08 | 2026-05-12 |  | start no earlier than 2025-07-08 | 7 day week No holidays | 7288754 |
| 365 | 37000.37200.40100.40600.379600.676300 | 45th Flr -Blockwork | 12d | 2025-07-08 | 2025-07-19 | 359 |  | 7 day week No holidays | 7297804 |
| 366 | 37000.37200.40100.40600.379600.676400 | 45th Flr -Concealed electrical conduiting | 11d | 2025-07-20 | 2025-07-30 | 360, 365 |  | 7 day week No holidays | 7297814 |
| 367 | 37000.37200.40100.40600.379600.676500 | 45th Flr -Backcoat Plaster | 11d | 2026-05-02 | 2026-05-12 | 361, 365 |  | 7 day week No holidays | 7297824 |
| 368 | 37000.37200.40100.40600.379600.676600 | 45th Flr -Concealed Plumbing | 11d | 2025-08-23 | 2025-09-02 | 362 |  | 7 day week No holidays | 7297834 |
| 369 | 37000.37200.40100.40600.379600.676700 | 45th Flr -Waterproofing Work | 15d | 2025-08-01 | 2025-08-15 | 363 |  | 7 day week No holidays | 7297844 |
| 370 | 37000.37200.40100.40600.379500 | **46th Floor** | 299d | 2025-07-29 | 2026-05-23 |  | start no earlier than 2025-07-29 | 7 day week No holidays | 7288714 |
| 371 | 37000.37200.40100.40600.379500.676800 | 46th Flr -Blockwork | 12d | 2025-07-29 | 2025-08-09 | 48, 365 |  | 7 day week No holidays | 7297854 |
| 372 | 37000.37200.40100.40600.379500.676900 | 46th Flr -Concealed electrical conduiting | 11d | 2025-08-10 | 2025-08-20 | 366, 371 |  | 7 day week No holidays | 7297864 |
| 373 | 37000.37200.40100.40600.379500.677000 | 46th Flr -Backcoat Plaster | 11d | 2026-05-13 | 2026-05-23 | 367, 371 |  | 7 day week No holidays | 7297874 |
| 374 | 37000.37200.40100.40600.379500.677100 | 46th Flr -Concealed Plumbing | 15d | 2025-09-03 | 2025-09-17 | 368 |  | 7 day week No holidays | 7297884 |
| 375 | 37000.37200.40100.40600.379500.677200 | 46th Flr -Waterproofing Work | 15d | 2025-08-16 | 2025-08-30 | 369 |  | 7 day week No holidays | 7297894 |
| 376 | 37000.37200.40100.40600.379400 | **47th Floor** | 294d | 2025-08-14 | 2026-06-03 |  | start no earlier than 2025-08-14 | 7 day week No holidays | 7289104 |
| 377 | 37000.37200.40100.40600.379400.677300 | 47th Flr -Blockwork | 11d | 2025-08-14 | 2025-08-24 | 49, 371 |  | 7 day week No holidays | 7297904 |
| 378 | 37000.37200.40100.40600.379400.677400 | 47th Flr -Concealed electrical conduiting | 11d | 2025-08-25 | 2025-09-04 | 372, 377 |  | 7 day week No holidays | 7297914 |
| 379 | 37000.37200.40100.40600.379400.677500 | 47th Flr -Backcoat Plaster | 11d | 2026-05-24 | 2026-06-03 | 373, 377 |  | 7 day week No holidays | 7297924 |
| 380 | 37000.37200.40100.40600.379400.677600 | 47th Flr -Concealed Plumbing | 15d | 2025-09-18 | 2025-10-02 | 374 |  | 7 day week No holidays | 7297934 |
| 381 | 37000.37200.40100.40600.379400.677700 | 47th Flr -Waterproofing Work | 12d | 2025-08-31 | 2025-09-11 | 375 |  | 7 day week No holidays | 7297944 |

| ID | WBS | Task | Duration | Start | Finish | Predecessors | Constraint | Calendar | Unique_Task_ID |
| --- | --- | --- | --- | --- | --- | --- | --- | --- | --- |
| 382 | 37000.37200.40100.40600.379300 | **48th Floor** | 284d | 2025-09-04 | 2026-06-14 |  | start no earlier than 2025-09-04 | 7 day week No holidays | 7289244 |
| 383 | 37000.37200.40100.40600.379300.677800 | 48th Flr -Blockwork | 11d | 2025-09-04 | 2025-09-14 | 50, 377 |  | 7 day week No holidays | 7297954 |
| 384 | 37000.37200.40100.40600.379300.677900 | 48th Flr -Concealed electrical conduiting | 11d | 2025-09-15 | 2025-09-25 | 378, 383 |  | 7 day week No holidays | 7297964 |
| 385 | 37000.37200.40100.40600.379300.678000 | 48th Flr -Backcoat Plaster | 11d | 2026-06-04 | 2026-06-14 | 379, 383 |  | 7 day week No holidays | 7297974 |
| 386 | 37000.37200.40100.40600.379300.678100 | 48th Flr -Concealed Plumbing | 11d | 2025-10-03 | 2025-10-13 | 380 |  | 7 day week No holidays | 7297984 |
| 387 | 37000.37200.40100.40600.379300.678200 | 48th Flr -Waterproofing Work | 15d | 2025-09-12 | 2025-09-26 | 381 |  | 7 day week No holidays | 7297994 |
| 388 | 37000.37200.40100.40600.379200 | **49th Floor** | 279d | 2025-09-20 | 2026-06-25 |  | start no earlier than 2025-09-20 | 7 day week No holidays | 7289264 |
| 389 | 37000.37200.40100.40600.379200.678300 | 49th Flr -Blockwork | 11d | 2025-09-20 | 2025-09-30 | 51, 383 |  | 7 day week No holidays | 7298004 |
| 390 | 37000.37200.40100.40600.379200.678400 | 49th Flr -Concealed electrical conduiting | 11d | 2025-10-01 | 2025-10-11 | 384, 389 |  | 7 day week No holidays | 7298014 |
| 391 | 37000.37200.40100.40600.379200.678500 | 49th Flr -Backcoat Plaster | 11d | 2026-06-15 | 2026-06-25 | 385, 389 |  | 7 day week No holidays | 7298024 |
| 392 | 37000.37200.40100.40600.379200.678600 | 49th Flr -Concealed Plumbing | 15d | 2025-10-14 | 2025-10-28 | 386 |  | 7 day week No holidays | 7298034 |
| 393 | 37000.37200.40100.40600.379200.678700 | 49th Flr -Waterproofing Work | 15d | 2025-09-27 | 2025-10-11 | 387 |  | 7 day week No holidays | 7298044 |
| 394 | 37000.37200.40100.40600.379100 | **50th Floor** | 274d | 2025-10-06 | 2026-07-06 |  | start no earlier than 2025-10-06 | 7 day week No holidays | 7289254 |
| 395 | 37000.37200.40100.40600.379100.678800 | 50th Flr -Blockwork | 10d | 2025-10-06 | 2025-10-15 | 52, 389 |  | 7 day week No holidays | 7298054 |
| 396 | 37000.37200.40100.40600.379100.678900 | 50th Flr -Concealed electrical conduiting | 11d | 2025-10-16 | 2025-10-26 | 390, 395 |  | 7 day week No holidays | 7298064 |
| 397 | 37000.37200.40100.40600.379100.679000 | 50th Flr -Backcoat Plaster | 11d | 2026-06-26 | 2026-07-06 | 391, 395 |  | 7 day week No holidays | 7298074 |
| 398 | 37000.37200.40100.40600.379100.679100 | 50th Flr -Concealed Plumbing | 15d | 2025-10-29 | 2025-11-12 | 392 |  | 7 day week No holidays | 7298084 |
| 399 | 37000.37200.40100.40600.379100.679200 | 50th Flr -Waterproofing Work | 12d | 2025-10-12 | 2025-10-23 | 393 |  | 7 day week No holidays | 7298094 |
| 400 | 37000.37200.40100.40600.379000 | **51th Floor** | 269d | 2025-10-22 | 2026-07-17 |  | start no earlier than 2025-10-22 | 7 day week No holidays | 7289234 |
| 401 | 37000.37200.40100.40600.379000.679300 | 51st Flr -Blockwork | 11d | 2025-10-22 | 2025-11-01 | 53, 395 |  | 7 day week No holidays | 7298104 |
| 402 | 37000.37200.40100.40600.379000.679400 | 51st Flr -Concealed electrical conduiting | 11d | 2025-11-02 | 2025-11-12 | 396, 401 |  | 7 day week No holidays | 7298114 |
| 403 | 37000.37200.40100.40600.379000.679500 | 51st Flr -Backcoat Plaster | 11d | 2026-07-07 | 2026-07-17 | 397, 401 |  | 7 day week No holidays | 7298124 |
| 404 | 37000.37200.40100.40600.379000.679600 | 51st Flr -Concealed Plumbing | 15d | 2025-11-13 | 2025-11-27 | 398 |  | 7 day week No holidays | 7298134 |
| 405 | 37000.37200.40100.40600.379000.679700 | 51st Flr -Waterproofing Work | 12d | 2025-10-24 | 2025-11-04 | 399 |  | 7 day week No holidays | 7298144 |

| ID | WBS | Task | Duration | Start | Finish | Predecessors | Constraint | Calendar | Unique_Task_ID |
| --- | --- | --- | --- | --- | --- | --- | --- | --- | --- |
| 406 | 37000.37200.40100.40600.378900 | **52th Floor** | 269d | 2025-11-02 | 2026-07-28 |  | start no earlier than 2025-11-02 | 7 day week No holidays | 7289224 |
| 407 | 37000.37200.40100.40600.378900.679800 | 52nd Flr -Blockwork | 12d | 2025-11-02 | 2025-11-13 | 401 |  | 7 day week No holidays | 7298154 |
| 408 | 37000.37200.40100.40600.378900.679900 | 52nd Flr -Concealed electrical conduiting | 11d | 2025-11-14 | 2025-11-24 | 402, 407 |  | 7 day week No holidays | 7298164 |
| 409 | 37000.37200.40100.40600.378900.680000 | 52nd Flr -Backcoat Plaster | 11d | 2026-07-18 | 2026-07-28 | 403, 407 |  | 7 day week No holidays | 7298174 |
| 410 | 37000.37200.40100.40600.378900.680100 | 52nd Flr -Concealed Plumbing | 11d | 2025-11-28 | 2025-12-08 | 404 |  | 7 day week No holidays | 7298184 |
| 411 | 37000.37200.40100.40600.378900.680200 | 52nd Flr -Waterproofing Work | 15d | 2025-11-05 | 2025-11-19 | 405 |  | 7 day week No holidays | 7298194 |
| 412 | 37000.37200.40100.40600.378800 | **53th Floor** | 262d | 2025-11-20 | 2026-08-08 |  | start no earlier than 2025-11-20 | 7 day week No holidays | 7289214 |
| 413 | 37000.37200.40100.40600.378800.680300 | 53rd Flr -Blockwork | 10d | 2025-11-23 | 2025-12-02 | 55, 407 |  | 7 day week No holidays | 7298204 |
| 414 | 37000.37200.40100.40600.378800.680400 | 53rd Flr -Concealed electrical conduiting | 11d | 2025-12-03 | 2025-12-13 | 408, 413 |  | 7 day week No holidays | 7298214 |
| 415 | 37000.37200.40100.40600.378800.680500 | 53rd Flr -Backcoat Plaster | 11d | 2026-07-29 | 2026-08-08 | 409, 413 |  | 7 day week No holidays | 7298224 |
| 416 | 37000.37200.40100.40600.378800.680600 | 53rd Flr -Concealed Plumbing | 11d | 2025-12-09 | 2025-12-19 | 410 |  | 7 day week No holidays | 7298234 |
| 417 | 37000.37200.40100.40600.378800.680700 | 53rd Flr -Waterproofing Work | 12d | 2025-11-20 | 2025-12-01 | 411 |  | 7 day week No holidays | 7298244 |
| 418 | 37000.37200.40100.40600.378700 | **54th Floor** | 261d | 2025-12-02 | 2026-08-19 |  | start no earlier than 2025-12-02 | 7 day week No holidays | 7289204 |
| 419 | 37000.37200.40100.40600.378700.680800 | 54th Flr -Blockwork | 11d | 2025-12-03 | 2025-12-13 | 413 |  | 7 day week No holidays | 7298254 |
| 420 | 37000.37200.40100.40600.378700.680900 | 54th Flr -Concealed electrical conduiting | 11d | 2025-12-14 | 2025-12-24 | 414, 419 |  | 7 day week No holidays | 7298264 |
| 421 | 37000.37200.40100.40600.378700.681000 | 54th Flr -Backcoat Plaster | 11d | 2026-08-09 | 2026-08-19 | 415, 419 |  | 7 day week No holidays | 7298274 |
| 422 | 37000.37200.40100.40600.378700.681100 | 54th Flr -Concealed Plumbing | 11d | 2025-12-20 | 2025-12-30 | 416 |  | 7 day week No holidays | 7298284 |
| 423 | 37000.37200.40100.40600.378700.681200 | 54th Flr -Waterproofing Work | 12d | 2025-12-02 | 2025-12-13 | 417 |  | 7 day week No holidays | 7298294 |
| 424 | 37000.37200.40100.40600.378600 | **55th Floor** | 260d | 2025-12-14 | 2026-08-30 |  | start no earlier than 2025-12-14 | 7 day week No holidays | 7289194 |
| 425 | 37000.37200.40100.40600.378600.681300 | 55th Flr -Blockwork | 12d | 2025-12-25 | 2026-01-05 | 57, 419 |  | 7 day week No holidays | 7298304 |
| 426 | 37000.37200.40100.40600.378600.681400 | 55th Flr -Concealed electrical conduiting | 11d | 2026-01-06 | 2026-01-16 | 420, 425 |  | 7 day week No holidays | 7298314 |
| 427 | 37000.37200.40100.40600.378600.681500 | 55th Flr -Backcoat Plaster | 11d | 2026-08-20 | 2026-08-30 | 421, 425 |  | 7 day week No holidays | 7298324 |
| 428 | 37000.37200.40100.40600.378600.681600 | 55th Flr -Concealed Plumbing | 17d | 2025-12-31 | 2026-01-16 | 422 |  | 7 day week No holidays | 7298334 |
| 429 | 37000.37200.40100.40600.378600.681700 | 55th Flr -Waterproofing Work | 17d | 2025-12-14 | 2025-12-30 | 423 |  | 7 day week No holidays | 7298344 |

| ID | WBS | Task | Duration | Start | Finish | Predecessors | Constraint | Calendar | Unique_Task_ID |
| --- | --- | --- | --- | --- | --- | --- | --- | --- | --- |
| 430 | 37000.37200.40100.40600.378500 | **56th Floor** | 254d | 2025-12-31 | 2026-09-10 |  | start no earlier than 2025-12-31 | 7 day week No holidays | 7288744 |
| 431 | 37000.37200.40100.40600.378500.681800 | 56th Flr -Blockwork | 12d | 2026-01-06 | 2026-01-17 | 425 |  | 7 day week No holidays | 7298354 |
| 432 | 37000.37200.40100.40600.378500.681900 | 56th Flr -Concealed electrical conduiting | 11d | 2026-01-18 | 2026-01-28 | 426, 431 |  | 7 day week No holidays | 7298364 |
| 433 | 37000.37200.40100.40600.378500.682000 | 56th Flr -Backcoat Plaster | 11d | 2026-08-31 | 2026-09-10 | 427, 431 |  | 7 day week No holidays | 7298374 |
| 434 | 37000.37200.40100.40600.378500.682100 | 56th Flr -Concealed Plumbing | 17d | 2026-01-17 | 2026-02-02 | 428 |  | 7 day week No holidays | 7298384 |
| 435 | 37000.37200.40100.40600.378500.682200 | 56th Flr -Waterproofing Work | 17d | 2025-12-31 | 2026-01-16 | 429 |  | 7 day week No holidays | 7298394 |
| 436 | 37000.37200.40100.40600.378400 | **57th Floor** | 248d | 2026-01-17 | 2026-09-21 |  | start no earlier than 2026-01-17 | 7 day week No holidays | 7288734 |
| 437 | 37000.37200.40100.40600.378400.682300 | 57th Flr -Blockwork | 11d | 2026-01-18 | 2026-01-28 | 431 |  | 7 day week No holidays | 7298404 |
| 438 | 37000.37200.40100.40600.378400.682400 | 57th Flr -Concealed electrical conduiting | 11d | 2026-01-29 | 2026-02-08 | 432, 437 |  | 7 day week No holidays | 7298414 |
| 439 | 37000.37200.40100.40600.378400.682500 | 57th Flr -Backcoat Plaster | 11d | 2026-09-11 | 2026-09-21 | 433, 437 |  | 7 day week No holidays | 7298424 |
| 440 | 37000.37200.40100.40600.378400.682600 | 57th Flr -Concealed Plumbing | 17d | 2026-02-03 | 2026-02-19 | 434 |  | 7 day week No holidays | 7298434 |
| 441 | 37000.37200.40100.40600.378400.682700 | 57th Flr -Waterproofing Work | 17d | 2026-01-17 | 2026-02-02 | 435 |  | 7 day week No holidays | 7298444 |
| 442 | 37000.37200.40100.40600.378300 | **58th Floor** | 247d | 2026-01-29 | 2026-10-02 |  | start no earlier than 2026-01-29 | 7 day week No holidays | 7288724 |
| 443 | 37000.37200.40100.40600.378300.682800 | 58th Flr -Blockwork | 11d | 2026-01-29 | 2026-02-08 | 437 |  | 7 day week No holidays | 7298454 |
| 444 | 37000.37200.40100.40600.378300.682900 | 58th Flr -Concealed electrical conduiting | 11d | 2026-02-09 | 2026-02-19 | 438, 443 |  | 7 day week No holidays | 7298464 |
| 445 | 37000.37200.40100.40600.378300.683000 | 58th Flr -Backcoat Plaster | 11d | 2026-09-22 | 2026-10-02 | 439, 443 |  | 7 day week No holidays | 7298474 |
| 446 | 37000.37200.40100.40600.378300.683100 | 58th Flr -Concealed Plumbing | 17d | 2026-02-20 | 2026-03-08 | 440 |  | 7 day week No holidays | 7298484 |
| 447 | 37000.37200.40100.40600.378300.683200 | 58th Flr -Waterproofing Work | 20d | 2026-02-03 | 2026-02-22 | 441 |  | 7 day week No holidays | 7298494 |
| 448 | 37000.37200.40100.40600.378200 | **59th Floor** | 247d | 2026-02-09 | 2026-10-13 |  | start no earlier than 2026-02-09 | 7 day week No holidays | 7288704 |
| 449 | 37000.37200.40100.40600.378200.683300 | 59th Flr -Blockwork | 11d | 2026-02-09 | 2026-02-19 | 443 |  | 7 day week No holidays | 7298504 |
| 450 | 37000.37200.40100.40600.378200.683400 | 59th Flr -Concealed electrical conduiting | 11d | 2026-03-02 | 2026-03-12 | 444FS+10d, 449 |  | 7 day week No holidays | 7298514 |
| 451 | 37000.37200.40100.40600.378200.683500 | 59th Flr -Backcoat Plaster | 11d | 2026-10-03 | 2026-10-13 | 445, 449 |  | 7 day week No holidays | 7298524 |
| 452 | 37000.37200.40100.40600.378200.683600 | 59th Flr -Concealed Plumbing | 17d | 2026-04-03 | 2026-04-19 | 446FS+25d |  | 7 day week No holidays | 7298534 |
| 453 | 37000.37200.40100.40600.378200.683700 | 59th Flr -Waterproofing Work | 20d | 2026-04-04 | 2026-04-23 | 447FS+40d |  | 7 day week No holidays | 7298544 |

| ID | WBS | Task | Duration | Start | Finish | Predecessors | Constraint | Calendar | Unique_Task_ID |
| --- | --- | --- | --- | --- | --- | --- | --- | --- | --- |
| 454 | 37000.37200.40100.40600.378100 | **60th Floor** | 247d | 2026-02-20 | 2026-10-24 |  | start no earlier than 2026-02-20 | 7 day week No holidays | 7288684 |
| 455 | 37000.37200.40100.40600.378100.683800 | 60th Flr -Blockwork | 7d | 2026-02-20 | 2026-02-26 | 449 |  | 7 day week No holidays | 7298554 |
| 456 | 37000.37200.40100.40600.378100.683900 | 60th Flr -Concealed electrical conduiting | 20d | 2026-04-02 | 2026-04-21 | 450FS+20d, 455 |  | 7 day week No holidays | 7298564 |
| 457 | 37000.37200.40100.40600.378100.684000 | 60th Flr -Backcoat Plaster | 11d | 2026-10-14 | 2026-10-24 | 451, 455 |  | 7 day week No holidays | 7298574 |
| 458 | 37000.37200.40100.40600.378100.684100 | 60th Flr -Concealed Plumbing | 20d | 2026-04-25 | 2026-05-14 | 452FS+5d |  | 7 day week No holidays | 7298584 |
| 459 | 37000.37200.40100.40600.378100.684200 | 60th Flr -Waterproofing Work | 20d | 2026-05-04 | 2026-05-23 | 453FS+10d |  | 7 day week No holidays | 7298594 |
| 460 | 37000.37200.40100.40600.378000 | **61th Floor** | 214d | 2026-04-05 | 2026-11-04 |  | start no earlier than 2026-04-05 | 7 day week No holidays | 7288574 |
| 461 | 37000.37200.40100.40600.378000.684300 | 61st Flr -Blockwork | 11d | 2026-04-05 | 2026-04-15 | 63, 455 |  | 7 day week No holidays | 7298604 |
| 462 | 37000.37200.40100.40600.378000.684400 | 61st Flr -Concealed electrical conduiting | 11d | 2026-04-22 | 2026-05-02 | 456, 461 |  | 7 day week No holidays | 7298614 |
| 463 | 37000.37200.40100.40600.378000.684500 | 61st Flr -Backcoat Plaster | 11d | 2026-10-25 | 2026-11-04 | 457, 461 |  | 7 day week No holidays | 7298624 |
| 464 | 37000.37200.40100.40600.378000.684600 | 61st Flr -Concealed Plumbing | 11d | 2026-05-15 | 2026-05-25 | 458 |  | 7 day week No holidays | 7298634 |
| 465 | 37000.37200.40100.40600.378000.684700 | 61st Flr -Waterproofing Work | 15d | 2026-05-29 | 2026-06-12 | 459FS+5d |  | 7 day week No holidays | 7298644 |
| 466 | 37000.37200.40100.40600.377900 | **62th Floor** | 204d | 2026-04-26 | 2026-11-15 |  | start no earlier than 2026-04-26 | 7 day week No holidays | 7288584 |
| 467 | 37000.37200.40100.40600.377900.684800 | 62nd Flr -Blockwork | 11d | 2026-04-26 | 2026-05-06 | 64, 461 |  | 7 day week No holidays | 7298654 |
| 468 | 37000.37200.40100.40600.377900.684900 | 62nd Flr -Concealed electrical conduiting | 11d | 2026-05-07 | 2026-05-17 | 462, 467 |  | 7 day week No holidays | 7298664 |
| 469 | 37000.37200.40100.40600.377900.685000 | 62nd Flr -Backcoat Plaster | 11d | 2026-11-05 | 2026-11-15 | 463, 467 |  | 7 day week No holidays | 7298674 |
| 470 | 37000.37200.40100.40600.377900.685100 | 62nd Flr -Concealed Plumbing | 20d | 2026-05-26 | 2026-06-14 | 464 |  | 7 day week No holidays | 7298684 |
| 471 | 37000.37200.40100.40600.377900.685200 | 62nd Flr -Waterproofing Work | 20d | 2026-06-13 | 2026-07-02 | 465 |  | 7 day week No holidays | 7298694 |
| 472 | 37000.37200.40100.40600.377800 | **63th Floor** | 199d | 2026-05-12 | 2026-11-26 |  | start no earlier than 2026-05-12 | 7 day week No holidays | 7288594 |
| 473 | 37000.37200.40100.40600.377800.685300 | 63rd Flr -Blockwork | 11d | 2026-05-12 | 2026-05-22 | 65, 467 |  | 7 day week No holidays | 7298704 |
| 474 | 37000.37200.40100.40600.377800.685400 | 63rd Flr -Concealed electrical conduiting | 11d | 2026-05-23 | 2026-06-02 | 468, 473 |  | 7 day week No holidays | 7298714 |
| 475 | 37000.37200.40100.40600.377800.685500 | 63rd Flr -Backcoat Plaster | 11d | 2026-11-16 | 2026-11-26 | 469, 473 |  | 7 day week No holidays | 7298724 |
| 476 | 37000.37200.40100.40600.377800.685600 | 63rd Flr -Concealed Plumbing | 20d | 2026-06-15 | 2026-07-04 | 470 |  | 7 day week No holidays | 7298734 |
| 477 | 37000.37200.40100.40600.377800.685700 | 63rd Flr -Waterproofing Work | 30d | 2026-07-03 | 2026-08-01 | 471 |  | 7 day week No holidays | 7298744 |

| ID | WBS | Task | Duration | Start | Finish | Predecessors | Constraint | Calendar | Unique_Task_ID |
| --- | --- | --- | --- | --- | --- | --- | --- | --- | --- |
| 478 | 37000.37200.40100.40600.377700 | **64th Floor** | 216d | 2026-05-28 | 2026-12-29 |  | start no earlier than 2026-05-28 | 7 day week No holidays | 7288604 |
| 479 | 37000.37200.40100.40600.377700.685800 | 64th Flr -Blockwork | 11d | 2026-05-28 | 2026-06-07 | 66, 473 |  | 7 day week No holidays | 7298754 |
| 480 | 37000.37200.40100.40600.377700.685900 | 64th Flr -Concealed electrical conduiting | 11d | 2026-06-08 | 2026-06-18 | 474, 479 |  | 7 day week No holidays | 7298764 |
| 481 | 37000.37200.40100.40600.377700.686000 | 64th Flr -Backcoat Plaster | 11d | 2026-11-27 | 2026-12-07 | 475, 479 |  | 7 day week No holidays | 7298774 |
| 482 | 37000.37200.40100.40600.377700.686100 | 64th Flr -Concealed Plumbing | 11d | 2026-12-08 | 2026-12-18 | 476, 481 |  | 7 day week No holidays | 7298784 |
| 483 | 37000.37200.40100.40600.377700.686200 | 64th Flr -Waterproofing Work | 11d | 2026-12-19 | 2026-12-29 | 477, 482 |  | 7 day week No holidays | 7298794 |
| 484 | 37000.37200.40100.40600.377600 | **65th Floor** | 211d | 2026-06-13 | 2027-01-09 |  | start no earlier than 2026-06-13 | 7 day week No holidays | 7288614 |
| 485 | 37000.37200.40100.40600.377600.686300 | 65th Flr -Blockwork | 11d | 2026-06-13 | 2026-06-23 | 67, 479 |  | 7 day week No holidays | 7298804 |
| 486 | 37000.37200.40100.40600.377600.686400 | 65th Flr -Concealed electrical conduiting | 11d | 2026-06-24 | 2026-07-04 | 480, 485 |  | 7 day week No holidays | 7298814 |
| 487 | 37000.37200.40100.40600.377600.686500 | 65th Flr -Backcoat Plaster | 11d | 2026-12-08 | 2026-12-18 | 481, 485 |  | 7 day week No holidays | 7298824 |
| 488 | 37000.37200.40100.40600.377600.686600 | 65th Flr -Concealed Plumbing | 11d | 2026-12-19 | 2026-12-29 | 482, 487 |  | 7 day week No holidays | 7298834 |
| 489 | 37000.37200.40100.40600.377600.686700 | 65th Flr -Waterproofing Work | 11d | 2026-12-30 | 2027-01-09 | 483, 488 |  | 7 day week No holidays | 7298844 |
| 490 | 37000.37200.40100.40600.377500 | **66th Floor** | 206d | 2026-06-29 | 2027-01-20 |  | start no earlier than 2026-06-29 | 7 day week No holidays | 7288624 |
| 491 | 37000.37200.40100.40600.377500.686800 | 66th Flr -Blockwork | 11d | 2026-06-29 | 2026-07-09 | 68, 485 |  | 7 day week No holidays | 7298854 |
| 492 | 37000.37200.40100.40600.377500.686900 | 66th Flr -Concealed electrical conduiting | 11d | 2026-07-10 | 2026-07-20 | 486, 491 |  | 7 day week No holidays | 7298864 |
| 493 | 37000.37200.40100.40600.377500.687000 | 66th Flr -Backcoat Plaster | 11d | 2026-12-19 | 2026-12-29 | 487, 491 |  | 7 day week No holidays | 7298874 |
| 494 | 37000.37200.40100.40600.377500.687100 | 66th Flr -Concealed Plumbing | 11d | 2026-12-30 | 2027-01-09 | 488, 493 |  | 7 day week No holidays | 7298884 |
| 495 | 37000.37200.40100.40600.377500.687200 | 66th Flr -Waterproofing Work | 11d | 2027-01-10 | 2027-01-20 | 489, 494 |  | 7 day week No holidays | 7298894 |
| 496 | 37000.37200.40100.40600.377400 | **67th Floor** | 201d | 2026-07-15 | 2027-01-31 |  | start no earlier than 2026-07-15 | 7 day week No holidays | 7288634 |
| 497 | 37000.37200.40100.40600.377400.687300 | 67th Flr -Blockwork | 11d | 2026-07-15 | 2026-07-25 | 69, 491 |  | 7 day week No holidays | 7298904 |
| 498 | 37000.37200.40100.40600.377400.687400 | 67th Flr -Concealed electrical conduiting | 11d | 2026-07-26 | 2026-08-05 | 492, 497 |  | 7 day week No holidays | 7298914 |
| 499 | 37000.37200.40100.40600.377400.687500 | 67th Flr -Backcoat Plaster | 11d | 2026-12-30 | 2027-01-09 | 493, 497 |  | 7 day week No holidays | 7298924 |
| 500 | 37000.37200.40100.40600.377400.687600 | 67th Flr -Concealed Plumbing | 11d | 2027-01-10 | 2027-01-20 | 494, 499 |  | 7 day week No holidays | 7298934 |
| 501 | 37000.37200.40100.40600.377400.687700 | 67th Flr -Waterproofing Work | 11d | 2027-01-21 | 2027-01-31 | 495, 500 |  | 7 day week No holidays | 7298944 |

| ID | WBS | Task | Duration | Start | Finish | Predecessors | Constraint | Calendar | Unique_Task_ID |
| --- | --- | --- | --- | --- | --- | --- | --- | --- | --- |
| 502 | 37000.37200.40100.40600.377300 | **68th Floor** | 201d | 2026-07-26 | 2027-02-11 |  | start no earlier than 2026-07-26 | 7 day week No holidays | 7288644 |
| 503 | 37000.37200.40100.40600.377300.687800 | 68th Flr -Blockwork | 11d | 2026-07-26 | 2026-08-05 | 497 |  | 7 day week No holidays | 7298954 |
| 504 | 37000.37200.40100.40600.377300.687900 | 68th Flr -Concealed electrical conduiting | 11d | 2026-08-06 | 2026-08-16 | 498, 503 |  | 7 day week No holidays | 7298964 |
| 505 | 37000.37200.40100.40600.377300.688000 | 68th Flr -Backcoat Plaster | 11d | 2027-01-10 | 2027-01-20 | 499, 503 |  | 7 day week No holidays | 7298974 |
| 506 | 37000.37200.40100.40600.377300.688100 | 68th Flr -Concealed Plumbing | 11d | 2027-01-21 | 2027-01-31 | 500, 505 |  | 7 day week No holidays | 7298984 |
| 507 | 37000.37200.40100.40600.377300.688200 | 68th Flr -Waterproofing Work | 11d | 2027-02-01 | 2027-02-11 | 501, 506 |  | 7 day week No holidays | 7298994 |
| 508 | 37000.37200.40100.40600.377200 | **69th Floor** | 190.12d | 2026-08-06 | 2027-02-12 |  | start no earlier than 2026-08-06 | 7 day week No holidays | 7288654 |
| 509 | 37000.37200.40100.40600.377200.688300 | 69th Flr -Blockwork | 11d | 2026-08-06 | 2026-08-16 | 503 |  | 7 day week No holidays | 7299004 |
| 510 | 37000.37200.40100.40600.377200.688400 | 69th Flr -Concealed electrical conduiting | 11d | 2026-08-17 | 2026-08-27 | 504, 509 |  | 7 day week No holidays | 7299014 |
| 511 | 37000.37200.40100.40600.377200.688500 | 69th Flr -Backcoat Plaster | 11d | 2027-01-21 | 2027-01-31 | 505, 509 |  | 7 day week No holidays | 7299024 |
| 512 | 37000.37200.40100.40600.377200.688600 | 69th Flr -Concealed Plumbing | 11d | 2027-02-01 | 2027-02-11 | 506, 511 |  | 7 day week No holidays | 7299034 |
| 513 | 37000.37200.40100.40600.377200.688700 | 69th Flr -Waterproofing Work | 0.12d | 2027-02-12 | 2027-02-12 | 507, 512 |  | 7 day week No holidays | 7299044 |
| 514 | 37000.37200.40100.40600.377100 | **70th Floor** | 179.25d | 2026-08-17 | 2027-02-12 |  | start no earlier than 2026-08-17 | 7 day week No holidays | 7288664 |
| 515 | 37000.37200.40100.40600.377100.688800 | 70th Flr -Blockwork | 15d | 2026-08-17 | 2026-08-31 | 509 |  | 7 day week No holidays | 7299054 |
| 516 | 37000.37200.40100.40600.377100.688900 | 70th Flr -Concealed electrical conduiting | 0.12d | 2026-09-01 | 2026-09-01 | 510, 515 |  | 7 day week No holidays | 7299064 |
| 517 | 37000.37200.40100.40600.377100.689000 | 70th Flr -Backcoat Plaster | 0.12d | 2027-02-01 | 2027-02-01 | 511, 515 |  | 7 day week No holidays | 7299074 |
| 518 | 37000.37200.40100.40600.377100.689100 | 70th Flr -Concealed Plumbing | 0.12d | 2027-02-12 | 2027-02-12 | 512, 517 |  | 7 day week No holidays | 7299084 |
| 519 | 37000.37200.40100.40600.377100.689200 | 70th Flr -Waterproofing Work | 0.12d | 2027-02-12 | 2027-02-12 | 513, 518 |  | 7 day week No holidays | 7299094 |
| 520 | 37000.37200.40100.40600.377000 | **71th Floor** | 164.38d | 2026-09-01 | 2027-02-12 |  | start no earlier than 2026-09-01 | 7 day week No holidays | 7288674 |
| 521 | 37000.37200.40100.40600.377000.689300 | 71st Flr -Blockwork | 15d | 2026-09-01 | 2026-09-15 | 515 |  | 7 day week No holidays | 7299104 |
| 522 | 37000.37200.40100.40600.377000.689400 | 71st Flr -Concealed electrical conduiting | 0.12d | 2026-09-16 | 2026-09-16 | 516, 521 |  | 7 day week No holidays | 7299114 |
| 523 | 37000.37200.40100.40600.377000.689500 | 71st Flr -Backcoat Plaster | 0.12d | 2027-02-01 | 2027-02-01 | 517, 521 |  | 7 day week No holidays | 7299124 |
| 524 | 37000.37200.40100.40600.377000.689600 | 71st Flr -Concealed Plumbing | 0.12d | 2027-02-12 | 2027-02-12 | 518, 523 |  | 7 day week No holidays | 7299134 |
| 525 | 37000.37200.40100.40600.377000.689700 | 71st Flr -Waterproofing Work | 0.12d | 2027-02-12 | 2027-02-12 | 519, 524 |  | 7 day week No holidays | 7299144 |

| ID | WBS | Task | Duration | Start | Finish | Predecessors | Constraint | Calendar | Unique_Task_ID |
| --- | --- | --- | --- | --- | --- | --- | --- | --- | --- |
| 526 | 37000.37200.40100.40600.376900 | **72th Floor** | 149.5d | 2026-09-16 | 2027-02-12 |  | start no earlier than 2026-09-16 | 7 day week No holidays | 7288694 |
| 527 | 37000.37200.40100.40600.376900.689800 | 72nd Flr -Blockwork | 15d | 2026-09-16 | 2026-09-30 | 521 |  | 7 day week No holidays | 7299154 |
| 528 | 37000.37200.40100.40600.376900.689900 | 72nd Flr -Concealed electrical conduiting | 0.12d | 2026-10-01 | 2026-10-01 | 522, 527 |  | 7 day week No holidays | 7299164 |
| 529 | 37000.37200.40100.40600.376900.690000 | 72nd Flr -Backcoat Plaster | 0.12d | 2027-02-01 | 2027-02-01 | 523, 527 |  | 7 day week No holidays | 7299174 |
| 530 | 37000.37200.40100.40600.376900.690100 | 72nd Flr -Concealed Plumbing | 0.12d | 2027-02-12 | 2027-02-12 | 524, 529 |  | 7 day week No holidays | 7299184 |
| 531 | 37000.37200.40100.40600.376900.690200 | 72nd Flr -Waterproofing Work | 0.12d | 2027-02-12 | 2027-02-12 | 525, 530 |  | 7 day week No holidays | 7299194 |
| 532 | 37000.37200.40100.374700 | **Terrace floor - Civil Work** | 168.38d | 2026-10-01 | 2027-03-18 |  | start no earlier than 2026-10-01 | 7 day week No holidays | 7289064 |
| 533 | 37000.37200.40100.374700.530000 | Terrace floor - Blockwork | 15d | 2026-10-01 | 2026-10-15 | 527 |  | 7 day week No holidays | 7290204 |
| 534 | 37000.37200.40100.374700.530100 | Terrace floor - Concealed electrical conduiting | 15d | 2026-10-16 | 2026-10-30 | 533, 528 |  | 7 day week No holidays | 7290214 |
| 535 | 37000.37200.40100.374700.530200 | Terrace floor - Backcoat Plaster | 15d | 2027-02-01 | 2027-02-16 | 533, 529 |  | 7 day week No holidays | 7290224 |
| 536 | 37000.37200.40100.374700.530300 | Terrace floor - Concealed Plumbing | 15d | 2027-02-16 | 2027-03-03 | 535, 530 |  | 7 day week No holidays | 7290234 |
| 537 | 37000.37200.40100.374700.530400 | Terrace floor - Waterproofing Work | 15d | 2027-03-03 | 2027-03-18 | 536, 531 |  | 7 day week No holidays | 7290244 |
| 538 | 37000.37200.40100.374600 | **Basement-2 - Civil Work** | 75d | 2026-07-26 | 2026-10-08 |  | start no earlier than 2026-07-26 | 7 day week No holidays | 7289074 |
| 539 | 37000.37200.40100.374600.530500 | Basement-2 Blockwork | 15d | 2026-07-26 | 2026-08-09 | 497 |  | 7 day week No holidays | 7290254 |
| 540 | 37000.37200.40100.374600.530600 | Basement-2 Concealed electrical conduiting | 15d | 2026-08-10 | 2026-08-24 | 539 |  | 7 day week No holidays | 7290264 |
| 541 | 37000.37200.40100.374600.530700 | Basement-2 Backcoat Plaster | 15d | 2026-08-25 | 2026-09-08 | 540 |  | 7 day week No holidays | 7290274 |
| 542 | 37000.37200.40100.374600.530800 | Basement-2 Concealed Plumbing | 15d | 2026-09-09 | 2026-09-23 | 541 |  | 7 day week No holidays | 7290284 |
| 543 | 37000.37200.40100.374600.530900 | Basement-2 Waterproofing Work | 15d | 2026-09-24 | 2026-10-08 | 542 |  | 7 day week No holidays | 7290294 |
| 544 | 37000.37200.40100.374500 | **Basement 1 - Civil Work** | 75d | 2026-08-10 | 2026-10-23 |  | start no earlier than 2026-08-10 | 7 day week No holidays | 2505368 |
| 545 | 37000.37200.40100.374500.531000 | Basement 1 - Blockwork | 15d | 2026-08-10 | 2026-08-24 | 539 |  | 7 day week No holidays | 2505378 |
| 546 | 37000.37200.40100.374500.531100 | Basement 1 - Concealed electrical conduiting | 15d | 2026-08-25 | 2026-09-08 | 540, 545 |  | 7 day week No holidays | 2505388 |
| 547 | 37000.37200.40100.374500.531200 | Basement 1 - Backcoat Plaster | 15d | 2026-09-09 | 2026-09-23 | 541, 545 |  | 7 day week No holidays | 2505398 |
| 548 | 37000.37200.40100.374500.531300 | Basement 1 - Concealed Plumbing | 15d | 2026-09-24 | 2026-10-08 | 542, 547 |  | 7 day week No holidays | 2505408 |
| 549 | 37000.37200.40100.374500.531400 | Basement 1 - Waterproofing Work | 15d | 2026-10-09 | 2026-10-23 | 543, 548 |  | 7 day week No holidays | 2505418 |

| ID | WBS | Task | Duration | Start | Finish | Predecessors | Constraint | Calendar | Unique_Task_ID |
| --- | --- | --- | --- | --- | --- | --- | --- | --- | --- |
| 550 | 37000.37200.40100.374400 | **GF - Civil Work** | 75d | 2026-08-25 | 2026-11-07 |  | start no earlier than 2026-08-25 | 7 day week No holidays | 7289084 |
| 551 | 37000.37200.40100.374400.531500 | Blockwork | 15d | 2026-08-25 | 2026-09-08 | 545 |  | 7 day week No holidays | 7290304 |
| 552 | 37000.37200.40100.374400.531600 | Concealed electrical conduiting | 15d | 2026-09-09 | 2026-09-23 | 546, 551 |  | 7 day week No holidays | 7290314 |
| 553 | 37000.37200.40100.374400.531700 | Backcoat Plaster | 15d | 2026-09-24 | 2026-10-08 | 547, 551 |  | 7 day week No holidays | 7290324 |
| 554 | 37000.37200.40100.374400.531800 | Concealed Plumbing | 15d | 2026-10-09 | 2026-10-23 | 548, 553 |  | 7 day week No holidays | 7290334 |
| 555 | 37000.37200.40100.374400.531900 | Waterproofing Work | 15d | 2026-10-24 | 2026-11-07 | 549, 554 |  | 7 day week No holidays | 7290344 |
| 556 | 37000.37200.40100.374300 | **Podium-1 - Civil Work** | 75d | 2026-09-09 | 2026-11-22 |  | start no earlier than 2026-09-09 | 7 day week No holidays | 2505728 |
| 557 | 37000.37200.40100.374300.532000 | Podium-1 -Blockwork | 10d | 2026-09-09 | 2026-09-18 | 551 |  | 7 day week No holidays | 2505738 |
| 558 | 37000.37200.40100.374300.532100 | Podium-1 -Concealed electrical conduiting | 20d | 2026-09-24 | 2026-10-13 | 552, 557 |  | 7 day week No holidays | 2505748 |
| 559 | 37000.37200.40100.374300.532200 | Podium-1 -Backcoat Plaster | 15d | 2026-10-09 | 2026-10-23 | 553, 557 |  | 7 day week No holidays | 2505758 |
| 560 | 37000.37200.40100.374300.532300 | Podium-1 -Concealed Plumbing | 15d | 2026-10-24 | 2026-11-07 | 554, 559 |  | 7 day week No holidays | 2505768 |
| 561 | 37000.37200.40100.374300.532400 | Podium-1 -Waterproofing Work | 15d | 2026-11-08 | 2026-11-22 | 555, 560 |  | 7 day week No holidays | 2505778 |
| 562 | 37000.37200.40100.374200 | **Podium-2 - Civil Work** | 80d | 2026-09-19 | 2026-12-07 |  | start no earlier than 2026-09-19 | 7 day week No holidays | 2505668 |
| 563 | 37000.37200.40100.374200.532500 | Podium-2 -Blockwork | 10d | 2026-09-19 | 2026-09-28 | 557 |  | 7 day week No holidays | 2505678 |
| 564 | 37000.37200.40100.374200.532600 | Podium-2 -Concealed electrical conduiting | 20d | 2026-10-14 | 2026-11-02 | 558, 563 |  | 7 day week No holidays | 2505688 |
| 565 | 37000.37200.40100.374200.532700 | Podium-2 -Backcoat Plaster | 15d | 2026-10-24 | 2026-11-07 | 559, 563 |  | 7 day week No holidays | 2505698 |
| 566 | 37000.37200.40100.374200.532800 | Podium-2 -Concealed Plumbing | 15d | 2026-11-08 | 2026-11-22 | 560, 565 |  | 7 day week No holidays | 2505708 |
| 567 | 37000.37200.40100.374200.532900 | Podium-2 -Waterproofing Work | 15d | 2026-11-23 | 2026-12-07 | 561, 566 |  | 7 day week No holidays | 2505718 |
| 568 | 37000.37200.40100.374100 | **Podium-3 - Civil Work** | 85d | 2026-09-29 | 2026-12-22 |  | start no earlier than 2026-09-29 | 7 day week No holidays | 2505608 |
| 569 | 37000.37200.40100.374100.533000 | Podium-3 -Blockwork | 10d | 2026-09-29 | 2026-10-08 | 563 |  | 7 day week No holidays | 2505618 |
| 570 | 37000.37200.40100.374100.533100 | Podium-3 -Concealed electrical conduiting | 20d | 2026-11-03 | 2026-11-22 | 564, 569 |  | 7 day week No holidays | 2505628 |
| 571 | 37000.37200.40100.374100.533200 | Podium-3 -Backcoat Plaster | 15d | 2026-11-08 | 2026-11-22 | 565, 569 |  | 7 day week No holidays | 2505638 |
| 572 | 37000.37200.40100.374100.533300 | Podium-3 -Concealed Plumbing | 15d | 2026-11-23 | 2026-12-07 | 566, 571 |  | 7 day week No holidays | 2505648 |
| 573 | 37000.37200.40100.374100.533400 | Podium-3 -Waterproofing Work | 15d | 2026-12-08 | 2026-12-22 | 567, 572 |  | 7 day week No holidays | 2505658 |

| ID | WBS | Task | Duration | Start | Finish | Predecessors | Constraint | Calendar | Unique_Task_ID |
| --- | --- | --- | --- | --- | --- | --- | --- | --- | --- |
| 574 | 37000.37200.40100.374000 | **Podium-4 - Civil Work** | 90d | 2026-10-09 | 2027-01-06 |  | start no earlier than 2026-10-09 | 7 day week No holidays | 2505548 |
| 575 | 37000.37200.40100.374000.533500 | Podium-4 - Blockwork | 10d | 2026-10-09 | 2026-10-18 | 569 |  | 7 day week No holidays | 2505558 |
| 576 | 37000.37200.40100.374000.533600 | Podium-4 -Concealed electrical conduiting | 20d | 2026-11-23 | 2026-12-12 | 570, 575 |  | 7 day week No holidays | 2505568 |
| 577 | 37000.37200.40100.374000.533700 | Podium-4 -Backcoat Plaster | 15d | 2026-11-23 | 2026-12-07 | 571, 575 |  | 7 day week No holidays | 2505578 |
| 578 | 37000.37200.40100.374000.533800 | Podium-4 -Concealed Plumbing | 15d | 2026-12-08 | 2026-12-22 | 572, 577 |  | 7 day week No holidays | 2505588 |
| 579 | 37000.37200.40100.374000.533900 | Podium-4 -Waterproofing Work | 15d | 2026-12-23 | 2027-01-06 | 573, 578 |  | 7 day week No holidays | 2505598 |
| 580 | 37000.37200.40100.373900 | **Podium-5 - Civil Work** | 95d | 2026-10-19 | 2027-01-21 |  | start no earlier than 2026-10-19 | 7 day week No holidays | 2505488 |
| 581 | 37000.37200.40100.373900.534000 | Podium-5 -Blockwork | 10d | 2026-10-19 | 2026-10-28 | 575 |  | 7 day week No holidays | 2505498 |
| 582 | 37000.37200.40100.373900.534100 | Podium-5 -Concealed electrical conduiting | 20d | 2026-12-13 | 2027-01-01 | 576, 581 |  | 7 day week No holidays | 2505508 |
| 583 | 37000.37200.40100.373900.534200 | Podium-5 -Backcoat Plaster | 15d | 2026-12-08 | 2026-12-22 | 577, 581 |  | 7 day week No holidays | 2505518 |
| 584 | 37000.37200.40100.373900.534300 | Podium-5 -Concealed Plumbing | 15d | 2026-12-23 | 2027-01-06 | 578, 583 |  | 7 day week No holidays | 2505528 |
| 585 | 37000.37200.40100.373900.534400 | Podium-5 -Waterproofing Work | 15d | 2027-01-07 | 2027-01-21 | 579, 584 |  | 7 day week No holidays | 2505538 |
| 586 | 37000.37200.40100.373800 | **Podium-6 - Civil Work** | 100d | 2026-10-29 | 2027-02-05 |  | start no earlier than 2026-10-29 | 7 day week No holidays | 2505428 |
| 587 | 37000.37200.40100.373800.534500 | Podium-6 -Blockwork | 10d | 2026-10-29 | 2026-11-07 | 581 |  | 7 day week No holidays | 2505438 |
| 588 | 37000.37200.40100.373800.534600 | Podium-6 -Concealed electrical conduiting | 20d | 2027-01-02 | 2027-01-21 | 582, 587 |  | 7 day week No holidays | 2505448 |
| 589 | 37000.37200.40100.373800.534700 | Podium-6 -Backcoat Plaster | 15d | 2026-12-23 | 2027-01-06 | 583, 587 |  | 7 day week No holidays | 2505458 |
| 590 | 37000.37200.40100.373800.534800 | Podium-6 -Concealed Plumbing | 15d | 2027-01-07 | 2027-01-21 | 584, 589 |  | 7 day week No holidays | 2505468 |
| 591 | 37000.37200.40100.373800.534900 | Podium-6 -Waterproofing Work | 15d | 2027-01-22 | 2027-02-05 | 585, 590 |  | 7 day week No holidays | 2505478 |
| 592 | 37000.37200.40100.373700 | **Podium-7 - Service Floor** | 105d | 2026-11-08 | 2027-02-20 |  | start no earlier than 2026-11-08 | 7 day week No holidays | 2505788 |
| 593 | 37000.37200.40100.373700.535000 | Podium-7 -Blockwork | 10d | 2026-11-08 | 2026-11-17 | 587 |  | 7 day week No holidays | 2505798 |
| 594 | 37000.37200.40100.373700.535100 | Podium-7 -Concealed electrical conduiting | 20d | 2027-01-22 | 2027-02-10 | 588, 593 |  | 7 day week No holidays | 2505808 |
| 595 | 37000.37200.40100.373700.535200 | Podium-7 -Backcoat Plaster | 15d | 2027-01-07 | 2027-01-21 | 589, 593 |  | 7 day week No holidays | 2505818 |
| 596 | 37000.37200.40100.373700.535300 | Podium-7 -Concealed Plumbing | 15d | 2027-01-22 | 2027-02-05 | 590, 595 |  | 7 day week No holidays | 2505828 |
| 597 | 37000.37200.40100.373700.535400 | Podium-7 -Waterproofing Work | 15d | 2027-02-06 | 2027-02-20 | 591, 596 |  | 7 day week No holidays | 2505838 |

| ID | WBS | Task | Duration | Start | Finish | Predecessors | Complete | Constraint | Calendar | Unique_Task_ID |
| --- | --- | --- | --- | --- | --- | --- | --- | --- | --- | --- |
| 598 | 37000.37200.40100.373600 | **Podium-8 - Civil Work** | 110d | 2026-11-18 | 2027-03-07 |  |  | start no earlier than 2026-11-18 | 7 day week No holidays | 2505848 |
| 599 | 37000.37200.40100.373600.535500 | Podium-8 -Blockwork | 10d | 2026-11-18 | 2026-11-27 | 593 |  |  | 7 day week No holidays | 2505858 |
| 600 | 37000.37200.40100.373600.535600 | Podium-8 -Concealed electrical conduiting | 20d | 2027-02-11 | 2027-03-02 | 594, 599 |  |  | 7 day week No holidays | 2505868 |
| 601 | 37000.37200.40100.373600.535700 | Podium-8 -Backcoat Plaster | 15d | 2027-01-22 | 2027-02-05 | 595, 599 |  |  | 7 day week No holidays | 2505878 |
| 602 | 37000.37200.40100.373600.535800 | Podium-8 -Concealed Plumbing | 15d | 2027-02-06 | 2027-02-20 | 596, 601 |  |  | 7 day week No holidays | 2505888 |
| 603 | 37000.37200.40100.373600.535900 | Podium--8 -Waterproofing Work | 15d | 2027-02-21 | 2027-03-07 | 597, 602 |  |  | 7 day week No holidays | 2505898 |
| 604 | 37000.37200.37900 | **Internal Finishing & Services** | 1824.25d | 2024-04-28 | 2029-04-26 |  | 15% | start no earlier than 2024-04-28 | 7 day week No holidays | 7284374 |
| 605 | 37000.37200.37900.397500 | **Windows mobilization** | 67d | 2025-04-01 | 2025-06-17 |  |  | start no earlier than 2025-04-01 | Indian Calendar | 7284375 |
| 606 | 37000.37200.37900.397500.536000 | Aluminium Windows-Order Date | 50d | 2025-04-01 | 2025-05-20 | 12FS+20d |  |  | 7 day week No holidays | 7284385 |
| 607 | 37000.37200.37900.397500.536100 | Aluminium Windows-Shop Drawing Approval Date | 28d | 2025-05-21 | 2025-06-17 | 606 |  |  | 7 day week No holidays | 7284395 |
| 608 | 37000.37200.37900.397500.536200 | Aluminium Windows-Start of supply for first lot date | 20d | 2025-05-21 | 2025-06-09 | 606 |  |  | 7 day week No holidays | 7284405 |
| 609 | 37000.37200.37900.38600 | **Flat - Internal finishing & Services** | 1728.25d | 2024-04-28 | 2029-01-20 |  | 16% | start no earlier than 2024-04-28 | 7 day week No holidays | 7284384 |
| 610 | 37000.37200.37900.38600.188700 | **9th Floor** | 719d | 2025-04-01 | 2027-03-20 |  |  | start no earlier than 2025-04-01 | 7 day week No holidays | 7285934 |
| 611 | 37000.37200.37900.38600.188700.690300 | 9th flr-Gypsum Plaster | 25d | 2025-04-01 | 2025-04-25 | 185SS |  |  | 7 day week No holidays | 7299204 |
| 612 | 37000.37200.37900.38600.188700.690400 | 9th flr-Kitchen Platform | 11d | 2025-04-26 | 2025-05-06 | 611 |  |  | 7 day week No holidays | 7299214 |
| 613 | 37000.37200.37900.38600.188700.690500 | 9th flr-Toilet dado & flooring | 11d | 2025-11-02 | 2025-11-12 | 153, 177 |  |  | 7 day week No holidays | 7299224 |
| 614 | 37000.37200.37900.38600.188700.690600 | 9th flr-Fire sprinkler pipe | 11d | 2025-04-26 | 2025-05-06 | 611 |  |  | 7 day week No holidays | 7299234 |
| 615 | 37000.37200.37900.38600.188700.690700 | 9th flr-Flat flooring | 11d | 2025-11-13 | 2025-11-23 | 613 |  |  | 7 day week No holidays | 7299244 |
| 616 | 37000.37200.37900.38600.188700.690800 | 9th flr-Main door fixing & frame fixing | 11d | 2025-12-15 | 2025-12-26 | 615, 693FS+360d |  |  | 7 day week No holidays | 7299254 |
| 617 | 37000.37200.37900.38600.188700.690900 | 9th flr-Window fixing | 11d | 2025-11-24 | 2025-12-04 | 615, 693FS+120d |  |  | 7 day week No holidays | 7299264 |
| 618 | 37000.37200.37900.38600.188700.691000 | 9th flr-Railing Fixing | 11d | 2026-11-19 | 2026-11-29 | 615FS+360d |  |  | 7 day week No holidays | 7299274 |
| 619 | 37000.37200.37900.38600.188700.691100 | 9th flr-Internal painting - putty / primer application | 11d | 2027-02-27 | 2027-03-09 | 615FS+460d |  |  | 7 day week No holidays | 7299284 |
| 620 | 37000.37200.37900.38600.188700.691200 | 9th flr-Flat electrical wiring | 11d | 2025-12-26 | 2026-01-06 | 616 |  |  | 7 day week No holidays | 7299294 |
| 621 | 37000.37200.37900.38600.188700.691300 | 9th flr-Internal painting | 11d | 2026-01-06 | 2026-01-17 | 620 |  |  | 7 day week No holidays | 7299304 |
| 622 | 37000.37200.37900.38600.188700.691400 | 9th flr-Internal shutter fixing | 11d | 2027-03-10 | 2027-03-20 | 619 |  |  | 7 day week No holidays | 7299314 |

| ID | WBS | Task | Duration | Start | Finish | Predecessors | Constraint | Calendar | Unique_Task_ID |
| --- | --- | --- | --- | --- | --- | --- | --- | --- | --- |
| 623 | 37000.37200.37900.38600.188800 | **10th Floor** | 693.88d | 2025-04-26 | 2027-03-21 |  | start no earlier than 2025-04-26 | 7 day week No holidays | 7285014 |
| 624 | 37000.37200.37900.38600.188800.691500 | 10th flr-Gypsum Plaster | 10d | 2025-04-26 | 2025-05-06 | 611FS+0.25d |  | 7 day week No holidays | 7299324 |
| 625 | 37000.37200.37900.38600.188800.691600 | 10th flr-Kitchen Platform | 0.12d | 2025-05-07 | 2025-05-07 | 612, 624 |  | 7 day week No holidays | 7299334 |
| 626 | 37000.37200.37900.38600.188800.691700 | 10th flr-Toilet dado & flooring | 0.12d | 2025-11-13 | 2025-11-13 | 159, 613 |  | 7 day week No holidays | 7299344 |
| 627 | 37000.37200.37900.38600.188800.691800 | 10th flr-Fire sprinkler pipe | 0.12d | 2025-05-07 | 2025-05-07 | 614, 624 |  | 7 day week No holidays | 7299354 |
| 628 | 37000.37200.37900.38600.188800.691900 | 10th flr-Flat flooring | 0.12d | 2025-11-24 | 2025-11-24 | 615, 626 |  | 7 day week No holidays | 7299364 |
| 629 | 37000.37200.37900.38600.188800.692000 | 10th flr-Main door fixing & frame fixing | 0.12d | 2025-12-26 | 2025-12-26 | 616, 628 |  | 7 day week No holidays | 7299374 |
| 630 | 37000.37200.37900.38600.188800.692100 | 10th flr-Window fixing | 0.12d | 2025-12-05 | 2025-12-05 | 617, 628 |  | 7 day week No holidays | 7299384 |
| 631 | 37000.37200.37900.38600.188800.692200 | 10th flr-Railing Fixing | 0.12d | 2026-11-30 | 2026-11-30 | 618, 628 |  | 7 day week No holidays | 7299394 |
| 632 | 37000.37200.37900.38600.188800.692300 | 10th flr-Internal painting - putty / primer application | 0.12d | 2027-03-10 | 2027-03-10 | 619, 628 |  | 7 day week No holidays | 7299404 |
| 633 | 37000.37200.37900.38600.188800.692400 | 10th flr-Flat electrical wiring | 0.12d | 2026-01-06 | 2026-01-06 | 620, 629 |  | 7 day week No holidays | 7299414 |
| 634 | 37000.37200.37900.38600.188800.692500 | 10th flr-Internal painting | 0.12d | 2026-01-17 | 2026-01-17 | 621, 633 |  | 7 day week No holidays | 7299424 |
| 635 | 37000.37200.37900.38600.188800.692600 | 10th flr-Internal shutter fixing | 0.12d | 2027-03-21 | 2027-03-21 | 622, 632 |  | 7 day week No holidays | 7299434 |
| 636 | 37000.37200.37900.38600.188900 | **11th Floor** | 694.62d | 2025-05-06 | 2027-04-01 |  | start no earlier than 2025-05-06 | 7 day week No holidays | 7285024 |
| 637 | 37000.37200.37900.38600.188900.692700 | 11th flr-Gypsum Plaster | 10d | 2025-05-06 | 2025-05-16 | 624FS+0.25d |  | 7 day week No holidays | 7299444 |
| 638 | 37000.37200.37900.38600.188900.692800 | 11th flr-Kitchen Platform | 11d | 2025-05-16 | 2025-05-27 | 625, 637 |  | 7 day week No holidays | 7299454 |
| 639 | 37000.37200.37900.38600.188900.692900 | 11th flr-Toilet dado & flooring | 11d | 2025-11-13 | 2025-11-24 | 165, 626 |  | 7 day week No holidays | 7299464 |
| 640 | 37000.37200.37900.38600.188900.693000 | 11th flr-Fire sprinkler pipe | 11d | 2025-05-16 | 2025-05-27 | 627, 637 |  | 7 day week No holidays | 7299474 |
| 641 | 37000.37200.37900.38600.188900.693100 | 11th flr-Flat flooring | 11d | 2025-11-24 | 2025-12-05 | 628, 639 |  | 7 day week No holidays | 7299484 |
| 642 | 37000.37200.37900.38600.188900.693200 | 11th flr-Main door fixing & frame fixing | 96d | 2025-12-26 | 2026-04-01 | 629, 641 |  | 7 day week No holidays | 7299494 |
| 643 | 37000.37200.37900.38600.188900.693300 | 11th flr-Window fixing | 11d | 2025-12-05 | 2025-12-16 | 630, 641 |  | 7 day week No holidays | 7299504 |
| 644 | 37000.37200.37900.38600.188900.693400 | 11th flr-Railing Fixing | 11d | 2026-11-30 | 2026-12-11 | 631, 641 |  | 7 day week No holidays | 7299514 |
| 645 | 37000.37200.37900.38600.188900.693500 | 11th flr-Internal painting - putty / primer application | 11d | 2027-03-10 | 2027-03-21 | 632, 641 |  | 7 day week No holidays | 7299524 |
| 646 | 37000.37200.37900.38600.188900.693600 | 11th flr-Flat electrical wiring | 86d | 2026-04-01 | 2026-06-26 | 633, 642 |  | 7 day week No holidays | 7299534 |
| 647 | 37000.37200.37900.38600.188900.693700 | 11th flr-Internal painting | 11d | 2026-06-26 | 2026-07-07 | 634, 646 |  | 7 day week No holidays | 7299544 |
| 648 | 37000.37200.37900.38600.188900.693800 | 11th flr-Internal shutter fixing | 11d | 2027-03-21 | 2027-04-01 | 635, 645 |  | 7 day week No holidays | 7299554 |

| ID | WBS | Task | Duration | Start | Finish | Predecessors | Complete | Constraint | Calendar | Unique_Task_ID |
| --- | --- | --- | --- | --- | --- | --- | --- | --- | --- | --- |
| 649 | 37000.37200.37900.38600.126000 | **12th Floor** | 1072.12d | 2024-04-28 | 2027-04-05 |  | 35% | start no earlier than 2024-04-28 | 7 day week No holidays | 7285034 |
| 650 | 37000.37200.37900.38600.126000.447600 | 12th flr-Gypsum Plaster | 8d | 2024-04-28 | 2024-12-18 | 637FS-228.5d | 100% | start no earlier than 2024-04-28 | 7 day week No holidays | 7299564 |
| 651 | 37000.37200.37900.38600.126000.693900 | 12th flr-Kitchen Platform | 11d | 2025-04-17 | 2025-04-28 | 638FS-40d, 650 |  |  | 7 day week No holidays | 7299574 |
| 652 | 37000.37200.37900.38600.126000.447500 | 12th flr-Toilet dado & flooring | 11d | 2024-11-10 | 2024-11-21 | 639, 171 | 100% | start no earlier than 2024-11-10 | 7 day week No holidays | 7299584 |
| 653 | 37000.37200.37900.38600.126000.694000 | 12th flr-Fire sprinkler pipe | 11d | 2025-05-27 | 2025-06-07 | 640, 650FS+23d |  |  | 7 day week No holidays | 7299594 |
| 654 | 37000.37200.37900.38600.126000.447400 | 12th flr-Flat flooring | 11d | 2024-09-27 | 2024-11-22 | 641FS-55.12d, 652FS-55.12d | 100% | start no earlier than 2024-09-27 | 7 day week No holidays | 7299604 |
| 655 | 37000.37200.37900.38600.126000.447300 | 12th flr-Main door fixing & frame fixing | 11d | 2024-12-24 | 2026-04-05 | 642FS-463.25d | 63% |  | 7 day week No holidays | 7299614 |
| 656 | 37000.37200.37900.38600.126000.694100 | 12th flr-Window fixing | 9d | 2025-04-30 | 2025-05-08 | 608FS-41d |  |  | 7 day week No holidays | 7299624 |
| 657 | 37000.37200.37900.38600.126000.694200 | 12th flr-Railing Fixing | 11d | 2026-12-11 | 2026-12-22 | 644, 654 |  |  | 7 day week No holidays | 7299634 |
| 658 | 37000.37200.37900.38600.126000.694300 | 12th flr-Internal painting - putty / primer application | 11d | 2026-02-14 | 2026-02-25 | 655FS-50d |  |  | 7 day week No holidays | 7299644 |
| 659 | 37000.37200.37900.38600.126000.447200 | 12th flr-Flat electrical wiring | 11d | 2024-12-30 | 2026-07-06 | 646FS-543.25d, 655FS-543.25d | 9% |  | 7 day week No holidays | 7299654 |
| 660 | 37000.37200.37900.38600.126000.694400 | 12th flr-Internal painting | 11d | 2026-07-07 | 2026-07-18 | 647, 659 |  |  | 7 day week No holidays | 7299664 |
| 661 | 37000.37200.37900.38600.126000.447100 | 12th flr-Internal shutter fixing | 11d | 2024-12-24 | 2027-04-05 | 648FS-828.12d, 658FS-828.12d | 63% |  | 7 day week No holidays | 7299674 |
| 662 | 37000.37200.37900.38600.189000 | **13th Floor** | 917.38d | 2024-09-29 | 2027-04-05 |  | 13% | start no earlier than 2024-09-29 | 7 day week No holidays | 7285554 |
| 663 | 37000.37200.37900.38600.189000.447000 | 13th flr-Gypsum Plaster | 10d | 2024-12-11 | 2024-12-20 | 650FS+23.25d | 100% | start no earlier than 2024-12-11 | 7 day week No holidays | 7299684 |
| 664 | 37000.37200.37900.38600.189000.694500 | 13th flr-Kitchen Platform | 4d | 2025-11-23 | 2025-11-27 | 651FS+208.75d, 663FS-10d |  |  | 7 day week No holidays | 7299694 |
| 665 | 37000.37200.37900.38600.189000.694600 | 13th flr-Toilet dado & flooring | 0.12d | 2025-11-02 | 2025-11-02 | 177, 652 |  |  | 7 day week No holidays | 7299704 |
| 666 | 37000.37200.37900.38600.189000.446900 | 13th flr-Fire sprinkler pipe | 0.12d | 2024-09-29 | 2024-09-29 | 653FS+17d, 663 | 100% | start no earlier than 2024-09-29 | 7 day week No holidays | 7299714 |
| 667 | 37000.37200.37900.38600.189000.694700 | 13th flr-Flat flooring | 0.12d | 2025-11-02 | 2025-11-02 | 665, 654 |  |  | 7 day week No holidays | 7299724 |
| 668 | 37000.37200.37900.38600.189000.694800 | 13th flr-Main door fixing & frame fixing | 10d | 2025-12-01 | 2025-12-11 | 667FS+29d |  |  | 7 day week No holidays | 7299734 |
| 669 | 37000.37200.37900.38600.189000.694900 | 13th flr-Window fixing | 9d | 2025-05-09 | 2025-05-17 | 656 |  |  | 7 day week No holidays | 7299744 |
| 670 | 37000.37200.37900.38600.189000.695000 | 13th flr-Railing Fixing | 0.12d | 2026-12-22 | 2026-12-22 | 657, 667 |  |  | 7 day week No holidays | 7299754 |
| 671 | 37000.37200.37900.38600.189000.695100 | 13th flr-Internal painting - putty / primer application | 0.12d | 2026-02-25 | 2026-02-25 | 658 |  |  | 7 day week No holidays | 7299764 |
| 672 | 37000.37200.37900.38600.189000.695200 | 13th flr-Flat electrical wiring | 40d | 2026-07-06 | 2026-08-15 | 659, 668 |  |  | 7 day week No holidays | 7299774 |
| 673 | 37000.37200.37900.38600.189000.695300 | 13th flr-Internal painting | 0.12d | 2026-08-15 | 2026-08-15 | 660, 672 |  |  | 7 day week No holidays | 7299784 |
| 674 | 37000.37200.37900.38600.189000.695400 | 13th flr-Internal shutter fixing | 0.12d | 2027-04-05 | 2027-04-05 | 661, 671 |  |  | 7 day week No holidays | 7299794 |

| ID | WBS | Task | Duration | Start | Finish | Predecessors | Complete | Constraint | Calendar | Unique_Task_ID |
| --- | --- | --- | --- | --- | --- | --- | --- | --- | --- | --- |
| 675 | 37000.37200.37900.38600.189100 | **14th Floor** | 995d | 2024-07-25 | 2027-04-16 |  | 25% | start no earlier than 2024-07-25 | 7 day week No holidays | 7285914 |
| 676 | 37000.37200.37900.38600.189100.446800 | 14th flr-Gypsum Plaster | 10d | 2024-07-25 | 2024-08-04 | 663FS+0.25d | 100% | start no earlier than 2024-07-25 | 7 day week No holidays | 7299804 |
| 677 | 37000.37200.37900.38600.189100.695500 | 14th flr-Kitchen Platform | 7d | 2025-05-01 | 2025-05-08 | 664FS-210d, 676FS-5d |  |  | 7 day week No holidays | 7299814 |
| 678 | 37000.37200.37900.38600.189100.446700 | 14th flr-Toilet dado & flooring | 11d | 2024-11-25 | 2024-12-20 | 183FS+47d, 665FS-19.12d | 100% | start no earlier than 2024-11-25 | 7 day week No holidays | 7299824 |
| 679 | 37000.37200.37900.38600.189100.695600 | 14th flr-Fire sprinkler pipe | 11d | 2025-04-01 | 2025-04-11 | 666, 676FS+29d |  |  | 7 day week No holidays | 7299834 |
| 680 | 37000.37200.37900.38600.189100.446600 | 14th flr-Flat flooring | 11d | 2024-11-25 | 2024-12-20 | 667FS-19.12d, 678FS-19.12d | 100% | start no earlier than 2024-11-25 | 7 day week No holidays | 7299844 |
| 681 | 37000.37200.37900.38600.189100.695700 | 14th flr-Main door fixing & frame fixing | 11d | 2025-12-11 | 2025-12-22 | 668, 680 |  |  | 7 day week No holidays | 7299854 |
| 682 | 37000.37200.37900.38600.189100.695800 | 14th flr-Window fixing | 9d | 2025-05-18 | 2025-05-26 | 669, 680 |  |  | 7 day week No holidays | 7299864 |
| 683 | 37000.37200.37900.38600.189100.695900 | 14th flr-Railing Fixing | 11d | 2026-12-22 | 2027-01-02 | 670, 680 |  |  | 7 day week No holidays | 7299874 |
| 684 | 37000.37200.37900.38600.189100.696000 | 14th flr-Internal painting - putty / primer application | 11d | 2026-03-17 | 2026-03-28 | 671FS+20d |  |  | 7 day week No holidays | 7299884 |
| 685 | 37000.37200.37900.38600.189100.696100 | 14th flr-Flat electrical wiring | 11d | 2026-08-15 | 2026-08-26 | 672, 681 |  |  | 7 day week No holidays | 7299894 |
| 686 | 37000.37200.37900.38600.189100.696200 | 14th flr-Internal painting | 11d | 2026-08-26 | 2026-09-06 | 673, 685 |  |  | 7 day week No holidays | 7299904 |
| 687 | 37000.37200.37900.38600.189100.696300 | 14th flr-Internal shutter fixing | 11d | 2027-04-05 | 2027-04-16 | 674, 684 |  |  | 7 day week No holidays | 7299914 |
| 688 | 37000.37200.37900.38600.189400 | **15th Floor** | 992.25d | 2024-08-08 | 2027-04-27 |  | 28% | start no earlier than 2024-08-08 | 7 day week No holidays | 7285904 |
| 689 | 37000.37200.37900.38600.189400.446500 | 15th flr-Gypsum Plaster | 1d | 2024-08-08 | 2024-08-08 | 676SS+0.25d | 100% | start no earlier than 2024-08-08 | 7 day week No holidays | 7299924 |
| 690 | 37000.37200.37900.38600.189400.696400 | 15th flr-Kitchen Platform | 10d | 2025-04-28 | 2025-05-08 | 677FS-10d, 689FS-5d |  |  | 7 day week No holidays | 7299934 |
| 691 | 37000.37200.37900.38600.189400.446400 | 15th flr-Toilet dado & flooring | 11d | 2024-12-09 | 2024-12-20 | 189FS+22d, 678 | 100% | start no earlier than 2024-12-09 | 7 day week No holidays | 7299944 |
| 692 | 37000.37200.37900.38600.189400.446300 | 15th flr-Fire sprinkler pipe | 11d | 2024-08-12 | 2024-08-23 | 679, 689 | 100% | start no earlier than 2024-08-12 | 7 day week No holidays | 7299954 |
| 693 | 37000.37200.37900.38600.189400.446200 | 15th flr-Flat flooring | 11d | 2024-12-09 | 2024-12-20 | 680, 691 | 100% | start no earlier than 2024-12-09 | 7 day week No holidays | 7299964 |
| 694 | 37000.37200.37900.38600.189400.696500 | 15th flr-Main door fixing & frame fixing | 11d | 2025-12-22 | 2026-01-02 | 681, 693 |  |  | 7 day week No holidays | 7299974 |
| 695 | 37000.37200.37900.38600.189400.696600 | 15th flr-Window fixing | 9d | 2025-05-27 | 2025-06-04 | 682, 693 |  |  | 7 day week No holidays | 7299984 |
| 696 | 37000.37200.37900.38600.189400.696700 | 15th flr-Railing Fixing | 11d | 2027-01-02 | 2027-01-13 | 683, 693 |  |  | 7 day week No holidays | 7299994 |
| 697 | 37000.37200.37900.38600.189400.696800 | 15th flr-Internal painting - putty / primer application | 11d | 2026-03-28 | 2026-04-08 | 684, 693 |  |  | 7 day week No holidays | 7300004 |
| 698 | 37000.37200.37900.38600.189400.696900 | 15th flr-Flat electrical wiring | 11d | 2026-08-26 | 2026-09-06 | 685, 694 |  |  | 7 day week No holidays | 7300014 |
| 699 | 37000.37200.37900.38600.189400.697000 | 15th flr-Internal painting | 11d | 2026-09-06 | 2026-09-17 | 686, 698 |  |  | 7 day week No holidays | 7300024 |
| 700 | 37000.37200.37900.38600.189400.697100 | 15th flr-Internal shutter fixing | 11d | 2027-04-16 | 2027-04-27 | 687, 697 |  |  | 7 day week No holidays | 7300034 |

| ID | WBS | Task | Duration | Start | Finish | Predecessors | Complete | Constraint | Calendar | Unique_Task_ID |
| --- | --- | --- | --- | --- | --- | --- | --- | --- | --- | --- |
| 701 | 37000.37200.37900.38600.189600 | **16th Floor** | 979d | 2024-09-01 | 2027-05-08 |  | 42% | start no earlier than 2024-09-01 | 7 day week No holidays | 7285894 |
| 702 | 37000.37200.37900.38600.189600.446100 | 16th flr-Gypsum Plaster | 20d | 2024-09-01 | 2024-09-21 | 689FS+0.25d | 100% | start no earlier than 2024-09-01 | 7 day week No holidays | 7300044 |
| 703 | 37000.37200.37900.38600.189600.697200 | 16th flr-Kitchen Platform | 10d | 2025-05-08 | 2025-05-18 | 690, 702FS-9d |  |  | 7 day week No holidays | 7300054 |
| 704 | 37000.37200.37900.38600.189600.446000 | 16th flr-Toilet dado & flooring | 14d | 2024-12-09 | 2024-12-22 | 691 | 100% | start no earlier than 2024-12-09 | 7 day week No holidays | 7300064 |
| 705 | 37000.37200.37900.38600.189600.445900 | 16th flr-Fire sprinkler pipe | 18d | 2024-09-12 | 2024-09-29 | 692, 702FS-9d | 100% | start no earlier than 2024-09-12 | 7 day week No holidays | 7300074 |
| 706 | 37000.37200.37900.38600.189600.445800 | 16th flr-Flat flooring | 11d | 2024-12-15 | 2024-12-25 | 693, 704 | 100% | start no earlier than 2024-12-15 | 7 day week No holidays | 7300084 |
| 707 | 37000.37200.37900.38600.189600.697300 | 16th flr-Main door fixing & frame fixing | 11d | 2026-01-02 | 2026-01-13 | 694, 706 |  |  | 7 day week No holidays | 7300094 |
| 708 | 37000.37200.37900.38600.189600.697400 | 16th flr-Window fixing | 9d | 2025-06-05 | 2025-06-13 | 695, 706 |  |  | 7 day week No holidays | 7300104 |
| 709 | 37000.37200.37900.38600.189600.697500 | 16th flr-Railing Fixing | 11d | 2027-01-13 | 2027-01-24 | 696, 706 |  |  | 7 day week No holidays | 7300114 |
| 710 | 37000.37200.37900.38600.189600.697600 | 16th flr-Internal painting - putty / primer application | 11d | 2026-04-08 | 2026-04-19 | 697, 706 |  |  | 7 day week No holidays | 7300124 |
| 711 | 37000.37200.37900.38600.189600.697700 | 16th flr-Flat electrical wiring | 11d | 2026-09-06 | 2026-09-17 | 698, 707 |  |  | 7 day week No holidays | 7300134 |
| 712 | 37000.37200.37900.38600.189600.697800 | 16th flr-Internal painting | 11d | 2026-09-17 | 2026-09-28 | 699, 711 |  |  | 7 day week No holidays | 7300144 |
| 713 | 37000.37200.37900.38600.189600.697900 | 16th flr-Internal shutter fixing | 11d | 2027-04-27 | 2027-05-08 | 700, 710 |  |  | 7 day week No holidays | 7300154 |
| 714 | 37000.37200.37900.38600.189800 | **17th Floor** | 1013.5d | 2024-08-08 | 2027-05-19 |  | 34% | start no earlier than 2024-08-08 | 7 day week No holidays | 7285824 |
| 715 | 37000.37200.37900.38600.189800.445700 | 17th flr-Gypsum Plaster | 15d | 2024-08-08 | 2024-08-23 | 702FS-9d | 100% | start no earlier than 2024-08-08 | 7 day week No holidays | 7300164 |
| 716 | 37000.37200.37900.38600.189800.698000 | 17th flr-Kitchen Platform | 15d | 2025-05-18 | 2025-06-02 | 703, 715FS-0.75d |  |  | 7 day week No holidays | 7300174 |
| 717 | 37000.37200.37900.38600.189800.445600 | 17th flr-Toilet dado & flooring | 23d | 2025-01-09 | 2025-04-06 | 704FS-82d | 75% |  | 7 day week No holidays | 7300184 |
| 718 | 37000.37200.37900.38600.189800.445500 | 17th flr-Fire sprinkler pipe | 11d | 2024-09-09 | 2024-09-20 | 705, 715FS-0.75d | 100% | start no earlier than 2024-09-09 | 7 day week No holidays | 7300194 |
| 719 | 37000.37200.37900.38600.189800.445400 | 17th flr-Flat flooring | 11d | 2025-01-15 | 2025-04-03 | 706FS+0.25d, 717FS-107.75d | 74% | start no earlier than 2025-01-15 | 7 day week No holidays | 7300204 |
| 720 | 37000.37200.37900.38600.189800.698100 | 17th flr-Main door fixing & frame fixing | 11d | 2026-01-13 | 2026-01-24 | 707, 719 |  |  | 7 day week No holidays | 7300214 |
| 721 | 37000.37200.37900.38600.189800.698200 | 17th flr-Window fixing | 9d | 2025-06-14 | 2025-06-22 | 708, 719 |  |  | 7 day week No holidays | 7300224 |
| 722 | 37000.37200.37900.38600.189800.698300 | 17th flr-Railing Fixing | 11d | 2027-01-24 | 2027-02-04 | 709, 719 |  |  | 7 day week No holidays | 7300234 |
| 723 | 37000.37200.37900.38600.189800.698400 | 17th flr-Internal painting - putty / primer application | 11d | 2026-04-19 | 2026-04-30 | 710, 719 |  |  | 7 day week No holidays | 7300244 |
| 724 | 37000.37200.37900.38600.189800.698500 | 17th flr-Flat electrical wiring | 11d | 2026-09-17 | 2026-09-28 | 711, 720 |  |  | 7 day week No holidays | 7300254 |
| 725 | 37000.37200.37900.38600.189800.698600 | 17th flr-Internal painting | 11d | 2026-09-28 | 2026-10-09 | 712, 724 |  |  | 7 day week No holidays | 7300264 |
| 726 | 37000.37200.37900.38600.189800.698700 | 17th flr-Internal shutter fixing | 11d | 2027-05-08 | 2027-05-19 | 713, 723 |  |  | 7 day week No holidays | 7300274 |

| ID | WBS | Task | Duration | Start | Finish | Predecessors | Complete | Constraint | Calendar | Unique_Task_ID |
| --- | --- | --- | --- | --- | --- | --- | --- | --- | --- | --- |
| 727 | 37000.37200.37900.38600.190000 | **18th Floor** | 1002.25d | 2024-08-31 | 2027-05-30 |  | 55% | start no earlier than 2024-08-31 | 7 day week No holidays | 7285814 |
| 728 | 37000.37200.37900.38600.190000.445300 | 18th flr-Gypsum Plaster | 20d | 2024-08-31 | 2024-09-19 | 715FS-0.5d | 100% | start no earlier than 2024-08-31 | 7 day week No holidays | 7300284 |
| 729 | 37000.37200.37900.38600.190000.698800 | 18th flr-Kitchen Platform | 15d | 2025-06-02 | 2025-06-17 | 716, 728FS-3d |  |  | 7 day week No holidays | 7300294 |
| 730 | 37000.37200.37900.38600.190000.445200 | 18th flr-Toilet dado & flooring | 33d | 2024-12-29 | 2025-01-30 | 207FS+0.25d, 717FS-40d | 100% | start no earlier than 2024-12-29 | 7 day week No holidays | 7300304 |
| 731 | 37000.37200.37900.38600.190000.445100 | 18th flr-Fire sprinkler pipe | 11d | 2024-09-09 | 2024-09-20 | 718FS-4d, 728FS-3d | 100% | start no earlier than 2024-09-09 | 7 day week No holidays | 7300314 |
| 732 | 37000.37200.37900.38600.190000.445000 | 18th flr-Flat flooring | 52d | 2024-12-12 | 2025-04-05 | 719FS-112.75d, 730FS-113d | 96% |  | 7 day week No holidays | 7300324 |
| 733 | 37000.37200.37900.38600.190000.698900 | 18th flr-Main door fixing & frame fixing | 11d | 2026-01-24 | 2026-02-04 | 720, 732 |  |  | 7 day week No holidays | 7300334 |
| 734 | 37000.37200.37900.38600.190000.699000 | 18th flr-Window fixing | 7d | 2025-06-23 | 2025-06-29 | 721, 732 |  |  | 7 day week No holidays | 7300344 |
| 735 | 37000.37200.37900.38600.190000.699100 | 18th flr-Railing Fixing | 11d | 2027-02-04 | 2027-02-15 | 722, 732 |  |  | 7 day week No holidays | 7300354 |
| 736 | 37000.37200.37900.38600.190000.699200 | 18th flr-Internal painting - putty / primer application | 11d | 2026-04-30 | 2026-05-11 | 723, 732 |  |  | 7 day week No holidays | 7300364 |
| 737 | 37000.37200.37900.38600.190000.699300 | 18th flr-Flat electrical wiring | 11d | 2026-09-28 | 2026-10-09 | 724, 733 |  |  | 7 day week No holidays | 7300374 |
| 738 | 37000.37200.37900.38600.190000.699400 | 18th flr-Internal painting | 11d | 2026-10-09 | 2026-10-20 | 725, 737 |  |  | 7 day week No holidays | 7300384 |
| 739 | 37000.37200.37900.38600.190000.699500 | 18th flr-Internal shutter fixing | 11d | 2027-05-19 | 2027-05-30 | 726, 736 |  |  | 7 day week No holidays | 7300394 |
| 740 | 37000.37200.37900.38600.190400 | **19th Floor** | 1006d | 2024-09-07 | 2027-06-10 |  | 50% | start no earlier than 2024-09-07 | 7 day week No holidays | 7285804 |
| 741 | 37000.37200.37900.38600.190400.444900 | 19th flr-Gypsum Plaster | 18d | 2024-09-07 | 2024-09-25 | 728FS-2.75d | 100% | start no earlier than 2024-09-07 | 7 day week No holidays | 7300404 |
| 742 | 37000.37200.37900.38600.190400.699600 | 19th flr-Kitchen Platform | 15d | 2025-06-17 | 2025-07-02 | 729, 741 |  |  | 7 day week No holidays | 7300414 |
| 743 | 37000.37200.37900.38600.190400.444800 | 19th flr-Toilet dado & flooring | 15d | 2025-01-16 | 2025-01-30 | 213FS+0.25d, 730FS-0.25d | 100% | start no earlier than 2025-01-16 | 7 day week No holidays | 7300424 |
| 744 | 37000.37200.37900.38600.190400.444700 | 19th flr-Fire sprinkler pipe | 1d | 2024-09-24 | 2024-09-25 | 731, 741 | 100% | start no earlier than 2024-09-24 | 7 day week No holidays | 7300434 |
| 745 | 37000.37200.37900.38600.190400.444600 | 19th flr-Flat flooring | 59d | 2024-12-04 | 2025-04-06 | 732FS-123d, 743 | 98% |  | 7 day week No holidays | 7300444 |
| 746 | 37000.37200.37900.38600.190400.699700 | 19th flr-Main door fixing & frame fixing | 11d | 2026-02-04 | 2026-02-15 | 733, 745 |  |  | 7 day week No holidays | 7300454 |
| 747 | 37000.37200.37900.38600.190400.699800 | 19th flr-Window fixing | 7d | 2025-06-30 | 2025-07-06 | 734, 745 |  |  | 7 day week No holidays | 7300464 |
| 748 | 37000.37200.37900.38600.190400.699900 | 19th flr-Railing Fixing | 11d | 2027-02-15 | 2027-02-26 | 735, 745 |  |  | 7 day week No holidays | 7300474 |
| 749 | 37000.37200.37900.38600.190400.700000 | 19th flr-Internal painting - putty / primer application | 11d | 2026-05-11 | 2026-05-22 | 736, 745 |  |  | 7 day week No holidays | 7300484 |
| 750 | 37000.37200.37900.38600.190400.700100 | 19th flr-Flat electrical wiring | 11d | 2026-10-09 | 2026-10-20 | 737, 746 |  |  | 7 day week No holidays | 7300494 |
| 751 | 37000.37200.37900.38600.190400.700200 | 19th flr-Internal painting | 11d | 2026-10-20 | 2026-10-31 | 738, 750 |  |  | 7 day week No holidays | 7300504 |
| 752 | 37000.37200.37900.38600.190400.700300 | 19th flr-Internal shutter fixing | 11d | 2027-05-30 | 2027-06-10 | 739, 749 |  |  | 7 day week No holidays | 7300514 |

| ID | WBS | Task | Duration | Start | Finish | Predecessors | Complete | Constraint | Calendar | Unique_Task_ID |
| --- | --- | --- | --- | --- | --- | --- | --- | --- | --- | --- |
| 753 | 37000.37200.37900.38600.190600 | **20th Floor** | 1005.25d | 2024-09-19 | 2027-06-21 |  | 23% | start no earlier than 2024-09-19 | 7 day week No holidays | 7285724 |
| 754 | 37000.37200.37900.38600.190600.444500 | 20th flr-Gypsum Plaster | 11d | 2024-09-19 | 2024-09-29 | 741FS+0.25d | 100% | start no earlier than 2024-09-19 | 7 day week No holidays | 7300524 |
| 755 | 37000.37200.37900.38600.190600.700400 | 20th flr-Kitchen Platform | 15d | 2025-07-02 | 2025-07-17 | 742, 754FS-6d |  |  | 7 day week No holidays | 7300534 |
| 756 | 37000.37200.37900.38600.190600.444400 | 20th flr-Toilet dado & flooring | 10d | 2025-01-15 | 2025-01-25 | 219FS+20d, 743 | 100% | start no earlier than 2025-01-15 | 7 day week No holidays | 7300544 |
| 757 | 37000.37200.37900.38600.190600.444300 | 20th flr-Fire sprinkler pipe | 15d | 2024-10-31 | 2024-11-14 | 744, 754FS-6d | 100% | start no earlier than 2024-10-31 | 7 day week No holidays | 7300554 |
| 758 | 37000.37200.37900.38600.190600.444200 | 20th flr-Flat flooring | 50d | 2024-12-13 | 2025-05-15 | 745FS-119d, 756FS-10d | 10% |  | 7 day week No holidays | 7300564 |
| 759 | 37000.37200.37900.38600.190600.700500 | 20th flr-Main door fixing & frame fixing | 11d | 2026-02-15 | 2026-02-26 | 746, 758FS+58d |  |  | 7 day week No holidays | 7300574 |
| 760 | 37000.37200.37900.38600.190600.700600 | 20th flr-Window fixing | 9d | 2025-07-13 | 2025-07-21 | 747, 758FS+58d |  |  | 7 day week No holidays | 7300584 |
| 761 | 37000.37200.37900.38600.190600.700700 | 20th flr-Railing Fixing | 11d | 2027-02-26 | 2027-03-09 | 748, 758FS+58d |  |  | 7 day week No holidays | 7300594 |
| 762 | 37000.37200.37900.38600.190600.700800 | 20th flr-Internal painting - putty / primer application | 11d | 2026-05-22 | 2026-06-02 | 749, 758FS+58d |  |  | 7 day week No holidays | 7300604 |
| 763 | 37000.37200.37900.38600.190600.700900 | 20th flr-Flat electrical wiring | 11d | 2026-10-20 | 2026-10-31 | 750, 759 |  |  | 7 day week No holidays | 7300614 |
| 764 | 37000.37200.37900.38600.190600.701000 | 20th flr-Internal painting | 11d | 2026-10-31 | 2026-11-11 | 751, 763 |  |  | 7 day week No holidays | 7300624 |
| 765 | 37000.37200.37900.38600.190600.701100 | 20th flr-Internal shutter fixing | 11d | 2027-06-10 | 2027-06-21 | 752, 762 |  |  | 7 day week No holidays | 7300634 |
| 766 | 37000.37200.37900.38600.190700 | **21th Floor** | 1060d | 2024-08-06 | 2027-07-02 |  | 30% | start no earlier than 2024-08-06 | 7 day week No holidays | 7285714 |
| 767 | 37000.37200.37900.38600.190700.444100 | 21st flr-Gypsum Plaster | 20d | 2024-09-10 | 2024-09-29 | 754FS-5.75d | 100% | start no earlier than 2024-09-10 | 7 day week No holidays | 7300644 |
| 768 | 37000.37200.37900.38600.190700.701200 | 21st flr-Kitchen Platform | 15d | 2025-07-17 | 2025-08-01 | 755, 767FS+10d |  |  | 7 day week No holidays | 7300654 |
| 769 | 37000.37200.37900.38600.190700.444000 | 21st flr-Toilet dado & flooring | 20d | 2025-03-18 | 2025-04-07 | 756 | 65% | start no earlier than 2025-03-18 | 7 day week No holidays | 7300664 |
| 770 | 37000.37200.37900.38600.190700.443900 | 21st flr-Fire sprinkler pipe | 11d | 2024-08-06 | 2024-08-17 | 757, 767FS+10d | 100% | start no earlier than 2024-08-06 | 7 day week No holidays | 7300674 |
| 771 | 37000.37200.37900.38600.190700.443800 | 21st flr-Flat flooring | 7d | 2025-03-30 | 2025-04-06 | 769FS-11d | 14% | start no earlier than 2025-03-30 | 7 day week No holidays | 7300684 |
| 772 | 37000.37200.37900.38600.190700.701300 | 21st flr-Main door fixing & frame fixing | 11d | 2026-02-26 | 2026-03-09 | 759, 771 |  |  | 7 day week No holidays | 7300694 |
| 773 | 37000.37200.37900.38600.190700.701400 | 21st flr-Window fixing | 9d | 2025-07-22 | 2025-07-30 | 760, 771 |  |  | 7 day week No holidays | 7300704 |
| 774 | 37000.37200.37900.38600.190700.701500 | 21st flr-Railing Fixing | 11d | 2027-03-09 | 2027-03-20 | 761, 771 |  |  | 7 day week No holidays | 7300714 |
| 775 | 37000.37200.37900.38600.190700.701600 | 21st flr-Internal painting - putty / primer application | 11d | 2026-06-02 | 2026-06-13 | 762, 771 |  |  | 7 day week No holidays | 7300724 |
| 776 | 37000.37200.37900.38600.190700.701700 | 21st flr-Flat electrical wiring | 11d | 2026-10-31 | 2026-11-11 | 763, 772 |  |  | 7 day week No holidays | 7300734 |
| 777 | 37000.37200.37900.38600.190700.701800 | 21st flr-Internal painting | 11d | 2026-11-11 | 2026-11-22 | 764, 776 |  |  | 7 day week No holidays | 7300744 |
| 778 | 37000.37200.37900.38600.190700.701900 | 21st flr-Internal shutter fixing | 11d | 2027-06-21 | 2027-07-02 | 765, 775 |  |  | 7 day week No holidays | 7300754 |

| ID | WBS | Task | Duration | Start | Finish | Predecessors | Complete | Constraint | Calendar | Unique_Task_ID |
| --- | --- | --- | --- | --- | --- | --- | --- | --- | --- | --- |
| 779 | 37000.37200.37900.38600.190900 | **22nd Floor** | 1033.25d | 2024-09-13 | 2027-07-13 |  | 71% | start no earlier than 2024-09-13 | 7 day week No holidays | 7285704 |
| 780 | 37000.37200.37900.38600.190900.425800 | 22nd flr-Gypsum Plaster | 17d | 2024-09-13 | 2024-09-29 | 767FS+10.25d | 100% | start no earlier than 2024-09-13 | 7 day week No holidays | 7300764 |
| 781 | 37000.37200.37900.38600.190900.702000 | 22nd flr-Kitchen Platform | 10d | 2025-08-01 | 2025-08-11 | 768, 780 |  |  | 7 day week No holidays | 7300774 |
| 782 | 37000.37200.37900.38600.190900.425700 | 22nd flr-Toilet dado & flooring | 93d | 2024-10-30 | 2025-01-30 | 231, 769FS-84d | 100% | start no earlier than 2024-10-30 | 7 day week No holidays | 7300784 |
| 783 | 37000.37200.37900.38600.190900.425600 | 22nd flr-Fire sprinkler pipe | 29d | 2024-10-31 | 2024-11-28 | 770FS-5d, 780 | 100% | start no earlier than 2024-10-31 | 7 day week No holidays | 7300794 |
| 784 | 37000.37200.37900.38600.190900.425500 | 22nd flr-Flat flooring | 70d | 2024-11-25 | 2025-04-02 | 782FS-131d | 97% | start no earlier than 2024-11-25 | 7 day week No holidays | 7300804 |
| 785 | 37000.37200.37900.38600.190900.702100 | 22nd flr-Main door fixing & frame fixing | 11d | 2026-03-09 | 2026-03-20 | 772, 784 |  |  | 7 day week No holidays | 7300814 |
| 786 | 37000.37200.37900.38600.190900.702200 | 22nd flr-Window fixing | 6d | 2025-07-31 | 2025-08-05 | 773, 784 |  |  | 7 day week No holidays | 7300824 |
| 787 | 37000.37200.37900.38600.190900.702300 | 22nd flr-Railing Fixing | 11d | 2027-03-20 | 2027-03-31 | 774, 784 |  |  | 7 day week No holidays | 7300834 |
| 788 | 37000.37200.37900.38600.190900.702400 | 22nd flr-Internal painting - putty / primer application | 11d | 2026-06-13 | 2026-06-24 | 775, 784 |  |  | 7 day week No holidays | 7300844 |
| 789 | 37000.37200.37900.38600.190900.702500 | 22nd flr-Flat electrical wiring | 11d | 2026-11-11 | 2026-11-22 | 776, 785 |  |  | 7 day week No holidays | 7300854 |
| 790 | 37000.37200.37900.38600.190900.702600 | 22nd flr-Internal painting | 11d | 2026-11-22 | 2026-12-03 | 777, 789 |  |  | 7 day week No holidays | 7300864 |
| 791 | 37000.37200.37900.38600.190900.702700 | 22nd flr-Internal shutter fixing | 11d | 2027-07-02 | 2027-07-13 | 778, 788 |  |  | 7 day week No holidays | 7300874 |
| 792 | 37000.37200.37900.38600.191100 | **23rd Floor** | 996.25d | 2024-10-31 | 2027-07-24 |  | 67% | start no earlier than 2024-10-31 | 7 day week No holidays | 7285684 |
| 793 | 37000.37200.37900.38600.191100.425400 | 23rd flr-Gypsum Plaster | 22d | 2024-10-31 | 2024-11-21 | 780FS+0.25d | 100% | start no earlier than 2024-10-31 | 7 day week No holidays | 7300884 |
| 794 | 37000.37200.37900.38600.191100.702800 | 23rd flr-Kitchen Platform | 10d | 2025-08-11 | 2025-08-21 | 781, 793 |  |  | 7 day week No holidays | 7300894 |
| 795 | 37000.37200.37900.38600.191100.425300 | 23rd flr-Toilet dado & flooring | 40d | 2024-11-08 | 2024-12-17 | 237, 782 | 100% | start no earlier than 2024-11-08 | 7 day week No holidays | 7300904 |
| 796 | 37000.37200.37900.38600.191100.702900 | 23rd flr-Toilet dado & flooring | 38d | 2024-12-18 | 2025-01-30 | 795 | 100% |  | Indian Calendar | 7300905 |
| 797 | 37000.37200.37900.38600.191100.425200 | 23rd flr-Fire sprinkler pipe | 21d | 2024-11-22 | 2024-12-12 | 783, 793 | 100% | start no earlier than 2024-11-22 | 7 day week No holidays | 7300914 |
| 798 | 37000.37200.37900.38600.191100.425100 | 23rd flr-Flat flooring | 62d | 2024-12-05 | 2025-04-06 | 784FS-119d, 795 | 93% |  | 7 day week No holidays | 7300924 |
| 799 | 37000.37200.37900.38600.191100.703000 | 23rd flr-Main door fixing & frame fixing | 11d | 2026-03-20 | 2026-03-31 | 785, 798 |  |  | 7 day week No holidays | 7300934 |
| 800 | 37000.37200.37900.38600.191100.703100 | 23rd flr-Window fixing | 6d | 2025-08-06 | 2025-08-11 | 786, 798 |  |  | 7 day week No holidays | 7300944 |
| 801 | 37000.37200.37900.38600.191100.703200 | 23rd flr-Railing Fixing | 11d | 2027-03-31 | 2027-04-11 | 787, 798 |  |  | 7 day week No holidays | 7300954 |
| 802 | 37000.37200.37900.38600.191100.703300 | 23rd flr-Internal painting - putty / primer application | 11d | 2026-06-24 | 2026-07-05 | 788, 798 |  |  | 7 day week No holidays | 7300964 |
| 803 | 37000.37200.37900.38600.191100.703400 | 23rd flr-Flat electrical wiring | 11d | 2026-11-22 | 2026-12-03 | 789, 799 |  |  | 7 day week No holidays | 7300974 |
| 804 | 37000.37200.37900.38600.191100.703500 | 23rd flr-Internal painting | 11d | 2026-12-03 | 2026-12-14 | 790, 803 |  |  | 7 day week No holidays | 7300984 |
| 805 | 37000.37200.37900.38600.191100.703600 | 23rd flr-Internal shutter fixing | 11d | 2027-07-13 | 2027-07-24 | 791, 802 |  |  | 7 day week No holidays | 7300994 |

| ID | WBS | Task | Duration | Start | Finish | Predecessors | Complete | Constraint | Calendar | Unique_Task_ID |
| --- | --- | --- | --- | --- | --- | --- | --- | --- | --- | --- |
| 806 | 37000.37200.37900.38600.191400 | **24th Floor** | 984.25d | 2024-11-23 | 2027-08-04 |  | 48% | start no earlier than 2024-11-23 | 7 day week No holidays | 7285674 |
| 807 | 37000.37200.37900.38600.191400.425000 | 24th flr-Gypsum Plaster | 10d | 2024-11-30 | 2024-12-09 | 793FS+0.25d | 100% | start no earlier than 2024-11-30 | 7 day week No holidays | 7301004 |
| 808 | 37000.37200.37900.38600.191400.703700 | 24th flr-Kitchen Platform | 10d | 2025-08-01 | 2025-08-11 | 794FS-20d, 807 |  |  | 7 day week No holidays | 7301014 |
| 809 | 37000.37200.37900.38600.191400.424900 | 24th flr-Toilet dado & flooring | 1d | 2025-01-30 | 2025-01-30 | 243, 795 | 100% | start no earlier than 2025-01-30 | 7 day week No holidays | 7301024 |
| 810 | 37000.37200.37900.38600.191400.424800 | 24th flr-Fire sprinkler pipe | 4d | 2024-12-16 | 2024-12-19 | 797, 807 | 100% | start no earlier than 2024-12-16 | 7 day week No holidays | 7301034 |
| 811 | 37000.37200.37900.38600.191400.424700 | 24th flr-Flat flooring | 74d | 2024-11-23 | 2025-04-04 | 809 | 94% | start no earlier than 2024-11-23 | 7 day week No holidays | 7301044 |
| 812 | 37000.37200.37900.38600.191400.703800 | 24th flr-Main door fixing & frame fixing | 12d | 2026-03-31 | 2026-04-12 | 799, 811 |  |  | 7 day week No holidays | 7301054 |
| 813 | 37000.37200.37900.38600.191400.703900 | 24th flr-Window fixing | 9d | 2025-08-02 | 2025-08-10 | 800FS-10d, 811FS-10d |  |  | 7 day week No holidays | 7301064 |
| 814 | 37000.37200.37900.38600.191400.704000 | 24th flr-Railing Fixing | 11d | 2027-04-11 | 2027-04-22 | 801, 811 |  |  | 7 day week No holidays | 7301074 |
| 815 | 37000.37200.37900.38600.191400.704100 | 24th flr-Internal painting - putty / primer application | 11d | 2026-07-05 | 2026-07-16 | 802, 811 |  |  | 7 day week No holidays | 7301084 |
| 816 | 37000.37200.37900.38600.191400.704200 | 24th flr-Flat electrical wiring | 11d | 2026-12-03 | 2026-12-14 | 803, 812 |  |  | 7 day week No holidays | 7301094 |
| 817 | 37000.37200.37900.38600.191400.704300 | 24th flr-Internal painting | 11d | 2026-12-14 | 2026-12-25 | 804, 816 |  |  | 7 day week No holidays | 7301104 |
| 818 | 37000.37200.37900.38600.191400.704400 | 24th flr-Internal shutter fixing | 11d | 2027-07-24 | 2027-08-04 | 805, 815 |  |  | 7 day week No holidays | 7301114 |
| 819 | 37000.37200.37900.38600.191500 | **25th Floor** | 972.25d | 2024-12-16 | 2027-08-15 |  | 38% | start no earlier than 2024-12-16 | 7 day week No holidays | 7285664 |
| 820 | 37000.37200.37900.38600.191500.424600 | 25th flr-Gypsum Plaster | 4d | 2024-12-23 | 2024-12-26 | 807FS+0.25d | 100% | start no earlier than 2024-12-23 | 7 day week No holidays | 7301124 |
| 821 | 37000.37200.37900.38600.191500.704500 | 25th flr-Kitchen Platform | 10d | 2025-08-11 | 2025-08-21 | 808, 820 |  |  | 7 day week No holidays | 7301134 |
| 822 | 37000.37200.37900.38600.191500.424500 | 25th flr-Toilet dado & flooring | 25d | 2025-01-06 | 2025-01-30 | 249, 809 | 100% | start no earlier than 2025-01-06 | 7 day week No holidays | 7301144 |
| 823 | 37000.37200.37900.38600.191500.424400 | 25th flr-Fire sprinkler pipe | 11d | 2024-12-16 | 2024-12-26 | 810, 820 | 100% | start no earlier than 2024-12-16 | 7 day week No holidays | 7301154 |
| 824 | 37000.37200.37900.38600.191500.424300 | 25th flr-Flat flooring | 17d | 2025-03-18 | 2025-04-04 | 822 | 76% | start no earlier than 2025-03-18 | 7 day week No holidays | 7301164 |
| 825 | 37000.37200.37900.38600.191500.704600 | 25th flr-Main door fixing & frame fixing | 11d | 2026-04-12 | 2026-04-23 | 812, 824 |  |  | 7 day week No holidays | 7301174 |
| 826 | 37000.37200.37900.38600.191500.704700 | 25th flr-Window fixing | 6d | 2025-08-11 | 2025-08-16 | 813, 824 |  |  | 7 day week No holidays | 7301184 |
| 827 | 37000.37200.37900.38600.191500.704800 | 25th flr-Railing Fixing | 11d | 2027-04-22 | 2027-05-03 | 814, 824 |  |  | 7 day week No holidays | 7301194 |
| 828 | 37000.37200.37900.38600.191500.704900 | 25th flr-Internal painting - putty / primer application | 11d | 2026-07-16 | 2026-07-27 | 815, 824 |  |  | 7 day week No holidays | 7301204 |
| 829 | 37000.37200.37900.38600.191500.705000 | 25th flr-Flat electrical wiring | 11d | 2026-12-14 | 2026-12-25 | 816, 825 |  |  | 7 day week No holidays | 7301214 |
| 830 | 37000.37200.37900.38600.191500.705100 | 25th flr-Internal painting | 11d | 2026-12-25 | 2027-01-05 | 817, 829 |  |  | 7 day week No holidays | 7301224 |
| 831 | 37000.37200.37900.38600.191500.705200 | 25th flr-Internal shutter fixing | 11d | 2027-08-04 | 2027-08-15 | 818, 828 |  |  | 7 day week No holidays | 7301234 |

| ID | WBS | Task | Duration | Start | Finish | Predecessors | Complete | Constraint | Calendar | Unique_Task_ID |
| --- | --- | --- | --- | --- | --- | --- | --- | --- | --- | --- |
| 832 | 37000.37200.37900.38600.191700 | **26th Floor** | 1023.5d | 2024-11-05 | 2027-08-26 |  | 40% | start no earlier than 2024-11-05 | 7 day week No holidays | 7285634 |
| 833 | 37000.37200.37900.38600.191700.424200 | 26th flr-Gypsum Plaster | 16d | 2024-11-05 | 2024-11-21 | 820FS+0.25d | 100% | start no earlier than 2024-11-05 | 7 day week No holidays | 7301244 |
| 834 | 37000.37200.37900.38600.191700.705300 | 26th flr-Kitchen Platform | 10d | 2025-08-21 | 2025-08-31 | 821, 833 |  |  | 7 day week No holidays | 7301254 |
| 835 | 37000.37200.37900.38600.191700.424100 | 26th flr-Toilet dado & flooring | 16d | 2025-01-15 | 2025-01-30 | 255, 822 | 100% | start no earlier than 2025-01-15 | 7 day week No holidays | 7301264 |
| 836 | 37000.37200.37900.38600.191700.424000 | 26th flr-Fire sprinkler pipe | 11d | 2024-12-16 | 2024-12-26 | 823, 833 | 100% | start no earlier than 2024-12-16 | 7 day week No holidays | 7301274 |
| 837 | 37000.37200.37900.38600.191700.423900 | 26th flr-Flat flooring | 23d | 2025-03-13 | 2025-04-09 | 824FS-23d, 835 | 78% |  | 7 day week No holidays | 7301284 |
| 838 | 37000.37200.37900.38600.191700.705400 | 26th flr-Main door fixing & frame fixing | 11d | 2026-04-23 | 2026-05-04 | 825, 837 |  |  | 7 day week No holidays | 7301294 |
| 839 | 37000.37200.37900.38600.191700.705500 | 26th flr-Window fixing | 9d | 2025-08-17 | 2025-08-25 | 826, 837 |  |  | 7 day week No holidays | 7301304 |
| 840 | 37000.37200.37900.38600.191700.705600 | 26th flr-Railing Fixing | 11d | 2027-05-03 | 2027-05-14 | 827, 837 |  |  | 7 day week No holidays | 7301314 |
| 841 | 37000.37200.37900.38600.191700.705700 | 26th flr-Internal painting - putty / primer application | 11d | 2026-07-27 | 2026-08-07 | 828, 837 |  |  | 7 day week No holidays | 7301324 |
| 842 | 37000.37200.37900.38600.191700.705800 | 26th flr-Flat electrical wiring | 11d | 2026-12-25 | 2027-01-05 | 829, 838 |  |  | 7 day week No holidays | 7301334 |
| 843 | 37000.37200.37900.38600.191700.705900 | 26th flr-Internal painting | 11d | 2027-01-05 | 2027-01-16 | 830, 842 |  |  | 7 day week No holidays | 7301344 |
| 844 | 37000.37200.37900.38600.191700.706000 | 26th flr-Internal shutter fixing | 11d | 2027-08-15 | 2027-08-26 | 831, 841 |  |  | 7 day week No holidays | 7301354 |
| 845 | 37000.37200.37900.38600.191900 | **27th Floor** | 994.25d | 2024-12-16 | 2027-09-06 |  | 46% | start no earlier than 2024-12-16 | 7 day week No holidays | 7285624 |
| 846 | 37000.37200.37900.38600.191900.423800 | 27th flr-Gypsum Plaster | 5d | 2024-12-16 | 2024-12-20 | 833FS+0.25d | 100% | start no earlier than 2024-12-16 | 7 day week No holidays | 7301364 |
| 847 | 37000.37200.37900.38600.191900.706100 | 27th flr-Kitchen Platform | 10d | 2025-08-31 | 2025-09-10 | 834, 846 |  |  | 7 day week No holidays | 7301374 |
| 848 | 37000.37200.37900.38600.191900.423700 | 27th flr-Toilet dado & flooring | 26d | 2025-01-06 | 2025-03-24 | 261, 835 | 100% | start no earlier than 2025-01-06 | 7 day week No holidays | 7301384 |
| 849 | 37000.37200.37900.38600.191900.423600 | 27th flr-Fire sprinkler pipe | 11d | 2025-01-01 | 2025-01-11 | 836, 846 | 100% | start no earlier than 2025-01-01 | 7 day week No holidays | 7301394 |
| 850 | 37000.37200.37900.38600.191900.423500 | 27th flr-Flat flooring | 41d | 2025-02-23 | 2025-04-14 | 837FS-46d, 848 | 87% |  | 7 day week No holidays | 7301404 |
| 851 | 37000.37200.37900.38600.191900.706200 | 27th flr-Main door fixing & frame fixing | 11d | 2026-05-04 | 2026-05-15 | 838, 850 |  |  | 7 day week No holidays | 7301414 |
| 852 | 37000.37200.37900.38600.191900.706300 | 27th flr-Window fixing | 9d | 2025-08-26 | 2025-09-03 | 839, 850 |  |  | 7 day week No holidays | 7301424 |
| 853 | 37000.37200.37900.38600.191900.706400 | 27th flr-Railing Fixing | 11d | 2027-05-14 | 2027-05-25 | 840, 850 |  |  | 7 day week No holidays | 7301434 |
| 854 | 37000.37200.37900.38600.191900.706500 | 27th flr-Internal painting - putty / primer application | 11d | 2026-08-07 | 2026-08-18 | 841, 850 |  |  | 7 day week No holidays | 7301444 |
| 855 | 37000.37200.37900.38600.191900.706600 | 27th flr-Flat electrical wiring | 11d | 2027-01-05 | 2027-01-16 | 842, 851 |  |  | 7 day week No holidays | 7301454 |
| 856 | 37000.37200.37900.38600.191900.706700 | 27th flr-Internal painting | 11d | 2027-01-16 | 2027-01-27 | 843, 855 |  |  | 7 day week No holidays | 7301464 |
| 857 | 37000.37200.37900.38600.191900.706800 | 27th flr-Internal shutter fixing | 11d | 2027-08-26 | 2027-09-06 | 844, 854 |  |  | 7 day week No holidays | 7301474 |

| ID | WBS | Task | Duration | Start | Finish | Predecessors | Complete | Constraint | Calendar | Unique_Task_ID |
| --- | --- | --- | --- | --- | --- | --- | --- | --- | --- | --- |
| 858 | 37000.37200.37900.38600.192100 | **28th Floor** | 1004.25d | 2024-12-17 | 2027-09-17 |  | 54% | start no earlier than 2024-12-17 | 7 day week No holidays | 7285614 |
| 859 | 37000.37200.37900.38600.192100.423400 | 28th flr-Gypsum Plaster | 45d | 2024-12-17 | 2025-01-30 | 846FS+12d | 100% | start no earlier than 2024-12-17 | 7 day week No holidays | 7301484 |
| 860 | 37000.37200.37900.38600.192100.706900 | 28th flr-Kitchen Platform | 10d | 2025-09-10 | 2025-09-20 | 847, 859FS+27d |  |  | 7 day week No holidays | 7301494 |
| 861 | 37000.37200.37900.38600.192100.423300 | 28th flr-Toilet dado & flooring | 8d | 2025-03-19 | 2025-03-26 | 267FS-15.75d, 848FS-1.5d | 100% | start no earlier than 2025-03-19 | 7 day week No holidays | 7301504 |
| 862 | 37000.37200.37900.38600.192100.423100 | 28th flr-Fire sprinkler pipe | 12d | 2025-01-20 | 2025-04-01 | 849FS-1d | 91% | start no earlier than 2025-01-20 | 7 day week No holidays | 7301514 |
| 863 | 37000.37200.37900.38600.192100.423000 | 28th flr-Flat flooring | 44d | 2025-02-17 | 2025-04-16 | 850FS-57d, 861 | 95% |  | 7 day week No holidays | 7301524 |
| 864 | 37000.37200.37900.38600.192100.707000 | 28th flr-Main door fixing & frame fixing | 11d | 2026-05-15 | 2026-05-26 | 851, 863 |  |  | 7 day week No holidays | 7301534 |
| 865 | 37000.37200.37900.38600.192100.707100 | 28th flr-Window fixing | 9d | 2025-09-04 | 2025-09-12 | 852, 863 |  |  | 7 day week No holidays | 7301544 |
| 866 | 37000.37200.37900.38600.192100.707200 | 28th flr-Railing Fixing | 11d | 2027-05-25 | 2027-06-05 | 853, 863 |  |  | 7 day week No holidays | 7301554 |
| 867 | 37000.37200.37900.38600.192100.707300 | 28th flr-Internal painting - putty / primer application | 11d | 2026-08-18 | 2026-08-29 | 854, 863 |  |  | 7 day week No holidays | 7301564 |
| 868 | 37000.37200.37900.38600.192100.707400 | 28th flr-Flat electrical wiring | 11d | 2027-01-16 | 2027-01-27 | 855, 864 |  |  | 7 day week No holidays | 7301574 |
| 869 | 37000.37200.37900.38600.192100.707500 | 28th flr-Internal painting | 11d | 2027-01-27 | 2027-02-07 | 856, 868 |  |  | 7 day week No holidays | 7301584 |
| 870 | 37000.37200.37900.38600.192100.707600 | 28th flr-Internal shutter fixing | 11d | 2027-09-06 | 2027-09-17 | 857, 867 |  |  | 7 day week No holidays | 7301594 |
| 871 | 37000.37200.37900.38600.192300 | **29th Floor** | 993.25d | 2025-01-08 | 2027-09-28 |  | 12% | start no earlier than 2025-01-08 | 7 day week No holidays | 7285494 |
| 872 | 37000.37200.37900.38600.192300.707700 | 29th flr-Gypsum Plaster | 17d | 2025-04-01 | 2025-04-17 | 859 |  |  | 7 day week No holidays | 7301604 |
| 873 | 37000.37200.37900.38600.192300.707800 | 29th flr-Kitchen Platform | 10d | 2025-09-20 | 2025-09-30 | 860, 872FS+80d |  |  | 7 day week No holidays | 7301614 |
| 874 | 37000.37200.37900.38600.192300.421600 | 29th flr-Toilet dado & flooring | 8d | 2025-03-23 | 2025-03-30 | 273, 861 | 100% | start no earlier than 2025-03-23 | 7 day week No holidays | 7301624 |
| 875 | 37000.37200.37900.38600.192300.421200 | 29th flr-Fire sprinkler pipe | 10d | 2025-01-08 | 2025-04-01 | 862FS-85d | 90% |  | 7 day week No holidays | 7301634 |
| 876 | 37000.37200.37900.38600.192300.707900 | 29th flr-Flat flooring | 11d | 2025-04-17 | 2025-04-27 | 863, 874 |  |  | 7 day week No holidays | 7301644 |
| 877 | 37000.37200.37900.38600.192300.708000 | 29th flr-Main door fixing & frame fixing | 11d | 2026-06-05 | 2026-06-16 | 864FS+10d, 876 |  |  | 7 day week No holidays | 7301654 |
| 878 | 37000.37200.37900.38600.192300.708100 | 29th flr-Window fixing | 9d | 2025-09-13 | 2025-09-21 | 865, 876 |  |  | 7 day week No holidays | 7301664 |
| 879 | 37000.37200.37900.38600.192300.708200 | 29th flr-Railing Fixing | 11d | 2027-06-05 | 2027-06-16 | 866, 876 |  |  | 7 day week No holidays | 7301674 |
| 880 | 37000.37200.37900.38600.192300.708300 | 29th flr-Internal painting - putty / primer application | 11d | 2026-08-29 | 2026-09-09 | 867, 876 |  |  | 7 day week No holidays | 7301684 |
| 881 | 37000.37200.37900.38600.192300.708400 | 29th flr-Flat electrical wiring | 11d | 2027-01-27 | 2027-02-07 | 868, 877 |  |  | 7 day week No holidays | 7301694 |
| 882 | 37000.37200.37900.38600.192300.708500 | 29th flr-Internal painting | 11d | 2027-02-07 | 2027-02-18 | 869, 881 |  |  | 7 day week No holidays | 7301704 |
| 883 | 37000.37200.37900.38600.192300.708600 | 29th flr-Internal shutter fixing | 11d | 2027-09-17 | 2027-09-28 | 870, 880 |  |  | 7 day week No holidays | 7301714 |

| ID | WBS | Task | Duration | Start | Finish | Predecessors | Complete | Constraint | Calendar | Unique_Task_ID |
| --- | --- | --- | --- | --- | --- | --- | --- | --- | --- | --- |
| 884 | 37000.37200.37900.38600.192500 | **30th Floor** | 999.25d | 2025-01-13 | 2027-10-09 |  | 33% | start no earlier than 2025-01-13 | 7 day week No holidays | 7285484 |
| 885 | 37000.37200.37900.38600.192500.421100 | 30th flr-Gypsum Plaster | 27d | 2025-01-13 | 2025-03-28 | 872FS+15d | 100% | start no earlier than 2025-01-13 | 7 day week No holidays | 7301724 |
| 886 | 37000.37200.37900.38600.192500.708700 | 30th flr-Kitchen Platform | 10d | 2025-09-30 | 2025-10-10 | 873, 885 |  |  | 7 day week No holidays | 7301734 |
| 887 | 37000.37200.37900.38600.192500.420300 | 30th flr-Toilet dado & flooring | 11d | 2025-03-20 | 2025-03-30 | 279, 874 | 100% | start no earlier than 2025-03-20 | 7 day week No holidays | 7301744 |
| 888 | 37000.37200.37900.38600.192500.420200 | 30th flr-Fire sprinkler pipe | 20d | 2025-01-17 | 2025-04-27 | 875FS-75d | 70% |  | 7 day week No holidays | 7301754 |
| 889 | 37000.37200.37900.38600.192500.708800 | 30th flr-Flat flooring | 11d | 2025-04-28 | 2025-05-08 | 876, 887 |  |  | 7 day week No holidays | 7301764 |
| 890 | 37000.37200.37900.38600.192500.708900 | 30th flr-Main door fixing & frame fixing | 11d | 2026-06-16 | 2026-06-27 | 877, 889 |  |  | 7 day week No holidays | 7301774 |
| 891 | 37000.37200.37900.38600.192500.709000 | 30th flr-Window fixing | 9d | 2025-09-22 | 2025-09-30 | 878, 889 |  |  | 7 day week No holidays | 7301784 |
| 892 | 37000.37200.37900.38600.192500.709100 | 30th flr-Railing Fixing | 11d | 2027-06-16 | 2027-06-27 | 879, 889 |  |  | 7 day week No holidays | 7301794 |
| 893 | 37000.37200.37900.38600.192500.709200 | 30th flr-Internal painting - putty / primer application | 11d | 2026-09-09 | 2026-09-20 | 880, 889 |  |  | 7 day week No holidays | 7301804 |
| 894 | 37000.37200.37900.38600.192500.709300 | 30th flr-Flat electrical wiring | 11d | 2027-02-07 | 2027-02-18 | 881, 890 |  |  | 7 day week No holidays | 7301814 |
| 895 | 37000.37200.37900.38600.192500.709400 | 30th flr-Internal painting | 11d | 2027-02-18 | 2027-03-01 | 882, 894 |  |  | 7 day week No holidays | 7301824 |
| 896 | 37000.37200.37900.38600.192500.709500 | 30th flr-Internal shutter fixing | 11d | 2027-09-28 | 2027-10-09 | 883, 893 |  |  | 7 day week No holidays | 7301834 |
| 897 | 37000.37200.37900.38600.192800 | **31st Floor** | 1034.25d | 2024-12-20 | 2027-10-20 |  | 32% | start no earlier than 2024-12-20 | 7 day week No holidays | 7285434 |
| 898 | 37000.37200.37900.38600.192800.420000 | 31st flr-Gypsum Plaster | 47d | 2024-12-20 | 2025-03-29 | 885FS-94.25d | 100% | start no earlier than 2024-12-20 | 7 day week No holidays | 7301844 |
| 899 | 37000.37200.37900.38600.192800.709600 | 31st flr-Kitchen Platform | 10d | 2025-10-10 | 2025-10-20 | 886, 898 |  |  | 7 day week No holidays | 7301854 |
| 900 | 37000.37200.37900.38600.192800.709700 | 31st flr-Toilet dado & flooring | 7d | 2025-04-01 | 2025-04-07 | 285, 887 |  |  | 7 day week No holidays | 7301864 |
| 901 | 37000.37200.37900.38600.192800.419900 | 31st flr-Fire sprinkler pipe | 1d | 2025-01-30 | 2025-01-30 | 888 | 100% | start no earlier than 2025-01-30 | 7 day week No holidays | 7301874 |
| 902 | 37000.37200.37900.38600.192800.709800 | 31st flr-Flat flooring | 8d | 2025-05-07 | 2025-05-14 | 889FS-2d, 900FS-2d |  |  | 7 day week No holidays | 7301884 |
| 903 | 37000.37200.37900.38600.192800.709900 | 31st flr-Main door fixing & frame fixing | 11d | 2026-06-27 | 2026-07-08 | 890, 902 |  |  | 7 day week No holidays | 7301894 |
| 904 | 37000.37200.37900.38600.192800.710000 | 31st flr-Window fixing | 9d | 2025-10-01 | 2025-10-09 | 891, 902 |  |  | 7 day week No holidays | 7301904 |
| 905 | 37000.37200.37900.38600.192800.710100 | 31st flr-Railing Fixing | 11d | 2027-06-27 | 2027-07-08 | 892, 902 |  |  | 7 day week No holidays | 7301914 |
| 906 | 37000.37200.37900.38600.192800.710200 | 31st flr-Internal painting - putty / primer application | 11d | 2026-09-20 | 2026-10-01 | 893, 902 |  |  | 7 day week No holidays | 7301924 |
| 907 | 37000.37200.37900.38600.192800.710300 | 31st flr-Flat electrical wiring | 11d | 2027-02-18 | 2027-03-01 | 894, 903 |  |  | 7 day week No holidays | 7301934 |
| 908 | 37000.37200.37900.38600.192800.710400 | 31st flr-Internal painting | 11d | 2027-03-01 | 2027-03-12 | 895, 907 |  |  | 7 day week No holidays | 7301944 |
| 909 | 37000.37200.37900.38600.192800.710500 | 31st flr-Internal shutter fixing | 11d | 2027-10-09 | 2027-10-20 | 896, 906 |  |  | 7 day week No holidays | 7301954 |

| ID | WBS | Task | Duration | Start | Finish | Predecessors | Complete | Constraint | Calendar | Unique_Task_ID |
| --- | --- | --- | --- | --- | --- | --- | --- | --- | --- | --- |
| 910 | 37000.37200.37900.38600.193000 | **32nd Floor** | 1014.25d | 2025-01-20 | 2027-10-31 |  | 8% | start no earlier than 2025-01-20 | 7 day week No holidays | 7285424 |
| 911 | 37000.37200.37900.38600.193000.710600 | 32nd flr-Gypsum Plaster | 14d | 2025-04-01 | 2025-04-14 | 898FS+0.25d |  |  | 7 day week No holidays | 7301964 |
| 912 | 37000.37200.37900.38600.193000.710700 | 32nd flr-Kitchen Platform | 10d | 2025-10-20 | 2025-10-30 | 899, 911 |  |  | 7 day week No holidays | 7301974 |
| 913 | 37000.37200.37900.38600.193000.710800 | 32nd flr-Toilet dado & flooring | 9d | 2025-04-05 | 2025-04-13 | 291, 900FS-3d |  |  | 7 day week No holidays | 7301984 |
| 914 | 37000.37200.37900.38600.193000.418600 | 32nd flr-Fire sprinkler pipe | 11d | 2025-01-20 | 2025-01-30 | 901 | 100% | start no earlier than 2025-01-20 | 7 day week No holidays | 7301994 |
| 915 | 37000.37200.37900.38600.193000.710900 | 32nd flr-Flat flooring | 10d | 2025-05-05 | 2025-05-14 | 902FS-10d, 913 |  |  | 7 day week No holidays | 7302004 |
| 916 | 37000.37200.37900.38600.193000.711000 | 32nd flr-Main door fixing & frame fixing | 11d | 2026-07-08 | 2026-07-19 | 903, 915 |  |  | 7 day week No holidays | 7302014 |
| 917 | 37000.37200.37900.38600.193000.711100 | 32nd flr-Window fixing | 9d | 2025-10-20 | 2025-10-28 | 904FS+10d, 915FS+6d |  |  | 7 day week No holidays | 7302024 |
| 918 | 37000.37200.37900.38600.193000.711200 | 32nd flr-Railing Fixing | 11d | 2027-07-08 | 2027-07-19 | 905, 915 |  |  | 7 day week No holidays | 7302034 |
| 919 | 37000.37200.37900.38600.193000.711300 | 32nd flr-Internal painting - putty / primer application | 11d | 2026-10-01 | 2026-10-12 | 906, 915FS+10d |  |  | 7 day week No holidays | 7302044 |
| 920 | 37000.37200.37900.38600.193000.711400 | 32nd flr-Flat electrical wiring | 11d | 2027-03-01 | 2027-03-12 | 907, 916 |  |  | 7 day week No holidays | 7302054 |
| 921 | 37000.37200.37900.38600.193000.711500 | 32nd flr-Internal painting | 11d | 2027-03-12 | 2027-03-23 | 908, 920 |  |  | 7 day week No holidays | 7302064 |
| 922 | 37000.37200.37900.38600.193000.711600 | 32nd flr-Internal shutter fixing | 11d | 2027-10-20 | 2027-10-31 | 909, 919 |  |  | 7 day week No holidays | 7302074 |
| 923 | 37000.37200.37900.38600.193100 | **33rd Floor** | 1025.25d | 2025-01-20 | 2027-11-11 |  | 8% | start no earlier than 2025-01-20 | 7 day week No holidays | 7285414 |
| 924 | 37000.37200.37900.38600.193100.711700 | 33rd flr-Gypsum Plaster | 14d | 2025-04-15 | 2025-04-29 | 911FS+0.25d |  |  | 7 day week No holidays | 7302084 |
| 925 | 37000.37200.37900.38600.193100.711800 | 33rd flr-Kitchen Platform | 10d | 2025-10-30 | 2025-11-09 | 912, 924 |  |  | 7 day week No holidays | 7302094 |
| 926 | 37000.37200.37900.38600.193100.711900 | 33rd flr-Toilet dado & flooring | 10d | 2025-04-14 | 2025-04-23 | 913, 297 |  |  | 7 day week No holidays | 7302104 |
| 927 | 37000.37200.37900.38600.193100.418200 | 33rd flr-Fire sprinkler pipe | 11d | 2025-01-20 | 2025-01-30 | 914 | 100% | start no earlier than 2025-01-20 | 7 day week No holidays | 7302114 |
| 928 | 37000.37200.37900.38600.193100.712000 | 33rd flr-Flat flooring | 9d | 2025-05-15 | 2025-05-23 | 915, 926 |  |  | 7 day week No holidays | 7302124 |
| 929 | 37000.37200.37900.38600.193100.712100 | 33rd flr-Main door fixing & frame fixing | 11d | 2026-08-08 | 2026-08-19 | 916FS+20d, 928 |  |  | 7 day week No holidays | 7302134 |
| 930 | 37000.37200.37900.38600.193100.712200 | 33rd flr-Window fixing | 6d | 2025-10-29 | 2025-11-03 | 917, 928 |  |  | 7 day week No holidays | 7302144 |
| 931 | 37000.37200.37900.38600.193100.712300 | 33rd flr-Railing Fixing | 11d | 2027-07-19 | 2027-07-30 | 918, 928 |  |  | 7 day week No holidays | 7302154 |
| 932 | 37000.37200.37900.38600.193100.712400 | 33rd flr-Internal painting - putty / primer application | 11d | 2026-10-12 | 2026-10-23 | 919, 928 |  |  | 7 day week No holidays | 7302164 |
| 933 | 37000.37200.37900.38600.193100.712500 | 33rd flr-Flat electrical wiring | 11d | 2027-03-12 | 2027-03-23 | 920, 929 |  |  | 7 day week No holidays | 7302174 |
| 934 | 37000.37200.37900.38600.193100.712600 | 33rd flr-Internal painting | 11d | 2027-03-23 | 2027-04-03 | 921, 933 |  |  | 7 day week No holidays | 7302184 |
| 935 | 37000.37200.37900.38600.193100.712700 | 33rd flr-Internal shutter fixing | 11d | 2027-10-31 | 2027-11-11 | 922, 932 |  |  | 7 day week No holidays | 7302194 |

| ID | WBS | Task | Duration | Start | Finish | Predecessors | Complete | Constraint | Calendar | Unique_Task_ID |
| --- | --- | --- | --- | --- | --- | --- | --- | --- | --- | --- |
| 936 | 37000.37200.37900.38600.193300 | **34th Floor** | 977.25d | 2025-03-20 | 2027-11-22 |  | 8% | start no earlier than 2025-03-20 | 7 day week No holidays | 7285404 |
| 937 | 37000.37200.37900.38600.193300.712800 | 34th flr-Gypsum Plaster | 14d | 2025-04-29 | 2025-05-13 | 924FS+0.25d |  |  | 7 day week No holidays | 7302204 |
| 938 | 37000.37200.37900.38600.193300.712900 | 34th flr-Kitchen Platform | 10d | 2025-11-09 | 2025-11-19 | 925, 937 |  |  | 7 day week No holidays | 7302214 |
| 939 | 37000.37200.37900.38600.193300.713000 | 34th flr-Toilet dado & flooring | 10d | 2025-04-24 | 2025-05-03 | 303, 926 |  |  | 7 day week No holidays | 7302224 |
| 940 | 37000.37200.37900.38600.193300.413700 | 34th flr-Fire sprinkler pipe | 11d | 2025-03-20 | 2025-03-30 | 937, 927 | 100% | start no earlier than 2025-03-20 | 7 day week No holidays | 7302234 |
| 941 | 37000.37200.37900.38600.193300.713100 | 34th flr-Flat flooring | 10d | 2025-05-24 | 2025-06-02 | 928, 939 |  |  | 7 day week No holidays | 7302244 |
| 942 | 37000.37200.37900.38600.193300.713200 | 34th flr-Main door fixing & frame fixing | 11d | 2026-08-19 | 2026-08-30 | 929, 941 |  |  | 7 day week No holidays | 7302254 |
| 943 | 37000.37200.37900.38600.193300.713300 | 34th flr-Window fixing | 9d | 2025-11-04 | 2025-11-12 | 930, 941 |  |  | 7 day week No holidays | 7302264 |
| 944 | 37000.37200.37900.38600.193300.713400 | 34th flr-Railing Fixing | 11d | 2027-07-30 | 2027-08-10 | 931, 941 |  |  | 7 day week No holidays | 7302274 |
| 945 | 37000.37200.37900.38600.193300.713500 | 34th flr-Internal painting - putty / primer application | 11d | 2026-10-23 | 2026-11-03 | 932, 941 |  |  | 7 day week No holidays | 7302284 |
| 946 | 37000.37200.37900.38600.193300.713600 | 34th flr-Flat electrical wiring | 11d | 2027-03-23 | 2027-04-03 | 933, 942 |  |  | 7 day week No holidays | 7302294 |
| 947 | 37000.37200.37900.38600.193300.713700 | 34th flr-Internal painting | 11d | 2027-04-03 | 2027-04-14 | 934, 946 |  |  | 7 day week No holidays | 7302304 |
| 948 | 37000.37200.37900.38600.193300.713800 | 34th flr-Internal shutter fixing | 11d | 2027-11-11 | 2027-11-22 | 935, 945 |  |  | 7 day week No holidays | 7302314 |
| 949 | 37000.37200.37900.38600.193400 | **35th Floor** | 1123.25d | 2024-11-05 | 2027-12-03 |  | 47% | start no earlier than 2024-11-05 | 7 day week No holidays | 7285244 |
| 950 | 37000.37200.37900.38600.193400.413400 | 35th flr-Gypsum Plaster | 14d | 2025-03-23 | 2025-05-29 | 937FS-51.5d | 57% |  | 7 day week No holidays | 2499828 |
| 951 | 37000.37200.37900.38600.193400.713900 | 35th flr-Kitchen Platform | 10d | 2025-11-19 | 2025-11-29 | 938, 950 |  |  | 7 day week No holidays | 2499838 |
| 952 | 37000.37200.37900.38600.193400.714000 | 35th flr-Toilet dado & flooring | 10d | 2025-05-04 | 2025-05-13 | 939, 309 |  |  | 7 day week No holidays | 2499848 |
| 953 | 37000.37200.37900.38600.193400.413800 | 35th flr-Fire sprinkler pipe | 93d | 2024-11-05 | 2025-03-24 | 950FS-133.25d, 940FS-133.25d | 100% | start no earlier than 2024-11-05 | 7 day week No holidays | 2499858 |
| 954 | 37000.37200.37900.38600.193400.714100 | 35th flr-Flat flooring | 11d | 2025-06-03 | 2025-06-13 | 941, 952 |  |  | 7 day week No holidays | 2499868 |
| 955 | 37000.37200.37900.38600.193400.714200 | 35th flr-Main door fixing & frame fixing | 11d | 2026-08-30 | 2026-09-10 | 942, 954 |  |  | 7 day week No holidays | 7302324 |
| 956 | 37000.37200.37900.38600.193400.714300 | 35th flr-Window fixing | 9d | 2025-11-13 | 2025-11-21 | 943, 954FS-10d |  |  | 7 day week No holidays | 7302334 |
| 957 | 37000.37200.37900.38600.193400.714400 | 35th flr-Railing Fixing | 11d | 2027-08-10 | 2027-08-21 | 944, 954 |  |  | 7 day week No holidays | 7302344 |
| 958 | 37000.37200.37900.38600.193400.714500 | 35th flr-Internal painting - putty / primer application | 11d | 2026-11-03 | 2026-11-14 | 945, 954 |  |  | 7 day week No holidays | 7302354 |
| 959 | 37000.37200.37900.38600.193400.714600 | 35th flr-Flat electrical wiring | 11d | 2027-04-03 | 2027-04-14 | 946, 955 |  |  | 7 day week No holidays | 7302364 |
| 960 | 37000.37200.37900.38600.193400.714700 | 35th flr-Internal painting | 11d | 2027-04-14 | 2027-04-25 | 947, 959 |  |  | 7 day week No holidays | 7302374 |
| 961 | 37000.37200.37900.38600.193400.714800 | 35th flr-Internal shutter fixing | 11d | 2027-11-22 | 2027-12-03 | 948, 958 |  |  | 7 day week No holidays | 7302384 |

| ID | WBS | Task | Duration | Start | Finish | Predecessors | Constraint | Calendar | Unique_Task_ID |
| --- | --- | --- | --- | --- | --- | --- | --- | --- | --- |
| 962 | 37000.37200.37900.38600.193700 | **36th Floor** | 987.25d | 2025-04-01 | 2027-12-14 |  | start no earlier than 2025-04-01 | 7 day week No holidays | 7285234 |
| 963 | 37000.37200.37900.38600.193700.714900 | 36th flr-Gypsum Plaster | 14d | 2025-05-29 | 2025-06-12 | 950FS+0.25d |  | 7 day week No holidays | 7302394 |
| 964 | 37000.37200.37900.38600.193700.715000 | 36th flr-Kitchen Platform | 10d | 2025-11-29 | 2025-12-09 | 951, 963 |  | 7 day week No holidays | 7302404 |
| 965 | 37000.37200.37900.38600.193700.715100 | 36th flr-Toilet dado & flooring | 10d | 2025-05-14 | 2025-05-23 | 315, 952 |  | 7 day week No holidays | 7302414 |
| 966 | 37000.37200.37900.38600.193700.715200 | 36th flr-Fire sprinkler pipe | 11d | 2025-04-01 | 2025-04-11 | 963FS-100d, 953FS-3d |  | 7 day week No holidays | 7302424 |
| 967 | 37000.37200.37900.38600.193700.715300 | 36th flr-Flat flooring | 11d | 2025-06-14 | 2025-06-24 | 954, 965 |  | 7 day week No holidays | 7302434 |
| 968 | 37000.37200.37900.38600.193700.715400 | 36th flr-Main door fixing & frame fixing | 11d | 2026-09-10 | 2026-09-21 | 955, 967 |  | 7 day week No holidays | 7302444 |
| 969 | 37000.37200.37900.38600.193700.715500 | 36th flr-Window fixing | 9d | 2025-11-22 | 2025-11-30 | 956, 967 |  | 7 day week No holidays | 7302454 |
| 970 | 37000.37200.37900.38600.193700.715600 | 36th flr-Railing Fixing | 11d | 2027-08-21 | 2027-09-01 | 957, 967 |  | 7 day week No holidays | 7302464 |
| 971 | 37000.37200.37900.38600.193700.715700 | 36th flr-Internal painting - putty / primer application | 11d | 2026-11-14 | 2026-11-25 | 958, 967 |  | 7 day week No holidays | 7302474 |
| 972 | 37000.37200.37900.38600.193700.715800 | 36th flr-Flat electrical wiring | 11d | 2027-04-14 | 2027-04-25 | 959, 968 |  | 7 day week No holidays | 7302484 |
| 973 | 37000.37200.37900.38600.193700.715900 | 36th flr-Internal painting | 11d | 2027-04-25 | 2027-05-06 | 960, 972 |  | 7 day week No holidays | 7302494 |
| 974 | 37000.37200.37900.38600.193700.716000 | 36th flr-Internal shutter fixing | 11d | 2027-12-03 | 2027-12-14 | 961, 971 |  | 7 day week No holidays | 7302504 |
| 975 | 37000.37200.37900.38600.193800 | **37th Floor** | 945.25d | 2025-05-24 | 2027-12-25 |  | start no earlier than 2025-05-24 | 7 day week No holidays | 7285144 |
| 976 | 37000.37200.37900.38600.193800.716100 | 37th flr-Gypsum Plaster | 14d | 2025-06-13 | 2025-06-26 | 963FS+0.25d |  | 7 day week No holidays | 7302514 |
| 977 | 37000.37200.37900.38600.193800.716200 | 37th flr-Kitchen Platform | 10d | 2025-12-09 | 2025-12-19 | 964, 976 |  | 7 day week No holidays | 7302524 |
| 978 | 37000.37200.37900.38600.193800.716300 | 37th flr-Toilet dado & flooring | 22d | 2025-05-24 | 2025-06-14 | 321, 965 |  | 7 day week No holidays | 7302534 |
| 979 | 37000.37200.37900.38600.193800.716400 | 37th flr-Fire sprinkler pipe | 11d | 2025-06-27 | 2025-07-07 | 966FS+10d, 976 |  | 7 day week No holidays | 7302544 |
| 980 | 37000.37200.37900.38600.193800.716500 | 37th flr-Flat flooring | 11d | 2025-06-25 | 2025-07-05 | 967, 978 |  | 7 day week No holidays | 7302554 |
| 981 | 37000.37200.37900.38600.193800.716600 | 37th flr-Main door fixing & frame fixing | 11d | 2026-09-21 | 2026-10-02 | 968, 980 |  | 7 day week No holidays | 7302564 |
| 982 | 37000.37200.37900.38600.193800.716700 | 37th flr-Window fixing | 9d | 2025-12-01 | 2025-12-09 | 969, 980 |  | 7 day week No holidays | 7302574 |
| 983 | 37000.37200.37900.38600.193800.716800 | 37th flr-Railing Fixing | 11d | 2027-09-01 | 2027-09-12 | 970, 980 |  | 7 day week No holidays | 7302584 |
| 984 | 37000.37200.37900.38600.193800.716900 | 37th flr-Internal painting - putty / primer application | 11d | 2026-11-25 | 2026-12-06 | 971, 980 |  | 7 day week No holidays | 7302594 |
| 985 | 37000.37200.37900.38600.193800.717000 | 37th flr-Flat electrical wiring | 11d | 2027-04-25 | 2027-05-06 | 972, 981 |  | 7 day week No holidays | 7302604 |
| 986 | 37000.37200.37900.38600.193800.717100 | 37th flr-Internal painting | 11d | 2027-05-06 | 2027-05-17 | 973, 985 |  | 7 day week No holidays | 7302614 |
| 987 | 37000.37200.37900.38600.193800.717200 | 37th flr-Internal shutter fixing | 11d | 2027-12-14 | 2027-12-25 | 974, 984 |  | 7 day week No holidays | 7302624 |

| ID | WBS | Task | Duration | Start | Finish | Predecessors | Constraint | Calendar | Unique_Task_ID |
| --- | --- | --- | --- | --- | --- | --- | --- | --- | --- |
| 988 | 37000.37200.37900.38600.194000 | **38th Floor** | 934.25d | 2025-06-15 | 2028-01-05 |  | start no earlier than 2025-06-15 | 7 day week No holidays | 7285754 |
| 989 | 37000.37200.37900.38600.194000.717300 | 38th flr-Gypsum Plaster | 14d | 2025-06-25 | 2025-07-08 | 976FS-2d |  | 7 day week No holidays | 7302634 |
| 990 | 37000.37200.37900.38600.194000.717400 | 38th flr-Kitchen Platform | 11d | 2025-12-19 | 2025-12-30 | 977, 989 |  | 7 day week No holidays | 7302644 |
| 991 | 37000.37200.37900.38600.194000.717500 | 38th flr-Toilet dado & flooring | 31d | 2025-06-15 | 2025-07-15 | 327, 978 |  | 7 day week No holidays | 7302654 |
| 992 | 37000.37200.37900.38600.194000.717600 | 38th flr-Fire sprinkler pipe | 11d | 2025-07-09 | 2025-07-19 | 979, 989 |  | 7 day week No holidays | 7302664 |
| 993 | 37000.37200.37900.38600.194000.717700 | 38th flr-Flat flooring | 14d | 2025-07-16 | 2025-07-29 | 980, 991 |  | 7 day week No holidays | 7302674 |
| 994 | 37000.37200.37900.38600.194000.717800 | 38th flr-Main door fixing & frame fixing | 15d | 2026-10-02 | 2026-10-17 | 981, 993 |  | 7 day week No holidays | 7302684 |
| 995 | 37000.37200.37900.38600.194000.717900 | 38th flr-Window fixing | 9d | 2025-12-10 | 2025-12-18 | 982, 993 |  | 7 day week No holidays | 7302694 |
| 996 | 37000.37200.37900.38600.194000.718000 | 38th flr-Railing Fixing | 11d | 2027-09-12 | 2027-09-23 | 983, 993 |  | 7 day week No holidays | 7302704 |
| 997 | 37000.37200.37900.38600.194000.718100 | 38th flr-Internal painting - putty / primer application | 11d | 2026-12-06 | 2026-12-17 | 984, 993 |  | 7 day week No holidays | 7302714 |
| 998 | 37000.37200.37900.38600.194000.718200 | 38th flr-Flat electrical wiring | 11d | 2027-05-06 | 2027-05-17 | 985, 994 |  | 7 day week No holidays | 7302724 |
| 999 | 37000.37200.37900.38600.194000.718300 | 38th flr-Internal painting | 11d | 2027-05-17 | 2027-05-28 | 986, 998 |  | 7 day week No holidays | 7302734 |
| 1000 | 37000.37200.37900.38600.194000.718400 | 38th flr-Internal shutter fixing | 11d | 2027-12-25 | 2028-01-05 | 987, 997 |  | 7 day week No holidays | 7302744 |
| 1001 | 37000.37200.37900.38600.194300 | **39th Floor** | 926.25d | 2025-07-04 | 2028-01-16 |  | start no earlier than 2025-07-04 | 7 day week No holidays | 7285164 |
| 1002 | 37000.37200.37900.38600.194300.718500 | 39th flr-Gypsum Plaster | 14d | 2025-07-04 | 2025-07-17 | 989FS-5d |  | 7 day week No holidays | 7302754 |
| 1003 | 37000.37200.37900.38600.194300.718600 | 39th flr-Kitchen Platform | 11d | 2025-12-30 | 2026-01-10 | 990, 1002 |  | 7 day week No holidays | 7302764 |
| 1004 | 37000.37200.37900.38600.194300.718700 | 39th flr-Toilet dado & flooring | 13d | 2025-07-16 | 2025-07-28 | 333, 991 |  | 7 day week No holidays | 7302774 |
| 1005 | 37000.37200.37900.38600.194300.718800 | 39th flr-Fire sprinkler pipe | 11d | 2025-07-20 | 2025-07-30 | 992, 1002 |  | 7 day week No holidays | 7302784 |
| 1006 | 37000.37200.37900.38600.194300.718900 | 39th flr-Flat flooring | 13d | 2025-07-30 | 2025-08-11 | 993, 1004 |  | 7 day week No holidays | 7302794 |
| 1007 | 37000.37200.37900.38600.194300.719000 | 39th flr-Main door fixing & frame fixing | 11d | 2026-10-17 | 2026-10-28 | 994, 1006 |  | 7 day week No holidays | 7302804 |
| 1008 | 37000.37200.37900.38600.194300.719100 | 39th flr-Window fixing | 9d | 2025-12-27 | 2026-01-04 | 995FS+8d, 1006 |  | 7 day week No holidays | 7302814 |
| 1009 | 37000.37200.37900.38600.194300.719200 | 39th flr-Railing Fixing | 11d | 2027-09-23 | 2027-10-04 | 996, 1006 |  | 7 day week No holidays | 7302824 |
| 1010 | 37000.37200.37900.38600.194300.719300 | 39th flr-Internal painting - putty / primer application | 11d | 2026-12-17 | 2026-12-28 | 997, 1006 |  | 7 day week No holidays | 7302834 |
| 1011 | 37000.37200.37900.38600.194300.719400 | 39th flr-Flat electrical wiring | 11d | 2027-05-17 | 2027-05-28 | 998, 1007 |  | 7 day week No holidays | 7302844 |
| 1012 | 37000.37200.37900.38600.194300.719500 | 39th flr-Internal painting | 11d | 2027-05-28 | 2027-06-08 | 999, 1011 |  | 7 day week No holidays | 7302854 |
| 1013 | 37000.37200.37900.38600.194300.719600 | 39th flr-Internal shutter fixing | 11d | 2028-01-05 | 2028-01-16 | 1000, 1010 |  | 7 day week No holidays | 7302864 |

| ID | WBS | Task | Duration | Start | Finish | Predecessors | Constraint | Calendar | Unique_Task_ID |
| --- | --- | --- | --- | --- | --- | --- | --- | --- | --- |
| 1014 | 37000.37200.37900.38600.194500 | **40th Floor** | 928.25d | 2025-07-13 | 2028-01-27 |  | start no earlier than 2025-07-13 | 7 day week No holidays | 7285644 |
| 1015 | 37000.37200.37900.38600.194500.719700 | 40th flr-Gypsum Plaster | 14d | 2025-07-13 | 2025-07-26 | 1002FS-5d |  | 7 day week No holidays | 7302874 |
| 1016 | 37000.37200.37900.38600.194500.719800 | 40th flr-Kitchen Platform | 11d | 2026-01-10 | 2026-01-21 | 1003, 1015 |  | 7 day week No holidays | 7302884 |
| 1017 | 37000.37200.37900.38600.194500.719900 | 40th flr-Toilet dado & flooring | 18d | 2025-07-29 | 2025-08-15 | 339, 1004 |  | 7 day week No holidays | 7302894 |
| 1018 | 37000.37200.37900.38600.194500.720000 | 40th flr-Fire sprinkler pipe | 11d | 2025-07-31 | 2025-08-10 | 1005, 1015 |  | 7 day week No holidays | 7302904 |
| 1019 | 37000.37200.37900.38600.194500.720100 | 40th flr-Flat flooring | 15d | 2025-08-16 | 2025-08-30 | 1006, 1017 |  | 7 day week No holidays | 7302914 |
| 1020 | 37000.37200.37900.38600.194500.720200 | 40th flr-Main door fixing & frame fixing | 11d | 2026-10-28 | 2026-11-08 | 1007, 1019 |  | 7 day week No holidays | 7302924 |
| 1021 | 37000.37200.37900.38600.194500.720300 | 40th flr-Window fixing | 9d | 2026-01-05 | 2026-01-13 | 1008, 1019 |  | 7 day week No holidays | 7302934 |
| 1022 | 37000.37200.37900.38600.194500.720400 | 40th flr-Railing Fixing | 11d | 2027-10-04 | 2027-10-15 | 1009, 1019 |  | 7 day week No holidays | 7302944 |
| 1023 | 37000.37200.37900.38600.194500.720500 | 40th flr-Internal painting - putty / primer application | 11d | 2026-12-28 | 2027-01-08 | 1010, 1019 |  | 7 day week No holidays | 7302954 |
| 1024 | 37000.37200.37900.38600.194500.720600 | 40th flr-Flat electrical wiring | 11d | 2027-05-28 | 2027-06-08 | 1011, 1020 |  | 7 day week No holidays | 7302964 |
| 1025 | 37000.37200.37900.38600.194500.720700 | 40th flr-Internal painting | 11d | 2027-06-08 | 2027-06-19 | 1012, 1024 |  | 7 day week No holidays | 7302974 |
| 1026 | 37000.37200.37900.38600.194500.720800 | 40th flr-Internal shutter fixing | 11d | 2028-01-16 | 2028-01-27 | 1013, 1023 |  | 7 day week No holidays | 7302984 |
| 1027 | 37000.37200.37900.38600.194700 | **41th Floor** | 925.25d | 2025-07-27 | 2028-02-07 |  | start no earlier than 2025-07-27 | 7 day week No holidays | 7285654 |
| 1028 | 37000.37200.37900.38600.194700.720900 | 41st flr-Gypsum Plaster | 14d | 2025-07-27 | 2025-08-09 | 1015 |  | 7 day week No holidays | 7302994 |
| 1029 | 37000.37200.37900.38600.194700.721000 | 41st flr-Kitchen Platform | 11d | 2026-01-21 | 2026-02-01 | 1016, 1028 |  | 7 day week No holidays | 7303004 |
| 1030 | 37000.37200.37900.38600.194700.721100 | 41st flr-Toilet dado & flooring | 15d | 2025-08-16 | 2025-08-30 | 345, 1017 |  | 7 day week No holidays | 7303014 |
| 1031 | 37000.37200.37900.38600.194700.721200 | 41st flr-Fire sprinkler pipe | 11d | 2025-08-11 | 2025-08-21 | 1018, 1028 |  | 7 day week No holidays | 7303024 |
| 1032 | 37000.37200.37900.38600.194700.721300 | 41st flr-Flat flooring | 11d | 2025-08-31 | 2025-09-10 | 1019, 1030 |  | 7 day week No holidays | 7303034 |
| 1033 | 37000.37200.37900.38600.194700.721400 | 41st flr-Main door fixing & frame fixing | 11d | 2026-11-08 | 2026-11-19 | 1020, 1032 |  | 7 day week No holidays | 7303044 |
| 1034 | 37000.37200.37900.38600.194700.721500 | 41st flr-Window fixing | 9d | 2026-01-14 | 2026-01-22 | 1021, 1032 |  | 7 day week No holidays | 7303054 |
| 1035 | 37000.37200.37900.38600.194700.721600 | 41st flr-Railing Fixing | 11d | 2027-10-15 | 2027-10-26 | 1022, 1032 |  | 7 day week No holidays | 7303064 |
| 1036 | 37000.37200.37900.38600.194700.721700 | 41st flr-Internal painting - putty / primer application | 11d | 2027-01-08 | 2027-01-19 | 1023, 1032 |  | 7 day week No holidays | 7303074 |
| 1037 | 37000.37200.37900.38600.194700.721800 | 41st flr-Flat electrical wiring | 11d | 2027-06-08 | 2027-06-19 | 1024, 1033 |  | 7 day week No holidays | 7303084 |
| 1038 | 37000.37200.37900.38600.194700.721900 | 41st flr-Internal painting | 11d | 2027-06-19 | 2027-06-30 | 1025, 1037 |  | 7 day week No holidays | 7303094 |
| 1039 | 37000.37200.37900.38600.194700.722000 | 41st flr-Internal shutter fixing | 11d | 2028-01-27 | 2028-02-07 | 1026, 1036 |  | 7 day week No holidays | 7303104 |

| ID | WBS | Task | Duration | Start | Finish | Predecessors | Constraint | Calendar | Unique_Task_ID |
| --- | --- | --- | --- | --- | --- | --- | --- | --- | --- |
| 1040 | 37000.37200.37900.38600.194900 | **42nd Floor** | 922d | 2025-08-10 | 2028-02-18 |  | start no earlier than 2025-08-10 | 7 day week No holidays | 7285694 |
| 1041 | 37000.37200.37900.38600.194900.722100 | 42nd flr-Gypsum Plaster | 14d | 2025-08-10 | 2025-08-24 | 1028FS+0.25d |  | 7 day week No holidays | 7303114 |
| 1042 | 37000.37200.37900.38600.194900.722200 | 42nd flr-Kitchen Platform | 11d | 2026-02-01 | 2026-02-12 | 1029, 1041 |  | 7 day week No holidays | 7303124 |
| 1043 | 37000.37200.37900.38600.194900.722300 | 42nd flr-Toilet dado & flooring | 15d | 2025-08-31 | 2025-09-14 | 351, 1030 |  | 7 day week No holidays | 7303134 |
| 1044 | 37000.37200.37900.38600.194900.722400 | 42nd flr-Fire sprinkler pipe | 11d | 2025-08-24 | 2025-09-04 | 1031, 1041 |  | 7 day week No holidays | 7303144 |
| 1045 | 37000.37200.37900.38600.194900.722500 | 42nd flr-Flat flooring | 15d | 2025-09-15 | 2025-09-29 | 1032, 1043 |  | 7 day week No holidays | 7303154 |
| 1046 | 37000.37200.37900.38600.194900.722600 | 42nd flr-Main door fixing & frame fixing | 11d | 2026-11-19 | 2026-11-30 | 1033, 1045 |  | 7 day week No holidays | 7303164 |
| 1047 | 37000.37200.37900.38600.194900.722700 | 42nd flr-Window fixing | 9d | 2026-01-23 | 2026-01-31 | 1034, 1045 |  | 7 day week No holidays | 7303174 |
| 1048 | 37000.37200.37900.38600.194900.722800 | 42nd flr-Railing Fixing | 11d | 2027-10-26 | 2027-11-06 | 1035, 1045 |  | 7 day week No holidays | 7303184 |
| 1049 | 37000.37200.37900.38600.194900.722900 | 42nd flr-Internal painting - putty / primer application | 11d | 2027-01-19 | 2027-01-30 | 1036, 1045 |  | 7 day week No holidays | 7303194 |
| 1050 | 37000.37200.37900.38600.194900.723000 | 42nd flr-Flat electrical wiring | 11d | 2027-06-19 | 2027-06-30 | 1037, 1046 |  | 7 day week No holidays | 7303204 |
| 1051 | 37000.37200.37900.38600.194900.723100 | 42nd flr-Internal painting | 11d | 2027-06-30 | 2027-07-11 | 1038, 1050 |  | 7 day week No holidays | 7303214 |
| 1052 | 37000.37200.37900.38600.194900.723200 | 42nd flr-Internal shutter fixing | 11d | 2028-02-07 | 2028-02-18 | 1039, 1049 |  | 7 day week No holidays | 7303224 |
| 1053 | 37000.37200.37900.38600.195300 | **43rd Floor** | 921d | 2025-08-22 | 2028-02-29 |  | start no earlier than 2025-08-22 | 7 day week No holidays | 7285734 |
| 1054 | 37000.37200.37900.38600.195300.723300 | 43rd flr-Gypsum Plaster | 14d | 2025-08-22 | 2025-09-05 | 1041FS-2d |  | 7 day week No holidays | 7303234 |
| 1055 | 37000.37200.37900.38600.195300.723400 | 43rd flr-Kitchen Platform | 11d | 2026-02-12 | 2026-02-23 | 1042, 1054 |  | 7 day week No holidays | 7303244 |
| 1056 | 37000.37200.37900.38600.195300.723500 | 43rd flr-Toilet dado & flooring | 15d | 2025-09-15 | 2025-09-29 | 357, 1043 |  | 7 day week No holidays | 7303254 |
| 1057 | 37000.37200.37900.38600.195300.723600 | 43rd flr-Fire sprinkler pipe | 11d | 2025-09-05 | 2025-09-16 | 1044, 1054 |  | 7 day week No holidays | 7303264 |
| 1058 | 37000.37200.37900.38600.195300.723700 | 43rd flr-Flat flooring | 12d | 2025-09-30 | 2025-10-11 | 1045, 1056 |  | 7 day week No holidays | 7303274 |
| 1059 | 37000.37200.37900.38600.195300.723800 | 43rd flr-Main door fixing & frame fixing | 11d | 2026-11-30 | 2026-12-11 | 1046, 1058 |  | 7 day week No holidays | 7303284 |
| 1060 | 37000.37200.37900.38600.195300.723900 | 43rd flr-Window fixing | 9d | 2026-02-01 | 2026-02-09 | 1047, 1058 |  | 7 day week No holidays | 7303294 |
| 1061 | 37000.37200.37900.38600.195300.724000 | 43rd flr-Railing Fixing | 11d | 2027-11-06 | 2027-11-17 | 1048, 1058 |  | 7 day week No holidays | 7303304 |
| 1062 | 37000.37200.37900.38600.195300.724100 | 43rd flr-Internal painting - putty / primer application | 11d | 2027-01-30 | 2027-02-10 | 1049, 1058 |  | 7 day week No holidays | 7303314 |
| 1063 | 37000.37200.37900.38600.195300.724200 | 43rd flr-Flat electrical wiring | 11d | 2027-06-30 | 2027-07-11 | 1050, 1059 |  | 7 day week No holidays | 7303324 |
| 1064 | 37000.37200.37900.38600.195300.724300 | 43rd flr-Internal painting | 11d | 2027-07-11 | 2027-07-22 | 1051, 1063 |  | 7 day week No holidays | 7303334 |
| 1065 | 37000.37200.37900.38600.195300.724400 | 43rd flr-Internal shutter fixing | 11d | 2028-02-18 | 2028-02-29 | 1052, 1062 |  | 7 day week No holidays | 7303344 |

| ID | WBS | Task | Duration | Start | Finish | Predecessors | Constraint | Calendar | Unique_Task_ID |
| --- | --- | --- | --- | --- | --- | --- | --- | --- | --- |
| 1066 | 37000.37200.37900.38600.195500 | **44th Floor** | 917.75d | 2025-09-05 | 2028-03-11 |  | start no earlier than 2025-09-05 | 7 day week No holidays | 7285744 |
| 1067 | 37000.37200.37900.38600.195500.724500 | 44th flr-Gypsum Plaster | 14d | 2025-09-05 | 2025-09-19 | 1054FS+0.25d |  | 7 day week No holidays | 7303354 |
| 1068 | 37000.37200.37900.38600.195500.724600 | 44th flr-Kitchen Platform | 10d | 2026-02-23 | 2026-03-05 | 1055, 1067 |  | 7 day week No holidays | 7303364 |
| 1069 | 37000.37200.37900.38600.195500.724700 | 44th flr-Toilet dado & flooring | 10d | 2025-09-30 | 2025-10-09 | 363, 1056 |  | 7 day week No holidays | 7303374 |
| 1070 | 37000.37200.37900.38600.195500.724800 | 44th flr-Fire sprinkler pipe | 11d | 2025-09-19 | 2025-09-30 | 1057, 1067 |  | 7 day week No holidays | 7303384 |
| 1071 | 37000.37200.37900.38600.195500.724900 | 44th flr-Flat flooring | 15d | 2025-10-12 | 2025-10-26 | 1058, 1069 |  | 7 day week No holidays | 7303394 |
| 1072 | 37000.37200.37900.38600.195500.725000 | 44th flr-Main door fixing & frame fixing | 11d | 2026-12-11 | 2026-12-22 | 1059, 1071 |  | 7 day week No holidays | 7303404 |
| 1073 | 37000.37200.37900.38600.195500.725100 | 44th flr-Window fixing | 9d | 2026-02-10 | 2026-02-18 | 1060, 1071 |  | 7 day week No holidays | 7303414 |
| 1074 | 37000.37200.37900.38600.195500.725200 | 44th flr-Railing Fixing | 11d | 2027-11-17 | 2027-11-28 | 1061, 1071 |  | 7 day week No holidays | 7303424 |
| 1075 | 37000.37200.37900.38600.195500.725300 | 44th flr-Internal painting - putty / primer application | 11d | 2027-02-10 | 2027-02-21 | 1062, 1071 |  | 7 day week No holidays | 7303434 |
| 1076 | 37000.37200.37900.38600.195500.725400 | 44th flr-Flat electrical wiring | 11d | 2027-07-11 | 2027-07-22 | 1063, 1072 |  | 7 day week No holidays | 7303444 |
| 1077 | 37000.37200.37900.38600.195500.725500 | 44th flr-Internal painting | 11d | 2027-07-22 | 2027-08-02 | 1064, 1076 |  | 7 day week No holidays | 7303454 |
| 1078 | 37000.37200.37900.38600.195500.725600 | 44th flr-Internal shutter fixing | 11d | 2028-02-29 | 2028-03-11 | 1065, 1075 |  | 7 day week No holidays | 7303464 |
| 1079 | 37000.37200.37900.38600.195600 | **45th Floor** | 919.75d | 2025-09-14 | 2028-03-22 |  | start no earlier than 2025-09-14 | 7 day week No holidays | 7285774 |
| 1080 | 37000.37200.37900.38600.195600.725700 | 45th flr-Gypsum Plaster | 14d | 2025-09-14 | 2025-09-28 | 1067FS-5d |  | 7 day week No holidays | 7303474 |
| 1081 | 37000.37200.37900.38600.195600.725800 | 45th flr-Kitchen Platform | 10d | 2026-03-05 | 2026-03-15 | 1068, 1080 |  | 7 day week No holidays | 7303484 |
| 1082 | 37000.37200.37900.38600.195600.725900 | 45th flr-Toilet dado & flooring | 8d | 2025-09-30 | 2025-10-07 | 369, 1069FS-10d |  | 7 day week No holidays | 7303494 |
| 1083 | 37000.37200.37900.38600.195600.726000 | 45th flr-Fire sprinkler pipe | 11d | 2025-09-30 | 2025-10-11 | 1070, 1080 |  | 7 day week No holidays | 7303504 |
| 1084 | 37000.37200.37900.38600.195600.726100 | 45th flr-Flat flooring | 25d | 2025-10-27 | 2025-11-20 | 1071, 1082 |  | 7 day week No holidays | 7303514 |
| 1085 | 37000.37200.37900.38600.195600.726200 | 45th flr-Main door fixing & frame fixing | 11d | 2026-12-22 | 2027-01-02 | 1072, 1084 |  | 7 day week No holidays | 7303524 |
| 1086 | 37000.37200.37900.38600.195600.726300 | 45th flr-Window fixing | 9d | 2026-02-19 | 2026-02-27 | 1073, 1084 |  | 7 day week No holidays | 7303534 |
| 1087 | 37000.37200.37900.38600.195600.726400 | 45th flr-Railing Fixing | 6d | 2027-11-28 | 2027-12-04 | 1074, 1084 |  | 7 day week No holidays | 7303544 |
| 1088 | 37000.37200.37900.38600.195600.726500 | 45th flr-Internal painting - putty / primer application | 11d | 2027-02-21 | 2027-03-04 | 1075, 1084 |  | 7 day week No holidays | 7303554 |
| 1089 | 37000.37200.37900.38600.195600.726600 | 45th flr-Flat electrical wiring | 11d | 2027-07-22 | 2027-08-02 | 1076, 1085 |  | 7 day week No holidays | 7303564 |
| 1090 | 37000.37200.37900.38600.195600.726700 | 45th flr-Internal painting | 11d | 2027-08-02 | 2027-08-13 | 1077, 1089 |  | 7 day week No holidays | 2501128 |
| 1091 | 37000.37200.37900.38600.195600.726800 | 45th flr-Internal shutter fixing | 11d | 2028-03-11 | 2028-03-22 | 1078, 1088 |  | 7 day week No holidays | 2501138 |

| ID | WBS | Task | Duration | Start | Finish | Predecessors | Constraint | Calendar | Unique_Task_ID |
| --- | --- | --- | --- | --- | --- | --- | --- | --- | --- |
| 1092 | 37000.37200.37900.38600.195800 | **46th Floor** | 916.5d | 2025-09-28 | 2028-04-02 |  | start no earlier than 2025-09-28 | 7 day week No holidays | 7285054 |
| 1093 | 37000.37200.37900.38600.195800.726900 | 46th flr-Gypsum Plaster | 14d | 2025-09-28 | 2025-10-12 | 1080FS+0.25d |  | 7 day week No holidays | 2501148 |
| 1094 | 37000.37200.37900.38600.195800.727000 | 46th flr-Kitchen Platform | 10d | 2026-03-15 | 2026-03-25 | 1081, 1093 |  | 7 day week No holidays | 2501158 |
| 1095 | 37000.37200.37900.38600.195800.727100 | 46th flr-Toilet dado & flooring | 16d | 2025-10-08 | 2025-10-23 | 375, 1082 |  | 7 day week No holidays | 2501168 |
| 1096 | 37000.37200.37900.38600.195800.727200 | 46th flr-Fire sprinkler pipe | 11d | 2025-10-12 | 2025-10-23 | 1083, 1093 |  | 7 day week No holidays | 2501178 |
| 1097 | 37000.37200.37900.38600.195800.727300 | 46th flr-Flat flooring | 16d | 2025-11-21 | 2025-12-06 | 1084, 1095 |  | 7 day week No holidays | 2501188 |
| 1098 | 37000.37200.37900.38600.195800.727400 | 46th flr-Main door fixing & frame fixing | 11d | 2027-01-02 | 2027-01-13 | 1085, 1097 |  | 7 day week No holidays | 2501198 |
| 1099 | 37000.37200.37900.38600.195800.727500 | 46th flr-Window fixing | 9d | 2026-02-28 | 2026-03-08 | 1086, 1097 |  | 7 day week No holidays | 2501208 |
| 1100 | 37000.37200.37900.38600.195800.727600 | 46th flr-Railing Fixing | 11d | 2027-12-04 | 2027-12-15 | 1087, 1097 |  | 7 day week No holidays | 2501218 |
| 1101 | 37000.37200.37900.38600.195800.727700 | 46th flr-Internal painting - putty / primer application | 11d | 2027-03-04 | 2027-03-15 | 1088, 1097 |  | 7 day week No holidays | 2501228 |
| 1102 | 37000.37200.37900.38600.195800.727800 | 46th flr-Flat electrical wiring | 11d | 2027-08-02 | 2027-08-13 | 1089, 1098 |  | 7 day week No holidays | 2501238 |
| 1103 | 37000.37200.37900.38600.195800.727900 | 46th flr-Internal painting | 11d | 2027-08-13 | 2027-08-24 | 1090, 1102 |  | 7 day week No holidays | 2501248 |
| 1104 | 37000.37200.37900.38600.195800.728000 | 46th flr-Internal shutter fixing | 11d | 2028-03-22 | 2028-04-02 | 1091, 1101 |  | 7 day week No holidays | 2501258 |
| 1105 | 37000.37200.37900.38600.196000 | **47th Floor** | 913.25d | 2025-10-13 | 2028-04-13 |  | start no earlier than 2025-10-13 | 7 day week No holidays | 7285044 |
| 1106 | 37000.37200.37900.38600.196000.728100 | 47th flr-Gypsum Plaster | 14d | 2025-10-13 | 2025-10-26 | 1093FS+0.25d |  | 7 day week No holidays | 2501268 |
| 1107 | 37000.37200.37900.38600.196000.728200 | 47th flr-Kitchen Platform | 11d | 2026-03-15 | 2026-03-26 | 1094FS-10d, 1106 |  | 7 day week No holidays | 2501278 |
| 1108 | 37000.37200.37900.38600.196000.728300 | 47th flr-Toilet dado & flooring | 15d | 2025-10-24 | 2025-11-07 | 381, 1095 |  | 7 day week No holidays | 2501288 |
| 1109 | 37000.37200.37900.38600.196000.728400 | 47th flr-Fire sprinkler pipe | 11d | 2025-10-27 | 2025-11-06 | 1096, 1106 |  | 7 day week No holidays | 2501298 |
| 1110 | 37000.37200.37900.38600.196000.728500 | 47th flr-Flat flooring | 12d | 2025-12-07 | 2025-12-18 | 1097, 1108 |  | 7 day week No holidays | 2501308 |
| 1111 | 37000.37200.37900.38600.196000.728600 | 47th flr-Main door fixing & frame fixing | 11d | 2027-01-13 | 2027-01-24 | 1098, 1110 |  | 7 day week No holidays | 2501318 |
| 1112 | 37000.37200.37900.38600.196000.728700 | 47th flr-Window fixing | 9d | 2026-03-09 | 2026-03-17 | 1099, 1110 |  | 7 day week No holidays | 2501328 |
| 1113 | 37000.37200.37900.38600.196000.728800 | 47th flr-Railing Fixing | 11d | 2027-12-15 | 2027-12-26 | 1100, 1110 |  | 7 day week No holidays | 2501338 |
| 1114 | 37000.37200.37900.38600.196000.728900 | 47th flr-Internal painting - putty / primer application | 11d | 2027-03-15 | 2027-03-26 | 1101, 1110 |  | 7 day week No holidays | 2501348 |
| 1115 | 37000.37200.37900.38600.196000.729000 | 47th flr-Flat electrical wiring | 11d | 2027-08-13 | 2027-08-24 | 1102, 1111 |  | 7 day week No holidays | 2501358 |
| 1116 | 37000.37200.37900.38600.196000.729100 | 47th flr-Internal painting | 11d | 2027-08-24 | 2027-09-04 | 1103, 1115 |  | 7 day week No holidays | 2501368 |
| 1117 | 37000.37200.37900.38600.196000.729200 | 47th flr-Internal shutter fixing | 11d | 2028-04-02 | 2028-04-13 | 1104, 1114 |  | 7 day week No holidays | 2501378 |

| ID | WBS | Task | Duration | Start | Finish | Predecessors | Constraint | Calendar | Unique_Task_ID |
| --- | --- | --- | --- | --- | --- | --- | --- | --- | --- |
| 1118 | 37000.37200.37900.38600.196200 | **48th Floor** | 906.25d | 2025-10-31 | 2028-04-24 |  | start no earlier than 2025-10-31 | 7 day week No holidays | 7285944 |
| 1119 | 37000.37200.37900.38600.196200.729300 | 48th flr-Gypsum Plaster | 14d | 2025-10-31 | 2025-11-13 | 1106FS+4d |  | 7 day week No holidays | 2501388 |
| 1120 | 37000.37200.37900.38600.196200.729400 | 48th flr-Kitchen Platform | 11d | 2026-03-31 | 2026-04-11 | 1107FS+5d, 1119 |  | 7 day week No holidays | 2501398 |
| 1121 | 37000.37200.37900.38600.196200.729500 | 48th flr-Toilet dado & flooring | 10d | 2025-11-08 | 2025-11-17 | 387, 1108 |  | 7 day week No holidays | 2501408 |
| 1122 | 37000.37200.37900.38600.196200.729600 | 48th flr-Fire sprinkler pipe | 11d | 2025-11-14 | 2025-11-24 | 1109, 1119 |  | 7 day week No holidays | 2501418 |
| 1123 | 37000.37200.37900.38600.196200.729700 | 48th flr-Flat flooring | 10d | 2025-12-19 | 2025-12-28 | 1110, 1121 |  | 7 day week No holidays | 2501428 |
| 1124 | 37000.37200.37900.38600.196200.729800 | 48th flr-Main door fixing & frame fixing | 11d | 2027-01-24 | 2027-02-04 | 1111, 1123 |  | 7 day week No holidays | 2501438 |
| 1125 | 37000.37200.37900.38600.196200.729900 | 48th flr-Window fixing | 9d | 2026-03-18 | 2026-03-26 | 1112, 1123 |  | 7 day week No holidays | 2501448 |
| 1126 | 37000.37200.37900.38600.196200.730000 | 48th flr-Railing Fixing | 11d | 2027-12-26 | 2028-01-06 | 1113, 1123 |  | 7 day week No holidays | 2501458 |
| 1127 | 37000.37200.37900.38600.196200.730100 | 48th flr-Internal painting - putty / primer application | 11d | 2027-03-26 | 2027-04-06 | 1114, 1123 |  | 7 day week No holidays | 2501468 |
| 1128 | 37000.37200.37900.38600.196200.730200 | 48th flr-Flat electrical wiring | 11d | 2027-08-24 | 2027-09-04 | 1115, 1124 |  | 7 day week No holidays | 2501478 |
| 1129 | 37000.37200.37900.38600.196200.730300 | 48th flr-Internal painting | 11d | 2027-09-04 | 2027-09-15 | 1116, 1128 |  | 7 day week No holidays | 2501488 |
| 1130 | 37000.37200.37900.38600.196200.730400 | 48th flr-Internal shutter fixing | 11d | 2028-04-13 | 2028-04-24 | 1117, 1127 |  | 7 day week No holidays | 2501498 |
| 1131 | 37000.37200.37900.38600.196400 | **49th Floor** | 899.25d | 2025-11-18 | 2028-05-05 |  | start no earlier than 2025-11-18 | 7 day week No holidays | 7285954 |
| 1132 | 37000.37200.37900.38600.196400.730500 | 49th flr-Gypsum Plaster | 14d | 2025-11-18 | 2025-12-01 | 1119FS+4d |  | 7 day week No holidays | 2501508 |
| 1133 | 37000.37200.37900.38600.196400.730600 | 49th flr-Kitchen Platform | 11d | 2026-04-11 | 2026-04-22 | 1120, 1132 |  | 7 day week No holidays | 2501518 |
| 1134 | 37000.37200.37900.38600.196400.730700 | 49th flr-Toilet dado & flooring | 11d | 2025-11-18 | 2025-11-28 | 393, 1121 |  | 7 day week No holidays | 2501528 |
| 1135 | 37000.37200.37900.38600.196400.730800 | 49th flr-Fire sprinkler pipe | 11d | 2025-12-02 | 2025-12-12 | 1122, 1132 |  | 7 day week No holidays | 2501538 |
| 1136 | 37000.37200.37900.38600.196400.730900 | 49th flr-Flat flooring | 11d | 2025-12-29 | 2026-01-08 | 1123, 1134 |  | 7 day week No holidays | 2501548 |
| 1137 | 37000.37200.37900.38600.196400.731000 | 49th flr-Main door fixing & frame fixing | 11d | 2027-02-04 | 2027-02-15 | 1124, 1136 |  | 7 day week No holidays | 2501558 |
| 1138 | 37000.37200.37900.38600.196400.731100 | 49th flr-Window fixing | 5d | 2026-03-27 | 2026-03-31 | 1125, 1136 |  | 7 day week No holidays | 2501568 |
| 1139 | 37000.37200.37900.38600.196400.731200 | 49th flr-Railing Fixing | 11d | 2028-01-06 | 2028-01-17 | 1126, 1136 |  | 7 day week No holidays | 2501578 |
| 1140 | 37000.37200.37900.38600.196400.731300 | 49th flr-Internal painting - putty / primer application | 11d | 2027-04-06 | 2027-04-17 | 1127, 1136 |  | 7 day week No holidays | 2501588 |
| 1141 | 37000.37200.37900.38600.196400.731400 | 49th flr-Flat electrical wiring | 11d | 2027-09-04 | 2027-09-15 | 1128, 1137 |  | 7 day week No holidays | 2501598 |
| 1142 | 37000.37200.37900.38600.196400.731500 | 49th flr-Internal painting | 11d | 2027-09-15 | 2027-09-26 | 1129, 1141 |  | 7 day week No holidays | 2501608 |
| 1143 | 37000.37200.37900.38600.196400.731600 | 49th flr-Internal shutter fixing | 11d | 2028-04-24 | 2028-05-05 | 1130, 1140 |  | 7 day week No holidays | 2501618 |

| ID | WBS | Task | Duration | Start | Finish | Predecessors | Constraint | Calendar | Unique_Task_ID |
| --- | --- | --- | --- | --- | --- | --- | --- | --- | --- |
| 1144 | 37000.37200.37900.38600.196600 | **50th Floor** | 906.25d | 2025-11-22 | 2028-05-16 |  | start no earlier than 2025-11-22 | 7 day week No holidays | 7285064 |
| 1145 | 37000.37200.37900.38600.196600.731700 | 50th flr-Gypsum Plaster | 14d | 2025-11-22 | 2025-12-05 | 395FS-20d, 1132FS-10d |  | 7 day week No holidays | 2501628 |
| 1146 | 37000.37200.37900.38600.196600.731800 | 50th flr-Kitchen Platform | 11d | 2026-04-22 | 2026-05-03 | 1133, 1145 |  | 7 day week No holidays | 2501638 |
| 1147 | 37000.37200.37900.38600.196600.731900 | 50th flr-Toilet dado & flooring | 11d | 2025-11-29 | 2025-12-09 | 399, 1134 |  | 7 day week No holidays | 2501648 |
| 1148 | 37000.37200.37900.38600.196600.732000 | 50th flr-Fire sprinkler pipe | 11d | 2025-12-13 | 2025-12-23 | 1135, 1145 |  | 7 day week No holidays | 2501658 |
| 1149 | 37000.37200.37900.38600.196600.732100 | 50th flr-Flat flooring | 11d | 2026-01-09 | 2026-01-19 | 1136, 1147 |  | 7 day week No holidays | 2501668 |
| 1150 | 37000.37200.37900.38600.196600.732200 | 50th flr-Main door fixing & frame fixing | 11d | 2027-02-15 | 2027-02-26 | 1137, 1149 |  | 7 day week No holidays | 2501678 |
| 1151 | 37000.37200.37900.38600.196600.732300 | 50th flr-Window fixing | 6d | 2026-04-01 | 2026-04-06 | 1138, 1149 |  | 7 day week No holidays | 2501688 |
| 1152 | 37000.37200.37900.38600.196600.732400 | 50th flr-Railing Fixing | 11d | 2028-01-17 | 2028-01-28 | 1139, 1149 |  | 7 day week No holidays | 2501698 |
| 1153 | 37000.37200.37900.38600.196600.732500 | 50th flr-Internal painting - putty / primer application | 11d | 2027-04-17 | 2027-04-28 | 1140, 1149 |  | 7 day week No holidays | 2501708 |
| 1154 | 37000.37200.37900.38600.196600.732600 | 50th flr-Flat electrical wiring | 11d | 2027-09-15 | 2027-09-26 | 1141, 1150 |  | 7 day week No holidays | 2501718 |
| 1155 | 37000.37200.37900.38600.196600.732700 | 50th flr-Internal painting | 11d | 2027-09-26 | 2027-10-07 | 1142, 1154 |  | 7 day week No holidays | 2501728 |
| 1156 | 37000.37200.37900.38600.196600.732800 | 50th flr-Internal shutter fixing | 11d | 2028-05-05 | 2028-05-16 | 1143, 1153 |  | 7 day week No holidays | 2501738 |
| 1157 | 37000.37200.37900.38600.196900 | **51th Floor** | 903.25d | 2025-12-06 | 2028-05-27 |  | start no earlier than 2025-12-06 | 7 day week No holidays | 7285074 |
| 1158 | 37000.37200.37900.38600.196900.732900 | 51st flr-Gypsum Plaster | 14d | 2025-12-06 | 2025-12-19 | 1145 |  | 7 day week No holidays | 2501748 |
| 1159 | 37000.37200.37900.38600.196900.733000 | 51st flr-Kitchen Platform | 11d | 2026-05-03 | 2026-05-14 | 1146, 1158 |  | 7 day week No holidays | 2501758 |
| 1160 | 37000.37200.37900.38600.196900.733100 | 51st flr-Toilet dado & flooring | 11d | 2025-12-10 | 2025-12-20 | 405, 1147 |  | 7 day week No holidays | 2501768 |
| 1161 | 37000.37200.37900.38600.196900.733200 | 51st flr-Fire sprinkler pipe | 11d | 2025-12-24 | 2026-01-03 | 1148, 1158 |  | 7 day week No holidays | 2501778 |
| 1162 | 37000.37200.37900.38600.196900.733300 | 51st flr-Flat flooring | 11d | 2026-01-20 | 2026-01-30 | 1149, 1160 |  | 7 day week No holidays | 2501788 |
| 1163 | 37000.37200.37900.38600.196900.733400 | 51st flr-Main door fixing & frame fixing | 11d | 2027-02-26 | 2027-03-09 | 1150, 1162 |  | 7 day week No holidays | 2501798 |
| 1164 | 37000.37200.37900.38600.196900.733500 | 51st flr-Window fixing | 11d | 2026-04-07 | 2026-04-17 | 1151, 1162 |  | 7 day week No holidays | 2501808 |
| 1165 | 37000.37200.37900.38600.196900.733600 | 51st flr-Railing Fixing | 11d | 2028-01-28 | 2028-02-08 | 1152, 1162 |  | 7 day week No holidays | 2501818 |
| 1166 | 37000.37200.37900.38600.196900.733700 | 51st flr-Internal painting - putty / primer application | 11d | 2027-04-28 | 2027-05-09 | 1153, 1162 |  | 7 day week No holidays | 2501828 |
| 1167 | 37000.37200.37900.38600.196900.733800 | 51st flr-Flat electrical wiring | 11d | 2027-09-26 | 2027-10-07 | 1154, 1163 |  | 7 day week No holidays | 2501838 |
| 1168 | 37000.37200.37900.38600.196900.733900 | 51st flr-Internal painting | 11d | 2027-10-07 | 2027-10-18 | 1155, 1167 |  | 7 day week No holidays | 2501848 |
| 1169 | 37000.37200.37900.38600.196900.734000 | 51st flr-Internal shutter fixing | 11d | 2028-05-16 | 2028-05-27 | 1156, 1166 |  | 7 day week No holidays | 2501858 |

| ID | WBS | Task | Duration | Start | Finish | Predecessors | Constraint | Calendar | Unique_Task_ID |
| --- | --- | --- | --- | --- | --- | --- | --- | --- | --- |
| 1170 | 37000.37200.37900.38600.197000 | **52ndFloor** | 910.25d | 2025-12-10 | 2028-06-07 |  | start no earlier than 2025-12-10 | 7 day week No holidays | 7285084 |
| 1171 | 37000.37200.37900.38600.197000.734100 | 52nd flr-Gypsum Plaster | 14d | 2025-12-10 | 2025-12-23 | 1158FS-10d |  | 7 day week No holidays | 2501868 |
| 1172 | 37000.37200.37900.38600.197000.734200 | 52nd flr-Kitchen Platform | 11d | 2026-05-14 | 2026-05-25 | 1159, 1171 |  | 7 day week No holidays | 2501878 |
| 1173 | 37000.37200.37900.38600.197000.734300 | 52nd flr-Toilet dado & flooring | 11d | 2025-12-21 | 2025-12-31 | 411, 1160 |  | 7 day week No holidays | 2501888 |
| 1174 | 37000.37200.37900.38600.197000.734400 | 52nd flr-Fire sprinkler pipe | 11d | 2026-01-04 | 2026-01-14 | 1161, 1171 |  | 7 day week No holidays | 2501898 |
| 1175 | 37000.37200.37900.38600.197000.734500 | 52nd flr-Flat flooring | 11d | 2026-01-31 | 2026-02-10 | 1162, 1173 |  | 7 day week No holidays | 2501908 |
| 1176 | 37000.37200.37900.38600.197000.734600 | 52nd flr-Main door fixing & frame fixing | 11d | 2027-03-09 | 2027-03-20 | 1163, 1175 |  | 7 day week No holidays | 2501918 |
| 1177 | 37000.37200.37900.38600.197000.734700 | 52nd flr-Window fixing | 11d | 2026-04-18 | 2026-04-28 | 1164, 1175 |  | 7 day week No holidays | 2501928 |
| 1178 | 37000.37200.37900.38600.197000.734800 | 52nd flr-Railing Fixing | 11d | 2028-02-08 | 2028-02-19 | 1165, 1175 |  | 7 day week No holidays | 2501938 |
| 1179 | 37000.37200.37900.38600.197000.734900 | 52nd flr-Internal painting - putty / primer application | 11d | 2027-05-09 | 2027-05-20 | 1166, 1175 |  | 7 day week No holidays | 2501948 |
| 1180 | 37000.37200.37900.38600.197000.735000 | 52nd flr-Flat electrical wiring | 11d | 2027-10-07 | 2027-10-18 | 1167, 1176 |  | 7 day week No holidays | 2501958 |
| 1181 | 37000.37200.37900.38600.197000.735100 | 52nd flr-Internal painting | 11d | 2027-10-18 | 2027-10-29 | 1168, 1180 |  | 7 day week No holidays | 2501968 |
| 1182 | 37000.37200.37900.38600.197000.735200 | 52nd flr-Internal shutter fixing | 11d | 2028-05-27 | 2028-06-07 | 1169, 1179 |  | 7 day week No holidays | 2501978 |
| 1183 | 37000.37200.37900.38600.197300 | **53rd Floor** | 907.25d | 2025-12-24 | 2028-06-18 |  | start no earlier than 2025-12-24 | 7 day week No holidays | 7285104 |
| 1184 | 37000.37200.37900.38600.197300.735300 | 53rd flr-Gypsum Plaster | 14d | 2025-12-24 | 2026-01-06 | 413, 1171 |  | 7 day week No holidays | 2501988 |
| 1185 | 37000.37200.37900.38600.197300.735400 | 53rd flr-Kitchen Platform | 11d | 2026-05-25 | 2026-06-05 | 1172, 1184 |  | 7 day week No holidays | 2501998 |
| 1186 | 37000.37200.37900.38600.197300.735500 | 53rd flr-Toilet dado & flooring | 11d | 2026-01-01 | 2026-01-11 | 417, 1173 |  | 7 day week No holidays | 2502008 |
| 1187 | 37000.37200.37900.38600.197300.735600 | 53rd flr-Fire sprinkler pipe | 11d | 2026-01-15 | 2026-01-25 | 1174, 1184 |  | 7 day week No holidays | 2502018 |
| 1188 | 37000.37200.37900.38600.197300.735700 | 53rd flr-Flat flooring | 11d | 2026-02-11 | 2026-02-21 | 1175, 1186 |  | 7 day week No holidays | 2502028 |
| 1189 | 37000.37200.37900.38600.197300.735800 | 53rd flr-Main door fixing & frame fixing | 11d | 2027-03-20 | 2027-03-31 | 1176, 1188 |  | 7 day week No holidays | 2502038 |
| 1190 | 37000.37200.37900.38600.197300.735900 | 53rd flr-Window fixing | 11d | 2026-04-29 | 2026-05-09 | 1177, 1188 |  | 7 day week No holidays | 2502048 |
| 1191 | 37000.37200.37900.38600.197300.736000 | 53rd flr-Railing Fixing | 11d | 2028-02-19 | 2028-03-01 | 1178, 1188 |  | 7 day week No holidays | 2502058 |
| 1192 | 37000.37200.37900.38600.197300.736100 | 53rd flr-Internal painting - putty / primer application | 11d | 2027-05-20 | 2027-05-31 | 1179, 1188 |  | 7 day week No holidays | 2502068 |
| 1193 | 37000.37200.37900.38600.197300.736200 | 53rd flr-Flat electrical wiring | 11d | 2027-10-18 | 2027-10-29 | 1180, 1189 |  | 7 day week No holidays | 2502078 |
| 1194 | 37000.37200.37900.38600.197300.736300 | 53rd flr-Internal painting | 11d | 2027-10-29 | 2027-11-09 | 1181, 1193 |  | 7 day week No holidays | 2502088 |
| 1195 | 37000.37200.37900.38600.197300.736400 | 53rd flr-Internal shutter fixing | 11d | 2028-06-07 | 2028-06-18 | 1182, 1192 |  | 7 day week No holidays | 2502098 |

| ID | WBS | Task | Duration | Start | Finish | Predecessors | Constraint | Calendar | Unique_Task_ID |
| --- | --- | --- | --- | --- | --- | --- | --- | --- | --- |
| 1196 | 37000.37200.37900.38600.197400 | **54th Floor** | 904.25d | 2026-01-07 | 2028-06-29 |  | start no earlier than 2026-01-07 | 7 day week No holidays | 7285124 |
| 1197 | 37000.37200.37900.38600.197400.736500 | 54th flr-Gypsum Plaster | 14d | 2026-01-07 | 2026-01-20 | 419, 1184 |  | 7 day week No holidays | 2502108 |
| 1198 | 37000.37200.37900.38600.197400.736600 | 54th flr-Kitchen Platform | 11d | 2026-06-05 | 2026-06-16 | 1185, 1197 |  | 7 day week No holidays | 2502118 |
| 1199 | 37000.37200.37900.38600.197400.736700 | 54th flr-Toilet dado & flooring | 11d | 2026-01-12 | 2026-01-22 | 423, 1186 |  | 7 day week No holidays | 2502128 |
| 1200 | 37000.37200.37900.38600.197400.736800 | 54th flr-Fire sprinkler pipe | 11d | 2026-01-26 | 2026-02-05 | 1187, 1197 |  | 7 day week No holidays | 2502138 |
| 1201 | 37000.37200.37900.38600.197400.736900 | 54th flr-Flat flooring | 11d | 2026-02-22 | 2026-03-04 | 1188, 1199 |  | 7 day week No holidays | 2502148 |
| 1202 | 37000.37200.37900.38600.197400.737000 | 54th flr-Main door fixing & frame fixing | 11d | 2027-03-31 | 2027-04-11 | 1189, 1201 |  | 7 day week No holidays | 2502158 |
| 1203 | 37000.37200.37900.38600.197400.737100 | 54th flr-Window fixing | 11d | 2026-05-10 | 2026-05-20 | 1190, 1201 |  | 7 day week No holidays | 2502168 |
| 1204 | 37000.37200.37900.38600.197400.737200 | 54th flr-Railing Fixing | 11d | 2028-03-01 | 2028-03-12 | 1191, 1201 |  | 7 day week No holidays | 2502178 |
| 1205 | 37000.37200.37900.38600.197400.737300 | 54th flr-Internal painting - putty / primer application | 11d | 2027-05-31 | 2027-06-11 | 1192, 1201 |  | 7 day week No holidays | 2502188 |
| 1206 | 37000.37200.37900.38600.197400.737400 | 54th flr-Flat electrical wiring | 11d | 2027-10-29 | 2027-11-09 | 1193, 1202 |  | 7 day week No holidays | 2502198 |
| 1207 | 37000.37200.37900.38600.197400.737500 | 54th flr-Internal painting | 11d | 2027-11-09 | 2027-11-20 | 1194, 1206 |  | 7 day week No holidays | 2502208 |
| 1208 | 37000.37200.37900.38600.197400.737600 | 54th flr-Internal shutter fixing | 11d | 2028-06-18 | 2028-06-29 | 1195, 1205 |  | 7 day week No holidays | 2502218 |
| 1209 | 37000.37200.37900.38600.197800 | **55th Floor** | 901.25d | 2026-01-21 | 2028-07-10 |  | start no earlier than 2026-01-21 | 7 day week No holidays | 7285134 |
| 1210 | 37000.37200.37900.38600.197800.737700 | 55th flr-Gypsum Plaster | 14d | 2026-01-21 | 2026-02-03 | 425, 1197 |  | 7 day week No holidays | 2502228 |
| 1211 | 37000.37200.37900.38600.197800.737800 | 55th flr-Kitchen Platform | 11d | 2026-06-16 | 2026-06-27 | 1198, 1210 |  | 7 day week No holidays | 2502238 |
| 1212 | 37000.37200.37900.38600.197800.737900 | 55th flr-Toilet dado & flooring | 11d | 2026-01-23 | 2026-02-02 | 429, 1199 |  | 7 day week No holidays | 2502248 |
| 1213 | 37000.37200.37900.38600.197800.738000 | 55th flr-Fire sprinkler pipe | 11d | 2026-02-06 | 2026-02-16 | 1200, 1210 |  | 7 day week No holidays | 2502258 |
| 1214 | 37000.37200.37900.38600.197800.738100 | 55th flr-Flat flooring | 11d | 2026-03-05 | 2026-03-15 | 1201, 1212 |  | 7 day week No holidays | 2502268 |
| 1215 | 37000.37200.37900.38600.197800.738200 | 55th flr-Main door fixing & frame fixing | 11d | 2027-04-11 | 2027-04-22 | 1202, 1214 |  | 7 day week No holidays | 2502278 |
| 1216 | 37000.37200.37900.38600.197800.738300 | 55th flr-Window fixing | 11d | 2026-05-21 | 2026-05-31 | 1203, 1214 |  | 7 day week No holidays | 2502288 |
| 1217 | 37000.37200.37900.38600.197800.738400 | 55th flr-Railing Fixing | 11d | 2028-03-12 | 2028-03-23 | 1204, 1214 |  | 7 day week No holidays | 2502298 |
| 1218 | 37000.37200.37900.38600.197800.738500 | 55th flr-Internal painting - putty / primer application | 11d | 2027-06-11 | 2027-06-22 | 1205, 1214 |  | 7 day week No holidays | 2502308 |
| 1219 | 37000.37200.37900.38600.197800.738600 | 55th flr-Flat electrical wiring | 11d | 2027-11-09 | 2027-11-20 | 1206, 1215 |  | 7 day week No holidays | 2502318 |
| 1220 | 37000.37200.37900.38600.197800.738700 | 55th flr-Internal painting | 11d | 2027-11-20 | 2027-12-01 | 1207, 1219 |  | 7 day week No holidays | 2502328 |
| 1221 | 37000.37200.37900.38600.197800.738800 | 55th flr-Internal shutter fixing | 11d | 2028-06-29 | 2028-07-10 | 1208, 1218 |  | 7 day week No holidays | 2502338 |

| ID | WBS | Task | Duration | Start | Finish | Predecessors | Constraint | Calendar | Unique_Task_ID |
| --- | --- | --- | --- | --- | --- | --- | --- | --- | --- |
| 1222 | 37000.37200.37900.38600.198000 | **56th Floor** | 899.25d | 2026-02-03 | 2028-07-21 |  | start no earlier than 2026-02-03 | 7 day week No holidays | 7285194 |
| 1223 | 37000.37200.37900.38600.198000.738900 | 56th flr-Gypsum Plaster | 14d | 2026-02-04 | 2026-02-17 | 431, 1210 |  | 7 day week No holidays | 2502348 |
| 1224 | 37000.37200.37900.38600.198000.739000 | 56th flr-Kitchen Platform | 11d | 2026-06-27 | 2026-07-08 | 1211, 1223 |  | 7 day week No holidays | 2502358 |
| 1225 | 37000.37200.37900.38600.198000.739100 | 56th flr-Toilet dado & flooring | 11d | 2026-02-03 | 2026-02-13 | 435, 1212 |  | 7 day week No holidays | 2502368 |
| 1226 | 37000.37200.37900.38600.198000.739200 | 56th flr-Fire sprinkler pipe | 11d | 2026-02-18 | 2026-02-28 | 1213, 1223 |  | 7 day week No holidays | 2502378 |
| 1227 | 37000.37200.37900.38600.198000.739300 | 56th flr-Flat flooring | 11d | 2026-03-16 | 2026-03-26 | 1214, 1225 |  | 7 day week No holidays | 2502388 |
| 1228 | 37000.37200.37900.38600.198000.739400 | 56th flr-Main door fixing & frame fixing | 11d | 2027-04-22 | 2027-05-03 | 1215, 1227 |  | 7 day week No holidays | 2502398 |
| 1229 | 37000.37200.37900.38600.198000.739500 | 56th flr-Window fixing | 11d | 2026-06-01 | 2026-06-11 | 1216, 1227 |  | 7 day week No holidays | 2502408 |
| 1230 | 37000.37200.37900.38600.198000.739600 | 56th flr-Railing Fixing | 11d | 2028-03-23 | 2028-04-03 | 1217, 1227 |  | 7 day week No holidays | 2502418 |
| 1231 | 37000.37200.37900.38600.198000.739700 | 56th flr-Internal painting - putty / primer application | 11d | 2027-06-22 | 2027-07-03 | 1218, 1227 |  | 7 day week No holidays | 2502428 |
| 1232 | 37000.37200.37900.38600.198000.739800 | 56th flr-Flat electrical wiring | 11d | 2027-11-20 | 2027-12-01 | 1219, 1228 |  | 7 day week No holidays | 2502438 |
| 1233 | 37000.37200.37900.38600.198000.739900 | 56th flr-Internal painting | 11d | 2027-12-01 | 2027-12-12 | 1220, 1232 |  | 7 day week No holidays | 2502448 |
| 1234 | 37000.37200.37900.38600.198000.740000 | 56th flr-Internal shutter fixing | 11d | 2028-07-10 | 2028-07-21 | 1221, 1231 |  | 7 day week No holidays | 2502458 |
| 1235 | 37000.37200.37900.38600.198200 | **57th Floor** | 895.25d | 2026-02-18 | 2028-08-01 |  | start no earlier than 2026-02-18 | 7 day week No holidays | 7285224 |
| 1236 | 37000.37200.37900.38600.198200.740100 | 57th flr-Gypsum Plaster | 14d | 2026-02-18 | 2026-03-03 | 437, 1223 |  | 7 day week No holidays | 2502468 |
| 1237 | 37000.37200.37900.38600.198200.740200 | 57th flr-Kitchen Platform | 11d | 2026-07-08 | 2026-07-19 | 1224, 1236 |  | 7 day week No holidays | 2502478 |
| 1238 | 37000.37200.37900.38600.198200.740300 | 57th flr-Toilet dado & flooring | 11d | 2026-02-24 | 2026-03-06 | 441, 1225FS+10d |  | 7 day week No holidays | 2502488 |
| 1239 | 37000.37200.37900.38600.198200.740400 | 57th flr-Fire sprinkler pipe | 11d | 2026-03-04 | 2026-03-14 | 1226, 1236 |  | 7 day week No holidays | 2502498 |
| 1240 | 37000.37200.37900.38600.198200.740500 | 57th flr-Flat flooring | 11d | 2026-03-27 | 2026-04-06 | 1227, 1238 |  | 7 day week No holidays | 2502508 |
| 1241 | 37000.37200.37900.38600.198200.740600 | 57th flr-Main door fixing & frame fixing | 11d | 2027-05-03 | 2027-05-14 | 1228, 1240 |  | 7 day week No holidays | 2502518 |
| 1242 | 37000.37200.37900.38600.198200.740700 | 57th flr-Window fixing | 11d | 2026-06-12 | 2026-06-22 | 1229, 1240 |  | 7 day week No holidays | 2502528 |
| 1243 | 37000.37200.37900.38600.198200.740800 | 57th flr-Railing Fixing | 11d | 2028-04-03 | 2028-04-14 | 1230, 1240 |  | 7 day week No holidays | 2502538 |
| 1244 | 37000.37200.37900.38600.198200.740900 | 57th flr-Internal painting - putty / primer application | 11d | 2027-07-03 | 2027-07-14 | 1231, 1240 |  | 7 day week No holidays | 2502548 |
| 1245 | 37000.37200.37900.38600.198200.741000 | 57th flr-Flat electrical wiring | 11d | 2027-12-01 | 2027-12-12 | 1232, 1241 |  | 7 day week No holidays | 2502558 |
| 1246 | 37000.37200.37900.38600.198200.741100 | 57th flr-Internal painting | 11d | 2027-12-12 | 2027-12-23 | 1233, 1245 |  | 7 day week No holidays | 2502568 |
| 1247 | 37000.37200.37900.38600.198200.741200 | 57th flr-Internal shutter fixing | 11d | 2028-07-21 | 2028-08-01 | 1234, 1244 |  | 7 day week No holidays | 2502578 |

| ID | WBS | Task | Duration | Start | Finish | Predecessors | Constraint | Calendar | Unique_Task_ID |
| --- | --- | --- | --- | --- | --- | --- | --- | --- | --- |
| 1248 | 37000.37200.37900.38600.198400 | **58th Floor** | 869.25d | 2026-03-27 | 2028-08-12 |  | start no earlier than 2026-03-27 | 7 day week No holidays | 7285444 |
| 1249 | 37000.37200.37900.38600.198400.741300 | 58th flr-Gypsum Plaster | 20d | 2026-04-03 | 2026-04-22 | 443, 1236FS+30d |  | 7 day week No holidays | 2502588 |
| 1250 | 37000.37200.37900.38600.198400.741400 | 58th flr-Kitchen Platform | 11d | 2026-07-19 | 2026-07-30 | 1237, 1249 |  | 7 day week No holidays | 2502598 |
| 1251 | 37000.37200.37900.38600.198400.741500 | 58th flr-Toilet dado & flooring | 11d | 2026-03-27 | 2026-04-06 | 447, 1238FS+20d |  | 7 day week No holidays | 2502608 |
| 1252 | 37000.37200.37900.38600.198400.741600 | 58th flr-Fire sprinkler pipe | 9d | 2026-04-18 | 2026-04-26 | 1239FS-20d, 1249FS-5d |  | 7 day week No holidays | 2502618 |
| 1253 | 37000.37200.37900.38600.198400.741700 | 58th flr-Flat flooring | 11d | 2026-04-07 | 2026-04-17 | 1240, 1251 |  | 7 day week No holidays | 2502628 |
| 1254 | 37000.37200.37900.38600.198400.741800 | 58th flr-Main door fixing & frame fixing | 11d | 2027-05-14 | 2027-05-25 | 1241, 1253 |  | 7 day week No holidays | 2502638 |
| 1255 | 37000.37200.37900.38600.198400.741900 | 58th flr-Window fixing | 11d | 2026-06-23 | 2026-07-03 | 1242, 1253 |  | 7 day week No holidays | 2502648 |
| 1256 | 37000.37200.37900.38600.198400.742000 | 58th flr-Railing Fixing | 11d | 2028-04-14 | 2028-04-25 | 1243, 1253 |  | 7 day week No holidays | 2502658 |
| 1257 | 37000.37200.37900.38600.198400.742100 | 58th flr-Internal painting - putty / primer application | 11d | 2027-07-14 | 2027-07-25 | 1244, 1253 |  | 7 day week No holidays | 2502668 |
| 1258 | 37000.37200.37900.38600.198400.742200 | 58th flr-Flat electrical wiring | 11d | 2027-12-12 | 2027-12-23 | 1245, 1254 |  | 7 day week No holidays | 2502678 |
| 1259 | 37000.37200.37900.38600.198400.742300 | 58th flr-Internal painting | 11d | 2027-12-23 | 2028-01-03 | 1246, 1258 |  | 7 day week No holidays | 2502688 |
| 1260 | 37000.37200.37900.38600.198400.742400 | 58th flr-Internal shutter fixing | 11d | 2028-08-01 | 2028-08-12 | 1247, 1257 |  | 7 day week No holidays | 2502698 |
| 1261 | 37000.37200.37900.38600.198500 | **59th Floor** | 863.25d | 2026-04-13 | 2028-08-23 |  | start no earlier than 2026-04-13 | 7 day week No holidays | 7285454 |
| 1262 | 37000.37200.37900.38600.198500.742500 | 59th flr-Gypsum Plaster | 14d | 2026-04-13 | 2026-04-26 | 449FS-10d, 1249FS-10d |  | 7 day week No holidays | 2502708 |
| 1263 | 37000.37200.37900.38600.198500.742600 | 59th flr-Kitchen Platform | 11d | 2026-07-30 | 2026-08-10 | 1250, 1262 |  | 7 day week No holidays | 2502718 |
| 1264 | 37000.37200.37900.38600.198500.742700 | 59th flr-Toilet dado & flooring | 11d | 2026-04-24 | 2026-05-04 | 453, 1251 |  | 7 day week No holidays | 2502728 |
| 1265 | 37000.37200.37900.38600.198500.742800 | 59th flr-Fire sprinkler pipe | 9d | 2026-04-25 | 2026-05-03 | 1252FS-30d, 1262FS-2d |  | 7 day week No holidays | 2502738 |
| 1266 | 37000.37200.37900.38600.198500.742900 | 59th flr-Flat flooring | 11d | 2026-05-05 | 2026-05-15 | 1253, 1264 |  | 7 day week No holidays | 2502748 |
| 1267 | 37000.37200.37900.38600.198500.743000 | 59th flr-Main door fixing & frame fixing | 11d | 2027-05-25 | 2027-06-05 | 1254, 1266 |  | 7 day week No holidays | 2502758 |
| 1268 | 37000.37200.37900.38600.198500.743100 | 59th flr-Window fixing | 11d | 2026-07-04 | 2026-07-14 | 1255, 1266 |  | 7 day week No holidays | 2502768 |
| 1269 | 37000.37200.37900.38600.198500.743200 | 59th flr-Railing Fixing | 11d | 2028-04-25 | 2028-05-06 | 1256, 1266 |  | 7 day week No holidays | 2502778 |
| 1270 | 37000.37200.37900.38600.198500.743300 | 59th flr-Internal painting - putty / primer application | 11d | 2027-07-25 | 2027-08-05 | 1257, 1266 |  | 7 day week No holidays | 2502788 |
| 1271 | 37000.37200.37900.38600.198500.743400 | 59th flr-Flat electrical wiring | 11d | 2027-12-23 | 2028-01-03 | 1258, 1267 |  | 7 day week No holidays | 2502798 |
| 1272 | 37000.37200.37900.38600.198500.743500 | 59th flr-Internal painting | 11d | 2028-01-03 | 2028-01-14 | 1259, 1271 |  | 7 day week No holidays | 2502808 |
| 1273 | 37000.37200.37900.38600.198500.743600 | 59th flr-Internal shutter fixing | 11d | 2028-08-12 | 2028-08-23 | 1260, 1270 |  | 7 day week No holidays | 2502818 |

| ID | WBS | Task | Duration | Start | Finish | Predecessors | Constraint | Calendar | Unique_Task_ID |
| --- | --- | --- | --- | --- | --- | --- | --- | --- | --- |
| 1274 | 37000.37200.37900.38600.198600 | **60th Floor** | 850.25d | 2026-05-07 | 2028-09-03 |  | start no earlier than 2026-05-07 | 7 day week No holidays | 7285464 |
| 1275 | 37000.37200.37900.38600.198600.743700 | 60th flr-Gypsum Plaster | 11d | 2026-05-07 | 2026-05-17 | 455, 467, 1262 |  | 7 day week No holidays | 2502828 |
| 1276 | 37000.37200.37900.38600.198600.743800 | 60th flr-Kitchen Platform | 11d | 2026-08-10 | 2026-08-21 | 1263, 1275 |  | 7 day week No holidays | 2502838 |
| 1277 | 37000.37200.37900.38600.198600.743900 | 60th flr-Toilet dado & flooring | 11d | 2026-05-24 | 2026-06-03 | 459, 1264 |  | 7 day week No holidays | 2502848 |
| 1278 | 37000.37200.37900.38600.198600.744000 | 60th flr-Fire sprinkler pipe | 11d | 2026-05-18 | 2026-05-28 | 1265, 1275 |  | 7 day week No holidays | 2502858 |
| 1279 | 37000.37200.37900.38600.198600.744100 | 60th flr-Flat flooring | 11d | 2026-06-04 | 2026-06-14 | 1266, 1277 |  | 7 day week No holidays | 2502868 |
| 1280 | 37000.37200.37900.38600.198600.744200 | 60th flr-Main door fixing & frame fixing | 11d | 2027-06-05 | 2027-06-16 | 1267, 1279 |  | 7 day week No holidays | 2502878 |
| 1281 | 37000.37200.37900.38600.198600.744300 | 60th flr-Window fixing | 11d | 2026-07-15 | 2026-07-25 | 1268, 1279 |  | 7 day week No holidays | 2502888 |
| 1282 | 37000.37200.37900.38600.198600.744400 | 60th flr-Railing Fixing | 11d | 2028-05-06 | 2028-05-17 | 1269, 1279 |  | 7 day week No holidays | 2502898 |
| 1283 | 37000.37200.37900.38600.198600.744500 | 60th flr-Internal painting - putty / primer application | 11d | 2027-08-05 | 2027-08-16 | 1270, 1279 |  | 7 day week No holidays | 2502908 |
| 1284 | 37000.37200.37900.38600.198600.744600 | 60th flr-Flat electrical wiring | 11d | 2028-01-03 | 2028-01-14 | 1271, 1280 |  | 7 day week No holidays | 2502918 |
| 1285 | 37000.37200.37900.38600.198600.744700 | 60th flr-Internal painting | 11d | 2028-01-14 | 2028-01-25 | 1272, 1284 |  | 7 day week No holidays | 2502928 |
| 1286 | 37000.37200.37900.38600.198600.744800 | 60th flr-Internal shutter fixing | 11d | 2028-08-23 | 2028-09-03 | 1273, 1283 |  | 7 day week No holidays | 2502938 |
| 1287 | 37000.37200.37900.38600.198700 | **61st Floor** | 845.25d | 2026-05-23 | 2028-09-14 |  | start no earlier than 2026-05-23 | 7 day week No holidays | 7285474 |
| 1288 | 37000.37200.37900.38600.198700.744900 | 61st flr-Gypsum Plaster | 11d | 2026-05-23 | 2026-06-02 | 461, 473, 1275 |  | 7 day week No holidays | 2502948 |
| 1289 | 37000.37200.37900.38600.198700.745000 | 61st flr-Kitchen Platform | 11d | 2026-08-21 | 2026-09-01 | 1276, 1288 |  | 7 day week No holidays | 2502958 |
| 1290 | 37000.37200.37900.38600.198700.745100 | 61st flr-Toilet dado & flooring | 11d | 2026-06-13 | 2026-06-23 | 465, 1277 |  | 7 day week No holidays | 2502968 |
| 1291 | 37000.37200.37900.38600.198700.745200 | 61st flr-Fire sprinkler pipe | 11d | 2026-06-03 | 2026-06-13 | 1278, 1288 |  | 7 day week No holidays | 2502978 |
| 1292 | 37000.37200.37900.38600.198700.745300 | 61st flr-Flat flooring | 11d | 2026-06-24 | 2026-07-04 | 1279, 1290 |  | 7 day week No holidays | 2502988 |
| 1293 | 37000.37200.37900.38600.198700.745400 | 61st flr-Main door fixing & frame fixing | 11d | 2027-06-16 | 2027-06-27 | 1280, 1292 |  | 7 day week No holidays | 2502998 |
| 1294 | 37000.37200.37900.38600.198700.745500 | 61st flr-Window fixing | 11d | 2026-07-26 | 2026-08-05 | 1281, 1292 |  | 7 day week No holidays | 2503008 |
| 1295 | 37000.37200.37900.38600.198700.745600 | 61st flr-Railing Fixing | 11d | 2028-05-17 | 2028-05-28 | 1282, 1292 |  | 7 day week No holidays | 2503018 |
| 1296 | 37000.37200.37900.38600.198700.745700 | 61st flr-Internal painting - putty / primer application | 11d | 2027-08-16 | 2027-08-27 | 1283, 1292 |  | 7 day week No holidays | 2503028 |
| 1297 | 37000.37200.37900.38600.198700.745800 | 61st flr-Flat electrical wiring | 11d | 2028-01-14 | 2028-01-25 | 1284, 1293 |  | 7 day week No holidays | 2503038 |
| 1298 | 37000.37200.37900.38600.198700.745900 | 61st flr-Internal painting | 11d | 2028-01-25 | 2028-02-05 | 1285, 1297 |  | 7 day week No holidays | 2503048 |
| 1299 | 37000.37200.37900.38600.198700.746000 | 61st flr-Internal shutter fixing | 11d | 2028-09-03 | 2028-09-14 | 1286, 1296 |  | 7 day week No holidays | 2503058 |

| ID | WBS | Task | Duration | Start | Finish | Predecessors | Constraint | Calendar | Unique_Task_ID |
| --- | --- | --- | --- | --- | --- | --- | --- | --- | --- |
| 1300 | 37000.37200.37900.38600.198800 | **62nd Floor** | 840.25d | 2026-06-08 | 2028-09-25 |  | start no earlier than 2026-06-08 | 7 day week No holidays | 7285504 |
| 1301 | 37000.37200.37900.38600.198800.746100 | 62nd flr-Gypsum Plaster | 11d | 2026-06-08 | 2026-06-18 | 467, 479, 1288 |  | 7 day week No holidays | 2503068 |
| 1302 | 37000.37200.37900.38600.198800.746200 | 62nd flr-Kitchen Platform | 11d | 2026-09-01 | 2026-09-12 | 1289, 1301 |  | 7 day week No holidays | 2503078 |
| 1303 | 37000.37200.37900.38600.198800.746300 | 62nd flr-Toilet dado & flooring | 11d | 2026-07-03 | 2026-07-13 | 471, 1290 |  | 7 day week No holidays | 2503088 |
| 1304 | 37000.37200.37900.38600.198800.746400 | 62nd flr-Fire sprinkler pipe | 11d | 2026-06-19 | 2026-06-29 | 1291, 1301 |  | 7 day week No holidays | 2503098 |
| 1305 | 37000.37200.37900.38600.198800.746500 | 62nd flr-Flat flooring | 11d | 2026-07-14 | 2026-07-24 | 1292, 1303 |  | 7 day week No holidays | 2503108 |
| 1306 | 37000.37200.37900.38600.198800.746600 | 62nd flr-Main door fixing & frame fixing | 11d | 2027-06-27 | 2027-07-08 | 1293, 1305 |  | 7 day week No holidays | 2503118 |
| 1307 | 37000.37200.37900.38600.198800.746700 | 62nd flr-Window fixing | 11d | 2026-08-06 | 2026-08-16 | 1294, 1305 |  | 7 day week No holidays | 2503128 |
| 1308 | 37000.37200.37900.38600.198800.746800 | 62nd flr-Railing Fixing | 11d | 2028-05-28 | 2028-06-08 | 1295, 1305 |  | 7 day week No holidays | 2503138 |
| 1309 | 37000.37200.37900.38600.198800.746900 | 62nd flr-Internal painting - putty / primer application | 11d | 2027-08-27 | 2027-09-07 | 1296, 1305 |  | 7 day week No holidays | 2503148 |
| 1310 | 37000.37200.37900.38600.198800.747000 | 62nd flr-Flat electrical wiring | 11d | 2028-01-25 | 2028-02-05 | 1297, 1306 |  | 7 day week No holidays | 2503158 |
| 1311 | 37000.37200.37900.38600.198800.747100 | 62nd flr-Internal painting | 11d | 2028-02-05 | 2028-02-16 | 1298, 1310 |  | 7 day week No holidays | 2503168 |
| 1312 | 37000.37200.37900.38600.198800.747200 | 62nd flr-Internal shutter fixing | 11d | 2028-09-14 | 2028-09-25 | 1299, 1309 |  | 7 day week No holidays | 2503178 |
| 1313 | 37000.37200.37900.38600.198900 | **63rd Floor** | 835.25d | 2026-06-24 | 2028-10-06 |  | start no earlier than 2026-06-24 | 7 day week No holidays | 7285514 |
| 1314 | 37000.37200.37900.38600.198900.747300 | 63rd flr-Gypsum Plaster | 11d | 2026-06-24 | 2026-07-04 | 473, 485, 1301 |  | 7 day week No holidays | 2503188 |
| 1315 | 37000.37200.37900.38600.198900.747400 | 63rd flr-Kitchen Platform | 11d | 2026-09-12 | 2026-09-23 | 1302, 1314 |  | 7 day week No holidays | 2503198 |
| 1316 | 37000.37200.37900.38600.198900.747500 | 63rd flr-Toilet dado & flooring | 11d | 2026-08-02 | 2026-08-12 | 477, 1303 |  | 7 day week No holidays | 2503208 |
| 1317 | 37000.37200.37900.38600.198900.747600 | 63rd flr-Fire sprinkler pipe | 11d | 2026-07-05 | 2026-07-15 | 1304, 1314 |  | 7 day week No holidays | 2503218 |
| 1318 | 37000.37200.37900.38600.198900.747700 | 63rd flr-Flat flooring | 11d | 2026-08-13 | 2026-08-23 | 1305, 1316 |  | 7 day week No holidays | 2503228 |
| 1319 | 37000.37200.37900.38600.198900.747800 | 63rd flr-Main door fixing & frame fixing | 11d | 2027-07-08 | 2027-07-19 | 1306, 1318 |  | 7 day week No holidays | 2503238 |
| 1320 | 37000.37200.37900.38600.198900.747900 | 63rd flr-Window fixing | 11d | 2026-08-24 | 2026-09-03 | 1307, 1318 |  | 7 day week No holidays | 2503248 |
| 1321 | 37000.37200.37900.38600.198900.748000 | 63rd flr-Railing Fixing | 11d | 2028-06-08 | 2028-06-19 | 1308, 1318 |  | 7 day week No holidays | 2503258 |
| 1322 | 37000.37200.37900.38600.198900.748100 | 63rd flr-Internal painting - putty / primer application | 11d | 2027-09-07 | 2027-09-18 | 1309, 1318 |  | 7 day week No holidays | 2503268 |
| 1323 | 37000.37200.37900.38600.198900.748200 | 63rd flr-Flat electrical wiring | 11d | 2028-02-05 | 2028-02-16 | 1310, 1319 |  | 7 day week No holidays | 2503278 |
| 1324 | 37000.37200.37900.38600.198900.748300 | 63rd flr-Internal painting | 11d | 2028-02-16 | 2028-02-27 | 1311, 1323 |  | 7 day week No holidays | 2503288 |
| 1325 | 37000.37200.37900.38600.198900.748400 | 63rd flr-Internal shutter fixing | 11d | 2028-09-25 | 2028-10-06 | 1312, 1322 |  | 7 day week No holidays | 2503298 |

| ID | WBS | Task | Duration | Start | Finish | Predecessors | Constraint | Calendar | Unique_Task_ID |
| --- | --- | --- | --- | --- | --- | --- | --- | --- | --- |
| 1326 | 37000.37200.37900.38600.199000 | **64th Floor** | 830.25d | 2026-07-10 | 2028-10-17 |  | start no earlier than 2026-07-10 | 7 day week No holidays | 7285524 |
| 1327 | 37000.37200.37900.38600.199000.748500 | 64th flr-Gypsum Plaster | 11d | 2026-07-10 | 2026-07-20 | 479, 491, 1314 |  | 7 day week No holidays | 2503308 |
| 1328 | 37000.37200.37900.38600.199000.748600 | 64th flr-Kitchen Platform | 11d | 2026-09-23 | 2026-10-04 | 1315, 1327 |  | 7 day week No holidays | 2503318 |
| 1329 | 37000.37200.37900.38600.199000.748700 | 64th flr-Toilet dado & flooring | 11d | 2026-12-30 | 2027-01-09 | 483, 1316 |  | 7 day week No holidays | 2503328 |
| 1330 | 37000.37200.37900.38600.199000.748800 | 64th flr-Fire sprinkler pipe | 11d | 2026-07-21 | 2026-07-31 | 1317, 1327 |  | 7 day week No holidays | 2503338 |
| 1331 | 37000.37200.37900.38600.199000.748900 | 64th flr-Flat flooring | 11d | 2027-01-10 | 2027-01-20 | 1318, 1329 |  | 7 day week No holidays | 2503348 |
| 1332 | 37000.37200.37900.38600.199000.749000 | 64th flr-Main door fixing & frame fixing | 11d | 2027-07-19 | 2027-07-30 | 1319, 1331 |  | 7 day week No holidays | 2503358 |
| 1333 | 37000.37200.37900.38600.199000.749100 | 64th flr-Window fixing | 11d | 2027-01-21 | 2027-01-31 | 1320, 1331 |  | 7 day week No holidays | 2503368 |
| 1334 | 37000.37200.37900.38600.199000.749200 | 64th flr-Railing Fixing | 11d | 2028-06-19 | 2028-06-30 | 1321, 1331 |  | 7 day week No holidays | 2503378 |
| 1335 | 37000.37200.37900.38600.199000.749300 | 64th flr-Internal painting - putty / primer application | 11d | 2027-09-18 | 2027-09-29 | 1322, 1331 |  | 7 day week No holidays | 2503388 |
| 1336 | 37000.37200.37900.38600.199000.749400 | 64th flr-Flat electrical wiring | 11d | 2028-02-16 | 2028-02-27 | 1323, 1332 |  | 7 day week No holidays | 2503398 |
| 1337 | 37000.37200.37900.38600.199000.749500 | 64th flr-Internal painting | 11d | 2028-02-27 | 2028-03-09 | 1324, 1336 |  | 7 day week No holidays | 2503408 |
| 1338 | 37000.37200.37900.38600.199000.749600 | 64th flr-Internal shutter fixing | 11d | 2028-10-06 | 2028-10-17 | 1325, 1335 |  | 7 day week No holidays | 2503418 |
| 1339 | 37000.37200.37900.38600.199300 | **65th Floor** | 825.25d | 2026-07-26 | 2028-10-28 |  | start no earlier than 2026-07-26 | 7 day week No holidays | 7285534 |
| 1340 | 37000.37200.37900.38600.199300.749700 | 65th flr-Gypsum Plaster | 11d | 2026-07-26 | 2026-08-05 | 485, 497, 1327 |  | 7 day week No holidays | 2503428 |
| 1341 | 37000.37200.37900.38600.199300.749800 | 65th flr-Kitchen Platform | 11d | 2026-10-04 | 2026-10-15 | 1328, 1340 |  | 7 day week No holidays | 2503438 |
| 1342 | 37000.37200.37900.38600.199300.749900 | 65th flr-Toilet dado & flooring | 11d | 2027-01-10 | 2027-01-20 | 489, 1329 |  | 7 day week No holidays | 2503448 |
| 1343 | 37000.37200.37900.38600.199300.750000 | 65th flr-Fire sprinkler pipe | 11d | 2026-08-06 | 2026-08-16 | 1330, 1340 |  | 7 day week No holidays | 2503458 |
| 1344 | 37000.37200.37900.38600.199300.750100 | 65th flr-Flat flooring | 11d | 2027-01-21 | 2027-01-31 | 1331, 1342 |  | 7 day week No holidays | 2503468 |
| 1345 | 37000.37200.37900.38600.199300.750200 | 65th flr-Main door fixing & frame fixing | 11d | 2027-07-30 | 2027-08-10 | 1332, 1344 |  | 7 day week No holidays | 2503478 |
| 1346 | 37000.37200.37900.38600.199300.750300 | 65th flr-Window fixing | 11d | 2027-02-01 | 2027-02-11 | 1333, 1344 |  | 7 day week No holidays | 2503488 |
| 1347 | 37000.37200.37900.38600.199300.750400 | 65th flr-Railing Fixing | 11d | 2028-06-30 | 2028-07-11 | 1334, 1344 |  | 7 day week No holidays | 2503498 |
| 1348 | 37000.37200.37900.38600.199300.750500 | 65th flr-Internal painting - putty / primer application | 11d | 2027-09-29 | 2027-10-10 | 1335, 1344 |  | 7 day week No holidays | 2503508 |
| 1349 | 37000.37200.37900.38600.199300.750600 | 65th flr-Flat electrical wiring | 11d | 2028-02-27 | 2028-03-09 | 1336, 1345 |  | 7 day week No holidays | 2503518 |
| 1350 | 37000.37200.37900.38600.199300.750700 | 65th flr-Internal painting | 11d | 2028-03-09 | 2028-03-20 | 1337, 1349 |  | 7 day week No holidays | 2503528 |
| 1351 | 37000.37200.37900.38600.199300.750800 | 65th flr-Internal shutter fixing | 11d | 2028-10-17 | 2028-10-28 | 1338, 1348 |  | 7 day week No holidays | 2503538 |

| ID | WBS | Task | Duration | Start | Finish | Predecessors | Constraint | Calendar | Unique_Task_ID |
| --- | --- | --- | --- | --- | --- | --- | --- | --- | --- |
| 1352 | 37000.37200.37900.38600.199400 | **66th Floor** | 826.25d | 2026-08-06 | 2028-11-09 |  | start no earlier than 2026-08-06 | 7 day week No holidays | 7285544 |
| 1353 | 37000.37200.37900.38600.199400.750900 | 66th flr-Gypsum Plaster | 14d | 2026-08-06 | 2026-08-19 | 491, 503, 1340 |  | 7 day week No holidays | 2503548 |
| 1354 | 37000.37200.37900.38600.199400.751000 | 66th flr-Kitchen Platform | 8d | 2026-10-15 | 2026-10-23 | 1341, 1353 |  | 7 day week No holidays | 2503558 |
| 1355 | 37000.37200.37900.38600.199400.751100 | 66th flr-Toilet dado & flooring | 14d | 2027-01-21 | 2027-02-03 | 495, 1342 |  | 7 day week No holidays | 2503568 |
| 1356 | 37000.37200.37900.38600.199400.751200 | 66th flr-Fire sprinkler pipe | 12d | 2026-08-20 | 2026-08-31 | 1343, 1353 |  | 7 day week No holidays | 2503578 |
| 1357 | 37000.37200.37900.38600.199400.751300 | 66th flr-Flat flooring | 14d | 2027-02-04 | 2027-02-17 | 1344, 1355 |  | 7 day week No holidays | 2503588 |
| 1358 | 37000.37200.37900.38600.199400.751400 | 66th flr-Main door fixing & frame fixing | 14d | 2027-08-10 | 2027-08-24 | 1345, 1357 |  | 7 day week No holidays | 2503598 |
| 1359 | 37000.37200.37900.38600.199400.751500 | 66th flr-Window fixing | 14d | 2027-02-18 | 2027-03-03 | 1346, 1357 |  | 7 day week No holidays | 2503608 |
| 1360 | 37000.37200.37900.38600.199400.751600 | 66th flr-Railing Fixing | 14d | 2028-07-11 | 2028-07-25 | 1347, 1357 |  | 7 day week No holidays | 2503618 |
| 1361 | 37000.37200.37900.38600.199400.751700 | 66th flr-Internal painting - putty / primer application | 14d | 2027-10-10 | 2027-10-24 | 1348, 1357 |  | 7 day week No holidays | 2503628 |
| 1362 | 37000.37200.37900.38600.199400.751800 | 66th flr-Flat electrical wiring | 12d | 2028-03-09 | 2028-03-21 | 1349, 1358 |  | 7 day week No holidays | 2503638 |
| 1363 | 37000.37200.37900.38600.199400.751900 | 66th flr-Internal painting | 10d | 2028-03-21 | 2028-03-31 | 1350, 1362 |  | 7 day week No holidays | 2503648 |
| 1364 | 37000.37200.37900.38600.199400.752000 | 66th flr-Internal shutter fixing | 12d | 2028-10-28 | 2028-11-09 | 1351, 1361 |  | 7 day week No holidays | 2503658 |
| 1365 | 37000.37200.37900.38600.199900 | **67th Floor** | 824.25d | 2026-08-20 | 2028-11-21 |  | start no earlier than 2026-08-20 | 7 day week No holidays | 7285924 |
| 1366 | 37000.37200.37900.38600.199900.752100 | 67th flr-Gypsum Plaster | 14d | 2026-08-20 | 2026-09-02 | 497, 509, 1353 |  | 7 day week No holidays | 2503668 |
| 1367 | 37000.37200.37900.38600.199900.752200 | 67th flr-Kitchen Platform | 8d | 2026-10-23 | 2026-10-31 | 1354, 1366 |  | 7 day week No holidays | 2503678 |
| 1368 | 37000.37200.37900.38600.199900.752300 | 67th flr-Toilet dado & flooring | 14d | 2027-02-04 | 2027-02-17 | 501, 1355 |  | 7 day week No holidays | 2503688 |
| 1369 | 37000.37200.37900.38600.199900.752400 | 67th flr-Fire sprinkler pipe | 12d | 2026-09-03 | 2026-09-14 | 1356, 1366 |  | 7 day week No holidays | 2503698 |
| 1370 | 37000.37200.37900.38600.199900.752500 | 67th flr-Flat flooring | 14d | 2027-02-18 | 2027-03-03 | 1357, 1368 |  | 7 day week No holidays | 2503708 |
| 1371 | 37000.37200.37900.38600.199900.752600 | 67th flr-Main door fixing & frame fixing | 14d | 2027-08-24 | 2027-09-07 | 1358, 1370 |  | 7 day week No holidays | 2503718 |
| 1372 | 37000.37200.37900.38600.199900.752700 | 67th flr-Window fixing | 14d | 2027-03-04 | 2027-03-17 | 1359, 1370 |  | 7 day week No holidays | 2503728 |
| 1373 | 37000.37200.37900.38600.199900.752800 | 67th flr-Railing Fixing | 14d | 2028-07-25 | 2028-08-08 | 1360, 1370 |  | 7 day week No holidays | 2503738 |
| 1374 | 37000.37200.37900.38600.199900.752900 | 67th flr-Internal painting - putty / primer application | 14d | 2027-10-24 | 2027-11-07 | 1361, 1370 |  | 7 day week No holidays | 2503748 |
| 1375 | 37000.37200.37900.38600.199900.753000 | 67th flr-Flat electrical wiring | 12d | 2028-03-21 | 2028-04-02 | 1362, 1371 |  | 7 day week No holidays | 2503758 |
| 1376 | 37000.37200.37900.38600.199900.753100 | 67th flr-Internal painting | 10d | 2028-04-02 | 2028-04-12 | 1363, 1375 |  | 7 day week No holidays | 2503768 |
| 1377 | 37000.37200.37900.38600.199900.753200 | 67th flr-Internal shutter fixing | 12d | 2028-11-09 | 2028-11-21 | 1364, 1374 |  | 7 day week No holidays | 2503778 |

| ID | WBS | Task | Duration | Start | Finish | Predecessors | Constraint | Calendar | Unique_Task_ID |
| --- | --- | --- | --- | --- | --- | --- | --- | --- | --- |
| 1378 | 37000.37200.37900.38600.200100 | **68th Floor** | 822.25d | 2026-09-03 | 2028-12-03 |  | start no earlier than 2026-09-03 | 7 day week No holidays | 7285564 |
| 1379 | 37000.37200.37900.38600.200100.753300 | 68th flr-Gypsum Plaster | 14d | 2026-09-03 | 2026-09-16 | 503, 515, 1366 |  | 7 day week No holidays | 2503788 |
| 1380 | 37000.37200.37900.38600.200100.753400 | 68th flr-Kitchen Platform | 8d | 2026-10-31 | 2026-11-08 | 1367, 1379 |  | 7 day week No holidays | 2503798 |
| 1381 | 37000.37200.37900.38600.200100.753500 | 68th flr-Toilet dado & flooring | 14d | 2027-02-18 | 2027-03-03 | 507, 1368 |  | 7 day week No holidays | 2503808 |
| 1382 | 37000.37200.37900.38600.200100.753600 | 68th flr-Fire sprinkler pipe | 12d | 2026-09-17 | 2026-09-28 | 1369, 1379 |  | 7 day week No holidays | 2503818 |
| 1383 | 37000.37200.37900.38600.200100.753700 | 68th flr-Flat flooring | 14d | 2027-03-04 | 2027-03-17 | 1370, 1381 |  | 7 day week No holidays | 2503828 |
| 1384 | 37000.37200.37900.38600.200100.753800 | 68th flr-Main door fixing & frame fixing | 14d | 2027-09-07 | 2027-09-21 | 1371, 1383 |  | 7 day week No holidays | 2503838 |
| 1385 | 37000.37200.37900.38600.200100.753900 | 68th flr-Window fixing | 14d | 2027-03-18 | 2027-03-31 | 1372, 1383 |  | 7 day week No holidays | 2503848 |
| 1386 | 37000.37200.37900.38600.200100.754000 | 68th flr-Railing Fixing | 14d | 2028-08-08 | 2028-08-22 | 1373, 1383 |  | 7 day week No holidays | 2503858 |
| 1387 | 37000.37200.37900.38600.200100.754100 | 68th flr-Internal painting - putty / primer application | 14d | 2027-11-07 | 2027-11-21 | 1374, 1383 |  | 7 day week No holidays | 2503868 |
| 1388 | 37000.37200.37900.38600.200100.754200 | 68th flr-Flat electrical wiring | 12d | 2028-04-02 | 2028-04-14 | 1375, 1384 |  | 7 day week No holidays | 2503878 |
| 1389 | 37000.37200.37900.38600.200100.754300 | 68th flr-Internal painting | 10d | 2028-04-14 | 2028-04-24 | 1376, 1388 |  | 7 day week No holidays | 2503888 |
| 1390 | 37000.37200.37900.38600.200100.754400 | 68th flr-Internal shutter fixing | 12d | 2028-11-21 | 2028-12-03 | 1377, 1387 |  | 7 day week No holidays | 2503898 |
| 1391 | 37000.37200.37900.38600.200200 | **69th Floor** | 820.25d | 2026-09-17 | 2028-12-15 |  | start no earlier than 2026-09-17 | 7 day week No holidays | 7285574 |
| 1392 | 37000.37200.37900.38600.200200.754500 | 69th flr-Gypsum Plaster | 14d | 2026-09-17 | 2026-09-30 | 509, 521, 1379 |  | 7 day week No holidays | 2503908 |
| 1393 | 37000.37200.37900.38600.200200.754600 | 69th flr-Kitchen Platform | 8d | 2026-11-08 | 2026-11-16 | 1380, 1392 |  | 7 day week No holidays | 2503918 |
| 1394 | 37000.37200.37900.38600.200200.754700 | 69th flr-Toilet dado & flooring | 14d | 2027-03-04 | 2027-03-17 | 513, 1381 |  | 7 day week No holidays | 2503928 |
| 1395 | 37000.37200.37900.38600.200200.754800 | 69th flr-Fire sprinkler pipe | 12d | 2026-10-01 | 2026-10-12 | 1382, 1392 |  | 7 day week No holidays | 2503938 |
| 1396 | 37000.37200.37900.38600.200200.754900 | 69th flr-Flat flooring | 14d | 2027-03-18 | 2027-03-31 | 1383, 1394 |  | 7 day week No holidays | 2503948 |
| 1397 | 37000.37200.37900.38600.200200.755000 | 69th flr-Main door fixing & frame fixing | 14d | 2027-09-21 | 2027-10-05 | 1384, 1396 |  | 7 day week No holidays | 2503958 |
| 1398 | 37000.37200.37900.38600.200200.755100 | 69th flr-Window fixing | 14d | 2027-04-01 | 2027-04-14 | 1385, 1396 |  | 7 day week No holidays | 2503968 |
| 1399 | 37000.37200.37900.38600.200200.755200 | 69th flr-Railing Fixing | 14d | 2028-08-22 | 2028-09-05 | 1386, 1396 |  | 7 day week No holidays | 2503978 |
| 1400 | 37000.37200.37900.38600.200200.755300 | 69th flr-Internal painting - putty / primer application | 14d | 2027-11-21 | 2027-12-05 | 1387, 1396 |  | 7 day week No holidays | 2503988 |
| 1401 | 37000.37200.37900.38600.200200.755400 | 69th flr-Flat electrical wiring | 12d | 2028-04-14 | 2028-04-26 | 1388, 1397 |  | 7 day week No holidays | 2503998 |
| 1402 | 37000.37200.37900.38600.200200.755500 | 69th flr-Internal painting | 10d | 2028-04-26 | 2028-05-06 | 1389, 1401 |  | 7 day week No holidays | 2504008 |
| 1403 | 37000.37200.37900.38600.200200.755600 | 69th flr-Internal shutter fixing | 12d | 2028-12-03 | 2028-12-15 | 1390, 1400 |  | 7 day week No holidays | 2504018 |

| ID | WBS | Task | Duration | Start | Finish | Predecessors | Constraint | Calendar | Unique_Task_ID |
| --- | --- | --- | --- | --- | --- | --- | --- | --- | --- |
| 1404 | 37000.37200.37900.38600.200400 | **70th Floor** | 818.25d | 2026-10-01 | 2028-12-27 |  | start no earlier than 2026-10-01 | 7 day week No holidays | 7285584 |
| 1405 | 37000.37200.37900.38600.200400.755700 | 70th flr-Gypsum Plaster | 14d | 2026-10-01 | 2026-10-14 | 515, 527, 1392 |  | 7 day week No holidays | 2504028 |
| 1406 | 37000.37200.37900.38600.200400.755800 | 70th flr-Kitchen Platform | 8d | 2026-11-16 | 2026-11-24 | 1393, 1405 |  | 7 day week No holidays | 2504038 |
| 1407 | 37000.37200.37900.38600.200400.755900 | 70th flr-Toilet dado & flooring | 14d | 2027-03-18 | 2027-03-31 | 519, 1394 |  | 7 day week No holidays | 2504048 |
| 1408 | 37000.37200.37900.38600.200400.756000 | 70th flr-Fire sprinkler pipe | 12d | 2026-10-15 | 2026-10-26 | 1395, 1405 |  | 7 day week No holidays | 2504058 |
| 1409 | 37000.37200.37900.38600.200400.756100 | 70th flr-Flat flooring | 14d | 2027-04-01 | 2027-04-14 | 1396, 1407 |  | 7 day week No holidays | 2504068 |
| 1410 | 37000.37200.37900.38600.200400.756200 | 70th flr-Main door fixing & frame fixing | 14d | 2027-10-05 | 2027-10-19 | 1397, 1409 |  | 7 day week No holidays | 2504078 |
| 1411 | 37000.37200.37900.38600.200400.756300 | 70th flr-Window fixing | 14d | 2027-04-15 | 2027-04-28 | 1398, 1409 |  | 7 day week No holidays | 2504088 |
| 1412 | 37000.37200.37900.38600.200400.756400 | 70th flr-Railing Fixing | 14d | 2028-09-05 | 2028-09-19 | 1399, 1409 |  | 7 day week No holidays | 2504098 |
| 1413 | 37000.37200.37900.38600.200400.756500 | 70th flr-Internal painting - putty / primer application | 14d | 2027-12-05 | 2027-12-19 | 1400, 1409 |  | 7 day week No holidays | 2504108 |
| 1414 | 37000.37200.37900.38600.200400.756600 | 70th flr-Flat electrical wiring | 12d | 2028-04-26 | 2028-05-08 | 1401, 1410 |  | 7 day week No holidays | 2504118 |
| 1415 | 37000.37200.37900.38600.200400.756700 | 70th flr-Internal painting | 10d | 2028-05-08 | 2028-05-18 | 1402, 1414 |  | 7 day week No holidays | 2504128 |
| 1416 | 37000.37200.37900.38600.200400.756800 | 70th flr-Internal shutter fixing | 12d | 2028-12-15 | 2028-12-27 | 1403, 1413 |  | 7 day week No holidays | 2504138 |
| 1417 | 37000.37200.37900.38600.200600 | **71st Floor** | 816.25d | 2026-10-15 | 2029-01-08 |  | start no earlier than 2026-10-15 | 7 day week No holidays | 7285594 |
| 1418 | 37000.37200.37900.38600.200600.756900 | 71st flr-Gypsum Plaster | 14d | 2026-10-15 | 2026-10-28 | 521, 1405 |  | 7 day week No holidays | 2504148 |
| 1419 | 37000.37200.37900.38600.200600.757000 | 71st flr-Kitchen Platform | 8d | 2026-11-24 | 2026-12-02 | 1406, 1418 |  | 7 day week No holidays | 2504158 |
| 1420 | 37000.37200.37900.38600.200600.757100 | 71st flr-Toilet dado & flooring | 14d | 2027-04-01 | 2027-04-14 | 525, 1407 |  | 7 day week No holidays | 2504168 |
| 1421 | 37000.37200.37900.38600.200600.757200 | 71st flr-Fire sprinkler pipe | 12d | 2026-10-29 | 2026-11-09 | 1408, 1418 |  | 7 day week No holidays | 2504178 |
| 1422 | 37000.37200.37900.38600.200600.757300 | 71st flr-Flat flooring | 14d | 2027-04-15 | 2027-04-28 | 1409, 1420 |  | 7 day week No holidays | 2504188 |
| 1423 | 37000.37200.37900.38600.200600.757400 | 71st flr-Main door fixing & frame fixing | 14d | 2027-10-19 | 2027-11-02 | 1410, 1422 |  | 7 day week No holidays | 2504198 |
| 1424 | 37000.37200.37900.38600.200600.757500 | 71st flr-Window fixing | 14d | 2027-04-29 | 2027-05-12 | 1411, 1422 |  | 7 day week No holidays | 2504208 |
| 1425 | 37000.37200.37900.38600.200600.757600 | 71st flr-Railing Fixing | 14d | 2028-09-19 | 2028-10-03 | 1412, 1422 |  | 7 day week No holidays | 2504218 |
| 1426 | 37000.37200.37900.38600.200600.757700 | 71st flr-Internal painting - putty / primer application | 14d | 2027-12-19 | 2028-01-02 | 1413, 1422 |  | 7 day week No holidays | 2504228 |
| 1427 | 37000.37200.37900.38600.200600.757800 | 71st flr-Flat electrical wiring | 12d | 2028-05-08 | 2028-05-20 | 1414, 1423 |  | 7 day week No holidays | 2504238 |
| 1428 | 37000.37200.37900.38600.200600.757900 | 71st flr-Internal painting | 10d | 2028-05-20 | 2028-05-30 | 1415, 1427 |  | 7 day week No holidays | 2504248 |
| 1429 | 37000.37200.37900.38600.200600.758000 | 71st flr-Internal shutter fixing | 12d | 2028-12-27 | 2029-01-08 | 1416, 1426 |  | 7 day week No holidays | 2504258 |

| ID | WBS | Task | Duration | Start | Finish | Predecessors | Constraint | Calendar | Unique_Task_ID |
| --- | --- | --- | --- | --- | --- | --- | --- | --- | --- |
| 1430 | 37000.37200.37900.38600.200700 | **72nd Floor** | 814.25d | 2026-10-29 | 2029-01-20 |  | start no earlier than 2026-10-29 | 7 day week No holidays | 7285604 |
| 1431 | 37000.37200.37900.38600.200700.758100 | 72nd flr-Gypsum Plaster | 14d | 2026-10-29 | 2026-11-11 | 527, 1418 |  | 7 day week No holidays | 2504268 |
| 1432 | 37000.37200.37900.38600.200700.758200 | 72nd flr-Kitchen Platform | 8d | 2026-12-02 | 2026-12-10 | 1419, 1431 |  | 7 day week No holidays | 2504278 |
| 1433 | 37000.37200.37900.38600.200700.758300 | 72nd flr-Toilet dado & flooring | 14d | 2027-04-15 | 2027-04-28 | 531, 1420 |  | 7 day week No holidays | 2504288 |
| 1434 | 37000.37200.37900.38600.200700.758400 | 72nd flr-Fire sprinkler pipe | 12d | 2026-11-12 | 2026-11-23 | 1421, 1431 |  | 7 day week No holidays | 2504298 |
| 1435 | 37000.37200.37900.38600.200700.758500 | 72nd flr-Flat flooring | 14d | 2027-04-29 | 2027-05-12 | 1422, 1433 |  | 7 day week No holidays | 2504308 |
| 1436 | 37000.37200.37900.38600.200700.758600 | 72nd flr-Main door fixing & frame fixing | 14d | 2027-11-02 | 2027-11-16 | 1423, 1435 |  | 7 day week No holidays | 2504318 |
| 1437 | 37000.37200.37900.38600.200700.758700 | 72nd flr-Window fixing | 14d | 2027-05-13 | 2027-05-26 | 1424, 1435 |  | 7 day week No holidays | 2504328 |
| 1438 | 37000.37200.37900.38600.200700.758800 | 72nd flr-Railing Fixing | 14d | 2028-10-03 | 2028-10-17 | 1425, 1435 |  | 7 day week No holidays | 2504338 |
| 1439 | 37000.37200.37900.38600.200700.758900 | 72nd flr-Internal painting - putty / primer application | 14d | 2028-01-02 | 2028-01-16 | 1426, 1435 |  | 7 day week No holidays | 2504348 |
| 1440 | 37000.37200.37900.38600.200700.759000 | 72nd flr-Flat electrical wiring | 12d | 2028-05-20 | 2028-06-01 | 1427, 1436 |  | 7 day week No holidays | 2504358 |
| 1441 | 37000.37200.37900.38600.200700.759100 | 72nd flr-Internal painting | 10d | 2028-06-01 | 2028-06-11 | 1428, 1440 |  | 7 day week No holidays | 2504368 |
| 1442 | 37000.37200.37900.38600.200700.759200 | 72nd flr-Internal shutter fixing | 12d | 2029-01-08 | 2029-01-20 | 1429, 1439 |  | 7 day week No holidays | 2504378 |
| 1443 | 37000.37200.37900.514000 | Basement(1 & 2) - Internal finishing & services | 90d | 2028-10-28 | 2029-01-26 | 538, 1339 |  | 7 day week No holidays | 7289314 |
| 1444 | 37000.37200.37900.514100 | Podium Floors - Internal finishing & Services | 150d | 2028-09-03 | 2029-01-31 | 1274 |  | 7 day week No holidays | 7289324 |
| 1445 | 37000.37200.37900.514200 | GF - Internal finishing & services | 180d | 2028-10-28 | 2029-04-26 | 550, 1339 |  | 7 day week No holidays | 7289334 |
| 1446 | 37000.37200.262400 | **Common MEP Works** | 960d | 2025-04-01 | 2027-11-16 |  | start no earlier than 2025-04-01 | 7 day week No holidays | 7285964 |
| 1447 | 37000.37200.262400.362000 | **Lift** | 742d | 2025-07-13 | 2027-07-24 |  | start no earlier than 2025-07-13 | 7 day week No holidays | 7289284 |
| 1448 | 37000.37200.262400.362000.536300 | Lift Shaft Handover | 30d | 2026-11-12 | 2026-12-11 | 71 |  | 7 day week No holidays | 7290354 |
| 1449 | 37000.37200.262400.362000.536400 | Lift installation work | 210d | 2026-12-12 | 2027-07-09 | 1448 |  | 7 day week No holidays | 7290364 |
| 1450 | 37000.37200.262400.362000.536500 | Lift pressurization | 15d | 2027-07-10 | 2027-07-24 | 1449 |  | 7 day week No holidays | 7290374 |
| 1451 | 37000.37200.262400.362000.536600 | Lift-Order Date | 1d | 2025-07-13 | 2025-07-13 | 47 |  | 7 day week No holidays | 7562233 |
| 1452 | 37000.37200.262400.362000.536700 | Lift-Shop Drawing Approval Date | 90d | 2025-10-22 | 2026-01-19 | 1451FS+100d |  | 7 day week No holidays | 7562243 |
| 1453 | 37000.37200.262400.362000.536800 | Lift-Start of Supply for first lot date | 180d | 2026-08-14 | 2027-02-09 | 70, 1452FF |  | 7 day week No holidays | 7562253 |

| ID | WBS | Task | Duration | Start | Finish | Predecessors | Constraint | Calendar | Unique_Task_ID |
| --- | --- | --- | --- | --- | --- | --- | --- | --- | --- |
| 1454 | 37000.37200.262400.389500 | **Plumbing works** | 845d | 2025-04-01 | 2027-07-24 |  | start no earlier than 2025-04-01 | 7 day week No holidays | 7289274 |
| 1455 | 37000.37200.262400.389500.536900 | Shaft Plumbing | 800d | 2025-04-01 | 2027-06-09 | 275 |  | 7 day week No holidays | 7290384 |
| 1456 | 37000.37200.262400.389500.537000 | Terrace looping | 45d | 2026-11-12 | 2026-12-26 | 71 |  | 7 day week No holidays | 7290394 |
| 1457 | 37000.37200.262400.389500.537100 | Sanitary fittings | 45d | 2027-06-10 | 2027-07-24 | 1455 |  | 7 day week No holidays | 7290404 |
| 1458 | 37000.37200.262400.389500.537200 | Solar water heater | 90d | 2026-12-27 | 2027-03-26 | 1456 |  | 7 day week No holidays | 7290414 |
| 1459 | 37000.37200.262400.397200 | **Fire Fighting works** | 800d | 2025-04-01 | 2027-06-09 |  | start no earlier than 2025-04-01 | 7 day week No holidays | 7289294 |
| 1460 | 37000.37200.262400.397200.537300 | Fire duct downtake | 800d | 2025-04-01 | 2027-06-09 | 275 |  | 7 day week No holidays | 7290424 |
| 1461 | 37000.37200.262400.397200.537400 | FA & PA | 800d | 2025-04-01 | 2027-06-09 | 275FS-10d |  | 7 day week No holidays | 7290434 |
| 1462 | 37000.37200.262400.397200.537500 | Fire accessories fitting | 800d | 2025-04-01 | 2027-06-09 | 275 |  | 7 day week No holidays | 7290444 |
| 1463 | 37000.37200.262400.376800 | **Electrical works** | 560d | 2026-04-06 | 2027-10-17 |  | start no earlier than 2026-04-06 | 7 day week No holidays | 7289114 |
| 1464 | 37000.37200.262400.376800.537600 | Shaft, Common area wiring & DB fixing | 500d | 2026-04-06 | 2027-08-18 | 275FS+500d |  | 7 day week No holidays | 7290454 |
| 1465 | 37000.37200.262400.376800.537700 | Meter room erection | 60d | 2027-08-19 | 2027-10-17 | 1464 |  | 7 day week No holidays | 7290464 |
| 1466 | 37000.37200.262400.376800.537800 | Panel erection | 60d | 2027-08-19 | 2027-10-17 | 2067, 1464 |  | 7 day week No holidays | 7290474 |
| 1467 | 37000.37200.262400.376800.537900 | DG Installtion | 60d | 2027-08-19 | 2027-10-17 | 2068, 1464 |  | 7 day week No holidays | 7290484 |
| 1468 | 37000.37200.262400.376800.538000 | Transformer erection | 60d | 2027-08-19 | 2027-10-17 | 2069, 1464 |  | 7 day week No holidays | 7290494 |
| 1469 | 37000.37200.262400.514300 | Services completion | 30d | 2027-10-18 | 2027-11-16 | 1455, 1456, 1461, 1468, 1462 |  | 7 day week No holidays | 7289344 |
| 1470 | 37000.37200.39400 | **Lift Lobby & Staircase Finishing Works** | 426d | 2026-04-28 | 2027-06-27 |  | start no earlier than 2026-04-28 | 7 day week No holidays | 7284394 |
| 1471 | 37000.37200.39400.305500 | **GF Floor** | 42d | 2026-04-28 | 2026-06-08 |  | start no earlier than 2026-04-28 | 7 day week No holidays | 7285984 |
| 1472 | 37000.37200.39400.305500.538100 | Lift blockwork | 6d | 2026-04-28 | 2026-05-03 | 455FS+60d |  | 7 day week No holidays | 7290504 |
| 1473 | 37000.37200.39400.305500.538200 | Lobby architrave work | 10d | 2026-05-04 | 2026-05-13 | 1472 |  | 7 day week No holidays | 7290514 |
| 1474 | 37000.37200.39400.305500.538300 | Lobby gypsum plaster | 8d | 2026-05-14 | 2026-05-21 | 1473 |  | 7 day week No holidays | 7290524 |
| 1475 | 37000.37200.39400.305500.538400 | Staircase epoxy paint | 10d | 2026-05-22 | 2026-05-31 | 1474 |  | 7 day week No holidays | 7290534 |
| 1476 | 37000.37200.39400.305500.538500 | Staircase railing | 6d | 2026-05-22 | 2026-05-27 | 1474 |  | 7 day week No holidays | 7290544 |
| 1477 | 37000.37200.39400.305500.538600 | Lobby flooring work | 8d | 2026-05-22 | 2026-05-29 | 1474 |  | 7 day week No holidays | 7290554 |
| 1478 | 37000.37200.39400.305500.538700 | Painting | 10d | 2026-05-30 | 2026-06-08 | 1477 |  | 7 day week No holidays | 7290564 |
| 1479 | 37000.37200.39400.305500.538800 | Fire rated doors | 6d | 2026-05-30 | 2026-06-04 | 1477 |  | 7 day week No holidays | 7290574 |

| ID | WBS | Task | Duration | Start | Finish | Predecessors | Constraint | Calendar | Unique_Task_ID |
| --- | --- | --- | --- | --- | --- | --- | --- | --- | --- |
| 1480 | 37000.37200.39400.305600 | **Podium Floors** | 42d | 2026-05-04 | 2026-06-14 |  | start no earlier than 2026-05-04 | 7 day week No holidays | 7285994 |
| 1481 | 37000.37200.39400.305600.538900 | Lift blockwork | 6d | 2026-05-04 | 2026-05-09 | 1472 |  | 7 day week No holidays | 7290584 |
| 1482 | 37000.37200.39400.305600.539000 | Lobby architrave work | 10d | 2026-05-10 | 2026-05-19 | 1481 |  | 7 day week No holidays | 7290594 |
| 1483 | 37000.37200.39400.305600.539100 | Lobby gypsum plaster | 8d | 2026-05-20 | 2026-05-27 | 1482 |  | 7 day week No holidays | 7290604 |
| 1484 | 37000.37200.39400.305600.539200 | Staircase epoxy paint | 10d | 2026-05-28 | 2026-06-06 | 1483 |  | 7 day week No holidays | 7290614 |
| 1485 | 37000.37200.39400.305600.539300 | Staircase railing | 6d | 2026-05-28 | 2026-06-02 | 1483 |  | 7 day week No holidays | 7290624 |
| 1486 | 37000.37200.39400.305600.539400 | Lobby flooring work | 8d | 2026-05-28 | 2026-06-04 | 1483 |  | 7 day week No holidays | 7290634 |
| 1487 | 37000.37200.39400.305600.539500 | Painting | 10d | 2026-06-05 | 2026-06-14 | 1486 |  | 7 day week No holidays | 7290644 |
| 1488 | 37000.37200.39400.305600.539600 | Fire rated doors | 6d | 2026-06-05 | 2026-06-10 | 1486 |  | 7 day week No holidays | 7290654 |
| 1489 | 37000.37200.39400.305700 | **9th Floor** | 42d | 2026-05-10 | 2026-06-20 |  | start no earlier than 2026-05-10 | 7 day week No holidays | 7286004 |
| 1490 | 37000.37200.39400.305700.539700 | Lift blockwork | 6d | 2026-05-10 | 2026-05-15 | 1481 |  | 7 day week No holidays | 7290664 |
| 1491 | 37000.37200.39400.305700.539800 | Lobby architrave work | 10d | 2026-05-16 | 2026-05-25 | 1490 |  | 7 day week No holidays | 7290674 |
| 1492 | 37000.37200.39400.305700.539900 | Lobby gypsum plaster | 8d | 2026-05-26 | 2026-06-02 | 1491 |  | 7 day week No holidays | 7290684 |
| 1493 | 37000.37200.39400.305700.540000 | Staircase epoxy paint | 10d | 2026-06-03 | 2026-06-12 | 1492 |  | 7 day week No holidays | 7290694 |
| 1494 | 37000.37200.39400.305700.540100 | Staircase railing | 6d | 2026-06-03 | 2026-06-08 | 1492 |  | 7 day week No holidays | 7290704 |
| 1495 | 37000.37200.39400.305700.540200 | Lobby flooring work | 8d | 2026-06-03 | 2026-06-10 | 1492 |  | 7 day week No holidays | 7290714 |
| 1496 | 37000.37200.39400.305700.540300 | Painting | 10d | 2026-06-11 | 2026-06-20 | 1495 |  | 7 day week No holidays | 7290724 |
| 1497 | 37000.37200.39400.305700.540400 | Fire rated doors | 6d | 2026-06-11 | 2026-06-16 | 1495 |  | 7 day week No holidays | 7290734 |
| 1498 | 37000.37200.39400.305800 | **10th Floor** | 42d | 2026-05-16 | 2026-06-26 |  | start no earlier than 2026-05-16 | 7 day week No holidays | 7286014 |
| 1499 | 37000.37200.39400.305800.540500 | Lift blockwork | 6d | 2026-05-16 | 2026-05-21 | 1490 |  | 7 day week No holidays | 7290744 |
| 1500 | 37000.37200.39400.305800.540600 | Lobby architrave work | 10d | 2026-05-22 | 2026-05-31 | 1499 |  | 7 day week No holidays | 7290754 |
| 1501 | 37000.37200.39400.305800.540700 | Lobby gypsum plaster | 8d | 2026-06-01 | 2026-06-08 | 1500 |  | 7 day week No holidays | 7290764 |
| 1502 | 37000.37200.39400.305800.540800 | Staircase epoxy paint | 10d | 2026-06-09 | 2026-06-18 | 1501 |  | 7 day week No holidays | 7290774 |
| 1503 | 37000.37200.39400.305800.540900 | Staircase railing | 6d | 2026-06-09 | 2026-06-14 | 1501 |  | 7 day week No holidays | 7290784 |
| 1504 | 37000.37200.39400.305800.541000 | Lobby flooring work | 8d | 2026-06-09 | 2026-06-16 | 1501 |  | 7 day week No holidays | 7290794 |
| 1505 | 37000.37200.39400.305800.541100 | Painting | 10d | 2026-06-17 | 2026-06-26 | 1504 |  | 7 day week No holidays | 7290804 |
| 1506 | 37000.37200.39400.305800.541200 | Fire rated doors | 6d | 2026-06-17 | 2026-06-22 | 1504 |  | 7 day week No holidays | 7290814 |

| ID | WBS | Task | Duration | Start | Finish | Predecessors | Constraint | Calendar | Unique_Task_ID |
| --- | --- | --- | --- | --- | --- | --- | --- | --- | --- |
| 1507 | 37000.37200.39400.305900 | **11th Floor** | 42d | 2026-05-22 | 2026-07-02 |  | start no earlier than 2026-05-22 | 7 day week No holidays | 7286024 |
| 1508 | 37000.37200.39400.305900.541300 | Lift blockwork | 6d | 2026-05-22 | 2026-05-27 | 1499 |  | 7 day week No holidays | 7290824 |
| 1509 | 37000.37200.39400.305900.541400 | Lobby architrave work | 10d | 2026-05-28 | 2026-06-06 | 1508 |  | 7 day week No holidays | 7290834 |
| 1510 | 37000.37200.39400.305900.541500 | Lobby gypsum plaster | 8d | 2026-06-07 | 2026-06-14 | 1509 |  | 7 day week No holidays | 7290844 |
| 1511 | 37000.37200.39400.305900.541600 | Staircase epoxy paint | 10d | 2026-06-15 | 2026-06-24 | 1510 |  | 7 day week No holidays | 7290854 |
| 1512 | 37000.37200.39400.305900.541700 | Staircase railing | 6d | 2026-06-15 | 2026-06-20 | 1510 |  | 7 day week No holidays | 7290864 |
| 1513 | 37000.37200.39400.305900.541800 | Lobby flooring work | 8d | 2026-06-15 | 2026-06-22 | 1510 |  | 7 day week No holidays | 7290874 |
| 1514 | 37000.37200.39400.305900.541900 | Painting | 10d | 2026-06-23 | 2026-07-02 | 1513 |  | 7 day week No holidays | 7290884 |
| 1515 | 37000.37200.39400.305900.542000 | Fire rated doors | 6d | 2026-06-23 | 2026-06-28 | 1513 |  | 7 day week No holidays | 7290894 |
| 1516 | 37000.37200.39400.306100 | **12th Floor** | 42d | 2026-05-28 | 2026-07-08 |  | start no earlier than 2026-05-28 | 7 day week No holidays | 7286034 |
| 1517 | 37000.37200.39400.306100.542100 | Lift blockwork | 6d | 2026-05-28 | 2026-06-02 | 1508 |  | 7 day week No holidays | 7290904 |
| 1518 | 37000.37200.39400.306100.542200 | Lobby architrave work | 10d | 2026-06-03 | 2026-06-12 | 1517 |  | 7 day week No holidays | 7290914 |
| 1519 | 37000.37200.39400.306100.542300 | Lobby gypsum plaster | 8d | 2026-06-13 | 2026-06-20 | 1518 |  | 7 day week No holidays | 7290924 |
| 1520 | 37000.37200.39400.306100.542400 | Staircase epoxy paint | 10d | 2026-06-21 | 2026-06-30 | 1519 |  | 7 day week No holidays | 7290934 |
| 1521 | 37000.37200.39400.306100.542500 | Staircase railing | 6d | 2026-06-21 | 2026-06-26 | 1519 |  | 7 day week No holidays | 7290944 |
| 1522 | 37000.37200.39400.306100.542600 | Lobby flooring work | 8d | 2026-06-21 | 2026-06-28 | 1519 |  | 7 day week No holidays | 7290954 |
| 1523 | 37000.37200.39400.306100.542700 | Painting | 10d | 2026-06-29 | 2026-07-08 | 1522 |  | 7 day week No holidays | 7290964 |
| 1524 | 37000.37200.39400.306100.542800 | Fire rated doors | 6d | 2026-06-29 | 2026-07-04 | 1522 |  | 7 day week No holidays | 7290974 |
| 1525 | 37000.37200.39400.306300 | **13th Floor** | 79d | 2026-06-03 | 2026-08-20 |  | start no earlier than 2026-06-03 | 7 day week No holidays | 7286044 |
| 1526 | 37000.37200.39400.306300.542900 | Lift blockwork | 6d | 2026-06-03 | 2026-06-08 | 1517 |  | 7 day week No holidays | 7290984 |
| 1527 | 37000.37200.39400.306300.543000 | Lobby architrave work | 10d | 2026-06-09 | 2026-06-18 | 1526 |  | 7 day week No holidays | 7290994 |
| 1528 | 37000.37200.39400.306300.543100 | Lobby gypsum plaster | 8d | 2026-06-19 | 2026-06-26 | 1527 |  | 7 day week No holidays | 7291004 |
| 1529 | 37000.37200.39400.306300.543200 | Staircase epoxy paint | 10d | 2026-06-27 | 2026-07-06 | 1528 |  | 7 day week No holidays | 7291014 |
| 1530 | 37000.37200.39400.306300.543300 | Staircase railing | 6d | 2026-06-27 | 2026-07-02 | 1528 |  | 7 day week No holidays | 7291024 |
| 1531 | 37000.37200.39400.306300.543400 | Lobby flooring work | 55d | 2026-06-27 | 2026-08-20 | 1528 |  | 7 day week No holidays | 7291034 |
| 1532 | 37000.37200.39400.306300.543500 | Painting | 10d | 2026-06-29 | 2026-07-08 | 1522 |  | 7 day week No holidays | 7291044 |
| 1533 | 37000.37200.39400.306300.543600 | Fire rated doors | 6d | 2026-06-29 | 2026-07-04 | 1522 |  | 7 day week No holidays | 7291054 |

| ID | WBS | Task | Duration | Start | Finish | Predecessors | Constraint | Calendar | Unique_Task_ID |
| --- | --- | --- | --- | --- | --- | --- | --- | --- | --- |
| 1534 | 37000.37200.39400.306400 | **14th Floor** | 98d | 2026-06-09 | 2026-09-14 |  | start no earlier than 2026-06-09 | 7 day week No holidays | 7286054 |
| 1535 | 37000.37200.39400.306400.543700 | Lift blockwork | 6d | 2026-06-09 | 2026-06-14 | 1526 |  | 7 day week No holidays | 7291064 |
| 1536 | 37000.37200.39400.306400.543800 | Lobby architrave work | 10d | 2026-06-15 | 2026-06-24 | 1535 |  | 7 day week No holidays | 7291074 |
| 1537 | 37000.37200.39400.306400.543900 | Lobby gypsum plaster | 8d | 2026-06-25 | 2026-07-02 | 1536 |  | 7 day week No holidays | 7291084 |
| 1538 | 37000.37200.39400.306400.544000 | Staircase epoxy paint | 10d | 2026-07-03 | 2026-07-12 | 1537 |  | 7 day week No holidays | 7291094 |
| 1539 | 37000.37200.39400.306400.544100 | Staircase railing | 6d | 2026-07-03 | 2026-07-08 | 1537 |  | 7 day week No holidays | 7291104 |
| 1540 | 37000.37200.39400.306400.544200 | Lobby flooring work | 15d | 2026-08-21 | 2026-09-04 | 1531 |  | 7 day week No holidays | 7291114 |
| 1541 | 37000.37200.39400.306400.544300 | Painting | 10d | 2026-09-05 | 2026-09-14 | 1540 |  | 7 day week No holidays | 7291124 |
| 1542 | 37000.37200.39400.306400.544400 | Fire rated doors | 6d | 2026-09-05 | 2026-09-10 | 1540 |  | 7 day week No holidays | 7291134 |
| 1543 | 37000.37200.39400.306500 | **15th Floor** | 100d | 2026-06-15 | 2026-09-22 |  | start no earlier than 2026-06-15 | 7 day week No holidays | 7286064 |
| 1544 | 37000.37200.39400.306500.544500 | Lift blockwork | 6d | 2026-06-15 | 2026-06-20 | 1535 |  | 7 day week No holidays | 7291144 |
| 1545 | 37000.37200.39400.306500.544600 | Lobby architrave work | 10d | 2026-06-21 | 2026-06-30 | 1544 |  | 7 day week No holidays | 7291154 |
| 1546 | 37000.37200.39400.306500.544700 | Lobby gypsum plaster | 8d | 2026-07-01 | 2026-07-08 | 1545 |  | 7 day week No holidays | 7291164 |
| 1547 | 37000.37200.39400.306500.544800 | Staircase epoxy paint | 10d | 2026-07-09 | 2026-07-18 | 1546 |  | 7 day week No holidays | 7291174 |
| 1548 | 37000.37200.39400.306500.544900 | Staircase railing | 6d | 2026-07-09 | 2026-07-14 | 1546 |  | 7 day week No holidays | 7291184 |
| 1549 | 37000.37200.39400.306500.545000 | Lobby flooring work | 8d | 2026-09-05 | 2026-09-12 | 1540 |  | 7 day week No holidays | 7291194 |
| 1550 | 37000.37200.39400.306500.545100 | Painting | 10d | 2026-09-13 | 2026-09-22 | 1549 |  | 7 day week No holidays | 7291204 |
| 1551 | 37000.37200.39400.306500.545200 | Fire rated doors | 6d | 2026-09-13 | 2026-09-18 | 1549 |  | 7 day week No holidays | 7291214 |
| 1552 | 37000.37200.39400.306600 | **16th Floor** | 109d | 2026-06-21 | 2026-10-07 |  | start no earlier than 2026-06-21 | 7 day week No holidays | 7286074 |
| 1553 | 37000.37200.39400.306600.545300 | Lift blockwork | 6d | 2026-06-21 | 2026-06-26 | 1544 |  | 7 day week No holidays | 7291224 |
| 1554 | 37000.37200.39400.306600.545400 | Lobby architrave work | 10d | 2026-06-27 | 2026-07-06 | 1553 |  | 7 day week No holidays | 7291234 |
| 1555 | 37000.37200.39400.306600.545500 | Lobby gypsum plaster | 8d | 2026-07-07 | 2026-07-14 | 1554 |  | 7 day week No holidays | 7291244 |
| 1556 | 37000.37200.39400.306600.545600 | Staircase epoxy paint | 10d | 2026-07-15 | 2026-07-24 | 1555 |  | 7 day week No holidays | 7291254 |
| 1557 | 37000.37200.39400.306600.545700 | Staircase railing | 6d | 2026-07-15 | 2026-07-20 | 1555 |  | 7 day week No holidays | 7291264 |
| 1558 | 37000.37200.39400.306600.545800 | Lobby flooring work | 15d | 2026-09-13 | 2026-09-27 | 1549 |  | 7 day week No holidays | 7291274 |
| 1559 | 37000.37200.39400.306600.545900 | Painting | 10d | 2026-09-28 | 2026-10-07 | 1558 |  | 7 day week No holidays | 7291284 |
| 1560 | 37000.37200.39400.306600.546000 | Fire rated doors | 6d | 2026-09-28 | 2026-10-03 | 1558 |  | 7 day week No holidays | 7291294 |

| ID | WBS | Task | Duration | Start | Finish | Predecessors | Constraint | Calendar | Unique_Task_ID |
| --- | --- | --- | --- | --- | --- | --- | --- | --- | --- |
| 1561 | 37000.37200.39400.306800 | **17th Floor** | 115d | 2026-06-27 | 2026-10-19 |  | start no earlier than 2026-06-27 | 7 day week No holidays | 7286084 |
| 1562 | 37000.37200.39400.306800.546100 | Lift blockwork | 6d | 2026-06-27 | 2026-07-02 | 1553 |  | 7 day week No holidays | 7291304 |
| 1563 | 37000.37200.39400.306800.546200 | Lobby architrave work | 10d | 2026-07-03 | 2026-07-12 | 1562 |  | 7 day week No holidays | 7291314 |
| 1564 | 37000.37200.39400.306800.546300 | Lobby gypsum plaster | 15d | 2026-07-13 | 2026-07-27 | 1563 |  | 7 day week No holidays | 7291324 |
| 1565 | 37000.37200.39400.306800.546400 | Staircase epoxy paint | 10d | 2026-07-28 | 2026-08-06 | 1564 |  | 7 day week No holidays | 7291334 |
| 1566 | 37000.37200.39400.306800.546500 | Staircase railing | 6d | 2026-07-28 | 2026-08-02 | 1564 |  | 7 day week No holidays | 7291344 |
| 1567 | 37000.37200.39400.306800.546600 | Lobby flooring work | 12d | 2026-09-28 | 2026-10-09 | 1558 |  | 7 day week No holidays | 7291354 |
| 1568 | 37000.37200.39400.306800.546700 | Painting | 10d | 2026-10-10 | 2026-10-19 | 1567 |  | 7 day week No holidays | 7291364 |
| 1569 | 37000.37200.39400.306800.546800 | Fire rated doors | 6d | 2026-10-10 | 2026-10-15 | 1567 |  | 7 day week No holidays | 7291374 |
| 1570 | 37000.37200.39400.306900 | **18th Floor** | 121d | 2026-07-03 | 2026-10-31 |  | start no earlier than 2026-07-03 | 7 day week No holidays | 7286094 |
| 1571 | 37000.37200.39400.306900.546900 | Lift blockwork | 6d | 2026-07-03 | 2026-07-08 | 1562 |  | 7 day week No holidays | 7291384 |
| 1572 | 37000.37200.39400.306900.547000 | Lobby architrave work | 10d | 2026-07-09 | 2026-07-18 | 1571 |  | 7 day week No holidays | 7291394 |
| 1573 | 37000.37200.39400.306900.547100 | Lobby gypsum plaster | 8d | 2026-07-19 | 2026-07-26 | 1572 |  | 7 day week No holidays | 7291404 |
| 1574 | 37000.37200.39400.306900.547200 | Staircase epoxy paint | 10d | 2026-07-27 | 2026-08-05 | 1573 |  | 7 day week No holidays | 7291414 |
| 1575 | 37000.37200.39400.306900.547300 | Staircase railing | 6d | 2026-07-27 | 2026-08-01 | 1573 |  | 7 day week No holidays | 7291424 |
| 1576 | 37000.37200.39400.306900.547400 | Lobby flooring work | 12d | 2026-10-10 | 2026-10-21 | 1567 |  | 7 day week No holidays | 7291434 |
| 1577 | 37000.37200.39400.306900.547500 | Painting | 10d | 2026-10-22 | 2026-10-31 | 1576 |  | 7 day week No holidays | 7291444 |
| 1578 | 37000.37200.39400.306900.547600 | Fire rated doors | 6d | 2026-10-22 | 2026-10-27 | 1576 |  | 7 day week No holidays | 7291454 |
| 1579 | 37000.37200.39400.307000 | **19th Floor** | 127d | 2026-07-09 | 2026-11-12 |  | start no earlier than 2026-07-09 | 7 day week No holidays | 7286104 |
| 1580 | 37000.37200.39400.307000.547700 | Lift blockwork | 6d | 2026-07-09 | 2026-07-14 | 1571 |  | 7 day week No holidays | 7291464 |
| 1581 | 37000.37200.39400.307000.547800 | Lobby architrave work | 10d | 2026-07-15 | 2026-07-24 | 1580 |  | 7 day week No holidays | 7291474 |
| 1582 | 37000.37200.39400.307000.547900 | Lobby gypsum plaster | 8d | 2026-07-25 | 2026-08-01 | 1581 |  | 7 day week No holidays | 7291484 |
| 1583 | 37000.37200.39400.307000.548000 | Staircase epoxy paint | 10d | 2026-08-02 | 2026-08-11 | 1582 |  | 7 day week No holidays | 7291494 |
| 1584 | 37000.37200.39400.307000.548100 | Staircase railing | 6d | 2026-08-02 | 2026-08-07 | 1582 |  | 7 day week No holidays | 7291504 |
| 1585 | 37000.37200.39400.307000.548200 | Lobby flooring work | 12d | 2026-10-22 | 2026-11-02 | 1576 |  | 7 day week No holidays | 7291514 |
| 1586 | 37000.37200.39400.307000.548300 | Painting | 10d | 2026-11-03 | 2026-11-12 | 1585 |  | 7 day week No holidays | 7291524 |
| 1587 | 37000.37200.39400.307000.548400 | Fire rated doors | 6d | 2026-11-03 | 2026-11-08 | 1585 |  | 7 day week No holidays | 7291534 |

| ID | WBS | Task | Duration | Start | Finish | Predecessors | Constraint | Calendar | Unique_Task_ID |
| --- | --- | --- | --- | --- | --- | --- | --- | --- | --- |
| 1588 | 37000.37200.39400.307100 | **20th Floor** | 133d | 2026-07-15 | 2026-11-24 |  | start no earlier than 2026-07-15 | 7 day week No holidays | 7286114 |
| 1589 | 37000.37200.39400.307100.548500 | Lift blockwork | 6d | 2026-07-15 | 2026-07-20 | 1580 |  | 7 day week No holidays | 7291544 |
| 1590 | 37000.37200.39400.307100.548600 | Lobby architrave work | 10d | 2026-07-21 | 2026-07-30 | 1589 |  | 7 day week No holidays | 7291554 |
| 1591 | 37000.37200.39400.307100.548700 | Lobby gypsum plaster | 8d | 2026-07-31 | 2026-08-07 | 1590 |  | 7 day week No holidays | 7291564 |
| 1592 | 37000.37200.39400.307100.548800 | Staircase epoxy paint | 10d | 2026-08-08 | 2026-08-17 | 1591 |  | 7 day week No holidays | 7291574 |
| 1593 | 37000.37200.39400.307100.548900 | Staircase railing | 6d | 2026-08-08 | 2026-08-13 | 1591 |  | 7 day week No holidays | 7291584 |
| 1594 | 37000.37200.39400.307100.549000 | Lobby flooring work | 12d | 2026-11-03 | 2026-11-14 | 1585 |  | 7 day week No holidays | 7291594 |
| 1595 | 37000.37200.39400.307100.549100 | Painting | 10d | 2026-11-15 | 2026-11-24 | 1594 |  | 7 day week No holidays | 7291604 |
| 1596 | 37000.37200.39400.307100.549200 | Fire rated doors | 6d | 2026-11-15 | 2026-11-20 | 1594 |  | 7 day week No holidays | 7291614 |
| 1597 | 37000.37200.39400.307200 | **21st Floor** | 139d | 2026-07-21 | 2026-12-06 |  | start no earlier than 2026-07-21 | 7 day week No holidays | 7286124 |
| 1598 | 37000.37200.39400.307200.549300 | Lift blockwork | 6d | 2026-07-21 | 2026-07-26 | 1589 |  | 7 day week No holidays | 7291624 |
| 1599 | 37000.37200.39400.307200.549400 | Lobby architrave work | 10d | 2026-07-27 | 2026-08-05 | 1598 |  | 7 day week No holidays | 7291634 |
| 1600 | 37000.37200.39400.307200.549500 | Lobby gypsum plaster | 8d | 2026-08-06 | 2026-08-13 | 1599 |  | 7 day week No holidays | 7291644 |
| 1601 | 37000.37200.39400.307200.549600 | Staircase epoxy paint | 10d | 2026-08-14 | 2026-08-23 | 1600 |  | 7 day week No holidays | 7291654 |
| 1602 | 37000.37200.39400.307200.549700 | Staircase railing | 6d | 2026-08-14 | 2026-08-19 | 1600 |  | 7 day week No holidays | 7291664 |
| 1603 | 37000.37200.39400.307200.549800 | Lobby flooring work | 12d | 2026-11-15 | 2026-11-26 | 1594 |  | 7 day week No holidays | 7291674 |
| 1604 | 37000.37200.39400.307200.549900 | Painting | 10d | 2026-11-27 | 2026-12-06 | 1603 |  | 7 day week No holidays | 7291684 |
| 1605 | 37000.37200.39400.307200.550000 | Fire rated doors | 6d | 2026-11-27 | 2026-12-02 | 1603 |  | 7 day week No holidays | 7291694 |
| 1606 | 37000.37200.39400.307300 | **22nd Floor** | 145d | 2026-07-27 | 2026-12-18 |  | start no earlier than 2026-07-27 | 7 day week No holidays | 7286134 |
| 1607 | 37000.37200.39400.307300.550100 | Lift blockwork | 6d | 2026-07-27 | 2026-08-01 | 1598 |  | 7 day week No holidays | 7291704 |
| 1608 | 37000.37200.39400.307300.550200 | Lobby architrave work | 10d | 2026-08-02 | 2026-08-11 | 1607 |  | 7 day week No holidays | 7291714 |
| 1609 | 37000.37200.39400.307300.550300 | Lobby gypsum plaster | 8d | 2026-08-12 | 2026-08-19 | 1608 |  | 7 day week No holidays | 7291724 |
| 1610 | 37000.37200.39400.307300.550400 | Staircase epoxy paint | 10d | 2026-08-20 | 2026-08-29 | 1609 |  | 7 day week No holidays | 7291734 |
| 1611 | 37000.37200.39400.307300.550500 | Staircase railing | 6d | 2026-08-20 | 2026-08-25 | 1609 |  | 7 day week No holidays | 7291744 |
| 1612 | 37000.37200.39400.307300.550600 | Lobby flooring work | 12d | 2026-11-27 | 2026-12-08 | 1603 |  | 7 day week No holidays | 7291754 |
| 1613 | 37000.37200.39400.307300.550700 | Painting | 10d | 2026-12-09 | 2026-12-18 | 1612 |  | 7 day week No holidays | 7291764 |
| 1614 | 37000.37200.39400.307300.550800 | Fire rated doors | 6d | 2026-12-09 | 2026-12-14 | 1612 |  | 7 day week No holidays | 7291774 |

| ID | WBS | Task | Duration | Start | Finish | Predecessors | Constraint | Calendar | Unique_Task_ID |
| --- | --- | --- | --- | --- | --- | --- | --- | --- | --- |
| 1615 | 37000.37200.39400.307400 | **23rd Floor** | 151d | 2026-08-02 | 2026-12-30 |  | start no earlier than 2026-08-02 | 7 day week No holidays | 7286144 |
| 1616 | 37000.37200.39400.307400.550900 | Lift blockwork | 6d | 2026-08-02 | 2026-08-07 | 1607 |  | 7 day week No holidays | 7291784 |
| 1617 | 37000.37200.39400.307400.551000 | Lobby architrave work | 10d | 2026-08-08 | 2026-08-17 | 1616 |  | 7 day week No holidays | 7291794 |
| 1618 | 37000.37200.39400.307400.551100 | Lobby gypsum plaster | 8d | 2026-08-18 | 2026-08-25 | 1617 |  | 7 day week No holidays | 7291804 |
| 1619 | 37000.37200.39400.307400.551200 | Staircase epoxy paint | 10d | 2026-08-26 | 2026-09-04 | 1618 |  | 7 day week No holidays | 7291814 |
| 1620 | 37000.37200.39400.307400.551300 | Staircase railing | 6d | 2026-08-26 | 2026-08-31 | 1618 |  | 7 day week No holidays | 7291824 |
| 1621 | 37000.37200.39400.307400.551400 | Lobby flooring work | 12d | 2026-12-09 | 2026-12-20 | 1612 |  | 7 day week No holidays | 7291834 |
| 1622 | 37000.37200.39400.307400.551500 | Painting | 10d | 2026-12-21 | 2026-12-30 | 1621 |  | 7 day week No holidays | 7291844 |
| 1623 | 37000.37200.39400.307400.551600 | Fire rated doors | 6d | 2026-12-21 | 2026-12-26 | 1621 |  | 7 day week No holidays | 7291854 |
| 1624 | 37000.37200.39400.307500 | **24th Floor** | 157d | 2026-08-08 | 2027-01-11 |  | start no earlier than 2026-08-08 | 7 day week No holidays | 7286154 |
| 1625 | 37000.37200.39400.307500.551700 | Lift blockwork | 6d | 2026-08-08 | 2026-08-13 | 1616 |  | 7 day week No holidays | 7291864 |
| 1626 | 37000.37200.39400.307500.551800 | Lobby architrave work | 10d | 2026-08-14 | 2026-08-23 | 1625 |  | 7 day week No holidays | 7291874 |
| 1627 | 37000.37200.39400.307500.551900 | Lobby gypsum plaster | 8d | 2026-08-24 | 2026-08-31 | 1626 |  | 7 day week No holidays | 7291884 |
| 1628 | 37000.37200.39400.307500.552000 | Staircase epoxy paint | 10d | 2026-09-01 | 2026-09-10 | 1627 |  | 7 day week No holidays | 7291894 |
| 1629 | 37000.37200.39400.307500.552100 | Staircase railing | 6d | 2026-09-01 | 2026-09-06 | 1627 |  | 7 day week No holidays | 7291904 |
| 1630 | 37000.37200.39400.307500.552200 | Lobby flooring work | 12d | 2026-12-21 | 2027-01-01 | 1621 |  | 7 day week No holidays | 7291914 |
| 1631 | 37000.37200.39400.307500.552300 | Painting | 10d | 2027-01-02 | 2027-01-11 | 1630 |  | 7 day week No holidays | 7291924 |
| 1632 | 37000.37200.39400.307500.552400 | Fire rated doors | 6d | 2027-01-02 | 2027-01-07 | 1630 |  | 7 day week No holidays | 7291934 |
| 1633 | 37000.37200.39400.307600 | **25th Floor** | 163d | 2026-08-14 | 2027-01-23 |  | start no earlier than 2026-08-14 | 7 day week No holidays | 7286164 |
| 1634 | 37000.37200.39400.307600.552500 | Lift blockwork | 6d | 2026-08-14 | 2026-08-19 | 1625 |  | 7 day week No holidays | 7291944 |
| 1635 | 37000.37200.39400.307600.552600 | Lobby architrave work | 10d | 2026-08-20 | 2026-08-29 | 1634 |  | 7 day week No holidays | 7291954 |
| 1636 | 37000.37200.39400.307600.552700 | Lobby gypsum plaster | 8d | 2026-08-30 | 2026-09-06 | 1635 |  | 7 day week No holidays | 7291964 |
| 1637 | 37000.37200.39400.307600.552800 | Staircase epoxy paint | 10d | 2026-09-07 | 2026-09-16 | 1636 |  | 7 day week No holidays | 7291974 |
| 1638 | 37000.37200.39400.307600.552900 | Staircase railing | 6d | 2026-09-07 | 2026-09-12 | 1636 |  | 7 day week No holidays | 7291984 |
| 1639 | 37000.37200.39400.307600.553000 | Lobby flooring work | 12d | 2027-01-02 | 2027-01-13 | 1630 |  | 7 day week No holidays | 7291994 |
| 1640 | 37000.37200.39400.307600.553100 | Painting | 10d | 2027-01-14 | 2027-01-23 | 1639 |  | 7 day week No holidays | 7292004 |
| 1641 | 37000.37200.39400.307600.553200 | Fire rated doors | 6d | 2027-01-14 | 2027-01-19 | 1639 |  | 7 day week No holidays | 7292014 |

| ID | WBS | Task | Duration | Start | Finish | Predecessors | Constraint | Calendar | Unique_Task_ID |
| --- | --- | --- | --- | --- | --- | --- | --- | --- | --- |
| 1642 | 37000.37200.39400.307700 | **26th Floor** | 169d | 2026-08-20 | 2027-02-04 |  | start no earlier than 2026-08-20 | 7 day week No holidays | 7286794 |
| 1643 | 37000.37200.39400.307700.553300 | Lift blockwork | 6d | 2026-08-20 | 2026-08-25 | 1634 |  | 7 day week No holidays | 7292024 |
| 1644 | 37000.37200.39400.307700.553400 | Lobby architrave work | 10d | 2026-08-26 | 2026-09-04 | 1643 |  | 7 day week No holidays | 7292034 |
| 1645 | 37000.37200.39400.307700.553500 | Lobby gypsum plaster | 8d | 2026-09-05 | 2026-09-12 | 1644 |  | 7 day week No holidays | 7292044 |
| 1646 | 37000.37200.39400.307700.553600 | Staircase epoxy paint | 10d | 2026-09-13 | 2026-09-22 | 1645 |  | 7 day week No holidays | 7292054 |
| 1647 | 37000.37200.39400.307700.553700 | Staircase railing | 6d | 2026-09-13 | 2026-09-18 | 1645 |  | 7 day week No holidays | 7292064 |
| 1648 | 37000.37200.39400.307700.553800 | Lobby flooring work | 12d | 2027-01-14 | 2027-01-25 | 1639 |  | 7 day week No holidays | 7292074 |
| 1649 | 37000.37200.39400.307700.553900 | Painting | 10d | 2027-01-26 | 2027-02-04 | 1648 |  | 7 day week No holidays | 7292084 |
| 1650 | 37000.37200.39400.307700.554000 | Fire rated doors | 6d | 2027-01-26 | 2027-01-31 | 1648 |  | 7 day week No holidays | 7292094 |
| 1651 | 37000.37200.39400.307800 | **27th Floor** | 181d | 2026-08-20 | 2027-02-16 |  | start no earlier than 2026-08-20 | 7 day week No holidays | 7286804 |
| 1652 | 37000.37200.39400.307800.554100 | Lift blockwork | 6d | 2026-08-20 | 2026-08-25 | 1634 |  | 7 day week No holidays | 7292104 |
| 1653 | 37000.37200.39400.307800.554200 | Lobby architrave work | 10d | 2026-08-26 | 2026-09-04 | 1652 |  | 7 day week No holidays | 7292114 |
| 1654 | 37000.37200.39400.307800.554300 | Lobby gypsum plaster | 8d | 2026-09-05 | 2026-09-12 | 1653 |  | 7 day week No holidays | 7292124 |
| 1655 | 37000.37200.39400.307800.554400 | Staircase epoxy paint | 10d | 2026-09-13 | 2026-09-22 | 1654 |  | 7 day week No holidays | 7292134 |
| 1656 | 37000.37200.39400.307800.554500 | Staircase railing | 6d | 2026-09-13 | 2026-09-18 | 1654 |  | 7 day week No holidays | 7292144 |
| 1657 | 37000.37200.39400.307800.554600 | Lobby flooring work | 12d | 2027-01-26 | 2027-02-06 | 1648 |  | 7 day week No holidays | 7292154 |
| 1658 | 37000.37200.39400.307800.554700 | Painting | 10d | 2027-02-07 | 2027-02-16 | 1657 |  | 7 day week No holidays | 7292164 |
| 1659 | 37000.37200.39400.307800.554800 | Fire rated doors | 6d | 2027-02-07 | 2027-02-12 | 1657 |  | 7 day week No holidays | 7292174 |
| 1660 | 37000.37200.39400.307900 | **28th Floor** | 187d | 2026-08-26 | 2027-02-28 |  | start no earlier than 2026-08-26 | 7 day week No holidays | 7286814 |
| 1661 | 37000.37200.39400.307900.554900 | Lift blockwork | 6d | 2026-08-26 | 2026-08-31 | 1652 |  | 7 day week No holidays | 7292184 |
| 1662 | 37000.37200.39400.307900.555000 | Lobby architrave work | 10d | 2026-09-01 | 2026-09-10 | 1661 |  | 7 day week No holidays | 7292194 |
| 1663 | 37000.37200.39400.307900.555100 | Lobby gypsum plaster | 8d | 2026-09-11 | 2026-09-18 | 1662 |  | 7 day week No holidays | 7292204 |
| 1664 | 37000.37200.39400.307900.555200 | Staircase epoxy paint | 10d | 2026-09-19 | 2026-09-28 | 1663 |  | 7 day week No holidays | 7292214 |
| 1665 | 37000.37200.39400.307900.555300 | Staircase railing | 6d | 2026-09-19 | 2026-09-24 | 1663 |  | 7 day week No holidays | 7292224 |
| 1666 | 37000.37200.39400.307900.555400 | Lobby flooring work | 12d | 2027-02-07 | 2027-02-18 | 1657 |  | 7 day week No holidays | 7292234 |
| 1667 | 37000.37200.39400.307900.555500 | Painting | 10d | 2027-02-19 | 2027-02-28 | 1666 |  | 7 day week No holidays | 7292244 |
| 1668 | 37000.37200.39400.307900.555600 | Fire rated doors | 6d | 2027-02-19 | 2027-02-24 | 1666 |  | 7 day week No holidays | 7292254 |

| ID | WBS | Task | Duration | Start | Finish | Predecessors | Constraint | Calendar | Unique_Task_ID |
| --- | --- | --- | --- | --- | --- | --- | --- | --- | --- |
| 1669 | 37000.37200.39400.308000 | **29th Floor** | 193d | 2026-09-01 | 2027-03-12 |  | start no earlier than 2026-09-01 | 7 day week No holidays | 7286824 |
| 1670 | 37000.37200.39400.308000.555700 | Lift blockwork | 6d | 2026-09-01 | 2026-09-06 | 1661 |  | 7 day week No holidays | 7292264 |
| 1671 | 37000.37200.39400.308000.555800 | Lobby architrave work | 10d | 2026-09-07 | 2026-09-16 | 1670 |  | 7 day week No holidays | 7292274 |
| 1672 | 37000.37200.39400.308000.555900 | Lobby gypsum plaster | 8d | 2026-09-17 | 2026-09-24 | 1671 |  | 7 day week No holidays | 7292284 |
| 1673 | 37000.37200.39400.308000.556000 | Staircase epoxy paint | 10d | 2026-09-25 | 2026-10-04 | 1672 |  | 7 day week No holidays | 7292294 |
| 1674 | 37000.37200.39400.308000.556100 | Staircase railing | 6d | 2026-09-25 | 2026-09-30 | 1672 |  | 7 day week No holidays | 7292304 |
| 1675 | 37000.37200.39400.308000.556200 | Lobby flooring work | 12d | 2027-02-19 | 2027-03-02 | 1666 |  | 7 day week No holidays | 7292314 |
| 1676 | 37000.37200.39400.308000.556300 | Painting | 10d | 2027-03-03 | 2027-03-12 | 1675 |  | 7 day week No holidays | 7292324 |
| 1677 | 37000.37200.39400.308000.556400 | Fire rated doors | 6d | 2027-03-03 | 2027-03-08 | 1675 |  | 7 day week No holidays | 7292334 |
| 1678 | 37000.37200.39400.308100 | **30th Floor** | 199d | 2026-09-07 | 2027-03-24 |  | start no earlier than 2026-09-07 | 7 day week No holidays | 7287184 |
| 1679 | 37000.37200.39400.308100.556500 | Lift blockwork | 6d | 2026-09-07 | 2026-09-12 | 1670 |  | 7 day week No holidays | 7292344 |
| 1680 | 37000.37200.39400.308100.556600 | Lobby architrave work | 10d | 2026-09-13 | 2026-09-22 | 1679 |  | 7 day week No holidays | 7292354 |
| 1681 | 37000.37200.39400.308100.556700 | Lobby gypsum plaster | 8d | 2026-09-23 | 2026-09-30 | 1680 |  | 7 day week No holidays | 7292364 |
| 1682 | 37000.37200.39400.308100.556800 | Staircase epoxy paint | 10d | 2026-10-01 | 2026-10-10 | 1681 |  | 7 day week No holidays | 7292374 |
| 1683 | 37000.37200.39400.308100.556900 | Staircase railing | 6d | 2026-10-01 | 2026-10-06 | 1681 |  | 7 day week No holidays | 7292384 |
| 1684 | 37000.37200.39400.308100.557000 | Lobby flooring work | 12d | 2027-03-03 | 2027-03-14 | 1675 |  | 7 day week No holidays | 7292394 |
| 1685 | 37000.37200.39400.308100.557100 | Painting | 10d | 2027-03-15 | 2027-03-24 | 1684 |  | 7 day week No holidays | 7292404 |
| 1686 | 37000.37200.39400.308100.557200 | Fire rated doors | 6d | 2027-03-15 | 2027-03-20 | 1684 |  | 7 day week No holidays | 7292414 |
| 1687 | 37000.37200.39400.308200 | **31st Floor** | 205d | 2026-09-13 | 2027-04-05 |  | start no earlier than 2026-09-13 | 7 day week No holidays | 7287194 |
| 1688 | 37000.37200.39400.308200.557300 | Lift blockwork | 6d | 2026-09-13 | 2026-09-18 | 1679 |  | 7 day week No holidays | 7292424 |
| 1689 | 37000.37200.39400.308200.557400 | Lobby architrave work | 10d | 2026-09-19 | 2026-09-28 | 1688 |  | 7 day week No holidays | 7292434 |
| 1690 | 37000.37200.39400.308200.557500 | Lobby gypsum plaster | 8d | 2026-09-29 | 2026-10-06 | 1689 |  | 7 day week No holidays | 7292444 |
| 1691 | 37000.37200.39400.308200.557600 | Staircase epoxy paint | 10d | 2026-10-07 | 2026-10-16 | 1690 |  | 7 day week No holidays | 7292454 |
| 1692 | 37000.37200.39400.308200.557700 | Staircase railing | 6d | 2026-10-07 | 2026-10-12 | 1690 |  | 7 day week No holidays | 7292464 |
| 1693 | 37000.37200.39400.308200.557800 | Lobby flooring work | 12d | 2027-03-15 | 2027-03-26 | 1684 |  | 7 day week No holidays | 7292474 |
| 1694 | 37000.37200.39400.308200.557900 | Painting | 10d | 2027-03-27 | 2027-04-05 | 1693 |  | 7 day week No holidays | 7292484 |
| 1695 | 37000.37200.39400.308200.558000 | Fire rated doors | 6d | 2027-03-27 | 2027-04-01 | 1693 |  | 7 day week No holidays | 7292494 |

| ID | WBS | Task | Duration | Start | Finish | Predecessors | Constraint | Calendar | Unique_Task_ID |
| --- | --- | --- | --- | --- | --- | --- | --- | --- | --- |
| 1696 | 37000.37200.39400.308300 | **32nd Floor** | 211d | 2026-09-19 | 2027-04-17 |  | start no earlier than 2026-09-19 | 7 day week No holidays | 7287204 |
| 1697 | 37000.37200.39400.308300.558100 | Lift blockwork | 6d | 2026-09-19 | 2026-09-24 | 1688 |  | 7 day week No holidays | 7292504 |
| 1698 | 37000.37200.39400.308300.558200 | Lobby architrave work | 10d | 2026-09-25 | 2026-10-04 | 1697 |  | 7 day week No holidays | 7292514 |
| 1699 | 37000.37200.39400.308300.558300 | Lobby gypsum plaster | 8d | 2026-10-05 | 2026-10-12 | 1698 |  | 7 day week No holidays | 7292524 |
| 1700 | 37000.37200.39400.308300.558400 | Staircase epoxy paint | 10d | 2026-10-13 | 2026-10-22 | 1699 |  | 7 day week No holidays | 7292534 |
| 1701 | 37000.37200.39400.308300.558500 | Staircase railing | 6d | 2026-10-13 | 2026-10-18 | 1699 |  | 7 day week No holidays | 7292544 |
| 1702 | 37000.37200.39400.308300.558600 | Lobby flooring work | 12d | 2027-03-27 | 2027-04-07 | 1693 |  | 7 day week No holidays | 7292554 |
| 1703 | 37000.37200.39400.308300.558700 | Painting | 10d | 2027-04-08 | 2027-04-17 | 1702 |  | 7 day week No holidays | 7292564 |
| 1704 | 37000.37200.39400.308300.558800 | Fire rated doors | 6d | 2027-04-08 | 2027-04-13 | 1702 |  | 7 day week No holidays | 7292574 |
| 1705 | 37000.37200.39400.308400 | **33rd Floor** | 217d | 2026-09-25 | 2027-04-29 |  | start no earlier than 2026-09-25 | 7 day week No holidays | 7287214 |
| 1706 | 37000.37200.39400.308400.558900 | Lift blockwork | 6d | 2026-09-25 | 2026-09-30 | 1697 |  | 7 day week No holidays | 7292584 |
| 1707 | 37000.37200.39400.308400.559000 | Lobby architrave work | 10d | 2026-10-01 | 2026-10-10 | 1706 |  | 7 day week No holidays | 7292594 |
| 1708 | 37000.37200.39400.308400.559100 | Lobby gypsum plaster | 8d | 2026-10-11 | 2026-10-18 | 1707 |  | 7 day week No holidays | 7292604 |
| 1709 | 37000.37200.39400.308400.559200 | Staircase epoxy paint | 10d | 2026-10-19 | 2026-10-28 | 1708 |  | 7 day week No holidays | 7292614 |
| 1710 | 37000.37200.39400.308400.559300 | Staircase railing | 6d | 2026-10-19 | 2026-10-24 | 1708 |  | 7 day week No holidays | 7292624 |
| 1711 | 37000.37200.39400.308400.559400 | Lobby flooring work | 12d | 2027-04-08 | 2027-04-19 | 1702 |  | 7 day week No holidays | 7292634 |
| 1712 | 37000.37200.39400.308400.559500 | Painting | 10d | 2027-04-20 | 2027-04-29 | 1711 |  | 7 day week No holidays | 7292644 |
| 1713 | 37000.37200.39400.308400.559600 | Fire rated doors | 6d | 2027-04-20 | 2027-04-25 | 1711 |  | 7 day week No holidays | 7292654 |
| 1714 | 37000.37200.39400.308500 | **34th Floor** | 223d | 2026-10-01 | 2027-05-11 |  | start no earlier than 2026-10-01 | 7 day week No holidays | 7287224 |
| 1715 | 37000.37200.39400.308500.559700 | Lift blockwork | 6d | 2026-10-01 | 2026-10-06 | 1706 |  | 7 day week No holidays | 7292664 |
| 1716 | 37000.37200.39400.308500.559800 | Lobby architrave work | 10d | 2026-10-07 | 2026-10-16 | 1715 |  | 7 day week No holidays | 7292674 |
| 1717 | 37000.37200.39400.308500.559900 | Lobby gypsum plaster | 8d | 2026-10-17 | 2026-10-24 | 1716 |  | 7 day week No holidays | 7292684 |
| 1718 | 37000.37200.39400.308500.560000 | Staircase epoxy paint | 10d | 2026-10-25 | 2026-11-03 | 1717 |  | 7 day week No holidays | 7292694 |
| 1719 | 37000.37200.39400.308500.560100 | Staircase railing | 6d | 2026-10-25 | 2026-10-30 | 1717 |  | 7 day week No holidays | 7292704 |
| 1720 | 37000.37200.39400.308500.560200 | Lobby flooring work | 12d | 2027-04-20 | 2027-05-01 | 1711 |  | 7 day week No holidays | 7292714 |
| 1721 | 37000.37200.39400.308500.560300 | Painting | 10d | 2027-05-02 | 2027-05-11 | 1720 |  | 7 day week No holidays | 7292724 |
| 1722 | 37000.37200.39400.308500.560400 | Fire rated doors | 6d | 2027-05-02 | 2027-05-07 | 1720 |  | 7 day week No holidays | 7292734 |

| ID | WBS | Task | Duration | Start | Finish | Predecessors | Constraint | Calendar | Unique_Task_ID |
| --- | --- | --- | --- | --- | --- | --- | --- | --- | --- |
| 1723 | 37000.37200.39400.308600 | **35th Floor** | 229d | 2026-10-07 | 2027-05-23 |  | start no earlier than 2026-10-07 | 7 day week No holidays | 7287234 |
| 1724 | 37000.37200.39400.308600.560500 | Lift blockwork | 6d | 2026-10-07 | 2026-10-12 | 1715 |  | 7 day week No holidays | 7292744 |
| 1725 | 37000.37200.39400.308600.560600 | Lobby architrave work | 10d | 2026-10-13 | 2026-10-22 | 1724 |  | 7 day week No holidays | 7292754 |
| 1726 | 37000.37200.39400.308600.560700 | Lobby gypsum plaster | 8d | 2026-10-23 | 2026-10-30 | 1725 |  | 7 day week No holidays | 7292764 |
| 1727 | 37000.37200.39400.308600.560800 | Staircase epoxy paint | 10d | 2026-10-31 | 2026-11-09 | 1726 |  | 7 day week No holidays | 7292774 |
| 1728 | 37000.37200.39400.308600.560900 | Staircase railing | 6d | 2026-10-31 | 2026-11-05 | 1726 |  | 7 day week No holidays | 7292784 |
| 1729 | 37000.37200.39400.308600.561000 | Lobby flooring work | 12d | 2027-05-02 | 2027-05-13 | 1720 |  | 7 day week No holidays | 7292794 |
| 1730 | 37000.37200.39400.308600.561100 | Painting | 10d | 2027-05-14 | 2027-05-23 | 1729 |  | 7 day week No holidays | 7292804 |
| 1731 | 37000.37200.39400.308600.561200 | Fire rated doors | 6d | 2027-05-14 | 2027-05-19 | 1729 |  | 7 day week No holidays | 7292814 |
| 1732 | 37000.37200.39400.308700 | **36th Floor** | 243d | 2026-10-13 | 2027-06-12 |  | start no earlier than 2026-10-13 | 7 day week No holidays | 7287244 |
| 1733 | 37000.37200.39400.308700.561300 | Lift blockwork | 6d | 2026-10-13 | 2026-10-18 | 1724 |  | 7 day week No holidays | 7292824 |
| 1734 | 37000.37200.39400.308700.561400 | Lobby architrave work | 10d | 2026-10-19 | 2026-10-28 | 1733 |  | 7 day week No holidays | 7292834 |
| 1735 | 37000.37200.39400.308700.561500 | Lobby gypsum plaster | 8d | 2026-10-29 | 2026-11-05 | 1734 |  | 7 day week No holidays | 7292844 |
| 1736 | 37000.37200.39400.308700.561600 | Staircase epoxy paint | 10d | 2026-11-06 | 2026-11-15 | 1735 |  | 7 day week No holidays | 7292854 |
| 1737 | 37000.37200.39400.308700.561700 | Staircase railing | 6d | 2026-11-06 | 2026-11-11 | 1735 |  | 7 day week No holidays | 7292864 |
| 1738 | 37000.37200.39400.308700.561800 | Lobby flooring work | 20d | 2027-05-14 | 2027-06-02 | 1729 |  | 7 day week No holidays | 7292874 |
| 1739 | 37000.37200.39400.308700.561900 | Painting | 10d | 2027-06-03 | 2027-06-12 | 1738 |  | 7 day week No holidays | 7292884 |
| 1740 | 37000.37200.39400.308700.562000 | Fire rated doors | 6d | 2027-06-03 | 2027-06-08 | 1738 |  | 7 day week No holidays | 7292894 |
| 1741 | 37000.37200.39400.308800 | **37th Floor** | 42d | 2026-10-19 | 2026-11-29 |  | start no earlier than 2026-10-19 | 7 day week No holidays | 7287254 |
| 1742 | 37000.37200.39400.308800.562100 | Lift blockwork | 6d | 2026-10-19 | 2026-10-24 | 1733 |  | 7 day week No holidays | 7292904 |
| 1743 | 37000.37200.39400.308800.562200 | Lobby architrave work | 10d | 2026-10-25 | 2026-11-03 | 1742 |  | 7 day week No holidays | 7292914 |
| 1744 | 37000.37200.39400.308800.562300 | Lobby gypsum plaster | 8d | 2026-11-04 | 2026-11-11 | 1743 |  | 7 day week No holidays | 7292924 |
| 1745 | 37000.37200.39400.308800.562400 | Staircase epoxy paint | 10d | 2026-11-12 | 2026-11-21 | 1744 |  | 7 day week No holidays | 7292934 |
| 1746 | 37000.37200.39400.308800.562500 | Staircase railing | 6d | 2026-11-12 | 2026-11-17 | 1744 |  | 7 day week No holidays | 7292944 |
| 1747 | 37000.37200.39400.308800.562600 | Lobby flooring work | 8d | 2026-11-12 | 2026-11-19 | 1744 |  | 7 day week No holidays | 7292954 |
| 1748 | 37000.37200.39400.308800.562700 | Painting | 10d | 2026-11-20 | 2026-11-29 | 1747 |  | 7 day week No holidays | 7292964 |
| 1749 | 37000.37200.39400.308800.562800 | Fire rated doors | 6d | 2026-11-20 | 2026-11-25 | 1747 |  | 7 day week No holidays | 7292974 |

| ID | WBS | Task | Duration | Start | Finish | Predecessors | Constraint | Calendar | Unique_Task_ID |
| --- | --- | --- | --- | --- | --- | --- | --- | --- | --- |
| 1750 | 37000.37200.39400.309100 | **38th Floor** | 42d | 2026-10-25 | 2026-12-05 |  | start no earlier than 2026-10-25 | 7 day week No holidays | 7287264 |
| 1751 | 37000.37200.39400.309100.562900 | Lift blockwork | 6d | 2026-10-25 | 2026-10-30 | 1742 |  | 7 day week No holidays | 7292984 |
| 1752 | 37000.37200.39400.309100.563000 | Lobby architrave work | 10d | 2026-10-31 | 2026-11-09 | 1751 |  | 7 day week No holidays | 7292994 |
| 1753 | 37000.37200.39400.309100.563100 | Lobby gypsum plaster | 8d | 2026-11-10 | 2026-11-17 | 1752 |  | 7 day week No holidays | 7293004 |
| 1754 | 37000.37200.39400.309100.563200 | Staircase epoxy paint | 10d | 2026-11-18 | 2026-11-27 | 1753 |  | 7 day week No holidays | 7293014 |
| 1755 | 37000.37200.39400.309100.563300 | Staircase railing | 6d | 2026-11-18 | 2026-11-23 | 1753 |  | 7 day week No holidays | 7293024 |
| 1756 | 37000.37200.39400.309100.563400 | Lobby flooring work | 8d | 2026-11-18 | 2026-11-25 | 1753 |  | 7 day week No holidays | 7293034 |
| 1757 | 37000.37200.39400.309100.563500 | Painting | 10d | 2026-11-26 | 2026-12-05 | 1756 |  | 7 day week No holidays | 7293044 |
| 1758 | 37000.37200.39400.309100.563600 | Fire rated doors | 6d | 2026-11-26 | 2026-12-01 | 1756 |  | 7 day week No holidays | 7293054 |
| 1759 | 37000.37200.39400.309200 | **39th Floor** | 42d | 2026-10-31 | 2026-12-11 |  | start no earlier than 2026-10-31 | 7 day week No holidays | 7287274 |
| 1760 | 37000.37200.39400.309200.563700 | Lift blockwork | 6d | 2026-10-31 | 2026-11-05 | 1751 |  | 7 day week No holidays | 7293064 |
| 1761 | 37000.37200.39400.309200.563800 | Lobby architrave work | 10d | 2026-11-06 | 2026-11-15 | 1760 |  | 7 day week No holidays | 7293074 |
| 1762 | 37000.37200.39400.309200.563900 | Lobby gypsum plaster | 8d | 2026-11-16 | 2026-11-23 | 1761 |  | 7 day week No holidays | 7293084 |
| 1763 | 37000.37200.39400.309200.564000 | Staircase epoxy paint | 10d | 2026-11-24 | 2026-12-03 | 1762 |  | 7 day week No holidays | 7293094 |
| 1764 | 37000.37200.39400.309200.564100 | Staircase railing | 6d | 2026-11-24 | 2026-11-29 | 1762 |  | 7 day week No holidays | 7293104 |
| 1765 | 37000.37200.39400.309200.564200 | Lobby flooring work | 8d | 2026-11-24 | 2026-12-01 | 1762 |  | 7 day week No holidays | 7293114 |
| 1766 | 37000.37200.39400.309200.564300 | Painting | 10d | 2026-12-02 | 2026-12-11 | 1765 |  | 7 day week No holidays | 7293124 |
| 1767 | 37000.37200.39400.309200.564400 | Fire rated doors | 6d | 2026-12-02 | 2026-12-07 | 1765 |  | 7 day week No holidays | 7293134 |
| 1768 | 37000.37200.39400.309300 | **40th Floor** | 42d | 2026-11-06 | 2026-12-17 |  | start no earlier than 2026-11-06 | 7 day week No holidays | 7287284 |
| 1769 | 37000.37200.39400.309300.564500 | Lift blockwork | 6d | 2026-11-06 | 2026-11-11 | 1760 |  | 7 day week No holidays | 7293144 |
| 1770 | 37000.37200.39400.309300.564600 | Lobby architrave work | 10d | 2026-11-12 | 2026-11-21 | 1769 |  | 7 day week No holidays | 7293154 |
| 1771 | 37000.37200.39400.309300.564700 | Lobby gypsum plaster | 8d | 2026-11-22 | 2026-11-29 | 1770 |  | 7 day week No holidays | 7293164 |
| 1772 | 37000.37200.39400.309300.564800 | Staircase epoxy paint | 10d | 2026-11-30 | 2026-12-09 | 1771 |  | 7 day week No holidays | 7293174 |
| 1773 | 37000.37200.39400.309300.564900 | Staircase railing | 6d | 2026-11-30 | 2026-12-05 | 1771 |  | 7 day week No holidays | 7293184 |
| 1774 | 37000.37200.39400.309300.565000 | Lobby flooring work | 8d | 2026-11-30 | 2026-12-07 | 1771 |  | 7 day week No holidays | 7293194 |
| 1775 | 37000.37200.39400.309300.565100 | Painting | 10d | 2026-12-08 | 2026-12-17 | 1774 |  | 7 day week No holidays | 7293204 |
| 1776 | 37000.37200.39400.309300.565200 | Fire rated doors | 6d | 2026-12-08 | 2026-12-13 | 1774 |  | 7 day week No holidays | 7293214 |

| ID | WBS | Task | Duration | Start | Finish | Predecessors | Constraint | Calendar | Unique_Task_ID |
| --- | --- | --- | --- | --- | --- | --- | --- | --- | --- |
| 1777 | 37000.37200.39400.309400 | **41st Floor** | 42d | 2026-11-12 | 2026-12-23 |  | start no earlier than 2026-11-12 | 7 day week No holidays | 7287294 |
| 1778 | 37000.37200.39400.309400.565300 | Lift blockwork | 6d | 2026-11-12 | 2026-11-17 | 1769 |  | 7 day week No holidays | 7293224 |
| 1779 | 37000.37200.39400.309400.565400 | Lobby architrave work | 10d | 2026-11-18 | 2026-11-27 | 1778 |  | 7 day week No holidays | 7293234 |
| 1780 | 37000.37200.39400.309400.565500 | Lobby gypsum plaster | 8d | 2026-11-28 | 2026-12-05 | 1779 |  | 7 day week No holidays | 7293244 |
| 1781 | 37000.37200.39400.309400.565600 | Staircase epoxy paint | 10d | 2026-12-06 | 2026-12-15 | 1780 |  | 7 day week No holidays | 7293254 |
| 1782 | 37000.37200.39400.309400.565700 | Staircase railing | 6d | 2026-12-06 | 2026-12-11 | 1780 |  | 7 day week No holidays | 7293264 |
| 1783 | 37000.37200.39400.309400.565800 | Lobby flooring work | 8d | 2026-12-06 | 2026-12-13 | 1780 |  | 7 day week No holidays | 7293274 |
| 1784 | 37000.37200.39400.309400.565900 | Painting | 10d | 2026-12-14 | 2026-12-23 | 1783 |  | 7 day week No holidays | 7293284 |
| 1785 | 37000.37200.39400.309400.566000 | Fire rated doors | 6d | 2026-12-14 | 2026-12-19 | 1783 |  | 7 day week No holidays | 7293294 |
| 1786 | 37000.37200.39400.309500 | **42nd Floor** | 42d | 2026-11-18 | 2026-12-29 |  | start no earlier than 2026-11-18 | 7 day week No holidays | 7287304 |
| 1787 | 37000.37200.39400.309500.566100 | Lift blockwork | 6d | 2026-11-18 | 2026-11-23 | 1778 |  | 7 day week No holidays | 7293304 |
| 1788 | 37000.37200.39400.309500.566200 | Lobby architrave work | 10d | 2026-11-24 | 2026-12-03 | 1787 |  | 7 day week No holidays | 7293314 |
| 1789 | 37000.37200.39400.309500.566300 | Lobby gypsum plaster | 8d | 2026-12-04 | 2026-12-11 | 1788 |  | 7 day week No holidays | 7293324 |
| 1790 | 37000.37200.39400.309500.566400 | Staircase epoxy paint | 10d | 2026-12-12 | 2026-12-21 | 1789 |  | 7 day week No holidays | 7293334 |
| 1791 | 37000.37200.39400.309500.566500 | Staircase railing | 6d | 2026-12-12 | 2026-12-17 | 1789 |  | 7 day week No holidays | 7293344 |
| 1792 | 37000.37200.39400.309500.566600 | Lobby flooring work | 8d | 2026-12-12 | 2026-12-19 | 1789 |  | 7 day week No holidays | 7293354 |
| 1793 | 37000.37200.39400.309500.566700 | Painting | 10d | 2026-12-20 | 2026-12-29 | 1792 |  | 7 day week No holidays | 7293364 |
| 1794 | 37000.37200.39400.309500.566800 | Fire rated doors | 6d | 2026-12-20 | 2026-12-25 | 1792 |  | 7 day week No holidays | 7293374 |
| 1795 | 37000.37200.39400.309600 | **43rd Floor** | 42d | 2026-11-24 | 2027-01-04 |  | start no earlier than 2026-11-24 | 7 day week No holidays | 7287314 |
| 1796 | 37000.37200.39400.309600.566900 | Lift blockwork | 6d | 2026-11-24 | 2026-11-29 | 1787 |  | 7 day week No holidays | 7293384 |
| 1797 | 37000.37200.39400.309600.567000 | Lobby architrave work | 10d | 2026-11-30 | 2026-12-09 | 1796 |  | 7 day week No holidays | 7293394 |
| 1798 | 37000.37200.39400.309600.567100 | Lobby gypsum plaster | 8d | 2026-12-10 | 2026-12-17 | 1797 |  | 7 day week No holidays | 7293404 |
| 1799 | 37000.37200.39400.309600.567200 | Staircase epoxy paint | 10d | 2026-12-18 | 2026-12-27 | 1798 |  | 7 day week No holidays | 7293414 |
| 1800 | 37000.37200.39400.309600.567300 | Staircase railing | 6d | 2026-12-18 | 2026-12-23 | 1798 |  | 7 day week No holidays | 7293424 |
| 1801 | 37000.37200.39400.309600.567400 | Lobby flooring work | 8d | 2026-12-18 | 2026-12-25 | 1798 |  | 7 day week No holidays | 7293434 |
| 1802 | 37000.37200.39400.309600.567500 | Painting | 10d | 2026-12-26 | 2027-01-04 | 1801 |  | 7 day week No holidays | 7293444 |
| 1803 | 37000.37200.39400.309600.567600 | Fire rated doors | 6d | 2026-12-26 | 2026-12-31 | 1801 |  | 7 day week No holidays | 7293454 |

| ID | WBS | Task | Duration | Start | Finish | Predecessors | Constraint | Calendar | Unique_Task_ID |
| --- | --- | --- | --- | --- | --- | --- | --- | --- | --- |
| 1804 | 37000.37200.39400.309700 | **44th Floor** | 42d | 2026-11-30 | 2027-01-10 |  | start no earlier than 2026-11-30 | 7 day week No holidays | 7287324 |
| 1805 | 37000.37200.39400.309700.567700 | Lift blockwork | 6d | 2026-11-30 | 2026-12-05 | 1796 |  | 7 day week No holidays | 7293464 |
| 1806 | 37000.37200.39400.309700.567800 | Lobby architrave work | 10d | 2026-12-06 | 2026-12-15 | 1805 |  | 7 day week No holidays | 7293474 |
| 1807 | 37000.37200.39400.309700.567900 | Lobby gypsum plaster | 8d | 2026-12-16 | 2026-12-23 | 1806 |  | 7 day week No holidays | 7293484 |
| 1808 | 37000.37200.39400.309700.568000 | Staircase epoxy paint | 10d | 2026-12-24 | 2027-01-02 | 1807 |  | 7 day week No holidays | 7293494 |
| 1809 | 37000.37200.39400.309700.568100 | Staircase railing | 6d | 2026-12-24 | 2026-12-29 | 1807 |  | 7 day week No holidays | 7293504 |
| 1810 | 37000.37200.39400.309700.568200 | Lobby flooring work | 8d | 2026-12-24 | 2026-12-31 | 1807 |  | 7 day week No holidays | 7293514 |
| 1811 | 37000.37200.39400.309700.568300 | Painting | 10d | 2027-01-01 | 2027-01-10 | 1810 |  | 7 day week No holidays | 7293524 |
| 1812 | 37000.37200.39400.309700.568400 | Fire rated doors | 6d | 2027-01-01 | 2027-01-06 | 1810 |  | 7 day week No holidays | 7293534 |
| 1813 | 37000.37200.39400.309800 | **45th Floor** | 42d | 2026-12-06 | 2027-01-16 |  | start no earlier than 2026-12-06 | 7 day week No holidays | 7287334 |
| 1814 | 37000.37200.39400.309800.568500 | Lift blockwork | 6d | 2026-12-06 | 2026-12-11 | 1805 |  | 7 day week No holidays | 7293544 |
| 1815 | 37000.37200.39400.309800.568600 | Lobby architrave work | 10d | 2026-12-12 | 2026-12-21 | 1814 |  | 7 day week No holidays | 7293554 |
| 1816 | 37000.37200.39400.309800.568700 | Lobby gypsum plaster | 8d | 2026-12-22 | 2026-12-29 | 1815 |  | 7 day week No holidays | 7293564 |
| 1817 | 37000.37200.39400.309800.568800 | Staircase epoxy paint | 10d | 2026-12-30 | 2027-01-08 | 1816 |  | 7 day week No holidays | 7293574 |
| 1818 | 37000.37200.39400.309800.568900 | Staircase railing | 6d | 2026-12-30 | 2027-01-04 | 1816 |  | 7 day week No holidays | 7293584 |
| 1819 | 37000.37200.39400.309800.569000 | Lobby flooring work | 8d | 2026-12-30 | 2027-01-06 | 1816 |  | 7 day week No holidays | 7293594 |
| 1820 | 37000.37200.39400.309800.569100 | Painting | 10d | 2027-01-07 | 2027-01-16 | 1819 |  | 7 day week No holidays | 7293604 |
| 1821 | 37000.37200.39400.309800.569200 | Fire rated doors | 6d | 2027-01-07 | 2027-01-12 | 1819 |  | 7 day week No holidays | 7293614 |
| 1822 | 37000.37200.39400.310200 | **46th Floor** | 42d | 2026-12-12 | 2027-01-22 |  | start no earlier than 2026-12-12 | 7 day week No holidays | 7287344 |
| 1823 | 37000.37200.39400.310200.569300 | Lift blockwork | 6d | 2026-12-12 | 2026-12-17 | 1814 |  | 7 day week No holidays | 7293624 |
| 1824 | 37000.37200.39400.310200.569400 | Lobby architrave work | 10d | 2026-12-18 | 2026-12-27 | 1823 |  | 7 day week No holidays | 7293634 |
| 1825 | 37000.37200.39400.310200.569500 | Lobby gypsum plaster | 8d | 2026-12-28 | 2027-01-04 | 1824 |  | 7 day week No holidays | 7293644 |
| 1826 | 37000.37200.39400.310200.569600 | Staircase epoxy paint | 10d | 2027-01-05 | 2027-01-14 | 1825 |  | 7 day week No holidays | 7293654 |
| 1827 | 37000.37200.39400.310200.569700 | Staircase railing | 6d | 2027-01-05 | 2027-01-10 | 1825 |  | 7 day week No holidays | 7293664 |
| 1828 | 37000.37200.39400.310200.569800 | Lobby flooring work | 8d | 2027-01-05 | 2027-01-12 | 1825 |  | 7 day week No holidays | 7293674 |
| 1829 | 37000.37200.39400.310200.569900 | Painting | 10d | 2027-01-13 | 2027-01-22 | 1828 |  | 7 day week No holidays | 7293684 |
| 1830 | 37000.37200.39400.310200.570000 | Fire rated doors | 6d | 2027-01-13 | 2027-01-18 | 1828 |  | 7 day week No holidays | 7293694 |

| ID | WBS | Task | Duration | Start | Finish | Predecessors | Constraint | Calendar | Unique_Task_ID |
| --- | --- | --- | --- | --- | --- | --- | --- | --- | --- |
| 1831 | 37000.37200.39400.310300 | **47th Floor** | 42d | 2026-12-18 | 2027-01-28 |  | start no earlier than 2026-12-18 | 7 day week No holidays | 7287354 |
| 1832 | 37000.37200.39400.310300.570100 | Lift blockwork | 6d | 2026-12-18 | 2026-12-23 | 1823 |  | 7 day week No holidays | 7293704 |
| 1833 | 37000.37200.39400.310300.570200 | Lobby architrave work | 10d | 2026-12-24 | 2027-01-02 | 1832 |  | 7 day week No holidays | 7293714 |
| 1834 | 37000.37200.39400.310300.570300 | Lobby gypsum plaster | 8d | 2027-01-03 | 2027-01-10 | 1833 |  | 7 day week No holidays | 7293724 |
| 1835 | 37000.37200.39400.310300.570400 | Staircase epoxy paint | 10d | 2027-01-11 | 2027-01-20 | 1834 |  | 7 day week No holidays | 7293734 |
| 1836 | 37000.37200.39400.310300.570500 | Staircase railing | 6d | 2027-01-11 | 2027-01-16 | 1834 |  | 7 day week No holidays | 7293744 |
| 1837 | 37000.37200.39400.310300.570600 | Lobby flooring work | 8d | 2027-01-11 | 2027-01-18 | 1834 |  | 7 day week No holidays | 7293754 |
| 1838 | 37000.37200.39400.310300.570700 | Painting | 10d | 2027-01-19 | 2027-01-28 | 1837 |  | 7 day week No holidays | 7293764 |
| 1839 | 37000.37200.39400.310300.570800 | Fire rated doors | 6d | 2027-01-19 | 2027-01-24 | 1837 |  | 7 day week No holidays | 7293774 |
| 1840 | 37000.37200.39400.310500 | **48th Floor** | 42d | 2026-12-24 | 2027-02-03 |  | start no earlier than 2026-12-24 | 7 day week No holidays | 7287364 |
| 1841 | 37000.37200.39400.310500.570900 | Lift blockwork | 6d | 2026-12-24 | 2026-12-29 | 1832 |  | 7 day week No holidays | 7293784 |
| 1842 | 37000.37200.39400.310500.571000 | Lobby architrave work | 10d | 2026-12-30 | 2027-01-08 | 1841 |  | 7 day week No holidays | 7293794 |
| 1843 | 37000.37200.39400.310500.571100 | Lobby gypsum plaster | 8d | 2027-01-09 | 2027-01-16 | 1842 |  | 7 day week No holidays | 7293804 |
| 1844 | 37000.37200.39400.310500.571200 | Staircase epoxy paint | 10d | 2027-01-17 | 2027-01-26 | 1843 |  | 7 day week No holidays | 7293814 |
| 1845 | 37000.37200.39400.310500.571300 | Staircase railing | 6d | 2027-01-17 | 2027-01-22 | 1843 |  | 7 day week No holidays | 7293824 |
| 1846 | 37000.37200.39400.310500.571400 | Lobby flooring work | 8d | 2027-01-17 | 2027-01-24 | 1843 |  | 7 day week No holidays | 7293834 |
| 1847 | 37000.37200.39400.310500.571500 | Painting | 10d | 2027-01-25 | 2027-02-03 | 1846 |  | 7 day week No holidays | 7293844 |
| 1848 | 37000.37200.39400.310500.571600 | Fire rated doors | 6d | 2027-01-25 | 2027-01-30 | 1846 |  | 7 day week No holidays | 7293854 |
| 1849 | 37000.37200.39400.310900 | **49th Floor** | 42d | 2026-12-30 | 2027-02-09 |  | start no earlier than 2026-12-30 | 7 day week No holidays | 7287374 |
| 1850 | 37000.37200.39400.310900.571700 | Lift blockwork | 6d | 2026-12-30 | 2027-01-04 | 1841 |  | 7 day week No holidays | 7293864 |
| 1851 | 37000.37200.39400.310900.571800 | Lobby architrave work | 10d | 2027-01-05 | 2027-01-14 | 1850 |  | 7 day week No holidays | 7293874 |
| 1852 | 37000.37200.39400.310900.571900 | Lobby gypsum plaster | 8d | 2027-01-15 | 2027-01-22 | 1851 |  | 7 day week No holidays | 7293884 |
| 1853 | 37000.37200.39400.310900.572000 | Staircase epoxy paint | 10d | 2027-01-23 | 2027-02-01 | 1852 |  | 7 day week No holidays | 7293894 |
| 1854 | 37000.37200.39400.310900.572100 | Staircase railing | 6d | 2027-01-23 | 2027-01-28 | 1852 |  | 7 day week No holidays | 7293904 |
| 1855 | 37000.37200.39400.310900.572200 | Lobby flooring work | 8d | 2027-01-23 | 2027-01-30 | 1852 |  | 7 day week No holidays | 7293914 |
| 1856 | 37000.37200.39400.310900.572300 | Painting | 10d | 2027-01-31 | 2027-02-09 | 1855 |  | 7 day week No holidays | 7293924 |
| 1857 | 37000.37200.39400.310900.572400 | Fire rated doors | 6d | 2027-01-31 | 2027-02-05 | 1855 |  | 7 day week No holidays | 7293934 |

| ID | WBS | Task | Duration | Start | Finish | Predecessors | Constraint | Calendar | Unique_Task_ID |
| --- | --- | --- | --- | --- | --- | --- | --- | --- | --- |
| 1858 | 37000.37200.39400.311000 | **50th Floor** | 42d | 2027-01-05 | 2027-02-15 |  | start no earlier than 2027-01-05 | 7 day week No holidays | 7287384 |
| 1859 | 37000.37200.39400.311000.572500 | Lift blockwork | 6d | 2027-01-05 | 2027-01-10 | 1850 |  | 7 day week No holidays | 7293944 |
| 1860 | 37000.37200.39400.311000.572600 | Lobby architrave work | 10d | 2027-01-11 | 2027-01-20 | 1859 |  | 7 day week No holidays | 7293954 |
| 1861 | 37000.37200.39400.311000.572700 | Lobby gypsum plaster | 8d | 2027-01-21 | 2027-01-28 | 1860 |  | 7 day week No holidays | 7293964 |
| 1862 | 37000.37200.39400.311000.572800 | Staircase epoxy paint | 10d | 2027-01-29 | 2027-02-07 | 1861 |  | 7 day week No holidays | 7293974 |
| 1863 | 37000.37200.39400.311000.572900 | Staircase railing | 6d | 2027-01-29 | 2027-02-03 | 1861 |  | 7 day week No holidays | 7293984 |
| 1864 | 37000.37200.39400.311000.573000 | Lobby flooring work | 8d | 2027-01-29 | 2027-02-05 | 1861 |  | 7 day week No holidays | 7293994 |
| 1865 | 37000.37200.39400.311000.573100 | Painting | 10d | 2027-02-06 | 2027-02-15 | 1864 |  | 7 day week No holidays | 7294004 |
| 1866 | 37000.37200.39400.311000.573200 | Fire rated doors | 6d | 2027-02-06 | 2027-02-11 | 1864 |  | 7 day week No holidays | 7294014 |
| 1867 | 37000.37200.39400.311100 | **51st Floor** | 42d | 2027-01-11 | 2027-02-21 |  | start no earlier than 2027-01-11 | 7 day week No holidays | 7287394 |
| 1868 | 37000.37200.39400.311100.573300 | Lift blockwork | 6d | 2027-01-11 | 2027-01-16 | 1859 |  | 7 day week No holidays | 7294024 |
| 1869 | 37000.37200.39400.311100.573400 | Lobby architrave work | 10d | 2027-01-17 | 2027-01-26 | 1868 |  | 7 day week No holidays | 7294034 |
| 1870 | 37000.37200.39400.311100.573500 | Lobby gypsum plaster | 8d | 2027-01-27 | 2027-02-03 | 1869 |  | 7 day week No holidays | 7294044 |
| 1871 | 37000.37200.39400.311100.573600 | Staircase epoxy paint | 10d | 2027-02-04 | 2027-02-13 | 1870 |  | 7 day week No holidays | 7294054 |
| 1872 | 37000.37200.39400.311100.573700 | Staircase railing | 6d | 2027-02-04 | 2027-02-09 | 1870 |  | 7 day week No holidays | 7294064 |
| 1873 | 37000.37200.39400.311100.573800 | Lobby flooring work | 8d | 2027-02-04 | 2027-02-11 | 1870 |  | 7 day week No holidays | 7294074 |
| 1874 | 37000.37200.39400.311100.573900 | Painting | 10d | 2027-02-12 | 2027-02-21 | 1873 |  | 7 day week No holidays | 7294084 |
| 1875 | 37000.37200.39400.311100.574000 | Fire rated doors | 6d | 2027-02-12 | 2027-02-17 | 1873 |  | 7 day week No holidays | 7294094 |
| 1876 | 37000.37200.39400.311200 | **52nd Floor** | 42d | 2027-01-17 | 2027-02-27 |  | start no earlier than 2027-01-17 | 7 day week No holidays | 7287404 |
| 1877 | 37000.37200.39400.311200.574100 | Lift blockwork | 6d | 2027-01-17 | 2027-01-22 | 1868 |  | 7 day week No holidays | 7294104 |
| 1878 | 37000.37200.39400.311200.574200 | Lobby architrave work | 10d | 2027-01-23 | 2027-02-01 | 1877 |  | 7 day week No holidays | 7294114 |
| 1879 | 37000.37200.39400.311200.574300 | Lobby gypsum plaster | 8d | 2027-02-02 | 2027-02-09 | 1878 |  | 7 day week No holidays | 7294124 |
| 1880 | 37000.37200.39400.311200.574400 | Staircase epoxy paint | 10d | 2027-02-10 | 2027-02-19 | 1879 |  | 7 day week No holidays | 7294134 |
| 1881 | 37000.37200.39400.311200.574500 | Staircase railing | 6d | 2027-02-10 | 2027-02-15 | 1879 |  | 7 day week No holidays | 7294144 |
| 1882 | 37000.37200.39400.311200.574600 | Lobby flooring work | 8d | 2027-02-10 | 2027-02-17 | 1879 |  | 7 day week No holidays | 7294154 |
| 1883 | 37000.37200.39400.311200.574700 | Painting | 10d | 2027-02-18 | 2027-02-27 | 1882 |  | 7 day week No holidays | 7294164 |
| 1884 | 37000.37200.39400.311200.574800 | Fire rated doors | 6d | 2027-02-18 | 2027-02-23 | 1882 |  | 7 day week No holidays | 7294174 |

| ID | WBS | Task | Duration | Start | Finish | Predecessors | Constraint | Calendar | Unique_Task_ID |
| --- | --- | --- | --- | --- | --- | --- | --- | --- | --- |
| 1885 | 37000.37200.39400.311300 | **53rd Floor** | 42d | 2027-01-23 | 2027-03-05 |  | start no earlier than 2027-01-23 | 7 day week No holidays | 7287414 |
| 1886 | 37000.37200.39400.311300.574900 | Lift blockwork | 6d | 2027-01-23 | 2027-01-28 | 1877 |  | 7 day week No holidays | 7294184 |
| 1887 | 37000.37200.39400.311300.575000 | Lobby architrave work | 10d | 2027-01-29 | 2027-02-07 | 1886 |  | 7 day week No holidays | 7294194 |
| 1888 | 37000.37200.39400.311300.575100 | Lobby gypsum plaster | 8d | 2027-02-08 | 2027-02-15 | 1887 |  | 7 day week No holidays | 7294204 |
| 1889 | 37000.37200.39400.311300.575200 | Staircase epoxy paint | 10d | 2027-02-16 | 2027-02-25 | 1888 |  | 7 day week No holidays | 7294214 |
| 1890 | 37000.37200.39400.311300.575300 | Staircase railing | 6d | 2027-02-16 | 2027-02-21 | 1888 |  | 7 day week No holidays | 7294224 |
| 1891 | 37000.37200.39400.311300.575400 | Lobby flooring work | 8d | 2027-02-16 | 2027-02-23 | 1888 |  | 7 day week No holidays | 7294234 |
| 1892 | 37000.37200.39400.311300.575500 | Painting | 10d | 2027-02-24 | 2027-03-05 | 1891 |  | 7 day week No holidays | 7294244 |
| 1893 | 37000.37200.39400.311300.575600 | Fire rated doors | 6d | 2027-02-24 | 2027-03-01 | 1891 |  | 7 day week No holidays | 7294254 |
| 1894 | 37000.37200.39400.311500 | **54th Floor** | 42d | 2027-01-29 | 2027-03-11 |  | start no earlier than 2027-01-29 | 7 day week No holidays | 7287424 |
| 1895 | 37000.37200.39400.311500.575700 | Lift blockwork | 6d | 2027-01-29 | 2027-02-03 | 1886 |  | 7 day week No holidays | 7294264 |
| 1896 | 37000.37200.39400.311500.575800 | Lobby architrave work | 10d | 2027-02-04 | 2027-02-13 | 1895 |  | 7 day week No holidays | 7294274 |
| 1897 | 37000.37200.39400.311500.575900 | Lobby gypsum plaster | 8d | 2027-02-14 | 2027-02-21 | 1896 |  | 7 day week No holidays | 7294284 |
| 1898 | 37000.37200.39400.311500.576000 | Staircase epoxy paint | 10d | 2027-02-22 | 2027-03-03 | 1897 |  | 7 day week No holidays | 7294294 |
| 1899 | 37000.37200.39400.311500.576100 | Staircase railing | 6d | 2027-02-22 | 2027-02-27 | 1897 |  | 7 day week No holidays | 7294304 |
| 1900 | 37000.37200.39400.311500.576200 | Lobby flooring work | 8d | 2027-02-22 | 2027-03-01 | 1897 |  | 7 day week No holidays | 7294314 |
| 1901 | 37000.37200.39400.311500.576300 | Painting | 10d | 2027-03-02 | 2027-03-11 | 1900 |  | 7 day week No holidays | 7294324 |
| 1902 | 37000.37200.39400.311500.576400 | Fire rated doors | 6d | 2027-03-02 | 2027-03-07 | 1900 |  | 7 day week No holidays | 7294334 |
| 1903 | 37000.37200.39400.311700 | **55th Floor** | 42d | 2027-02-04 | 2027-03-17 |  | start no earlier than 2027-02-04 | 7 day week No holidays | 7288374 |
| 1904 | 37000.37200.39400.311700.576500 | Lift blockwork | 6d | 2027-02-04 | 2027-02-09 | 1895 |  | 7 day week No holidays | 7294344 |
| 1905 | 37000.37200.39400.311700.576600 | Lobby architrave work | 10d | 2027-02-10 | 2027-02-19 | 1904 |  | 7 day week No holidays | 7294354 |
| 1906 | 37000.37200.39400.311700.576700 | Lobby gypsum plaster | 8d | 2027-02-20 | 2027-02-27 | 1905 |  | 7 day week No holidays | 7294364 |
| 1907 | 37000.37200.39400.311700.576800 | Staircase epoxy paint | 10d | 2027-02-28 | 2027-03-09 | 1906 |  | 7 day week No holidays | 7294374 |
| 1908 | 37000.37200.39400.311700.576900 | Staircase railing | 6d | 2027-02-28 | 2027-03-05 | 1906 |  | 7 day week No holidays | 7294384 |
| 1909 | 37000.37200.39400.311700.577000 | Lobby flooring work | 8d | 2027-02-28 | 2027-03-07 | 1906 |  | 7 day week No holidays | 7294394 |
| 1910 | 37000.37200.39400.311700.577100 | Painting | 10d | 2027-03-08 | 2027-03-17 | 1909 |  | 7 day week No holidays | 7294404 |
| 1911 | 37000.37200.39400.311700.577200 | Fire rated doors | 6d | 2027-03-08 | 2027-03-13 | 1909 |  | 7 day week No holidays | 7294414 |

| ID | WBS | Task | Duration | Start | Finish | Predecessors | Constraint | Calendar | Unique_Task_ID |
| --- | --- | --- | --- | --- | --- | --- | --- | --- | --- |
| 1912 | 37000.37200.39400.311800 | **56th Floor** | 42d | 2027-02-10 | 2027-03-23 |  | start no earlier than 2027-02-10 | 7 day week No holidays | 7288384 |
| 1913 | 37000.37200.39400.311800.577300 | Lift blockwork | 6d | 2027-02-10 | 2027-02-15 | 1904 |  | 7 day week No holidays | 7294424 |
| 1914 | 37000.37200.39400.311800.577400 | Lobby architrave work | 10d | 2027-02-16 | 2027-02-25 | 1913 |  | 7 day week No holidays | 7294434 |
| 1915 | 37000.37200.39400.311800.577500 | Lobby gypsum plaster | 8d | 2027-02-26 | 2027-03-05 | 1914 |  | 7 day week No holidays | 7294444 |
| 1916 | 37000.37200.39400.311800.577600 | Staircase epoxy paint | 10d | 2027-03-06 | 2027-03-15 | 1915 |  | 7 day week No holidays | 7294454 |
| 1917 | 37000.37200.39400.311800.577700 | Staircase railing | 6d | 2027-03-06 | 2027-03-11 | 1915 |  | 7 day week No holidays | 7294464 |
| 1918 | 37000.37200.39400.311800.577800 | Lobby flooring work | 8d | 2027-03-06 | 2027-03-13 | 1915 |  | 7 day week No holidays | 7294474 |
| 1919 | 37000.37200.39400.311800.577900 | Painting | 10d | 2027-03-14 | 2027-03-23 | 1918 |  | 7 day week No holidays | 7294484 |
| 1920 | 37000.37200.39400.311800.578000 | Fire rated doors | 6d | 2027-03-14 | 2027-03-19 | 1918 |  | 7 day week No holidays | 7294494 |
| 1921 | 37000.37200.39400.313200 | **57th Floor** | 42d | 2027-02-16 | 2027-03-29 |  | start no earlier than 2027-02-16 | 7 day week No holidays | 7288394 |
| 1922 | 37000.37200.39400.313200.578100 | Lift blockwork | 6d | 2027-02-16 | 2027-02-21 | 1913 |  | 7 day week No holidays | 7294504 |
| 1923 | 37000.37200.39400.313200.578200 | Lobby architrave work | 10d | 2027-02-22 | 2027-03-03 | 1922 |  | 7 day week No holidays | 7294514 |
| 1924 | 37000.37200.39400.313200.578300 | Lobby gypsum plaster | 8d | 2027-03-04 | 2027-03-11 | 1923 |  | 7 day week No holidays | 7294524 |
| 1925 | 37000.37200.39400.313200.578400 | Staircase epoxy paint | 10d | 2027-03-12 | 2027-03-21 | 1924 |  | 7 day week No holidays | 7294534 |
| 1926 | 37000.37200.39400.313200.578500 | Staircase railing | 6d | 2027-03-12 | 2027-03-17 | 1924 |  | 7 day week No holidays | 7294544 |
| 1927 | 37000.37200.39400.313200.578600 | Lobby flooring work | 8d | 2027-03-12 | 2027-03-19 | 1924 |  | 7 day week No holidays | 7294554 |
| 1928 | 37000.37200.39400.313200.578700 | Painting | 10d | 2027-03-20 | 2027-03-29 | 1927 |  | 7 day week No holidays | 7294564 |
| 1929 | 37000.37200.39400.313200.578800 | Fire rated doors | 6d | 2027-03-20 | 2027-03-25 | 1927 |  | 7 day week No holidays | 7294574 |
| 1930 | 37000.37200.39400.312800 | **58th Floor** | 42d | 2027-02-22 | 2027-04-04 |  | start no earlier than 2027-02-22 | 7 day week No holidays | 7288404 |
| 1931 | 37000.37200.39400.312800.578900 | Lift blockwork | 6d | 2027-02-22 | 2027-02-27 | 1922 |  | 7 day week No holidays | 7294584 |
| 1932 | 37000.37200.39400.312800.579000 | Lobby architrave work | 10d | 2027-02-28 | 2027-03-09 | 1931 |  | 7 day week No holidays | 7294594 |
| 1933 | 37000.37200.39400.312800.579100 | Lobby gypsum plaster | 8d | 2027-03-10 | 2027-03-17 | 1932 |  | 7 day week No holidays | 7294604 |
| 1934 | 37000.37200.39400.312800.579200 | Staircase epoxy paint | 10d | 2027-03-18 | 2027-03-27 | 1933 |  | 7 day week No holidays | 7294614 |
| 1935 | 37000.37200.39400.312800.579300 | Staircase railing | 6d | 2027-03-18 | 2027-03-23 | 1933 |  | 7 day week No holidays | 7294624 |
| 1936 | 37000.37200.39400.312800.579400 | Lobby flooring work | 8d | 2027-03-18 | 2027-03-25 | 1933 |  | 7 day week No holidays | 7294634 |
| 1937 | 37000.37200.39400.312800.579500 | Painting | 10d | 2027-03-26 | 2027-04-04 | 1936 |  | 7 day week No holidays | 7294644 |
| 1938 | 37000.37200.39400.312800.579600 | Fire rated doors | 6d | 2027-03-26 | 2027-03-31 | 1936 |  | 7 day week No holidays | 7294654 |

| ID | WBS | Task | Duration | Start | Finish | Predecessors | Constraint | Calendar | Unique_Task_ID |
| --- | --- | --- | --- | --- | --- | --- | --- | --- | --- |
| 1939 | 37000.37200.39400.312500 | **59th Floor** | 42d | 2027-02-28 | 2027-04-10 |  | start no earlier than 2027-02-28 | 7 day week No holidays | 7288414 |
| 1940 | 37000.37200.39400.312500.579700 | Lift blockwork | 6d | 2027-02-28 | 2027-03-05 | 1931 |  | 7 day week No holidays | 7294664 |
| 1941 | 37000.37200.39400.312500.579800 | Lobby architrave work | 10d | 2027-03-06 | 2027-03-15 | 1940 |  | 7 day week No holidays | 7294674 |
| 1942 | 37000.37200.39400.312500.579900 | Lobby gypsum plaster | 8d | 2027-03-16 | 2027-03-23 | 1941 |  | 7 day week No holidays | 7294684 |
| 1943 | 37000.37200.39400.312500.580000 | Staircase epoxy paint | 10d | 2027-03-24 | 2027-04-02 | 1942 |  | 7 day week No holidays | 7294694 |
| 1944 | 37000.37200.39400.312500.580100 | Staircase railing | 6d | 2027-03-24 | 2027-03-29 | 1942 |  | 7 day week No holidays | 7294704 |
| 1945 | 37000.37200.39400.312500.580200 | Lobby flooring work | 8d | 2027-03-24 | 2027-03-31 | 1942 |  | 7 day week No holidays | 7294714 |
| 1946 | 37000.37200.39400.312500.580300 | Painting | 10d | 2027-04-01 | 2027-04-10 | 1945 |  | 7 day week No holidays | 7294724 |
| 1947 | 37000.37200.39400.312500.580400 | Fire rated doors | 6d | 2027-04-01 | 2027-04-06 | 1945 |  | 7 day week No holidays | 7294734 |
| 1948 | 37000.37200.39400.312400 | **60th Floor** | 42d | 2027-03-06 | 2027-04-16 |  | start no earlier than 2027-03-06 | 7 day week No holidays | 7288424 |
| 1949 | 37000.37200.39400.312400.580500 | Lift blockwork | 6d | 2027-03-06 | 2027-03-11 | 1940 |  | 7 day week No holidays | 7294744 |
| 1950 | 37000.37200.39400.312400.580600 | Lobby architrave work | 10d | 2027-03-12 | 2027-03-21 | 1949 |  | 7 day week No holidays | 7294754 |
| 1951 | 37000.37200.39400.312400.580700 | Lobby gypsum plaster | 8d | 2027-03-22 | 2027-03-29 | 1950 |  | 7 day week No holidays | 7294764 |
| 1952 | 37000.37200.39400.312400.580800 | Staircase epoxy paint | 10d | 2027-03-30 | 2027-04-08 | 1951 |  | 7 day week No holidays | 7294774 |
| 1953 | 37000.37200.39400.312400.580900 | Staircase railing | 6d | 2027-03-30 | 2027-04-04 | 1951 |  | 7 day week No holidays | 7294784 |
| 1954 | 37000.37200.39400.312400.581000 | Lobby flooring work | 8d | 2027-03-30 | 2027-04-06 | 1951 |  | 7 day week No holidays | 7294794 |
| 1955 | 37000.37200.39400.312400.581100 | Painting | 10d | 2027-04-07 | 2027-04-16 | 1954 |  | 7 day week No holidays | 7294804 |
| 1956 | 37000.37200.39400.312400.581200 | Fire rated doors | 6d | 2027-04-07 | 2027-04-12 | 1954 |  | 7 day week No holidays | 7294814 |
| 1957 | 37000.37200.39400.312300 | **61st Floor** | 42d | 2027-03-12 | 2027-04-22 |  | start no earlier than 2027-03-12 | 7 day week No holidays | 7288434 |
| 1958 | 37000.37200.39400.312300.581300 | Lift blockwork | 6d | 2027-03-12 | 2027-03-17 | 1949 |  | 7 day week No holidays | 7294824 |
| 1959 | 37000.37200.39400.312300.581400 | Lobby architrave work | 10d | 2027-03-18 | 2027-03-27 | 1958 |  | 7 day week No holidays | 7294834 |
| 1960 | 37000.37200.39400.312300.581500 | Lobby gypsum plaster | 8d | 2027-03-28 | 2027-04-04 | 1959 |  | 7 day week No holidays | 7294844 |
| 1961 | 37000.37200.39400.312300.581600 | Staircase epoxy paint | 10d | 2027-04-05 | 2027-04-14 | 1960 |  | 7 day week No holidays | 7294854 |
| 1962 | 37000.37200.39400.312300.581700 | Staircase railing | 6d | 2027-04-05 | 2027-04-10 | 1960 |  | 7 day week No holidays | 7294864 |
| 1963 | 37000.37200.39400.312300.581800 | Lobby flooring work | 8d | 2027-04-05 | 2027-04-12 | 1960 |  | 7 day week No holidays | 7294874 |
| 1964 | 37000.37200.39400.312300.581900 | Painting | 10d | 2027-04-13 | 2027-04-22 | 1963 |  | 7 day week No holidays | 7294884 |
| 1965 | 37000.37200.39400.312300.582000 | Fire rated doors | 6d | 2027-04-13 | 2027-04-18 | 1963 |  | 7 day week No holidays | 7294894 |

| ID | WBS | Task | Duration | Start | Finish | Predecessors | Constraint | Calendar | Unique_Task_ID |
| --- | --- | --- | --- | --- | --- | --- | --- | --- | --- |
| 1966 | 37000.37200.39400.303300 | **62nd Floor** | 42d | 2027-03-18 | 2027-04-28 |  | start no earlier than 2027-03-18 | 7 day week No holidays | 7288444 |
| 1967 | 37000.37200.39400.303300.582100 | Lift blockwork | 6d | 2027-03-18 | 2027-03-23 | 1958 |  | 7 day week No holidays | 7294904 |
| 1968 | 37000.37200.39400.303300.582200 | Lobby architrave work | 10d | 2027-03-24 | 2027-04-02 | 1967 |  | 7 day week No holidays | 7294914 |
| 1969 | 37000.37200.39400.303300.582300 | Lobby gypsum plaster | 8d | 2027-04-03 | 2027-04-10 | 1968 |  | 7 day week No holidays | 7294924 |
| 1970 | 37000.37200.39400.303300.582400 | Staircase epoxy paint | 10d | 2027-04-11 | 2027-04-20 | 1969 |  | 7 day week No holidays | 7294934 |
| 1971 | 37000.37200.39400.303300.582500 | Staircase railing | 6d | 2027-04-11 | 2027-04-16 | 1969 |  | 7 day week No holidays | 7294944 |
| 1972 | 37000.37200.39400.303300.582600 | Lobby flooring work | 8d | 2027-04-11 | 2027-04-18 | 1969 |  | 7 day week No holidays | 7294954 |
| 1973 | 37000.37200.39400.303300.582700 | Painting | 10d | 2027-04-19 | 2027-04-28 | 1972 |  | 7 day week No holidays | 7294964 |
| 1974 | 37000.37200.39400.303300.582800 | Fire rated doors | 6d | 2027-04-19 | 2027-04-24 | 1972 |  | 7 day week No holidays | 7294974 |
| 1975 | 37000.37200.39400.303000 | **63rd Floor** | 42d | 2027-03-24 | 2027-05-04 |  | start no earlier than 2027-03-24 | 7 day week No holidays | 7288454 |
| 1976 | 37000.37200.39400.303000.582900 | Lift blockwork | 6d | 2027-03-24 | 2027-03-29 | 1967 |  | 7 day week No holidays | 7294984 |
| 1977 | 37000.37200.39400.303000.583000 | Lobby architrave work | 10d | 2027-03-30 | 2027-04-08 | 1976 |  | 7 day week No holidays | 7294994 |
| 1978 | 37000.37200.39400.303000.583100 | Lobby gypsum plaster | 8d | 2027-04-09 | 2027-04-16 | 1977 |  | 7 day week No holidays | 7295004 |
| 1979 | 37000.37200.39400.303000.583200 | Staircase epoxy paint | 10d | 2027-04-17 | 2027-04-26 | 1978 |  | 7 day week No holidays | 7295014 |
| 1980 | 37000.37200.39400.303000.583300 | Staircase railing | 6d | 2027-04-17 | 2027-04-22 | 1978 |  | 7 day week No holidays | 7295024 |
| 1981 | 37000.37200.39400.303000.583400 | Lobby flooring work | 8d | 2027-04-17 | 2027-04-24 | 1978 |  | 7 day week No holidays | 7295034 |
| 1982 | 37000.37200.39400.303000.583500 | Painting | 10d | 2027-04-25 | 2027-05-04 | 1981 |  | 7 day week No holidays | 7295044 |
| 1983 | 37000.37200.39400.303000.583600 | Fire rated doors | 6d | 2027-04-25 | 2027-04-30 | 1981 |  | 7 day week No holidays | 7295054 |
| 1984 | 37000.37200.39400.302900 | **64th Floor** | 42d | 2027-03-30 | 2027-05-10 |  | start no earlier than 2027-03-30 | 7 day week No holidays | 7288464 |
| 1985 | 37000.37200.39400.302900.583700 | Lift blockwork | 6d | 2027-03-30 | 2027-04-04 | 1976 |  | 7 day week No holidays | 7295064 |
| 1986 | 37000.37200.39400.302900.583800 | Lobby architrave work | 10d | 2027-04-05 | 2027-04-14 | 1985 |  | 7 day week No holidays | 7295074 |
| 1987 | 37000.37200.39400.302900.583900 | Lobby gypsum plaster | 8d | 2027-04-15 | 2027-04-22 | 1986 |  | 7 day week No holidays | 7295084 |
| 1988 | 37000.37200.39400.302900.584000 | Staircase epoxy paint | 10d | 2027-04-23 | 2027-05-02 | 1987 |  | 7 day week No holidays | 7295094 |
| 1989 | 37000.37200.39400.302900.584100 | Staircase railing | 6d | 2027-04-23 | 2027-04-28 | 1987 |  | 7 day week No holidays | 7295104 |
| 1990 | 37000.37200.39400.302900.584200 | Lobby flooring work | 8d | 2027-04-23 | 2027-04-30 | 1987 |  | 7 day week No holidays | 7295114 |
| 1991 | 37000.37200.39400.302900.584300 | Painting | 10d | 2027-05-01 | 2027-05-10 | 1990 |  | 7 day week No holidays | 7295124 |
| 1992 | 37000.37200.39400.302900.584400 | Fire rated doors | 6d | 2027-05-01 | 2027-05-06 | 1990 |  | 7 day week No holidays | 7295134 |

| ID | WBS | Task | Duration | Start | Finish | Predecessors | Constraint | Calendar | Unique_Task_ID |
| --- | --- | --- | --- | --- | --- | --- | --- | --- | --- |
| 1993 | 37000.37200.39400.302600 | **65th Floor** | 42d | 2027-04-05 | 2027-05-16 |  | start no earlier than 2027-04-05 | 7 day week No holidays | 7288474 |
| 1994 | 37000.37200.39400.302600.584500 | Lift blockwork | 6d | 2027-04-05 | 2027-04-10 | 1985 |  | 7 day week No holidays | 7295144 |
| 1995 | 37000.37200.39400.302600.584600 | Lobby architrave work | 10d | 2027-04-11 | 2027-04-20 | 1994 |  | 7 day week No holidays | 7295154 |
| 1996 | 37000.37200.39400.302600.584700 | Lobby gypsum plaster | 8d | 2027-04-21 | 2027-04-28 | 1995 |  | 7 day week No holidays | 7295164 |
| 1997 | 37000.37200.39400.302600.584800 | Staircase epoxy paint | 10d | 2027-04-29 | 2027-05-08 | 1996 |  | 7 day week No holidays | 7295174 |
| 1998 | 37000.37200.39400.302600.584900 | Staircase railing | 6d | 2027-04-29 | 2027-05-04 | 1996 |  | 7 day week No holidays | 7295184 |
| 1999 | 37000.37200.39400.302600.585000 | Lobby flooring work | 8d | 2027-04-29 | 2027-05-06 | 1996 |  | 7 day week No holidays | 7295194 |
| 2000 | 37000.37200.39400.302600.585100 | Painting | 10d | 2027-05-07 | 2027-05-16 | 1999 |  | 7 day week No holidays | 7295204 |
| 2001 | 37000.37200.39400.302600.585200 | Fire rated doors | 6d | 2027-05-07 | 2027-05-12 | 1999 |  | 7 day week No holidays | 7295214 |
| 2002 | 37000.37200.39400.301900 | **66th Floor** | 42d | 2027-04-11 | 2027-05-22 |  | start no earlier than 2027-04-11 | 7 day week No holidays | 7288484 |
| 2003 | 37000.37200.39400.301900.585300 | Lift blockwork | 6d | 2027-04-11 | 2027-04-16 | 1994 |  | 7 day week No holidays | 7295224 |
| 2004 | 37000.37200.39400.301900.585400 | Lobby architrave work | 10d | 2027-04-17 | 2027-04-26 | 2003 |  | 7 day week No holidays | 7295234 |
| 2005 | 37000.37200.39400.301900.585500 | Lobby gypsum plaster | 8d | 2027-04-27 | 2027-05-04 | 2004 |  | 7 day week No holidays | 7295244 |
| 2006 | 37000.37200.39400.301900.585600 | Staircase epoxy paint | 10d | 2027-05-05 | 2027-05-14 | 2005 |  | 7 day week No holidays | 7295254 |
| 2007 | 37000.37200.39400.301900.585700 | Staircase railing | 6d | 2027-05-05 | 2027-05-10 | 2005 |  | 7 day week No holidays | 7295264 |
| 2008 | 37000.37200.39400.301900.585800 | Lobby flooring work | 8d | 2027-05-05 | 2027-05-12 | 2005 |  | 7 day week No holidays | 7295274 |
| 2009 | 37000.37200.39400.301900.585900 | Painting | 10d | 2027-05-13 | 2027-05-22 | 2008 |  | 7 day week No holidays | 7295284 |
| 2010 | 37000.37200.39400.301900.586000 | Fire rated doors | 6d | 2027-05-13 | 2027-05-18 | 2008 |  | 7 day week No holidays | 7295294 |
| 2011 | 37000.37200.39400.302400 | **67th Floor** | 42d | 2027-04-17 | 2027-05-28 |  | start no earlier than 2027-04-17 | 7 day week No holidays | 7288494 |
| 2012 | 37000.37200.39400.302400.586100 | Lift blockwork | 6d | 2027-04-17 | 2027-04-22 | 2003 |  | 7 day week No holidays | 7295304 |
| 2013 | 37000.37200.39400.302400.586200 | Lobby architrave work | 10d | 2027-04-23 | 2027-05-02 | 2012 |  | 7 day week No holidays | 7295314 |
| 2014 | 37000.37200.39400.302400.586300 | Lobby gypsum plaster | 8d | 2027-05-03 | 2027-05-10 | 2013 |  | 7 day week No holidays | 7295324 |
| 2015 | 37000.37200.39400.302400.586400 | Staircase epoxy paint | 10d | 2027-05-11 | 2027-05-20 | 2014 |  | 7 day week No holidays | 7295334 |
| 2016 | 37000.37200.39400.302400.586500 | Staircase railing | 6d | 2027-05-11 | 2027-05-16 | 2014 |  | 7 day week No holidays | 7295344 |
| 2017 | 37000.37200.39400.302400.586600 | Lobby flooring work | 8d | 2027-05-11 | 2027-05-18 | 2014 |  | 7 day week No holidays | 7295354 |
| 2018 | 37000.37200.39400.302400.586700 | Painting | 10d | 2027-05-19 | 2027-05-28 | 2017 |  | 7 day week No holidays | 7295364 |
| 2019 | 37000.37200.39400.302400.586800 | Fire rated doors | 6d | 2027-05-19 | 2027-05-24 | 2017 |  | 7 day week No holidays | 7295374 |

| ID | WBS | Task | Duration | Start | Finish | Predecessors | Constraint | Calendar | Unique_Task_ID |
| --- | --- | --- | --- | --- | --- | --- | --- | --- | --- |
| 2020 | 37000.37200.39400.303100 | **68th Floor** | 42d | 2027-04-23 | 2027-06-03 |  | start no earlier than 2027-04-23 | 7 day week No holidays | 7288504 |
| 2021 | 37000.37200.39400.303100.586900 | Lift blockwork | 6d | 2027-04-23 | 2027-04-28 | 2012 |  | 7 day week No holidays | 2492968 |
| 2022 | 37000.37200.39400.303100.587000 | Lobby architrave work | 10d | 2027-04-29 | 2027-05-08 | 2021 |  | 7 day week No holidays | 7295384 |
| 2023 | 37000.37200.39400.303100.587100 | Lobby gypsum plaster | 8d | 2027-05-09 | 2027-05-16 | 2022 |  | 7 day week No holidays | 7295394 |
| 2024 | 37000.37200.39400.303100.587200 | Staircase epoxy paint | 10d | 2027-05-17 | 2027-05-26 | 2023 |  | 7 day week No holidays | 7295404 |
| 2025 | 37000.37200.39400.303100.587300 | Staircase railing | 6d | 2027-05-17 | 2027-05-22 | 2023 |  | 7 day week No holidays | 7295414 |
| 2026 | 37000.37200.39400.303100.587400 | Lobby flooring work | 8d | 2027-05-17 | 2027-05-24 | 2023 |  | 7 day week No holidays | 7295424 |
| 2027 | 37000.37200.39400.303100.587500 | Painting | 10d | 2027-05-25 | 2027-06-03 | 2026 |  | 7 day week No holidays | 7295434 |
| 2028 | 37000.37200.39400.303100.587600 | Fire rated doors | 6d | 2027-05-25 | 2027-05-30 | 2026 |  | 7 day week No holidays | 7295444 |
| 2029 | 37000.37200.39400.303200 | **69th Floor** | 42d | 2027-04-29 | 2027-06-09 |  | start no earlier than 2027-04-29 | 7 day week No holidays | 7288514 |
| 2030 | 37000.37200.39400.303200.587700 | Lift blockwork | 6d | 2027-04-29 | 2027-05-04 | 2021 |  | 7 day week No holidays | 7295454 |
| 2031 | 37000.37200.39400.303200.587800 | Lobby architrave work | 10d | 2027-05-05 | 2027-05-14 | 2030 |  | 7 day week No holidays | 7295464 |
| 2032 | 37000.37200.39400.303200.587900 | Lobby gypsum plaster | 8d | 2027-05-15 | 2027-05-22 | 2031 |  | 7 day week No holidays | 7295474 |
| 2033 | 37000.37200.39400.303200.588000 | Staircase epoxy paint | 10d | 2027-05-23 | 2027-06-01 | 2032 |  | 7 day week No holidays | 7295484 |
| 2034 | 37000.37200.39400.303200.588100 | Staircase railing | 6d | 2027-05-23 | 2027-05-28 | 2032 |  | 7 day week No holidays | 7295494 |
| 2035 | 37000.37200.39400.303200.588200 | Lobby flooring work | 8d | 2027-05-23 | 2027-05-30 | 2032 |  | 7 day week No holidays | 7295504 |
| 2036 | 37000.37200.39400.303200.588300 | Painting | 10d | 2027-05-31 | 2027-06-09 | 2035 |  | 7 day week No holidays | 7295514 |
| 2037 | 37000.37200.39400.303200.588400 | Fire rated doors | 6d | 2027-05-31 | 2027-06-05 | 2035 |  | 7 day week No holidays | 7295524 |
| 2038 | 37000.37200.39400.303600 | **70th Floor** | 42d | 2027-05-05 | 2027-06-15 |  | start no earlier than 2027-05-05 | 7 day week No holidays | 7288524 |
| 2039 | 37000.37200.39400.303600.588500 | Lift blockwork | 6d | 2027-05-05 | 2027-05-10 | 2030 |  | 7 day week No holidays | 7295534 |
| 2040 | 37000.37200.39400.303600.588600 | Lobby architrave work | 10d | 2027-05-11 | 2027-05-20 | 2039 |  | 7 day week No holidays | 7295544 |
| 2041 | 37000.37200.39400.303600.588700 | Lobby gypsum plaster | 8d | 2027-05-21 | 2027-05-28 | 2040 |  | 7 day week No holidays | 7295554 |
| 2042 | 37000.37200.39400.303600.588800 | Staircase epoxy paint | 10d | 2027-05-29 | 2027-06-07 | 2041 |  | 7 day week No holidays | 7295564 |
| 2043 | 37000.37200.39400.303600.588900 | Staircase railing | 6d | 2027-05-29 | 2027-06-03 | 2041 |  | 7 day week No holidays | 7295574 |
| 2044 | 37000.37200.39400.303600.589000 | Lobby flooring work | 8d | 2027-05-29 | 2027-06-05 | 2041 |  | 7 day week No holidays | 7295584 |
| 2045 | 37000.37200.39400.303600.589100 | Painting | 10d | 2027-06-06 | 2027-06-15 | 2044 |  | 7 day week No holidays | 7295594 |
| 2046 | 37000.37200.39400.303600.589200 | Fire rated doors | 6d | 2027-06-06 | 2027-06-11 | 2044 |  | 7 day week No holidays | 7295604 |

| ID | WBS | Task | Duration | Start | Finish | Predecessors | Constraint | Calendar | Unique_Task_ID |
| --- | --- | --- | --- | --- | --- | --- | --- | --- | --- |
| 2047 | 37000.37200.39400.303800 | **71st Floor** | 42d | 2027-05-11 | 2027-06-21 |  | start no earlier than 2027-05-11 | 7 day week No holidays | 7288534 |
| 2048 | 37000.37200.39400.303800.589300 | Lift blockwork | 6d | 2027-05-11 | 2027-05-16 | 2039 |  | 7 day week No holidays | 7295614 |
| 2049 | 37000.37200.39400.303800.589400 | Lobby architrave work | 10d | 2027-05-17 | 2027-05-26 | 2048 |  | 7 day week No holidays | 7295624 |
| 2050 | 37000.37200.39400.303800.589500 | Lobby gypsum plaster | 8d | 2027-05-27 | 2027-06-03 | 2049 |  | 7 day week No holidays | 7295634 |
| 2051 | 37000.37200.39400.303800.589600 | Staircase epoxy paint | 10d | 2027-06-04 | 2027-06-13 | 2050 |  | 7 day week No holidays | 7295644 |
| 2052 | 37000.37200.39400.303800.589700 | Staircase railing | 6d | 2027-06-04 | 2027-06-09 | 2050 |  | 7 day week No holidays | 7295654 |
| 2053 | 37000.37200.39400.303800.589800 | Lobby flooring work | 8d | 2027-06-04 | 2027-06-11 | 2050 |  | 7 day week No holidays | 7295664 |
| 2054 | 37000.37200.39400.303800.589900 | Painting | 10d | 2027-06-12 | 2027-06-21 | 2053 |  | 7 day week No holidays | 7295674 |
| 2055 | 37000.37200.39400.303800.590000 | Fire rated doors | 6d | 2027-06-12 | 2027-06-17 | 2053 |  | 7 day week No holidays | 7295684 |
| 2056 | 37000.37200.39400.303900 | **72nd Floor** | 42d | 2027-05-17 | 2027-06-27 |  | start no earlier than 2027-05-17 | 7 day week No holidays | 7288544 |
| 2057 | 37000.37200.39400.303900.590100 | Lift blockwork | 6d | 2027-05-17 | 2027-05-22 | 2048 |  | 7 day week No holidays | 7295694 |
| 2058 | 37000.37200.39400.303900.590200 | Lobby architrave work | 10d | 2027-05-23 | 2027-06-01 | 2057 |  | 7 day week No holidays | 7295704 |
| 2059 | 37000.37200.39400.303900.590300 | Lobby gypsum plaster | 8d | 2027-06-02 | 2027-06-09 | 2058 |  | 7 day week No holidays | 7295714 |
| 2060 | 37000.37200.39400.303900.590400 | Staircase epoxy paint | 10d | 2027-06-10 | 2027-06-19 | 2059 |  | 7 day week No holidays | 7295724 |
| 2061 | 37000.37200.39400.303900.590500 | Staircase railing | 6d | 2027-06-10 | 2027-06-15 | 2059 |  | 7 day week No holidays | 7295734 |
| 2062 | 37000.37200.39400.303900.590600 | Lobby flooring work | 8d | 2027-06-10 | 2027-06-17 | 2059 |  | 7 day week No holidays | 7295744 |
| 2063 | 37000.37200.39400.303900.590700 | Painting | 10d | 2027-06-18 | 2027-06-27 | 2062 |  | 7 day week No holidays | 7295754 |
| 2064 | 37000.37200.39400.303900.590800 | Fire rated doors | 6d | 2027-06-18 | 2027-06-23 | 2062 |  | 7 day week No holidays | 7295764 |
| 2065 | 37000.37200.387400 | **Capex Item procurement** | 240d | 2026-07-15 | 2027-03-11 |  | start no earlier than 2026-07-15 | 7 day week No holidays | 7288774 |
| 2066 | 37000.37200.387400.514400 | Lift | 120d | 2026-07-15 | 2026-11-11 | 8FS-120d |  | 7 day week No holidays | 7289354 |
| 2067 | 37000.37200.387400.514500 | Panel | 120d | 2026-11-12 | 2027-03-11 | 8 |  | 7 day week No holidays | 7289364 |
| 2068 | 37000.37200.387400.514600 | DG procurement | 120d | 2026-11-12 | 2027-03-11 | 8 |  | 7 day week No holidays | 7289374 |
| 2069 | 37000.37200.387400.514700 | Transformer | 120d | 2026-11-12 | 2027-03-11 | 8 |  | 7 day week No holidays | 7289384 |
| 2070 | 37000.37200.387400.514800 | Pumps | 120d | 2026-11-12 | 2027-03-11 | 8 |  | 7 day week No holidays | 7289394 |

| ID | WBS | Task | Duration | Start | Finish | Predecessors | Constraint | Calendar | Unique_Task_ID |
| --- | --- | --- | --- | --- | --- | --- | --- | --- | --- |
| 2071 | 37000.37200.387500 | **External Services** | 180d | 2026-11-12 | 2027-05-10 |  | start no earlier than 2026-11-12 | 7 day week No holidays | 7288764 |
| 2072 | 37000.37200.387500.514900 | Plumbing network | 180d | 2026-11-12 | 2027-05-10 | 71 |  | 7 day week No holidays | 7289404 |
| 2073 | 37000.37200.387500.515000 | Electrical network | 180d | 2026-11-12 | 2027-05-10 | 71 |  | 7 day week No holidays | 7289414 |
| 2074 | 37000.37200.387500.515100 | Electrical lighting | 180d | 2026-11-12 | 2027-05-10 | 71 |  | 7 day week No holidays | 7289424 |
| 2075 | 37000.37200.387500.515200 | Fire fighting | 180d | 2026-11-12 | 2027-05-10 | 71 |  | 7 day week No holidays | 7289434 |
| 2076 | 37000.37200.387500.515300 | CCTV works | 180d | 2026-11-12 | 2027-05-10 | 71 |  | 7 day week No holidays | 2504388 |
| 2077 | 37000.37200.125500 | **Infra Works** | 120d | 2026-11-12 | 2027-03-11 |  | start no earlier than 2026-11-12 | 7 day week No holidays | 7284954 |
| 2078 | 37000.37200.125500.515400 | Compound wall | 60d | 2026-11-12 | 2027-01-10 | 71 |  | 7 day week No holidays | 7289444 |
| 2079 | 37000.37200.125500.515500 | Entrance gate | 30d | 2026-11-12 | 2026-12-11 | 71 |  | 7 day week No holidays | 7289454 |
| 2080 | 37000.37200.125500.515600 | STP | 120d | 2026-11-12 | 2027-03-11 | 71 |  | 7 day week No holidays | 7289464 |
| 2081 | 37000.37200.125500.515700 | WTP | 90d | 2026-11-12 | 2027-02-09 | 71 |  | 7 day week No holidays | 7289474 |
| 2082 | 37000.37200.125500.515800 | OWC | 45d | 2026-11-12 | 2026-12-26 | 71 |  | 7 day week No holidays | 7289484 |
| 2083 | 37000.37200.125500.515900 | Road | 90d | 2026-11-12 | 2027-02-09 | 71 |  | 7 day week No holidays | 7289494 |
| 2084 | 37000.37200.125500.516000 | Storm water drain | 45d | 2026-11-12 | 2026-12-26 | 71 |  | 7 day week No holidays | 7289504 |
| 2085 | 37000.37200.125500.516100 | HIghside electrical network | 45d | 2026-11-12 | 2026-12-26 | 71 |  | 7 day week No holidays | 7289514 |
| 2086 | 37000.37200.125500.516200 | Softscaping | 45d | 2026-11-12 | 2026-12-26 | 71 |  | 7 day week No holidays | 7289524 |
| 2087 | 37000.37200.125500.516300 | Rain water harvesting | 45d | 2026-11-12 | 2026-12-26 | 71 |  | 7 day week No holidays | 7289534 |
| 2088 | 37000.37200.125500.516400 | Hardscaping | 45d | 2026-11-12 | 2026-12-26 | 71 |  | 7 day week No holidays | 7289544 |
| 2089 | 37000.37200.125500.516500 | External secturity | 45d | 2026-11-12 | 2026-12-26 | 71 |  | 7 day week No holidays | 7289554 |
| 2090 | 37000.37200.125500.516600 | Signages | 45d | 2026-11-12 | 2026-12-26 | 71 |  | 7 day week No holidays | 7289564 |
| 2091 | 37000.37200.125500.516700 | Green building certification | 45d | 2026-11-12 | 2026-12-26 | 71 |  | 7 day week No holidays | 7289574 |
| 2092 | 37000.37200.404000 | **CFO** | 31d | 2027-10-18 | 2027-11-17 |  | start no earlier than 2027-10-18 | 7 day week No holidays | 2484769 |
| 2093 | 37000.37200.404000.516800 | CFO Application | 1d | 2027-10-18 | 2027-10-18 | 1470, 2071, 1447, 1454, 1459, 1463, 2088, 2089, 2090 |  | 7 day week No holidays | 2484770 |
| 2094 | 37000.37200.404000.516900 | CFO Receipt | 30d | 2027-10-19 | 2027-11-17 | 2093 |  | 7 day week No holidays | 2484771 |

| ID | WBS | Task | Duration | Start | Finish | Predecessors | Complete | Constraint | Calendar | Unique_Task_ID |
| --- | --- | --- | --- | --- | --- | --- | --- | --- | --- | --- |
| 2095 | 37000.37200.404100 | **OC** | 31d | 2027-11-18 | 2027-12-18 |  |  | start no earlier than 2027-11-18 | 7 day week No holidays | 2526448 |
| 2096 | 37000.37200.404100.517000 | OC Application | 1d | 2027-11-18 | 2027-11-18 | 2094 |  |  | 7 day week No holidays | 2526458 |
| 2097 | 37000.37200.404100.517100 | OC Receipt | 30d | 2027-11-19 | 2027-12-18 | 2096 |  |  | 7 day week No holidays | 2526468 |
| 2098 | 37000.37200.264000 | **Handing Over activities** | 56d | 2029-04-26 | 2029-06-21 |  |  | start no earlier than 2029-04-26 | 7 day week No holidays | 7285974 |
| 2099 | 37000.37200.264000.345000 | **Acid Wash** | 49d | 2029-04-26 | 2029-06-14 |  |  | start no earlier than 2029-04-26 | 7 day week No holidays | 7288564 |
| 2100 | 37000.37200.264000.345000.590900 | 1st to 10th Fl | 7d | 2029-04-26 | 2029-05-03 | 604, 2095 |  |  | 7 day week No holidays | 7295774 |
| 2101 | 37000.37200.264000.345000.591000 | 11th to 20th Fl | 7d | 2029-05-03 | 2029-05-10 | 2100 |  |  | 7 day week No holidays | 7295784 |
| 2102 | 37000.37200.264000.345000.591100 | 21st to 30th Fl | 7d | 2029-05-10 | 2029-05-17 | 2101 |  |  | 7 day week No holidays | 7295794 |
| 2103 | 37000.37200.264000.345000.591200 | 31st to 40th Fl | 7d | 2029-05-17 | 2029-05-24 | 2102 |  |  | 7 day week No holidays | 7295804 |
| 2104 | 37000.37200.264000.345000.591300 | 41st to 50th Fl | 7d | 2029-05-24 | 2029-05-31 | 2103 |  |  | 7 day week No holidays | 7295814 |
| 2105 | 37000.37200.264000.345000.591400 | 51st to 60th Fl | 7d | 2029-05-31 | 2029-06-07 | 2104 |  |  | 7 day week No holidays | 7295824 |
| 2106 | 37000.37200.264000.345000.591500 | 61st to 72nd fl | 7d | 2029-06-07 | 2029-06-14 | 2105 |  |  | 7 day week No holidays | 7295834 |
| 2107 | 37000.37200.264000.355100 | **CP & Sanitory fittings** | 49d | 2029-05-03 | 2029-06-21 |  |  | start no earlier than 2029-05-03 | 7 day week No holidays | 7288554 |
| 2108 | 37000.37200.264000.355100.591600 | 1st to 10th Fl | 7d | 2029-05-03 | 2029-05-10 | 2100 |  |  | 7 day week No holidays | 7295844 |
| 2109 | 37000.37200.264000.355100.591700 | 11th to 20th Fl | 7d | 2029-05-10 | 2029-05-17 | 2108 |  |  | 7 day week No holidays | 7295854 |
| 2110 | 37000.37200.264000.355100.591800 | 21st to 30th Fl | 7d | 2029-05-17 | 2029-05-24 | 2109 |  |  | 7 day week No holidays | 7295864 |
| 2111 | 37000.37200.264000.355100.591900 | 31st to 40th Fl | 7d | 2029-05-24 | 2029-05-31 | 2110 |  |  | 7 day week No holidays | 7295874 |
| 2112 | 37000.37200.264000.355100.592000 | 41st to 50th Fl | 7d | 2029-05-31 | 2029-06-07 | 2111 |  |  | 7 day week No holidays | 7295884 |
| 2113 | 37000.37200.264000.355100.592100 | 51st to 60th Fl | 7d | 2029-06-07 | 2029-06-14 | 2112 |  |  | 7 day week No holidays | 7295894 |
| 2114 | 37000.37200.264000.355100.592200 | 61st to 72nd fl | 7d | 2029-06-14 | 2029-06-21 | 2113 |  |  | 7 day week No holidays | 7295904 |
| 2115 | 37000.37200.56500 | **TA Milestones** | 1370d | 2023-12-31 | 2027-09-30 |  | 30% | start no earlier than 2023-12-31 | 7 day week No holidays | 8605794 |
| 2116 | 37000.37200.56500.57000 | **Milestones** | 1370d | 2023-12-31 | 2027-09-30 |  | 45% | start no earlier than 2023-12-31 | 7 day week No holidays | 8605804 |
| 2117 | 37000.37200.56500.57000.592300 | Initiation of 20th Floor slab | 1d | 2023-12-31 | 2023-12-31 |  | 100% | start no earlier than 2023-12-31 | 7 day week No holidays | 8605824 |
| 2118 | 37000.37200.56500.57000.592400 | Initiation of 25th Floor slab | 1d | 2024-03-12 | 2024-03-12 |  | 100% | start no earlier than 2024-03-12 | 7 day week No holidays | 8605834 |
| 2119 | 37000.37200.56500.57000.592500 | Completion 27th Floor slab | 1d | 2024-05-07 | 2024-05-07 |  | 100% | start no earlier than 2024-05-07 | 7 day week No holidays | 8605844 |
| 2120 | 37000.37200.56500.57000.592600 | Initiation of 30th Floor slab | 1d | 2024-06-10 | 2024-06-10 |  | 100% | start no earlier than 2024-06-10 | 7 day week No holidays | 8605854 |
| 2121 | 37000.37200.56500.57000.592700 | Completion 31st Floor Slab | 1d | 2024-07-07 | 2024-07-07 |  | 100% | start no earlier than 2024-07-07 | 7 day week No holidays | 8605864 |
| 2122 | 37000.37200.56500.57000.592800 | Initiation of 35th Floor slab | 5d | 2024-08-23 | 2024-08-27 |  | 100% | start no earlier than 2024-08-23 | 7 day week No holidays | 8605874 |
| 2123 | 37000.37200.56500.57000.592900 | Completion 36th Floor slab | 1d | 2024-09-28 | 2024-09-28 |  | 100% | start no earlier than 2024-09-28 | 7 day week No holidays | 8605884 |
| 2124 | 37000.37200.56500.57000.593000 | Initiation of 40th Floor slab | 1d | 2025-01-27 | 2025-01-27 |  | 100% | start no earlier than 2025-01-27 | Indian Calendar | 8605885 |
| 2125 | 37000.37200.56500.57000.3793000 | Completion 45th Floor slab | 1d | 2025-05-01 | 2025-05-01 |  |  | start no earlier than 2025-05-01 | Indian Calendar | 8605886 |
| 2126 | 37000.37200.56500.57000.3792900 | Initiation of 45th Floor slab | 1d | 2025-04-16 | 2025-04-16 |  |  | start no earlier than 2025-04-16 | Indian Calendar | 8605887 |
| 2127 | 37000.37200.56500.57000.3792800 | Completion 48th Floor slab | 1d | 2025-06-14 | 2025-06-14 |  |  | start no earlier than 2025-06-14 | Indian Calendar | 8605814 |
| 2128 | 37000.37200.56500.57000.3792700 | Initiation of 48th Floor slab | 1d | 2025-05-31 | 2025-05-31 |  |  | start no earlier than 2025-05-31 | Indian Calendar | 8606324 |
| 2129 | 37000.37200.56500.57000.3792600 | Completion 49th Floor slab | 1d | 2025-06-30 | 2025-06-30 |  |  | start no earlier than 2025-06-30 | Indian Calendar | 8605888 |
| 2130 | 37000.37200.56500.57000.3792500 | Initiation of 50th Floor slab | 1d | 2025-06-30 | 2025-06-30 |  |  | start no earlier than 2025-06-30 | Indian Calendar | 8605889 |
| 2131 | 37000.37200.56500.57000.3792400 | Completion 54th Floor slab | 1d | 2027-09-18 | 2027-09-18 |  |  | start no earlier than 2027-09-18 | Indian Calendar | 8605890 |
| 2132 | 37000.37200.56500.57000.3792300 | Initiation of 60th Floor slab | 0.12d | 2025-12-27 | 2025-12-27 |  |  | start no earlier than 2025-12-27 | Indian Calendar | 8605900 |
| 2136 | 37000.37200.56500.57000.3792200 | On Completion of Terrace Slab | 1d | 2027-09-30 | 2027-09-30 |  |  | start no earlier than 2027-09-30 | Indian Calendar | 8605891 |
| 2137 | 37000.37200.56500.57000.3792100 | On completion of the walls, internal plaster, floorings of the said Apartment | 1d | 2027-09-30 | 2027-09-30 |  |  | start no earlier than 2027-09-30 | Indian Calendar | 8605892 |
| 2138 | 37000.37200.56500.57000.3792000 | On completion of the staircases and lift wells | 1d | 2027-09-30 | 2027-09-30 |  |  | start no earlier than 2027-09-30 | Indian Calendar | 8605893 |
| 2139 | 37000.37200.56500.57000.3791900 | On completion of Elevation and external plumbing of said apartment | 1d | 2027-09-30 | 2027-09-30 |  |  | start no earlier than 2027-09-30 | Indian Calendar | 8605903 |
| 2140 | 37000.37200.56500.57000.3791800 | On completion of water Pumps and Electrical Fittings of said apartment | 1d | 2027-09-30 | 2027-09-30 |  |  | start no earlier than 2027-09-30 | Indian Calendar | 8605913 |
| 2141 | 37000.37200.56500.57000.3791700 | On Application of OC | 1d | 2027-09-30 | 2027-09-30 |  |  | start no earlier than 2027-09-30 | Indian Calendar | 8605923 |
| 2142 | 37000.37200.56500.57000.3791600 | On Intimation Of Possession | 1d | 2027-09-30 | 2027-09-30 |  |  | start no earlier than 2027-09-30 | Indian Calendar | 8606184 |

| ID | WBS | Task | Duration | Start | Finish | Predecessors | Complete | Constraint | Calendar | Unique_Task_ID |
| --- | --- | --- | --- | --- | --- | --- | --- | --- | --- | --- |
| 2156 | 37000.40500 | **Tower B** | 3017.28d | 2021-12-08 | 2030-03-13 |  | 7% | start no earlier than 2021-12-08 | 7 day week No holidays | 2505908 |
| 2157 | 37000.40500.41000 | **RCC Work** | 2715.28d | 2021-12-08 | 2029-05-15 |  | 53% | start no earlier than 2021-12-08 | 7 day week No holidays | 2505968 |
| 2158 | 37000.40500.41000.485200 | Transit Demolition & Evacuation | 32d | 2023-09-29 | 2023-10-30 |  | 100% | must start on 2023-04-01 | 7 day week No holidays | 2526098 |
| 2159 | 37000.40500.41000.485000 | Piling Work & Rock Anchoring | 215.43d | 2023-10-15 | 2025-01-30 | 2158FS-434.65d | 100% | start no earlier than 2023-10-15 | 7 day week No holidays | 2505969 |
| 2160 | 37000.40500.41000.517200 | Piling Work & Rock Anchoring | 10d | 2025-04-01 | 2025-04-11 |  |  | start no earlier than 2025-04-01 | Indian Calendar | 9781596 |
| 2161 | 37000.40500.41000.484700 | Excavation Work | 1177.28d | 2021-12-08 | 2025-02-27 | 2159FS-387.63d | 100% |  | 7 day week No holidays | 2505970 |
| 2162 | 37000.40500.41000.484600 | Excavation work 1 | 381.31d | 2023-12-22 | 2025-03-29 |  | 100% | start no earlier than 2023-12-22 | Indian Calendar | 9446174 |
| 2163 | 37000.40500.41000.484500 | PCC | 18d | 2025-02-15 | 2025-04-02 |  | 88% | start no earlier than 2025-02-15 | Indian Calendar | 2505971 |
| 2164 | 37000.40500.41000.43200 | **RCC work** | 1477d | 2025-01-30 | 2029-02-14 |  |  | start no earlier than 2025-01-30 | 7 day week No holidays | 2505978 |
| 2165 | 37000.40500.41000.43200.399400 | **Aluform Mobilization** | 104d | 2025-08-13 | 2025-12-11 |  |  | start no earlier than 2025-08-13 | Indian Calendar | 7562263 |
| 2166 | 37000.40500.41000.43200.399400.759300 | Aluform-Order Date | 1d | 2025-08-13 | 2025-08-13 | 2172 |  |  | 7 day week No holidays | 7562273 |
| 2167 | 37000.40500.41000.43200.399400.759400 | Aluform-Shop Drawing Approval Date | 60d | 2025-08-14 | 2025-10-12 | 2166 |  |  | 7 day week No holidays | 7562283 |
| 2168 | 37000.40500.41000.43200.399400.759500 | Aluform-Start of Supply for first lot date | 60d | 2025-10-13 | 2025-12-11 | 2167 |  |  | 7 day week No holidays | 7562293 |
| 2169 | 37000.40500.41000.43200.491500 | Raft | 64d | 2025-01-30 | 2025-05-30 | 2163FS-63d | 9% |  | 7 day week No holidays | 2505979 |
| 2170 | 37000.40500.41000.43200.593100 | RCC - B2 floor | 7d | 2025-05-31 | 2025-06-06 | 2169 |  |  | 7 day week No holidays | 2505980 |
| 2171 | 37000.40500.41000.43200.593200 | RCC - B1 floor | 7d | 2025-05-31 | 2025-06-06 | 2169 |  |  | 7 day week No holidays | 2505981 |
| 2172 | 37000.40500.41000.43200.593300 | RCC - GF | 31d | 2025-07-13 | 2025-08-12 | 2171FS+36d |  |  | 7 day week No holidays | 2505982 |
| 2173 | 37000.40500.41000.43200.593400 | RCC - 1st Podium | 25d | 2025-08-21 | 2025-09-14 | 2172FS+8d |  |  | 7 day week No holidays | 2505983 |
| 2174 | 37000.40500.41000.43200.593500 | RCC - 2nd Podium | 25d | 2025-09-15 | 2025-10-09 | 2173 |  |  | 7 day week No holidays | 2505984 |
| 2175 | 37000.40500.41000.43200.593600 | RCC - 3rd Podium | 25d | 2025-10-10 | 2025-11-03 | 2174 |  |  | 7 day week No holidays | 2505985 |
| 2176 | 37000.40500.41000.43200.593700 | RCC - 4th Podium | 25d | 2025-11-04 | 2025-11-28 | 2175 |  |  | 7 day week No holidays | 2505986 |
| 2177 | 37000.40500.41000.43200.593800 | RCC - 5th Podium | 25d | 2025-12-04 | 2025-12-28 | 2176FS+5d |  |  | 7 day week No holidays | 7295914 |
| 2178 | 37000.40500.41000.43200.593900 | RCC - 6th Podium | 25d | 2025-12-29 | 2026-01-22 | 2177 |  |  | 7 day week No holidays | 7295924 |
| 2179 | 37000.40500.41000.43200.594000 | RCC - 7th Podium | 25d | 2026-01-23 | 2026-02-16 | 2178 |  |  | 7 day week No holidays | 7295934 |
| 2180 | 37000.40500.41000.43200.594100 | RCC - 8th Floor/Service | 31d | 2026-02-17 | 2026-03-19 | 2179 |  |  | 7 day week No holidays | 7295944 |
| 2181 | 37000.40500.41000.43200.594200 | RCC - 9th Floor | 21d | 2026-03-21 | 2026-04-10 | 2180FS+1d |  |  | 7 day week No holidays | 7295954 |
| 2182 | 37000.40500.41000.43200.594300 | RCC - 10th Floor | 16d | 2026-04-11 | 2026-04-26 | 2181 |  |  | 7 day week No holidays | 7295964 |
| 2183 | 37000.40500.41000.43200.594400 | RCC - 11th Floor | 16d | 2026-04-27 | 2026-05-12 | 2182 |  |  | 7 day week No holidays | 7295974 |
| 2184 | 37000.40500.41000.43200.594500 | RCC - 12th Floor | 16d | 2026-05-13 | 2026-05-28 | 2183 |  |  | 7 day week No holidays | 7295984 |
| 2185 | 37000.40500.41000.43200.594600 | RCC - 13th Floor | 16d | 2026-05-29 | 2026-06-13 | 2184 |  |  | 7 day week No holidays | 7295994 |
| 2186 | 37000.40500.41000.43200.594700 | RCC - 14th Floor | 16d | 2026-06-14 | 2026-06-29 | 2185 |  |  | 7 day week No holidays | 7296004 |
| 2187 | 37000.40500.41000.43200.594800 | RCC - 15th Floor | 16d | 2026-06-30 | 2026-07-15 | 2186 |  |  | 7 day week No holidays | 2508448 |
| 2188 | 37000.40500.41000.43200.594900 | RCC - 16th Floor | 16d | 2026-07-16 | 2026-07-31 | 2187 |  |  | 7 day week No holidays | 2508458 |
| 2189 | 37000.40500.41000.43200.595000 | RCC - 17th Floor | 16d | 2026-08-01 | 2026-08-16 | 2188 |  |  | 7 day week No holidays | 2508468 |
| 2190 | 37000.40500.41000.43200.595100 | RCC - 18th Floor | 16d | 2026-08-17 | 2026-09-01 | 2189 |  |  | 7 day week No holidays | 2508478 |
| 2191 | 37000.40500.41000.43200.595200 | RCC - 19th Floor | 16d | 2026-09-02 | 2026-09-17 | 2190 |  |  | 7 day week No holidays | 2508488 |
| 2192 | 37000.40500.41000.43200.595300 | RCC - 20th Floor | 16d | 2026-09-18 | 2026-10-03 | 2191 |  |  | 7 day week No holidays | 2508498 |
| 2193 | 37000.40500.41000.43200.595400 | RCC - 21st Floor | 16d | 2026-10-04 | 2026-10-19 | 2192 |  |  | 7 day week No holidays | 2508508 |
| 2194 | 37000.40500.41000.43200.595500 | RCC - 22nd Floor | 16d | 2026-10-20 | 2026-11-04 | 2193 |  |  | 7 day week No holidays | 2508518 |
| 2195 | 37000.40500.41000.43200.595600 | RCC - 23rd Floor | 16d | 2026-11-05 | 2026-11-20 | 2194 |  |  | 7 day week No holidays | 2508528 |
| 2196 | 37000.40500.41000.43200.595700 | RCC - 24th Floor | 16d | 2026-11-21 | 2026-12-06 | 2195 |  |  | 7 day week No holidays | 2508538 |
| 2197 | 37000.40500.41000.43200.595800 | RCC - 25th Floor | 16d | 2026-12-07 | 2026-12-22 | 2196 |  |  | 7 day week No holidays | 2508548 |
| 2198 | 37000.40500.41000.43200.595900 | RCC - 26th Floor | 16d | 2026-12-23 | 2027-01-07 | 2197 |  |  | 7 day week No holidays | 2508558 |
| 2199 | 37000.40500.41000.43200.596000 | RCC - 27th Floor | 16d | 2027-01-08 | 2027-01-23 | 2198 |  |  | 7 day week No holidays | 2508568 |
| 2200 | 37000.40500.41000.43200.596100 | RCC - 28th Floor | 16d | 2027-01-24 | 2027-02-08 | 2199 |  |  | 7 day week No holidays | 2508578 |
| 2201 | 37000.40500.41000.43200.596200 | RCC - 29th Floor | 16d | 2027-02-09 | 2027-02-24 | 2200 |  |  | 7 day week No holidays | 2508588 |
| 2202 | 37000.40500.41000.43200.596300 | RCC - 30th Floor | 16d | 2027-02-25 | 2027-03-12 | 2201 |  |  | 7 day week No holidays | 2508598 |
| 2203 | 37000.40500.41000.43200.596400 | RCC - 31st Floor | 16d | 2027-03-13 | 2027-03-28 | 2202 |  |  | 7 day week No holidays | 2508608 |
| 2204 | 37000.40500.41000.43200.596500 | RCC - 32nd Floor | 16d | 2027-03-29 | 2027-04-13 | 2203 |  |  | 7 day week No holidays | 2508618 |
| 2205 | 37000.40500.41000.43200.596600 | RCC - 33rd Floor | 16d | 2027-04-14 | 2027-04-29 | 2204 |  |  | 7 day week No holidays | 2508628 |
| 2206 | 37000.40500.41000.43200.596700 | RCC - 34th Floor | 16d | 2027-04-30 | 2027-05-15 | 2205 |  |  | 7 day week No holidays | 2508638 |
| 2207 | 37000.40500.41000.43200.596800 | RCC - 35th Floor | 16d | 2027-05-16 | 2027-05-31 | 2206 |  |  | 7 day week No holidays | 2508648 |
| 2208 | 37000.40500.41000.43200.596900 | Work Stoppage | 321d | 2027-06-01 | 2028-04-16 | 2207 |  |  | 7 day week No holidays | 2508649 |
| 2209 | 37000.40500.41000.43200.597000 | RCC - 36th Floor | 16d | 2028-04-17 | 2028-05-02 | 2208 |  |  | 7 day week No holidays | 2508658 |
| 2210 | 37000.40500.41000.43200.597100 | RCC - Service Floor | 16d | 2028-05-03 | 2028-05-18 | 2209 |  |  | 7 day week No holidays | 2508668 |
| 2211 | 37000.40500.41000.43200.597200 | RCC - 37th Floor | 16d | 2028-05-19 | 2028-06-03 | 2210 |  |  | 7 day week No holidays | 2508678 |
| 2212 | 37000.40500.41000.43200.597300 | RCC - 38th Floor | 16d | 2028-06-04 | 2028-06-19 | 2211 |  |  | 7 day week No holidays | 2508688 |
| 2213 | 37000.40500.41000.43200.597400 | RCC - 39th Floor | 16d | 2028-06-20 | 2028-07-05 | 2212 |  |  | 7 day week No holidays | 2508698 |
| 2214 | 37000.40500.41000.43200.597500 | RCC - 40th Floor | 16d | 2028-07-06 | 2028-07-21 | 2213 |  |  | 7 day week No holidays | 2508708 |
| 2215 | 37000.40500.41000.43200.597600 | RCC - 41st Floor | 16d | 2028-07-22 | 2028-08-06 | 2214 |  |  | 7 day week No holidays | 2508718 |
| 2216 | 37000.40500.41000.43200.597700 | RCC - 42nd Floor | 16d | 2028-08-07 | 2028-08-22 | 2215 |  |  | 7 day week No holidays | 2508728 |
| 2217 | 37000.40500.41000.43200.597800 | RCC - 43rd Floor | 16d | 2028-08-23 | 2028-09-07 | 2216 |  |  | 7 day week No holidays | 2508738 |
| 2218 | 37000.40500.41000.43200.597900 | RCC - 44th Floor | 16d | 2028-09-08 | 2028-09-23 | 2217 |  |  | 7 day week No holidays | 2508748 |
| 2219 | 37000.40500.41000.43200.598000 | RCC - 45th Floor | 16d | 2028-09-24 | 2028-10-09 | 2218 |  |  | 7 day week No holidays | 2508758 |
| 2220 | 37000.40500.41000.43200.598100 | RCC - 46th Floor | 16d | 2028-10-10 | 2028-10-25 | 2219 |  |  | 7 day week No holidays | 2508768 |
| 2221 | 37000.40500.41000.43200.598200 | RCC - 47th Floor | 16d | 2028-10-26 | 2028-11-10 | 2220 |  |  | 7 day week No holidays | 2508778 |
| 2222 | 37000.40500.41000.43200.598300 | RCC - 48th Floor | 16d | 2028-11-11 | 2028-11-26 | 2221 |  |  | 7 day week No holidays | 2508788 |
| 2223 | 37000.40500.41000.43200.598400 | RCC - 49th Floor | 16d | 2028-11-27 | 2028-12-12 | 2222 |  |  | 7 day week No holidays | 2508798 |
| 2224 | 37000.40500.41000.43200.598500 | RCC - 50th Floor | 16d | 2028-12-13 | 2028-12-28 | 2223 |  |  | 7 day week No holidays | 2508808 |
| 2225 | 37000.40500.41000.43200.598600 | RCC - 51st Floor | 16d | 2028-12-29 | 2029-01-13 | 2224 |  |  | 7 day week No holidays | 2508818 |

| ID | WBS | Task | Duration | Start | Finish | Predecessors | Constraint | Calendar | Unique_Task_ID |
| --- | --- | --- | --- | --- | --- | --- | --- | --- | --- |
| 2226 | 37000.40500.41000.43200.598700 | RCC - 52nd Floor | 16d | 2029-01-14 | 2029-01-29 | 2225 |  | 7 day week No holidays | 2508828 |
| 2227 | 37000.40500.41000.43200.598800 | RCC - Terrace | 16d | 2029-01-30 | 2029-02-14 | 2226 |  | 7 day week No holidays | 2509038 |
| 2228 | 37000.40500.41000.517300 | RCC Work Above terrace | 90d | 2029-02-15 | 2029-05-15 | 2227 |  | 7 day week No holidays | 2508158 |
| 2229 | 37000.40500.47700 | **Civil Finishing works (Brick work, Plaster,conduiting, concled plumbing, waterproofing)** | 1218d | 2026-01-21 | 2029-05-22 |  | start no earlier than 2026-01-21 | 7 day week No holidays | 2505948 |
| 2230 | 37000.40500.47700.49000 | **Flat - Civil Work** | 1181d | 2026-01-21 | 2029-04-15 |  | start no earlier than 2026-01-21 | 7 day week No holidays | 2505958 |
| 2231 | 37000.40500.47700.49000.382800 | **9th Floor** | 40d | 2026-05-29 | 2026-07-07 |  | start no earlier than 2026-05-29 | 7 day week No holidays | 2507488 |
| 2232 | 37000.40500.47700.49000.382800.759600 | 9th Flr -Blockwork | 10d | 2026-05-29 | 2026-06-07 | 2184 |  | 7 day week No holidays | 2515218 |
| 2233 | 37000.40500.47700.49000.382800.759700 | 9th Flr -Concealed electrical conduiting | 9d | 2026-06-08 | 2026-06-16 | 2232 |  | 7 day week No holidays | 2515228 |
| 2234 | 37000.40500.47700.49000.382800.759800 | 9th Flr -Backcoat Plaster | 8d | 2026-06-08 | 2026-06-15 | 2232 |  | 7 day week No holidays | 2515238 |
| 2235 | 37000.40500.47700.49000.382800.759900 | 9th Flr -Concealed Plumbing | 10d | 2026-06-16 | 2026-06-25 | 2234 |  | 7 day week No holidays | 2515248 |
| 2236 | 37000.40500.47700.49000.382800.760000 | 9th Flr -Waterproofing Work | 12d | 2026-06-26 | 2026-07-07 | 2235 |  | 7 day week No holidays | 2515258 |
| 2237 | 37000.40500.47700.49000.382900 | **10th Floor** | 40d | 2026-06-14 | 2026-07-23 |  | start no earlier than 2026-06-14 | 7 day week No holidays | 2507498 |
| 2238 | 37000.40500.47700.49000.382900.760100 | 10th Flr -Blockwork | 10d | 2026-06-14 | 2026-06-23 | 2185, 2232 |  | 7 day week No holidays | 2515268 |
| 2239 | 37000.40500.47700.49000.382900.760200 | 10th Flr -Concealed electrical conduiting | 9d | 2026-06-24 | 2026-07-02 | 2233, 2238 |  | 7 day week No holidays | 2515278 |
| 2240 | 37000.40500.47700.49000.382900.760300 | 10th Flr -Backcoat Plaster | 8d | 2026-06-24 | 2026-07-01 | 2234, 2238 |  | 7 day week No holidays | 2515288 |
| 2241 | 37000.40500.47700.49000.382900.760400 | 10th Flr -Concealed Plumbing | 10d | 2026-07-02 | 2026-07-11 | 2235, 2240 |  | 7 day week No holidays | 2515298 |
| 2242 | 37000.40500.47700.49000.382900.760500 | 10th Flr -Waterproofing Work | 12d | 2026-07-12 | 2026-07-23 | 2236, 2241 |  | 7 day week No holidays | 2515308 |
| 2243 | 37000.40500.47700.49000.383000 | **11th Floor** | 40d | 2026-06-30 | 2026-08-08 |  | start no earlier than 2026-06-30 | 7 day week No holidays | 2507508 |
| 2244 | 37000.40500.47700.49000.383000.760600 | 11th Flr -Blockwork | 10d | 2026-06-30 | 2026-07-09 | 2186, 2238 |  | 7 day week No holidays | 2515318 |
| 2245 | 37000.40500.47700.49000.383000.760700 | 11th Flr -Concealed electrical conduiting | 9d | 2026-07-10 | 2026-07-18 | 2239, 2244 |  | 7 day week No holidays | 2515328 |
| 2246 | 37000.40500.47700.49000.383000.760800 | 11th Flr -Backcoat Plaster | 8d | 2026-07-10 | 2026-07-17 | 2240, 2244 |  | 7 day week No holidays | 2515338 |
| 2247 | 37000.40500.47700.49000.383000.760900 | 11th Flr -Concealed Plumbing | 10d | 2026-07-18 | 2026-07-27 | 2241, 2246 |  | 7 day week No holidays | 2515348 |
| 2248 | 37000.40500.47700.49000.383000.761000 | 11th Flr -Waterproofing Work | 12d | 2026-07-28 | 2026-08-08 | 2242, 2247 |  | 7 day week No holidays | 2515358 |
| 2249 | 37000.40500.47700.49000.383100 | **12th Floor** | 40d | 2026-07-16 | 2026-08-24 |  | start no earlier than 2026-07-16 | 7 day week No holidays | 2507518 |
| 2250 | 37000.40500.47700.49000.383100.761100 | 12th Flr -Blockwork | 10d | 2026-07-16 | 2026-07-25 | 2187, 2244 |  | 7 day week No holidays | 2515368 |
| 2251 | 37000.40500.47700.49000.383100.761200 | 12th Flr -Concealed electrical conduiting | 9d | 2026-07-26 | 2026-08-03 | 2245, 2250 |  | 7 day week No holidays | 2515378 |
| 2252 | 37000.40500.47700.49000.383100.761300 | 12th Flr -Backcoat Plaster | 8d | 2026-07-26 | 2026-08-02 | 2246, 2250 |  | 7 day week No holidays | 2515388 |
| 2253 | 37000.40500.47700.49000.383100.761400 | 12th Flr -Concealed Plumbing | 10d | 2026-08-03 | 2026-08-12 | 2247, 2252 |  | 7 day week No holidays | 2515398 |
| 2254 | 37000.40500.47700.49000.383100.761500 | 12th Flr -Waterproofing Work | 12d | 2026-08-13 | 2026-08-24 | 2248, 2253 |  | 7 day week No holidays | 2515408 |

| ID | WBS | Task | Duration | Start | Finish | Predecessors | Constraint | Calendar | Unique_Task_ID |
| --- | --- | --- | --- | --- | --- | --- | --- | --- | --- |
| 2255 | 37000.40500.47700.49000.383200 | **13th Floor** | 40d | 2026-08-01 | 2026-09-09 |  | start no earlier than 2026-08-01 | 7 day week No holidays | 2507528 |
| 2256 | 37000.40500.47700.49000.383200.761600 | 13th Flr -Blockwork | 10d | 2026-08-01 | 2026-08-10 | 2188, 2250 |  | 7 day week No holidays | 2515418 |
| 2257 | 37000.40500.47700.49000.383200.761700 | 13th Flr -Concealed electrical conduiting | 9d | 2026-08-11 | 2026-08-19 | 2251, 2256 |  | 7 day week No holidays | 2515428 |
| 2258 | 37000.40500.47700.49000.383200.761800 | 13th Flr -Backcoat Plaster | 8d | 2026-08-11 | 2026-08-18 | 2252, 2256 |  | 7 day week No holidays | 2515438 |
| 2259 | 37000.40500.47700.49000.383200.761900 | 13th Flr -Concealed Plumbing | 10d | 2026-08-19 | 2026-08-28 | 2253, 2258 |  | 7 day week No holidays | 2515448 |
| 2260 | 37000.40500.47700.49000.383200.762000 | 13th Flr -Waterproofing Work | 12d | 2026-08-29 | 2026-09-09 | 2254, 2259 |  | 7 day week No holidays | 2515458 |
| 2261 | 37000.40500.47700.49000.383300 | **14th Floor** | 40d | 2026-08-17 | 2026-09-25 |  | start no earlier than 2026-08-17 | 7 day week No holidays | 2507538 |
| 2262 | 37000.40500.47700.49000.383300.762100 | 14th Flr -Blockwork | 10d | 2026-08-17 | 2026-08-26 | 2189, 2256 |  | 7 day week No holidays | 2515468 |
| 2263 | 37000.40500.47700.49000.383300.762200 | 14th Flr -Concealed electrical conduiting | 9d | 2026-08-27 | 2026-09-04 | 2257, 2262 |  | 7 day week No holidays | 2515478 |
| 2264 | 37000.40500.47700.49000.383300.762300 | 14th Flr -Backcoat Plaster | 8d | 2026-08-27 | 2026-09-03 | 2258, 2262 |  | 7 day week No holidays | 2515488 |
| 2265 | 37000.40500.47700.49000.383300.762400 | 14th Flr -Concealed Plumbing | 10d | 2026-09-04 | 2026-09-13 | 2259, 2264 |  | 7 day week No holidays | 2515498 |
| 2266 | 37000.40500.47700.49000.383300.762500 | 14th Flr -Waterproofing Work | 12d | 2026-09-14 | 2026-09-25 | 2260, 2265 |  | 7 day week No holidays | 2515508 |
| 2267 | 37000.40500.47700.49000.383400 | **15th Floor** | 40d | 2026-09-02 | 2026-10-11 |  | start no earlier than 2026-09-02 | 7 day week No holidays | 2507548 |
| 2268 | 37000.40500.47700.49000.383400.762600 | 15th Flr -Blockwork | 10d | 2026-09-02 | 2026-09-11 | 2190, 2262 |  | 7 day week No holidays | 2515518 |
| 2269 | 37000.40500.47700.49000.383400.762700 | 15th Flr -Concealed electrical conduiting | 9d | 2026-09-12 | 2026-09-20 | 2263, 2268 |  | 7 day week No holidays | 2515528 |
| 2270 | 37000.40500.47700.49000.383400.762800 | 15th Flr -Backcoat Plaster | 8d | 2026-09-12 | 2026-09-19 | 2264, 2268 |  | 7 day week No holidays | 2515538 |
| 2271 | 37000.40500.47700.49000.383400.762900 | 15th Flr -Concealed Plumbing | 10d | 2026-09-20 | 2026-09-29 | 2265, 2270 |  | 7 day week No holidays | 2515548 |
| 2272 | 37000.40500.47700.49000.383400.763000 | 15th Flr -Waterproofing Work | 12d | 2026-09-30 | 2026-10-11 | 2266, 2271 |  | 7 day week No holidays | 2515558 |
| 2273 | 37000.40500.47700.49000.383500 | **16th Floor** | 40d | 2026-09-18 | 2026-10-27 |  | start no earlier than 2026-09-18 | 7 day week No holidays | 2507558 |
| 2274 | 37000.40500.47700.49000.383500.763100 | 16th Flr -Blockwork | 10d | 2026-09-18 | 2026-09-27 | 2191, 2268 |  | 7 day week No holidays | 2515568 |
| 2275 | 37000.40500.47700.49000.383500.763200 | 16th Flr -Concealed electrical conduiting | 9d | 2026-09-28 | 2026-10-06 | 2269, 2274 |  | 7 day week No holidays | 2515578 |
| 2276 | 37000.40500.47700.49000.383500.763300 | 16th Flr -Backcoat Plaster | 8d | 2026-09-28 | 2026-10-05 | 2270, 2274 |  | 7 day week No holidays | 2515588 |
| 2277 | 37000.40500.47700.49000.383500.763400 | 16th Flr -Concealed Plumbing | 10d | 2026-10-06 | 2026-10-15 | 2271, 2276 |  | 7 day week No holidays | 2515598 |
| 2278 | 37000.40500.47700.49000.383500.763500 | 16th Flr -Waterproofing Work | 12d | 2026-10-16 | 2026-10-27 | 2272, 2277 |  | 7 day week No holidays | 2515608 |

| ID | WBS | Task | Duration | Start | Finish | Predecessors | Constraint | Calendar | Unique_Task_ID |
| --- | --- | --- | --- | --- | --- | --- | --- | --- | --- |
| 2279 | 37000.40500.47700.49000.383600 | **17th Floor** | 40d | 2026-10-04 | 2026-11-12 |  | start no earlier than 2026-10-04 | 7 day week No holidays | 2507568 |
| 2280 | 37000.40500.47700.49000.383600.763600 | 17th Flr -Blockwork | 10d | 2026-10-04 | 2026-10-13 | 2192, 2274 |  | 7 day week No holidays | 2515618 |
| 2281 | 37000.40500.47700.49000.383600.763700 | 17th Flr -Concealed electrical conduiting | 9d | 2026-10-14 | 2026-10-22 | 2275, 2280 |  | 7 day week No holidays | 2515628 |
| 2282 | 37000.40500.47700.49000.383600.763800 | 17th Flr -Backcoat Plaster | 8d | 2026-10-14 | 2026-10-21 | 2276, 2280 |  | 7 day week No holidays | 2515638 |
| 2283 | 37000.40500.47700.49000.383600.763900 | 17th Flr -Concealed Plumbing | 10d | 2026-10-22 | 2026-10-31 | 2277, 2282 |  | 7 day week No holidays | 2515648 |
| 2284 | 37000.40500.47700.49000.383600.764000 | 17th Flr -Waterproofing Work | 12d | 2026-11-01 | 2026-11-12 | 2278, 2283 |  | 7 day week No holidays | 2515658 |
| 2285 | 37000.40500.47700.49000.383700 | **18th Floor** | 40d | 2026-10-20 | 2026-11-28 |  | start no earlier than 2026-10-20 | 7 day week No holidays | 2507578 |
| 2286 | 37000.40500.47700.49000.383700.764100 | 18th Flr -Blockwork | 10d | 2026-10-20 | 2026-10-29 | 2193, 2280 |  | 7 day week No holidays | 2515668 |
| 2287 | 37000.40500.47700.49000.383700.764200 | 18th Flr -Concealed electrical conduiting | 9d | 2026-10-30 | 2026-11-07 | 2281, 2286 |  | 7 day week No holidays | 2515678 |
| 2288 | 37000.40500.47700.49000.383700.764300 | 18th Flr -Backcoat Plaster | 8d | 2026-10-30 | 2026-11-06 | 2282, 2286 |  | 7 day week No holidays | 2515688 |
| 2289 | 37000.40500.47700.49000.383700.764400 | 18th Flr -Concealed Plumbing | 10d | 2026-11-07 | 2026-11-16 | 2283, 2288 |  | 7 day week No holidays | 2515698 |
| 2290 | 37000.40500.47700.49000.383700.764500 | 18th Flr -Waterproofing Work | 12d | 2026-11-17 | 2026-11-28 | 2284, 2289 |  | 7 day week No holidays | 2515708 |
| 2291 | 37000.40500.47700.49000.383800 | **19th Floor** | 40d | 2026-11-05 | 2026-12-14 |  | start no earlier than 2026-11-05 | 7 day week No holidays | 2507588 |
| 2292 | 37000.40500.47700.49000.383800.764600 | 19th Flr -Blockwork | 10d | 2026-11-05 | 2026-11-14 | 2194, 2286 |  | 7 day week No holidays | 2515718 |
| 2293 | 37000.40500.47700.49000.383800.764700 | 19th Flr -Concealed electrical conduiting | 9d | 2026-11-15 | 2026-11-23 | 2287, 2292 |  | 7 day week No holidays | 2515728 |
| 2294 | 37000.40500.47700.49000.383800.764800 | 19th Flr -Backcoat Plaster | 8d | 2026-11-15 | 2026-11-22 | 2288, 2292 |  | 7 day week No holidays | 2515738 |
| 2295 | 37000.40500.47700.49000.383800.764900 | 19th Flr -Concealed Plumbing | 10d | 2026-11-23 | 2026-12-02 | 2289, 2294 |  | 7 day week No holidays | 2515748 |
| 2296 | 37000.40500.47700.49000.383800.765000 | 19th Flr -Waterproofing Work | 12d | 2026-12-03 | 2026-12-14 | 2290, 2295 |  | 7 day week No holidays | 2515758 |
| 2297 | 37000.40500.47700.49000.383900 | **20th Floor** | 40d | 2026-11-21 | 2026-12-30 |  | start no earlier than 2026-11-21 | 7 day week No holidays | 2507598 |
| 2298 | 37000.40500.47700.49000.383900.765100 | 20th Flr -Blockwork | 10d | 2026-11-21 | 2026-11-30 | 2195, 2292 |  | 7 day week No holidays | 2515768 |
| 2299 | 37000.40500.47700.49000.383900.765200 | 20th Flr -Concealed electrical conduiting | 9d | 2026-12-01 | 2026-12-09 | 2293, 2298 |  | 7 day week No holidays | 2515778 |
| 2300 | 37000.40500.47700.49000.383900.765300 | 20th Flr -Backcoat Plaster | 8d | 2026-12-01 | 2026-12-08 | 2294, 2298 |  | 7 day week No holidays | 2515788 |
| 2301 | 37000.40500.47700.49000.383900.765400 | 20th Flr -Concealed Plumbing | 10d | 2026-12-09 | 2026-12-18 | 2295, 2300 |  | 7 day week No holidays | 2515798 |
| 2302 | 37000.40500.47700.49000.383900.765500 | 20th Flr -Waterproofing Work | 12d | 2026-12-19 | 2026-12-30 | 2296, 2301 |  | 7 day week No holidays | 2515808 |

| ID | WBS | Task | Duration | Start | Finish | Predecessors | Constraint | Calendar | Unique_Task_ID |
| --- | --- | --- | --- | --- | --- | --- | --- | --- | --- |
| 2303 | 37000.40500.47700.49000.384000 | **21th Floor** | 40d | 2026-12-07 | 2027-01-15 |  | start no earlier than 2026-12-07 | 7 day week No holidays | 2507608 |
| 2304 | 37000.40500.47700.49000.384000.765600 | 21th Flr -Blockwork | 10d | 2026-12-07 | 2026-12-16 | 2196, 2298 |  | 7 day week No holidays | 2515818 |
| 2305 | 37000.40500.47700.49000.384000.765700 | 21th Flr -Concealed electrical conduiting | 9d | 2026-12-17 | 2026-12-25 | 2299, 2304 |  | 7 day week No holidays | 2515828 |
| 2306 | 37000.40500.47700.49000.384000.765800 | 21th Flr -Backcoat Plaster | 8d | 2026-12-17 | 2026-12-24 | 2300, 2304 |  | 7 day week No holidays | 2515838 |
| 2307 | 37000.40500.47700.49000.384000.765900 | 21th Flr -Concealed Plumbing | 10d | 2026-12-25 | 2027-01-03 | 2301, 2306 |  | 7 day week No holidays | 7303574 |
| 2308 | 37000.40500.47700.49000.384000.766000 | 21th Flr -Waterproofing Work | 12d | 2027-01-04 | 2027-01-15 | 2302, 2307 |  | 7 day week No holidays | 2515858 |
| 2309 | 37000.40500.47700.49000.384100 | **22th Floor** | 40d | 2026-12-23 | 2027-01-31 |  | start no earlier than 2026-12-23 | 7 day week No holidays | 2507618 |
| 2310 | 37000.40500.47700.49000.384100.766100 | 22nd Flr -Blockwork | 10d | 2026-12-23 | 2027-01-01 | 2197, 2304 |  | 7 day week No holidays | 7303584 |
| 2311 | 37000.40500.47700.49000.384100.766200 | 22nd Flr -Concealed electrical conduiting | 9d | 2027-01-02 | 2027-01-10 | 2305, 2310 |  | 7 day week No holidays | 2515878 |
| 2312 | 37000.40500.47700.49000.384100.766300 | 22nd Flr -Backcoat Plaster | 8d | 2027-01-02 | 2027-01-09 | 2306, 2310 |  | 7 day week No holidays | 7303594 |
| 2313 | 37000.40500.47700.49000.384100.766400 | 22nd Flr -Concealed Plumbing | 10d | 2027-01-10 | 2027-01-19 | 2307, 2312 |  | 7 day week No holidays | 2515898 |
| 2314 | 37000.40500.47700.49000.384100.766500 | 22nd Flr -Waterproofing Work | 12d | 2027-01-20 | 2027-01-31 | 2308, 2313 |  | 7 day week No holidays | 7303604 |
| 2315 | 37000.40500.47700.49000.384200 | **23th Floor** | 392d | 2026-01-21 | 2027-02-16 |  | start no earlier than 2026-01-21 | 7 day week No holidays | 2507628 |
| 2316 | 37000.40500.47700.49000.384200.3779900 | 23rd Flr -Blockwork | 1d | 2026-01-21 | 2026-01-21 |  | start no earlier than 2026-01-21 | Indian Calendar | 2507629 |
| 2317 | 37000.40500.47700.49000.384200.766600 | 23rd Flr -Blockwork | 10d | 2027-01-08 | 2027-01-17 | 2198, 2310, 2316 |  | 7 day week No holidays | 2515918 |
| 2318 | 37000.40500.47700.49000.384200.766700 | 23rd Flr -Concealed electrical conduiting | 9d | 2027-01-18 | 2027-01-26 | 2311, 2317 |  | 7 day week No holidays | 7303614 |
| 2319 | 37000.40500.47700.49000.384200.766800 | 23rd Flr -Backcoat Plaster | 8d | 2027-01-18 | 2027-01-25 | 2312, 2317 |  | 7 day week No holidays | 2515938 |
| 2320 | 37000.40500.47700.49000.384200.766900 | 23rd Flr -Concealed Plumbing | 10d | 2027-01-26 | 2027-02-04 | 2313, 2319 |  | 7 day week No holidays | 7303624 |
| 2321 | 37000.40500.47700.49000.384200.767000 | 23rd Flr -Waterproofing Work | 12d | 2027-02-05 | 2027-02-16 | 2314, 2320 |  | 7 day week No holidays | 2515958 |
| 2322 | 37000.40500.47700.49000.384300 | **24th Floor** | 40d | 2027-01-24 | 2027-03-04 |  | start no earlier than 2027-01-24 | 7 day week No holidays | 2507638 |
| 2323 | 37000.40500.47700.49000.384300.767100 | 24th Flr -Blockwork | 10d | 2027-01-24 | 2027-02-02 | 2199, 2317 |  | 7 day week No holidays | 7303634 |
| 2324 | 37000.40500.47700.49000.384300.767200 | 24th Flr -Concealed electrical conduiting | 9d | 2027-02-03 | 2027-02-11 | 2318, 2323 |  | 7 day week No holidays | 2515978 |
| 2325 | 37000.40500.47700.49000.384300.767300 | 24th Flr -Backcoat Plaster | 8d | 2027-02-03 | 2027-02-10 | 2319, 2323 |  | 7 day week No holidays | 2515988 |
| 2326 | 37000.40500.47700.49000.384300.767400 | 24th Flr -Concealed Plumbing | 10d | 2027-02-11 | 2027-02-20 | 2320, 2325 |  | 7 day week No holidays | 2515998 |
| 2327 | 37000.40500.47700.49000.384300.767500 | 24th Flr -Waterproofing Work | 12d | 2027-02-21 | 2027-03-04 | 2321, 2326 |  | 7 day week No holidays | 2516008 |

| ID | WBS | Task | Duration | Start | Finish | Predecessors | Constraint | Calendar | Unique_Task_ID |
| --- | --- | --- | --- | --- | --- | --- | --- | --- | --- |
| 2328 | 37000.40500.47700.49000.384400 | **25th Floor** | 40d | 2027-02-09 | 2027-03-20 |  | start no earlier than 2027-02-09 | 7 day week No holidays | 2507648 |
| 2329 | 37000.40500.47700.49000.384400.767600 | 25th Flr -Blockwork | 10d | 2027-02-09 | 2027-02-18 | 2200, 2323 |  | 7 day week No holidays | 2516018 |
| 2330 | 37000.40500.47700.49000.384400.767700 | 25th Flr -Concealed electrical conduiting | 9d | 2027-02-19 | 2027-02-27 | 2324, 2329 |  | 7 day week No holidays | 2516028 |
| 2331 | 37000.40500.47700.49000.384400.767800 | 25th Flr -Backcoat Plaster | 8d | 2027-02-19 | 2027-02-26 | 2325, 2329 |  | 7 day week No holidays | 2516038 |
| 2332 | 37000.40500.47700.49000.384400.767900 | 25th Flr -Concealed Plumbing | 10d | 2027-02-27 | 2027-03-08 | 2326, 2331 |  | 7 day week No holidays | 2516048 |
| 2333 | 37000.40500.47700.49000.384400.768000 | 25th Flr -Waterproofing Work | 12d | 2027-03-09 | 2027-03-20 | 2327, 2332 |  | 7 day week No holidays | 2516058 |
| 2334 | 37000.40500.47700.49000.384500 | **26th Floor** | 40d | 2027-02-25 | 2027-04-05 |  | start no earlier than 2027-02-25 | 7 day week No holidays | 2507658 |
| 2335 | 37000.40500.47700.49000.384500.768100 | 26th Flr -Blockwork | 10d | 2027-02-25 | 2027-03-06 | 2201, 2329 |  | 7 day week No holidays | 2516068 |
| 2336 | 37000.40500.47700.49000.384500.768200 | 26th Flr -Concealed electrical conduiting | 9d | 2027-03-07 | 2027-03-15 | 2330, 2335 |  | 7 day week No holidays | 2516078 |
| 2337 | 37000.40500.47700.49000.384500.768300 | 26th Flr -Backcoat Plaster | 8d | 2027-03-07 | 2027-03-14 | 2331, 2335 |  | 7 day week No holidays | 2516088 |
| 2338 | 37000.40500.47700.49000.384500.768400 | 26th Flr -Concealed Plumbing | 10d | 2027-03-15 | 2027-03-24 | 2332, 2337 |  | 7 day week No holidays | 2516098 |
| 2339 | 37000.40500.47700.49000.384500.768500 | 26th Flr -Waterproofing Work | 12d | 2027-03-25 | 2027-04-05 | 2333, 2338 |  | 7 day week No holidays | 2516108 |
| 2340 | 37000.40500.47700.49000.384600 | **27th Floor** | 40d | 2027-03-13 | 2027-04-21 |  | start no earlier than 2027-03-13 | 7 day week No holidays | 2507668 |
| 2341 | 37000.40500.47700.49000.384600.768600 | 27th Flr -Blockwork | 10d | 2027-03-13 | 2027-03-22 | 2202, 2335 |  | 7 day week No holidays | 2516118 |
| 2342 | 37000.40500.47700.49000.384600.768700 | 27th Flr -Concealed electrical conduiting | 9d | 2027-03-23 | 2027-03-31 | 2336, 2341 |  | 7 day week No holidays | 2516128 |
| 2343 | 37000.40500.47700.49000.384600.768800 | 27th Flr -Backcoat Plaster | 8d | 2027-03-23 | 2027-03-30 | 2337, 2341 |  | 7 day week No holidays | 2516138 |
| 2344 | 37000.40500.47700.49000.384600.768900 | 27th Flr -Concealed Plumbing | 10d | 2027-03-31 | 2027-04-09 | 2338, 2343 |  | 7 day week No holidays | 2516148 |
| 2345 | 37000.40500.47700.49000.384600.769000 | 27th Flr -Waterproofing Work | 12d | 2027-04-10 | 2027-04-21 | 2339, 2344 |  | 7 day week No holidays | 2516158 |
| 2346 | 37000.40500.47700.49000.384700 | **28th Floor** | 40d | 2027-03-29 | 2027-05-07 |  | start no earlier than 2027-03-29 | 7 day week No holidays | 2507678 |
| 2347 | 37000.40500.47700.49000.384700.769100 | 28th Flr -Blockwork | 10d | 2027-03-29 | 2027-04-07 | 2203, 2341 |  | 7 day week No holidays | 2516168 |
| 2348 | 37000.40500.47700.49000.384700.769200 | 28th Flr -Concealed electrical conduiting | 9d | 2027-04-08 | 2027-04-16 | 2342, 2347 |  | 7 day week No holidays | 2516178 |
| 2349 | 37000.40500.47700.49000.384700.769300 | 28th Flr -Backcoat Plaster | 8d | 2027-04-08 | 2027-04-15 | 2343, 2347 |  | 7 day week No holidays | 2516188 |
| 2350 | 37000.40500.47700.49000.384700.769400 | 28th Flr -Concealed Plumbing | 10d | 2027-04-16 | 2027-04-25 | 2344, 2349 |  | 7 day week No holidays | 2516198 |
| 2351 | 37000.40500.47700.49000.384700.769500 | 28th Flr -Waterproofing Work | 12d | 2027-04-26 | 2027-05-07 | 2345, 2350 |  | 7 day week No holidays | 2516208 |

| ID | WBS | Task | Duration | Start | Finish | Predecessors | Constraint | Calendar | Unique_Task_ID |
| --- | --- | --- | --- | --- | --- | --- | --- | --- | --- |
| 2352 | 37000.40500.47700.49000.384800 | **29th Floor** | 40d | 2027-04-14 | 2027-05-23 |  | start no earlier than 2027-04-14 | 7 day week No holidays | 2507688 |
| 2353 | 37000.40500.47700.49000.384800.769600 | 29th Flr -Blockwork | 10d | 2027-04-14 | 2027-04-23 | 2204, 2347 |  | 7 day week No holidays | 2516218 |
| 2354 | 37000.40500.47700.49000.384800.769700 | 29th Flr -Concealed electrical conduiting | 9d | 2027-04-24 | 2027-05-02 | 2348, 2353 |  | 7 day week No holidays | 2516228 |
| 2355 | 37000.40500.47700.49000.384800.769800 | 29th Flr -Backcoat Plaster | 8d | 2027-04-24 | 2027-05-01 | 2349, 2353 |  | 7 day week No holidays | 2516238 |
| 2356 | 37000.40500.47700.49000.384800.769900 | 29th Flr -Concealed Plumbing | 10d | 2027-05-02 | 2027-05-11 | 2350, 2355 |  | 7 day week No holidays | 2516248 |
| 2357 | 37000.40500.47700.49000.384800.770000 | 29th Flr -Waterproofing Work | 12d | 2027-05-12 | 2027-05-23 | 2351, 2356 |  | 7 day week No holidays | 2516258 |
| 2358 | 37000.40500.47700.49000.384900 | **30th Floor** | 40d | 2027-04-30 | 2027-06-08 |  | start no earlier than 2027-04-30 | 7 day week No holidays | 2507698 |
| 2359 | 37000.40500.47700.49000.384900.770100 | 30th Flr -Blockwork | 10d | 2027-04-30 | 2027-05-09 | 2205, 2353 |  | 7 day week No holidays | 2516268 |
| 2360 | 37000.40500.47700.49000.384900.770200 | 30th Flr -Concealed electrical conduiting | 9d | 2027-05-10 | 2027-05-18 | 2354, 2359 |  | 7 day week No holidays | 2516278 |
| 2361 | 37000.40500.47700.49000.384900.770300 | 30th Flr -Backcoat Plaster | 8d | 2027-05-10 | 2027-05-17 | 2355, 2359 |  | 7 day week No holidays | 2516288 |
| 2362 | 37000.40500.47700.49000.384900.770400 | 30th Flr -Concealed Plumbing | 10d | 2027-05-18 | 2027-05-27 | 2356, 2361 |  | 7 day week No holidays | 2516298 |
| 2363 | 37000.40500.47700.49000.384900.770500 | 30th Flr -Waterproofing Work | 12d | 2027-05-28 | 2027-06-08 | 2357, 2362 |  | 7 day week No holidays | 2516308 |
| 2364 | 37000.40500.47700.49000.385000 | **31th Floor** | 40d | 2027-05-16 | 2027-06-24 |  | start no earlier than 2027-05-16 | 7 day week No holidays | 2507708 |
| 2365 | 37000.40500.47700.49000.385000.770600 | 31st Flr -Blockwork | 10d | 2027-05-16 | 2027-05-25 | 2206, 2359 |  | 7 day week No holidays | 2516318 |
| 2366 | 37000.40500.47700.49000.385000.770700 | 31st Flr -Concealed electrical conduiting | 9d | 2027-05-26 | 2027-06-03 | 2360, 2365 |  | 7 day week No holidays | 2516328 |
| 2367 | 37000.40500.47700.49000.385000.770800 | 31st Flr -Backcoat Plaster | 8d | 2027-05-26 | 2027-06-02 | 2361, 2365 |  | 7 day week No holidays | 2516338 |
| 2368 | 37000.40500.47700.49000.385000.770900 | 31st Flr -Concealed Plumbing | 10d | 2027-06-03 | 2027-06-12 | 2362, 2367 |  | 7 day week No holidays | 2516348 |
| 2369 | 37000.40500.47700.49000.385000.771000 | 31st Flr -Waterproofing Work | 12d | 2027-06-13 | 2027-06-24 | 2363, 2368 |  | 7 day week No holidays | 2516358 |
| 2370 | 37000.40500.47700.49000.385100 | **32th Floor** | 40d | 2027-06-01 | 2027-07-10 |  | start no earlier than 2027-06-01 | 7 day week No holidays | 2507718 |
| 2371 | 37000.40500.47700.49000.385100.771100 | 32nd Flr -Blockwork | 10d | 2027-06-01 | 2027-06-10 | 2207, 2365 |  | 7 day week No holidays | 2516368 |
| 2372 | 37000.40500.47700.49000.385100.771200 | 32nd Flr -Concealed electrical conduiting | 9d | 2027-06-11 | 2027-06-19 | 2366, 2371 |  | 7 day week No holidays | 2516378 |
| 2373 | 37000.40500.47700.49000.385100.771300 | 32nd Flr -Backcoat Plaster | 8d | 2027-06-11 | 2027-06-18 | 2367, 2371 |  | 7 day week No holidays | 2516388 |
| 2374 | 37000.40500.47700.49000.385100.771400 | 32nd Flr -Concealed Plumbing | 10d | 2027-06-19 | 2027-06-28 | 2368, 2373 |  | 7 day week No holidays | 2516398 |
| 2375 | 37000.40500.47700.49000.385100.771500 | 32nd Flr -Waterproofing Work | 12d | 2027-06-29 | 2027-07-10 | 2369, 2374 |  | 7 day week No holidays | 2516408 |

| ID | WBS | Task | Duration | Start | Finish | Predecessors | Constraint | Calendar | Unique_Task_ID |
| --- | --- | --- | --- | --- | --- | --- | --- | --- | --- |
| 2376 | 37000.40500.47700.49000.385200 | **33th Floor** | 40d | 2028-05-03 | 2028-06-11 |  | start no earlier than 2028-05-03 | 7 day week No holidays | 2507728 |
| 2377 | 37000.40500.47700.49000.385200.771600 | 33rd Flr -Blockwork | 10d | 2028-05-03 | 2028-05-12 | 2209, 2371 |  | 7 day week No holidays | 2516418 |
| 2378 | 37000.40500.47700.49000.385200.771700 | 33rd Flr -Concealed electrical conduiting | 9d | 2028-05-13 | 2028-05-21 | 2372, 2377 |  | 7 day week No holidays | 2516428 |
| 2379 | 37000.40500.47700.49000.385200.771800 | 33rd Flr -Backcoat Plaster | 8d | 2028-05-13 | 2028-05-20 | 2373, 2377 |  | 7 day week No holidays | 2516438 |
| 2380 | 37000.40500.47700.49000.385200.771900 | 33rd Flr -Concealed Plumbing | 10d | 2028-05-21 | 2028-05-30 | 2374, 2379 |  | 7 day week No holidays | 2516448 |
| 2381 | 37000.40500.47700.49000.385200.772000 | 33rd Flr -Waterproofing Work | 12d | 2028-05-31 | 2028-06-11 | 2375, 2380 |  | 7 day week No holidays | 2516458 |
| 2382 | 37000.40500.47700.49000.385300 | **34th Floor** | 40d | 2028-06-04 | 2028-07-13 |  | start no earlier than 2028-06-04 | 7 day week No holidays | 2507738 |
| 2383 | 37000.40500.47700.49000.385300.772100 | 34th Flr -Blockwork | 10d | 2028-06-04 | 2028-06-13 | 2211, 2377 |  | 7 day week No holidays | 2516468 |
| 2384 | 37000.40500.47700.49000.385300.772200 | 34th Flr -Concealed electrical conduiting | 9d | 2028-06-14 | 2028-06-22 | 2378, 2383 |  | 7 day week No holidays | 2516478 |
| 2385 | 37000.40500.47700.49000.385300.772300 | 34th Flr -Backcoat Plaster | 8d | 2028-06-14 | 2028-06-21 | 2379, 2383 |  | 7 day week No holidays | 2516488 |
| 2386 | 37000.40500.47700.49000.385300.772400 | 34th Flr -Concealed Plumbing | 10d | 2028-06-22 | 2028-07-01 | 2380, 2385 |  | 7 day week No holidays | 2516498 |
| 2387 | 37000.40500.47700.49000.385300.772500 | 34th Flr -Waterproofing Work | 12d | 2028-07-02 | 2028-07-13 | 2381, 2386 |  | 7 day week No holidays | 2516508 |
| 2388 | 37000.40500.47700.49000.385400 | **35th Floor** | 40d | 2028-06-20 | 2028-07-29 |  | start no earlier than 2028-06-20 | 7 day week No holidays | 2507748 |
| 2389 | 37000.40500.47700.49000.385400.772600 | 35th Flr -Blockwork | 10d | 2028-06-20 | 2028-06-29 | 2212, 2383 |  | 7 day week No holidays | 2516518 |
| 2390 | 37000.40500.47700.49000.385400.772700 | 35th Flr -Concealed electrical conduiting | 9d | 2028-06-30 | 2028-07-08 | 2384, 2389 |  | 7 day week No holidays | 2516528 |
| 2391 | 37000.40500.47700.49000.385400.772800 | 35th Flr -Backcoat Plaster | 8d | 2028-06-30 | 2028-07-07 | 2385, 2389 |  | 7 day week No holidays | 2516538 |
| 2392 | 37000.40500.47700.49000.385400.772900 | 35th Flr -Concealed Plumbing | 10d | 2028-07-08 | 2028-07-17 | 2386, 2391 |  | 7 day week No holidays | 2516548 |
| 2393 | 37000.40500.47700.49000.385400.773000 | 35th Flr -Waterproofing Work | 12d | 2028-07-18 | 2028-07-29 | 2387, 2392 |  | 7 day week No holidays | 2516558 |
| 2394 | 37000.40500.47700.49000.385500 | **36th Floor** | 40d | 2028-07-06 | 2028-08-14 |  | start no earlier than 2028-07-06 | 7 day week No holidays | 2507758 |
| 2395 | 37000.40500.47700.49000.385500.773100 | 36th Flr -Blockwork | 10d | 2028-07-06 | 2028-07-15 | 2213, 2389 |  | 7 day week No holidays | 2516568 |
| 2396 | 37000.40500.47700.49000.385500.773200 | 36th Flr -Concealed electrical conduiting | 9d | 2028-07-16 | 2028-07-24 | 2390, 2395 |  | 7 day week No holidays | 2516578 |
| 2397 | 37000.40500.47700.49000.385500.773300 | 36th Flr -Backcoat Plaster | 8d | 2028-07-16 | 2028-07-23 | 2391, 2395 |  | 7 day week No holidays | 2516588 |
| 2398 | 37000.40500.47700.49000.385500.773400 | 36th Flr -Concealed Plumbing | 10d | 2028-07-24 | 2028-08-02 | 2392, 2397 |  | 7 day week No holidays | 2516598 |
| 2399 | 37000.40500.47700.49000.385500.773500 | 36th Flr -Waterproofing Work | 12d | 2028-08-03 | 2028-08-14 | 2393, 2398 |  | 7 day week No holidays | 2516608 |

| ID | WBS | Task | Duration | Start | Finish | Predecessors | Constraint | Calendar | Unique_Task_ID |
| --- | --- | --- | --- | --- | --- | --- | --- | --- | --- |
| 2400 | 37000.40500.47700.49000.385600 | **37th Floor** | 40d | 2028-07-22 | 2028-08-30 |  | start no earlier than 2028-07-22 | 7 day week No holidays | 2507768 |
| 2401 | 37000.40500.47700.49000.385600.773600 | 37th Flr -Blockwork | 10d | 2028-07-22 | 2028-07-31 | 2214, 2395 |  | 7 day week No holidays | 2516618 |
| 2402 | 37000.40500.47700.49000.385600.773700 | 37th Flr -Concealed electrical conduiting | 9d | 2028-08-01 | 2028-08-09 | 2396, 2401 |  | 7 day week No holidays | 2516628 |
| 2403 | 37000.40500.47700.49000.385600.773800 | 37th Flr -Backcoat Plaster | 8d | 2028-08-01 | 2028-08-08 | 2397, 2401 |  | 7 day week No holidays | 2516638 |
| 2404 | 37000.40500.47700.49000.385600.773900 | 37th Flr -Concealed Plumbing | 10d | 2028-08-09 | 2028-08-18 | 2398, 2403 |  | 7 day week No holidays | 2516648 |
| 2405 | 37000.40500.47700.49000.385600.774000 | 37th Flr -Waterproofing Work | 12d | 2028-08-19 | 2028-08-30 | 2399, 2404 |  | 7 day week No holidays | 2516658 |
| 2406 | 37000.40500.47700.49000.385700 | **38th Floor** | 40d | 2028-08-07 | 2028-09-15 |  | start no earlier than 2028-08-07 | 7 day week No holidays | 2507778 |
| 2407 | 37000.40500.47700.49000.385700.774100 | 38th Flr -Blockwork | 10d | 2028-08-07 | 2028-08-16 | 2215, 2401 |  | 7 day week No holidays | 2516668 |
| 2408 | 37000.40500.47700.49000.385700.774200 | 38th Flr -Concealed electrical conduiting | 9d | 2028-08-17 | 2028-08-25 | 2402, 2407 |  | 7 day week No holidays | 2516678 |
| 2409 | 37000.40500.47700.49000.385700.774300 | 38th Flr -Backcoat Plaster | 8d | 2028-08-17 | 2028-08-24 | 2403, 2407 |  | 7 day week No holidays | 2516688 |
| 2410 | 37000.40500.47700.49000.385700.774400 | 38th Flr -Concealed Plumbing | 10d | 2028-08-25 | 2028-09-03 | 2404, 2409 |  | 7 day week No holidays | 2516698 |
| 2411 | 37000.40500.47700.49000.385700.774500 | 38th Flr -Waterproofing Work | 12d | 2028-09-04 | 2028-09-15 | 2405, 2410 |  | 7 day week No holidays | 2516708 |
| 2412 | 37000.40500.47700.49000.385800 | **39th Floor** | 40d | 2028-08-23 | 2028-10-01 |  | start no earlier than 2028-08-23 | 7 day week No holidays | 2507788 |
| 2413 | 37000.40500.47700.49000.385800.774600 | 39th Flr -Blockwork | 10d | 2028-08-23 | 2028-09-01 | 2216, 2407 |  | 7 day week No holidays | 2516718 |
| 2414 | 37000.40500.47700.49000.385800.774700 | 39th Flr -Concealed electrical conduiting | 9d | 2028-09-02 | 2028-09-10 | 2408, 2413 |  | 7 day week No holidays | 2516728 |
| 2415 | 37000.40500.47700.49000.385800.774800 | 39th Flr -Backcoat Plaster | 8d | 2028-09-02 | 2028-09-09 | 2409, 2413 |  | 7 day week No holidays | 2516738 |
| 2416 | 37000.40500.47700.49000.385800.774900 | 39th Flr -Concealed Plumbing | 10d | 2028-09-10 | 2028-09-19 | 2410, 2415 |  | 7 day week No holidays | 2516748 |
| 2417 | 37000.40500.47700.49000.385800.775000 | 39th Flr -Waterproofing Work | 12d | 2028-09-20 | 2028-10-01 | 2411, 2416 |  | 7 day week No holidays | 2516758 |
| 2418 | 37000.40500.47700.49000.385900 | **40th Floor** | 40d | 2028-09-08 | 2028-10-17 |  | start no earlier than 2028-09-08 | 7 day week No holidays | 2507798 |
| 2419 | 37000.40500.47700.49000.385900.775100 | 40th Flr -Blockwork | 10d | 2028-09-08 | 2028-09-17 | 2217, 2413 |  | 7 day week No holidays | 2516768 |
| 2420 | 37000.40500.47700.49000.385900.775200 | 40th Flr -Concealed electrical conduiting | 9d | 2028-09-18 | 2028-09-26 | 2414, 2419 |  | 7 day week No holidays | 2516778 |
| 2421 | 37000.40500.47700.49000.385900.775300 | 40th Flr -Backcoat Plaster | 8d | 2028-09-18 | 2028-09-25 | 2415, 2419 |  | 7 day week No holidays | 2516788 |
| 2422 | 37000.40500.47700.49000.385900.775400 | 40th Flr -Concealed Plumbing | 10d | 2028-09-26 | 2028-10-05 | 2416, 2421 |  | 7 day week No holidays | 2516798 |
| 2423 | 37000.40500.47700.49000.385900.775500 | 40th Flr -Waterproofing Work | 12d | 2028-10-06 | 2028-10-17 | 2417, 2422 |  | 7 day week No holidays | 2516808 |

| ID | WBS | Task | Duration | Start | Finish | Predecessors | Constraint | Calendar | Unique_Task_ID |
| --- | --- | --- | --- | --- | --- | --- | --- | --- | --- |
| 2424 | 37000.40500.47700.49000.386000 | **41th Floor** | 40d | 2028-09-24 | 2028-11-02 |  | start no earlier than 2028-09-24 | 7 day week No holidays | 2507808 |
| 2425 | 37000.40500.47700.49000.386000.775600 | 41st Flr -Blockwork | 10d | 2028-09-24 | 2028-10-03 | 2218, 2419 |  | 7 day week No holidays | 2516818 |
| 2426 | 37000.40500.47700.49000.386000.775700 | 41st Flr -Concealed electrical conduiting | 9d | 2028-10-04 | 2028-10-12 | 2420, 2425 |  | 7 day week No holidays | 2516828 |
| 2427 | 37000.40500.47700.49000.386000.775800 | 41st Flr -Backcoat Plaster | 8d | 2028-10-04 | 2028-10-11 | 2421, 2425 |  | 7 day week No holidays | 2516838 |
| 2428 | 37000.40500.47700.49000.386000.775900 | 41st Flr -Concealed Plumbing | 10d | 2028-10-12 | 2028-10-21 | 2422, 2427 |  | 7 day week No holidays | 2516848 |
| 2429 | 37000.40500.47700.49000.386000.776000 | 41st Flr -Waterproofing Work | 12d | 2028-10-22 | 2028-11-02 | 2423, 2428 |  | 7 day week No holidays | 2516858 |
| 2430 | 37000.40500.47700.49000.386100 | **42th Floor** | 40d | 2028-10-10 | 2028-11-18 |  | start no earlier than 2028-10-10 | 7 day week No holidays | 2507818 |
| 2431 | 37000.40500.47700.49000.386100.776100 | 42nd Flr -Blockwork | 10d | 2028-10-10 | 2028-10-19 | 2219, 2425 |  | 7 day week No holidays | 2516868 |
| 2432 | 37000.40500.47700.49000.386100.776200 | 42nd Flr -Concealed electrical conduiting | 9d | 2028-10-20 | 2028-10-28 | 2426, 2431 |  | 7 day week No holidays | 2516878 |
| 2433 | 37000.40500.47700.49000.386100.776300 | 42nd Flr -Backcoat Plaster | 8d | 2028-10-20 | 2028-10-27 | 2427, 2431 |  | 7 day week No holidays | 2516888 |
| 2434 | 37000.40500.47700.49000.386100.776400 | 42nd Flr -Concealed Plumbing | 10d | 2028-10-28 | 2028-11-06 | 2428, 2433 |  | 7 day week No holidays | 2516898 |
| 2435 | 37000.40500.47700.49000.386100.776500 | 42nd Flr -Waterproofing Work | 12d | 2028-11-07 | 2028-11-18 | 2429, 2434 |  | 7 day week No holidays | 2516908 |
| 2436 | 37000.40500.47700.49000.386200 | **43th Floor** | 40d | 2028-10-26 | 2028-12-04 |  | start no earlier than 2028-10-26 | 7 day week No holidays | 2507828 |
| 2437 | 37000.40500.47700.49000.386200.776600 | 43rd Flr -Blockwork | 10d | 2028-10-26 | 2028-11-04 | 2220, 2431 |  | 7 day week No holidays | 2516918 |
| 2438 | 37000.40500.47700.49000.386200.776700 | 43rd Flr -Concealed electrical conduiting | 9d | 2028-11-05 | 2028-11-13 | 2432, 2437 |  | 7 day week No holidays | 2516928 |
| 2439 | 37000.40500.47700.49000.386200.776800 | 43rd Flr -Backcoat Plaster | 8d | 2028-11-05 | 2028-11-12 | 2433, 2437 |  | 7 day week No holidays | 2516938 |
| 2440 | 37000.40500.47700.49000.386200.776900 | 43rd Flr -Concealed Plumbing | 10d | 2028-11-13 | 2028-11-22 | 2434, 2439 |  | 7 day week No holidays | 2516948 |
| 2441 | 37000.40500.47700.49000.386200.777000 | 43rd Flr -Waterproofing Work | 12d | 2028-11-23 | 2028-12-04 | 2435, 2440 |  | 7 day week No holidays | 2516958 |
| 2442 | 37000.40500.47700.49000.386300 | **44th Floor** | 40d | 2028-11-11 | 2028-12-20 |  | start no earlier than 2028-11-11 | 7 day week No holidays | 2507838 |
| 2443 | 37000.40500.47700.49000.386300.777100 | 44th Flr -Blockwork | 10d | 2028-11-11 | 2028-11-20 | 2221, 2437 |  | 7 day week No holidays | 2516968 |
| 2444 | 37000.40500.47700.49000.386300.777200 | 44th Flr -Concealed electrical conduiting | 9d | 2028-11-21 | 2028-11-29 | 2438, 2443 |  | 7 day week No holidays | 2516978 |
| 2445 | 37000.40500.47700.49000.386300.777300 | 44th Flr -Backcoat Plaster | 8d | 2028-11-21 | 2028-11-28 | 2439, 2443 |  | 7 day week No holidays | 2516988 |
| 2446 | 37000.40500.47700.49000.386300.777400 | 44th Flr -Concealed Plumbing | 10d | 2028-11-29 | 2028-12-08 | 2440, 2445 |  | 7 day week No holidays | 2516998 |
| 2447 | 37000.40500.47700.49000.386300.777500 | 44th Flr -Waterproofing Work | 12d | 2028-12-09 | 2028-12-20 | 2441, 2446 |  | 7 day week No holidays | 2517008 |

| ID | WBS | Task | Duration | Start | Finish | Predecessors | Constraint | Calendar | Unique_Task_ID |
| --- | --- | --- | --- | --- | --- | --- | --- | --- | --- |
| 2448 | 37000.40500.47700.49000.386400 | **45th Floor** | 40d | 2028-11-27 | 2029-01-05 |  | start no earlier than 2028-11-27 | 7 day week No holidays | 2507848 |
| 2449 | 37000.40500.47700.49000.386400.777600 | 45th Flr -Blockwork | 10d | 2028-11-27 | 2028-12-06 | 2222, 2443 |  | 7 day week No holidays | 2517018 |
| 2450 | 37000.40500.47700.49000.386400.777700 | 45th Flr -Concealed electrical conduiting | 9d | 2028-12-07 | 2028-12-15 | 2444, 2449 |  | 7 day week No holidays | 2517028 |
| 2451 | 37000.40500.47700.49000.386400.777800 | 45th Flr -Backcoat Plaster | 8d | 2028-12-07 | 2028-12-14 | 2445, 2449 |  | 7 day week No holidays | 2517038 |
| 2452 | 37000.40500.47700.49000.386400.777900 | 45th Flr -Concealed Plumbing | 10d | 2028-12-15 | 2028-12-24 | 2446, 2451 |  | 7 day week No holidays | 2517048 |
| 2453 | 37000.40500.47700.49000.386400.778000 | 45th Flr -Waterproofing Work | 12d | 2028-12-25 | 2029-01-05 | 2447, 2452 |  | 7 day week No holidays | 2517058 |
| 2454 | 37000.40500.47700.49000.386500 | **46th Floor** | 40d | 2028-12-13 | 2029-01-21 |  | start no earlier than 2028-12-13 | 7 day week No holidays | 2507858 |
| 2455 | 37000.40500.47700.49000.386500.778100 | 46th Flr -Blockwork | 10d | 2028-12-13 | 2028-12-22 | 2223, 2449 |  | 7 day week No holidays | 2517068 |
| 2456 | 37000.40500.47700.49000.386500.778200 | 46th Flr -Concealed electrical conduiting | 9d | 2028-12-23 | 2028-12-31 | 2450, 2455 |  | 7 day week No holidays | 2517078 |
| 2457 | 37000.40500.47700.49000.386500.778300 | 46th Flr -Backcoat Plaster | 8d | 2028-12-23 | 2028-12-30 | 2451, 2455 |  | 7 day week No holidays | 2517088 |
| 2458 | 37000.40500.47700.49000.386500.778400 | 46th Flr -Concealed Plumbing | 10d | 2028-12-31 | 2029-01-09 | 2452, 2457 |  | 7 day week No holidays | 2517098 |
| 2459 | 37000.40500.47700.49000.386500.778500 | 46th Flr -Waterproofing Work | 12d | 2029-01-10 | 2029-01-21 | 2453, 2458 |  | 7 day week No holidays | 2517108 |
| 2460 | 37000.40500.47700.49000.386600 | **47th Floor** | 40d | 2028-12-29 | 2029-02-06 |  | start no earlier than 2028-12-29 | 7 day week No holidays | 2507868 |
| 2461 | 37000.40500.47700.49000.386600.778600 | 47th Flr -Blockwork | 10d | 2028-12-29 | 2029-01-07 | 2224, 2455 |  | 7 day week No holidays | 2517118 |
| 2462 | 37000.40500.47700.49000.386600.778700 | 47th Flr -Concealed electrical conduiting | 9d | 2029-01-08 | 2029-01-16 | 2456, 2461 |  | 7 day week No holidays | 2517128 |
| 2463 | 37000.40500.47700.49000.386600.778800 | 47th Flr -Backcoat Plaster | 8d | 2029-01-08 | 2029-01-15 | 2457, 2461 |  | 7 day week No holidays | 2517138 |
| 2464 | 37000.40500.47700.49000.386600.778900 | 47th Flr -Concealed Plumbing | 10d | 2029-01-16 | 2029-01-25 | 2458, 2463 |  | 7 day week No holidays | 2517148 |
| 2465 | 37000.40500.47700.49000.386600.779000 | 47th Flr -Waterproofing Work | 12d | 2029-01-26 | 2029-02-06 | 2459, 2464 |  | 7 day week No holidays | 2517158 |
| 2466 | 37000.40500.47700.49000.386700 | **48th Floor** | 40d | 2029-01-14 | 2029-02-22 |  | start no earlier than 2029-01-14 | 7 day week No holidays | 2507878 |
| 2467 | 37000.40500.47700.49000.386700.779100 | 48th Flr -Blockwork | 10d | 2029-01-14 | 2029-01-23 | 2225, 2461 |  | 7 day week No holidays | 2517168 |
| 2468 | 37000.40500.47700.49000.386700.779200 | 48th Flr -Concealed electrical conduiting | 9d | 2029-01-24 | 2029-02-01 | 2462, 2467 |  | 7 day week No holidays | 2517178 |
| 2469 | 37000.40500.47700.49000.386700.779300 | 48th Flr -Backcoat Plaster | 8d | 2029-01-24 | 2029-01-31 | 2463, 2467 |  | 7 day week No holidays | 2517188 |
| 2470 | 37000.40500.47700.49000.386700.779400 | 48th Flr -Concealed Plumbing | 10d | 2029-02-01 | 2029-02-10 | 2464, 2469 |  | 7 day week No holidays | 2517198 |
| 2471 | 37000.40500.47700.49000.386700.779500 | 48th Flr -Waterproofing Work | 12d | 2029-02-11 | 2029-02-22 | 2465, 2470 |  | 7 day week No holidays | 2517208 |

| ID | WBS | Task | Duration | Start | Finish | Predecessors | Constraint | Calendar | Unique_Task_ID |
| --- | --- | --- | --- | --- | --- | --- | --- | --- | --- |
| 2472 | 37000.40500.47700.49000.386900 | **49th Floor** | 40d | 2029-01-30 | 2029-03-10 |  | start no earlier than 2029-01-30 | 7 day week No holidays | 2507888 |
| 2473 | 37000.40500.47700.49000.386900.779600 | 49th Flr -Blockwork | 10d | 2029-01-30 | 2029-02-08 | 2226, 2467 |  | 7 day week No holidays | 2517218 |
| 2474 | 37000.40500.47700.49000.386900.779700 | 49th Flr -Concealed electrical conduiting | 9d | 2029-02-09 | 2029-02-17 | 2468, 2473 |  | 7 day week No holidays | 2517228 |
| 2475 | 37000.40500.47700.49000.386900.779800 | 49th Flr -Backcoat Plaster | 8d | 2029-02-09 | 2029-02-16 | 2469, 2473 |  | 7 day week No holidays | 2517238 |
| 2476 | 37000.40500.47700.49000.386900.779900 | 49th Flr -Concealed Plumbing | 10d | 2029-02-17 | 2029-02-26 | 2470, 2475 |  | 7 day week No holidays | 2517248 |
| 2477 | 37000.40500.47700.49000.386900.780000 | 49th Flr -Waterproofing Work | 12d | 2029-02-27 | 2029-03-10 | 2471, 2476 |  | 7 day week No holidays | 2517258 |
| 2478 | 37000.40500.47700.49000.387000 | **50th Floor** | 42d | 2029-02-09 | 2029-03-22 |  | start no earlier than 2029-02-09 | 7 day week No holidays | 2507898 |
| 2479 | 37000.40500.47700.49000.387000.780100 | 50th Flr -Blockwork | 10d | 2029-02-09 | 2029-02-18 | 2473 |  | 7 day week No holidays | 2517268 |
| 2480 | 37000.40500.47700.49000.387000.780200 | 50th Flr -Concealed electrical conduiting | 9d | 2029-02-19 | 2029-02-27 | 2474, 2479 |  | 7 day week No holidays | 2517278 |
| 2481 | 37000.40500.47700.49000.387000.780300 | 50th Flr -Backcoat Plaster | 8d | 2029-02-19 | 2029-02-26 | 2475, 2479 |  | 7 day week No holidays | 2517288 |
| 2482 | 37000.40500.47700.49000.387000.780400 | 50th Flr -Concealed Plumbing | 10d | 2029-02-27 | 2029-03-08 | 2476, 2481 |  | 7 day week No holidays | 2517298 |
| 2483 | 37000.40500.47700.49000.387000.780500 | 50th Flr -Waterproofing Work | 12d | 2029-03-11 | 2029-03-22 | 2477, 2482 |  | 7 day week No holidays | 2517308 |
| 2484 | 37000.40500.47700.49000.387100 | **51th Floor** | 44d | 2029-02-19 | 2029-04-03 |  | start no earlier than 2029-02-19 | 7 day week No holidays | 2507908 |
| 2485 | 37000.40500.47700.49000.387100.780600 | 51st Flr -Blockwork | 10d | 2029-02-19 | 2029-02-28 | 2479 |  | 7 day week No holidays | 2517318 |
| 2486 | 37000.40500.47700.49000.387100.780700 | 51st Flr -Concealed electrical conduiting | 9d | 2029-03-01 | 2029-03-09 | 2480, 2485 |  | 7 day week No holidays | 2517328 |
| 2487 | 37000.40500.47700.49000.387100.780800 | 51st Flr -Backcoat Plaster | 8d | 2029-03-01 | 2029-03-08 | 2481, 2485 |  | 7 day week No holidays | 2517338 |
| 2488 | 37000.40500.47700.49000.387100.780900 | 51st Flr -Concealed Plumbing | 10d | 2029-03-09 | 2029-03-18 | 2482, 2487 |  | 7 day week No holidays | 2517348 |
| 2489 | 37000.40500.47700.49000.387100.781000 | 51st Flr -Waterproofing Work | 12d | 2029-03-23 | 2029-04-03 | 2483, 2488 |  | 7 day week No holidays | 2517358 |
| 2490 | 37000.40500.47700.49000.387200 | **52th Floor** | 46d | 2029-03-01 | 2029-04-15 |  | start no earlier than 2029-03-01 | 7 day week No holidays | 2507918 |
| 2491 | 37000.40500.47700.49000.387200.781100 | 52nd Flr -Blockwork | 10d | 2029-03-01 | 2029-03-10 | 2485 |  | 7 day week No holidays | 2517368 |
| 2492 | 37000.40500.47700.49000.387200.781200 | 52nd Flr -Concealed electrical conduiting | 9d | 2029-03-11 | 2029-03-19 | 2486, 2491 |  | 7 day week No holidays | 2517378 |
| 2493 | 37000.40500.47700.49000.387200.781300 | 52nd Flr -Backcoat Plaster | 8d | 2029-03-11 | 2029-03-18 | 2487, 2491 |  | 7 day week No holidays | 2517388 |
| 2494 | 37000.40500.47700.49000.387200.781400 | 52nd Flr -Concealed Plumbing | 10d | 2029-03-19 | 2029-03-28 | 2488, 2493 |  | 7 day week No holidays | 2517398 |
| 2495 | 37000.40500.47700.49000.387200.781500 | 52nd Flr -Waterproofing Work | 12d | 2029-04-04 | 2029-04-15 | 2489, 2494 |  | 7 day week No holidays | 2517408 |

| ID | WBS | Task | Duration | Start | Finish | Predecessors | Constraint | Calendar | Unique_Task_ID |
| --- | --- | --- | --- | --- | --- | --- | --- | --- | --- |
| 2496 | 37000.40500.47700.376600 | **Terrace floor - Civil Work** | 73d | 2029-03-11 | 2029-05-22 |  | start no earlier than 2029-03-11 | 7 day week No holidays | 2507358 |
| 2497 | 37000.40500.47700.376600.598900 | Terrace floor - Blockwork | 10d | 2029-03-11 | 2029-03-20 | 2491 |  | 7 day week No holidays | 2509048 |
| 2498 | 37000.40500.47700.376600.599000 | Terrace floor - Concealed electrical conduiting | 9d | 2029-03-21 | 2029-03-29 | 2497 |  | 7 day week No holidays | 2509058 |
| 2499 | 37000.40500.47700.376600.599100 | Terrace floor - Backcoat Plaster | 8d | 2029-03-21 | 2029-03-28 | 2497 |  | 7 day week No holidays | 2509068 |
| 2500 | 37000.40500.47700.376600.599200 | Terrace floor - Concealed Plumbing | 10d | 2029-03-29 | 2029-04-07 | 2499 |  | 7 day week No holidays | 2509078 |
| 2501 | 37000.40500.47700.376600.599300 | Terrace floor - Waterproofing Work | 45d | 2029-04-08 | 2029-05-22 | 2500 |  | 7 day week No holidays | 2509088 |
| 2502 | 37000.40500.47700.376500 | **Basement-2 - Civil Work** | 75d | 2028-08-01 | 2028-10-14 |  | start no earlier than 2028-08-01 | 7 day week No holidays | 2507368 |
| 2503 | 37000.40500.47700.376500.599400 | Basement-2 Blockwork | 15d | 2028-08-01 | 2028-08-15 | 2401 |  | 7 day week No holidays | 2509098 |
| 2504 | 37000.40500.47700.376500.599500 | Basement-2 Concealed electrical conduiting | 15d | 2028-08-16 | 2028-08-30 | 2503 |  | 7 day week No holidays | 2509108 |
| 2505 | 37000.40500.47700.376500.599600 | Basement-2 Backcoat Plaster | 15d | 2028-08-31 | 2028-09-14 | 2504 |  | 7 day week No holidays | 2509118 |
| 2506 | 37000.40500.47700.376500.599700 | Basement-2 Concealed Plumbing | 15d | 2028-09-15 | 2028-09-29 | 2505 |  | 7 day week No holidays | 2509128 |
| 2507 | 37000.40500.47700.376500.599800 | Basement-2 Waterproofing Work | 15d | 2028-09-30 | 2028-10-14 | 2506 |  | 7 day week No holidays | 2509138 |
| 2508 | 37000.40500.47700.376400 | **Basement 1 - Civil Work** | 75d | 2028-08-16 | 2028-10-29 |  | start no earlier than 2028-08-16 | 7 day week No holidays | 2507378 |
| 2509 | 37000.40500.47700.376400.599900 | Basement 1 - Blockwork | 15d | 2028-08-16 | 2028-08-30 | 2503 |  | 7 day week No holidays | 2509148 |
| 2510 | 37000.40500.47700.376400.600000 | Basement 1 - Concealed electrical conduiting | 15d | 2028-08-31 | 2028-09-14 | 2504, 2509 |  | 7 day week No holidays | 2509158 |
| 2511 | 37000.40500.47700.376400.600100 | Basement 1 - Backcoat Plaster | 15d | 2028-09-15 | 2028-09-29 | 2505, 2509 |  | 7 day week No holidays | 2509168 |
| 2512 | 37000.40500.47700.376400.600200 | Basement 1 - Concealed Plumbing | 15d | 2028-09-30 | 2028-10-14 | 2506, 2511 |  | 7 day week No holidays | 2509178 |
| 2513 | 37000.40500.47700.376400.600300 | Basement 1 - Waterproofing Work | 15d | 2028-10-15 | 2028-10-29 | 2507, 2512 |  | 7 day week No holidays | 2509188 |
| 2514 | 37000.40500.47700.376300 | **GF - Civil Work** | 75d | 2028-08-31 | 2028-11-13 |  | start no earlier than 2028-08-31 | 7 day week No holidays | 2507388 |
| 2515 | 37000.40500.47700.376300.600400 | Blockwork | 15d | 2028-08-31 | 2028-09-14 | 2509 |  | 7 day week No holidays | 2509198 |
| 2516 | 37000.40500.47700.376300.600500 | Concealed electrical conduiting | 15d | 2028-09-15 | 2028-09-29 | 2510, 2515 |  | 7 day week No holidays | 2509208 |
| 2517 | 37000.40500.47700.376300.600600 | Backcoat Plaster | 15d | 2028-09-30 | 2028-10-14 | 2511, 2515 |  | 7 day week No holidays | 2509218 |
| 2518 | 37000.40500.47700.376300.600700 | Concealed Plumbing | 15d | 2028-10-15 | 2028-10-29 | 2512, 2517 |  | 7 day week No holidays | 2509228 |
| 2519 | 37000.40500.47700.376300.600800 | Waterproofing Work | 15d | 2028-10-30 | 2028-11-13 | 2513, 2518 |  | 7 day week No holidays | 2509238 |

| ID | WBS | Task | Duration | Start | Finish | Predecessors | Constraint | Calendar | Unique_Task_ID |
| --- | --- | --- | --- | --- | --- | --- | --- | --- | --- |
| 2520 | 37000.40500.47700.376200 | **Podium-1 - Civil Work** | 75d | 2028-09-15 | 2028-11-28 |  | start no earlier than 2028-09-15 | 7 day week No holidays | 2507398 |
| 2521 | 37000.40500.47700.376200.600900 | Podium-1 -Blockwork | 15d | 2028-09-15 | 2028-09-29 | 2515 |  | 7 day week No holidays | 2509248 |
| 2522 | 37000.40500.47700.376200.601000 | Podium-1 -Concealed electrical conduiting | 20d | 2028-09-30 | 2028-10-19 | 2516, 2521 |  | 7 day week No holidays | 2509258 |
| 2523 | 37000.40500.47700.376200.601100 | Podium-1 -Backcoat Plaster | 15d | 2028-10-15 | 2028-10-29 | 2517, 2521 |  | 7 day week No holidays | 2509268 |
| 2524 | 37000.40500.47700.376200.601200 | Podium-1 -Concealed Plumbing | 15d | 2028-10-30 | 2028-11-13 | 2518, 2523 |  | 7 day week No holidays | 2509278 |
| 2525 | 37000.40500.47700.376200.601300 | Podium-1 -Waterproofing Work | 15d | 2028-11-14 | 2028-11-28 | 2519, 2524 |  | 7 day week No holidays | 2509288 |
| 2526 | 37000.40500.47700.376100 | **Podium-2 - Civil Work** | 75d | 2028-09-30 | 2028-12-13 |  | start no earlier than 2028-09-30 | 7 day week No holidays | 2507408 |
| 2527 | 37000.40500.47700.376100.601400 | Podium-2 -Blockwork | 15d | 2028-09-30 | 2028-10-14 | 2521 |  | 7 day week No holidays | 2509298 |
| 2528 | 37000.40500.47700.376100.601500 | Podium-2 -Concealed electrical conduiting | 10d | 2028-10-20 | 2028-10-29 | 2522, 2527 |  | 7 day week No holidays | 2509308 |
| 2529 | 37000.40500.47700.376100.601600 | Podium-2 -Backcoat Plaster | 15d | 2028-10-30 | 2028-11-13 | 2523, 2527 |  | 7 day week No holidays | 2509318 |
| 2530 | 37000.40500.47700.376100.601700 | Podium-2 -Concealed Plumbing | 15d | 2028-11-14 | 2028-11-28 | 2524, 2529 |  | 7 day week No holidays | 2509328 |
| 2531 | 37000.40500.47700.376100.601800 | Podium-2 -Waterproofing Work | 15d | 2028-11-29 | 2028-12-13 | 2525, 2530 |  | 7 day week No holidays | 2509338 |
| 2532 | 37000.40500.47700.376000 | **Podium-3 - Civil Work** | 75d | 2028-10-15 | 2028-12-28 |  | start no earlier than 2028-10-15 | 7 day week No holidays | 2507418 |
| 2533 | 37000.40500.47700.376000.601900 | Podium-3 -Blockwork | 15d | 2028-10-15 | 2028-10-29 | 2527 |  | 7 day week No holidays | 2509348 |
| 2534 | 37000.40500.47700.376000.602000 | Podium-3 -Concealed electrical conduiting | 10d | 2028-10-30 | 2028-11-08 | 2528, 2533 |  | 7 day week No holidays | 2509358 |
| 2535 | 37000.40500.47700.376000.602100 | Podium-3 -Backcoat Plaster | 15d | 2028-11-14 | 2028-11-28 | 2529, 2533 |  | 7 day week No holidays | 2509368 |
| 2536 | 37000.40500.47700.376000.602200 | Podium-3 -Concealed Plumbing | 15d | 2028-11-29 | 2028-12-13 | 2530, 2535 |  | 7 day week No holidays | 2509378 |
| 2537 | 37000.40500.47700.376000.602300 | Podium-3 -Waterproofing Work | 15d | 2028-12-14 | 2028-12-28 | 2531, 2536 |  | 7 day week No holidays | 2509388 |
| 2538 | 37000.40500.47700.375900 | **Podium-4 - Civil Work** | 75d | 2028-10-30 | 2029-01-12 |  | start no earlier than 2028-10-30 | 7 day week No holidays | 2507428 |
| 2539 | 37000.40500.47700.375900.602400 | Podium-4 - Blockwork | 15d | 2028-10-30 | 2028-11-13 | 2533 |  | 7 day week No holidays | 2509398 |
| 2540 | 37000.40500.47700.375900.602500 | Podium-4 -Concealed electrical conduiting | 10d | 2028-11-14 | 2028-11-23 | 2534, 2539 |  | 7 day week No holidays | 2509408 |
| 2541 | 37000.40500.47700.375900.602600 | Podium-4 -Backcoat Plaster | 15d | 2028-11-29 | 2028-12-13 | 2535, 2539 |  | 7 day week No holidays | 2509418 |
| 2542 | 37000.40500.47700.375900.602700 | Podium-4 -Concealed Plumbing | 15d | 2028-12-14 | 2028-12-28 | 2536, 2541 |  | 7 day week No holidays | 2509428 |
| 2543 | 37000.40500.47700.375900.602800 | Podium-4 -Waterproofing Work | 15d | 2028-12-29 | 2029-01-12 | 2537, 2542 |  | 7 day week No holidays | 2509438 |

| ID | WBS | Task | Duration | Start | Finish | Predecessors | Constraint | Calendar | Unique_Task_ID |
| --- | --- | --- | --- | --- | --- | --- | --- | --- | --- |
| 2544 | 37000.40500.47700.375800 | **Podium-5 - Civil Work** | 75d | 2028-11-14 | 2029-01-27 |  | start no earlier than 2028-11-14 | 7 day week No holidays | 2507438 |
| 2545 | 37000.40500.47700.375800.602900 | Podium-5 -Blockwork | 15d | 2028-11-14 | 2028-11-28 | 2539 |  | 7 day week No holidays | 2509448 |
| 2546 | 37000.40500.47700.375800.603000 | Podium-5 -Concealed electrical conduiting | 10d | 2028-11-29 | 2028-12-08 | 2540, 2545 |  | 7 day week No holidays | 2509458 |
| 2547 | 37000.40500.47700.375800.603100 | Podium-5 -Backcoat Plaster | 15d | 2028-12-14 | 2028-12-28 | 2541, 2545 |  | 7 day week No holidays | 2509468 |
| 2548 | 37000.40500.47700.375800.603200 | Podium-5 -Concealed Plumbing | 15d | 2028-12-29 | 2029-01-12 | 2542, 2547 |  | 7 day week No holidays | 2509478 |
| 2549 | 37000.40500.47700.375800.603300 | Podium-5 -Waterproofing Work | 15d | 2029-01-13 | 2029-01-27 | 2543, 2548 |  | 7 day week No holidays | 2509488 |
| 2550 | 37000.40500.47700.375700 | **Podium-6 - Civil Work** | 75d | 2028-11-29 | 2029-02-11 |  | start no earlier than 2028-11-29 | 7 day week No holidays | 2507448 |
| 2551 | 37000.40500.47700.375700.603400 | Podium-6 -Blockwork | 15d | 2028-11-29 | 2028-12-13 | 2545 |  | 7 day week No holidays | 2509498 |
| 2552 | 37000.40500.47700.375700.603500 | Podium-6 -Concealed electrical conduiting | 10d | 2028-12-14 | 2028-12-23 | 2546, 2551 |  | 7 day week No holidays | 2509508 |
| 2553 | 37000.40500.47700.375700.603600 | Podium-6 -Backcoat Plaster | 15d | 2028-12-29 | 2029-01-12 | 2547, 2551 |  | 7 day week No holidays | 2509518 |
| 2554 | 37000.40500.47700.375700.603700 | Podium-6 -Concealed Plumbing | 15d | 2029-01-13 | 2029-01-27 | 2548, 2553 |  | 7 day week No holidays | 2509528 |
| 2555 | 37000.40500.47700.375700.603800 | Podium-6 -Waterproofing Work | 15d | 2029-01-28 | 2029-02-11 | 2549, 2554 |  | 7 day week No holidays | 2509538 |
| 2556 | 37000.40500.47700.375600 | **Podium-7 - Service Floor** | 75d | 2028-12-14 | 2029-02-26 |  | start no earlier than 2028-12-14 | 7 day week No holidays | 2507458 |
| 2557 | 37000.40500.47700.375600.603900 | Podium-7 -Blockwork | 15d | 2028-12-14 | 2028-12-28 | 2551 |  | 7 day week No holidays | 2509548 |
| 2558 | 37000.40500.47700.375600.604000 | Podium-7 -Concealed electrical conduiting | 10d | 2028-12-29 | 2029-01-07 | 2552, 2557 |  | 7 day week No holidays | 2509558 |
| 2559 | 37000.40500.47700.375600.604100 | Podium-7 -Backcoat Plaster | 15d | 2029-01-13 | 2029-01-27 | 2553, 2557 |  | 7 day week No holidays | 2509568 |
| 2560 | 37000.40500.47700.375600.604200 | Podium-7 -Concealed Plumbing | 15d | 2029-01-28 | 2029-02-11 | 2554, 2559 |  | 7 day week No holidays | 2509578 |
| 2561 | 37000.40500.47700.375600.604300 | Podium-7 -Waterproofing Work | 15d | 2029-02-12 | 2029-02-26 | 2555, 2560 |  | 7 day week No holidays | 2509588 |
| 2562 | 37000.40500.47700.375500 | **Podium-8 - Civil Work** | 75d | 2028-12-29 | 2029-03-13 |  | start no earlier than 2028-12-29 | 7 day week No holidays | 2507468 |
| 2563 | 37000.40500.47700.375500.604400 | Podium-8 -Blockwork | 15d | 2028-12-29 | 2029-01-12 | 2557 |  | 7 day week No holidays | 2509598 |
| 2564 | 37000.40500.47700.375500.604500 | Podium-8 -Concealed electrical conduiting | 10d | 2029-01-13 | 2029-01-22 | 2558, 2563 |  | 7 day week No holidays | 2509608 |
| 2565 | 37000.40500.47700.375500.604600 | Podium-8 -Backcoat Plaster | 15d | 2029-01-28 | 2029-02-11 | 2559, 2563 |  | 7 day week No holidays | 2509618 |
| 2566 | 37000.40500.47700.375500.604700 | Podium-8 -Concealed Plumbing | 15d | 2029-02-12 | 2029-02-26 | 2560, 2565 |  | 7 day week No holidays | 2509628 |
| 2567 | 37000.40500.47700.375500.604800 | Podium--8 -Waterproofing Work | 15d | 2029-02-27 | 2029-03-13 | 2561, 2566 |  | 7 day week No holidays | 2509638 |

| ID | WBS | Task | Duration | Start | Finish | Predecessors | Constraint | Calendar | Unique_Task_ID |
| --- | --- | --- | --- | --- | --- | --- | --- | --- | --- |
| 2568 | 37000.40500.43300 | **Internal Finishing & Services** | 1097d | 2026-06-24 | 2029-06-24 |  | start no earlier than 2026-06-24 | 7 day week No holidays | 2505918 |
| 2569 | 37000.40500.43300.403200 | **Windows mobilization** | 103d | 2026-06-24 | 2026-10-21 |  | start no earlier than 2026-06-24 | Indian Calendar | 7562303 |
| 2570 | 37000.40500.43300.403200.604900 | Aluminium Windows-Order Date | 1d | 2026-06-24 | 2026-06-24 | 2571SS |  | 7 day week No holidays | 7562323 |
| 2571 | 37000.40500.43300.403200.605000 | Aluminium Windows-Shop Drawing Approval Date | 60d | 2026-06-24 | 2026-08-22 | 2572SS |  | 7 day week No holidays | 7562313 |
| 2572 | 37000.40500.43300.403200.605100 | Aluminium Windows-Start of supply for first lot date | 120d | 2026-06-24 | 2026-10-21 | 2581FF |  | 7 day week No holidays | 7562333 |
| 2573 | 37000.40500.43300.44500 | **Flat - Internal finishing & Services** | 1065d | 2026-07-26 | 2029-06-24 |  | start no earlier than 2026-07-26 | 7 day week No holidays | 2505928 |
| 2574 | 37000.40500.43300.44500.180200 | **9th Floor** | 194d | 2026-07-26 | 2027-02-04 |  | start no earlier than 2026-07-26 | 7 day week No holidays | 2505998 |
| 2575 | 37000.40500.43300.44500.180200.781600 | 9th flr-Gypsum Plaster | 14d | 2026-07-26 | 2026-08-08 | 2232, 2250 |  | 7 day week No holidays | 2518418 |
| 2576 | 37000.40500.43300.44500.180200.781700 | 9th flr-Kitchen Platform | 8d | 2026-08-09 | 2026-08-16 | 2575 |  | 7 day week No holidays | 2518428 |
| 2577 | 37000.40500.43300.44500.180200.781800 | 9th flr-Toilet dado & flooring | 14d | 2026-09-10 | 2026-09-23 | 2236, 2260 |  | 7 day week No holidays | 2518438 |
| 2578 | 37000.40500.43300.44500.180200.781900 | 9th flr-Fire sprinkler pipe | 12d | 2026-08-09 | 2026-08-20 | 2575 |  | 7 day week No holidays | 2518448 |
| 2579 | 37000.40500.43300.44500.180200.782000 | 9th flr-Flat flooring | 14d | 2026-09-24 | 2026-10-07 | 2577 |  | 7 day week No holidays | 2518458 |
| 2580 | 37000.40500.43300.44500.180200.782100 | 9th flr-Main door fixing & frame fixing | 14d | 2026-12-31 | 2027-01-13 | 2579, 2657 |  | 7 day week No holidays | 2518468 |
| 2581 | 37000.40500.43300.44500.180200.782200 | 9th flr-Window fixing | 14d | 2026-10-08 | 2026-10-21 | 2579 |  | 7 day week No holidays | 2518478 |
| 2582 | 37000.40500.43300.44500.180200.782300 | 9th flr-Railing Fixing | 14d | 2026-10-08 | 2026-10-21 | 2579 |  | 7 day week No holidays | 2518488 |
| 2583 | 37000.40500.43300.44500.180200.782400 | 9th flr-Internal painting - putty / primer application | 14d | 2026-10-08 | 2026-10-21 | 2579 |  | 7 day week No holidays | 2518498 |
| 2584 | 37000.40500.43300.44500.180200.782500 | 9th flr-Flat electrical wiring | 12d | 2027-01-14 | 2027-01-25 | 2580 |  | 7 day week No holidays | 2518508 |
| 2585 | 37000.40500.43300.44500.180200.782600 | 9th flr-Internal painting | 10d | 2027-01-26 | 2027-02-04 | 2584 |  | 7 day week No holidays | 2518518 |
| 2586 | 37000.40500.43300.44500.180200.782700 | 9th flr-Internal shutter fixing | 12d | 2026-10-22 | 2026-11-02 | 2583 |  | 7 day week No holidays | 2518528 |
| 2587 | 37000.40500.43300.44500.180100 | **10th Floor** | 192d | 2026-08-11 | 2027-02-18 |  | start no earlier than 2026-08-11 | 7 day week No holidays | 2506008 |
| 2588 | 37000.40500.43300.44500.180100.782800 | 10th flr-Gypsum Plaster | 14d | 2026-08-11 | 2026-08-24 | 2238, 2256, 2575 |  | 7 day week No holidays | 2518538 |
| 2589 | 37000.40500.43300.44500.180100.782900 | 10th flr-Kitchen Platform | 8d | 2026-08-25 | 2026-09-01 | 2576, 2588 |  | 7 day week No holidays | 2518548 |
| 2590 | 37000.40500.43300.44500.180100.783000 | 10th flr-Toilet dado & flooring | 14d | 2026-09-24 | 2026-10-07 | 2242, 2577 |  | 7 day week No holidays | 2518558 |
| 2591 | 37000.40500.43300.44500.180100.783100 | 10th flr-Fire sprinkler pipe | 12d | 2026-08-25 | 2026-09-05 | 2578, 2588 |  | 7 day week No holidays | 2518568 |
| 2592 | 37000.40500.43300.44500.180100.783200 | 10th flr-Flat flooring | 14d | 2026-10-08 | 2026-10-21 | 2579, 2590 |  | 7 day week No holidays | 2518578 |
| 2593 | 37000.40500.43300.44500.180100.783300 | 10th flr-Main door fixing & frame fixing | 14d | 2027-01-14 | 2027-01-27 | 2580, 2592 |  | 7 day week No holidays | 2518588 |
| 2594 | 37000.40500.43300.44500.180100.783400 | 10th flr-Window fixing | 14d | 2026-10-22 | 2026-11-04 | 2581, 2592 |  | 7 day week No holidays | 2518598 |
| 2595 | 37000.40500.43300.44500.180100.783500 | 10th flr-Railing Fixing | 14d | 2026-10-22 | 2026-11-04 | 2582, 2592 |  | 7 day week No holidays | 2518608 |
| 2596 | 37000.40500.43300.44500.180100.783600 | 10th flr-Internal painting - putty / primer application | 14d | 2026-10-22 | 2026-11-04 | 2583, 2592 |  | 7 day week No holidays | 2518618 |
| 2597 | 37000.40500.43300.44500.180100.783700 | 10th flr-Flat electrical wiring | 12d | 2027-01-28 | 2027-02-08 | 2584, 2593 |  | 7 day week No holidays | 2518628 |
| 2598 | 37000.40500.43300.44500.180100.783800 | 10th flr-Internal painting | 10d | 2027-02-09 | 2027-02-18 | 2585, 2597 |  | 7 day week No holidays | 2518638 |
| 2599 | 37000.40500.43300.44500.180100.783900 | 10th flr-Internal shutter fixing | 12d | 2026-11-05 | 2026-11-16 | 2586, 2596 |  | 7 day week No holidays | 2518648 |

| ID | WBS | Task | Duration | Start | Finish | Predecessors | Constraint | Calendar | Unique_Task_ID |
| --- | --- | --- | --- | --- | --- | --- | --- | --- | --- |
| 2600 | 37000.40500.43300.44500.179900 | **11th Floor** | 190d | 2026-08-27 | 2027-03-04 |  | start no earlier than 2026-08-27 | 7 day week No holidays | 2506018 |
| 2601 | 37000.40500.43300.44500.179900.784000 | 11th flr-Gypsum Plaster | 14d | 2026-08-27 | 2026-09-09 | 2244, 2262, 2588 |  | 7 day week No holidays | 2518658 |
| 2602 | 37000.40500.43300.44500.179900.784100 | 11th flr-Kitchen Platform | 8d | 2026-09-10 | 2026-09-17 | 2589, 2601 |  | 7 day week No holidays | 2518668 |
| 2603 | 37000.40500.43300.44500.179900.784200 | 11th flr-Toilet dado & flooring | 14d | 2026-10-08 | 2026-10-21 | 2248, 2590 |  | 7 day week No holidays | 2518678 |
| 2604 | 37000.40500.43300.44500.179900.784300 | 11th flr-Fire sprinkler pipe | 12d | 2026-09-10 | 2026-09-21 | 2591, 2601 |  | 7 day week No holidays | 2518688 |
| 2605 | 37000.40500.43300.44500.179900.784400 | 11th flr-Flat flooring | 14d | 2026-10-22 | 2026-11-04 | 2592, 2603 |  | 7 day week No holidays | 2518698 |
| 2606 | 37000.40500.43300.44500.179900.784500 | 11th flr-Main door fixing & frame fixing | 14d | 2027-01-28 | 2027-02-10 | 2593, 2605 |  | 7 day week No holidays | 2518708 |
| 2607 | 37000.40500.43300.44500.179900.784600 | 11th flr-Window fixing | 14d | 2026-11-05 | 2026-11-18 | 2594, 2605 |  | 7 day week No holidays | 2518718 |
| 2608 | 37000.40500.43300.44500.179900.784700 | 11th flr-Railing Fixing | 14d | 2026-11-05 | 2026-11-18 | 2595, 2605 |  | 7 day week No holidays | 2518728 |
| 2609 | 37000.40500.43300.44500.179900.784800 | 11th flr-Internal painting - putty / primer application | 14d | 2026-11-05 | 2026-11-18 | 2596, 2605 |  | 7 day week No holidays | 2518738 |
| 2610 | 37000.40500.43300.44500.179900.784900 | 11th flr-Flat electrical wiring | 12d | 2027-02-11 | 2027-02-22 | 2597, 2606 |  | 7 day week No holidays | 2518748 |
| 2611 | 37000.40500.43300.44500.179900.785000 | 11th flr-Internal painting | 10d | 2027-02-23 | 2027-03-04 | 2598, 2610 |  | 7 day week No holidays | 2518758 |
| 2612 | 37000.40500.43300.44500.179900.785100 | 11th flr-Internal shutter fixing | 12d | 2026-11-19 | 2026-11-30 | 2599, 2609 |  | 7 day week No holidays | 2518768 |
| 2613 | 37000.40500.43300.44500.179800 | **12th Floor** | 188d | 2026-09-12 | 2027-03-18 |  | start no earlier than 2026-09-12 | 7 day week No holidays | 2506028 |
| 2614 | 37000.40500.43300.44500.179800.785200 | 12th flr-Gypsum Plaster | 14d | 2026-09-12 | 2026-09-25 | 2250, 2268, 2601 |  | 7 day week No holidays | 2518778 |
| 2615 | 37000.40500.43300.44500.179800.785300 | 12th flr-Kitchen Platform | 8d | 2026-09-26 | 2026-10-03 | 2602, 2614 |  | 7 day week No holidays | 2518788 |
| 2616 | 37000.40500.43300.44500.179800.785400 | 12th flr-Toilet dado & flooring | 14d | 2026-10-22 | 2026-11-04 | 2254, 2603 |  | 7 day week No holidays | 2518798 |
| 2617 | 37000.40500.43300.44500.179800.785500 | 12th flr-Fire sprinkler pipe | 12d | 2026-09-26 | 2026-10-07 | 2604, 2614 |  | 7 day week No holidays | 2518808 |
| 2618 | 37000.40500.43300.44500.179800.785600 | 12th flr-Flat flooring | 14d | 2026-11-05 | 2026-11-18 | 2605, 2616 |  | 7 day week No holidays | 2518818 |
| 2619 | 37000.40500.43300.44500.179800.785700 | 12th flr-Main door fixing & frame fixing | 14d | 2027-02-11 | 2027-02-24 | 2606, 2618 |  | 7 day week No holidays | 2518828 |
| 2620 | 37000.40500.43300.44500.179800.785800 | 12th flr-Window fixing | 14d | 2026-11-19 | 2026-12-02 | 2607, 2618 |  | 7 day week No holidays | 2518838 |
| 2621 | 37000.40500.43300.44500.179800.785900 | 12th flr-Railing Fixing | 14d | 2026-11-19 | 2026-12-02 | 2608, 2618 |  | 7 day week No holidays | 2518848 |
| 2622 | 37000.40500.43300.44500.179800.786000 | 12th flr-Internal painting - putty / primer application | 14d | 2026-11-19 | 2026-12-02 | 2609, 2618 |  | 7 day week No holidays | 2518858 |
| 2623 | 37000.40500.43300.44500.179800.786100 | 12th flr-Flat electrical wiring | 12d | 2027-02-25 | 2027-03-08 | 2610, 2619 |  | 7 day week No holidays | 2518868 |
| 2624 | 37000.40500.43300.44500.179800.786200 | 12th flr-Internal painting | 10d | 2027-03-09 | 2027-03-18 | 2611, 2623 |  | 7 day week No holidays | 2518878 |
| 2625 | 37000.40500.43300.44500.179800.786300 | 12th flr-Internal shutter fixing | 12d | 2026-12-03 | 2026-12-14 | 2612, 2622 |  | 7 day week No holidays | 2518888 |

| ID | WBS | Task | Duration | Start | Finish | Predecessors | Constraint | Calendar | Unique_Task_ID |
| --- | --- | --- | --- | --- | --- | --- | --- | --- | --- |
| 2626 | 37000.40500.43300.44500.179700 | **13th Floor** | 186d | 2026-09-28 | 2027-04-01 |  | start no earlier than 2026-09-28 | 7 day week No holidays | 2506038 |
| 2627 | 37000.40500.43300.44500.179700.786400 | 13th flr-Gypsum Plaster | 14d | 2026-09-28 | 2026-10-11 | 2256, 2274, 2614 |  | 7 day week No holidays | 2518898 |
| 2628 | 37000.40500.43300.44500.179700.786500 | 13th flr-Kitchen Platform | 8d | 2026-10-12 | 2026-10-19 | 2615, 2627 |  | 7 day week No holidays | 2518908 |
| 2629 | 37000.40500.43300.44500.179700.786600 | 13th flr-Toilet dado & flooring | 14d | 2026-11-05 | 2026-11-18 | 2260, 2616 |  | 7 day week No holidays | 2518918 |
| 2630 | 37000.40500.43300.44500.179700.786700 | 13th flr-Fire sprinkler pipe | 12d | 2026-10-12 | 2026-10-23 | 2617, 2627 |  | 7 day week No holidays | 2518928 |
| 2631 | 37000.40500.43300.44500.179700.786800 | 13th flr-Flat flooring | 14d | 2026-11-19 | 2026-12-02 | 2618, 2629 |  | 7 day week No holidays | 2518938 |
| 2632 | 37000.40500.43300.44500.179700.786900 | 13th flr-Main door fixing & frame fixing | 14d | 2027-02-25 | 2027-03-10 | 2619, 2631 |  | 7 day week No holidays | 2518948 |
| 2633 | 37000.40500.43300.44500.179700.787000 | 13th flr-Window fixing | 14d | 2026-12-03 | 2026-12-16 | 2620, 2631 |  | 7 day week No holidays | 2518958 |
| 2634 | 37000.40500.43300.44500.179700.787100 | 13th flr-Railing Fixing | 14d | 2026-12-03 | 2026-12-16 | 2621, 2631 |  | 7 day week No holidays | 2518968 |
| 2635 | 37000.40500.43300.44500.179700.787200 | 13th flr-Internal painting - putty / primer application | 14d | 2026-12-03 | 2026-12-16 | 2622, 2631 |  | 7 day week No holidays | 2518978 |
| 2636 | 37000.40500.43300.44500.179700.787300 | 13th flr-Flat electrical wiring | 12d | 2027-03-11 | 2027-03-22 | 2623, 2632 |  | 7 day week No holidays | 2518988 |
| 2637 | 37000.40500.43300.44500.179700.787400 | 13th flr-Internal painting | 10d | 2027-03-23 | 2027-04-01 | 2624, 2636 |  | 7 day week No holidays | 2518998 |
| 2638 | 37000.40500.43300.44500.179700.787500 | 13th flr-Internal shutter fixing | 12d | 2026-12-17 | 2026-12-28 | 2625, 2635 |  | 7 day week No holidays | 2519008 |
| 2639 | 37000.40500.43300.44500.179500 | **14th Floor** | 184d | 2026-10-14 | 2027-04-15 |  | start no earlier than 2026-10-14 | 7 day week No holidays | 2506048 |
| 2640 | 37000.40500.43300.44500.179500.787600 | 14th flr-Gypsum Plaster | 14d | 2026-10-14 | 2026-10-27 | 2262, 2280, 2627 |  | 7 day week No holidays | 2519018 |
| 2641 | 37000.40500.43300.44500.179500.787700 | 14th flr-Kitchen Platform | 8d | 2026-10-28 | 2026-11-04 | 2628, 2640 |  | 7 day week No holidays | 2519028 |
| 2642 | 37000.40500.43300.44500.179500.787800 | 14th flr-Toilet dado & flooring | 14d | 2026-11-19 | 2026-12-02 | 2266, 2629 |  | 7 day week No holidays | 2519038 |
| 2643 | 37000.40500.43300.44500.179500.787900 | 14th flr-Fire sprinkler pipe | 12d | 2026-10-28 | 2026-11-08 | 2630, 2640 |  | 7 day week No holidays | 2519048 |
| 2644 | 37000.40500.43300.44500.179500.788000 | 14th flr-Flat flooring | 14d | 2026-12-03 | 2026-12-16 | 2631, 2642 |  | 7 day week No holidays | 2519058 |
| 2645 | 37000.40500.43300.44500.179500.788100 | 14th flr-Main door fixing & frame fixing | 14d | 2027-03-11 | 2027-03-24 | 2632, 2644 |  | 7 day week No holidays | 2519068 |
| 2646 | 37000.40500.43300.44500.179500.788200 | 14th flr-Window fixing | 14d | 2026-12-17 | 2026-12-30 | 2633, 2644 |  | 7 day week No holidays | 2519078 |
| 2647 | 37000.40500.43300.44500.179500.788300 | 14th flr-Railing Fixing | 14d | 2026-12-17 | 2026-12-30 | 2634, 2644 |  | 7 day week No holidays | 2519088 |
| 2648 | 37000.40500.43300.44500.179500.788400 | 14th flr-Internal painting - putty / primer application | 14d | 2026-12-17 | 2026-12-30 | 2635, 2644 |  | 7 day week No holidays | 2519098 |
| 2649 | 37000.40500.43300.44500.179500.788500 | 14th flr-Flat electrical wiring | 12d | 2027-03-25 | 2027-04-05 | 2636, 2645 |  | 7 day week No holidays | 2519108 |
| 2650 | 37000.40500.43300.44500.179500.788600 | 14th flr-Internal painting | 10d | 2027-04-06 | 2027-04-15 | 2637, 2649 |  | 7 day week No holidays | 2519118 |
| 2651 | 37000.40500.43300.44500.179500.788700 | 14th flr-Internal shutter fixing | 12d | 2026-12-31 | 2027-01-11 | 2638, 2648 |  | 7 day week No holidays | 2519128 |

| ID | WBS | Task | Duration | Start | Finish | Predecessors | Constraint | Calendar | Unique_Task_ID |
| --- | --- | --- | --- | --- | --- | --- | --- | --- | --- |
| 2652 | 37000.40500.43300.44500.179400 | **15th Floor** | 182d | 2026-10-30 | 2027-04-29 |  | start no earlier than 2026-10-30 | 7 day week No holidays | 2506058 |
| 2653 | 37000.40500.43300.44500.179400.788800 | 15th flr-Gypsum Plaster | 14d | 2026-10-30 | 2026-11-12 | 2268, 2286, 2640 |  | 7 day week No holidays | 2519138 |
| 2654 | 37000.40500.43300.44500.179400.788900 | 15th flr-Kitchen Platform | 8d | 2026-11-13 | 2026-11-20 | 2641, 2653 |  | 7 day week No holidays | 2519148 |
| 2655 | 37000.40500.43300.44500.179400.789000 | 15th flr-Toilet dado & flooring | 14d | 2026-12-03 | 2026-12-16 | 2272, 2642 |  | 7 day week No holidays | 2519158 |
| 2656 | 37000.40500.43300.44500.179400.789100 | 15th flr-Fire sprinkler pipe | 12d | 2026-11-13 | 2026-11-24 | 2643, 2653 |  | 7 day week No holidays | 2519168 |
| 2657 | 37000.40500.43300.44500.179400.789200 | 15th flr-Flat flooring | 14d | 2026-12-17 | 2026-12-30 | 2644, 2655 |  | 7 day week No holidays | 2519178 |
| 2658 | 37000.40500.43300.44500.179400.789300 | 15th flr-Main door fixing & frame fixing | 14d | 2027-03-25 | 2027-04-07 | 2645, 2657 |  | 7 day week No holidays | 2519188 |
| 2659 | 37000.40500.43300.44500.179400.789400 | 15th flr-Window fixing | 14d | 2026-12-31 | 2027-01-13 | 2646, 2657 |  | 7 day week No holidays | 2519198 |
| 2660 | 37000.40500.43300.44500.179400.789500 | 15th flr-Railing Fixing | 14d | 2026-12-31 | 2027-01-13 | 2647, 2657 |  | 7 day week No holidays | 2519208 |
| 2661 | 37000.40500.43300.44500.179400.789600 | 15th flr-Internal painting - putty / primer application | 14d | 2026-12-31 | 2027-01-13 | 2648, 2657 |  | 7 day week No holidays | 2519218 |
| 2662 | 37000.40500.43300.44500.179400.789700 | 15th flr-Flat electrical wiring | 12d | 2027-04-08 | 2027-04-19 | 2649, 2658 |  | 7 day week No holidays | 2519228 |
| 2663 | 37000.40500.43300.44500.179400.789800 | 15th flr-Internal painting | 10d | 2027-04-20 | 2027-04-29 | 2650, 2662 |  | 7 day week No holidays | 2519238 |
| 2664 | 37000.40500.43300.44500.179400.789900 | 15th flr-Internal shutter fixing | 12d | 2027-01-14 | 2027-01-25 | 2651, 2661 |  | 7 day week No holidays | 2519248 |
| 2665 | 37000.40500.43300.44500.179200 | **16th Floor** | 180d | 2026-11-15 | 2027-05-13 |  | start no earlier than 2026-11-15 | 7 day week No holidays | 2506068 |
| 2666 | 37000.40500.43300.44500.179200.790000 | 16th flr-Gypsum Plaster | 14d | 2026-11-15 | 2026-11-28 | 2274, 2292, 2653 |  | 7 day week No holidays | 2519258 |
| 2667 | 37000.40500.43300.44500.179200.790100 | 16th flr-Kitchen Platform | 8d | 2026-11-29 | 2026-12-06 | 2654, 2666 |  | 7 day week No holidays | 2519268 |
| 2668 | 37000.40500.43300.44500.179200.790200 | 16th flr-Toilet dado & flooring | 14d | 2026-12-17 | 2026-12-30 | 2278, 2655 |  | 7 day week No holidays | 2519278 |
| 2669 | 37000.40500.43300.44500.179200.790300 | 16th flr-Fire sprinkler pipe | 12d | 2026-11-29 | 2026-12-10 | 2656, 2666 |  | 7 day week No holidays | 2519288 |
| 2670 | 37000.40500.43300.44500.179200.790400 | 16th flr-Flat flooring | 14d | 2026-12-31 | 2027-01-13 | 2657, 2668 |  | 7 day week No holidays | 2519298 |
| 2671 | 37000.40500.43300.44500.179200.790500 | 16th flr-Main door fixing & frame fixing | 14d | 2027-04-08 | 2027-04-21 | 2658, 2670 |  | 7 day week No holidays | 2519308 |
| 2672 | 37000.40500.43300.44500.179200.790600 | 16th flr-Window fixing | 14d | 2027-01-14 | 2027-01-27 | 2659, 2670 |  | 7 day week No holidays | 2519318 |
| 2673 | 37000.40500.43300.44500.179200.790700 | 16th flr-Railing Fixing | 14d | 2027-01-14 | 2027-01-27 | 2660, 2670 |  | 7 day week No holidays | 2519328 |
| 2674 | 37000.40500.43300.44500.179200.790800 | 16th flr-Internal painting - putty / primer application | 14d | 2027-01-14 | 2027-01-27 | 2661, 2670 |  | 7 day week No holidays | 2519338 |
| 2675 | 37000.40500.43300.44500.179200.790900 | 16th flr-Flat electrical wiring | 12d | 2027-04-22 | 2027-05-03 | 2662, 2671 |  | 7 day week No holidays | 2519348 |
| 2676 | 37000.40500.43300.44500.179200.791000 | 16th flr-Internal painting | 10d | 2027-05-04 | 2027-05-13 | 2663, 2675 |  | 7 day week No holidays | 2519358 |
| 2677 | 37000.40500.43300.44500.179200.791100 | 16th flr-Internal shutter fixing | 12d | 2027-01-28 | 2027-02-08 | 2664, 2674 |  | 7 day week No holidays | 2519368 |

| ID | WBS | Task | Duration | Start | Finish | Predecessors | Constraint | Calendar | Unique_Task_ID |
| --- | --- | --- | --- | --- | --- | --- | --- | --- | --- |
| 2678 | 37000.40500.43300.44500.178300 | **17th Floor** | 178d | 2026-12-01 | 2027-05-27 |  | start no earlier than 2026-12-01 | 7 day week No holidays | 2506078 |
| 2679 | 37000.40500.43300.44500.178300.791200 | 17th flr-Gypsum Plaster | 14d | 2026-12-01 | 2026-12-14 | 2280, 2298, 2666 |  | 7 day week No holidays | 2519378 |
| 2680 | 37000.40500.43300.44500.178300.791300 | 17th flr-Kitchen Platform | 8d | 2026-12-15 | 2026-12-22 | 2667, 2679 |  | 7 day week No holidays | 2519388 |
| 2681 | 37000.40500.43300.44500.178300.791400 | 17th flr-Toilet dado & flooring | 14d | 2026-12-31 | 2027-01-13 | 2284, 2668 |  | 7 day week No holidays | 2519398 |
| 2682 | 37000.40500.43300.44500.178300.791500 | 17th flr-Fire sprinkler pipe | 12d | 2026-12-15 | 2026-12-26 | 2669, 2679 |  | 7 day week No holidays | 2519408 |
| 2683 | 37000.40500.43300.44500.178300.791600 | 17th flr-Flat flooring | 14d | 2027-01-14 | 2027-01-27 | 2670, 2681 |  | 7 day week No holidays | 2519418 |
| 2684 | 37000.40500.43300.44500.178300.791700 | 17th flr-Main door fixing & frame fixing | 14d | 2027-04-22 | 2027-05-05 | 2671, 2683 |  | 7 day week No holidays | 2519428 |
| 2685 | 37000.40500.43300.44500.178300.791800 | 17th flr-Window fixing | 14d | 2027-01-28 | 2027-02-10 | 2672, 2683 |  | 7 day week No holidays | 2519438 |
| 2686 | 37000.40500.43300.44500.178300.791900 | 17th flr-Railing Fixing | 14d | 2027-01-28 | 2027-02-10 | 2673, 2683 |  | 7 day week No holidays | 2519448 |
| 2687 | 37000.40500.43300.44500.178300.792000 | 17th flr-Internal painting - putty / primer application | 14d | 2027-01-28 | 2027-02-10 | 2674, 2683 |  | 7 day week No holidays | 2519458 |
| 2688 | 37000.40500.43300.44500.178300.792100 | 17th flr-Flat electrical wiring | 12d | 2027-05-06 | 2027-05-17 | 2675, 2684 |  | 7 day week No holidays | 2519468 |
| 2689 | 37000.40500.43300.44500.178300.792200 | 17th flr-Internal painting | 10d | 2027-05-18 | 2027-05-27 | 2676, 2688 |  | 7 day week No holidays | 2519478 |
| 2690 | 37000.40500.43300.44500.178300.792300 | 17th flr-Internal shutter fixing | 12d | 2027-02-11 | 2027-02-22 | 2677, 2687 |  | 7 day week No holidays | 2519488 |
| 2691 | 37000.40500.43300.44500.178000 | **18th Floor** | 176d | 2026-12-17 | 2027-06-10 |  | start no earlier than 2026-12-17 | 7 day week No holidays | 2506088 |
| 2692 | 37000.40500.43300.44500.178000.792400 | 18th flr-Gypsum Plaster | 14d | 2026-12-17 | 2026-12-30 | 2286, 2304, 2679 |  | 7 day week No holidays | 2519498 |
| 2693 | 37000.40500.43300.44500.178000.792500 | 18th flr-Kitchen Platform | 8d | 2026-12-31 | 2027-01-07 | 2680, 2692 |  | 7 day week No holidays | 2519508 |
| 2694 | 37000.40500.43300.44500.178000.792600 | 18th flr-Toilet dado & flooring | 14d | 2027-01-14 | 2027-01-27 | 2290, 2681 |  | 7 day week No holidays | 2519518 |
| 2695 | 37000.40500.43300.44500.178000.792700 | 18th flr-Fire sprinkler pipe | 12d | 2026-12-31 | 2027-01-11 | 2682, 2692 |  | 7 day week No holidays | 2519528 |
| 2696 | 37000.40500.43300.44500.178000.792800 | 18th flr-Flat flooring | 14d | 2027-01-28 | 2027-02-10 | 2683, 2694 |  | 7 day week No holidays | 2519538 |
| 2697 | 37000.40500.43300.44500.178000.792900 | 18th flr-Main door fixing & frame fixing | 14d | 2027-05-06 | 2027-05-19 | 2684, 2696 |  | 7 day week No holidays | 2519548 |
| 2698 | 37000.40500.43300.44500.178000.793000 | 18th flr-Window fixing | 14d | 2027-02-11 | 2027-02-24 | 2685, 2696 |  | 7 day week No holidays | 2519558 |
| 2699 | 37000.40500.43300.44500.178000.793100 | 18th flr-Railing Fixing | 14d | 2027-02-11 | 2027-02-24 | 2686, 2696 |  | 7 day week No holidays | 2519568 |
| 2700 | 37000.40500.43300.44500.178000.793200 | 18th flr-Internal painting - putty / primer application | 14d | 2027-02-11 | 2027-02-24 | 2687, 2696 |  | 7 day week No holidays | 2519578 |
| 2701 | 37000.40500.43300.44500.178000.793300 | 18th flr-Flat electrical wiring | 12d | 2027-05-20 | 2027-05-31 | 2688, 2697 |  | 7 day week No holidays | 2519588 |
| 2702 | 37000.40500.43300.44500.178000.793400 | 18th flr-Internal painting | 10d | 2027-06-01 | 2027-06-10 | 2689, 2701 |  | 7 day week No holidays | 2519598 |
| 2703 | 37000.40500.43300.44500.178000.793500 | 18th flr-Internal shutter fixing | 12d | 2027-02-25 | 2027-03-08 | 2690, 2700 |  | 7 day week No holidays | 2519608 |

| ID | WBS | Task | Duration | Start | Finish | Predecessors | Constraint | Calendar | Unique_Task_ID |
| --- | --- | --- | --- | --- | --- | --- | --- | --- | --- |
| 2704 | 37000.40500.43300.44500.177700 | **19th Floor** | 174d | 2027-01-02 | 2027-06-24 |  | start no earlier than 2027-01-02 | 7 day week No holidays | 2506098 |
| 2705 | 37000.40500.43300.44500.177700.793600 | 19th flr-Gypsum Plaster | 14d | 2027-01-02 | 2027-01-15 | 2292, 2310, 2692 |  | 7 day week No holidays | 2519618 |
| 2706 | 37000.40500.43300.44500.177700.793700 | 19th flr-Kitchen Platform | 8d | 2027-01-16 | 2027-01-23 | 2693, 2705 |  | 7 day week No holidays | 2519628 |
| 2707 | 37000.40500.43300.44500.177700.793800 | 19th flr-Toilet dado & flooring | 14d | 2027-01-28 | 2027-02-10 | 2296, 2694 |  | 7 day week No holidays | 2519638 |
| 2708 | 37000.40500.43300.44500.177700.793900 | 19th flr-Fire sprinkler pipe | 12d | 2027-01-16 | 2027-01-27 | 2695, 2705 |  | 7 day week No holidays | 2519648 |
| 2709 | 37000.40500.43300.44500.177700.794000 | 19th flr-Flat flooring | 14d | 2027-02-11 | 2027-02-24 | 2696, 2707 |  | 7 day week No holidays | 2519658 |
| 2710 | 37000.40500.43300.44500.177700.794100 | 19th flr-Main door fixing & frame fixing | 14d | 2027-05-20 | 2027-06-02 | 2697, 2709 |  | 7 day week No holidays | 2519668 |
| 2711 | 37000.40500.43300.44500.177700.794200 | 19th flr-Window fixing | 14d | 2027-02-25 | 2027-03-10 | 2698, 2709 |  | 7 day week No holidays | 2519678 |
| 2712 | 37000.40500.43300.44500.177700.794300 | 19th flr-Railing Fixing | 14d | 2027-02-25 | 2027-03-10 | 2699, 2709 |  | 7 day week No holidays | 2519688 |
| 2713 | 37000.40500.43300.44500.177700.794400 | 19th flr-Internal painting - putty / primer application | 14d | 2027-02-25 | 2027-03-10 | 2700, 2709 |  | 7 day week No holidays | 2519698 |
| 2714 | 37000.40500.43300.44500.177700.794500 | 19th flr-Flat electrical wiring | 12d | 2027-06-03 | 2027-06-14 | 2701, 2710 |  | 7 day week No holidays | 2519708 |
| 2715 | 37000.40500.43300.44500.177700.794600 | 19th flr-Internal painting | 10d | 2027-06-15 | 2027-06-24 | 2702, 2714 |  | 7 day week No holidays | 2519718 |
| 2716 | 37000.40500.43300.44500.177700.794700 | 19th flr-Internal shutter fixing | 12d | 2027-03-11 | 2027-03-22 | 2703, 2713 |  | 7 day week No holidays | 2519728 |
| 2717 | 37000.40500.43300.44500.177300 | **20th Floor** | 172d | 2027-01-18 | 2027-07-08 |  | start no earlier than 2027-01-18 | 7 day week No holidays | 2506108 |
| 2718 | 37000.40500.43300.44500.177300.794800 | 20th flr-Gypsum Plaster | 14d | 2027-01-18 | 2027-01-31 | 2298, 2317, 2705 |  | 7 day week No holidays | 2519738 |
| 2719 | 37000.40500.43300.44500.177300.794900 | 20th flr-Kitchen Platform | 8d | 2027-02-01 | 2027-02-08 | 2706, 2718 |  | 7 day week No holidays | 2519748 |
| 2720 | 37000.40500.43300.44500.177300.795000 | 20th flr-Toilet dado & flooring | 14d | 2027-02-11 | 2027-02-24 | 2302, 2707 |  | 7 day week No holidays | 2519758 |
| 2721 | 37000.40500.43300.44500.177300.795100 | 20th flr-Fire sprinkler pipe | 12d | 2027-02-01 | 2027-02-12 | 2708, 2718 |  | 7 day week No holidays | 2519768 |
| 2722 | 37000.40500.43300.44500.177300.795200 | 20th flr-Flat flooring | 14d | 2027-02-25 | 2027-03-10 | 2709, 2720 |  | 7 day week No holidays | 2519778 |
| 2723 | 37000.40500.43300.44500.177300.795300 | 20th flr-Main door fixing & frame fixing | 14d | 2027-06-03 | 2027-06-16 | 2710, 2722 |  | 7 day week No holidays | 2519788 |
| 2724 | 37000.40500.43300.44500.177300.795400 | 20th flr-Window fixing | 14d | 2027-03-11 | 2027-03-24 | 2711, 2722 |  | 7 day week No holidays | 2519798 |
| 2725 | 37000.40500.43300.44500.177300.795500 | 20th flr-Railing Fixing | 14d | 2027-03-11 | 2027-03-24 | 2712, 2722 |  | 7 day week No holidays | 2519808 |
| 2726 | 37000.40500.43300.44500.177300.795600 | 20th flr-Internal painting - putty / primer application | 14d | 2027-03-11 | 2027-03-24 | 2713, 2722 |  | 7 day week No holidays | 2519818 |
| 2727 | 37000.40500.43300.44500.177300.795700 | 20th flr-Flat electrical wiring | 12d | 2027-06-17 | 2027-06-28 | 2714, 2723 |  | 7 day week No holidays | 2519828 |
| 2728 | 37000.40500.43300.44500.177300.795800 | 20th flr-Internal painting | 10d | 2027-06-29 | 2027-07-08 | 2715, 2727 |  | 7 day week No holidays | 2519838 |
| 2729 | 37000.40500.43300.44500.177300.795900 | 20th flr-Internal shutter fixing | 12d | 2027-03-25 | 2027-04-05 | 2716, 2726 |  | 7 day week No holidays | 2519848 |

| ID | WBS | Task | Duration | Start | Finish | Predecessors | Constraint | Calendar | Unique_Task_ID |
| --- | --- | --- | --- | --- | --- | --- | --- | --- | --- |
| 2730 | 37000.40500.43300.44500.200900 | **21th Floor** | 170d | 2027-02-03 | 2027-07-22 |  | start no earlier than 2027-02-03 | 7 day week No holidays | 2506118 |
| 2731 | 37000.40500.43300.44500.200900.796000 | 21st flr-Gypsum Plaster | 14d | 2027-02-03 | 2027-02-16 | 2304, 2323, 2718 |  | 7 day week No holidays | 2519858 |
| 2732 | 37000.40500.43300.44500.200900.796100 | 21st flr-Kitchen Platform | 8d | 2027-02-17 | 2027-02-24 | 2719, 2731 |  | 7 day week No holidays | 2519868 |
| 2733 | 37000.40500.43300.44500.200900.796200 | 21st flr-Toilet dado & flooring | 14d | 2027-02-25 | 2027-03-10 | 2308, 2720 |  | 7 day week No holidays | 2519878 |
| 2734 | 37000.40500.43300.44500.200900.796300 | 21st flr-Fire sprinkler pipe | 12d | 2027-02-17 | 2027-02-28 | 2721, 2731 |  | 7 day week No holidays | 2519888 |
| 2735 | 37000.40500.43300.44500.200900.796400 | 21st flr-Flat flooring | 14d | 2027-03-11 | 2027-03-24 | 2722, 2733 |  | 7 day week No holidays | 2519898 |
| 2736 | 37000.40500.43300.44500.200900.796500 | 21st flr-Main door fixing & frame fixing | 14d | 2027-06-17 | 2027-06-30 | 2723, 2735 |  | 7 day week No holidays | 2519908 |
| 2737 | 37000.40500.43300.44500.200900.796600 | 21st flr-Window fixing | 14d | 2027-03-25 | 2027-04-07 | 2724, 2735 |  | 7 day week No holidays | 2519918 |
| 2738 | 37000.40500.43300.44500.200900.796700 | 21st flr-Railing Fixing | 14d | 2027-03-25 | 2027-04-07 | 2725, 2735 |  | 7 day week No holidays | 2519928 |
| 2739 | 37000.40500.43300.44500.200900.796800 | 21st flr-Internal painting - putty / primer application | 14d | 2027-03-25 | 2027-04-07 | 2726, 2735 |  | 7 day week No holidays | 2519938 |
| 2740 | 37000.40500.43300.44500.200900.796900 | 21st flr-Flat electrical wiring | 12d | 2027-07-01 | 2027-07-12 | 2727, 2736 |  | 7 day week No holidays | 2519948 |
| 2741 | 37000.40500.43300.44500.200900.797000 | 21st flr-Internal painting | 10d | 2027-07-13 | 2027-07-22 | 2728, 2740 |  | 7 day week No holidays | 2519958 |
| 2742 | 37000.40500.43300.44500.200900.797100 | 21st flr-Internal shutter fixing | 12d | 2027-04-08 | 2027-04-19 | 2729, 2739 |  | 7 day week No holidays | 2519968 |
| 2743 | 37000.40500.43300.44500.201000 | **22nd Floor** | 168d | 2027-02-19 | 2027-08-05 |  | start no earlier than 2027-02-19 | 7 day week No holidays | 2506128 |
| 2744 | 37000.40500.43300.44500.201000.797200 | 22nd flr-Gypsum Plaster | 14d | 2027-02-19 | 2027-03-04 | 2310, 2329, 2731 |  | 7 day week No holidays | 2519978 |
| 2745 | 37000.40500.43300.44500.201000.797300 | 22nd flr-Kitchen Platform | 8d | 2027-03-05 | 2027-03-12 | 2732, 2744 |  | 7 day week No holidays | 2519988 |
| 2746 | 37000.40500.43300.44500.201000.797400 | 22nd flr-Toilet dado & flooring | 14d | 2027-03-11 | 2027-03-24 | 2314, 2733 |  | 7 day week No holidays | 2519998 |
| 2747 | 37000.40500.43300.44500.201000.797500 | 22nd flr-Fire sprinkler pipe | 12d | 2027-03-05 | 2027-03-16 | 2734, 2744 |  | 7 day week No holidays | 2520008 |
| 2748 | 37000.40500.43300.44500.201000.797600 | 22nd flr-Flat flooring | 14d | 2027-03-25 | 2027-04-07 | 2735, 2746 |  | 7 day week No holidays | 2520018 |
| 2749 | 37000.40500.43300.44500.201000.797700 | 22nd flr-Main door fixing & frame fixing | 14d | 2027-07-01 | 2027-07-14 | 2736, 2748 |  | 7 day week No holidays | 2520028 |
| 2750 | 37000.40500.43300.44500.201000.797800 | 22nd flr-Window fixing | 14d | 2027-04-08 | 2027-04-21 | 2737, 2748 |  | 7 day week No holidays | 2520038 |
| 2751 | 37000.40500.43300.44500.201000.797900 | 22nd flr-Railing Fixing | 14d | 2027-04-08 | 2027-04-21 | 2738, 2748 |  | 7 day week No holidays | 2520048 |
| 2752 | 37000.40500.43300.44500.201000.798000 | 22nd flr-Internal painting - putty / primer application | 14d | 2027-04-08 | 2027-04-21 | 2739, 2748 |  | 7 day week No holidays | 2520058 |
| 2753 | 37000.40500.43300.44500.201000.798100 | 22nd flr-Flat electrical wiring | 12d | 2027-07-15 | 2027-07-26 | 2740, 2749 |  | 7 day week No holidays | 2520068 |
| 2754 | 37000.40500.43300.44500.201000.798200 | 22nd flr-Internal painting | 10d | 2027-07-27 | 2027-08-05 | 2741, 2753 |  | 7 day week No holidays | 2520078 |
| 2755 | 37000.40500.43300.44500.201000.798300 | 22nd flr-Internal shutter fixing | 12d | 2027-04-22 | 2027-05-03 | 2742, 2752 |  | 7 day week No holidays | 2520088 |

| ID | WBS | Task | Duration | Start | Finish | Predecessors | Constraint | Calendar | Unique_Task_ID |
| --- | --- | --- | --- | --- | --- | --- | --- | --- | --- |
| 2756 | 37000.40500.43300.44500.201100 | **23rd Floor** | 166d | 2027-03-07 | 2027-08-19 |  | start no earlier than 2027-03-07 | 7 day week No holidays | 2506138 |
| 2757 | 37000.40500.43300.44500.201100.798400 | 23rd flr-Gypsum Plaster | 14d | 2027-03-07 | 2027-03-20 | 2317, 2335, 2744 |  | 7 day week No holidays | 2520098 |
| 2758 | 37000.40500.43300.44500.201100.798500 | 23rd flr-Kitchen Platform | 8d | 2027-03-21 | 2027-03-28 | 2745, 2757 |  | 7 day week No holidays | 2520108 |
| 2759 | 37000.40500.43300.44500.201100.798600 | 23rd flr-Toilet dado & flooring | 14d | 2027-03-25 | 2027-04-07 | 2321, 2746 |  | 7 day week No holidays | 2520118 |
| 2760 | 37000.40500.43300.44500.201100.798700 | 23rd flr-Fire sprinkler pipe | 12d | 2027-03-21 | 2027-04-01 | 2747, 2757 |  | 7 day week No holidays | 2520128 |
| 2761 | 37000.40500.43300.44500.201100.798800 | 23rd flr-Flat flooring | 14d | 2027-04-08 | 2027-04-21 | 2748, 2759 |  | 7 day week No holidays | 2520138 |
| 2762 | 37000.40500.43300.44500.201100.798900 | 23rd flr-Main door fixing & frame fixing | 14d | 2027-07-15 | 2027-07-28 | 2749, 2761 |  | 7 day week No holidays | 2520148 |
| 2763 | 37000.40500.43300.44500.201100.799000 | 23rd flr-Window fixing | 14d | 2027-04-22 | 2027-05-05 | 2750, 2761 |  | 7 day week No holidays | 2520158 |
| 2764 | 37000.40500.43300.44500.201100.799100 | 23rd flr-Railing Fixing | 14d | 2027-04-22 | 2027-05-05 | 2751, 2761 |  | 7 day week No holidays | 2520168 |
| 2765 | 37000.40500.43300.44500.201100.799200 | 23rd flr-Internal painting - putty / primer application | 14d | 2027-04-22 | 2027-05-05 | 2752, 2761 |  | 7 day week No holidays | 2520178 |
| 2766 | 37000.40500.43300.44500.201100.799300 | 23rd flr-Flat electrical wiring | 12d | 2027-07-29 | 2027-08-09 | 2753, 2762 |  | 7 day week No holidays | 2520188 |
| 2767 | 37000.40500.43300.44500.201100.799400 | 23rd flr-Internal painting | 10d | 2027-08-10 | 2027-08-19 | 2754, 2766 |  | 7 day week No holidays | 2520198 |
| 2768 | 37000.40500.43300.44500.201100.799500 | 23rd flr-Internal shutter fixing | 12d | 2027-05-06 | 2027-05-17 | 2755, 2765 |  | 7 day week No holidays | 2520208 |
| 2769 | 37000.40500.43300.44500.201300 | **24th Floor** | 164d | 2027-03-23 | 2027-09-02 |  | start no earlier than 2027-03-23 | 7 day week No holidays | 2506148 |
| 2770 | 37000.40500.43300.44500.201300.799600 | 24th flr-Gypsum Plaster | 14d | 2027-03-23 | 2027-04-05 | 2323, 2341, 2757 |  | 7 day week No holidays | 2520218 |
| 2771 | 37000.40500.43300.44500.201300.799700 | 24th flr-Kitchen Platform | 8d | 2027-04-06 | 2027-04-13 | 2758, 2770 |  | 7 day week No holidays | 2520228 |
| 2772 | 37000.40500.43300.44500.201300.799800 | 24th flr-Toilet dado & flooring | 14d | 2027-04-08 | 2027-04-21 | 2327, 2759 |  | 7 day week No holidays | 2520238 |
| 2773 | 37000.40500.43300.44500.201300.799900 | 24th flr-Fire sprinkler pipe | 12d | 2027-04-06 | 2027-04-17 | 2760, 2770 |  | 7 day week No holidays | 2520248 |
| 2774 | 37000.40500.43300.44500.201300.800000 | 24th flr-Flat flooring | 14d | 2027-04-22 | 2027-05-05 | 2761, 2772 |  | 7 day week No holidays | 2520258 |
| 2775 | 37000.40500.43300.44500.201300.800100 | 24th flr-Main door fixing & frame fixing | 14d | 2027-07-29 | 2027-08-11 | 2762, 2774 |  | 7 day week No holidays | 2520268 |
| 2776 | 37000.40500.43300.44500.201300.800200 | 24th flr-Window fixing | 14d | 2027-05-06 | 2027-05-19 | 2763, 2774 |  | 7 day week No holidays | 2520278 |
| 2777 | 37000.40500.43300.44500.201300.800300 | 24th flr-Railing Fixing | 14d | 2027-05-06 | 2027-05-19 | 2764, 2774 |  | 7 day week No holidays | 2520288 |
| 2778 | 37000.40500.43300.44500.201300.800400 | 24th flr-Internal painting - putty / primer application | 14d | 2027-05-06 | 2027-05-19 | 2765, 2774 |  | 7 day week No holidays | 2520298 |
| 2779 | 37000.40500.43300.44500.201300.800500 | 24th flr-Flat electrical wiring | 12d | 2027-08-12 | 2027-08-23 | 2766, 2775 |  | 7 day week No holidays | 2520308 |
| 2780 | 37000.40500.43300.44500.201300.800600 | 24th flr-Internal painting | 10d | 2027-08-24 | 2027-09-02 | 2767, 2779 |  | 7 day week No holidays | 2520318 |
| 2781 | 37000.40500.43300.44500.201300.800700 | 24th flr-Internal shutter fixing | 12d | 2027-05-20 | 2027-05-31 | 2768, 2778 |  | 7 day week No holidays | 2520328 |

| ID | WBS | Task | Duration | Start | Finish | Predecessors | Constraint | Calendar | Unique_Task_ID |
| --- | --- | --- | --- | --- | --- | --- | --- | --- | --- |
| 2782 | 37000.40500.43300.44500.201400 | **25th Floor** | 162d | 2027-04-08 | 2027-09-16 |  | start no earlier than 2027-04-08 | 7 day week No holidays | 2506158 |
| 2783 | 37000.40500.43300.44500.201400.800800 | 25th flr-Gypsum Plaster | 14d | 2027-04-08 | 2027-04-21 | 2329, 2347, 2770 |  | 7 day week No holidays | 2520338 |
| 2784 | 37000.40500.43300.44500.201400.800900 | 25th flr-Kitchen Platform | 8d | 2027-04-22 | 2027-04-29 | 2771, 2783 |  | 7 day week No holidays | 2520348 |
| 2785 | 37000.40500.43300.44500.201400.801000 | 25th flr-Toilet dado & flooring | 14d | 2027-04-22 | 2027-05-05 | 2333, 2772 |  | 7 day week No holidays | 2520358 |
| 2786 | 37000.40500.43300.44500.201400.801100 | 25th flr-Fire sprinkler pipe | 12d | 2027-04-22 | 2027-05-03 | 2773, 2783 |  | 7 day week No holidays | 2520368 |
| 2787 | 37000.40500.43300.44500.201400.801200 | 25th flr-Flat flooring | 14d | 2027-05-06 | 2027-05-19 | 2774, 2785 |  | 7 day week No holidays | 2520378 |
| 2788 | 37000.40500.43300.44500.201400.801300 | 25th flr-Main door fixing & frame fixing | 14d | 2027-08-12 | 2027-08-25 | 2775, 2787 |  | 7 day week No holidays | 2520388 |
| 2789 | 37000.40500.43300.44500.201400.801400 | 25th flr-Window fixing | 14d | 2027-05-20 | 2027-06-02 | 2776, 2787 |  | 7 day week No holidays | 2520398 |
| 2790 | 37000.40500.43300.44500.201400.801500 | 25th flr-Railing Fixing | 14d | 2027-05-20 | 2027-06-02 | 2777, 2787 |  | 7 day week No holidays | 2520408 |
| 2791 | 37000.40500.43300.44500.201400.801600 | 25th flr-Internal painting - putty / primer application | 14d | 2027-05-20 | 2027-06-02 | 2778, 2787 |  | 7 day week No holidays | 2520418 |
| 2792 | 37000.40500.43300.44500.201400.801700 | 25th flr-Flat electrical wiring | 12d | 2027-08-26 | 2027-09-06 | 2779, 2788 |  | 7 day week No holidays | 2520428 |
| 2793 | 37000.40500.43300.44500.201400.801800 | 25th flr-Internal painting | 10d | 2027-09-07 | 2027-09-16 | 2780, 2792 |  | 7 day week No holidays | 2520438 |
| 2794 | 37000.40500.43300.44500.201400.801900 | 25th flr-Internal shutter fixing | 12d | 2027-06-03 | 2027-06-14 | 2781, 2791 |  | 7 day week No holidays | 2520448 |
| 2795 | 37000.40500.43300.44500.203500 | **26th Floor** | 160d | 2027-04-24 | 2027-09-30 |  | start no earlier than 2027-04-24 | 7 day week No holidays | 2506168 |
| 2796 | 37000.40500.43300.44500.203500.802000 | 26th flr-Gypsum Plaster | 14d | 2027-04-24 | 2027-05-07 | 2335, 2353, 2783 |  | 7 day week No holidays | 2520458 |
| 2797 | 37000.40500.43300.44500.203500.802100 | 26th flr-Kitchen Platform | 8d | 2027-05-08 | 2027-05-15 | 2784, 2796 |  | 7 day week No holidays | 2520468 |
| 2798 | 37000.40500.43300.44500.203500.802200 | 26th flr-Toilet dado & flooring | 14d | 2027-05-06 | 2027-05-19 | 2339, 2785 |  | 7 day week No holidays | 2520478 |
| 2799 | 37000.40500.43300.44500.203500.802300 | 26th flr-Fire sprinkler pipe | 12d | 2027-05-08 | 2027-05-19 | 2786, 2796 |  | 7 day week No holidays | 2520488 |
| 2800 | 37000.40500.43300.44500.203500.802400 | 26th flr-Flat flooring | 14d | 2027-05-20 | 2027-06-02 | 2787, 2798 |  | 7 day week No holidays | 2520498 |
| 2801 | 37000.40500.43300.44500.203500.802500 | 26th flr-Main door fixing & frame fixing | 14d | 2027-08-26 | 2027-09-08 | 2788, 2800 |  | 7 day week No holidays | 2520508 |
| 2802 | 37000.40500.43300.44500.203500.802600 | 26th flr-Window fixing | 14d | 2027-06-03 | 2027-06-16 | 2789, 2800 |  | 7 day week No holidays | 2520518 |
| 2803 | 37000.40500.43300.44500.203500.802700 | 26th flr-Railing Fixing | 14d | 2027-06-03 | 2027-06-16 | 2790, 2800 |  | 7 day week No holidays | 2520528 |
| 2804 | 37000.40500.43300.44500.203500.802800 | 26th flr-Internal painting - putty / primer application | 14d | 2027-06-03 | 2027-06-16 | 2791, 2800 |  | 7 day week No holidays | 2520538 |
| 2805 | 37000.40500.43300.44500.203500.802900 | 26th flr-Flat electrical wiring | 12d | 2027-09-09 | 2027-09-20 | 2792, 2801 |  | 7 day week No holidays | 2520548 |
| 2806 | 37000.40500.43300.44500.203500.803000 | 26th flr-Internal painting | 10d | 2027-09-21 | 2027-09-30 | 2793, 2805 |  | 7 day week No holidays | 2520558 |
| 2807 | 37000.40500.43300.44500.203500.803100 | 26th flr-Internal shutter fixing | 12d | 2027-06-17 | 2027-06-28 | 2794, 2804 |  | 7 day week No holidays | 2520568 |

| ID | WBS | Task | Duration | Start | Finish | Predecessors | Constraint | Calendar | Unique_Task_ID |
| --- | --- | --- | --- | --- | --- | --- | --- | --- | --- |
| 2808 | 37000.40500.43300.44500.204300 | **27th Floor** | 158d | 2027-05-10 | 2027-10-14 |  | start no earlier than 2027-05-10 | 7 day week No holidays | 2506178 |
| 2809 | 37000.40500.43300.44500.204300.803200 | 27th flr-Gypsum Plaster | 14d | 2027-05-10 | 2027-05-23 | 2341, 2359, 2796 |  | 7 day week No holidays | 2520578 |
| 2810 | 37000.40500.43300.44500.204300.803300 | 27th flr-Kitchen Platform | 8d | 2027-05-24 | 2027-05-31 | 2797, 2809 |  | 7 day week No holidays | 2520588 |
| 2811 | 37000.40500.43300.44500.204300.803400 | 27th flr-Toilet dado & flooring | 14d | 2027-05-20 | 2027-06-02 | 2345, 2798 |  | 7 day week No holidays | 2520598 |
| 2812 | 37000.40500.43300.44500.204300.803500 | 27th flr-Fire sprinkler pipe | 12d | 2027-05-24 | 2027-06-04 | 2799, 2809 |  | 7 day week No holidays | 2520608 |
| 2813 | 37000.40500.43300.44500.204300.803600 | 27th flr-Flat flooring | 14d | 2027-06-03 | 2027-06-16 | 2800, 2811 |  | 7 day week No holidays | 2520618 |
| 2814 | 37000.40500.43300.44500.204300.803700 | 27th flr-Main door fixing & frame fixing | 14d | 2027-09-09 | 2027-09-22 | 2801, 2813 |  | 7 day week No holidays | 2520628 |
| 2815 | 37000.40500.43300.44500.204300.803800 | 27th flr-Window fixing | 14d | 2027-06-17 | 2027-06-30 | 2802, 2813 |  | 7 day week No holidays | 2520638 |
| 2816 | 37000.40500.43300.44500.204300.803900 | 27th flr-Railing Fixing | 14d | 2027-06-17 | 2027-06-30 | 2803, 2813 |  | 7 day week No holidays | 2520648 |
| 2817 | 37000.40500.43300.44500.204300.804000 | 27th flr-Internal painting - putty / primer application | 14d | 2027-06-17 | 2027-06-30 | 2804, 2813 |  | 7 day week No holidays | 2520658 |
| 2818 | 37000.40500.43300.44500.204300.804100 | 27th flr-Flat electrical wiring | 12d | 2027-09-23 | 2027-10-04 | 2805, 2814 |  | 7 day week No holidays | 2520668 |
| 2819 | 37000.40500.43300.44500.204300.804200 | 27th flr-Internal painting | 10d | 2027-10-05 | 2027-10-14 | 2806, 2818 |  | 7 day week No holidays | 2520678 |
| 2820 | 37000.40500.43300.44500.204300.804300 | 27th flr-Internal shutter fixing | 12d | 2027-07-01 | 2027-07-12 | 2807, 2817 |  | 7 day week No holidays | 2520688 |
| 2821 | 37000.40500.43300.44500.208300 | **28th Floor** | 156d | 2027-05-26 | 2027-10-28 |  | start no earlier than 2027-05-26 | 7 day week No holidays | 2506188 |
| 2822 | 37000.40500.43300.44500.208300.804400 | 28th flr-Gypsum Plaster | 14d | 2027-05-26 | 2027-06-08 | 2347, 2365, 2809 |  | 7 day week No holidays | 2520698 |
| 2823 | 37000.40500.43300.44500.208300.804500 | 28th flr-Kitchen Platform | 8d | 2027-06-09 | 2027-06-16 | 2810, 2822 |  | 7 day week No holidays | 2520708 |
| 2824 | 37000.40500.43300.44500.208300.804600 | 28th flr-Toilet dado & flooring | 14d | 2027-06-03 | 2027-06-16 | 2351, 2811 |  | 7 day week No holidays | 2520718 |
| 2825 | 37000.40500.43300.44500.208300.804700 | 28th flr-Fire sprinkler pipe | 12d | 2027-06-09 | 2027-06-20 | 2812, 2822 |  | 7 day week No holidays | 2520728 |
| 2826 | 37000.40500.43300.44500.208300.804800 | 28th flr-Flat flooring | 14d | 2027-06-17 | 2027-06-30 | 2813, 2824 |  | 7 day week No holidays | 2520738 |
| 2827 | 37000.40500.43300.44500.208300.804900 | 28th flr-Main door fixing & frame fixing | 14d | 2027-09-23 | 2027-10-06 | 2814, 2826 |  | 7 day week No holidays | 2520748 |
| 2828 | 37000.40500.43300.44500.208300.805000 | 28th flr-Window fixing | 14d | 2027-07-01 | 2027-07-14 | 2815, 2826 |  | 7 day week No holidays | 2520758 |
| 2829 | 37000.40500.43300.44500.208300.805100 | 28th flr-Railing Fixing | 14d | 2027-07-01 | 2027-07-14 | 2816, 2826 |  | 7 day week No holidays | 2520768 |
| 2830 | 37000.40500.43300.44500.208300.805200 | 28th flr-Internal painting - putty / primer application | 14d | 2027-07-01 | 2027-07-14 | 2817, 2826 |  | 7 day week No holidays | 2520778 |
| 2831 | 37000.40500.43300.44500.208300.805300 | 28th flr-Flat electrical wiring | 12d | 2027-10-07 | 2027-10-18 | 2818, 2827 |  | 7 day week No holidays | 2520788 |
| 2832 | 37000.40500.43300.44500.208300.805400 | 28th flr-Internal painting | 10d | 2027-10-19 | 2027-10-28 | 2819, 2831 |  | 7 day week No holidays | 2520798 |
| 2833 | 37000.40500.43300.44500.208300.805500 | 28th flr-Internal shutter fixing | 12d | 2027-07-15 | 2027-07-26 | 2820, 2830 |  | 7 day week No holidays | 2520808 |

| ID | WBS | Task | Duration | Start | Finish | Predecessors | Constraint | Calendar | Unique_Task_ID |
| --- | --- | --- | --- | --- | --- | --- | --- | --- | --- |
| 2834 | 37000.40500.43300.44500.209400 | **29th Floor** | 154d | 2027-06-11 | 2027-11-11 |  | start no earlier than 2027-06-11 | 7 day week No holidays | 2506198 |
| 2835 | 37000.40500.43300.44500.209400.805600 | 29th flr-Gypsum Plaster | 14d | 2027-06-11 | 2027-06-24 | 2353, 2371, 2822 |  | 7 day week No holidays | 2520818 |
| 2836 | 37000.40500.43300.44500.209400.805700 | 29th flr-Kitchen Platform | 8d | 2027-06-25 | 2027-07-02 | 2823, 2835 |  | 7 day week No holidays | 2520828 |
| 2837 | 37000.40500.43300.44500.209400.805800 | 29th flr-Toilet dado & flooring | 14d | 2027-06-17 | 2027-06-30 | 2357, 2824 |  | 7 day week No holidays | 2520838 |
| 2838 | 37000.40500.43300.44500.209400.805900 | 29th flr-Fire sprinkler pipe | 12d | 2027-06-25 | 2027-07-06 | 2825, 2835 |  | 7 day week No holidays | 2520848 |
| 2839 | 37000.40500.43300.44500.209400.806000 | 29th flr-Flat flooring | 14d | 2027-07-01 | 2027-07-14 | 2826, 2837 |  | 7 day week No holidays | 2520858 |
| 2840 | 37000.40500.43300.44500.209400.806100 | 29th flr-Main door fixing & frame fixing | 14d | 2027-10-07 | 2027-10-20 | 2827, 2839 |  | 7 day week No holidays | 2520868 |
| 2841 | 37000.40500.43300.44500.209400.806200 | 29th flr-Window fixing | 14d | 2027-07-15 | 2027-07-28 | 2828, 2839 |  | 7 day week No holidays | 2520878 |
| 2842 | 37000.40500.43300.44500.209400.806300 | 29th flr-Railing Fixing | 14d | 2027-07-15 | 2027-07-28 | 2829, 2839 |  | 7 day week No holidays | 2520888 |
| 2843 | 37000.40500.43300.44500.209400.806400 | 29th flr-Internal painting - putty / primer application | 14d | 2027-07-15 | 2027-07-28 | 2830, 2839 |  | 7 day week No holidays | 2520898 |
| 2844 | 37000.40500.43300.44500.209400.806500 | 29th flr-Flat electrical wiring | 12d | 2027-10-21 | 2027-11-01 | 2831, 2840 |  | 7 day week No holidays | 2520908 |
| 2845 | 37000.40500.43300.44500.209400.806600 | 29th flr-Internal painting | 10d | 2027-11-02 | 2027-11-11 | 2832, 2844 |  | 7 day week No holidays | 2520918 |
| 2846 | 37000.40500.43300.44500.209400.806700 | 29th flr-Internal shutter fixing | 12d | 2027-07-29 | 2027-08-09 | 2833, 2843 |  | 7 day week No holidays | 2520928 |
| 2847 | 37000.40500.43300.44500.209900 | **30th Floor** | 343d | 2027-07-01 | 2028-06-07 |  | start no earlier than 2027-07-01 | 7 day week No holidays | 2506208 |
| 2848 | 37000.40500.43300.44500.209900.806800 | 30th flr-Gypsum Plaster | 14d | 2028-05-13 | 2028-05-26 | 2359, 2377, 2835 |  | 7 day week No holidays | 2520938 |
| 2849 | 37000.40500.43300.44500.209900.806900 | 30th flr-Kitchen Platform | 8d | 2028-05-27 | 2028-06-03 | 2836, 2848 |  | 7 day week No holidays | 2520948 |
| 2850 | 37000.40500.43300.44500.209900.807000 | 30th flr-Toilet dado & flooring | 14d | 2027-07-01 | 2027-07-14 | 2363, 2837 |  | 7 day week No holidays | 2520958 |
| 2851 | 37000.40500.43300.44500.209900.807100 | 30th flr-Fire sprinkler pipe | 12d | 2028-05-27 | 2028-06-07 | 2838, 2848 |  | 7 day week No holidays | 2520968 |
| 2852 | 37000.40500.43300.44500.209900.807200 | 30th flr-Flat flooring | 14d | 2027-07-15 | 2027-07-28 | 2839, 2850 |  | 7 day week No holidays | 2520978 |
| 2853 | 37000.40500.43300.44500.209900.807300 | 30th flr-Main door fixing & frame fixing | 14d | 2027-10-21 | 2027-11-03 | 2840, 2852 |  | 7 day week No holidays | 2520988 |
| 2854 | 37000.40500.43300.44500.209900.807400 | 30th flr-Window fixing | 14d | 2027-07-29 | 2027-08-11 | 2841, 2852 |  | 7 day week No holidays | 2520998 |
| 2855 | 37000.40500.43300.44500.209900.807500 | 30th flr-Railing Fixing | 14d | 2027-07-29 | 2027-08-11 | 2842, 2852 |  | 7 day week No holidays | 2521008 |
| 2856 | 37000.40500.43300.44500.209900.807600 | 30th flr-Internal painting - putty / primer application | 14d | 2027-07-29 | 2027-08-11 | 2843, 2852 |  | 7 day week No holidays | 2521018 |
| 2857 | 37000.40500.43300.44500.209900.807700 | 30th flr-Flat electrical wiring | 12d | 2027-11-04 | 2027-11-15 | 2844, 2853 |  | 7 day week No holidays | 2521028 |
| 2858 | 37000.40500.43300.44500.209900.807800 | 30th flr-Internal painting | 10d | 2027-11-16 | 2027-11-25 | 2845, 2857 |  | 7 day week No holidays | 2521038 |
| 2859 | 37000.40500.43300.44500.209900.807900 | 30th flr-Internal shutter fixing | 12d | 2027-08-12 | 2027-08-23 | 2846, 2856 |  | 7 day week No holidays | 2521048 |

| ID | WBS | Task | Duration | Start | Finish | Predecessors | Constraint | Calendar | Unique_Task_ID |
| --- | --- | --- | --- | --- | --- | --- | --- | --- | --- |
| 2860 | 37000.40500.43300.44500.209700 | **31st Floor** | 361d | 2027-07-15 | 2028-07-09 |  | start no earlier than 2027-07-15 | 7 day week No holidays | 2506218 |
| 2861 | 37000.40500.43300.44500.209700.808000 | 31st flr-Gypsum Plaster | 14d | 2028-06-14 | 2028-06-27 | 2365, 2383, 2848 |  | 7 day week No holidays | 2521058 |
| 2862 | 37000.40500.43300.44500.209700.808100 | 31st flr-Kitchen Platform | 8d | 2028-06-28 | 2028-07-05 | 2849, 2861 |  | 7 day week No holidays | 2521068 |
| 2863 | 37000.40500.43300.44500.209700.808200 | 31st flr-Toilet dado & flooring | 14d | 2027-07-15 | 2027-07-28 | 2369, 2850 |  | 7 day week No holidays | 2521078 |
| 2864 | 37000.40500.43300.44500.209700.808300 | 31st flr-Fire sprinkler pipe | 12d | 2028-06-28 | 2028-07-09 | 2851, 2861 |  | 7 day week No holidays | 2521088 |
| 2865 | 37000.40500.43300.44500.209700.808400 | 31st flr-Flat flooring | 14d | 2027-07-29 | 2027-08-11 | 2852, 2863 |  | 7 day week No holidays | 2521098 |
| 2866 | 37000.40500.43300.44500.209700.808500 | 31st flr-Main door fixing & frame fixing | 14d | 2027-11-04 | 2027-11-17 | 2853, 2865 |  | 7 day week No holidays | 2521108 |
| 2867 | 37000.40500.43300.44500.209700.808600 | 31st flr-Window fixing | 14d | 2027-08-12 | 2027-08-25 | 2854, 2865 |  | 7 day week No holidays | 2521118 |
| 2868 | 37000.40500.43300.44500.209700.808700 | 31st flr-Railing Fixing | 14d | 2027-08-12 | 2027-08-25 | 2855, 2865 |  | 7 day week No holidays | 2521128 |
| 2869 | 37000.40500.43300.44500.209700.808800 | 31st flr-Internal painting - putty / primer application | 14d | 2027-08-12 | 2027-08-25 | 2856, 2865 |  | 7 day week No holidays | 2521138 |
| 2870 | 37000.40500.43300.44500.209700.808900 | 31st flr-Flat electrical wiring | 12d | 2027-11-18 | 2027-11-29 | 2857, 2866 |  | 7 day week No holidays | 2521148 |
| 2871 | 37000.40500.43300.44500.209700.809000 | 31st flr-Internal painting | 10d | 2027-11-30 | 2027-12-09 | 2858, 2870 |  | 7 day week No holidays | 2521158 |
| 2872 | 37000.40500.43300.44500.209700.809100 | 31st flr-Internal shutter fixing | 12d | 2027-08-26 | 2027-09-06 | 2859, 2869 |  | 7 day week No holidays | 2521168 |
| 2873 | 37000.40500.43300.44500.209600 | **32nd Floor** | 363d | 2027-07-29 | 2028-07-25 |  | start no earlier than 2027-07-29 | 7 day week No holidays | 2506228 |
| 2874 | 37000.40500.43300.44500.209600.809200 | 32nd flr-Gypsum Plaster | 14d | 2028-06-30 | 2028-07-13 | 2371, 2389, 2861 |  | 7 day week No holidays | 2521178 |
| 2875 | 37000.40500.43300.44500.209600.809300 | 32nd flr-Kitchen Platform | 8d | 2028-07-14 | 2028-07-21 | 2862, 2874 |  | 7 day week No holidays | 2521188 |
| 2876 | 37000.40500.43300.44500.209600.809400 | 32nd flr-Toilet dado & flooring | 14d | 2027-07-29 | 2027-08-11 | 2375, 2863 |  | 7 day week No holidays | 2521198 |
| 2877 | 37000.40500.43300.44500.209600.809500 | 32nd flr-Fire sprinkler pipe | 12d | 2028-07-14 | 2028-07-25 | 2864, 2874 |  | 7 day week No holidays | 2521208 |
| 2878 | 37000.40500.43300.44500.209600.809600 | 32nd flr-Flat flooring | 14d | 2027-08-12 | 2027-08-25 | 2865, 2876 |  | 7 day week No holidays | 2521218 |
| 2879 | 37000.40500.43300.44500.209600.809700 | 32nd flr-Main door fixing & frame fixing | 14d | 2027-11-18 | 2027-12-01 | 2866, 2878 |  | 7 day week No holidays | 2521228 |
| 2880 | 37000.40500.43300.44500.209600.809800 | 32nd flr-Window fixing | 14d | 2027-08-26 | 2027-09-08 | 2867, 2878 |  | 7 day week No holidays | 2521238 |
| 2881 | 37000.40500.43300.44500.209600.809900 | 32nd flr-Railing Fixing | 14d | 2027-08-26 | 2027-09-08 | 2868, 2878 |  | 7 day week No holidays | 2521248 |
| 2882 | 37000.40500.43300.44500.209600.810000 | 32nd flr-Internal painting - putty / primer application | 14d | 2027-08-26 | 2027-09-08 | 2869, 2878 |  | 7 day week No holidays | 2521258 |
| 2883 | 37000.40500.43300.44500.209600.810100 | 32nd flr-Flat electrical wiring | 12d | 2027-12-02 | 2027-12-13 | 2870, 2879 |  | 7 day week No holidays | 2521268 |
| 2884 | 37000.40500.43300.44500.209600.810200 | 32nd flr-Internal painting | 10d | 2027-12-14 | 2027-12-23 | 2871, 2883 |  | 7 day week No holidays | 2521278 |
| 2885 | 37000.40500.43300.44500.209600.810300 | 32nd flr-Internal shutter fixing | 12d | 2027-09-09 | 2027-09-20 | 2872, 2882 |  | 7 day week No holidays | 2521288 |

| ID | WBS | Task | Duration | Start | Finish | Predecessors | Constraint | Calendar | Unique_Task_ID |
| --- | --- | --- | --- | --- | --- | --- | --- | --- | --- |
| 2886 | 37000.40500.43300.44500.209300 | **33rd Floor** | 64d | 2028-06-12 | 2028-08-14 |  | start no earlier than 2028-06-12 | 7 day week No holidays | 2506238 |
| 2887 | 37000.40500.43300.44500.209300.810400 | 33rd flr-Gypsum Plaster | 14d | 2028-07-16 | 2028-07-29 | 2377, 2395, 2874 |  | 7 day week No holidays | 2521298 |
| 2888 | 37000.40500.43300.44500.209300.810500 | 33rd flr-Kitchen Platform | 8d | 2028-07-30 | 2028-08-06 | 2875, 2887 |  | 7 day week No holidays | 2521308 |
| 2889 | 37000.40500.43300.44500.209300.810600 | 33rd flr-Toilet dado & flooring | 14d | 2028-06-12 | 2028-06-25 | 2381, 2876 |  | 7 day week No holidays | 2521318 |
| 2890 | 37000.40500.43300.44500.209300.810700 | 33rd flr-Fire sprinkler pipe | 12d | 2028-07-30 | 2028-08-10 | 2877, 2887 |  | 7 day week No holidays | 2521328 |
| 2891 | 37000.40500.43300.44500.209300.810800 | 33rd flr-Flat flooring | 14d | 2028-06-26 | 2028-07-09 | 2878, 2889 |  | 7 day week No holidays | 7303644 |
| 2892 | 37000.40500.43300.44500.209300.810900 | 33rd flr-Main door fixing & frame fixing | 14d | 2028-07-10 | 2028-07-23 | 2879, 2891 |  | 7 day week No holidays | 2521348 |
| 2893 | 37000.40500.43300.44500.209300.811000 | 33rd flr-Window fixing | 14d | 2028-07-10 | 2028-07-23 | 2880, 2891 |  | 7 day week No holidays | 2521358 |
| 2894 | 37000.40500.43300.44500.209300.811100 | 33rd flr-Railing Fixing | 14d | 2028-07-10 | 2028-07-23 | 2881, 2891 |  | 7 day week No holidays | 2521368 |
| 2895 | 37000.40500.43300.44500.209300.811200 | 33rd flr-Internal painting - putty / primer application | 14d | 2028-07-10 | 2028-07-23 | 2882, 2891 |  | 7 day week No holidays | 2521378 |
| 2896 | 37000.40500.43300.44500.209300.811300 | 33rd flr-Flat electrical wiring | 12d | 2028-07-24 | 2028-08-04 | 2883, 2892 |  | 7 day week No holidays | 2521388 |
| 2897 | 37000.40500.43300.44500.209300.811400 | 33rd flr-Internal painting | 10d | 2028-08-05 | 2028-08-14 | 2884, 2896 |  | 7 day week No holidays | 2521398 |
| 2898 | 37000.40500.43300.44500.209300.811500 | 33rd flr-Internal shutter fixing | 12d | 2028-07-24 | 2028-08-04 | 2885, 2895 |  | 7 day week No holidays | 2521408 |
| 2899 | 37000.40500.43300.44500.209200 | **34th Floor** | 64d | 2028-07-14 | 2028-09-15 |  | start no earlier than 2028-07-14 | 7 day week No holidays | 2506248 |
| 2900 | 37000.40500.43300.44500.209200.811600 | 34th flr-Gypsum Plaster | 14d | 2028-08-01 | 2028-08-14 | 2383, 2401, 2887 |  | 7 day week No holidays | 2521418 |
| 2901 | 37000.40500.43300.44500.209200.811700 | 34th flr-Kitchen Platform | 8d | 2028-08-15 | 2028-08-22 | 2888, 2900 |  | 7 day week No holidays | 2521428 |
| 2902 | 37000.40500.43300.44500.209200.811800 | 34th flr-Toilet dado & flooring | 14d | 2028-07-14 | 2028-07-27 | 2387, 2889 |  | 7 day week No holidays | 2521438 |
| 2903 | 37000.40500.43300.44500.209200.811900 | 34th flr-Fire sprinkler pipe | 12d | 2028-08-15 | 2028-08-26 | 2890, 2900 |  | 7 day week No holidays | 2521448 |
| 2904 | 37000.40500.43300.44500.209200.812000 | 34th flr-Flat flooring | 14d | 2028-07-28 | 2028-08-10 | 2891, 2902 |  | 7 day week No holidays | 2521458 |
| 2905 | 37000.40500.43300.44500.209200.812100 | 34th flr-Main door fixing & frame fixing | 14d | 2028-08-11 | 2028-08-24 | 2892, 2904 |  | 7 day week No holidays | 2521468 |
| 2906 | 37000.40500.43300.44500.209200.812200 | 34th flr-Window fixing | 14d | 2028-08-11 | 2028-08-24 | 2893, 2904 |  | 7 day week No holidays | 2521478 |
| 2907 | 37000.40500.43300.44500.209200.812300 | 34th flr-Railing Fixing | 14d | 2028-08-11 | 2028-08-24 | 2894, 2904 |  | 7 day week No holidays | 2521488 |
| 2908 | 37000.40500.43300.44500.209200.812400 | 34th flr-Internal painting - putty / primer application | 14d | 2028-08-11 | 2028-08-24 | 2895, 2904 |  | 7 day week No holidays | 2521498 |
| 2909 | 37000.40500.43300.44500.209200.812500 | 34th flr-Flat electrical wiring | 12d | 2028-08-25 | 2028-09-05 | 2896, 2905 |  | 7 day week No holidays | 2521508 |
| 2910 | 37000.40500.43300.44500.209200.812600 | 34th flr-Internal painting | 10d | 2028-09-06 | 2028-09-15 | 2897, 2909 |  | 7 day week No holidays | 2521518 |
| 2911 | 37000.40500.43300.44500.209200.812700 | 34th flr-Internal shutter fixing | 12d | 2028-08-25 | 2028-09-05 | 2898, 2908 |  | 7 day week No holidays | 2521528 |

| ID | WBS | Task | Duration | Start | Finish | Predecessors | Constraint | Calendar | Unique_Task_ID |
| --- | --- | --- | --- | --- | --- | --- | --- | --- | --- |
| 2912 | 37000.40500.43300.44500.208700 | **35th Floor** | 64d | 2028-07-30 | 2028-10-01 |  | start no earlier than 2028-07-30 | 7 day week No holidays | 2506258 |
| 2913 | 37000.40500.43300.44500.208700.812800 | 35th flr-Gypsum Plaster | 14d | 2028-08-17 | 2028-08-30 | 2389, 2407, 2900 |  | 7 day week No holidays | 2521538 |
| 2914 | 37000.40500.43300.44500.208700.812900 | 35th flr-Kitchen Platform | 8d | 2028-08-31 | 2028-09-07 | 2901, 2913 |  | 7 day week No holidays | 2521548 |
| 2915 | 37000.40500.43300.44500.208700.813000 | 35th flr-Toilet dado & flooring | 14d | 2028-07-30 | 2028-08-12 | 2393, 2902 |  | 7 day week No holidays | 2521558 |
| 2916 | 37000.40500.43300.44500.208700.813100 | 35th flr-Fire sprinkler pipe | 12d | 2028-08-31 | 2028-09-11 | 2903, 2913 |  | 7 day week No holidays | 2521568 |
| 2917 | 37000.40500.43300.44500.208700.813200 | 35th flr-Flat flooring | 14d | 2028-08-13 | 2028-08-26 | 2904, 2915 |  | 7 day week No holidays | 2521578 |
| 2918 | 37000.40500.43300.44500.208700.813300 | 35th flr-Main door fixing & frame fixing | 14d | 2028-08-27 | 2028-09-09 | 2905, 2917 |  | 7 day week No holidays | 2521588 |
| 2919 | 37000.40500.43300.44500.208700.813400 | 35th flr-Window fixing | 14d | 2028-08-27 | 2028-09-09 | 2906, 2917 |  | 7 day week No holidays | 2521598 |
| 2920 | 37000.40500.43300.44500.208700.813500 | 35th flr-Railing Fixing | 14d | 2028-08-27 | 2028-09-09 | 2907, 2917 |  | 7 day week No holidays | 2521608 |
| 2921 | 37000.40500.43300.44500.208700.813600 | 35th flr-Internal painting - putty / primer application | 14d | 2028-08-27 | 2028-09-09 | 2908, 2917 |  | 7 day week No holidays | 2521618 |
| 2922 | 37000.40500.43300.44500.208700.813700 | 35th flr-Flat electrical wiring | 12d | 2028-09-10 | 2028-09-21 | 2909, 2918 |  | 7 day week No holidays | 2521628 |
| 2923 | 37000.40500.43300.44500.208700.813800 | 35th flr-Internal painting | 10d | 2028-09-22 | 2028-10-01 | 2910, 2922 |  | 7 day week No holidays | 2521638 |
| 2924 | 37000.40500.43300.44500.208700.813900 | 35th flr-Internal shutter fixing | 12d | 2028-09-10 | 2028-09-21 | 2911, 2921 |  | 7 day week No holidays | 2521648 |
| 2925 | 37000.40500.43300.44500.208600 | **36th Floor** | 64d | 2028-08-15 | 2028-10-17 |  | start no earlier than 2028-08-15 | 7 day week No holidays | 2506268 |
| 2926 | 37000.40500.43300.44500.208600.814000 | 36th flr-Gypsum Plaster | 14d | 2028-09-02 | 2028-09-15 | 2395, 2413, 2913 |  | 7 day week No holidays | 2521658 |
| 2927 | 37000.40500.43300.44500.208600.814100 | 36th flr-Kitchen Platform | 8d | 2028-09-16 | 2028-09-23 | 2914, 2926 |  | 7 day week No holidays | 2521668 |
| 2928 | 37000.40500.43300.44500.208600.814200 | 36th flr-Toilet dado & flooring | 14d | 2028-08-15 | 2028-08-28 | 2399, 2915 |  | 7 day week No holidays | 2521678 |
| 2929 | 37000.40500.43300.44500.208600.814300 | 36th flr-Fire sprinkler pipe | 12d | 2028-09-16 | 2028-09-27 | 2916, 2926 |  | 7 day week No holidays | 2521688 |
| 2930 | 37000.40500.43300.44500.208600.814400 | 36th flr-Flat flooring | 14d | 2028-08-29 | 2028-09-11 | 2917, 2928 |  | 7 day week No holidays | 2521698 |
| 2931 | 37000.40500.43300.44500.208600.814500 | 36th flr-Main door fixing & frame fixing | 14d | 2028-09-12 | 2028-09-25 | 2918, 2930 |  | 7 day week No holidays | 2521708 |
| 2932 | 37000.40500.43300.44500.208600.814600 | 36th flr-Window fixing | 14d | 2028-09-12 | 2028-09-25 | 2919, 2930 |  | 7 day week No holidays | 2521718 |
| 2933 | 37000.40500.43300.44500.208600.814700 | 36th flr-Railing Fixing | 14d | 2028-09-12 | 2028-09-25 | 2920, 2930 |  | 7 day week No holidays | 2521728 |
| 2934 | 37000.40500.43300.44500.208600.814800 | 36th flr-Internal painting - putty / primer application | 14d | 2028-09-12 | 2028-09-25 | 2921, 2930 |  | 7 day week No holidays | 2521738 |
| 2935 | 37000.40500.43300.44500.208600.814900 | 36th flr-Flat electrical wiring | 12d | 2028-09-26 | 2028-10-07 | 2922, 2931 |  | 7 day week No holidays | 2521748 |
| 2936 | 37000.40500.43300.44500.208600.815000 | 36th flr-Internal painting | 10d | 2028-10-08 | 2028-10-17 | 2923, 2935 |  | 7 day week No holidays | 2521758 |
| 2937 | 37000.40500.43300.44500.208600.815100 | 36th flr-Internal shutter fixing | 12d | 2028-09-26 | 2028-10-07 | 2924, 2934 |  | 7 day week No holidays | 2521768 |

| ID | WBS | Task | Duration | Start | Finish | Predecessors | Constraint | Calendar | Unique_Task_ID |
| --- | --- | --- | --- | --- | --- | --- | --- | --- | --- |
| 2938 | 37000.40500.43300.44500.208200 | **37th Floor** | 64d | 2028-08-31 | 2028-11-02 |  | start no earlier than 2028-08-31 | 7 day week No holidays | 2506278 |
| 2939 | 37000.40500.43300.44500.208200.815200 | 37th flr-Gypsum Plaster | 14d | 2028-09-18 | 2028-10-01 | 2401, 2419, 2926 |  | 7 day week No holidays | 2521778 |
| 2940 | 37000.40500.43300.44500.208200.815300 | 37th flr-Kitchen Platform | 8d | 2028-10-02 | 2028-10-09 | 2927, 2939 |  | 7 day week No holidays | 2521788 |
| 2941 | 37000.40500.43300.44500.208200.815400 | 37th flr-Toilet dado & flooring | 14d | 2028-08-31 | 2028-09-13 | 2405, 2928 |  | 7 day week No holidays | 2521798 |
| 2942 | 37000.40500.43300.44500.208200.815500 | 37th flr-Fire sprinkler pipe | 12d | 2028-10-02 | 2028-10-13 | 2929, 2939 |  | 7 day week No holidays | 2521808 |
| 2943 | 37000.40500.43300.44500.208200.815600 | 37th flr-Flat flooring | 14d | 2028-09-14 | 2028-09-27 | 2930, 2941 |  | 7 day week No holidays | 2521818 |
| 2944 | 37000.40500.43300.44500.208200.815700 | 37th flr-Main door fixing & frame fixing | 14d | 2028-09-28 | 2028-10-11 | 2931, 2943 |  | 7 day week No holidays | 2521828 |
| 2945 | 37000.40500.43300.44500.208200.815800 | 37th flr-Window fixing | 14d | 2028-09-28 | 2028-10-11 | 2932, 2943 |  | 7 day week No holidays | 2521838 |
| 2946 | 37000.40500.43300.44500.208200.815900 | 37th flr-Railing Fixing | 14d | 2028-09-28 | 2028-10-11 | 2933, 2943 |  | 7 day week No holidays | 2521848 |
| 2947 | 37000.40500.43300.44500.208200.816000 | 37th flr-Internal painting - putty / primer application | 14d | 2028-09-28 | 2028-10-11 | 2934, 2943 |  | 7 day week No holidays | 2521858 |
| 2948 | 37000.40500.43300.44500.208200.816100 | 37th flr-Flat electrical wiring | 12d | 2028-10-12 | 2028-10-23 | 2935, 2944 |  | 7 day week No holidays | 2521868 |
| 2949 | 37000.40500.43300.44500.208200.816200 | 37th flr-Internal painting | 10d | 2028-10-24 | 2028-11-02 | 2936, 2948 |  | 7 day week No holidays | 2521878 |
| 2950 | 37000.40500.43300.44500.208200.816300 | 37th flr-Internal shutter fixing | 12d | 2028-10-12 | 2028-10-23 | 2937, 2947 |  | 7 day week No holidays | 2521888 |
| 2951 | 37000.40500.43300.44500.206900 | **38th Floor** | 64d | 2028-09-16 | 2028-11-18 |  | start no earlier than 2028-09-16 | 7 day week No holidays | 2506288 |
| 2952 | 37000.40500.43300.44500.206900.816400 | 38th flr-Gypsum Plaster | 14d | 2028-10-04 | 2028-10-17 | 2407, 2425, 2939 |  | 7 day week No holidays | 2521898 |
| 2953 | 37000.40500.43300.44500.206900.816500 | 38th flr-Kitchen Platform | 8d | 2028-10-18 | 2028-10-25 | 2940, 2952 |  | 7 day week No holidays | 2521908 |
| 2954 | 37000.40500.43300.44500.206900.816600 | 38th flr-Toilet dado & flooring | 14d | 2028-09-16 | 2028-09-29 | 2411, 2941 |  | 7 day week No holidays | 2521918 |
| 2955 | 37000.40500.43300.44500.206900.816700 | 38th flr-Fire sprinkler pipe | 12d | 2028-10-18 | 2028-10-29 | 2942, 2952 |  | 7 day week No holidays | 2521928 |
| 2956 | 37000.40500.43300.44500.206900.816800 | 38th flr-Flat flooring | 14d | 2028-09-30 | 2028-10-13 | 2943, 2954 |  | 7 day week No holidays | 2521938 |
| 2957 | 37000.40500.43300.44500.206900.816900 | 38th flr-Main door fixing & frame fixing | 14d | 2028-10-14 | 2028-10-27 | 2944, 2956 |  | 7 day week No holidays | 2521948 |
| 2958 | 37000.40500.43300.44500.206900.817000 | 38th flr-Window fixing | 14d | 2028-10-14 | 2028-10-27 | 2945, 2956 |  | 7 day week No holidays | 2521958 |
| 2959 | 37000.40500.43300.44500.206900.817100 | 38th flr-Railing Fixing | 14d | 2028-10-14 | 2028-10-27 | 2946, 2956 |  | 7 day week No holidays | 2521968 |
| 2960 | 37000.40500.43300.44500.206900.817200 | 38th flr-Internal painting - putty / primer application | 14d | 2028-10-14 | 2028-10-27 | 2947, 2956 |  | 7 day week No holidays | 2521978 |
| 2961 | 37000.40500.43300.44500.206900.817300 | 38th flr-Flat electrical wiring | 12d | 2028-10-28 | 2028-11-08 | 2948, 2957 |  | 7 day week No holidays | 2521988 |
| 2962 | 37000.40500.43300.44500.206900.817400 | 38th flr-Internal painting | 10d | 2028-11-09 | 2028-11-18 | 2949, 2961 |  | 7 day week No holidays | 2521998 |
| 2963 | 37000.40500.43300.44500.206900.817500 | 38th flr-Internal shutter fixing | 12d | 2028-10-28 | 2028-11-08 | 2950, 2960 |  | 7 day week No holidays | 2522008 |

| ID | WBS | Task | Duration | Start | Finish | Predecessors | Constraint | Calendar | Unique_Task_ID |
| --- | --- | --- | --- | --- | --- | --- | --- | --- | --- |
| 2964 | 37000.40500.43300.44500.206800 | **39th Floor** | 64d | 2028-10-02 | 2028-12-04 |  | start no earlier than 2028-10-02 | 7 day week No holidays | 2506298 |
| 2965 | 37000.40500.43300.44500.206800.817600 | 39th flr-Gypsum Plaster | 14d | 2028-10-20 | 2028-11-02 | 2413, 2431, 2952 |  | 7 day week No holidays | 2522018 |
| 2966 | 37000.40500.43300.44500.206800.817700 | 39th flr-Kitchen Platform | 8d | 2028-11-03 | 2028-11-10 | 2953, 2965 |  | 7 day week No holidays | 2522028 |
| 2967 | 37000.40500.43300.44500.206800.817800 | 39th flr-Toilet dado & flooring | 14d | 2028-10-02 | 2028-10-15 | 2417, 2954 |  | 7 day week No holidays | 2522038 |
| 2968 | 37000.40500.43300.44500.206800.817900 | 39th flr-Fire sprinkler pipe | 12d | 2028-11-03 | 2028-11-14 | 2955, 2965 |  | 7 day week No holidays | 2522048 |
| 2969 | 37000.40500.43300.44500.206800.818000 | 39th flr-Flat flooring | 14d | 2028-10-16 | 2028-10-29 | 2956, 2967 |  | 7 day week No holidays | 2522058 |
| 2970 | 37000.40500.43300.44500.206800.818100 | 39th flr-Main door fixing & frame fixing | 14d | 2028-10-30 | 2028-11-12 | 2957, 2969 |  | 7 day week No holidays | 2522068 |
| 2971 | 37000.40500.43300.44500.206800.818200 | 39th flr-Window fixing | 14d | 2028-10-30 | 2028-11-12 | 2958, 2969 |  | 7 day week No holidays | 2522078 |
| 2972 | 37000.40500.43300.44500.206800.818300 | 39th flr-Railing Fixing | 14d | 2028-10-30 | 2028-11-12 | 2959, 2969 |  | 7 day week No holidays | 2522088 |
| 2973 | 37000.40500.43300.44500.206800.818400 | 39th flr-Internal painting - putty / primer application | 14d | 2028-10-30 | 2028-11-12 | 2960, 2969 |  | 7 day week No holidays | 2522098 |
| 2974 | 37000.40500.43300.44500.206800.818500 | 39th flr-Flat electrical wiring | 12d | 2028-11-13 | 2028-11-24 | 2961, 2970 |  | 7 day week No holidays | 2522108 |
| 2975 | 37000.40500.43300.44500.206800.818600 | 39th flr-Internal painting | 10d | 2028-11-25 | 2028-12-04 | 2962, 2974 |  | 7 day week No holidays | 2522118 |
| 2976 | 37000.40500.43300.44500.206800.818700 | 39th flr-Internal shutter fixing | 12d | 2028-11-13 | 2028-11-24 | 2963, 2973 |  | 7 day week No holidays | 2522128 |
| 2977 | 37000.40500.43300.44500.203100 | **40th Floor** | 64d | 2028-10-18 | 2028-12-20 |  | start no earlier than 2028-10-18 | 7 day week No holidays | 2506308 |
| 2978 | 37000.40500.43300.44500.203100.818800 | 40th flr-Gypsum Plaster | 14d | 2028-11-05 | 2028-11-18 | 2419, 2437, 2965 |  | 7 day week No holidays | 2522138 |
| 2979 | 37000.40500.43300.44500.203100.818900 | 40th flr-Kitchen Platform | 8d | 2028-11-19 | 2028-11-26 | 2966, 2978 |  | 7 day week No holidays | 2522148 |
| 2980 | 37000.40500.43300.44500.203100.819000 | 40th flr-Toilet dado & flooring | 14d | 2028-10-18 | 2028-10-31 | 2423, 2967 |  | 7 day week No holidays | 2522158 |
| 2981 | 37000.40500.43300.44500.203100.819100 | 40th flr-Fire sprinkler pipe | 12d | 2028-11-19 | 2028-11-30 | 2968, 2978 |  | 7 day week No holidays | 2522168 |
| 2982 | 37000.40500.43300.44500.203100.819200 | 40th flr-Flat flooring | 14d | 2028-11-01 | 2028-11-14 | 2969, 2980 |  | 7 day week No holidays | 2522178 |
| 2983 | 37000.40500.43300.44500.203100.819300 | 40th flr-Main door fixing & frame fixing | 14d | 2028-11-15 | 2028-11-28 | 2970, 2982 |  | 7 day week No holidays | 2522188 |
| 2984 | 37000.40500.43300.44500.203100.819400 | 40th flr-Window fixing | 14d | 2028-11-15 | 2028-11-28 | 2971, 2982 |  | 7 day week No holidays | 2522198 |
| 2985 | 37000.40500.43300.44500.203100.819500 | 40th flr-Railing Fixing | 14d | 2028-11-15 | 2028-11-28 | 2972, 2982 |  | 7 day week No holidays | 2522208 |
| 2986 | 37000.40500.43300.44500.203100.819600 | 40th flr-Internal painting - putty / primer application | 14d | 2028-11-15 | 2028-11-28 | 2973, 2982 |  | 7 day week No holidays | 2522218 |
| 2987 | 37000.40500.43300.44500.203100.819700 | 40th flr-Flat electrical wiring | 12d | 2028-11-29 | 2028-12-10 | 2974, 2983 |  | 7 day week No holidays | 2522228 |
| 2988 | 37000.40500.43300.44500.203100.819800 | 40th flr-Internal painting | 10d | 2028-12-11 | 2028-12-20 | 2975, 2987 |  | 7 day week No holidays | 2522238 |
| 2989 | 37000.40500.43300.44500.203100.819900 | 40th flr-Internal shutter fixing | 12d | 2028-11-29 | 2028-12-10 | 2976, 2986 |  | 7 day week No holidays | 2522248 |

| ID | WBS | Task | Duration | Start | Finish | Predecessors | Constraint | Calendar | Unique_Task_ID |
| --- | --- | --- | --- | --- | --- | --- | --- | --- | --- |
| 2990 | 37000.40500.43300.44500.202400 | **41th Floor** | 64d | 2028-11-03 | 2029-01-05 |  | start no earlier than 2028-11-03 | 7 day week No holidays | 2506318 |
| 2991 | 37000.40500.43300.44500.202400.820000 | 41st flr-Gypsum Plaster | 14d | 2028-11-21 | 2028-12-04 | 2425, 2443, 2978 |  | 7 day week No holidays | 2522258 |
| 2992 | 37000.40500.43300.44500.202400.820100 | 41st flr-Kitchen Platform | 8d | 2028-12-05 | 2028-12-12 | 2979, 2991 |  | 7 day week No holidays | 2522268 |
| 2993 | 37000.40500.43300.44500.202400.820200 | 41st flr-Toilet dado & flooring | 14d | 2028-11-03 | 2028-11-16 | 2429, 2980 |  | 7 day week No holidays | 2522278 |
| 2994 | 37000.40500.43300.44500.202400.820300 | 41st flr-Fire sprinkler pipe | 12d | 2028-12-05 | 2028-12-16 | 2981, 2991 |  | 7 day week No holidays | 2522288 |
| 2995 | 37000.40500.43300.44500.202400.820400 | 41st flr-Flat flooring | 14d | 2028-11-17 | 2028-11-30 | 2982, 2993 |  | 7 day week No holidays | 2522298 |
| 2996 | 37000.40500.43300.44500.202400.820500 | 41st flr-Main door fixing & frame fixing | 14d | 2028-12-01 | 2028-12-14 | 2983, 2995 |  | 7 day week No holidays | 2522308 |
| 2997 | 37000.40500.43300.44500.202400.820600 | 41st flr-Window fixing | 14d | 2028-12-01 | 2028-12-14 | 2984, 2995 |  | 7 day week No holidays | 2522318 |
| 2998 | 37000.40500.43300.44500.202400.820700 | 41st flr-Railing Fixing | 14d | 2028-12-01 | 2028-12-14 | 2985, 2995 |  | 7 day week No holidays | 2522328 |
| 2999 | 37000.40500.43300.44500.202400.820800 | 41st flr-Internal painting - putty / primer application | 14d | 2028-12-01 | 2028-12-14 | 2986, 2995 |  | 7 day week No holidays | 2522338 |
| 3000 | 37000.40500.43300.44500.202400.820900 | 41st flr-Flat electrical wiring | 12d | 2028-12-15 | 2028-12-26 | 2987, 2996 |  | 7 day week No holidays | 2522348 |
| 3001 | 37000.40500.43300.44500.202400.821000 | 41st flr-Internal painting | 10d | 2028-12-27 | 2029-01-05 | 2988, 3000 |  | 7 day week No holidays | 2522358 |
| 3002 | 37000.40500.43300.44500.202400.821100 | 41st flr-Internal shutter fixing | 12d | 2028-12-15 | 2028-12-26 | 2989, 2999 |  | 7 day week No holidays | 2522368 |
| 3003 | 37000.40500.43300.44500.202300 | **42nd Floor** | 64d | 2028-11-19 | 2029-01-21 |  | start no earlier than 2028-11-19 | 7 day week No holidays | 2506328 |
| 3004 | 37000.40500.43300.44500.202300.821200 | 42nd flr-Gypsum Plaster | 14d | 2028-12-07 | 2028-12-20 | 2431, 2449, 2991 |  | 7 day week No holidays | 2522378 |
| 3005 | 37000.40500.43300.44500.202300.821300 | 42nd flr-Kitchen Platform | 8d | 2028-12-21 | 2028-12-28 | 2992, 3004 |  | 7 day week No holidays | 2522388 |
| 3006 | 37000.40500.43300.44500.202300.821400 | 42nd flr-Toilet dado & flooring | 14d | 2028-11-19 | 2028-12-02 | 2435, 2993 |  | 7 day week No holidays | 2522398 |
| 3007 | 37000.40500.43300.44500.202300.821500 | 42nd flr-Fire sprinkler pipe | 12d | 2028-12-21 | 2029-01-01 | 2994, 3004 |  | 7 day week No holidays | 2522408 |
| 3008 | 37000.40500.43300.44500.202300.821600 | 42nd flr-Flat flooring | 14d | 2028-12-03 | 2028-12-16 | 2995, 3006 |  | 7 day week No holidays | 2522418 |
| 3009 | 37000.40500.43300.44500.202300.821700 | 42nd flr-Main door fixing & frame fixing | 14d | 2028-12-17 | 2028-12-30 | 2996, 3008 |  | 7 day week No holidays | 2522428 |
| 3010 | 37000.40500.43300.44500.202300.821800 | 42nd flr-Window fixing | 14d | 2028-12-17 | 2028-12-30 | 2997, 3008 |  | 7 day week No holidays | 2522438 |
| 3011 | 37000.40500.43300.44500.202300.821900 | 42nd flr-Railing Fixing | 14d | 2028-12-17 | 2028-12-30 | 2998, 3008 |  | 7 day week No holidays | 2522448 |
| 3012 | 37000.40500.43300.44500.202300.822000 | 42nd flr-Internal painting - putty / primer application | 14d | 2028-12-17 | 2028-12-30 | 2999, 3008 |  | 7 day week No holidays | 2522458 |
| 3013 | 37000.40500.43300.44500.202300.822100 | 42nd flr-Flat electrical wiring | 12d | 2028-12-31 | 2029-01-11 | 3000, 3009 |  | 7 day week No holidays | 2522468 |
| 3014 | 37000.40500.43300.44500.202300.822200 | 42nd flr-Internal painting | 10d | 2029-01-12 | 2029-01-21 | 3001, 3013 |  | 7 day week No holidays | 2522478 |
| 3015 | 37000.40500.43300.44500.202300.822300 | 42nd flr-Internal shutter fixing | 12d | 2028-12-31 | 2029-01-11 | 3002, 3012 |  | 7 day week No holidays | 2522488 |

| ID | WBS | Task | Duration | Start | Finish | Predecessors | Constraint | Calendar | Unique_Task_ID |
| --- | --- | --- | --- | --- | --- | --- | --- | --- | --- |
| 3016 | 37000.40500.43300.44500.186500 | **43rd Floor** | 64d | 2028-12-05 | 2029-02-06 |  | start no earlier than 2028-12-05 | 7 day week No holidays | 2506338 |
| 3017 | 37000.40500.43300.44500.186500.822400 | 43rd flr-Gypsum Plaster | 14d | 2028-12-23 | 2029-01-05 | 2437, 2455, 3004 |  | 7 day week No holidays | 2522498 |
| 3018 | 37000.40500.43300.44500.186500.822500 | 43rd flr-Kitchen Platform | 8d | 2029-01-06 | 2029-01-13 | 3005, 3017 |  | 7 day week No holidays | 2522508 |
| 3019 | 37000.40500.43300.44500.186500.822600 | 43rd flr-Toilet dado & flooring | 14d | 2028-12-05 | 2028-12-18 | 2441, 3006 |  | 7 day week No holidays | 2522518 |
| 3020 | 37000.40500.43300.44500.186500.822700 | 43rd flr-Fire sprinkler pipe | 12d | 2029-01-06 | 2029-01-17 | 3007, 3017 |  | 7 day week No holidays | 2522528 |
| 3021 | 37000.40500.43300.44500.186500.822800 | 43rd flr-Flat flooring | 14d | 2028-12-19 | 2029-01-01 | 3008, 3019 |  | 7 day week No holidays | 2522538 |
| 3022 | 37000.40500.43300.44500.186500.822900 | 43rd flr-Main door fixing & frame fixing | 14d | 2029-01-02 | 2029-01-15 | 3009, 3021 |  | 7 day week No holidays | 2522548 |
| 3023 | 37000.40500.43300.44500.186500.823000 | 43rd flr-Window fixing | 14d | 2029-01-02 | 2029-01-15 | 3010, 3021 |  | 7 day week No holidays | 2522558 |
| 3024 | 37000.40500.43300.44500.186500.823100 | 43rd flr-Railing Fixing | 14d | 2029-01-02 | 2029-01-15 | 3011, 3021 |  | 7 day week No holidays | 2522568 |
| 3025 | 37000.40500.43300.44500.186500.823200 | 43rd flr-Internal painting - putty / primer application | 14d | 2029-01-02 | 2029-01-15 | 3012, 3021 |  | 7 day week No holidays | 2522578 |
| 3026 | 37000.40500.43300.44500.186500.823300 | 43rd flr-Flat electrical wiring | 12d | 2029-01-16 | 2029-01-27 | 3013, 3022 |  | 7 day week No holidays | 2522588 |
| 3027 | 37000.40500.43300.44500.186500.823400 | 43rd flr-Internal painting | 10d | 2029-01-28 | 2029-02-06 | 3014, 3026 |  | 7 day week No holidays | 2522598 |
| 3028 | 37000.40500.43300.44500.186500.823500 | 43rd flr-Internal shutter fixing | 12d | 2029-01-16 | 2029-01-27 | 3015, 3025 |  | 7 day week No holidays | 2522608 |
| 3029 | 37000.40500.43300.44500.184100 | **44th Floor** | 64d | 2028-12-21 | 2029-02-22 |  | start no earlier than 2028-12-21 | 7 day week No holidays | 2506348 |
| 3030 | 37000.40500.43300.44500.184100.823600 | 44th flr-Gypsum Plaster | 14d | 2029-01-08 | 2029-01-21 | 2443, 2461, 3017 |  | 7 day week No holidays | 2522618 |
| 3031 | 37000.40500.43300.44500.184100.823700 | 44th flr-Kitchen Platform | 8d | 2029-01-22 | 2029-01-29 | 3018, 3030 |  | 7 day week No holidays | 2522628 |
| 3032 | 37000.40500.43300.44500.184100.823800 | 44th flr-Toilet dado & flooring | 14d | 2028-12-21 | 2029-01-03 | 2447, 3019 |  | 7 day week No holidays | 2522638 |
| 3033 | 37000.40500.43300.44500.184100.823900 | 44th flr-Fire sprinkler pipe | 12d | 2029-01-22 | 2029-02-02 | 3020, 3030 |  | 7 day week No holidays | 2522648 |
| 3034 | 37000.40500.43300.44500.184100.824000 | 44th flr-Flat flooring | 14d | 2029-01-04 | 2029-01-17 | 3021, 3032 |  | 7 day week No holidays | 2522658 |
| 3035 | 37000.40500.43300.44500.184100.824100 | 44th flr-Main door fixing & frame fixing | 14d | 2029-01-18 | 2029-01-31 | 3022, 3034 |  | 7 day week No holidays | 2522668 |
| 3036 | 37000.40500.43300.44500.184100.824200 | 44th flr-Window fixing | 14d | 2029-01-18 | 2029-01-31 | 3023, 3034 |  | 7 day week No holidays | 2522678 |
| 3037 | 37000.40500.43300.44500.184100.824300 | 44th flr-Railing Fixing | 14d | 2029-01-18 | 2029-01-31 | 3024, 3034 |  | 7 day week No holidays | 2522688 |
| 3038 | 37000.40500.43300.44500.184100.824400 | 44th flr-Internal painting - putty / primer application | 14d | 2029-01-18 | 2029-01-31 | 3025, 3034 |  | 7 day week No holidays | 2522698 |
| 3039 | 37000.40500.43300.44500.184100.824500 | 44th flr-Flat electrical wiring | 12d | 2029-02-01 | 2029-02-12 | 3026, 3035 |  | 7 day week No holidays | 2522708 |
| 3040 | 37000.40500.43300.44500.184100.824600 | 44th flr-Internal painting | 10d | 2029-02-13 | 2029-02-22 | 3027, 3039 |  | 7 day week No holidays | 2522718 |
| 3041 | 37000.40500.43300.44500.184100.824700 | 44th flr-Internal shutter fixing | 12d | 2029-02-01 | 2029-02-12 | 3028, 3038 |  | 7 day week No holidays | 2522728 |

| ID | WBS | Task | Duration | Start | Finish | Predecessors | Constraint | Calendar | Unique_Task_ID |
| --- | --- | --- | --- | --- | --- | --- | --- | --- | --- |
| 3042 | 37000.40500.43300.44500.183600 | **45th Floor** | 64d | 2029-01-06 | 2029-03-10 |  | start no earlier than 2029-01-06 | 7 day week No holidays | 2506358 |
| 3043 | 37000.40500.43300.44500.183600.824800 | 45th flr-Gypsum Plaster | 14d | 2029-01-24 | 2029-02-06 | 2449, 2467, 3030 |  | 7 day week No holidays | 2522738 |
| 3044 | 37000.40500.43300.44500.183600.824900 | 45th flr-Kitchen Platform | 8d | 2029-02-07 | 2029-02-14 | 3031, 3043 |  | 7 day week No holidays | 2522748 |
| 3045 | 37000.40500.43300.44500.183600.825000 | 45th flr-Toilet dado & flooring | 14d | 2029-01-06 | 2029-01-19 | 2453, 3032 |  | 7 day week No holidays | 2522758 |
| 3046 | 37000.40500.43300.44500.183600.825100 | 45th flr-Fire sprinkler pipe | 12d | 2029-02-07 | 2029-02-18 | 3033, 3043 |  | 7 day week No holidays | 2522768 |
| 3047 | 37000.40500.43300.44500.183600.825200 | 45th flr-Flat flooring | 14d | 2029-01-20 | 2029-02-02 | 3034, 3045 |  | 7 day week No holidays | 2522778 |
| 3048 | 37000.40500.43300.44500.183600.825300 | 45th flr-Main door fixing & frame fixing | 14d | 2029-02-03 | 2029-02-16 | 3035, 3047 |  | 7 day week No holidays | 2522788 |
| 3049 | 37000.40500.43300.44500.183600.825400 | 45th flr-Window fixing | 14d | 2029-02-03 | 2029-02-16 | 3036, 3047 |  | 7 day week No holidays | 2522798 |
| 3050 | 37000.40500.43300.44500.183600.825500 | 45th flr-Railing Fixing | 14d | 2029-02-03 | 2029-02-16 | 3037, 3047 |  | 7 day week No holidays | 2522808 |
| 3051 | 37000.40500.43300.44500.183600.825600 | 45th flr-Internal painting - putty / primer application | 14d | 2029-02-03 | 2029-02-16 | 3038, 3047 |  | 7 day week No holidays | 2522818 |
| 3052 | 37000.40500.43300.44500.183600.825700 | 45th flr-Flat electrical wiring | 12d | 2029-02-17 | 2029-02-28 | 3039, 3048 |  | 7 day week No holidays | 2522828 |
| 3053 | 37000.40500.43300.44500.183600.825800 | 45th flr-Internal painting | 10d | 2029-03-01 | 2029-03-10 | 3040, 3052 |  | 7 day week No holidays | 2522838 |
| 3054 | 37000.40500.43300.44500.183600.825900 | 45th flr-Internal shutter fixing | 12d | 2029-02-17 | 2029-02-28 | 3041, 3051 |  | 7 day week No holidays | 2522848 |
| 3055 | 37000.40500.43300.44500.183500 | **46th Floor** | 64d | 2029-01-22 | 2029-03-26 |  | start no earlier than 2029-01-22 | 7 day week No holidays | 2506368 |
| 3056 | 37000.40500.43300.44500.183500.826000 | 46th flr-Gypsum Plaster | 14d | 2029-02-09 | 2029-02-22 | 2455, 2473, 3043 |  | 7 day week No holidays | 2522858 |
| 3057 | 37000.40500.43300.44500.183500.826100 | 46th flr-Kitchen Platform | 8d | 2029-02-23 | 2029-03-02 | 3044, 3056 |  | 7 day week No holidays | 2522868 |
| 3058 | 37000.40500.43300.44500.183500.826200 | 46th flr-Toilet dado & flooring | 14d | 2029-01-22 | 2029-02-04 | 2459, 3045 |  | 7 day week No holidays | 2522878 |
| 3059 | 37000.40500.43300.44500.183500.826300 | 46th flr-Fire sprinkler pipe | 12d | 2029-02-23 | 2029-03-06 | 3046, 3056 |  | 7 day week No holidays | 2522888 |
| 3060 | 37000.40500.43300.44500.183500.826400 | 46th flr-Flat flooring | 14d | 2029-02-05 | 2029-02-18 | 3047, 3058 |  | 7 day week No holidays | 2522898 |
| 3061 | 37000.40500.43300.44500.183500.826500 | 46th flr-Main door fixing & frame fixing | 14d | 2029-02-19 | 2029-03-04 | 3048, 3060 |  | 7 day week No holidays | 2522908 |
| 3062 | 37000.40500.43300.44500.183500.826600 | 46th flr-Window fixing | 14d | 2029-02-19 | 2029-03-04 | 3049, 3060 |  | 7 day week No holidays | 2522918 |
| 3063 | 37000.40500.43300.44500.183500.826700 | 46th flr-Railing Fixing | 14d | 2029-02-19 | 2029-03-04 | 3050, 3060 |  | 7 day week No holidays | 2522928 |
| 3064 | 37000.40500.43300.44500.183500.826800 | 46th flr-Internal painting - putty / primer application | 14d | 2029-02-19 | 2029-03-04 | 3051, 3060 |  | 7 day week No holidays | 2522938 |
| 3065 | 37000.40500.43300.44500.183500.826900 | 46th flr-Flat electrical wiring | 12d | 2029-03-05 | 2029-03-16 | 3052, 3061 |  | 7 day week No holidays | 2522948 |
| 3066 | 37000.40500.43300.44500.183500.827000 | 46th flr-Internal painting | 10d | 2029-03-17 | 2029-03-26 | 3053, 3065 |  | 7 day week No holidays | 2522958 |
| 3067 | 37000.40500.43300.44500.183500.827100 | 46th flr-Internal shutter fixing | 12d | 2029-03-05 | 2029-03-16 | 3054, 3064 |  | 7 day week No holidays | 2522968 |

| ID | WBS | Task | Duration | Start | Finish | Predecessors | Constraint | Calendar | Unique_Task_ID |
| --- | --- | --- | --- | --- | --- | --- | --- | --- | --- |
| 3068 | 37000.40500.43300.44500.182500 | **47th Floor** | 64d | 2029-02-07 | 2029-04-11 |  | start no earlier than 2029-02-07 | 7 day week No holidays | 2506378 |
| 3069 | 37000.40500.43300.44500.182500.827200 | 47th flr-Gypsum Plaster | 14d | 2029-02-23 | 2029-03-08 | 2461, 2479, 3056 |  | 7 day week No holidays | 2522978 |
| 3070 | 37000.40500.43300.44500.182500.827300 | 47th flr-Kitchen Platform | 8d | 2029-03-09 | 2029-03-16 | 3057, 3069 |  | 7 day week No holidays | 2522988 |
| 3071 | 37000.40500.43300.44500.182500.827400 | 47th flr-Toilet dado & flooring | 14d | 2029-02-07 | 2029-02-20 | 2465, 3058 |  | 7 day week No holidays | 2522998 |
| 3072 | 37000.40500.43300.44500.182500.827500 | 47th flr-Fire sprinkler pipe | 12d | 2029-03-09 | 2029-03-20 | 3059, 3069 |  | 7 day week No holidays | 2523008 |
| 3073 | 37000.40500.43300.44500.182500.827600 | 47th flr-Flat flooring | 14d | 2029-02-21 | 2029-03-06 | 3060, 3071 |  | 7 day week No holidays | 2523018 |
| 3074 | 37000.40500.43300.44500.182500.827700 | 47th flr-Main door fixing & frame fixing | 14d | 2029-03-07 | 2029-03-20 | 3061, 3073 |  | 7 day week No holidays | 2523028 |
| 3075 | 37000.40500.43300.44500.182500.827800 | 47th flr-Window fixing | 14d | 2029-03-07 | 2029-03-20 | 3062, 3073 |  | 7 day week No holidays | 2523038 |
| 3076 | 37000.40500.43300.44500.182500.827900 | 47th flr-Railing Fixing | 14d | 2029-03-07 | 2029-03-20 | 3063, 3073 |  | 7 day week No holidays | 2523048 |
| 3077 | 37000.40500.43300.44500.182500.828000 | 47th flr-Internal painting - putty / primer application | 14d | 2029-03-07 | 2029-03-20 | 3064, 3073 |  | 7 day week No holidays | 2523058 |
| 3078 | 37000.40500.43300.44500.182500.828100 | 47th flr-Flat electrical wiring | 12d | 2029-03-21 | 2029-04-01 | 3065, 3074 |  | 7 day week No holidays | 2523068 |
| 3079 | 37000.40500.43300.44500.182500.828200 | 47th flr-Internal painting | 10d | 2029-04-02 | 2029-04-11 | 3066, 3078 |  | 7 day week No holidays | 2523078 |
| 3080 | 37000.40500.43300.44500.182500.828300 | 47th flr-Internal shutter fixing | 12d | 2029-03-21 | 2029-04-01 | 3067, 3077 |  | 7 day week No holidays | 2523088 |
| 3081 | 37000.40500.43300.44500.182200 | **48th Floor** | 64d | 2029-02-23 | 2029-04-27 |  | start no earlier than 2029-02-23 | 7 day week No holidays | 2506388 |
| 3082 | 37000.40500.43300.44500.182200.828400 | 48th flr-Gypsum Plaster | 14d | 2029-03-09 | 2029-03-22 | 2467, 2485, 3069 |  | 7 day week No holidays | 2523098 |
| 3083 | 37000.40500.43300.44500.182200.828500 | 48th flr-Kitchen Platform | 8d | 2029-03-23 | 2029-03-30 | 3070, 3082 |  | 7 day week No holidays | 2523108 |
| 3084 | 37000.40500.43300.44500.182200.828600 | 48th flr-Toilet dado & flooring | 14d | 2029-02-23 | 2029-03-08 | 2471, 3071 |  | 7 day week No holidays | 2523118 |
| 3085 | 37000.40500.43300.44500.182200.828700 | 48th flr-Fire sprinkler pipe | 12d | 2029-03-23 | 2029-04-03 | 3072, 3082 |  | 7 day week No holidays | 2523128 |
| 3086 | 37000.40500.43300.44500.182200.828800 | 48th flr-Flat flooring | 14d | 2029-03-09 | 2029-03-22 | 3073, 3084 |  | 7 day week No holidays | 2523138 |
| 3087 | 37000.40500.43300.44500.182200.828900 | 48th flr-Main door fixing & frame fixing | 14d | 2029-03-23 | 2029-04-05 | 3074, 3086 |  | 7 day week No holidays | 2523148 |
| 3088 | 37000.40500.43300.44500.182200.829000 | 48th flr-Window fixing | 14d | 2029-03-23 | 2029-04-05 | 3075, 3086 |  | 7 day week No holidays | 2523158 |
| 3089 | 37000.40500.43300.44500.182200.829100 | 48th flr-Railing Fixing | 14d | 2029-03-23 | 2029-04-05 | 3076, 3086 |  | 7 day week No holidays | 2523168 |
| 3090 | 37000.40500.43300.44500.182200.829200 | 48th flr-Internal painting - putty / primer application | 14d | 2029-03-23 | 2029-04-05 | 3077, 3086 |  | 7 day week No holidays | 2523178 |
| 3091 | 37000.40500.43300.44500.182200.829300 | 48th flr-Flat electrical wiring | 12d | 2029-04-06 | 2029-04-17 | 3078, 3087 |  | 7 day week No holidays | 2523188 |
| 3092 | 37000.40500.43300.44500.182200.829400 | 48th flr-Internal painting | 10d | 2029-04-18 | 2029-04-27 | 3079, 3091 |  | 7 day week No holidays | 2523198 |
| 3093 | 37000.40500.43300.44500.182200.829500 | 48th flr-Internal shutter fixing | 12d | 2029-04-06 | 2029-04-17 | 3080, 3090 |  | 7 day week No holidays | 2523208 |

| ID | WBS | Task | Duration | Start | Finish | Predecessors | Constraint | Calendar | Unique_Task_ID |
| --- | --- | --- | --- | --- | --- | --- | --- | --- | --- |
| 3094 | 37000.40500.43300.44500.181900 | **49th Floor** | 64d | 2029-03-11 | 2029-05-13 |  | start no earlier than 2029-03-11 | 7 day week No holidays | 2506398 |
| 3095 | 37000.40500.43300.44500.181900.829600 | 49th flr-Gypsum Plaster | 14d | 2029-03-23 | 2029-04-05 | 2473, 2491, 3082 |  | 7 day week No holidays | 2523218 |
| 3096 | 37000.40500.43300.44500.181900.829700 | 49th flr-Kitchen Platform | 8d | 2029-04-06 | 2029-04-13 | 3083, 3095 |  | 7 day week No holidays | 2523228 |
| 3097 | 37000.40500.43300.44500.181900.829800 | 49th flr-Toilet dado & flooring | 14d | 2029-03-11 | 2029-03-24 | 2477, 3084 |  | 7 day week No holidays | 2523238 |
| 3098 | 37000.40500.43300.44500.181900.829900 | 49th flr-Fire sprinkler pipe | 12d | 2029-04-06 | 2029-04-17 | 3085, 3095 |  | 7 day week No holidays | 2523248 |
| 3099 | 37000.40500.43300.44500.181900.830000 | 49th flr-Flat flooring | 14d | 2029-03-25 | 2029-04-07 | 3086, 3097 |  | 7 day week No holidays | 2523258 |
| 3100 | 37000.40500.43300.44500.181900.830100 | 49th flr-Main door fixing & frame fixing | 14d | 2029-04-08 | 2029-04-21 | 3087, 3099 |  | 7 day week No holidays | 2523268 |
| 3101 | 37000.40500.43300.44500.181900.830200 | 49th flr-Window fixing | 14d | 2029-04-08 | 2029-04-21 | 3088, 3099 |  | 7 day week No holidays | 2523278 |
| 3102 | 37000.40500.43300.44500.181900.830300 | 49th flr-Railing Fixing | 14d | 2029-04-08 | 2029-04-21 | 3089, 3099 |  | 7 day week No holidays | 2523288 |
| 3103 | 37000.40500.43300.44500.181900.830400 | 49th flr-Internal painting - putty / primer application | 14d | 2029-04-08 | 2029-04-21 | 3090, 3099 |  | 7 day week No holidays | 2523298 |
| 3104 | 37000.40500.43300.44500.181900.830500 | 49th flr-Flat electrical wiring | 12d | 2029-04-22 | 2029-05-03 | 3091, 3100 |  | 7 day week No holidays | 2523308 |
| 3105 | 37000.40500.43300.44500.181900.830600 | 49th flr-Internal painting | 10d | 2029-05-04 | 2029-05-13 | 3092, 3104 |  | 7 day week No holidays | 2523318 |
| 3106 | 37000.40500.43300.44500.181900.830700 | 49th flr-Internal shutter fixing | 12d | 2029-04-22 | 2029-05-03 | 3093, 3103 |  | 7 day week No holidays | 2523328 |
| 3107 | 37000.40500.43300.44500.179300 | **50th Floor** | 98d | 2029-02-19 | 2029-05-27 |  | start no earlier than 2029-02-19 | 7 day week No holidays | 2506408 |
| 3108 | 37000.40500.43300.44500.179300.830800 | 50th flr-Gypsum Plaster | 14d | 2029-02-19 | 2029-03-04 | 2479 |  | 7 day week No holidays | 2523338 |
| 3109 | 37000.40500.43300.44500.179300.830900 | 50th flr-Kitchen Platform | 8d | 2029-04-14 | 2029-04-21 | 3096, 3108 |  | 7 day week No holidays | 2523348 |
| 3110 | 37000.40500.43300.44500.179300.831000 | 50th flr-Toilet dado & flooring | 14d | 2029-03-25 | 2029-04-07 | 2483, 3097 |  | 7 day week No holidays | 2523358 |
| 3111 | 37000.40500.43300.44500.179300.831100 | 50th flr-Fire sprinkler pipe | 12d | 2029-04-18 | 2029-04-29 | 3098, 3108 |  | 7 day week No holidays | 2523368 |
| 3112 | 37000.40500.43300.44500.179300.831200 | 50th flr-Flat flooring | 14d | 2029-04-08 | 2029-04-21 | 3099, 3110 |  | 7 day week No holidays | 2523378 |
| 3113 | 37000.40500.43300.44500.179300.831300 | 50th flr-Main door fixing & frame fixing | 14d | 2029-04-22 | 2029-05-05 | 3100, 3112 |  | 7 day week No holidays | 2523388 |
| 3114 | 37000.40500.43300.44500.179300.831400 | 50th flr-Window fixing | 14d | 2029-04-22 | 2029-05-05 | 3101, 3112 |  | 7 day week No holidays | 2523398 |
| 3115 | 37000.40500.43300.44500.179300.831500 | 50th flr-Railing Fixing | 14d | 2029-04-22 | 2029-05-05 | 3102, 3112 |  | 7 day week No holidays | 2523408 |
| 3116 | 37000.40500.43300.44500.179300.831600 | 50th flr-Internal painting - putty / primer application | 14d | 2029-04-22 | 2029-05-05 | 3103, 3112 |  | 7 day week No holidays | 2523418 |
| 3117 | 37000.40500.43300.44500.179300.831700 | 50th flr-Flat electrical wiring | 12d | 2029-05-06 | 2029-05-17 | 3104, 3113 |  | 7 day week No holidays | 2523428 |
| 3118 | 37000.40500.43300.44500.179300.831800 | 50th flr-Internal painting | 10d | 2029-05-18 | 2029-05-27 | 3105, 3117 |  | 7 day week No holidays | 2523438 |
| 3119 | 37000.40500.43300.44500.179300.831900 | 50th flr-Internal shutter fixing | 12d | 2029-05-06 | 2029-05-17 | 3106, 3116 |  | 7 day week No holidays | 2523448 |

| ID | WBS | Task | Duration | Start | Finish | Predecessors | Constraint | Calendar | Unique_Task_ID |
| --- | --- | --- | --- | --- | --- | --- | --- | --- | --- |
| 3120 | 37000.40500.43300.44500.178800 | **51th Floor** | 102d | 2029-03-01 | 2029-06-10 |  | start no earlier than 2029-03-01 | 7 day week No holidays | 2506418 |
| 3121 | 37000.40500.43300.44500.178800.832000 | 51st flr-Gypsum Plaster | 14d | 2029-03-01 | 2029-03-14 | 2485 |  | 7 day week No holidays | 2523458 |
| 3122 | 37000.40500.43300.44500.178800.832100 | 51st flr-Kitchen Platform | 8d | 2029-04-22 | 2029-04-29 | 3109, 3121 |  | 7 day week No holidays | 2523468 |
| 3123 | 37000.40500.43300.44500.178800.832200 | 51st flr-Toilet dado & flooring | 14d | 2029-04-08 | 2029-04-21 | 2489, 3110 |  | 7 day week No holidays | 2523478 |
| 3124 | 37000.40500.43300.44500.178800.832300 | 51st flr-Fire sprinkler pipe | 12d | 2029-04-30 | 2029-05-11 | 3111, 3121 |  | 7 day week No holidays | 2523488 |
| 3125 | 37000.40500.43300.44500.178800.832400 | 51st flr-Flat flooring | 14d | 2029-04-22 | 2029-05-05 | 3112, 3123 |  | 7 day week No holidays | 2523498 |
| 3126 | 37000.40500.43300.44500.178800.832500 | 51st flr-Main door fixing & frame fixing | 14d | 2029-05-06 | 2029-05-19 | 3113, 3125 |  | 7 day week No holidays | 2523508 |
| 3127 | 37000.40500.43300.44500.178800.832600 | 51st flr-Window fixing | 14d | 2029-05-06 | 2029-05-19 | 3114, 3125 |  | 7 day week No holidays | 2523518 |
| 3128 | 37000.40500.43300.44500.178800.832700 | 51st flr-Railing Fixing | 14d | 2029-05-06 | 2029-05-19 | 3115, 3125 |  | 7 day week No holidays | 2523528 |
| 3129 | 37000.40500.43300.44500.178800.832800 | 51st flr-Internal painting - putty / primer application | 14d | 2029-05-06 | 2029-05-19 | 3116, 3125 |  | 7 day week No holidays | 2523538 |
| 3130 | 37000.40500.43300.44500.178800.832900 | 51st flr-Flat electrical wiring | 12d | 2029-05-20 | 2029-05-31 | 3117, 3126 |  | 7 day week No holidays | 2523548 |
| 3131 | 37000.40500.43300.44500.178800.833000 | 51st flr-Internal painting | 10d | 2029-06-01 | 2029-06-10 | 3118, 3130 |  | 7 day week No holidays | 2523558 |
| 3132 | 37000.40500.43300.44500.178800.833100 | 51st flr-Internal shutter fixing | 12d | 2029-05-20 | 2029-05-31 | 3119, 3129 |  | 7 day week No holidays | 2523568 |
| 3133 | 37000.40500.43300.44500.178700 | **52ndFloor** | 106d | 2029-03-11 | 2029-06-24 |  | start no earlier than 2029-03-11 | 7 day week No holidays | 2506428 |
| 3134 | 37000.40500.43300.44500.178700.833200 | 52nd flr-Gypsum Plaster | 14d | 2029-03-11 | 2029-03-24 | 2491 |  | 7 day week No holidays | 2523578 |
| 3135 | 37000.40500.43300.44500.178700.833300 | 52nd flr-Kitchen Platform | 8d | 2029-04-30 | 2029-05-07 | 3122, 3134 |  | 7 day week No holidays | 2523588 |
| 3136 | 37000.40500.43300.44500.178700.833400 | 52nd flr-Toilet dado & flooring | 14d | 2029-04-22 | 2029-05-05 | 2495, 3123 |  | 7 day week No holidays | 2523598 |
| 3137 | 37000.40500.43300.44500.178700.833500 | 52nd flr-Fire sprinkler pipe | 12d | 2029-05-12 | 2029-05-23 | 3124, 3134 |  | 7 day week No holidays | 2523608 |
| 3138 | 37000.40500.43300.44500.178700.833600 | 52nd flr-Flat flooring | 14d | 2029-05-06 | 2029-05-19 | 3125, 3136 |  | 7 day week No holidays | 2523618 |
| 3139 | 37000.40500.43300.44500.178700.833700 | 52nd flr-Main door fixing & frame fixing | 14d | 2029-05-20 | 2029-06-02 | 3126, 3138 |  | 7 day week No holidays | 2523628 |
| 3140 | 37000.40500.43300.44500.178700.833800 | 52nd flr-Window fixing | 14d | 2029-05-20 | 2029-06-02 | 3127, 3138 |  | 7 day week No holidays | 2523638 |
| 3141 | 37000.40500.43300.44500.178700.833900 | 52nd flr-Railing Fixing | 14d | 2029-05-20 | 2029-06-02 | 3128, 3138 |  | 7 day week No holidays | 2523648 |
| 3142 | 37000.40500.43300.44500.178700.834000 | 52nd flr-Internal painting - putty / primer application | 14d | 2029-05-20 | 2029-06-02 | 3129, 3138 |  | 7 day week No holidays | 2523658 |
| 3143 | 37000.40500.43300.44500.178700.834100 | 52nd flr-Flat electrical wiring | 12d | 2029-06-03 | 2029-06-14 | 3130, 3139 |  | 7 day week No holidays | 2523668 |
| 3144 | 37000.40500.43300.44500.178700.834200 | 52nd flr-Internal painting | 10d | 2029-06-15 | 2029-06-24 | 3131, 3143 |  | 7 day week No holidays | 2523678 |
| 3145 | 37000.40500.43300.44500.178700.834300 | 52nd flr-Internal shutter fixing | 12d | 2029-06-03 | 2029-06-14 | 3132, 3142 |  | 7 day week No holidays | 2523688 |
| 3146 | 37000.40500.43300.517400 | Basement(1 & 2) - Internal finishing & services | 90d | 2028-10-15 | 2029-01-12 | 2502 |  | 7 day week No holidays | 2508168 |
| 3147 | 37000.40500.43300.517500 | Podium Floors - Internal finishing & Services | 150d | 2028-12-21 | 2029-05-19 | 2977 |  | 7 day week No holidays | 2508178 |
| 3148 | 37000.40500.43300.517600 | GF - Internal finishing & services | 90d | 2028-11-14 | 2029-02-11 | 2514 |  | 7 day week No holidays | 2508188 |

| ID | WBS | Task | Duration | Start | Finish | Predecessors | Constraint | Calendar | Unique_Task_ID |
| --- | --- | --- | --- | --- | --- | --- | --- | --- | --- |
| 3149 | 37000.40500.264300 | **Common MEP Works** | 987d | 2027-04-30 | 2030-01-10 |  | start no earlier than 2027-04-30 | 7 day week No holidays | 2506648 |
| 3150 | 37000.40500.264300.359400 | **Lift** | 540d | 2028-07-20 | 2030-01-10 |  | start no earlier than 2028-07-20 | 7 day week No holidays | 2508138 |
| 3151 | 37000.40500.264300.359400.605200 | Lift Shaft Handover | 45d | 2029-05-16 | 2029-06-29 | 2228 |  | 7 day week No holidays | 2509648 |
| 3152 | 37000.40500.264300.359400.605300 | Lift installation work | 180d | 2029-06-30 | 2029-12-26 | 3151 |  | 7 day week No holidays | 2509658 |
| 3153 | 37000.40500.264300.359400.605400 | Lift pressurization | 15d | 2029-12-27 | 2030-01-10 | 3152 |  | 7 day week No holidays | 2509668 |
| 3154 | 37000.40500.264300.359400.605500 | Lift-Order Date | 1d | 2028-07-20 | 2028-07-20 | 3155SS |  | 7 day week No holidays | 7562343 |
| 3155 | 37000.40500.264300.359400.605600 | Lift-Shop Drawing Approval Date | 30d | 2028-07-20 | 2028-08-18 | 3156SS |  | 7 day week No holidays | 7562353 |
| 3156 | 37000.40500.264300.359400.605700 | Lift-Start of Supply for first lot date | 210d | 2028-07-20 | 2029-02-14 | 2227FF |  | 7 day week No holidays | 7562363 |
| 3157 | 37000.40500.264300.388200 | **Plumbing works** | 779d | 2027-05-10 | 2029-06-26 |  | start no earlier than 2027-05-10 | 7 day week No holidays | 2508128 |
| 3158 | 37000.40500.264300.388200.605800 | Shaft Plumbing | 600d | 2027-05-10 | 2028-12-29 | 2359 |  | 7 day week No holidays | 2509678 |
| 3159 | 37000.40500.264300.388200.605900 | Terrace looping | 35d | 2029-05-23 | 2029-06-26 | 2501 |  | 7 day week No holidays | 2509688 |
| 3160 | 37000.40500.264300.388200.606000 | Sanitary fittings | 45d | 2028-12-30 | 2029-02-12 | 3158 |  | 7 day week No holidays | 2509698 |
| 3161 | 37000.40500.264300.388200.606100 | Solar water heater | 90d | 2028-12-30 | 2029-03-29 | 3158 |  | 7 day week No holidays | 2509708 |
| 3162 | 37000.40500.264300.399900 | **Fire Fighting works** | 610d | 2027-04-30 | 2028-12-29 |  | start no earlier than 2027-04-30 | 7 day week No holidays | 2508148 |
| 3163 | 37000.40500.264300.399900.606200 | Fire duct downtake | 600d | 2027-05-10 | 2028-12-29 | 2359 |  | 7 day week No holidays | 2509718 |
| 3164 | 37000.40500.264300.399900.606300 | FA & PA | 580d | 2027-04-30 | 2028-11-29 | 2359FS-10d |  | 7 day week No holidays | 2509728 |
| 3165 | 37000.40500.264300.399900.606400 | Fire accessories fitting | 600d | 2027-05-10 | 2028-12-29 | 2359 |  | 7 day week No holidays | 2509738 |
| 3166 | 37000.40500.264300.375200 | **Electrical works** | 802d | 2027-05-10 | 2029-07-19 |  | start no earlier than 2027-05-10 | 7 day week No holidays | 2507478 |
| 3167 | 37000.40500.264300.375200.606500 | Shaft, Common area wiring & DB fixing | 700d | 2027-05-10 | 2029-04-08 | 2359 |  | 7 day week No holidays | 2509748 |
| 3168 | 37000.40500.264300.375200.606600 | Meter room erection | 90d | 2029-04-09 | 2029-07-07 | 3167 |  | 7 day week No holidays | 2509758 |
| 3169 | 37000.40500.264300.375200.606700 | Panel erection | 35d | 2029-06-15 | 2029-07-19 | 3590, 3167 |  | 7 day week No holidays | 2509768 |
| 3170 | 37000.40500.264300.375200.606800 | DG Installtion | 30d | 2029-06-15 | 2029-07-14 | 3591, 3167 |  | 7 day week No holidays | 2509778 |
| 3171 | 37000.40500.264300.375200.606900 | Transformer erection | 30d | 2029-06-15 | 2029-07-14 | 3592, 3167 |  | 7 day week No holidays | 2509788 |
| 3172 | 37000.40500.264300.517700 | Services completion | 30d | 2029-07-15 | 2029-08-13 | 3158, 3159, 3164, 3171, 3165 |  | 7 day week No holidays | 2508198 |

| ID | WBS | Task | Duration | Start | Finish | Predecessors | Constraint | Calendar | Unique_Task_ID |
| --- | --- | --- | --- | --- | --- | --- | --- | --- | --- |
| 3173 | 37000.40500.45800 | **Lift Lobby & Staircase Finishing Works** | 306d | 2028-12-07 | 2029-10-08 |  | start no earlier than 2028-12-07 | 7 day week No holidays | 2505938 |
| 3174 | 37000.40500.45800.315300 | **GF Floor** | 39d | 2028-12-07 | 2029-01-14 |  | start no earlier than 2028-12-07 | 7 day week No holidays | 2506658 |
| 3175 | 37000.40500.45800.315300.607000 | Lift blockwork | 6d | 2028-12-07 | 2028-12-12 | 2449 |  | 7 day week No holidays | 2509798 |
| 3176 | 37000.40500.45800.315300.607100 | Lobby architrave work | 7d | 2028-12-13 | 2028-12-19 | 3175 |  | 7 day week No holidays | 2509808 |
| 3177 | 37000.40500.45800.315300.607200 | Lobby gypsum plaster | 8d | 2028-12-20 | 2028-12-27 | 3176 |  | 7 day week No holidays | 2509818 |
| 3178 | 37000.40500.45800.315300.607300 | Staircase epoxy paint | 10d | 2028-12-28 | 2029-01-06 | 3177 |  | 7 day week No holidays | 2509828 |
| 3179 | 37000.40500.45800.315300.607400 | Staircase railing | 6d | 2028-12-28 | 2029-01-02 | 3177 |  | 7 day week No holidays | 2509838 |
| 3180 | 37000.40500.45800.315300.607500 | Lobby flooring work | 8d | 2028-12-28 | 2029-01-04 | 3177 |  | 7 day week No holidays | 2509848 |
| 3181 | 37000.40500.45800.315300.607600 | Painting | 10d | 2029-01-05 | 2029-01-14 | 3180 |  | 7 day week No holidays | 2509858 |
| 3182 | 37000.40500.45800.315300.607700 | Fire rated doors | 6d | 2029-01-05 | 2029-01-10 | 3180 |  | 7 day week No holidays | 2509868 |
| 3183 | 37000.40500.45800.314500 | **Podium Floors** | 42d | 2028-12-13 | 2029-01-23 |  | start no earlier than 2028-12-13 | 7 day week No holidays | 2506668 |
| 3184 | 37000.40500.45800.314500.607800 | Lift blockwork | 6d | 2028-12-13 | 2028-12-18 | 3175 |  | 7 day week No holidays | 2509878 |
| 3185 | 37000.40500.45800.314500.607900 | Lobby architrave work | 10d | 2028-12-19 | 2028-12-28 | 3184 |  | 7 day week No holidays | 2509888 |
| 3186 | 37000.40500.45800.314500.608000 | Lobby gypsum plaster | 8d | 2028-12-29 | 2029-01-05 | 3185 |  | 7 day week No holidays | 2509898 |
| 3187 | 37000.40500.45800.314500.608100 | Staircase epoxy paint | 10d | 2029-01-06 | 2029-01-15 | 3186 |  | 7 day week No holidays | 2509908 |
| 3188 | 37000.40500.45800.314500.608200 | Staircase railing | 6d | 2029-01-06 | 2029-01-11 | 3186 |  | 7 day week No holidays | 2509918 |
| 3189 | 37000.40500.45800.314500.608300 | Lobby flooring work | 8d | 2029-01-06 | 2029-01-13 | 3186 |  | 7 day week No holidays | 2509928 |
| 3190 | 37000.40500.45800.314500.608400 | Painting | 10d | 2029-01-14 | 2029-01-23 | 3189 |  | 7 day week No holidays | 2509938 |
| 3191 | 37000.40500.45800.314500.608500 | Fire rated doors | 6d | 2029-01-14 | 2029-01-19 | 3189 |  | 7 day week No holidays | 2509948 |
| 3192 | 37000.40500.45800.313800 | **9th Floor** | 42d | 2028-12-19 | 2029-01-29 |  | start no earlier than 2028-12-19 | 7 day week No holidays | 2506678 |
| 3193 | 37000.40500.45800.313800.608600 | Lift blockwork | 6d | 2028-12-19 | 2028-12-24 | 3184 |  | 7 day week No holidays | 2509958 |
| 3194 | 37000.40500.45800.313800.608700 | Lobby architrave work | 10d | 2028-12-25 | 2029-01-03 | 3193 |  | 7 day week No holidays | 2509968 |
| 3195 | 37000.40500.45800.313800.608800 | Lobby gypsum plaster | 8d | 2029-01-04 | 2029-01-11 | 3194 |  | 7 day week No holidays | 2509978 |
| 3196 | 37000.40500.45800.313800.608900 | Staircase epoxy paint | 10d | 2029-01-12 | 2029-01-21 | 3195 |  | 7 day week No holidays | 2509988 |
| 3197 | 37000.40500.45800.313800.609000 | Staircase railing | 6d | 2029-01-12 | 2029-01-17 | 3195 |  | 7 day week No holidays | 2509998 |
| 3198 | 37000.40500.45800.313800.609100 | Lobby flooring work | 8d | 2029-01-12 | 2029-01-19 | 3195 |  | 7 day week No holidays | 2510008 |
| 3199 | 37000.40500.45800.313800.609200 | Painting | 10d | 2029-01-20 | 2029-01-29 | 3198 |  | 7 day week No holidays | 2510018 |
| 3200 | 37000.40500.45800.313800.609300 | Fire rated doors | 6d | 2029-01-20 | 2029-01-25 | 3198 |  | 7 day week No holidays | 2510028 |

| ID | WBS | Task | Duration | Start | Finish | Predecessors | Constraint | Calendar | Unique_Task_ID |
| --- | --- | --- | --- | --- | --- | --- | --- | --- | --- |
| 3201 | 37000.40500.45800.313700 | **10th Floor** | 42d | 2028-12-25 | 2029-02-04 |  | start no earlier than 2028-12-25 | 7 day week No holidays | 2506688 |
| 3202 | 37000.40500.45800.313700.609400 | Lift blockwork | 6d | 2028-12-25 | 2028-12-30 | 3193 |  | 7 day week No holidays | 2510038 |
| 3203 | 37000.40500.45800.313700.609500 | Lobby architrave work | 10d | 2028-12-31 | 2029-01-09 | 3202 |  | 7 day week No holidays | 2510048 |
| 3204 | 37000.40500.45800.313700.609600 | Lobby gypsum plaster | 8d | 2029-01-10 | 2029-01-17 | 3203 |  | 7 day week No holidays | 2510058 |
| 3205 | 37000.40500.45800.313700.609700 | Staircase epoxy paint | 10d | 2029-01-18 | 2029-01-27 | 3204 |  | 7 day week No holidays | 2510068 |
| 3206 | 37000.40500.45800.313700.609800 | Staircase railing | 6d | 2029-01-18 | 2029-01-23 | 3204 |  | 7 day week No holidays | 2510078 |
| 3207 | 37000.40500.45800.313700.609900 | Lobby flooring work | 8d | 2029-01-18 | 2029-01-25 | 3204 |  | 7 day week No holidays | 2510088 |
| 3208 | 37000.40500.45800.313700.610000 | Painting | 10d | 2029-01-26 | 2029-02-04 | 3207 |  | 7 day week No holidays | 2510098 |
| 3209 | 37000.40500.45800.313700.610100 | Fire rated doors | 6d | 2029-01-26 | 2029-01-31 | 3207 |  | 7 day week No holidays | 2510108 |
| 3210 | 37000.40500.45800.313600 | **11th Floor** | 42d | 2028-12-31 | 2029-02-10 |  | start no earlier than 2028-12-31 | 7 day week No holidays | 2506698 |
| 3211 | 37000.40500.45800.313600.610200 | Lift blockwork | 6d | 2028-12-31 | 2029-01-05 | 3202 |  | 7 day week No holidays | 2510118 |
| 3212 | 37000.40500.45800.313600.610300 | Lobby architrave work | 10d | 2029-01-06 | 2029-01-15 | 3211 |  | 7 day week No holidays | 2510128 |
| 3213 | 37000.40500.45800.313600.610400 | Lobby gypsum plaster | 8d | 2029-01-16 | 2029-01-23 | 3212 |  | 7 day week No holidays | 2510138 |
| 3214 | 37000.40500.45800.313600.610500 | Staircase epoxy paint | 10d | 2029-01-24 | 2029-02-02 | 3213 |  | 7 day week No holidays | 2510148 |
| 3215 | 37000.40500.45800.313600.610600 | Staircase railing | 6d | 2029-01-24 | 2029-01-29 | 3213 |  | 7 day week No holidays | 2510158 |
| 3216 | 37000.40500.45800.313600.610700 | Lobby flooring work | 8d | 2029-01-24 | 2029-01-31 | 3213 |  | 7 day week No holidays | 2510168 |
| 3217 | 37000.40500.45800.313600.610800 | Painting | 10d | 2029-02-01 | 2029-02-10 | 3216 |  | 7 day week No holidays | 2510178 |
| 3218 | 37000.40500.45800.313600.610900 | Fire rated doors | 6d | 2029-02-01 | 2029-02-06 | 3216 |  | 7 day week No holidays | 2510188 |
| 3219 | 37000.40500.45800.312200 | **12th Floor** | 42d | 2029-01-06 | 2029-02-16 |  | start no earlier than 2029-01-06 | 7 day week No holidays | 2506708 |
| 3220 | 37000.40500.45800.312200.611000 | Lift blockwork | 6d | 2029-01-06 | 2029-01-11 | 3211 |  | 7 day week No holidays | 2510198 |
| 3221 | 37000.40500.45800.312200.611100 | Lobby architrave work | 10d | 2029-01-12 | 2029-01-21 | 3220 |  | 7 day week No holidays | 2510208 |
| 3222 | 37000.40500.45800.312200.611200 | Lobby gypsum plaster | 8d | 2029-01-22 | 2029-01-29 | 3221 |  | 7 day week No holidays | 2510218 |
| 3223 | 37000.40500.45800.312200.611300 | Staircase epoxy paint | 10d | 2029-01-30 | 2029-02-08 | 3222 |  | 7 day week No holidays | 2510228 |
| 3224 | 37000.40500.45800.312200.611400 | Staircase railing | 6d | 2029-01-30 | 2029-02-04 | 3222 |  | 7 day week No holidays | 2510238 |
| 3225 | 37000.40500.45800.312200.611500 | Lobby flooring work | 8d | 2029-01-30 | 2029-02-06 | 3222 |  | 7 day week No holidays | 2510248 |
| 3226 | 37000.40500.45800.312200.611600 | Painting | 10d | 2029-02-07 | 2029-02-16 | 3225 |  | 7 day week No holidays | 2510258 |
| 3227 | 37000.40500.45800.312200.611700 | Fire rated doors | 6d | 2029-02-07 | 2029-02-12 | 3225 |  | 7 day week No holidays | 2510268 |

| ID | WBS | Task | Duration | Start | Finish | Predecessors | Constraint | Calendar | Unique_Task_ID |
| --- | --- | --- | --- | --- | --- | --- | --- | --- | --- |
| 3228 | 37000.40500.45800.311900 | **13th Floor** | 42d | 2029-01-12 | 2029-02-22 |  | start no earlier than 2029-01-12 | 7 day week No holidays | 2506718 |
| 3229 | 37000.40500.45800.311900.611800 | Lift blockwork | 6d | 2029-01-12 | 2029-01-17 | 3220 |  | 7 day week No holidays | 2510278 |
| 3230 | 37000.40500.45800.311900.611900 | Lobby architrave work | 10d | 2029-01-18 | 2029-01-27 | 3229 |  | 7 day week No holidays | 2510288 |
| 3231 | 37000.40500.45800.311900.612000 | Lobby gypsum plaster | 8d | 2029-01-28 | 2029-02-04 | 3230 |  | 7 day week No holidays | 2510298 |
| 3232 | 37000.40500.45800.311900.612100 | Staircase epoxy paint | 10d | 2029-02-05 | 2029-02-14 | 3231 |  | 7 day week No holidays | 2510308 |
| 3233 | 37000.40500.45800.311900.612200 | Staircase railing | 6d | 2029-02-05 | 2029-02-10 | 3231 |  | 7 day week No holidays | 2510318 |
| 3234 | 37000.40500.45800.311900.612300 | Lobby flooring work | 8d | 2029-02-05 | 2029-02-12 | 3231 |  | 7 day week No holidays | 2510328 |
| 3235 | 37000.40500.45800.311900.612400 | Painting | 10d | 2029-02-13 | 2029-02-22 | 3234 |  | 7 day week No holidays | 2510338 |
| 3236 | 37000.40500.45800.311900.612500 | Fire rated doors | 6d | 2029-02-13 | 2029-02-18 | 3234 |  | 7 day week No holidays | 2510348 |
| 3237 | 37000.40500.45800.311600 | **14th Floor** | 42d | 2029-01-18 | 2029-02-28 |  | start no earlier than 2029-01-18 | 7 day week No holidays | 2506728 |
| 3238 | 37000.40500.45800.311600.612600 | Lift blockwork | 6d | 2029-01-18 | 2029-01-23 | 3229 |  | 7 day week No holidays | 2510358 |
| 3239 | 37000.40500.45800.311600.612700 | Lobby architrave work | 10d | 2029-01-24 | 2029-02-02 | 3238 |  | 7 day week No holidays | 2510368 |
| 3240 | 37000.40500.45800.311600.612800 | Lobby gypsum plaster | 8d | 2029-02-03 | 2029-02-10 | 3239 |  | 7 day week No holidays | 2510378 |
| 3241 | 37000.40500.45800.311600.612900 | Staircase epoxy paint | 10d | 2029-02-11 | 2029-02-20 | 3240 |  | 7 day week No holidays | 2510388 |
| 3242 | 37000.40500.45800.311600.613000 | Staircase railing | 6d | 2029-02-11 | 2029-02-16 | 3240 |  | 7 day week No holidays | 2510398 |
| 3243 | 37000.40500.45800.311600.613100 | Lobby flooring work | 8d | 2029-02-11 | 2029-02-18 | 3240 |  | 7 day week No holidays | 2510408 |
| 3244 | 37000.40500.45800.311600.613200 | Painting | 10d | 2029-02-19 | 2029-02-28 | 3243 |  | 7 day week No holidays | 2510418 |
| 3245 | 37000.40500.45800.311600.613300 | Fire rated doors | 6d | 2029-02-19 | 2029-02-24 | 3243 |  | 7 day week No holidays | 2510428 |
| 3246 | 37000.40500.45800.310700 | **15th Floor** | 42d | 2029-01-24 | 2029-03-06 |  | start no earlier than 2029-01-24 | 7 day week No holidays | 2506738 |
| 3247 | 37000.40500.45800.310700.613400 | Lift blockwork | 6d | 2029-01-24 | 2029-01-29 | 3238 |  | 7 day week No holidays | 2510438 |
| 3248 | 37000.40500.45800.310700.613500 | Lobby architrave work | 10d | 2029-01-30 | 2029-02-08 | 3247 |  | 7 day week No holidays | 2510448 |
| 3249 | 37000.40500.45800.310700.613600 | Lobby gypsum plaster | 8d | 2029-02-09 | 2029-02-16 | 3248 |  | 7 day week No holidays | 2510458 |
| 3250 | 37000.40500.45800.310700.613700 | Staircase epoxy paint | 10d | 2029-02-17 | 2029-02-26 | 3249 |  | 7 day week No holidays | 2510468 |
| 3251 | 37000.40500.45800.310700.613800 | Staircase railing | 6d | 2029-02-17 | 2029-02-22 | 3249 |  | 7 day week No holidays | 2510478 |
| 3252 | 37000.40500.45800.310700.613900 | Lobby flooring work | 8d | 2029-02-17 | 2029-02-24 | 3249 |  | 7 day week No holidays | 2510488 |
| 3253 | 37000.40500.45800.310700.614000 | Painting | 10d | 2029-02-25 | 2029-03-06 | 3252 |  | 7 day week No holidays | 2510498 |
| 3254 | 37000.40500.45800.310700.614100 | Fire rated doors | 6d | 2029-02-25 | 2029-03-02 | 3252 |  | 7 day week No holidays | 2510508 |

| ID | WBS | Task | Duration | Start | Finish | Predecessors | Constraint | Calendar | Unique_Task_ID |
| --- | --- | --- | --- | --- | --- | --- | --- | --- | --- |
| 3255 | 37000.40500.45800.310600 | **16th Floor** | 42d | 2029-01-30 | 2029-03-12 |  | start no earlier than 2029-01-30 | 7 day week No holidays | 2506748 |
| 3256 | 37000.40500.45800.310600.614200 | Lift blockwork | 6d | 2029-01-30 | 2029-02-04 | 3247 |  | 7 day week No holidays | 2510518 |
| 3257 | 37000.40500.45800.310600.614300 | Lobby architrave work | 10d | 2029-02-05 | 2029-02-14 | 3256 |  | 7 day week No holidays | 2510528 |
| 3258 | 37000.40500.45800.310600.614400 | Lobby gypsum plaster | 8d | 2029-02-15 | 2029-02-22 | 3257 |  | 7 day week No holidays | 2510538 |
| 3259 | 37000.40500.45800.310600.614500 | Staircase epoxy paint | 10d | 2029-02-23 | 2029-03-04 | 3258 |  | 7 day week No holidays | 2510548 |
| 3260 | 37000.40500.45800.310600.614600 | Staircase railing | 6d | 2029-02-23 | 2029-02-28 | 3258 |  | 7 day week No holidays | 2510558 |
| 3261 | 37000.40500.45800.310600.614700 | Lobby flooring work | 8d | 2029-02-23 | 2029-03-02 | 3258 |  | 7 day week No holidays | 2510568 |
| 3262 | 37000.40500.45800.310600.614800 | Painting | 10d | 2029-03-03 | 2029-03-12 | 3261 |  | 7 day week No holidays | 2510578 |
| 3263 | 37000.40500.45800.310600.614900 | Fire rated doors | 6d | 2029-03-03 | 2029-03-08 | 3261 |  | 7 day week No holidays | 2510588 |
| 3264 | 37000.40500.45800.308900 | **17th Floor** | 42d | 2029-02-05 | 2029-03-18 |  | start no earlier than 2029-02-05 | 7 day week No holidays | 2506758 |
| 3265 | 37000.40500.45800.308900.615000 | Lift blockwork | 6d | 2029-02-05 | 2029-02-10 | 3256 |  | 7 day week No holidays | 2510598 |
| 3266 | 37000.40500.45800.308900.615100 | Lobby architrave work | 10d | 2029-02-11 | 2029-02-20 | 3265 |  | 7 day week No holidays | 2510608 |
| 3267 | 37000.40500.45800.308900.615200 | Lobby gypsum plaster | 8d | 2029-02-21 | 2029-02-28 | 3266 |  | 7 day week No holidays | 2510618 |
| 3268 | 37000.40500.45800.308900.615300 | Staircase epoxy paint | 10d | 2029-03-01 | 2029-03-10 | 3267 |  | 7 day week No holidays | 2510628 |
| 3269 | 37000.40500.45800.308900.615400 | Staircase railing | 6d | 2029-03-01 | 2029-03-06 | 3267 |  | 7 day week No holidays | 2510638 |
| 3270 | 37000.40500.45800.308900.615500 | Lobby flooring work | 8d | 2029-03-01 | 2029-03-08 | 3267 |  | 7 day week No holidays | 2510648 |
| 3271 | 37000.40500.45800.308900.615600 | Painting | 10d | 2029-03-09 | 2029-03-18 | 3270 |  | 7 day week No holidays | 2510658 |
| 3272 | 37000.40500.45800.308900.615700 | Fire rated doors | 6d | 2029-03-09 | 2029-03-14 | 3270 |  | 7 day week No holidays | 2510668 |
| 3273 | 37000.40500.45800.306000 | **18th Floor** | 42d | 2029-02-11 | 2029-03-24 |  | start no earlier than 2029-02-11 | 7 day week No holidays | 2506768 |
| 3274 | 37000.40500.45800.306000.615800 | Lift blockwork | 6d | 2029-02-11 | 2029-02-16 | 3265 |  | 7 day week No holidays | 2510678 |
| 3275 | 37000.40500.45800.306000.615900 | Lobby architrave work | 10d | 2029-02-17 | 2029-02-26 | 3274 |  | 7 day week No holidays | 2510688 |
| 3276 | 37000.40500.45800.306000.616000 | Lobby gypsum plaster | 8d | 2029-02-27 | 2029-03-06 | 3275 |  | 7 day week No holidays | 2510698 |
| 3277 | 37000.40500.45800.306000.616100 | Staircase epoxy paint | 10d | 2029-03-07 | 2029-03-16 | 3276 |  | 7 day week No holidays | 2510708 |
| 3278 | 37000.40500.45800.306000.616200 | Staircase railing | 6d | 2029-03-07 | 2029-03-12 | 3276 |  | 7 day week No holidays | 2510718 |
| 3279 | 37000.40500.45800.306000.616300 | Lobby flooring work | 8d | 2029-03-07 | 2029-03-14 | 3276 |  | 7 day week No holidays | 2510728 |
| 3280 | 37000.40500.45800.306000.616400 | Painting | 10d | 2029-03-15 | 2029-03-24 | 3279 |  | 7 day week No holidays | 2510738 |
| 3281 | 37000.40500.45800.306000.616500 | Fire rated doors | 6d | 2029-03-15 | 2029-03-20 | 3279 |  | 7 day week No holidays | 2510748 |

| ID | WBS | Task | Duration | Start | Finish | Predecessors | Constraint | Calendar | Unique_Task_ID |
| --- | --- | --- | --- | --- | --- | --- | --- | --- | --- |
| 3282 | 37000.40500.45800.305200 | **19th Floor** | 42d | 2029-02-17 | 2029-03-30 |  | start no earlier than 2029-02-17 | 7 day week No holidays | 2506778 |
| 3283 | 37000.40500.45800.305200.616600 | Lift blockwork | 6d | 2029-02-17 | 2029-02-22 | 3274 |  | 7 day week No holidays | 2510758 |
| 3284 | 37000.40500.45800.305200.616700 | Lobby architrave work | 10d | 2029-02-23 | 2029-03-04 | 3283 |  | 7 day week No holidays | 2510768 |
| 3285 | 37000.40500.45800.305200.616800 | Lobby gypsum plaster | 8d | 2029-03-05 | 2029-03-12 | 3284 |  | 7 day week No holidays | 2510778 |
| 3286 | 37000.40500.45800.305200.616900 | Staircase epoxy paint | 10d | 2029-03-13 | 2029-03-22 | 3285 |  | 7 day week No holidays | 2510788 |
| 3287 | 37000.40500.45800.305200.617000 | Staircase railing | 6d | 2029-03-13 | 2029-03-18 | 3285 |  | 7 day week No holidays | 2510798 |
| 3288 | 37000.40500.45800.305200.617100 | Lobby flooring work | 8d | 2029-03-13 | 2029-03-20 | 3285 |  | 7 day week No holidays | 2510808 |
| 3289 | 37000.40500.45800.305200.617200 | Painting | 10d | 2029-03-21 | 2029-03-30 | 3288 |  | 7 day week No holidays | 2510818 |
| 3290 | 37000.40500.45800.305200.617300 | Fire rated doors | 6d | 2029-03-21 | 2029-03-26 | 3288 |  | 7 day week No holidays | 2510828 |
| 3291 | 37000.40500.45800.304800 | **20th Floor** | 42d | 2029-02-23 | 2029-04-05 |  | start no earlier than 2029-02-23 | 7 day week No holidays | 2506788 |
| 3292 | 37000.40500.45800.304800.617400 | Lift blockwork | 6d | 2029-02-23 | 2029-02-28 | 3283 |  | 7 day week No holidays | 2510838 |
| 3293 | 37000.40500.45800.304800.617500 | Lobby architrave work | 10d | 2029-03-01 | 2029-03-10 | 3292 |  | 7 day week No holidays | 2510848 |
| 3294 | 37000.40500.45800.304800.617600 | Lobby gypsum plaster | 8d | 2029-03-11 | 2029-03-18 | 3293 |  | 7 day week No holidays | 2510858 |
| 3295 | 37000.40500.45800.304800.617700 | Staircase epoxy paint | 10d | 2029-03-19 | 2029-03-28 | 3294 |  | 7 day week No holidays | 2510868 |
| 3296 | 37000.40500.45800.304800.617800 | Staircase railing | 6d | 2029-03-19 | 2029-03-24 | 3294 |  | 7 day week No holidays | 2510878 |
| 3297 | 37000.40500.45800.304800.617900 | Lobby flooring work | 8d | 2029-03-19 | 2029-03-26 | 3294 |  | 7 day week No holidays | 2510888 |
| 3298 | 37000.40500.45800.304800.618000 | Painting | 10d | 2029-03-27 | 2029-04-05 | 3297 |  | 7 day week No holidays | 2510898 |
| 3299 | 37000.40500.45800.304800.618100 | Fire rated doors | 6d | 2029-03-27 | 2029-04-01 | 3297 |  | 7 day week No holidays | 2510908 |
| 3300 | 37000.40500.45800.304500 | **21st Floor** | 42d | 2029-03-01 | 2029-04-11 |  | start no earlier than 2029-03-01 | 7 day week No holidays | 2506798 |
| 3301 | 37000.40500.45800.304500.618200 | Lift blockwork | 6d | 2029-03-01 | 2029-03-06 | 3292 |  | 7 day week No holidays | 2510918 |
| 3302 | 37000.40500.45800.304500.618300 | Lobby architrave work | 10d | 2029-03-07 | 2029-03-16 | 3301 |  | 7 day week No holidays | 2510928 |
| 3303 | 37000.40500.45800.304500.618400 | Lobby gypsum plaster | 8d | 2029-03-17 | 2029-03-24 | 3302 |  | 7 day week No holidays | 2510938 |
| 3304 | 37000.40500.45800.304500.618500 | Staircase epoxy paint | 10d | 2029-03-25 | 2029-04-03 | 3303 |  | 7 day week No holidays | 2510948 |
| 3305 | 37000.40500.45800.304500.618600 | Staircase railing | 6d | 2029-03-25 | 2029-03-30 | 3303 |  | 7 day week No holidays | 2510958 |
| 3306 | 37000.40500.45800.304500.618700 | Lobby flooring work | 8d | 2029-03-25 | 2029-04-01 | 3303 |  | 7 day week No holidays | 2510968 |
| 3307 | 37000.40500.45800.304500.618800 | Painting | 10d | 2029-04-02 | 2029-04-11 | 3306 |  | 7 day week No holidays | 2510978 |
| 3308 | 37000.40500.45800.304500.618900 | Fire rated doors | 6d | 2029-04-02 | 2029-04-07 | 3306 |  | 7 day week No holidays | 2510988 |

| ID | WBS | Task | Duration | Start | Finish | Predecessors | Constraint | Calendar | Unique_Task_ID |
| --- | --- | --- | --- | --- | --- | --- | --- | --- | --- |
| 3309 | 37000.40500.45800.304300 | **22nd Floor** | 42d | 2029-03-07 | 2029-04-17 |  | start no earlier than 2029-03-07 | 7 day week No holidays | 2506808 |
| 3310 | 37000.40500.45800.304300.619000 | Lift blockwork | 6d | 2029-03-07 | 2029-03-12 | 3301 |  | 7 day week No holidays | 2510998 |
| 3311 | 37000.40500.45800.304300.619100 | Lobby architrave work | 10d | 2029-03-13 | 2029-03-22 | 3310 |  | 7 day week No holidays | 2511008 |
| 3312 | 37000.40500.45800.304300.619200 | Lobby gypsum plaster | 8d | 2029-03-23 | 2029-03-30 | 3311 |  | 7 day week No holidays | 2511018 |
| 3313 | 37000.40500.45800.304300.619300 | Staircase epoxy paint | 10d | 2029-03-31 | 2029-04-09 | 3312 |  | 7 day week No holidays | 2511028 |
| 3314 | 37000.40500.45800.304300.619400 | Staircase railing | 6d | 2029-03-31 | 2029-04-05 | 3312 |  | 7 day week No holidays | 2511038 |
| 3315 | 37000.40500.45800.304300.619500 | Lobby flooring work | 8d | 2029-03-31 | 2029-04-07 | 3312 |  | 7 day week No holidays | 2511048 |
| 3316 | 37000.40500.45800.304300.619600 | Painting | 10d | 2029-04-08 | 2029-04-17 | 3315 |  | 7 day week No holidays | 2511058 |
| 3317 | 37000.40500.45800.304300.619700 | Fire rated doors | 6d | 2029-04-08 | 2029-04-13 | 3315 |  | 7 day week No holidays | 2511068 |
| 3318 | 37000.40500.45800.303500 | **23rd Floor** | 42d | 2029-03-13 | 2029-04-23 |  | start no earlier than 2029-03-13 | 7 day week No holidays | 2506818 |
| 3319 | 37000.40500.45800.303500.619800 | Lift blockwork | 6d | 2029-03-13 | 2029-03-18 | 3310 |  | 7 day week No holidays | 2511078 |
| 3320 | 37000.40500.45800.303500.619900 | Lobby architrave work | 10d | 2029-03-19 | 2029-03-28 | 3319 |  | 7 day week No holidays | 2511088 |
| 3321 | 37000.40500.45800.303500.620000 | Lobby gypsum plaster | 8d | 2029-03-29 | 2029-04-05 | 3320 |  | 7 day week No holidays | 2511098 |
| 3322 | 37000.40500.45800.303500.620100 | Staircase epoxy paint | 10d | 2029-04-06 | 2029-04-15 | 3321 |  | 7 day week No holidays | 2511108 |
| 3323 | 37000.40500.45800.303500.620200 | Staircase railing | 6d | 2029-04-06 | 2029-04-11 | 3321 |  | 7 day week No holidays | 2511118 |
| 3324 | 37000.40500.45800.303500.620300 | Lobby flooring work | 8d | 2029-04-06 | 2029-04-13 | 3321 |  | 7 day week No holidays | 2511128 |
| 3325 | 37000.40500.45800.303500.620400 | Painting | 10d | 2029-04-14 | 2029-04-23 | 3324 |  | 7 day week No holidays | 2511138 |
| 3326 | 37000.40500.45800.303500.620500 | Fire rated doors | 6d | 2029-04-14 | 2029-04-19 | 3324 |  | 7 day week No holidays | 2511148 |
| 3327 | 37000.40500.45800.302800 | **24th Floor** | 42d | 2029-03-19 | 2029-04-29 |  | start no earlier than 2029-03-19 | 7 day week No holidays | 2506828 |
| 3328 | 37000.40500.45800.302800.620600 | Lift blockwork | 6d | 2029-03-19 | 2029-03-24 | 3319 |  | 7 day week No holidays | 2511158 |
| 3329 | 37000.40500.45800.302800.620700 | Lobby architrave work | 10d | 2029-03-25 | 2029-04-03 | 3328 |  | 7 day week No holidays | 2511168 |
| 3330 | 37000.40500.45800.302800.620800 | Lobby gypsum plaster | 8d | 2029-04-04 | 2029-04-11 | 3329 |  | 7 day week No holidays | 2511178 |
| 3331 | 37000.40500.45800.302800.620900 | Staircase epoxy paint | 10d | 2029-04-12 | 2029-04-21 | 3330 |  | 7 day week No holidays | 2511188 |
| 3332 | 37000.40500.45800.302800.621000 | Staircase railing | 6d | 2029-04-12 | 2029-04-17 | 3330 |  | 7 day week No holidays | 2511198 |
| 3333 | 37000.40500.45800.302800.621100 | Lobby flooring work | 8d | 2029-04-12 | 2029-04-19 | 3330 |  | 7 day week No holidays | 2511208 |
| 3334 | 37000.40500.45800.302800.621200 | Painting | 10d | 2029-04-20 | 2029-04-29 | 3333 |  | 7 day week No holidays | 2511218 |
| 3335 | 37000.40500.45800.302800.621300 | Fire rated doors | 6d | 2029-04-20 | 2029-04-25 | 3333 |  | 7 day week No holidays | 2511228 |

| ID | WBS | Task | Duration | Start | Finish | Predecessors | Constraint | Calendar | Unique_Task_ID |
| --- | --- | --- | --- | --- | --- | --- | --- | --- | --- |
| 3336 | 37000.40500.45800.301600 | **25th Floor** | 42d | 2029-03-25 | 2029-05-05 |  | start no earlier than 2029-03-25 | 7 day week No holidays | 2506838 |
| 3337 | 37000.40500.45800.301600.621400 | Lift blockwork | 6d | 2029-03-25 | 2029-03-30 | 3328 |  | 7 day week No holidays | 2511238 |
| 3338 | 37000.40500.45800.301600.621500 | Lobby architrave work | 10d | 2029-03-31 | 2029-04-09 | 3337 |  | 7 day week No holidays | 2511248 |
| 3339 | 37000.40500.45800.301600.621600 | Lobby gypsum plaster | 8d | 2029-04-10 | 2029-04-17 | 3338 |  | 7 day week No holidays | 2511258 |
| 3340 | 37000.40500.45800.301600.621700 | Staircase epoxy paint | 10d | 2029-04-18 | 2029-04-27 | 3339 |  | 7 day week No holidays | 2511268 |
| 3341 | 37000.40500.45800.301600.621800 | Staircase railing | 6d | 2029-04-18 | 2029-04-23 | 3339 |  | 7 day week No holidays | 2511278 |
| 3342 | 37000.40500.45800.301600.621900 | Lobby flooring work | 8d | 2029-04-18 | 2029-04-25 | 3339 |  | 7 day week No holidays | 2511288 |
| 3343 | 37000.40500.45800.301600.622000 | Painting | 10d | 2029-04-26 | 2029-05-05 | 3342 |  | 7 day week No holidays | 2511298 |
| 3344 | 37000.40500.45800.301600.622100 | Fire rated doors | 6d | 2029-04-26 | 2029-05-01 | 3342 |  | 7 day week No holidays | 2511308 |
| 3345 | 37000.40500.45800.301000 | **26th Floor** | 42d | 2029-03-31 | 2029-05-11 |  | start no earlier than 2029-03-31 | 7 day week No holidays | 2506848 |
| 3346 | 37000.40500.45800.301000.622200 | Lift blockwork | 6d | 2029-03-31 | 2029-04-05 | 3337 |  | 7 day week No holidays | 2511318 |
| 3347 | 37000.40500.45800.301000.622300 | Lobby architrave work | 10d | 2029-04-06 | 2029-04-15 | 3346 |  | 7 day week No holidays | 2511328 |
| 3348 | 37000.40500.45800.301000.622400 | Lobby gypsum plaster | 8d | 2029-04-16 | 2029-04-23 | 3347 |  | 7 day week No holidays | 2511338 |
| 3349 | 37000.40500.45800.301000.622500 | Staircase epoxy paint | 10d | 2029-04-24 | 2029-05-03 | 3348 |  | 7 day week No holidays | 2511348 |
| 3350 | 37000.40500.45800.301000.622600 | Staircase railing | 6d | 2029-04-24 | 2029-04-29 | 3348 |  | 7 day week No holidays | 2511358 |
| 3351 | 37000.40500.45800.301000.622700 | Lobby flooring work | 8d | 2029-04-24 | 2029-05-01 | 3348 |  | 7 day week No holidays | 2511368 |
| 3352 | 37000.40500.45800.301000.622800 | Painting | 10d | 2029-05-02 | 2029-05-11 | 3351 |  | 7 day week No holidays | 2511378 |
| 3353 | 37000.40500.45800.301000.622900 | Fire rated doors | 6d | 2029-05-02 | 2029-05-07 | 3351 |  | 7 day week No holidays | 2511388 |
| 3354 | 37000.40500.45800.300600 | **27th Floor** | 42d | 2029-03-31 | 2029-05-11 |  | start no earlier than 2029-03-31 | 7 day week No holidays | 2506858 |
| 3355 | 37000.40500.45800.300600.623000 | Lift blockwork | 6d | 2029-03-31 | 2029-04-05 | 3337 |  | 7 day week No holidays | 2511398 |
| 3356 | 37000.40500.45800.300600.623100 | Lobby architrave work | 10d | 2029-04-06 | 2029-04-15 | 3355 |  | 7 day week No holidays | 2511408 |
| 3357 | 37000.40500.45800.300600.623200 | Lobby gypsum plaster | 8d | 2029-04-16 | 2029-04-23 | 3356 |  | 7 day week No holidays | 2511418 |
| 3358 | 37000.40500.45800.300600.623300 | Staircase epoxy paint | 10d | 2029-04-24 | 2029-05-03 | 3357 |  | 7 day week No holidays | 2511428 |
| 3359 | 37000.40500.45800.300600.623400 | Staircase railing | 6d | 2029-04-24 | 2029-04-29 | 3357 |  | 7 day week No holidays | 2511438 |
| 3360 | 37000.40500.45800.300600.623500 | Lobby flooring work | 8d | 2029-04-24 | 2029-05-01 | 3357 |  | 7 day week No holidays | 2511448 |
| 3361 | 37000.40500.45800.300600.623600 | Painting | 10d | 2029-05-02 | 2029-05-11 | 3360 |  | 7 day week No holidays | 2511458 |
| 3362 | 37000.40500.45800.300600.623700 | Fire rated doors | 6d | 2029-05-02 | 2029-05-07 | 3360 |  | 7 day week No holidays | 2511468 |

| ID | WBS | Task | Duration | Start | Finish | Predecessors | Constraint | Calendar | Unique_Task_ID |
| --- | --- | --- | --- | --- | --- | --- | --- | --- | --- |
| 3363 | 37000.40500.45800.304600 | **28th Floor** | 42d | 2029-04-06 | 2029-05-17 |  | start no earlier than 2029-04-06 | 7 day week No holidays | 2506868 |
| 3364 | 37000.40500.45800.304600.623800 | Lift blockwork | 6d | 2029-04-06 | 2029-04-11 | 3355 |  | 7 day week No holidays | 2511478 |
| 3365 | 37000.40500.45800.304600.623900 | Lobby architrave work | 10d | 2029-04-12 | 2029-04-21 | 3364 |  | 7 day week No holidays | 2511488 |
| 3366 | 37000.40500.45800.304600.624000 | Lobby gypsum plaster | 8d | 2029-04-22 | 2029-04-29 | 3365 |  | 7 day week No holidays | 2511498 |
| 3367 | 37000.40500.45800.304600.624100 | Staircase epoxy paint | 10d | 2029-04-30 | 2029-05-09 | 3366 |  | 7 day week No holidays | 2511508 |
| 3368 | 37000.40500.45800.304600.624200 | Staircase railing | 6d | 2029-04-30 | 2029-05-05 | 3366 |  | 7 day week No holidays | 2511518 |
| 3369 | 37000.40500.45800.304600.624300 | Lobby flooring work | 8d | 2029-04-30 | 2029-05-07 | 3366 |  | 7 day week No holidays | 2511528 |
| 3370 | 37000.40500.45800.304600.624400 | Painting | 10d | 2029-05-08 | 2029-05-17 | 3369 |  | 7 day week No holidays | 2511538 |
| 3371 | 37000.40500.45800.304600.624500 | Fire rated doors | 6d | 2029-05-08 | 2029-05-13 | 3369 |  | 7 day week No holidays | 2511548 |
| 3372 | 37000.40500.45800.305000 | **29th Floor** | 42d | 2029-04-12 | 2029-05-23 |  | start no earlier than 2029-04-12 | 7 day week No holidays | 2506878 |
| 3373 | 37000.40500.45800.305000.624600 | Lift blockwork | 6d | 2029-04-12 | 2029-04-17 | 3364 |  | 7 day week No holidays | 2511558 |
| 3374 | 37000.40500.45800.305000.624700 | Lobby architrave work | 10d | 2029-04-18 | 2029-04-27 | 3373 |  | 7 day week No holidays | 2511568 |
| 3375 | 37000.40500.45800.305000.624800 | Lobby gypsum plaster | 8d | 2029-04-28 | 2029-05-05 | 3374 |  | 7 day week No holidays | 2511578 |
| 3376 | 37000.40500.45800.305000.624900 | Staircase epoxy paint | 10d | 2029-05-06 | 2029-05-15 | 3375 |  | 7 day week No holidays | 2511588 |
| 3377 | 37000.40500.45800.305000.625000 | Staircase railing | 6d | 2029-05-06 | 2029-05-11 | 3375 |  | 7 day week No holidays | 2511598 |
| 3378 | 37000.40500.45800.305000.625100 | Lobby flooring work | 8d | 2029-05-06 | 2029-05-13 | 3375 |  | 7 day week No holidays | 2511608 |
| 3379 | 37000.40500.45800.305000.625200 | Painting | 10d | 2029-05-14 | 2029-05-23 | 3378 |  | 7 day week No holidays | 2511618 |
| 3380 | 37000.40500.45800.305000.625300 | Fire rated doors | 6d | 2029-05-14 | 2029-05-19 | 3378 |  | 7 day week No holidays | 2511628 |
| 3381 | 37000.40500.45800.306200 | **30th Floor** | 42d | 2029-04-18 | 2029-05-29 |  | start no earlier than 2029-04-18 | 7 day week No holidays | 2506888 |
| 3382 | 37000.40500.45800.306200.625400 | Lift blockwork | 6d | 2029-04-18 | 2029-04-23 | 3373 |  | 7 day week No holidays | 2511638 |
| 3383 | 37000.40500.45800.306200.625500 | Lobby architrave work | 10d | 2029-04-24 | 2029-05-03 | 3382 |  | 7 day week No holidays | 2511648 |
| 3384 | 37000.40500.45800.306200.625600 | Lobby gypsum plaster | 8d | 2029-05-04 | 2029-05-11 | 3383 |  | 7 day week No holidays | 2511658 |
| 3385 | 37000.40500.45800.306200.625700 | Staircase epoxy paint | 10d | 2029-05-12 | 2029-05-21 | 3384 |  | 7 day week No holidays | 2511668 |
| 3386 | 37000.40500.45800.306200.625800 | Staircase railing | 6d | 2029-05-12 | 2029-05-17 | 3384 |  | 7 day week No holidays | 2511678 |
| 3387 | 37000.40500.45800.306200.625900 | Lobby flooring work | 8d | 2029-05-12 | 2029-05-19 | 3384 |  | 7 day week No holidays | 2511688 |
| 3388 | 37000.40500.45800.306200.626000 | Painting | 10d | 2029-05-20 | 2029-05-29 | 3387 |  | 7 day week No holidays | 2511698 |
| 3389 | 37000.40500.45800.306200.626100 | Fire rated doors | 6d | 2029-05-20 | 2029-05-25 | 3387 |  | 7 day week No holidays | 2511708 |

| ID | WBS | Task | Duration | Start | Finish | Predecessors | Constraint | Calendar | Unique_Task_ID |
| --- | --- | --- | --- | --- | --- | --- | --- | --- | --- |
| 3390 | 37000.40500.45800.312700 | **31st Floor** | 42d | 2029-04-24 | 2029-06-04 |  | start no earlier than 2029-04-24 | 7 day week No holidays | 2506898 |
| 3391 | 37000.40500.45800.312700.626200 | Lift blockwork | 6d | 2029-04-24 | 2029-04-29 | 3382 |  | 7 day week No holidays | 2511718 |
| 3392 | 37000.40500.45800.312700.626300 | Lobby architrave work | 10d | 2029-04-30 | 2029-05-09 | 3391 |  | 7 day week No holidays | 2511728 |
| 3393 | 37000.40500.45800.312700.626400 | Lobby gypsum plaster | 8d | 2029-05-10 | 2029-05-17 | 3392 |  | 7 day week No holidays | 2511738 |
| 3394 | 37000.40500.45800.312700.626500 | Staircase epoxy paint | 10d | 2029-05-18 | 2029-05-27 | 3393 |  | 7 day week No holidays | 2511748 |
| 3395 | 37000.40500.45800.312700.626600 | Staircase railing | 6d | 2029-05-18 | 2029-05-23 | 3393 |  | 7 day week No holidays | 2511758 |
| 3396 | 37000.40500.45800.312700.626700 | Lobby flooring work | 8d | 2029-05-18 | 2029-05-25 | 3393 |  | 7 day week No holidays | 2511768 |
| 3397 | 37000.40500.45800.312700.626800 | Painting | 10d | 2029-05-26 | 2029-06-04 | 3396 |  | 7 day week No holidays | 2511778 |
| 3398 | 37000.40500.45800.312700.626900 | Fire rated doors | 6d | 2029-05-26 | 2029-05-31 | 3396 |  | 7 day week No holidays | 2511788 |
| 3399 | 37000.40500.45800.302700 | **32nd Floor** | 42d | 2029-04-30 | 2029-06-10 |  | start no earlier than 2029-04-30 | 7 day week No holidays | 2506908 |
| 3400 | 37000.40500.45800.302700.627000 | Lift blockwork | 6d | 2029-04-30 | 2029-05-05 | 3391 |  | 7 day week No holidays | 2511798 |
| 3401 | 37000.40500.45800.302700.627100 | Lobby architrave work | 10d | 2029-05-06 | 2029-05-15 | 3400 |  | 7 day week No holidays | 2511808 |
| 3402 | 37000.40500.45800.302700.627200 | Lobby gypsum plaster | 8d | 2029-05-16 | 2029-05-23 | 3401 |  | 7 day week No holidays | 2511818 |
| 3403 | 37000.40500.45800.302700.627300 | Staircase epoxy paint | 10d | 2029-05-24 | 2029-06-02 | 3402 |  | 7 day week No holidays | 2511828 |
| 3404 | 37000.40500.45800.302700.627400 | Staircase railing | 6d | 2029-05-24 | 2029-05-29 | 3402 |  | 7 day week No holidays | 2511838 |
| 3405 | 37000.40500.45800.302700.627500 | Lobby flooring work | 8d | 2029-05-24 | 2029-05-31 | 3402 |  | 7 day week No holidays | 2511848 |
| 3406 | 37000.40500.45800.302700.627600 | Painting | 10d | 2029-06-01 | 2029-06-10 | 3405 |  | 7 day week No holidays | 2511858 |
| 3407 | 37000.40500.45800.302700.627700 | Fire rated doors | 6d | 2029-06-01 | 2029-06-06 | 3405 |  | 7 day week No holidays | 2511868 |
| 3408 | 37000.40500.45800.312600 | **33rd Floor** | 42d | 2029-05-06 | 2029-06-16 |  | start no earlier than 2029-05-06 | 7 day week No holidays | 2506918 |
| 3409 | 37000.40500.45800.312600.627800 | Lift blockwork | 6d | 2029-05-06 | 2029-05-11 | 3400 |  | 7 day week No holidays | 2511878 |
| 3410 | 37000.40500.45800.312600.627900 | Lobby architrave work | 10d | 2029-05-12 | 2029-05-21 | 3409 |  | 7 day week No holidays | 2511888 |
| 3411 | 37000.40500.45800.312600.628000 | Lobby gypsum plaster | 8d | 2029-05-22 | 2029-05-29 | 3410 |  | 7 day week No holidays | 2511898 |
| 3412 | 37000.40500.45800.312600.628100 | Staircase epoxy paint | 10d | 2029-05-30 | 2029-06-08 | 3411 |  | 7 day week No holidays | 2511908 |
| 3413 | 37000.40500.45800.312600.628200 | Staircase railing | 6d | 2029-05-30 | 2029-06-04 | 3411 |  | 7 day week No holidays | 2511918 |
| 3414 | 37000.40500.45800.312600.628300 | Lobby flooring work | 8d | 2029-05-30 | 2029-06-06 | 3411 |  | 7 day week No holidays | 2511928 |
| 3415 | 37000.40500.45800.312600.628400 | Painting | 10d | 2029-06-07 | 2029-06-16 | 3414 |  | 7 day week No holidays | 2511938 |
| 3416 | 37000.40500.45800.312600.628500 | Fire rated doors | 6d | 2029-06-07 | 2029-06-12 | 3414 |  | 7 day week No holidays | 2511948 |

| ID | WBS | Task | Duration | Start | Finish | Predecessors | Constraint | Calendar | Unique_Task_ID |
| --- | --- | --- | --- | --- | --- | --- | --- | --- | --- |
| 3417 | 37000.40500.45800.315200 | **34th Floor** | 42d | 2029-05-12 | 2029-06-22 |  | start no earlier than 2029-05-12 | 7 day week No holidays | 2506928 |
| 3418 | 37000.40500.45800.315200.628600 | Lift blockwork | 6d | 2029-05-12 | 2029-05-17 | 3409 |  | 7 day week No holidays | 2511958 |
| 3419 | 37000.40500.45800.315200.628700 | Lobby architrave work | 10d | 2029-05-18 | 2029-05-27 | 3418 |  | 7 day week No holidays | 2511968 |
| 3420 | 37000.40500.45800.315200.628800 | Lobby gypsum plaster | 8d | 2029-05-28 | 2029-06-04 | 3419 |  | 7 day week No holidays | 2511978 |
| 3421 | 37000.40500.45800.315200.628900 | Staircase epoxy paint | 10d | 2029-06-05 | 2029-06-14 | 3420 |  | 7 day week No holidays | 2511988 |
| 3422 | 37000.40500.45800.315200.629000 | Staircase railing | 6d | 2029-06-05 | 2029-06-10 | 3420 |  | 7 day week No holidays | 2511998 |
| 3423 | 37000.40500.45800.315200.629100 | Lobby flooring work | 8d | 2029-06-05 | 2029-06-12 | 3420 |  | 7 day week No holidays | 2512008 |
| 3424 | 37000.40500.45800.315200.629200 | Painting | 10d | 2029-06-13 | 2029-06-22 | 3423 |  | 7 day week No holidays | 2512018 |
| 3425 | 37000.40500.45800.315200.629300 | Fire rated doors | 6d | 2029-06-13 | 2029-06-18 | 3423 |  | 7 day week No holidays | 2512028 |
| 3426 | 37000.40500.45800.315400 | **35th Floor** | 42d | 2029-05-18 | 2029-06-28 |  | start no earlier than 2029-05-18 | 7 day week No holidays | 2506938 |
| 3427 | 37000.40500.45800.315400.629400 | Lift blockwork | 6d | 2029-05-18 | 2029-05-23 | 3418 |  | 7 day week No holidays | 2512038 |
| 3428 | 37000.40500.45800.315400.629500 | Lobby architrave work | 10d | 2029-05-24 | 2029-06-02 | 3427 |  | 7 day week No holidays | 2512048 |
| 3429 | 37000.40500.45800.315400.629600 | Lobby gypsum plaster | 8d | 2029-06-03 | 2029-06-10 | 3428 |  | 7 day week No holidays | 2512058 |
| 3430 | 37000.40500.45800.315400.629700 | Staircase epoxy paint | 10d | 2029-06-11 | 2029-06-20 | 3429 |  | 7 day week No holidays | 2512068 |
| 3431 | 37000.40500.45800.315400.629800 | Staircase railing | 6d | 2029-06-11 | 2029-06-16 | 3429 |  | 7 day week No holidays | 2512078 |
| 3432 | 37000.40500.45800.315400.629900 | Lobby flooring work | 8d | 2029-06-11 | 2029-06-18 | 3429 |  | 7 day week No holidays | 2512088 |
| 3433 | 37000.40500.45800.315400.630000 | Painting | 10d | 2029-06-19 | 2029-06-28 | 3432 |  | 7 day week No holidays | 2512098 |
| 3434 | 37000.40500.45800.315400.630100 | Fire rated doors | 6d | 2029-06-19 | 2029-06-24 | 3432 |  | 7 day week No holidays | 2512108 |
| 3435 | 37000.40500.45800.301300 | **36th Floor** | 42d | 2029-05-24 | 2029-07-04 |  | start no earlier than 2029-05-24 | 7 day week No holidays | 2506948 |
| 3436 | 37000.40500.45800.301300.630200 | Lift blockwork | 6d | 2029-05-24 | 2029-05-29 | 3427 |  | 7 day week No holidays | 2512118 |
| 3437 | 37000.40500.45800.301300.630300 | Lobby architrave work | 10d | 2029-05-30 | 2029-06-08 | 3436 |  | 7 day week No holidays | 2512128 |
| 3438 | 37000.40500.45800.301300.630400 | Lobby gypsum plaster | 8d | 2029-06-09 | 2029-06-16 | 3437 |  | 7 day week No holidays | 2512138 |
| 3439 | 37000.40500.45800.301300.630500 | Staircase epoxy paint | 10d | 2029-06-17 | 2029-06-26 | 3438 |  | 7 day week No holidays | 2512148 |
| 3440 | 37000.40500.45800.301300.630600 | Staircase railing | 6d | 2029-06-17 | 2029-06-22 | 3438 |  | 7 day week No holidays | 2512158 |
| 3441 | 37000.40500.45800.301300.630700 | Lobby flooring work | 8d | 2029-06-17 | 2029-06-24 | 3438 |  | 7 day week No holidays | 2512168 |
| 3442 | 37000.40500.45800.301300.630800 | Painting | 10d | 2029-06-25 | 2029-07-04 | 3441 |  | 7 day week No holidays | 2512178 |
| 3443 | 37000.40500.45800.301300.630900 | Fire rated doors | 6d | 2029-06-25 | 2029-06-30 | 3441 |  | 7 day week No holidays | 2512188 |

| ID | WBS | Task | Duration | Start | Finish | Predecessors | Constraint | Calendar | Unique_Task_ID |
| --- | --- | --- | --- | --- | --- | --- | --- | --- | --- |
| 3444 | 37000.40500.45800.300700 | **37th Floor** | 42d | 2029-05-30 | 2029-07-10 |  | start no earlier than 2029-05-30 | 7 day week No holidays | 2506958 |
| 3445 | 37000.40500.45800.300700.631000 | Lift blockwork | 6d | 2029-05-30 | 2029-06-04 | 3436 |  | 7 day week No holidays | 2512198 |
| 3446 | 37000.40500.45800.300700.631100 | Lobby architrave work | 10d | 2029-06-05 | 2029-06-14 | 3445 |  | 7 day week No holidays | 2512208 |
| 3447 | 37000.40500.45800.300700.631200 | Lobby gypsum plaster | 8d | 2029-06-15 | 2029-06-22 | 3446 |  | 7 day week No holidays | 2512218 |
| 3448 | 37000.40500.45800.300700.631300 | Staircase epoxy paint | 10d | 2029-06-23 | 2029-07-02 | 3447 |  | 7 day week No holidays | 2512228 |
| 3449 | 37000.40500.45800.300700.631400 | Staircase railing | 6d | 2029-06-23 | 2029-06-28 | 3447 |  | 7 day week No holidays | 2512238 |
| 3450 | 37000.40500.45800.300700.631500 | Lobby flooring work | 8d | 2029-06-23 | 2029-06-30 | 3447 |  | 7 day week No holidays | 2512248 |
| 3451 | 37000.40500.45800.300700.631600 | Painting | 10d | 2029-07-01 | 2029-07-10 | 3450 |  | 7 day week No holidays | 2512258 |
| 3452 | 37000.40500.45800.300700.631700 | Fire rated doors | 6d | 2029-07-01 | 2029-07-06 | 3450 |  | 7 day week No holidays | 2512268 |
| 3453 | 37000.40500.45800.302000 | **38th Floor** | 42d | 2029-06-05 | 2029-07-16 |  | start no earlier than 2029-06-05 | 7 day week No holidays | 2506968 |
| 3454 | 37000.40500.45800.302000.631800 | Lift blockwork | 6d | 2029-06-05 | 2029-06-10 | 3445 |  | 7 day week No holidays | 2512278 |
| 3455 | 37000.40500.45800.302000.631900 | Lobby architrave work | 10d | 2029-06-11 | 2029-06-20 | 3454 |  | 7 day week No holidays | 2512288 |
| 3456 | 37000.40500.45800.302000.632000 | Lobby gypsum plaster | 8d | 2029-06-21 | 2029-06-28 | 3455 |  | 7 day week No holidays | 2512298 |
| 3457 | 37000.40500.45800.302000.632100 | Staircase epoxy paint | 10d | 2029-06-29 | 2029-07-08 | 3456 |  | 7 day week No holidays | 2512308 |
| 3458 | 37000.40500.45800.302000.632200 | Staircase railing | 6d | 2029-06-29 | 2029-07-04 | 3456 |  | 7 day week No holidays | 2512318 |
| 3459 | 37000.40500.45800.302000.632300 | Lobby flooring work | 8d | 2029-06-29 | 2029-07-06 | 3456 |  | 7 day week No holidays | 2512328 |
| 3460 | 37000.40500.45800.302000.632400 | Painting | 10d | 2029-07-07 | 2029-07-16 | 3459 |  | 7 day week No holidays | 2512338 |
| 3461 | 37000.40500.45800.302000.632500 | Fire rated doors | 6d | 2029-07-07 | 2029-07-12 | 3459 |  | 7 day week No holidays | 2512348 |
| 3462 | 37000.40500.45800.316100 | **39th Floor** | 42d | 2029-06-11 | 2029-07-22 |  | start no earlier than 2029-06-11 | 7 day week No holidays | 2506978 |
| 3463 | 37000.40500.45800.316100.632600 | Lift blockwork | 6d | 2029-06-11 | 2029-06-16 | 3454 |  | 7 day week No holidays | 2512358 |
| 3464 | 37000.40500.45800.316100.632700 | Lobby architrave work | 10d | 2029-06-17 | 2029-06-26 | 3463 |  | 7 day week No holidays | 2512368 |
| 3465 | 37000.40500.45800.316100.632800 | Lobby gypsum plaster | 8d | 2029-06-27 | 2029-07-04 | 3464 |  | 7 day week No holidays | 2512378 |
| 3466 | 37000.40500.45800.316100.632900 | Staircase epoxy paint | 10d | 2029-07-05 | 2029-07-14 | 3465 |  | 7 day week No holidays | 2512388 |
| 3467 | 37000.40500.45800.316100.633000 | Staircase railing | 6d | 2029-07-05 | 2029-07-10 | 3465 |  | 7 day week No holidays | 2512398 |
| 3468 | 37000.40500.45800.316100.633100 | Lobby flooring work | 8d | 2029-07-05 | 2029-07-12 | 3465 |  | 7 day week No holidays | 2512408 |
| 3469 | 37000.40500.45800.316100.633200 | Painting | 10d | 2029-07-13 | 2029-07-22 | 3468 |  | 7 day week No holidays | 2512418 |
| 3470 | 37000.40500.45800.316100.633300 | Fire rated doors | 6d | 2029-07-13 | 2029-07-18 | 3468 |  | 7 day week No holidays | 2512428 |

| ID | WBS | Task | Duration | Start | Finish | Predecessors | Constraint | Calendar | Unique_Task_ID |
| --- | --- | --- | --- | --- | --- | --- | --- | --- | --- |
| 3471 | 37000.40500.45800.304400 | **40th Floor** | 42d | 2029-06-17 | 2029-07-28 |  | start no earlier than 2029-06-17 | 7 day week No holidays | 2506988 |
| 3472 | 37000.40500.45800.304400.633400 | Lift blockwork | 6d | 2029-06-17 | 2029-06-22 | 3463 |  | 7 day week No holidays | 2512438 |
| 3473 | 37000.40500.45800.304400.633500 | Lobby architrave work | 10d | 2029-06-23 | 2029-07-02 | 3472 |  | 7 day week No holidays | 2512448 |
| 3474 | 37000.40500.45800.304400.633600 | Lobby gypsum plaster | 8d | 2029-07-03 | 2029-07-10 | 3473 |  | 7 day week No holidays | 2512458 |
| 3475 | 37000.40500.45800.304400.633700 | Staircase epoxy paint | 10d | 2029-07-11 | 2029-07-20 | 3474 |  | 7 day week No holidays | 2512468 |
| 3476 | 37000.40500.45800.304400.633800 | Staircase railing | 6d | 2029-07-11 | 2029-07-16 | 3474 |  | 7 day week No holidays | 2512478 |
| 3477 | 37000.40500.45800.304400.633900 | Lobby flooring work | 8d | 2029-07-11 | 2029-07-18 | 3474 |  | 7 day week No holidays | 2512488 |
| 3478 | 37000.40500.45800.304400.634000 | Painting | 10d | 2029-07-19 | 2029-07-28 | 3477 |  | 7 day week No holidays | 2512498 |
| 3479 | 37000.40500.45800.304400.634100 | Fire rated doors | 6d | 2029-07-19 | 2029-07-24 | 3477 |  | 7 day week No holidays | 2512508 |
| 3480 | 37000.40500.45800.302100 | **41st Floor** | 42d | 2029-06-23 | 2029-08-03 |  | start no earlier than 2029-06-23 | 7 day week No holidays | 2506998 |
| 3481 | 37000.40500.45800.302100.634200 | Lift blockwork | 6d | 2029-06-23 | 2029-06-28 | 3472 |  | 7 day week No holidays | 2512518 |
| 3482 | 37000.40500.45800.302100.634300 | Lobby architrave work | 10d | 2029-06-29 | 2029-07-08 | 3481 |  | 7 day week No holidays | 2512528 |
| 3483 | 37000.40500.45800.302100.634400 | Lobby gypsum plaster | 8d | 2029-07-09 | 2029-07-16 | 3482 |  | 7 day week No holidays | 2512538 |
| 3484 | 37000.40500.45800.302100.634500 | Staircase epoxy paint | 10d | 2029-07-17 | 2029-07-26 | 3483 |  | 7 day week No holidays | 2512548 |
| 3485 | 37000.40500.45800.302100.634600 | Staircase railing | 6d | 2029-07-17 | 2029-07-22 | 3483 |  | 7 day week No holidays | 2512558 |
| 3486 | 37000.40500.45800.302100.634700 | Lobby flooring work | 8d | 2029-07-17 | 2029-07-24 | 3483 |  | 7 day week No holidays | 2512568 |
| 3487 | 37000.40500.45800.302100.634800 | Painting | 10d | 2029-07-25 | 2029-08-03 | 3486 |  | 7 day week No holidays | 2512578 |
| 3488 | 37000.40500.45800.302100.634900 | Fire rated doors | 6d | 2029-07-25 | 2029-07-30 | 3486 |  | 7 day week No holidays | 2512588 |
| 3489 | 37000.40500.45800.302300 | **42nd Floor** | 42d | 2029-06-29 | 2029-08-09 |  | start no earlier than 2029-06-29 | 7 day week No holidays | 2507008 |
| 3490 | 37000.40500.45800.302300.635000 | Lift blockwork | 6d | 2029-06-29 | 2029-07-04 | 3481 |  | 7 day week No holidays | 2512598 |
| 3491 | 37000.40500.45800.302300.635100 | Lobby architrave work | 10d | 2029-07-05 | 2029-07-14 | 3490 |  | 7 day week No holidays | 2512608 |
| 3492 | 37000.40500.45800.302300.635200 | Lobby gypsum plaster | 8d | 2029-07-15 | 2029-07-22 | 3491 |  | 7 day week No holidays | 2512618 |
| 3493 | 37000.40500.45800.302300.635300 | Staircase epoxy paint | 10d | 2029-07-23 | 2029-08-01 | 3492 |  | 7 day week No holidays | 2512628 |
| 3494 | 37000.40500.45800.302300.635400 | Staircase railing | 6d | 2029-07-23 | 2029-07-28 | 3492 |  | 7 day week No holidays | 2512638 |
| 3495 | 37000.40500.45800.302300.635500 | Lobby flooring work | 8d | 2029-07-23 | 2029-07-30 | 3492 |  | 7 day week No holidays | 2512648 |
| 3496 | 37000.40500.45800.302300.635600 | Painting | 10d | 2029-07-31 | 2029-08-09 | 3495 |  | 7 day week No holidays | 2512658 |
| 3497 | 37000.40500.45800.302300.635700 | Fire rated doors | 6d | 2029-07-31 | 2029-08-05 | 3495 |  | 7 day week No holidays | 2512668 |

| ID | WBS | Task | Duration | Start | Finish | Predecessors | Constraint | Calendar | Unique_Task_ID |
| --- | --- | --- | --- | --- | --- | --- | --- | --- | --- |
| 3498 | 37000.40500.45800.302500 | **43rd Floor** | 42d | 2029-07-05 | 2029-08-15 |  | start no earlier than 2029-07-05 | 7 day week No holidays | 2507018 |
| 3499 | 37000.40500.45800.302500.635800 | Lift blockwork | 6d | 2029-07-05 | 2029-07-10 | 3490 |  | 7 day week No holidays | 2512678 |
| 3500 | 37000.40500.45800.302500.635900 | Lobby architrave work | 10d | 2029-07-11 | 2029-07-20 | 3499 |  | 7 day week No holidays | 2512688 |
| 3501 | 37000.40500.45800.302500.636000 | Lobby gypsum plaster | 8d | 2029-07-21 | 2029-07-28 | 3500 |  | 7 day week No holidays | 2512698 |
| 3502 | 37000.40500.45800.302500.636100 | Staircase epoxy paint | 10d | 2029-07-29 | 2029-08-07 | 3501 |  | 7 day week No holidays | 2512708 |
| 3503 | 37000.40500.45800.302500.636200 | Staircase railing | 6d | 2029-07-29 | 2029-08-03 | 3501 |  | 7 day week No holidays | 2512718 |
| 3504 | 37000.40500.45800.302500.636300 | Lobby flooring work | 8d | 2029-07-29 | 2029-08-05 | 3501 |  | 7 day week No holidays | 2512728 |
| 3505 | 37000.40500.45800.302500.636400 | Painting | 10d | 2029-08-06 | 2029-08-15 | 3504 |  | 7 day week No holidays | 2512738 |
| 3506 | 37000.40500.45800.302500.636500 | Fire rated doors | 6d | 2029-08-06 | 2029-08-11 | 3504 |  | 7 day week No holidays | 2512748 |
| 3507 | 37000.40500.45800.304000 | **44th Floor** | 42d | 2029-07-11 | 2029-08-21 |  | start no earlier than 2029-07-11 | 7 day week No holidays | 2507028 |
| 3508 | 37000.40500.45800.304000.636600 | Lift blockwork | 6d | 2029-07-11 | 2029-07-16 | 3499 |  | 7 day week No holidays | 2512758 |
| 3509 | 37000.40500.45800.304000.636700 | Lobby architrave work | 10d | 2029-07-17 | 2029-07-26 | 3508 |  | 7 day week No holidays | 2512768 |
| 3510 | 37000.40500.45800.304000.636800 | Lobby gypsum plaster | 8d | 2029-07-27 | 2029-08-03 | 3509 |  | 7 day week No holidays | 2512778 |
| 3511 | 37000.40500.45800.304000.636900 | Staircase epoxy paint | 10d | 2029-08-04 | 2029-08-13 | 3510 |  | 7 day week No holidays | 2512788 |
| 3512 | 37000.40500.45800.304000.637000 | Staircase railing | 6d | 2029-08-04 | 2029-08-09 | 3510 |  | 7 day week No holidays | 2512798 |
| 3513 | 37000.40500.45800.304000.637100 | Lobby flooring work | 8d | 2029-08-04 | 2029-08-11 | 3510 |  | 7 day week No holidays | 2512808 |
| 3514 | 37000.40500.45800.304000.637200 | Painting | 10d | 2029-08-12 | 2029-08-21 | 3513 |  | 7 day week No holidays | 2512818 |
| 3515 | 37000.40500.45800.304000.637300 | Fire rated doors | 6d | 2029-08-12 | 2029-08-17 | 3513 |  | 7 day week No holidays | 2512828 |
| 3516 | 37000.40500.45800.304100 | **45th Floor** | 42d | 2029-07-17 | 2029-08-27 |  | start no earlier than 2029-07-17 | 7 day week No holidays | 2507038 |
| 3517 | 37000.40500.45800.304100.637400 | Lift blockwork | 6d | 2029-07-17 | 2029-07-22 | 3508 |  | 7 day week No holidays | 2512838 |
| 3518 | 37000.40500.45800.304100.637500 | Lobby architrave work | 10d | 2029-07-23 | 2029-08-01 | 3517 |  | 7 day week No holidays | 2512848 |
| 3519 | 37000.40500.45800.304100.637600 | Lobby gypsum plaster | 8d | 2029-08-02 | 2029-08-09 | 3518 |  | 7 day week No holidays | 2512858 |
| 3520 | 37000.40500.45800.304100.637700 | Staircase epoxy paint | 10d | 2029-08-10 | 2029-08-19 | 3519 |  | 7 day week No holidays | 2512868 |
| 3521 | 37000.40500.45800.304100.637800 | Staircase railing | 6d | 2029-08-10 | 2029-08-15 | 3519 |  | 7 day week No holidays | 2512878 |
| 3522 | 37000.40500.45800.304100.637900 | Lobby flooring work | 8d | 2029-08-10 | 2029-08-17 | 3519 |  | 7 day week No holidays | 2512888 |
| 3523 | 37000.40500.45800.304100.638000 | Painting | 10d | 2029-08-18 | 2029-08-27 | 3522 |  | 7 day week No holidays | 2512898 |
| 3524 | 37000.40500.45800.304100.638100 | Fire rated doors | 6d | 2029-08-18 | 2029-08-23 | 3522 |  | 7 day week No holidays | 2512908 |

| ID | WBS | Task | Duration | Start | Finish | Predecessors | Constraint | Calendar | Unique_Task_ID |
| --- | --- | --- | --- | --- | --- | --- | --- | --- | --- |
| 3525 | 37000.40500.45800.304200 | **46th Floor** | 42d | 2029-07-23 | 2029-09-02 |  | start no earlier than 2029-07-23 | 7 day week No holidays | 2507048 |
| 3526 | 37000.40500.45800.304200.638200 | Lift blockwork | 6d | 2029-07-23 | 2029-07-28 | 3517 |  | 7 day week No holidays | 2512918 |
| 3527 | 37000.40500.45800.304200.638300 | Lobby architrave work | 10d | 2029-07-29 | 2029-08-07 | 3526 |  | 7 day week No holidays | 2512928 |
| 3528 | 37000.40500.45800.304200.638400 | Lobby gypsum plaster | 8d | 2029-08-08 | 2029-08-15 | 3527 |  | 7 day week No holidays | 2512938 |
| 3529 | 37000.40500.45800.304200.638500 | Staircase epoxy paint | 10d | 2029-08-16 | 2029-08-25 | 3528 |  | 7 day week No holidays | 2512948 |
| 3530 | 37000.40500.45800.304200.638600 | Staircase railing | 6d | 2029-08-16 | 2029-08-21 | 3528 |  | 7 day week No holidays | 2512958 |
| 3531 | 37000.40500.45800.304200.638700 | Lobby flooring work | 8d | 2029-08-16 | 2029-08-23 | 3528 |  | 7 day week No holidays | 2512968 |
| 3532 | 37000.40500.45800.304200.638800 | Painting | 10d | 2029-08-24 | 2029-09-02 | 3531 |  | 7 day week No holidays | 2512978 |
| 3533 | 37000.40500.45800.304200.638900 | Fire rated doors | 6d | 2029-08-24 | 2029-08-29 | 3531 |  | 7 day week No holidays | 2512988 |
| 3534 | 37000.40500.45800.304700 | **47th Floor** | 42d | 2029-07-29 | 2029-09-08 |  | start no earlier than 2029-07-29 | 7 day week No holidays | 2507058 |
| 3535 | 37000.40500.45800.304700.639000 | Lift blockwork | 6d | 2029-07-29 | 2029-08-03 | 3526 |  | 7 day week No holidays | 2512998 |
| 3536 | 37000.40500.45800.304700.639100 | Lobby architrave work | 10d | 2029-08-04 | 2029-08-13 | 3535 |  | 7 day week No holidays | 2513008 |
| 3537 | 37000.40500.45800.304700.639200 | Lobby gypsum plaster | 8d | 2029-08-14 | 2029-08-21 | 3536 |  | 7 day week No holidays | 2513018 |
| 3538 | 37000.40500.45800.304700.639300 | Staircase epoxy paint | 10d | 2029-08-22 | 2029-08-31 | 3537 |  | 7 day week No holidays | 2513028 |
| 3539 | 37000.40500.45800.304700.639400 | Staircase railing | 6d | 2029-08-22 | 2029-08-27 | 3537 |  | 7 day week No holidays | 2513038 |
| 3540 | 37000.40500.45800.304700.639500 | Lobby flooring work | 8d | 2029-08-22 | 2029-08-29 | 3537 |  | 7 day week No holidays | 2513048 |
| 3541 | 37000.40500.45800.304700.639600 | Painting | 10d | 2029-08-30 | 2029-09-08 | 3540 |  | 7 day week No holidays | 2513058 |
| 3542 | 37000.40500.45800.304700.639700 | Fire rated doors | 6d | 2029-08-30 | 2029-09-04 | 3540 |  | 7 day week No holidays | 2513068 |
| 3543 | 37000.40500.45800.304900 | **48th Floor** | 42d | 2029-08-04 | 2029-09-14 |  | start no earlier than 2029-08-04 | 7 day week No holidays | 2507068 |
| 3544 | 37000.40500.45800.304900.639800 | Lift blockwork | 6d | 2029-08-04 | 2029-08-09 | 3535 |  | 7 day week No holidays | 2513078 |
| 3545 | 37000.40500.45800.304900.639900 | Lobby architrave work | 10d | 2029-08-10 | 2029-08-19 | 3544 |  | 7 day week No holidays | 2513088 |
| 3546 | 37000.40500.45800.304900.640000 | Lobby gypsum plaster | 8d | 2029-08-20 | 2029-08-27 | 3545 |  | 7 day week No holidays | 2513098 |
| 3547 | 37000.40500.45800.304900.640100 | Staircase epoxy paint | 10d | 2029-08-28 | 2029-09-06 | 3546 |  | 7 day week No holidays | 2513108 |
| 3548 | 37000.40500.45800.304900.640200 | Staircase railing | 6d | 2029-08-28 | 2029-09-02 | 3546 |  | 7 day week No holidays | 2513118 |
| 3549 | 37000.40500.45800.304900.640300 | Lobby flooring work | 8d | 2029-08-28 | 2029-09-04 | 3546 |  | 7 day week No holidays | 2513128 |
| 3550 | 37000.40500.45800.304900.640400 | Painting | 10d | 2029-09-05 | 2029-09-14 | 3549 |  | 7 day week No holidays | 2513138 |
| 3551 | 37000.40500.45800.304900.640500 | Fire rated doors | 6d | 2029-09-05 | 2029-09-10 | 3549 |  | 7 day week No holidays | 2513148 |

| ID | WBS | Task | Duration | Start | Finish | Predecessors | Constraint | Calendar | Unique_Task_ID |
| --- | --- | --- | --- | --- | --- | --- | --- | --- | --- |
| 3552 | 37000.40500.45800.305300 | **49th Floor** | 42d | 2029-08-10 | 2029-09-20 |  | start no earlier than 2029-08-10 | 7 day week No holidays | 2507078 |
| 3553 | 37000.40500.45800.305300.640600 | Lift blockwork | 6d | 2029-08-10 | 2029-08-15 | 3544 |  | 7 day week No holidays | 2513158 |
| 3554 | 37000.40500.45800.305300.640700 | Lobby architrave work | 10d | 2029-08-16 | 2029-08-25 | 3553 |  | 7 day week No holidays | 2513168 |
| 3555 | 37000.40500.45800.305300.640800 | Lobby gypsum plaster | 8d | 2029-08-26 | 2029-09-02 | 3554 |  | 7 day week No holidays | 2513178 |
| 3556 | 37000.40500.45800.305300.640900 | Staircase epoxy paint | 10d | 2029-09-03 | 2029-09-12 | 3555 |  | 7 day week No holidays | 2513188 |
| 3557 | 37000.40500.45800.305300.641000 | Staircase railing | 6d | 2029-09-03 | 2029-09-08 | 3555 |  | 7 day week No holidays | 2513198 |
| 3558 | 37000.40500.45800.305300.641100 | Lobby flooring work | 8d | 2029-09-03 | 2029-09-10 | 3555 |  | 7 day week No holidays | 2513208 |
| 3559 | 37000.40500.45800.305300.641200 | Painting | 10d | 2029-09-11 | 2029-09-20 | 3558 |  | 7 day week No holidays | 2513218 |
| 3560 | 37000.40500.45800.305300.641300 | Fire rated doors | 6d | 2029-09-11 | 2029-09-16 | 3558 |  | 7 day week No holidays | 2513228 |
| 3561 | 37000.40500.45800.305400 | **50th Floor** | 42d | 2029-08-16 | 2029-09-26 |  | start no earlier than 2029-08-16 | 7 day week No holidays | 2507088 |
| 3562 | 37000.40500.45800.305400.641400 | Lift blockwork | 6d | 2029-08-16 | 2029-08-21 | 3553 |  | 7 day week No holidays | 2513238 |
| 3563 | 37000.40500.45800.305400.641500 | Lobby architrave work | 10d | 2029-08-22 | 2029-08-31 | 3562 |  | 7 day week No holidays | 2513248 |
| 3564 | 37000.40500.45800.305400.641600 | Lobby gypsum plaster | 8d | 2029-09-01 | 2029-09-08 | 3563 |  | 7 day week No holidays | 2513258 |
| 3565 | 37000.40500.45800.305400.641700 | Staircase epoxy paint | 10d | 2029-09-09 | 2029-09-18 | 3564 |  | 7 day week No holidays | 2513268 |
| 3566 | 37000.40500.45800.305400.641800 | Staircase railing | 6d | 2029-09-09 | 2029-09-14 | 3564 |  | 7 day week No holidays | 2513278 |
| 3567 | 37000.40500.45800.305400.641900 | Lobby flooring work | 8d | 2029-09-09 | 2029-09-16 | 3564 |  | 7 day week No holidays | 2513288 |
| 3568 | 37000.40500.45800.305400.642000 | Painting | 10d | 2029-09-17 | 2029-09-26 | 3567 |  | 7 day week No holidays | 2513298 |
| 3569 | 37000.40500.45800.305400.642100 | Fire rated doors | 6d | 2029-09-17 | 2029-09-22 | 3567 |  | 7 day week No holidays | 2513308 |
| 3570 | 37000.40500.45800.306700 | **51st Floor** | 42d | 2029-08-22 | 2029-10-02 |  | start no earlier than 2029-08-22 | 7 day week No holidays | 2507098 |
| 3571 | 37000.40500.45800.306700.642200 | Lift blockwork | 6d | 2029-08-22 | 2029-08-27 | 3562 |  | 7 day week No holidays | 2513318 |
| 3572 | 37000.40500.45800.306700.642300 | Lobby architrave work | 10d | 2029-08-28 | 2029-09-06 | 3571 |  | 7 day week No holidays | 2513328 |
| 3573 | 37000.40500.45800.306700.642400 | Lobby gypsum plaster | 8d | 2029-09-07 | 2029-09-14 | 3572 |  | 7 day week No holidays | 2513338 |
| 3574 | 37000.40500.45800.306700.642500 | Staircase epoxy paint | 10d | 2029-09-15 | 2029-09-24 | 3573 |  | 7 day week No holidays | 2513348 |
| 3575 | 37000.40500.45800.306700.642600 | Staircase railing | 6d | 2029-09-15 | 2029-09-20 | 3573 |  | 7 day week No holidays | 2513358 |
| 3576 | 37000.40500.45800.306700.642700 | Lobby flooring work | 8d | 2029-09-15 | 2029-09-22 | 3573 |  | 7 day week No holidays | 2513368 |
| 3577 | 37000.40500.45800.306700.642800 | Painting | 10d | 2029-09-23 | 2029-10-02 | 3576 |  | 7 day week No holidays | 2513378 |
| 3578 | 37000.40500.45800.306700.642900 | Fire rated doors | 6d | 2029-09-23 | 2029-09-28 | 3576 |  | 7 day week No holidays | 2513388 |

| ID | WBS | Task | Duration | Start | Finish | Predecessors | Constraint | Calendar | Unique_Task_ID |
| --- | --- | --- | --- | --- | --- | --- | --- | --- | --- |
| 3579 | 37000.40500.45800.310100 | **52nd Floor** | 42d | 2029-08-28 | 2029-10-08 |  | start no earlier than 2029-08-28 | 7 day week No holidays | 2507108 |
| 3580 | 37000.40500.45800.310100.643000 | Lift blockwork | 6d | 2029-08-28 | 2029-09-02 | 3571 |  | 7 day week No holidays | 2513398 |
| 3581 | 37000.40500.45800.310100.643100 | Lobby architrave work | 10d | 2029-09-03 | 2029-09-12 | 3580 |  | 7 day week No holidays | 2513408 |
| 3582 | 37000.40500.45800.310100.643200 | Lobby gypsum plaster | 8d | 2029-09-13 | 2029-09-20 | 3581 |  | 7 day week No holidays | 2513418 |
| 3583 | 37000.40500.45800.310100.643300 | Staircase epoxy paint | 10d | 2029-09-21 | 2029-09-30 | 3582 |  | 7 day week No holidays | 2513428 |
| 3584 | 37000.40500.45800.310100.643400 | Staircase railing | 6d | 2029-09-21 | 2029-09-26 | 3582 |  | 7 day week No holidays | 2513438 |
| 3585 | 37000.40500.45800.310100.643500 | Lobby flooring work | 8d | 2029-09-21 | 2029-09-28 | 3582 |  | 7 day week No holidays | 2513448 |
| 3586 | 37000.40500.45800.310100.643600 | Painting | 10d | 2029-09-29 | 2029-10-08 | 3585 |  | 7 day week No holidays | 2513458 |
| 3587 | 37000.40500.45800.310100.643700 | Fire rated doors | 6d | 2029-09-29 | 2029-10-04 | 3585 |  | 7 day week No holidays | 2513468 |
| 3588 | 37000.40500.387600 | **Capex Item procurement** | 120d | 2029-02-15 | 2029-06-14 |  | start no earlier than 2029-02-15 | 7 day week No holidays | 2507338 |
| 3589 | 37000.40500.387600.517800 | Lift | 120d | 2029-02-15 | 2029-06-14 | 2164 |  | 7 day week No holidays | 2508208 |
| 3590 | 37000.40500.387600.517900 | Panel | 120d | 2029-02-15 | 2029-06-14 | 2164 |  | 7 day week No holidays | 2508218 |
| 3591 | 37000.40500.387600.518000 | DG procurement | 120d | 2029-02-15 | 2029-06-14 | 2164 |  | 7 day week No holidays | 2508228 |
| 3592 | 37000.40500.387600.518100 | Transformer | 120d | 2029-02-15 | 2029-06-14 | 2164 |  | 7 day week No holidays | 2508238 |
| 3593 | 37000.40500.387600.518200 | Pumps | 120d | 2029-02-15 | 2029-06-14 | 2164 |  | 7 day week No holidays | 2508248 |
| 3594 | 37000.40500.387700 | **External Services** | 180d | 2029-05-16 | 2029-11-11 |  | start no earlier than 2029-05-16 | 7 day week No holidays | 2507348 |
| 3595 | 37000.40500.387700.518300 | Plumbing network | 180d | 2029-05-16 | 2029-11-11 | 2228 |  | 7 day week No holidays | 2508258 |
| 3596 | 37000.40500.387700.518400 | Electrical network | 180d | 2029-05-16 | 2029-11-11 | 2228 |  | 7 day week No holidays | 2508268 |
| 3597 | 37000.40500.387700.518500 | Electrical lighting | 180d | 2029-05-16 | 2029-11-11 | 2228 |  | 7 day week No holidays | 2508278 |
| 3598 | 37000.40500.387700.518600 | Fire fighting | 180d | 2029-05-16 | 2029-11-11 | 2228 |  | 7 day week No holidays | 2508288 |
| 3599 | 37000.40500.387700.518700 | CCTV works | 90d | 2029-05-16 | 2029-08-13 | 2228 |  | 7 day week No holidays | 2508298 |
| 3600 | 37000.40500.125700 | **Infra Works** | 180d | 2029-05-16 | 2029-11-11 |  | start no earlier than 2029-05-16 | 7 day week No holidays | 2505988 |
| 3601 | 37000.40500.125700.518800 | Compound wall | 90d | 2029-08-14 | 2029-11-11 | 2228FS+90d |  | 7 day week No holidays | 2508308 |
| 3602 | 37000.40500.125700.518900 | Entrance gate | 30d | 2029-08-14 | 2029-09-12 | 2228FS+90d |  | 7 day week No holidays | 2508318 |
| 3603 | 37000.40500.125700.519000 | STP | 120d | 2029-05-16 | 2029-09-12 | 2228 |  | 7 day week No holidays | 2508328 |
| 3604 | 37000.40500.125700.519100 | WTP | 90d | 2029-05-16 | 2029-08-13 | 2228 |  | 7 day week No holidays | 2508338 |
| 3605 | 37000.40500.125700.519200 | OWC | 45d | 2029-05-16 | 2029-06-29 | 2228 |  | 7 day week No holidays | 2508348 |
| 3606 | 37000.40500.125700.519300 | Road | 90d | 2029-05-16 | 2029-08-13 | 2228 |  | 7 day week No holidays | 2508358 |
| 3607 | 37000.40500.125700.519400 | Storm water drain | 45d | 2029-05-16 | 2029-06-29 | 2228 |  | 7 day week No holidays | 2508368 |
| 3608 | 37000.40500.125700.519500 | HIghside electrical network | 45d | 2029-05-16 | 2029-06-29 | 2228 |  | 7 day week No holidays | 2508378 |
| 3609 | 37000.40500.125700.519600 | Softscaping | 45d | 2029-05-16 | 2029-06-29 | 2228 |  | 7 day week No holidays | 2508388 |
| 3610 | 37000.40500.125700.519700 | Rain water harvesting | 45d | 2029-05-16 | 2029-06-29 | 2228 |  | 7 day week No holidays | 2508398 |
| 3611 | 37000.40500.125700.519800 | Hardscaping | 45d | 2029-05-16 | 2029-06-29 | 2228 |  | 7 day week No holidays | 2508408 |
| 3612 | 37000.40500.125700.519900 | External secturity | 45d | 2029-05-16 | 2029-06-29 | 2228 |  | 7 day week No holidays | 2508418 |
| 3613 | 37000.40500.125700.520000 | Signages | 45d | 2029-05-16 | 2029-06-29 | 2228 |  | 7 day week No holidays | 2508428 |
| 3614 | 37000.40500.125700.520100 | Green building certification | 45d | 2029-05-16 | 2029-06-29 | 2228 |  | 7 day week No holidays | 2508438 |

| ID | WBS | Task | Duration | Start | Finish | Predecessors | Complete | Constraint | Calendar | Unique_Task_ID |
| --- | --- | --- | --- | --- | --- | --- | --- | --- | --- | --- |
| 3615 | 37000.40500.404200 | **CFO** | 31d | 2030-01-11 | 2030-02-10 |  |  | start no earlier than 2030-01-11 | 7 day week No holidays | 2526478 |
| 3616 | 37000.40500.404200.520200 | CFO Application | 1d | 2030-01-11 | 2030-01-11 | 3149, 3594, 3611, 3612, 3613 |  |  | 7 day week No holidays | 2526498 |
| 3617 | 37000.40500.404200.520300 | CFO Receipt | 30d | 2030-01-12 | 2030-02-10 | 3616 |  |  | 7 day week No holidays | 2526508 |
| 3618 | 37000.40500.404300 | **OC** | 31d | 2030-02-11 | 2030-03-13 |  |  | start no earlier than 2030-02-11 | 7 day week No holidays | 2526488 |
| 3619 | 37000.40500.404300.520400 | OC Application | 1d | 2030-02-11 | 2030-02-11 | 3617 |  |  | 7 day week No holidays | 2526518 |
| 3620 | 37000.40500.404300.520500 | OC Receipt | 30d | 2030-02-12 | 2030-03-13 | 3619 |  |  | 7 day week No holidays | 2526528 |
| 3621 | 37000.40500.316000 | **Handing Over activities** | 42d | 2029-06-25 | 2029-08-05 |  |  | start no earlier than 2029-06-25 | 7 day week No holidays | 2506638 |
| 3622 | 37000.40500.316000.373300 | **Acid Wash** | 35d | 2029-06-25 | 2029-07-29 |  |  | start no earlier than 2029-06-25 | 7 day week No holidays | 2507328 |
| 3623 | 37000.40500.316000.373300.643800 | 1st to 10th Fl | 7d | 2029-06-25 | 2029-07-01 | 2568 |  |  | 7 day week No holidays | 2515078 |
| 3624 | 37000.40500.316000.373300.643900 | 11th to 20th Fl | 7d | 2029-07-02 | 2029-07-08 | 3623 |  |  | 7 day week No holidays | 2515088 |
| 3625 | 37000.40500.316000.373300.644000 | 21st to 30th Fl | 7d | 2029-07-09 | 2029-07-15 | 3624 |  |  | 7 day week No holidays | 2515098 |
| 3626 | 37000.40500.316000.373300.644100 | 31st to 40th Fl | 7d | 2029-07-16 | 2029-07-22 | 3625 |  |  | 7 day week No holidays | 2515108 |
| 3627 | 37000.40500.316000.373300.644200 | 41st to 52nd Fl | 7d | 2029-07-23 | 2029-07-29 | 3626 |  |  | 7 day week No holidays | 2515118 |
| 3628 | 37000.40500.316000.373200 | **CP & Sanitory fittings** | 35d | 2029-07-02 | 2029-08-05 |  |  | start no earlier than 2029-07-02 | 7 day week No holidays | 2507318 |
| 3629 | 37000.40500.316000.373200.644300 | 1st to 10th Fl | 7d | 2029-07-02 | 2029-07-08 | 3623 |  |  | 7 day week No holidays | 2515148 |
| 3630 | 37000.40500.316000.373200.644400 | 11th to 20th Fl | 7d | 2029-07-09 | 2029-07-15 | 3629 |  |  | 7 day week No holidays | 2515158 |
| 3631 | 37000.40500.316000.373200.644500 | 21st to 30th Fl | 7d | 2029-07-16 | 2029-07-22 | 3630 |  |  | 7 day week No holidays | 2515168 |
| 3632 | 37000.40500.316000.373200.644600 | 31st to 40th Fl | 7d | 2029-07-23 | 2029-07-29 | 3631 |  |  | 7 day week No holidays | 2515178 |
| 3633 | 37000.40500.316000.373200.644700 | 41st to 52nd Fl | 7d | 2029-07-30 | 2029-08-05 | 3632 |  |  | 7 day week No holidays | 2515188 |
| 3634 | 37000.40500.53400 | **TB Milestones** | 1579d | 2024-10-14 | 2029-02-08 |  | 4% | start no earlier than 2024-10-14 | 7 day week No holidays | 8606054 |
| 3635 | 37000.40500.53400.53700 | **TB Milestones** | 1579d | 2024-10-14 | 2029-02-08 |  | 4% | start no earlier than 2024-10-14 | 7 day week No holidays | 8606064 |
| 3636 | 37000.40500.53400.53700.644800 | On Initiation of Excavation | 1d | 2024-10-14 | 2024-10-14 |  | 100% | start no earlier than 2024-10-14 | Indian Calendar | 8606065 |
| 3637 | 37000.40500.53400.53700.644900 | On Completion of Excavation | 1d | 2025-04-01 | 2025-04-01 |  |  | start no earlier than 2025-04-01 | 7 day week No holidays | 8606084 |
| 3638 | 37000.40500.53400.53700.645000 | Completion of Raft | 1d | 2025-05-14 | 2025-05-14 |  |  | start no earlier than 2025-05-14 | 7 day week No holidays | 8606094 |
| 3639 | 37000.40500.53400.53700.645100 | Completion of 1st basement slab | 1d | 2025-06-28 | 2025-06-28 |  |  | start no earlier than 2025-06-28 | 7 day week No holidays | 8606104 |
| 3640 | 37000.40500.53400.53700.645200 | On completion of Plinth | 1d | 2025-08-12 | 2025-08-12 |  |  | start no earlier than 2025-08-12 | 7 day week No holidays | 8606114 |
| 3641 | 37000.40500.53400.53700.645300 | Completion 1st Floor slab | 1d | 2025-09-26 | 2025-09-26 |  |  | start no earlier than 2025-09-26 | 7 day week No holidays | 8606124 |
| 3642 | 37000.40500.53400.53700.3791500 | Completion 3rd Floor slab | 1d | 2025-11-05 | 2025-11-05 |  |  | start no earlier than 2025-11-05 | Indian Calendar | 8606125 |
| 3643 | 37000.40500.53400.53700.3791400 | On Completion of Lobby | 1d | 2025-10-25 | 2025-10-25 |  |  | start no earlier than 2025-10-25 | Indian Calendar | 8606134 |
| 3644 | 37000.40500.53400.53700.3791300 | Completion 9th Floor slab | 1d | 2029-01-01 | 2029-01-01 |  |  | start no earlier than 2029-01-01 | Indian Calendar | 8606144 |
| 3645 | 37000.40500.53400.53700.3791200 | initiation of 10th slab | 1d | 2029-01-01 | 2029-01-01 |  |  | start no earlier than 2029-01-01 | Indian Calendar | 8606154 |
| 3646 | 37000.40500.53400.53700.3791100 | Completion 18th Floor slab | 1d | 2029-01-01 | 2029-01-01 |  |  | start no earlier than 2029-01-01 | Indian Calendar | 8606164 |
| 3647 | 37000.40500.53400.53700.3791000 | initiation of 20th slab | 1d | 2029-01-01 | 2029-01-01 |  |  | start no earlier than 2029-01-01 | Indian Calendar | 8606174 |
| 3648 | 37000.40500.53400.53700.3790900 | Completion 27th Floor slab | 1d | 2029-01-01 | 2029-01-01 |  |  | start no earlier than 2029-01-01 | Indian Calendar | 8606194 |
| 3649 | 37000.40500.53400.53700.3790800 | initiation of 30th slab | 1d | 2029-01-01 | 2029-01-01 |  |  | start no earlier than 2029-01-01 | Indian Calendar | 8606204 |
| 3650 | 37000.40500.53400.53700.3790700 | Completion 36th Floor slab | 1d | 2029-01-01 | 2029-01-01 |  |  | start no earlier than 2029-01-01 | Indian Calendar | 8606214 |
| 3651 | 37000.40500.53400.53700.3790600 | initiation of 40th slab | 1d | 2029-01-01 | 2029-01-01 |  |  | start no earlier than 2029-01-01 | Indian Calendar | 8606224 |
| 3652 | 37000.40500.53400.53700.3790500 | Completion 45th Floor slab | 1d | 2029-01-01 | 2029-01-01 |  |  | start no earlier than 2029-01-01 | Indian Calendar | 8606234 |
| 3653 | 37000.40500.53400.53700.3790400 | Completion 54th Floor slab | 1d | 2029-01-01 | 2029-01-01 |  |  | start no earlier than 2029-01-01 | Indian Calendar | 8606244 |
| 3654 | 37000.40500.53400.53700.3790300 | On Completion of Terrace Slab | 1d | 2029-01-01 | 2029-01-01 |  |  | start no earlier than 2029-01-01 | Indian Calendar | 8606254 |
| 3655 | 37000.40500.53400.53700.3790200 | On completion of the walls, internal plaster, floorings of the said Apartment | 1d | 2029-01-01 | 2029-01-01 |  |  | start no earlier than 2029-01-01 | Indian Calendar | 8606264 |
| 3656 | 37000.40500.53400.53700.3790100 | On completion of the staircases and lift wells | 1d | 2029-01-01 | 2029-01-01 |  |  | start no earlier than 2029-01-01 | Indian Calendar | 8606274 |
| 3657 | 37000.40500.53400.53700.3790000 | On completion of Elevation and external plumbing of said apartment | 1d | 2029-01-01 | 2029-01-01 |  |  | start no earlier than 2029-01-01 | Indian Calendar | 8606284 |
| 3658 | 37000.40500.53400.53700.3789900 | On completion of water Pumps and Electrical Fittings of said apartment | 1d | 2029-01-01 | 2029-01-01 |  |  | start no earlier than 2029-01-01 | Indian Calendar | 8606294 |
| 3659 | 37000.40500.53400.53700.3789800 | On Application of OC | 1d | 2029-01-01 | 2029-01-01 |  |  | start no earlier than 2029-01-01 | Indian Calendar | 8606304 |
| 3660 | 37000.40500.53400.53700.3789700 | Possession | 1d | 2029-02-08 | 2029-02-08 |  |  | start no earlier than 2029-02-08 | Indian Calendar | 8606314 |

| ID | WBS | Task | Duration | Start | Finish | Predecessors | Complete | Constraint | Calendar | Unique_Task_ID |
| --- | --- | --- | --- | --- | --- | --- | --- | --- | --- | --- |
| 3667 | 37000.52900 | **NTA** | 1978d | 2023-05-30 | 2028-10-27 |  | 11% | start no earlier than 2023-05-30 | 7 day week No holidays | 2449848 |
| 3668 | 37000.52900.56900 | **NTA - Part 1 Rehab** | 1314d | 2024-01-04 | 2027-08-09 |  | 4% | start no earlier than 2024-01-04 | 7 day week No holidays | 2449788 |
| 3669 | 37000.52900.56900.440500 | Piling Work & Rock Anchoring | 99d | 2024-01-04 | 2025-03-31 |  | 100% | must start on 2023-05-25 | 7 day week No holidays | 2449789 |
| 3670 | 37000.52900.56900.520600 | Piling Work & Rock | 55d | 2025-06-30 | 2025-09-01 | 3669FS+77d |  |  | Indian Calendar | 10032669 |
| 3671 | 37000.52900.56900.520700 | Excavation | 183d | 2025-06-12 | 2025-12-11 | 3670FS-82d |  |  | 7 day week No holidays | 2449790 |
| 3672 | 37000.52900.56900.440400 | UGT & pumproom shifting | 11d | 2025-03-22 | 2025-04-11 | 3671FS-266d | 9% |  | Indian Calendar | 2449791 |
| 3673 | 37000.52900.56900.392600 | **RCC - Upto Plinth** | 105d | 2025-08-24 | 2025-12-06 |  |  | start no earlier than 2025-08-24 | 7 day week No holidays | 2449808 |
| 3674 | 37000.52900.56900.392600.645400 | Raft | 26d | 2025-08-24 | 2025-09-18 | 3672FS+134d |  |  | 7 day week No holidays | 2504598 |
| 3675 | 37000.52900.56900.392600.645500 | RCC - Basement 2 | 25d | 2025-09-14 | 2025-10-08 | 3674FS-5d |  |  | 7 day week No holidays | 2504608 |
| 3676 | 37000.52900.56900.392600.645600 | RCC - Basement 1 | 28d | 2025-10-09 | 2025-11-05 | 3675 |  |  | 7 day week No holidays | 2504618 |
| 3677 | 37000.52900.56900.392600.645700 | RCC - Ground fl | 31d | 2025-11-06 | 2025-12-06 | 3676 |  |  | 7 day week No holidays | 2504628 |
| 3678 | 37000.52900.56900.346100 | **RCC - Above Plinth** | 181d | 2025-12-07 | 2026-06-05 |  |  | start no earlier than 2025-12-07 | 7 day week No holidays | 2449798 |
| 3679 | 37000.52900.56900.346100.645800 | RCC - Podium 1 | 25d | 2025-12-07 | 2025-12-31 | 3677 |  |  | 7 day week No holidays | 2449799 |
| 3680 | 37000.52900.56900.346100.645900 | RCC - Podium 2 | 30d | 2026-01-01 | 2026-01-30 | 3679 |  |  | 7 day week No holidays | 2449809 |
| 3681 | 37000.52900.56900.346100.646000 | RCC - Podium 3 | 25d | 2026-01-31 | 2026-02-24 | 3680 |  |  | 7 day week No holidays | 2449819 |
| 3682 | 37000.52900.56900.346100.646100 | RCC - Podium 4 | 25d | 2026-02-20 | 2026-03-16 | 3681FS-5d |  |  | 7 day week No holidays | 2449829 |
| 3683 | 37000.52900.56900.346100.646200 | RCC - Podium 5 | 25d | 2026-03-12 | 2026-04-05 | 3682FS-5d |  |  | 7 day week No holidays | 2449839 |
| 3684 | 37000.52900.56900.346100.646300 | RCC - Podium 6 | 31d | 2026-04-16 | 2026-05-16 | 3683FS+10d |  |  | 7 day week No holidays | 2449849 |
| 3685 | 37000.52900.56900.346100.646400 | RCC - Podium 7/Terrace | 20d | 2026-05-17 | 2026-06-05 | 3684 |  |  | 7 day week No holidays | 2449859 |
| 3686 | 37000.52900.56900.90900 | **Finishing & Services** | 430d | 2026-06-06 | 2027-08-09 |  |  | start no earlier than 2026-06-06 | 7 day week No holidays | 2449870 |
| 3687 | 37000.52900.56900.90900.646500 | Blockwork | 40d | 2026-06-06 | 2026-07-15 | 3678 |  |  | 7 day week No holidays | 2449871 |
| 3688 | 37000.52900.56900.90900.646600 | RCC Shaft Readiness/Postpour work | 45d | 2026-06-06 | 2026-07-20 | 3685 |  |  | 7 day week No holidays | 2449881 |
| 3689 | 37000.52900.56900.90900.646700 | Electrical Work | 15d | 2026-07-16 | 2026-07-30 | 3687 |  |  | 7 day week No holidays | 2449872 |
| 3690 | 37000.52900.56900.90900.646800 | Plumbing | 240d | 2026-07-21 | 2027-03-17 | 3688 |  |  | 7 day week No holidays | 2449882 |
| 3691 | 37000.52900.56900.90900.646900 | Fire Fighting | 240d | 2026-07-21 | 2027-03-17 | 3688 |  |  | 7 day week No holidays | 2449892 |
| 3692 | 37000.52900.56900.90900.647000 | Staircase Gypsum | 120d | 2026-07-16 | 2026-11-12 | 3687 |  |  | 7 day week No holidays | 2449912 |
| 3693 | 37000.52900.56900.90900.647100 | Staircase Flooring | 180d | 2026-11-13 | 2027-05-11 | 3692 |  |  | 7 day week No holidays | 2449922 |
| 3694 | 37000.52900.56900.90900.647200 | Staircase-Door FRD | 90d | 2027-05-12 | 2027-08-09 | 3693 |  |  | 7 day week No holidays | 2449932 |
| 3695 | 37000.52900.56900.90900.647300 | Gypsum work | 45d | 2026-07-31 | 2026-09-13 | 3689 |  |  | 7 day week No holidays | 2449873 |
| 3696 | 37000.52900.56900.90900.647400 | FAPA | 90d | 2026-07-21 | 2026-10-18 | 3688 |  |  | 7 day week No holidays | 2449874 |
| 3697 | 37000.52900.56900.90900.647500 | Lift installation | 120d | 2026-07-21 | 2026-11-17 | 3688 |  |  | 7 day week No holidays | 2449884 |
| 3698 | 37000.52900.56900.90900.647600 | Railing work | 15d | 2026-09-14 | 2026-09-28 | 3695 |  |  | 7 day week No holidays | 2449875 |
| 3699 | 37000.52900.56900.90900.647700 | Toilet completion | 30d | 2026-09-14 | 2026-10-13 | 3695 |  |  | 7 day week No holidays | 2449876 |
| 3700 | 37000.52900.56900.90900.647800 | VDF Flooring | 120d | 2026-07-21 | 2026-11-17 | 3688 |  |  | 7 day week No holidays | 2449886 |
| 3701 | 37000.52900.56900.90900.647900 | Basement Gratings | 60d | 2027-05-12 | 2027-07-10 | 3693 |  |  | 7 day week No holidays | 2449894 |
| 3702 | 37000.52900.56900.90900.648000 | External Painting | 120d | 2026-09-14 | 2027-01-11 | 3695 |  |  | 7 day week No holidays | 2449902 |
| 3703 | 37000.52900.56900.90900.648100 | Internal Painting | 30d | 2026-11-18 | 2026-12-17 | 3700 |  |  | 7 day week No holidays | 7296014 |

| ID | WBS | Task | Duration | Start | Finish | Predecessors | Complete | Constraint | Calendar | Unique_Task_ID |
| --- | --- | --- | --- | --- | --- | --- | --- | --- | --- | --- |
| 3704 | 37000.52900.53300 | **NTA - Part 2A MOSA** | 1418d | 2023-05-30 | 2027-04-16 |  | 34% | start no earlier than 2023-05-30 | 7 day week No holidays | 2504778 |
| 3705 | 37000.52900.53300.440300 | Piling Work | 0.82d | 2023-05-30 | 2023-05-30 |  | 100% | start no earlier than 2023-05-30 | 7 day week No holidays | 2504808 |
| 3706 | 37000.52900.53300.440200 | Excavation | 80.58d | 2023-08-23 | 2024-12-08 | 3705FS-470.75d | 100% |  | 7 day week No holidays | 2504818 |
| 3707 | 37000.52900.53300.404600 | **RCC - Upto Plinth** | 431d | 2023-10-05 | 2024-12-08 |  | 100% | start no earlier than 2023-10-05 | 7 day week No holidays | 2504798 |
| 3708 | 37000.52900.53300.404600.449000 | RCC - Ground fl | 181.42d | 2023-10-05 | 2024-12-08 | 3706FS-409.07d | 100% |  | 7 day week No holidays | 2504838 |
| 3709 | 37000.52900.53300.404700 | **NTA - Part 2A Pour 3** | 158d | 2024-12-24 | 2025-05-30 |  | 40% | start no earlier than 2024-12-24 | 7 day week No holidays | 2504839 |
| 3710 | 37000.52900.53300.404700.449100 | RCC upto ground floor | 100d | 2024-12-24 | 2025-05-30 |  | 40% | start no earlier than 2024-12-24 | 7 day week No holidays | 9360624 |
| 3711 | 37000.52900.53300.440100 | RCC - Podium 2 -Columns | 15d | 2025-01-29 | 2025-04-12 | 3710FS-152d | 20% |  | 7 day week No holidays | 9417634 |
| 3712 | 37000.52900.53300.520800 | RCC - Podium 2 - Slab | 22d | 2025-04-21 | 2025-05-15 | 3710FS-35d |  |  | Indian Calendar | 9417635 |
| 3713 | 37000.52900.53300.520900 | RCC - Podium 3 | 25d | 2025-05-16 | 2025-06-09 | 3712 |  |  | 7 day week No holidays | 9417644 |
| 3714 | 37000.52900.53300.521000 | RCC - Podium 4 | 25d | 2025-06-30 | 2025-07-24 | 3713FS+20d |  |  | 7 day week No holidays | 9417654 |
| 3715 | 37000.52900.53300.521100 | RCC - Podium 5 | 25d | 2025-07-25 | 2025-08-18 | 3714 |  |  | 7 day week No holidays | 9417664 |
| 3716 | 37000.52900.53300.521200 | RCC - Podium 6 | 25d | 2025-08-19 | 2025-09-12 | 3715 |  |  | 7 day week No holidays | 9417674 |
| 3717 | 37000.52900.53300.521300 | RCC - Podium 7 | 35d | 2025-09-13 | 2025-10-17 | 3716 |  |  | 7 day week No holidays | 9417684 |
| 3718 | 37000.52900.53300.300100 | **RCC - Above Plinth Pour 1 & Pour 2** | 497d | 2023-09-22 | 2025-01-30 |  | 100% | start no earlier than 2023-09-22 | 7 day week No holidays | 2504788 |
| 3719 | 37000.52900.53300.300100.449200 | RCC - Podium 1 | 120d | 2023-09-22 | 2024-01-19 |  | 100% | start no earlier than 2023-09-22 | 7 day week No holidays | 2504848 |
| 3720 | 37000.52900.53300.300100.449300 | RCC - Podium 2 | 72.66d | 2024-01-20 | 2024-09-29 | 3719FS-183.94d | 100% |  | 7 day week No holidays | 2504858 |
| 3721 | 37000.52900.53300.300100.449400 | RCC - Podium 3 | 58.97d | 2024-04-27 | 2024-10-19 | 3720FS-164.74d | 100% |  | 7 day week No holidays | 2504898 |
| 3722 | 37000.52900.53300.300100.449500 | RCC - Podium 4 | 34d | 2024-06-29 | 2024-10-30 | 3721FS-93d | 100% | start no earlier than 2024-06-29 | 7 day week No holidays | 2504908 |
| 3723 | 37000.52900.53300.300100.449600 | RCC - Podium 5 | 4d | 2024-07-29 | 2024-12-08 | 3722FS-132d | 100% |  | 7 day week No holidays | 2504918 |
| 3724 | 37000.52900.53300.300100.449700 | RCC - Podium 6 | 396.66d | 2023-11-08 | 2024-12-08 | 3723FS-385.85d | 100% |  | 7 day week No holidays | 2504928 |
| 3725 | 37000.52900.53300.300100.449800 | RCC - Podium 7/Terrace Pour 1 | 10d | 2024-09-23 | 2024-12-31 | 3724FS-97d | 100% | start no earlier than 2024-09-23 | 7 day week No holidays | 2504938 |
| 3726 | 37000.52900.53300.300100.449900 | RCC - Podium 7/Terrace Pour 2 | 4d | 2025-01-27 | 2025-01-30 |  | 100% | start no earlier than 2025-01-27 | 7 day week No holidays | 2504939 |
| 3727 | 37000.52900.53300.91000 | **Finishing & Services** | 430d | 2026-02-11 | 2027-04-16 |  |  | start no earlier than 2026-02-11 | 7 day week No holidays | 2505068 |
| 3728 | 37000.52900.53300.91000.648200 | Blockwork | 40d | 2026-02-11 | 2026-03-22 | 3787 |  |  | 7 day week No holidays | 2505078 |
| 3729 | 37000.52900.53300.91000.648300 | RCC Shaft Readiness/Postpour work | 45d | 2026-03-23 | 2026-05-06 | 3728 |  |  | 7 day week No holidays | 2505079 |
| 3730 | 37000.52900.53300.91000.648400 | Electrical Work | 15d | 2026-03-23 | 2026-04-06 | 3728 |  |  | 7 day week No holidays | 2505088 |
| 3731 | 37000.52900.53300.91000.648500 | Plumbing | 240d | 2026-05-07 | 2027-01-01 | 3729 |  |  | 7 day week No holidays | 2505089 |
| 3732 | 37000.52900.53300.91000.648600 | Fire fighting | 240d | 2026-05-07 | 2027-01-01 | 3729 |  |  | 7 day week No holidays | 2505090 |
| 3733 | 37000.52900.53300.91000.648700 | Staircase Gypsum | 120d | 2026-03-23 | 2026-07-20 | 3728 |  |  | 7 day week No holidays | 2505092 |
| 3734 | 37000.52900.53300.91000.648800 | Staircase Flooring | 180d | 2026-07-21 | 2027-01-16 | 3733 |  |  | 7 day week No holidays | 2505093 |
| 3735 | 37000.52900.53300.91000.648900 | Staircase-Door FRD | 90d | 2027-01-17 | 2027-04-16 | 3734 |  |  | 7 day week No holidays | 2505094 |
| 3736 | 37000.52900.53300.91000.649000 | Gypsum work | 45d | 2026-04-07 | 2026-05-21 | 3730 |  |  | 7 day week No holidays | 2505098 |
| 3737 | 37000.52900.53300.91000.649100 | FAPA | 90d | 2026-05-07 | 2026-08-04 | 3729 |  |  | 7 day week No holidays | 2505099 |
| 3738 | 37000.52900.53300.91000.649200 | Lift installation | 120d | 2026-05-07 | 2026-09-03 | 3729 |  |  | 7 day week No holidays | 2505100 |
| 3739 | 37000.52900.53300.91000.649300 | Railing work | 15d | 2026-05-22 | 2026-06-05 | 3736 |  |  | 7 day week No holidays | 2505118 |
| 3740 | 37000.52900.53300.91000.649400 | Toilet completion | 30d | 2026-05-22 | 2026-06-20 | 3736 |  |  | 7 day week No holidays | 2505128 |
| 3741 | 37000.52900.53300.91000.649500 | VDF Flooring | 120d | 2026-05-07 | 2026-09-03 | 3729 |  |  | 7 day week No holidays | 2505129 |
| 3742 | 37000.52900.53300.91000.649600 | Basement Gratings | 60d | 2027-01-17 | 2027-03-17 | 3734 |  |  | 7 day week No holidays | 2505101 |
| 3743 | 37000.52900.53300.91000.649700 | External Painting | 120d | 2026-05-22 | 2026-09-18 | 3736 |  |  | 7 day week No holidays | 2505091 |
| 3744 | 37000.52900.53300.91000.649800 | Internal Painting | 30d | 2026-06-21 | 2026-07-20 | 3740 |  |  | 7 day week No holidays | 2505138 |
| 3745 | 37000.52900.53300.521400 | Ground Floor entrance driveway finishes | 11.25d | 2025-04-01 | 2025-04-14 | 3722 |  |  | Indian Calendar | 2505148 |
| 3746 | 37000.52900.53300.521500 | Ground Floor entrance driveway finishes | 90d | 2026-02-14 | 2026-05-30 | 3745 |  |  | Indian Calendar | 2505158 |

| ID | WBS | Task | Duration | Start | Finish | Predecessors | Complete | Constraint | Calendar | Unique_Task_ID |
| --- | --- | --- | --- | --- | --- | --- | --- | --- | --- | --- |
| 3747 | 37000.52900.56800 | **NTA - Part 2B MOSA** | 1416.68d | 2023-07-28 | 2027-06-13 |  | 2% | start no earlier than 2023-07-28 | 7 day week No holidays | 2526108 |
| 3748 | 37000.52900.56800.521600 | Piling Work | 48.43d | 2023-07-28 | 2025-05-16 | 3706FS-658.18d | 6% |  | 7 day week No holidays | 2526148 |
| 3749 | 37000.52900.56800.431800 | Excavation | 7d | 2024-03-16 | 2024-04-04 | 3748FS+19.11d | 100% | start no earlier than 2024-03-16 | 7 day week No holidays | 2526158 |
| 3750 | 37000.52900.56800.91100 | **RCC - Upto Plinth** | 546d | 2024-04-28 | 2025-10-25 |  | 38% | start no earlier than 2024-04-28 | 7 day week No holidays | 2526138 |
| 3751 | 37000.52900.56800.91100.463000 | RCC - Ground fl - Pile Caps, Tie beams & Columns | 59d | 2024-04-28 | 2025-03-30 | 3749FS-8d | 100% | start no earlier than 2024-04-28 | 7 day week No holidays | 2526168 |
| 3753 | 37000.52900.56800.91100.649900 | Pathway removal | 90d | 2025-07-14 | 2025-10-25 | 3774 |  |  | Indian Calendar | 2526169 |
| 3769 | 37000.52900.56800.315100 | **RCC - Above Plinth** | 264d | 2025-01-30 | 2025-10-20 |  |  | start no earlier than 2025-01-30 | 7 day week No holidays | 2526128 |
| 3770 | 37000.52900.56800.315100.650000 | Ground floor | 25d | 2025-04-01 | 2025-04-29 | 3751 |  |  | Indian Calendar | 2526129 |
| 3771 | 37000.52900.56800.315100.650100 | RCC - Podium 1 | 25d | 2025-04-29 | 2025-05-23 | 3770FS-1d |  |  | 7 day week No holidays | 2526178 |
| 3772 | 37000.52900.56800.315100.463100 | RCC - Podium 2 | 25d | 2025-01-30 | 2025-05-23 | 3770FS-90d | 8% |  | 7 day week No holidays | 2526188 |
| 3773 | 37000.52900.56800.315100.650200 | RCC - Podium 3 | 25d | 2025-05-24 | 2025-06-17 | 3772 |  |  | 7 day week No holidays | 2526198 |
| 3774 | 37000.52900.56800.315100.650300 | RCC - Podium 4 | 25d | 2025-06-18 | 2025-07-12 | 3773 |  |  | 7 day week No holidays | 2526208 |
| 3775 | 37000.52900.56800.315100.650400 | RCC - Podium 5 | 25d | 2025-07-13 | 2025-08-06 | 3774 |  |  | 7 day week No holidays | 2526218 |
| 3776 | 37000.52900.56800.315100.650500 | RCC - Podium 6 | 25d | 2025-08-07 | 2025-08-31 | 3775 |  |  | 7 day week No holidays | 2526228 |
| 3777 | 37000.52900.56800.315100.650600 | RCC - Podium 7/Terrace | 50d | 2025-09-01 | 2025-10-20 | 3776 |  |  | 7 day week No holidays | 2526238 |
| 3778 | 37000.52900.56800.315800 | **RCC Above plinth Pour 3** | 271d | 2025-04-01 | 2026-02-10 |  |  | start no earlier than 2025-04-01 | Indian Calendar | 9837006 |
| 3779 | 37000.52900.56800.315800.650700 | RCC - Ground fl | 25d | 2025-07-14 | 2025-08-11 | 3774 |  |  | Indian Calendar | 9837016 |
| 3780 | 37000.52900.56800.315800.650800 | RCC - Podium 2 | 21d | 2025-04-01 | 2025-04-24 |  |  | start no earlier than 2025-04-01 | Indian Calendar | 9837017 |
| 3781 | 37000.52900.56800.315800.650900 | RCC - Podium 2 | 15d | 2025-08-12 | 2025-08-28 | 3779, 3780 |  |  | Indian Calendar | 9837026 |
| 3782 | 37000.52900.56800.315800.651000 | RCC - Podium 2 | 31d | 2025-08-06 | 2025-09-10 | 3779FS-5d |  |  | Indian Calendar | 9837027 |
| 3783 | 37000.52900.56800.315800.651100 | RCC - Podium 3 | 21d | 2025-09-11 | 2025-10-04 | 3782 |  |  | Indian Calendar | 9837036 |
| 3784 | 37000.52900.56800.315800.651200 | RCC - Podium 4 | 25d | 2025-10-02 | 2025-10-30 | 3783FS-3d |  |  | Indian Calendar | 9837046 |
| 3785 | 37000.52900.56800.315800.651300 | RCC - Podium 5 | 24d | 2025-10-28 | 2025-11-24 | 3784FS-3d |  |  | Indian Calendar | 9837056 |
| 3786 | 37000.52900.56800.315800.651400 | RCC - Podium 6 | 24d | 2025-12-04 | 2025-12-31 | 3785FS+8d |  |  | Indian Calendar | 9837066 |
| 3787 | 37000.52900.56800.315800.651500 | RCC - Podium 7/Terrace | 35d | 2026-01-01 | 2026-02-10 | 3786 |  |  | Indian Calendar | 9837076 |

| ID | WBS | Task | Duration | Start | Finish | Predecessors | Constraint | Calendar | Unique_Task_ID |
| --- | --- | --- | --- | --- | --- | --- | --- | --- | --- |
| 3789 | 37000.52900.56800.91200 | **Finishing & Services** | 651d | 2025-09-01 | 2027-06-13 |  | start no earlier than 2025-09-01 | 7 day week No holidays | 2526118 |
| 3790 | 37000.52900.56800.91200.651600 | Blockwork | 40d | 2026-04-10 | 2026-05-19 | 3787FS+58d |  | 7 day week No holidays | 2526248 |
| 3791 | 37000.52900.56800.91200.651700 | RCC Shaft Readiness/Postpour work | 50d | 2025-09-01 | 2025-10-20 | 3776 |  | 7 day week No holidays | 2526258 |
| 3792 | 37000.52900.56800.91200.651800 | Electrical Work | 15d | 2026-05-20 | 2026-06-03 | 3790 |  | 7 day week No holidays | 2526268 |
| 3793 | 37000.52900.56800.91200.651900 | Plumbing | 240d | 2025-10-21 | 2026-06-17 | 3791 |  | 7 day week No holidays | 2526278 |
| 3794 | 37000.52900.56800.91200.652000 | Fire fighting | 240d | 2025-10-21 | 2026-06-17 | 3791 |  | 7 day week No holidays | 2526288 |
| 3795 | 37000.52900.56800.91200.652100 | Staircase Gypsum | 120d | 2026-05-20 | 2026-09-16 | 3790 |  | 7 day week No holidays | 2526298 |
| 3796 | 37000.52900.56800.91200.652200 | Staircase Flooring | 180d | 2026-09-17 | 2027-03-15 | 3795 |  | 7 day week No holidays | 2526308 |
| 3797 | 37000.52900.56800.91200.652300 | Staircase-Door FRD | 90d | 2027-03-16 | 2027-06-13 | 3796 |  | 7 day week No holidays | 2526318 |
| 3798 | 37000.52900.56800.91200.652400 | Gypsum work | 45d | 2026-06-04 | 2026-07-18 | 3792 |  | 7 day week No holidays | 2526328 |
| 3799 | 37000.52900.56800.91200.652500 | FAPA | 90d | 2025-10-21 | 2026-01-18 | 3791 |  | 7 day week No holidays | 2526338 |
| 3800 | 37000.52900.56800.91200.652600 | Lift installation | 120d | 2025-10-21 | 2026-02-17 | 3791 |  | 7 day week No holidays | 2526348 |
| 3801 | 37000.52900.56800.91200.652700 | Railing work | 15d | 2026-07-19 | 2026-08-02 | 3798 |  | 7 day week No holidays | 2526358 |
| 3802 | 37000.52900.56800.91200.652800 | Toilet completion | 30d | 2026-07-19 | 2026-08-17 | 3798 |  | 7 day week No holidays | 2526368 |
| 3803 | 37000.52900.56800.91200.652900 | VDF Flooring | 120d | 2025-10-21 | 2026-02-17 | 3791 |  | 7 day week No holidays | 2526378 |
| 3804 | 37000.52900.56800.91200.653000 | Basement Gratings | 60d | 2027-03-16 | 2027-05-14 | 3796 |  | 7 day week No holidays | 2526388 |
| 3805 | 37000.52900.56800.91200.653100 | External Painting | 120d | 2026-07-19 | 2026-11-15 | 3798 |  | 7 day week No holidays | 2526398 |
| 3806 | 37000.52900.56800.91200.653200 | Internal Painting | 30d | 2026-08-18 | 2026-09-16 | 3802 |  | 7 day week No holidays | 2526408 |
| 3809 | 37000.52900.56800.372600 | **PATHWAY Slab** | 300d | 2026-04-20 | 2027-04-03 |  | start no earlier than 2026-04-20 | Indian Calendar | 2526409 |
| 3810 | 37000.52900.56800.372600.653300 | Podium 2 slab -PW | 100d | 2026-04-20 | 2026-08-13 | 3753FS+150d |  | Indian Calendar | 7927212 |
| 3811 | 37000.52900.56800.372600.653400 | Podium 3 slab -PW | 35d | 2026-08-14 | 2026-09-23 | 3810 |  | Indian Calendar | 7927222 |
| 3812 | 37000.52900.56800.372600.653500 | Podium 4 Slab- PW | 25d | 2026-09-24 | 2026-10-22 | 3811 |  | Indian Calendar | 7927232 |
| 3813 | 37000.52900.56800.372600.653600 | Podium 5 slab- PW | 35d | 2026-10-23 | 2026-12-02 | 3812 |  | Indian Calendar | 7927242 |
| 3814 | 37000.52900.56800.372600.653700 | Podium 6 Slab -PW | 45d | 2026-12-03 | 2027-01-23 | 3813 |  | Indian Calendar | 7927252 |
| 3815 | 37000.52900.56800.372600.653800 | Podium 7 Slab -PW | 60d | 2027-01-25 | 2027-04-03 | 3814 |  | Indian Calendar | 7927262 |

| ID | WBS | Task | Duration | Start | Finish | Predecessors | Complete | Constraint | Calendar | Unique_Task_ID |
| --- | --- | --- | --- | --- | --- | --- | --- | --- | --- | --- |
| 3816 | 37000.52900.57300 | **NTA - Part 3 PPL** | 1765d | 2023-12-29 | 2028-10-27 |  | 1% | start no earlier than 2023-12-29 | 7 day week No holidays | 7284444 |
| 3817 | 37000.52900.57300.431700 | Piling Work | 100d | 2023-12-29 | 2025-06-15 |  | 24% | must start on 2024-04-01 | 7 day week No holidays | 7289584 |
| 3818 | 37000.52900.57300.521700 | Excavation | 270d | 2026-02-25 | 2026-11-21 | 3681 |  |  | 7 day week No holidays | 7289594 |
| 3819 | 37000.52900.57300.392700 | **RCC - Upto Plinth** | 101d | 2026-11-22 | 2027-03-02 |  |  | start no earlier than 2026-11-22 | 7 day week No holidays | 2449768 |
| 3820 | 37000.52900.57300.392700.653900 | Raft | 26d | 2026-11-22 | 2026-12-17 | 3818 |  |  | 7 day week No holidays | 2449769 |
| 3821 | 37000.52900.57300.392700.654000 | RCC - Basement 2 | 25d | 2026-12-18 | 2027-01-11 | 3820 |  |  | 7 day week No holidays | 2449770 |
| 3822 | 37000.52900.57300.392700.654100 | RCC - Basement 1 | 25d | 2027-01-12 | 2027-02-05 | 3821 |  |  | 7 day week No holidays | 2449771 |
| 3823 | 37000.52900.57300.392700.654200 | RCC - Ground fl | 25d | 2027-02-06 | 2027-03-02 | 3822 |  |  | 7 day week No holidays | 2449772 |
| 3824 | 37000.52900.57300.328200 | **RCC - Above Plinth** | 175d | 2027-03-03 | 2027-08-24 |  |  | start no earlier than 2027-03-03 | 7 day week No holidays | 2449778 |
| 3825 | 37000.52900.57300.328200.654300 | RCC - Podium 1 | 25d | 2027-03-03 | 2027-03-27 | 3823 |  |  | 7 day week No holidays | 2449779 |
| 3826 | 37000.52900.57300.328200.654400 | RCC - Podium 2 | 25d | 2027-03-28 | 2027-04-21 | 3825 |  |  | 7 day week No holidays | 2504948 |
| 3827 | 37000.52900.57300.328200.654500 | RCC - Podium 3 | 25d | 2027-04-22 | 2027-05-16 | 3826 |  |  | 7 day week No holidays | 2504958 |
| 3828 | 37000.52900.57300.328200.654600 | RCC - Podium 4 | 25d | 2027-05-17 | 2027-06-10 | 3827 |  |  | 7 day week No holidays | 2504968 |
| 3829 | 37000.52900.57300.328200.654700 | RCC - Podium 5 | 25d | 2027-06-11 | 2027-07-05 | 3828 |  |  | 7 day week No holidays | 2504978 |
| 3830 | 37000.52900.57300.328200.654800 | RCC - Podium 6 | 25d | 2027-07-06 | 2027-07-30 | 3829 |  |  | 7 day week No holidays | 2504988 |
| 3831 | 37000.52900.57300.328200.654900 | RCC - Podium 7/Terrace | 25d | 2027-07-31 | 2027-08-24 | 3830 |  |  | 7 day week No holidays | 2504998 |
| 3832 | 37000.52900.57300.521800 | Above Terrace Work | 40d | 2027-08-25 | 2027-10-03 | 3831 |  |  | 7 day week No holidays | 2505008 |
| 3833 | 37000.52900.57300.91300 | **Finishing & Services** | 430d | 2027-08-25 | 2028-10-27 |  |  | start no earlier than 2027-08-25 | 7 day week No holidays | 7284454 |
| 3834 | 37000.52900.57300.91300.655000 | Blockwork | 40d | 2027-08-25 | 2027-10-03 | 3824 |  |  | 7 day week No holidays | 2505298 |
| 3835 | 37000.52900.57300.91300.655100 | RCC Shaft Readiness/Postpour work | 45d | 2027-08-25 | 2027-10-08 | 3831 |  |  | 7 day week No holidays | 2505299 |
| 3836 | 37000.52900.57300.91300.655200 | Electrical Conduiting | 15d | 2027-10-04 | 2027-10-18 | 3834 |  |  | 7 day week No holidays | 2505308 |
| 3837 | 37000.52900.57300.91300.655300 | Plumbing | 240d | 2027-10-09 | 2028-06-04 | 3835 |  |  | 7 day week No holidays | 2505309 |
| 3838 | 37000.52900.57300.91300.655400 | Fire fighting | 240d | 2027-10-09 | 2028-06-04 | 3835 |  |  | 7 day week No holidays | 2505310 |
| 3839 | 37000.52900.57300.91300.655500 | Staircase Gypsum | 120d | 2027-10-04 | 2028-01-31 | 3834 |  |  | 7 day week No holidays | 2526438 |
| 3840 | 37000.52900.57300.91300.655600 | Staircase Flooring | 180d | 2028-02-01 | 2028-07-29 | 3839 |  |  | 7 day week No holidays | 2505320 |
| 3841 | 37000.52900.57300.91300.655700 | Staircase-Door FRD | 90d | 2028-07-30 | 2028-10-27 | 3840 |  |  | 7 day week No holidays | 2505311 |
| 3842 | 37000.52900.57300.91300.655800 | Gypsum work | 45d | 2027-10-19 | 2027-12-02 | 3836 |  |  | 7 day week No holidays | 2505318 |
| 3843 | 37000.52900.57300.91300.655900 | FAPA | 90d | 2027-10-09 | 2028-01-06 | 3835 |  |  | 7 day week No holidays | 2505328 |
| 3844 | 37000.52900.57300.91300.656000 | Lift installation | 120d | 2027-10-09 | 2028-02-05 | 3835 |  |  | 7 day week No holidays | 2505319 |
| 3845 | 37000.52900.57300.91300.656100 | Railing work | 15d | 2027-12-03 | 2027-12-17 | 3842 |  |  | 7 day week No holidays | 2505338 |
| 3846 | 37000.52900.57300.91300.656200 | Toilet completion | 30d | 2027-12-03 | 2028-01-01 | 3842 |  |  | 7 day week No holidays | 2505348 |
| 3847 | 37000.52900.57300.91300.656300 | VDF Flooring | 120d | 2027-10-09 | 2028-02-05 | 3835 |  |  | 7 day week No holidays | 2526428 |
| 3848 | 37000.52900.57300.91300.656400 | Basement gartings | 60d | 2028-07-30 | 2028-09-27 | 3840 |  |  | 7 day week No holidays | 2526418 |
| 3849 | 37000.52900.57300.91300.656500 | External Painting | 120d | 2027-12-03 | 2028-03-31 | 3842 |  |  | 7 day week No holidays | 2505349 |
| 3850 | 37000.52900.57300.91300.656600 | Internal Painting | 30d | 2028-01-02 | 2028-01-31 | 3846 |  |  | 7 day week No holidays | 2505358 |
