Schedule from MS Project XML, 2025-02-10 to 2028-06-17.

## Calendars

- Standard: Mon-Fri 08:00-12:00, 13:00-17:00; Sat-Sun off. Exceptions (off unless hours are given): 2025-04-18 to 2025-04-21, 2025-05-05, 2025-05-26, 2025-08-25, 2025-12-22 to 2026-01-04, 2026-03-27 to 2026-03-30, 2026-05-04, 2026-05-23 to 2026-05-25, 2026-08-29 to 2026-08-31, 2026-12-21 to 2027-01-03, 2027-04-16 to 2027-04-19, 2027-05-01 to 2027-05-03, 2027-05-29 to 2027-05-31, 2027-08-30, 2027-12-25 to 2028-01-09, 2028-03-31 to 2028-04-03, 2028-04-29 to 2028-05-01, 2028-05-27 to 2028-05-29.
- Indian Calendar: Mon-Sat 08:00-12:00, 13:00-17:00; Sun off.
- 5 day week, Bank Hols Xmas: Mon-Fri 08:00-12:00, 13:00-17:00; Sat-Sun off. Exceptions (off unless hours are given): 2025-04-18 to 2025-04-21, 2025-05-05, 2025-05-26, 2025-08-25, 2025-12-22 to 2026-01-04, 2026-03-27 to 2026-03-30, 2026-05-04, 2026-05-23 to 2026-05-25, 2026-08-29 to 2026-08-31, 2026-12-21 to 2027-01-03, 2027-04-16 to 2027-04-19, 2027-05-01 to 2027-05-03, 2027-05-29 to 2027-05-31, 2027-08-30, 2027-12-25 to 2028-01-09, 2028-03-31 to 2028-04-03, 2028-04-29 to 2028-05-01, 2028-05-27 to 2028-05-29.
- RGA - STRUCTURE: Mon-Sun 08:00-12:00, 13:00-17:00. Exceptions (off unless hours are given): 2025-03-14, 2025-05-01, 2025-06-16 to 2025-07-15 08:00-12:00, 13:00-17:00, 2025-08-15, 2025-10-02, 2025-10-28, 2025-11-16 to 2025-12-15 08:00-12:00, 13:00-17:00, 2026-01-26, 2026-05-01, 2026-06-16 to 2026-07-15 08:00-12:00, 2026-08-15, 2026-10-02, 2026-11-16 to 2026-12-15 08:00-12:00.
- RGA -FINISHING: Mon-Sun 08:00-12:00, 13:00-17:00.

## Resources

| Resource |
| --- |
| GPL Revenue |
| Yeshwanthpur |
| BAGALURU |
| Woodscapes project |
| Woodscapes |
| RGA |
| Cost |
| Project Costs |
| RGA - P1 |

## Schedule

| ID | WBS | Task | Type | Duration | Start | Finish | Predecessors | Complete | Constraint | Calendar | Unique_Task_ID |
| --- | --- | --- | --- | --- | --- | --- | --- | --- | --- | --- | --- |
| 1 | 40100 | **RGA Land 2** |  | 1223.38ed | 2025-02-10 | 2028-06-17 |  |  | start no earlier than 2025-02-10 |  | 7803112 |
| 2 | 40100.40200 | **RGA -Land 2** |  | 1185d | 2025-02-10 | 2028-06-17 |  |  | start no earlier than 2025-02-10 | RGA - STRUCTURE | 7803122 |
| 3 | 40100.40200.2748100 | Project Start date | milestone | 0d | 2025-04-01 | 2025-04-01 |  |  | must start on 2022-02-21 | RGA - STRUCTURE | 7847692 |
| 4 | 40100.40200.40400 | **TOWER 7 - (B+G+25 Floors+Terrace)** |  | 995d | 2025-02-20 | 2027-12-20 |  |  | start no earlier than 2025-02-20 | RGA - STRUCTURE | 7803152 |
| 5 | 40100.40200.40400.2746500 | Start date for Tower7 | milestone | 0d | 2025-05-21 | 2025-05-21 | 991SS+7d |  |  | RGA - STRUCTURE | 7847682 |
| 6 | 40100.40200.40400.473100 | **Earth work** |  | 154d | 2025-02-20 | 2025-07-25 |  | 5% | start no earlier than 2025-02-20 | RGA - STRUCTURE | 7811732 |
| 7 | 40100.40200.40400.473100.520300 | EXCAVATION - Tower Area |  | 27d | 2025-02-20 | 2025-06-13 | 5SS-88d | 11% |  | RGA - STRUCTURE | 7812652 |
| 8 | 40100.40200.40400.473100.528900 | Excavation - Non Tower Area |  | 30d | 2025-06-16 | 2025-07-25 | 7 |  |  | 5 day week, Bank Hols Xmas | 7433455 |
| 9 | 40100.40200.40400.69900 | **Substructure works (Works up to plinth)** |  | 735d | 2025-07-26 | 2027-09-05 |  |  | start no earlier than 2025-07-26 | RGA - STRUCTURE | 7803862 |
| 10 | 40100.40200.40400.69900.167700 | **Civil works (Shell & Core basement)** |  | 47d | 2025-07-26 | 2025-09-11 |  |  | start no earlier than 2025-07-26 | RGA - STRUCTURE | 7806192 |
| 11 | 40100.40200.40400.69900.167700.350600 | **RCC Works - Tower area- 1st Basement** |  | 26d | 2025-07-26 | 2025-08-21 |  |  | start no earlier than 2025-07-26 | RGA - STRUCTURE | 7808222 |
| 12 | 40100.40200.40400.69900.167700.350600.383000 | **Foundation** |  | 26d | 2025-07-26 | 2025-08-21 |  |  | start no earlier than 2025-07-26 | RGA - STRUCTURE | 7809292 |
| 13 | 40100.40200.40400.69900.167700.350600.383000.2190400 | Pocket Excavation |  | 1d | 2025-07-26 | 2025-07-26 | 8 |  |  | RGA - STRUCTURE | 7832632 |
| 14 | 40100.40200.40400.69900.167700.350600.383000.2190500 | Footing PCC (Construction start for Tower 7) |  | 4d | 2025-07-27 | 2025-07-30 | 13 |  |  | RGA - STRUCTURE | 7832642 |
| 15 | 40100.40200.40400.69900.167700.350600.383000.2190600 | Footing / Raft works |  | 21d | 2025-07-31 | 2025-08-21 | 14 |  |  | RGA - STRUCTURE | 7832652 |
| 16 | 40100.40200.40400.69900.167700.350600.485600 | **UB Floor Slab (Dummy to be deleted)** |  | 0d | 2025-08-11 | 2025-08-11 |  |  | start no earlier than 2025-08-11 | RGA - STRUCTURE | 7811592 |
| 17 | 40100.40200.40400.69900.167700.350600.485600.2748200 | Columns in Upper basement | milestone | 0d | 2025-08-11 | 2025-08-11 | 15FS-10d |  |  | RGA - STRUCTURE | 7832662 |
| 18 | 40100.40200.40400.69900.167700.350600.485600.2748300 | Upper Basement slab | milestone | 0d | 2025-08-11 | 2025-08-11 | 17 |  |  | RGA - STRUCTURE | 7832672 |
| 19 | 40100.40200.40400.69900.167700.497200 | **Ground Floor Slab** |  | 31d | 2025-08-11 | 2025-09-11 |  |  | start no earlier than 2025-08-11 | RGA - STRUCTURE | 7811472 |
| 20 | 40100.40200.40400.69900.167700.497200.864300 | Columns in Upper basement |  | 14d | 2025-08-11 | 2025-08-25 | 18 |  |  | RGA - STRUCTURE | 7821002 |
| 21 | 40100.40200.40400.69900.167700.497200.864400 | Upper Basement slab |  | 17d | 2025-08-26 | 2025-09-11 | 20 |  |  | RGA - STRUCTURE | 7821012 |
| 22 | 40100.40200.40400.69900.472900 | **Basement Block work and Plaster finishing** |  | 90d | 2026-04-28 | 2026-08-11 |  |  | start no earlier than 2026-04-28 | RGA - STRUCTURE | 7811462 |
| 23 | 40100.40200.40400.69900.472900.828100 | Upper basement |  | 45d | 2026-04-28 | 2026-06-12 | 135 |  |  | RGA - STRUCTURE | 7820052 |
| 24 | 40100.40200.40400.69900.472900.828200 | 2nd Basement |  | 45d | 2026-06-13 | 2026-08-11 | 23 |  |  | RGA - STRUCTURE | 7820062 |

Notes:
- 6: 2 Months for Excavation

| ID | WBS | Task | Duration | Start | Finish | Predecessors | Constraint | Calendar | Unique_Task_ID |
| --- | --- | --- | --- | --- | --- | --- | --- | --- | --- |
| 25 | 40100.40200.40400.69900.162200 | **Services** | 450d | 2026-06-13 | 2027-09-05 |  | start no earlier than 2026-06-13 | RGA -FINISHING | 7805292 |
| 26 | 40100.40200.40400.69900.162200.364300 | **Plumbing** | 180d | 2026-06-13 | 2026-12-09 |  | start no earlier than 2026-06-13 | RGA -FINISHING | 7808762 |
| 27 | 40100.40200.40400.69900.162200.364300.485700 | **Upper Basement Plumbing** | 180d | 2026-06-13 | 2026-12-09 |  | start no earlier than 2026-06-13 | RGA -FINISHING | 7811602 |
| 28 | 40100.40200.40400.69900.162200.364300.485700.2190700 | Upper Basement Plumbing | 90d | 2026-06-13 | 2026-09-10 | 23 |  | RGA -FINISHING | 7832682 |
| 29 | 40100.40200.40400.69900.162200.364300.485700.2190800 | Upper Basement Plumbing | 90d | 2026-09-11 | 2026-12-09 | 28 |  | RGA -FINISHING | 7832692 |
| 30 | 40100.40200.40400.69900.162200.364400 | **Fire fighting** | 180d | 2026-09-11 | 2027-03-09 |  | start no earlier than 2026-09-11 | RGA -FINISHING | 7808772 |
| 31 | 40100.40200.40400.69900.162200.364400.485800 | **Upper Basement Fire fighting** | 180d | 2026-09-11 | 2027-03-09 |  | start no earlier than 2026-09-11 | RGA -FINISHING | 7811612 |
| 32 | 40100.40200.40400.69900.162200.364400.485800.2190900 | Upper Basement Fire fighting | 90d | 2026-09-11 | 2026-12-09 | 28 |  | RGA -FINISHING | 7832702 |
| 33 | 40100.40200.40400.69900.162200.364400.485800.2191000 | Upper Basement Fire fighting | 90d | 2026-12-10 | 2027-03-09 | 32 |  | RGA -FINISHING | 7832712 |
| 34 | 40100.40200.40400.69900.162200.364500 | **Ventilation** | 180d | 2026-12-10 | 2027-06-07 |  | start no earlier than 2026-12-10 | RGA -FINISHING | 7808782 |
| 35 | 40100.40200.40400.69900.162200.364500.485900 | **Upper Basement ventilation** | 180d | 2026-12-10 | 2027-06-07 |  | start no earlier than 2026-12-10 | RGA -FINISHING | 7811622 |
| 36 | 40100.40200.40400.69900.162200.364500.485900.2191100 | Upper Basement ventilation | 90d | 2026-12-10 | 2027-03-09 | 32 |  | RGA -FINISHING | 7832722 |
| 37 | 40100.40200.40400.69900.162200.364500.485900.2191200 | Upper Basement ventilation | 90d | 2027-03-10 | 2027-06-07 | 36 |  | RGA -FINISHING | 7832732 |
| 38 | 40100.40200.40400.69900.162200.364600 | **Electrification** | 180d | 2027-03-10 | 2027-09-05 |  | start no earlier than 2027-03-10 | RGA -FINISHING | 7808802 |
| 39 | 40100.40200.40400.69900.162200.364600.486000 | **Upper Basement Electrification** | 180d | 2027-03-10 | 2027-09-05 |  | start no earlier than 2027-03-10 | RGA -FINISHING | 7811632 |
| 40 | 40100.40200.40400.69900.162200.364600.486000.2191300 | Upper Basement Electrification | 90d | 2027-03-10 | 2027-06-07 | 36 |  | RGA -FINISHING | 7832742 |
| 41 | 40100.40200.40400.69900.162200.364600.486000.2191400 | Upper Basement Electrification | 90d | 2027-06-08 | 2027-09-05 | 40 |  | RGA -FINISHING | 7832752 |
| 42 | 40100.40200.40400.69900.162200.364700 | **Security installations** | 30d | 2027-06-08 | 2027-07-07 |  | start no earlier than 2027-06-08 | RGA -FINISHING | 7808812 |
| 43 | 40100.40200.40400.69900.162200.364700.486100 | **Upper Basement Security installations** | 30d | 2027-06-08 | 2027-07-07 |  | start no earlier than 2027-06-08 | RGA -FINISHING | 7811642 |
| 44 | 40100.40200.40400.69900.162200.364700.486100.2191500 | Upper Basement Security installations | 15d | 2027-06-08 | 2027-06-22 | 40 |  | RGA -FINISHING | 7832762 |
| 45 | 40100.40200.40400.69900.162200.364700.486100.2191600 | Upper Basement Security installations | 15d | 2027-06-23 | 2027-07-07 | 44 |  | RGA -FINISHING | 7832772 |
| 46 | 40100.40200.40400.69900.343800 | **Finishing work** | 270d | 2026-10-26 | 2027-07-22 |  | start no earlier than 2026-10-26 | RGA -FINISHING | 7808292 |
| 47 | 40100.40200.40400.69900.343800.497800 | **Basement Flooring** | 180d | 2026-10-26 | 2027-04-23 |  | start no earlier than 2026-10-26 | RGA -FINISHING | 7811482 |
| 48 | 40100.40200.40400.69900.343800.497800.864500 | 1st Basement ventilation | 90d | 2026-10-26 | 2027-01-23 | 54 |  | RGA -FINISHING | 7821022 |
| 49 | 40100.40200.40400.69900.343800.497800.864600 | 1st Basement ventilation | 90d | 2027-01-24 | 2027-04-23 | 48 |  | RGA -FINISHING | 7821032 |

| ID | WBS | Task | Duration | Start | Finish | Predecessors | Constraint | Calendar | Unique_Task_ID |
| --- | --- | --- | --- | --- | --- | --- | --- | --- | --- |
| 50 | 40100.40200.40400.69900.343800.497900 | **Basement Painting (1st Coat)** | 180d | 2027-01-24 | 2027-07-22 |  | start no earlier than 2027-01-24 | RGA -FINISHING | 7811492 |
| 51 | 40100.40200.40400.69900.343800.497900.864700 | 2nd Basement ventilation | 90d | 2027-01-24 | 2027-04-23 | 48 |  | RGA -FINISHING | 7821042 |
| 52 | 40100.40200.40400.69900.343800.497900.864800 | 2nd Basement ventilation | 90d | 2027-04-24 | 2027-07-22 | 51 |  | RGA -FINISHING | 7821052 |
| 53 | 40100.40200.40400.69900.473000 | **Water Proofing work** | 180d | 2026-07-28 | 2027-01-23 |  | start no earlier than 2026-07-28 | RGA -FINISHING | 7811452 |
| 54 | 40100.40200.40400.69900.473000.828300 | 1st Basement | 90d | 2026-07-28 | 2026-10-25 | 23FS+45d |  | RGA -FINISHING | 7820072 |
| 55 | 40100.40200.40400.69900.473000.828400 | 2nd Basement | 90d | 2026-10-26 | 2027-01-23 | 54 |  | RGA -FINISHING | 7820082 |
| 56 | 40100.40200.40400.56000 | **Superstructure works** | 631d | 2025-08-21 | 2027-06-18 |  | start no earlier than 2025-08-21 | RGA - STRUCTURE | 7803362 |
| 57 | 40100.40200.40400.56000.58600 | **Civil works** | 541d | 2025-08-21 | 2027-03-20 |  | start no earlier than 2025-08-21 | RGA - STRUCTURE | 7803432 |
| 58 | 40100.40200.40400.56000.58600.61700 | **Superstructure RCC Work** | 319d | 2025-09-12 | 2026-08-16 |  | start no earlier than 2025-09-12 | RGA - STRUCTURE | 7803652 |
| 59 | 40100.40200.40400.56000.58600.61700.63200 | **Slab RCC works** | 283d | 2025-09-12 | 2026-07-05 |  | start no earlier than 2025-09-12 | RGA - STRUCTURE | 7803662 |
| 60 | 40100.40200.40400.56000.58600.61700.63200.476700 | **1st Floor Slab (Height More)** | 25d | 2025-09-12 | 2025-10-07 |  | start no earlier than 2025-09-12 | RGA - STRUCTURE | 7811662 |
| 61 | 40100.40200.40400.56000.58600.61700.63200.476700.2578800 | Columns | 10d | 2025-09-12 | 2025-09-21 | 21 |  | RGA - STRUCTURE | 7848212 |
| 62 | 40100.40200.40400.56000.58600.61700.63200.476700.2578900 | Slab Works | 15d | 2025-09-22 | 2025-10-07 | 61 |  | RGA - STRUCTURE | 7848222 |
| 63 | 40100.40200.40400.56000.58600.61700.63200.476600 | **2nd Floor Slab (Combo Height More)** | 25d | 2025-10-08 | 2025-11-02 |  | start no earlier than 2025-10-08 | RGA - STRUCTURE | 7811652 |
| 64 | 40100.40200.40400.56000.58600.61700.63200.476600.2579000 | Columns | 10d | 2025-10-08 | 2025-10-17 | 62 |  | RGA - STRUCTURE | 7848232 |
| 65 | 40100.40200.40400.56000.58600.61700.63200.476600.2579100 | Concreting | 15d | 2025-10-18 | 2025-11-02 | 64 |  | RGA - STRUCTURE | 7848242 |
| 66 | 40100.40200.40400.56000.58600.61700.63200.391600 | **3rd Floor Slab (1st Set Up)** | 21d | 2025-11-03 | 2025-11-23 |  | start no earlier than 2025-11-03 | RGA - STRUCTURE | 7809342 |
| 67 | 40100.40200.40400.56000.58600.61700.63200.391600.2579200 | Wall Rebar & Formwork | 10d | 2025-11-03 | 2025-11-12 | 65 |  | RGA - STRUCTURE | 7848252 |
| 68 | 40100.40200.40400.56000.58600.61700.63200.391600.2579300 | Slab Formwork & Rebar | 10d | 2025-11-13 | 2025-11-22 | 67 |  | RGA - STRUCTURE | 7848262 |
| 69 | 40100.40200.40400.56000.58600.61700.63200.391600.2579400 | Concreting | 1d | 2025-11-23 | 2025-11-23 | 68 |  | RGA - STRUCTURE | 7848272 |
| 70 | 40100.40200.40400.56000.58600.61700.63200.391700 | **4th Floor Slab (2nd Set Up)** | 15d | 2025-11-24 | 2025-12-08 |  | start no earlier than 2025-11-24 | RGA - STRUCTURE | 7809352 |
| 71 | 40100.40200.40400.56000.58600.61700.63200.391700.2579500 | Wall Rebar & Formwork | 7d | 2025-11-24 | 2025-11-30 | 69 |  | RGA - STRUCTURE | 7848282 |
| 72 | 40100.40200.40400.56000.58600.61700.63200.391700.2579600 | Slab Formwork & Rebar | 7d | 2025-12-01 | 2025-12-07 | 71 |  | RGA - STRUCTURE | 7848292 |
| 73 | 40100.40200.40400.56000.58600.61700.63200.391700.2579700 | Concreting | 1d | 2025-12-08 | 2025-12-08 | 72 |  | RGA - STRUCTURE | 7848302 |

Notes:
- 63: AVg Slab Cycle of 21 days
- 66: AVg Slab Cycle of 21 days
- 70: AVg Slab Cycle of 21 days

| ID | WBS | Task | Duration | Start | Finish | Predecessors | Constraint | Calendar | Unique_Task_ID |
| --- | --- | --- | --- | --- | --- | --- | --- | --- | --- |
| 74 | 40100.40200.40400.56000.58600.61700.63200.391800 | **5th Floor slab** | 9d | 2025-12-09 | 2025-12-17 |  | start no earlier than 2025-12-09 | RGA - STRUCTURE | 7809362 |
| 75 | 40100.40200.40400.56000.58600.61700.63200.391800.2579800 | Wall Rebar & Formwork | 4d | 2025-12-09 | 2025-12-12 | 73 |  | RGA - STRUCTURE | 7848312 |
| 76 | 40100.40200.40400.56000.58600.61700.63200.391800.2579900 | Slab Formwork & Rebar | 4d | 2025-12-13 | 2025-12-16 | 75 |  | RGA - STRUCTURE | 7848322 |
| 77 | 40100.40200.40400.56000.58600.61700.63200.391800.2580000 | Concreting | 1d | 2025-12-17 | 2025-12-17 | 76 |  | RGA - STRUCTURE | 7848332 |
| 78 | 40100.40200.40400.56000.58600.61700.63200.391900 | **6th Floor slab** | 9d | 2025-12-17 | 2025-12-25 |  | start no earlier than 2025-12-17 | RGA - STRUCTURE | 7809372 |
| 79 | 40100.40200.40400.56000.58600.61700.63200.391900.2580100 | Wall Rebar & Formwork | 4d | 2025-12-17 | 2025-12-20 | 76 |  | RGA - STRUCTURE | 7848342 |
| 80 | 40100.40200.40400.56000.58600.61700.63200.391900.2580200 | Slab Formwork & Rebar | 4d | 2025-12-21 | 2025-12-24 | 79 |  | RGA - STRUCTURE | 7848352 |
| 81 | 40100.40200.40400.56000.58600.61700.63200.391900.2580300 | Concreting | 1d | 2025-12-25 | 2025-12-25 | 80 |  | RGA - STRUCTURE | 7848362 |
| 82 | 40100.40200.40400.56000.58600.61700.63200.392000 | **7th Floor slab** | 9d | 2025-12-26 | 2026-01-03 |  | start no earlier than 2025-12-26 | RGA - STRUCTURE | 7809382 |
| 83 | 40100.40200.40400.56000.58600.61700.63200.392000.2580400 | Wall Rebar & Formwork | 4d | 2025-12-26 | 2025-12-29 | 81 |  | RGA - STRUCTURE | 7848372 |
| 84 | 40100.40200.40400.56000.58600.61700.63200.392000.2580500 | Slab Formwork & Rebar | 4d | 2025-12-30 | 2026-01-02 | 83 |  | RGA - STRUCTURE | 7848382 |
| 85 | 40100.40200.40400.56000.58600.61700.63200.392000.2580600 | Concreting | 1d | 2026-01-03 | 2026-01-03 | 84 |  | RGA - STRUCTURE | 7848392 |
| 86 | 40100.40200.40400.56000.58600.61700.63200.392100 | **8th Floor slab** | 9d | 2026-01-04 | 2026-01-12 |  | start no earlier than 2026-01-04 | RGA - STRUCTURE | 7809392 |
| 87 | 40100.40200.40400.56000.58600.61700.63200.392100.2580700 | Wall Rebar & Formwork | 4d | 2026-01-04 | 2026-01-07 | 85 |  | RGA - STRUCTURE | 7848402 |
| 88 | 40100.40200.40400.56000.58600.61700.63200.392100.2580800 | Slab Formwork & Rebar | 4d | 2026-01-08 | 2026-01-11 | 87 |  | RGA - STRUCTURE | 7848412 |
| 89 | 40100.40200.40400.56000.58600.61700.63200.392100.2580900 | Concreting | 1d | 2026-01-12 | 2026-01-12 | 88 |  | RGA - STRUCTURE | 7848422 |
| 90 | 40100.40200.40400.56000.58600.61700.63200.392200 | **9th Floor slab** | 9d | 2026-01-13 | 2026-01-21 |  | start no earlier than 2026-01-13 | RGA - STRUCTURE | 7809402 |
| 91 | 40100.40200.40400.56000.58600.61700.63200.392200.2581000 | Wall Rebar & Formwork | 4d | 2026-01-13 | 2026-01-16 | 89 |  | RGA - STRUCTURE | 7848432 |
| 92 | 40100.40200.40400.56000.58600.61700.63200.392200.2581100 | Slab Formwork & Rebar | 4d | 2026-01-17 | 2026-01-20 | 91 |  | RGA - STRUCTURE | 7848442 |
| 93 | 40100.40200.40400.56000.58600.61700.63200.392200.2581200 | Concreting | 1d | 2026-01-21 | 2026-01-21 | 92 |  | RGA - STRUCTURE | 7848452 |
| 94 | 40100.40200.40400.56000.58600.61700.63200.392300 | **10th Floor slab** | 9d | 2026-01-22 | 2026-01-31 |  | start no earlier than 2026-01-22 | RGA - STRUCTURE | 7809412 |
| 95 | 40100.40200.40400.56000.58600.61700.63200.392300.2581300 | Wall Rebar & Formwork | 4d | 2026-01-22 | 2026-01-25 | 93 |  | RGA - STRUCTURE | 7848462 |
| 96 | 40100.40200.40400.56000.58600.61700.63200.392300.2581400 | Slab Formwork & Rebar | 4d | 2026-01-27 | 2026-01-30 | 95 |  | RGA - STRUCTURE | 7848472 |
| 97 | 40100.40200.40400.56000.58600.61700.63200.392300.2581500 | Concreting | 1d | 2026-01-31 | 2026-01-31 | 96 |  | RGA - STRUCTURE | 7848482 |

| ID | WBS | Task | Duration | Start | Finish | Predecessors | Constraint | Calendar | Unique_Task_ID |
| --- | --- | --- | --- | --- | --- | --- | --- | --- | --- |
| 98 | 40100.40200.40400.56000.58600.61700.63200.392400 | **11th Floor slab** | 9d | 2026-02-01 | 2026-02-09 |  | start no earlier than 2026-02-01 | RGA - STRUCTURE | 7809422 |
| 99 | 40100.40200.40400.56000.58600.61700.63200.392400.2581600 | Wall & Slab Form work | 4d | 2026-02-01 | 2026-02-04 | 97 |  | RGA - STRUCTURE | 7848492 |
| 100 | 40100.40200.40400.56000.58600.61700.63200.392400.2581700 | Slab & Beam Reinf. | 4d | 2026-02-05 | 2026-02-08 | 99 |  | RGA - STRUCTURE | 7848502 |
| 101 | 40100.40200.40400.56000.58600.61700.63200.392400.2581800 | Concreting | 1d | 2026-02-09 | 2026-02-09 | 100 |  | RGA - STRUCTURE | 7848512 |
| 102 | 40100.40200.40400.56000.58600.61700.63200.392500 | **12th Floor slab** | 9d | 2026-02-10 | 2026-02-18 |  | start no earlier than 2026-02-10 | RGA - STRUCTURE | 7809432 |
| 103 | 40100.40200.40400.56000.58600.61700.63200.392500.2581900 | Wall & Slab Form work | 4d | 2026-02-10 | 2026-02-13 | 101 |  | RGA - STRUCTURE | 7848522 |
| 104 | 40100.40200.40400.56000.58600.61700.63200.392500.2582000 | Slab & Beam Reinf. | 4d | 2026-02-14 | 2026-02-17 | 103 |  | RGA - STRUCTURE | 7848532 |
| 105 | 40100.40200.40400.56000.58600.61700.63200.392500.2582100 | Concreting | 1d | 2026-02-18 | 2026-02-18 | 104 |  | RGA - STRUCTURE | 7848542 |
| 106 | 40100.40200.40400.56000.58600.61700.63200.392600 | **13th Floor slab** | 9d | 2026-02-19 | 2026-02-27 |  | start no earlier than 2026-02-19 | RGA - STRUCTURE | 7809442 |
| 107 | 40100.40200.40400.56000.58600.61700.63200.392600.2582200 | Wall & Slab Form work | 4d | 2026-02-19 | 2026-02-22 | 105 |  | RGA - STRUCTURE | 7848552 |
| 108 | 40100.40200.40400.56000.58600.61700.63200.392600.2582300 | Slab & Beam Reinf. | 4d | 2026-02-23 | 2026-02-26 | 107 |  | RGA - STRUCTURE | 7848562 |
| 109 | 40100.40200.40400.56000.58600.61700.63200.392600.2582400 | Concreting | 1d | 2026-02-27 | 2026-02-27 | 108 |  | RGA - STRUCTURE | 7848572 |
| 110 | 40100.40200.40400.56000.58600.61700.63200.392700 | **14th Floor slab** | 9d | 2026-02-28 | 2026-03-08 |  | start no earlier than 2026-02-28 | RGA - STRUCTURE | 7809452 |
| 111 | 40100.40200.40400.56000.58600.61700.63200.392700.2582500 | Wall & Slab Form work | 4d | 2026-02-28 | 2026-03-03 | 109 |  | RGA - STRUCTURE | 7848582 |
| 112 | 40100.40200.40400.56000.58600.61700.63200.392700.2582600 | Slab & Beam Reinf. | 4d | 2026-03-04 | 2026-03-07 | 111 |  | RGA - STRUCTURE | 7848592 |
| 113 | 40100.40200.40400.56000.58600.61700.63200.392700.2582700 | Concreting | 1d | 2026-03-08 | 2026-03-08 | 112 |  | RGA - STRUCTURE | 7848602 |
| 114 | 40100.40200.40400.56000.58600.61700.63200.392800 | **15th Floor slab** | 9d | 2026-03-09 | 2026-03-17 |  | start no earlier than 2026-03-09 | RGA - STRUCTURE | 7809462 |
| 115 | 40100.40200.40400.56000.58600.61700.63200.392800.2582800 | Wall & Slab Form work | 4d | 2026-03-09 | 2026-03-12 | 113 |  | RGA - STRUCTURE | 7848612 |
| 116 | 40100.40200.40400.56000.58600.61700.63200.392800.2582900 | Slab & Beam Reinf. | 4d | 2026-03-13 | 2026-03-16 | 115 |  | RGA - STRUCTURE | 7848622 |
| 117 | 40100.40200.40400.56000.58600.61700.63200.392800.2583000 | Concreting | 1d | 2026-03-17 | 2026-03-17 | 116 |  | RGA - STRUCTURE | 7848632 |
| 118 | 40100.40200.40400.56000.58600.61700.63200.392900 | **16th Floor slab** | 9d | 2026-03-18 | 2026-03-26 |  | start no earlier than 2026-03-18 | RGA - STRUCTURE | 7809472 |
| 119 | 40100.40200.40400.56000.58600.61700.63200.392900.2583100 | Wall & Slab Form work | 4d | 2026-03-18 | 2026-03-21 | 117 |  | RGA - STRUCTURE | 7848642 |
| 120 | 40100.40200.40400.56000.58600.61700.63200.392900.2583200 | Slab & Beam Reinf. | 4d | 2026-03-22 | 2026-03-25 | 119 |  | RGA - STRUCTURE | 7848652 |
| 121 | 40100.40200.40400.56000.58600.61700.63200.392900.2583300 | Concreting | 1d | 2026-03-26 | 2026-03-26 | 120 |  | RGA - STRUCTURE | 7848662 |

Notes:
- 102: AVg Slab Cycle of 21 days
- 106: AVg Slab Cycle of 21 days
- 110: AVg Slab Cycle of 21 days

| ID | WBS | Task | Duration | Start | Finish | Predecessors | Constraint | Calendar | Unique_Task_ID |
| --- | --- | --- | --- | --- | --- | --- | --- | --- | --- |
| 122 | 40100.40200.40400.56000.58600.61700.63200.393000 | **17th Floor slab** | 9d | 2026-03-27 | 2026-04-04 |  | start no earlier than 2026-03-27 | RGA - STRUCTURE | 7809482 |
| 123 | 40100.40200.40400.56000.58600.61700.63200.393000.2583400 | Wall & Slab Form work | 4d | 2026-03-27 | 2026-03-30 | 121 |  | RGA - STRUCTURE | 7848672 |
| 124 | 40100.40200.40400.56000.58600.61700.63200.393000.2583500 | Slab & Beam Reinf. | 4d | 2026-03-31 | 2026-04-03 | 123 |  | RGA - STRUCTURE | 7848682 |
| 125 | 40100.40200.40400.56000.58600.61700.63200.393000.2583600 | Concreting | 1d | 2026-04-04 | 2026-04-04 | 124 |  | RGA - STRUCTURE | 7848692 |
| 126 | 40100.40200.40400.56000.58600.61700.63200.393100 | **18th Floor slab** | 9d | 2026-04-05 | 2026-04-13 |  | start no earlier than 2026-04-05 | RGA - STRUCTURE | 7809492 |
| 127 | 40100.40200.40400.56000.58600.61700.63200.393100.2583700 | Wall & Slab Form work | 4d | 2026-04-05 | 2026-04-08 | 125 |  | RGA - STRUCTURE | 7848702 |
| 128 | 40100.40200.40400.56000.58600.61700.63200.393100.2583800 | Slab & Beam Reinf. | 4d | 2026-04-09 | 2026-04-12 | 127 |  | RGA - STRUCTURE | 7848712 |
| 129 | 40100.40200.40400.56000.58600.61700.63200.393100.2583900 | Concreting | 1d | 2026-04-13 | 2026-04-13 | 128 |  | RGA - STRUCTURE | 7848722 |
| 130 | 40100.40200.40400.56000.58600.61700.63200.393200 | **19th Floor slab** | 8d | 2026-04-14 | 2026-04-21 |  | start no earlier than 2026-04-14 | RGA - STRUCTURE | 7809502 |
| 131 | 40100.40200.40400.56000.58600.61700.63200.393200.2584000 | Wall & Slab Form work | 4d | 2026-04-14 | 2026-04-17 | 129 |  | RGA - STRUCTURE | 7848732 |
| 132 | 40100.40200.40400.56000.58600.61700.63200.393200.2584100 | Slab & Beam Reinf. | 3d | 2026-04-18 | 2026-04-20 | 131 |  | RGA - STRUCTURE | 7848742 |
| 133 | 40100.40200.40400.56000.58600.61700.63200.393200.2584200 | Concreting | 1d | 2026-04-21 | 2026-04-21 | 132 |  | RGA - STRUCTURE | 7848752 |
| 134 | 40100.40200.40400.56000.58600.61700.63200.393300 | **20th Floor slab (Refuge Floor)** | 12d | 2026-04-22 | 2026-05-04 |  | start no earlier than 2026-04-22 | RGA - STRUCTURE | 7809512 |
| 135 | 40100.40200.40400.56000.58600.61700.63200.393300.2584300 | Wall & Slab Form work | 6d | 2026-04-22 | 2026-04-27 | 133 |  | RGA - STRUCTURE | 7848762 |
| 136 | 40100.40200.40400.56000.58600.61700.63200.393300.2584400 | Slab & Beam Reinf. | 5d | 2026-04-28 | 2026-05-03 | 135 |  | RGA - STRUCTURE | 7848772 |
| 137 | 40100.40200.40400.56000.58600.61700.63200.393300.2584500 | Concreting | 1d | 2026-05-04 | 2026-05-04 | 136 |  | RGA - STRUCTURE | 7848782 |
| 138 | 40100.40200.40400.56000.58600.61700.63200.393400 | **21th Floor slab** | 8d | 2026-05-05 | 2026-05-12 |  | start no earlier than 2026-05-05 | RGA - STRUCTURE | 7809522 |
| 139 | 40100.40200.40400.56000.58600.61700.63200.393400.2584600 | Wall & Slab Form work | 4d | 2026-05-05 | 2026-05-08 | 137 |  | RGA - STRUCTURE | 7848792 |
| 140 | 40100.40200.40400.56000.58600.61700.63200.393400.2584700 | Slab & Beam Reinf. | 3d | 2026-05-09 | 2026-05-11 | 139 |  | RGA - STRUCTURE | 7848802 |
| 141 | 40100.40200.40400.56000.58600.61700.63200.393400.2584800 | Concreting | 1d | 2026-05-12 | 2026-05-12 | 140 |  | RGA - STRUCTURE | 7848812 |
| 142 | 40100.40200.40400.56000.58600.61700.63200.393500 | **22th Floor slab** | 8d | 2026-05-13 | 2026-05-20 |  | start no earlier than 2026-05-13 | RGA - STRUCTURE | 7809532 |
| 143 | 40100.40200.40400.56000.58600.61700.63200.393500.2584900 | Wall & Slab Form work | 4d | 2026-05-13 | 2026-05-16 | 141 |  | RGA - STRUCTURE | 7848822 |
| 144 | 40100.40200.40400.56000.58600.61700.63200.393500.2585000 | Slab & Beam Reinf. | 3d | 2026-05-17 | 2026-05-19 | 143 |  | RGA - STRUCTURE | 7848832 |
| 145 | 40100.40200.40400.56000.58600.61700.63200.393500.2585100 | Concreting | 1d | 2026-05-20 | 2026-05-20 | 144 |  | RGA - STRUCTURE | 7848842 |

| ID | WBS | Task | Duration | Start | Finish | Predecessors | Constraint | Calendar | Unique_Task_ID |
| --- | --- | --- | --- | --- | --- | --- | --- | --- | --- |
| 146 | 40100.40200.40400.56000.58600.61700.63200.393600 | **23th Floor slab** | 8d | 2026-05-21 | 2026-05-28 |  | start no earlier than 2026-05-21 | RGA - STRUCTURE | 7809542 |
| 147 | 40100.40200.40400.56000.58600.61700.63200.393600.2585200 | Wall & Slab Form work | 4d | 2026-05-21 | 2026-05-24 | 145 |  | RGA - STRUCTURE | 7848852 |
| 148 | 40100.40200.40400.56000.58600.61700.63200.393600.2585300 | Slab & Beam Reinf. | 3d | 2026-05-25 | 2026-05-27 | 147 |  | RGA - STRUCTURE | 7848862 |
| 149 | 40100.40200.40400.56000.58600.61700.63200.393600.2585400 | Concreting | 1d | 2026-05-28 | 2026-05-28 | 148 |  | RGA - STRUCTURE | 7848872 |
| 150 | 40100.40200.40400.56000.58600.61700.63200.393700 | **24th Floor slab** | 8d | 2026-05-29 | 2026-06-05 |  | start no earlier than 2026-05-29 | RGA - STRUCTURE | 7809552 |
| 151 | 40100.40200.40400.56000.58600.61700.63200.393700.2585500 | Wall & Slab Form work | 4d | 2026-05-29 | 2026-06-01 | 149 |  | RGA - STRUCTURE | 7848882 |
| 152 | 40100.40200.40400.56000.58600.61700.63200.393700.2585600 | Slab & Beam Reinf. | 3d | 2026-06-02 | 2026-06-04 | 151 |  | RGA - STRUCTURE | 7848892 |
| 153 | 40100.40200.40400.56000.58600.61700.63200.393700.2585700 | Concreting | 1d | 2026-06-05 | 2026-06-05 | 152 |  | RGA - STRUCTURE | 7848902 |
| 154 | 40100.40200.40400.56000.58600.61700.63200.393800 | **32 nd Floor slab** | 8d | 2026-06-06 | 2026-06-13 |  | start no earlier than 2026-06-06 | RGA - STRUCTURE | 7433215 |
| 155 | 40100.40200.40400.56000.58600.61700.63200.393800.2585800 | Wall & Slab Form work | 4d | 2026-06-06 | 2026-06-09 | 153 |  | RGA - STRUCTURE | 7433225 |
| 156 | 40100.40200.40400.56000.58600.61700.63200.393800.2585900 | Slab & Beam Reinf. | 3d | 2026-06-10 | 2026-06-12 | 155 |  | RGA - STRUCTURE | 7433235 |
| 157 | 40100.40200.40400.56000.58600.61700.63200.393800.2586000 | Concreting | 1d | 2026-06-13 | 2026-06-13 | 156 |  | RGA - STRUCTURE | 7433245 |
| 158 | 40100.40200.40400.56000.58600.61700.63200.393900 | **Terrace Floor slab work** | 12d | 2026-06-14 | 2026-07-05 |  | start no earlier than 2026-06-14 | RGA - STRUCTURE | 7809612 |
| 159 | 40100.40200.40400.56000.58600.61700.63200.393900.2586100 | Wall & Slab Form work | 6d | 2026-06-14 | 2026-06-23 | 157 |  | RGA - STRUCTURE | 7849022 |
| 160 | 40100.40200.40400.56000.58600.61700.63200.393900.2586200 | Slab & Beam Reinf. | 5d | 2026-06-24 | 2026-07-03 | 159 |  | RGA - STRUCTURE | 7849032 |
| 161 | 40100.40200.40400.56000.58600.61700.63200.393900.2586300 | Concreting | 1d | 2026-07-04 | 2026-07-05 | 160 |  | RGA - STRUCTURE | 7849042 |
| 162 | 40100.40200.40400.56000.58600.61700.251200 | **RCC work above Terrace** | 36d | 2026-07-06 | 2026-08-16 |  | start no earlier than 2026-07-06 | RGA - STRUCTURE | 7806942 |
| 163 | 40100.40200.40400.56000.58600.61700.251200.369400 | **STAIRCASE & OHT CORE** | 36d | 2026-07-06 | 2026-08-16 |  | start no earlier than 2026-07-06 | RGA - STRUCTURE | 7808862 |
| 164 | 40100.40200.40400.56000.58600.61700.251200.369400.2586400 | STAIRCASE HEAD ROOM | 10d | 2026-07-06 | 2026-07-20 | 161 |  | RGA - STRUCTURE | 7849052 |
| 165 | 40100.40200.40400.56000.58600.61700.251200.369400.2586500 | OHT | 12d | 2026-07-21 | 2026-08-01 | 164 |  | RGA - STRUCTURE | 7849062 |
| 166 | 40100.40200.40400.56000.58600.61700.251200.369400.2586600 | SHAFT COVERING SLAB | 10d | 2026-07-06 | 2026-07-20 | 161 |  | RGA - STRUCTURE | 7849072 |
| 167 | 40100.40200.40400.56000.58600.61700.251200.369400.2586700 | DESHUTTERING OF OHT TOP SLAB | 7d | 2026-08-09 | 2026-08-16 | 165FS+7d |  | RGA - STRUCTURE | 7849082 |
| 168 | 40100.40200.40400.56000.58600.61700.251200.394000 | **LMR BOTTOM & TOP SLAB** | 33d | 2026-07-06 | 2026-08-12 |  | start no earlier than 2026-07-06 | RGA - STRUCTURE | 7809622 |
| 169 | 40100.40200.40400.56000.58600.61700.251200.394000.2586800 | LMR COLUMNS / WALLS | 15d | 2026-07-06 | 2026-07-25 | 161 |  | RGA - STRUCTURE | 7849092 |
| 170 | 40100.40200.40400.56000.58600.61700.251200.394000.2586900 | LMR TOP SLAB | 10d | 2026-07-26 | 2026-08-04 | 169 |  | RGA - STRUCTURE | 7849102 |
| 171 | 40100.40200.40400.56000.58600.61700.251200.394000.2587000 | DESHUTTERING | 8d | 2026-08-05 | 2026-08-12 | 170 |  | RGA - STRUCTURE | 7849112 |

Notes:
- 158: AVg Slab Cycle of 21 days

| ID | WBS | Task | Duration | Start | Finish | Predecessors | Constraint | Calendar | Unique_Task_ID |
| --- | --- | --- | --- | --- | --- | --- | --- | --- | --- |
| 172 | 40100.40200.40400.56000.58600.59300 | **Civil Finishing works (Brick work, Plaster,conduiting, concled plumbing, waterproofing)** | 577d | 2025-08-21 | 2027-03-20 |  | start no earlier than 2025-08-21 | RGA -FINISHING | 7803472 |
| 173 | 40100.40200.40400.56000.58600.59300.61000 | **Flat finishing works** | 390d | 2025-08-21 | 2026-09-14 |  | start no earlier than 2025-08-21 | RGA -FINISHING | 7803592 |
| 174 | 40100.40200.40400.56000.58600.59300.61000.330700 | **Ground FLOOR** | 122d | 2025-08-21 | 2025-12-20 |  | start no earlier than 2025-08-21 | RGA -FINISHING | 7807012 |
| 175 | 40100.40200.40400.56000.58600.59300.61000.330700.2587100 | BALCONY RAILING FIXING | 9d | 2025-10-03 | 2025-10-11 | 65FS-31d |  | RGA -FINISHING | 7849122 |
| 176 | 40100.40200.40400.56000.58600.59300.61000.330700.2587200 | Block work -Ledge Wall | 2d | 2025-12-19 | 2025-12-20 | 180 |  | RGA -FINISHING | 7849132 |
| 177 | 40100.40200.40400.56000.58600.59300.61000.330700.2587300 | CONCEALED ELEC CONDUITING & ITS FINISHING | 5d | 2025-08-21 | 2025-08-25 | 21SS-5d |  | RGA -FINISHING | 7849142 |
| 178 | 40100.40200.40400.56000.58600.59300.61000.330700.2587400 | PLASTER APPLICATION | 6d | 2025-11-22 | 2025-11-27 | 369FS+30d |  | RGA -FINISHING | 7849152 |
| 179 | 40100.40200.40400.56000.58600.59300.61000.330700.2587500 | CONCEALED PLUMBING | 9d | 2025-11-28 | 2025-12-06 | 178 |  | RGA -FINISHING | 7849162 |
| 180 | 40100.40200.40400.56000.58600.59300.61000.330700.2587600 | WATERPROOFING WORK FOR TOILETS, KITCHEN SUNK & PLANTERS | 12d | 2025-12-07 | 2025-12-18 | 179 |  | RGA -FINISHING | 7849172 |
| 181 | 40100.40200.40400.56000.58600.59300.61000.330600 | **1ST FLOOR** | 80d | 2025-10-03 | 2025-12-21 |  | start no earlier than 2025-10-03 | RGA -FINISHING | 7807022 |
| 182 | 40100.40200.40400.56000.58600.59300.61000.330600.2587700 | BALCONY RAILING FIXING | 9d | 2025-10-23 | 2025-10-31 | 69FS-32d |  | RGA -FINISHING | 7849182 |
| 183 | 40100.40200.40400.56000.58600.59300.61000.330600.2587800 | Block work | 2d | 2025-12-20 | 2025-12-21 | 187 |  | RGA -FINISHING | 7849192 |
| 184 | 40100.40200.40400.56000.58600.59300.61000.330600.2587900 | CONCEALED ELEC CONDUITING & ITS FINISHING | 5d | 2025-10-03 | 2025-10-07 | 60FS-5d |  | RGA -FINISHING | 7849202 |
| 185 | 40100.40200.40400.56000.58600.59300.61000.330600.2588000 | PLASTER APPLICATION | 6d | 2025-11-28 | 2025-12-03 | 382FS+30d |  | RGA -FINISHING | 7849212 |
| 186 | 40100.40200.40400.56000.58600.59300.61000.330600.2588100 | CONCEALED PLUMBING | 8d | 2025-12-04 | 2025-12-11 | 185 |  | RGA -FINISHING | 7849222 |
| 187 | 40100.40200.40400.56000.58600.59300.61000.330600.2588200 | WATERPROOFING WORK FOR TOILETS, KITCHEN SUNK & PLANTERS | 8d | 2025-12-12 | 2025-12-19 | 186 |  | RGA -FINISHING | 7849232 |
| 188 | 40100.40200.40400.56000.58600.59300.61000.330500 | **2nd FLOOR** | 64d | 2025-10-29 | 2025-12-31 |  | start no earlier than 2025-10-29 | RGA -FINISHING | 7807032 |
| 189 | 40100.40200.40400.56000.58600.59300.61000.330500.2588300 | BALCONY RAILING FIXING | 9d | 2025-11-08 | 2025-11-16 | 73FS-31d |  | RGA -FINISHING | 7849242 |
| 190 | 40100.40200.40400.56000.58600.59300.61000.330500.2588400 | Block work | 2d | 2025-12-30 | 2025-12-31 | 194 |  | RGA -FINISHING | 7849252 |
| 191 | 40100.40200.40400.56000.58600.59300.61000.330500.2588500 | CONCEALED ELEC CONDUITING & ITS FINISHING | 5d | 2025-10-29 | 2025-11-02 | 63FS-5d |  | RGA -FINISHING | 7849262 |
| 192 | 40100.40200.40400.56000.58600.59300.61000.330500.2588600 | PLASTER APPLICATION | 6d | 2025-12-08 | 2025-12-13 | 395FS+15d |  | RGA -FINISHING | 7849272 |
| 193 | 40100.40200.40400.56000.58600.59300.61000.330500.2588700 | CONCEALED PLUMBING | 8d | 2025-12-14 | 2025-12-21 | 192 |  | RGA -FINISHING | 7849282 |
| 194 | 40100.40200.40400.56000.58600.59300.61000.330500.2588800 | WATERPROOFING WORK FOR TOILETS, KITCHEN SUNK & PLANTERS | 8d | 2025-12-22 | 2025-12-29 | 193 |  | RGA -FINISHING | 7849292 |
| 195 | 40100.40200.40400.56000.58600.59300.61000.330400 | **3rd FLOOR** | 68d | 2025-11-19 | 2026-01-25 |  | start no earlier than 2025-11-19 | RGA -FINISHING | 7807042 |
| 196 | 40100.40200.40400.56000.58600.59300.61000.330400.2588900 | BALCONY RAILING FIXING | 9d | 2025-12-03 | 2025-12-11 | 77FS-15d |  | RGA -FINISHING | 7849302 |
| 197 | 40100.40200.40400.56000.58600.59300.61000.330400.2589000 | Block work | 2d | 2026-01-24 | 2026-01-25 | 201 |  | RGA -FINISHING | 7849312 |
| 198 | 40100.40200.40400.56000.58600.59300.61000.330400.2589100 | CONCEALED ELEC CONDUITING & ITS FINISHING | 5d | 2025-11-19 | 2025-11-23 | 66FS-5d |  | RGA -FINISHING | 7849322 |
| 199 | 40100.40200.40400.56000.58600.59300.61000.330400.2589200 | PLASTER APPLICATION | 6d | 2026-01-02 | 2026-01-07 | 408FS+15d |  | RGA -FINISHING | 7849332 |
| 200 | 40100.40200.40400.56000.58600.59300.61000.330400.2589300 | CONCEALED PLUMBING | 8d | 2026-01-08 | 2026-01-15 | 199 |  | RGA -FINISHING | 7849342 |
| 201 | 40100.40200.40400.56000.58600.59300.61000.330400.2589400 | WATERPROOFING WORK FOR TOILETS, KITCHEN SUNK & PLANTERS | 8d | 2026-01-16 | 2026-01-23 | 200 |  | RGA -FINISHING | 7849352 |

| ID | WBS | Task | Duration | Start | Finish | Predecessors | Constraint | Calendar | Unique_Task_ID |
| --- | --- | --- | --- | --- | --- | --- | --- | --- | --- |
| 202 | 40100.40200.40400.56000.58600.59300.61000.330300 | **4th FLOOR** | 61d | 2025-12-04 | 2026-02-02 |  | start no earlier than 2025-12-04 | RGA -FINISHING | 7807052 |
| 203 | 40100.40200.40400.56000.58600.59300.61000.330300.2589500 | BALCONY RAILING FIXING | 9d | 2025-12-11 | 2025-12-19 | 81FS-15d |  | RGA -FINISHING | 7849362 |
| 204 | 40100.40200.40400.56000.58600.59300.61000.330300.2589600 | Block work | 2d | 2026-02-01 | 2026-02-02 | 208 |  | RGA -FINISHING | 7849372 |
| 205 | 40100.40200.40400.56000.58600.59300.61000.330300.2589700 | CONCEALED ELEC CONDUITING & ITS FINISHING | 5d | 2025-12-04 | 2025-12-08 | 70FS-5d |  | RGA -FINISHING | 7849382 |
| 206 | 40100.40200.40400.56000.58600.59300.61000.330300.2589800 | PLASTER APPLICATION | 6d | 2026-01-10 | 2026-01-15 | 421FS+15d |  | RGA -FINISHING | 7849392 |
| 207 | 40100.40200.40400.56000.58600.59300.61000.330300.2589900 | CONCEALED PLUMBING | 8d | 2026-01-16 | 2026-01-23 | 206 |  | RGA -FINISHING | 7849402 |
| 208 | 40100.40200.40400.56000.58600.59300.61000.330300.2590000 | WATERPROOFING WORK FOR TOILETS, KITCHEN SUNK & PLANTERS | 8d | 2026-01-24 | 2026-01-31 | 207 |  | RGA -FINISHING | 7849412 |
| 209 | 40100.40200.40400.56000.58600.59300.61000.330200 | **5th FLOOR** | 61d | 2025-12-13 | 2026-02-11 |  | start no earlier than 2025-12-13 | RGA -FINISHING | 7807062 |
| 210 | 40100.40200.40400.56000.58600.59300.61000.330200.2590100 | BALCONY RAILING FIXING | 9d | 2025-12-20 | 2025-12-28 | 85FS-15d |  | RGA -FINISHING | 7849422 |
| 211 | 40100.40200.40400.56000.58600.59300.61000.330200.2590200 | Block work | 2d | 2026-02-10 | 2026-02-11 | 215 |  | RGA -FINISHING | 7849432 |
| 212 | 40100.40200.40400.56000.58600.59300.61000.330200.2590300 | CONCEALED ELEC CONDUITING & ITS FINISHING | 5d | 2025-12-13 | 2025-12-17 | 74FS-5d |  | RGA -FINISHING | 7849442 |
| 213 | 40100.40200.40400.56000.58600.59300.61000.330200.2590400 | PLASTER APPLICATION | 6d | 2026-01-19 | 2026-01-24 | 434FS+15d |  | RGA -FINISHING | 7849452 |
| 214 | 40100.40200.40400.56000.58600.59300.61000.330200.2590500 | CONCEALED PLUMBING | 8d | 2026-01-25 | 2026-02-01 | 213 |  | RGA -FINISHING | 7849462 |
| 215 | 40100.40200.40400.56000.58600.59300.61000.330200.2590600 | WATERPROOFING WORK FOR TOILETS, KITCHEN SUNK & PLANTERS | 8d | 2026-02-02 | 2026-02-09 | 214 |  | RGA -FINISHING | 7849472 |
| 216 | 40100.40200.40400.56000.58600.59300.61000.330100 | **6th FLOOR** | 62d | 2025-12-21 | 2026-02-20 |  | start no earlier than 2025-12-21 | RGA -FINISHING | 7807072 |
| 217 | 40100.40200.40400.56000.58600.59300.61000.330100.2590700 | BALCONY RAILING FIXING | 9d | 2025-12-29 | 2026-01-06 | 89FS-15d |  | RGA -FINISHING | 7849482 |
| 218 | 40100.40200.40400.56000.58600.59300.61000.330100.2590800 | Block work | 2d | 2026-02-19 | 2026-02-20 | 222 |  | RGA -FINISHING | 7849492 |
| 219 | 40100.40200.40400.56000.58600.59300.61000.330100.2590900 | CONCEALED ELEC CONDUITING & ITS FINISHING | 5d | 2025-12-21 | 2025-12-25 | 78FS-5d |  | RGA -FINISHING | 7849502 |
| 220 | 40100.40200.40400.56000.58600.59300.61000.330100.2591000 | PLASTER APPLICATION | 6d | 2026-01-28 | 2026-02-02 | 447FS+15d |  | RGA -FINISHING | 7849512 |
| 221 | 40100.40200.40400.56000.58600.59300.61000.330100.2591100 | CONCEALED PLUMBING | 8d | 2026-02-03 | 2026-02-10 | 220 |  | RGA -FINISHING | 7849522 |
| 222 | 40100.40200.40400.56000.58600.59300.61000.330100.2591200 | WATERPROOFING WORK FOR TOILETS, KITCHEN SUNK & PLANTERS | 8d | 2026-02-11 | 2026-02-18 | 221 |  | RGA -FINISHING | 7849532 |
| 223 | 40100.40200.40400.56000.58600.59300.61000.330000 | **7th FLOOR** | 71d | 2025-12-21 | 2026-03-01 |  | start no earlier than 2025-12-21 | RGA -FINISHING | 7807082 |
| 224 | 40100.40200.40400.56000.58600.59300.61000.330000.2591300 | BALCONY RAILING FIXING | 9d | 2026-01-07 | 2026-01-15 | 93FS-15d |  | RGA -FINISHING | 7849542 |
| 225 | 40100.40200.40400.56000.58600.59300.61000.330000.2591400 | Block work | 2d | 2026-02-28 | 2026-03-01 | 229 |  | RGA -FINISHING | 7849552 |
| 226 | 40100.40200.40400.56000.58600.59300.61000.330000.2591500 | CONCEALED ELEC CONDUITING & ITS FINISHING | 5d | 2025-12-21 | 2025-12-25 | 78FS-5d |  | RGA -FINISHING | 7849562 |
| 227 | 40100.40200.40400.56000.58600.59300.61000.330000.2591600 | PLASTER APPLICATION | 6d | 2026-02-06 | 2026-02-11 | 460FS+15d |  | RGA -FINISHING | 7849572 |
| 228 | 40100.40200.40400.56000.58600.59300.61000.330000.2591700 | CONCEALED PLUMBING | 8d | 2026-02-12 | 2026-02-19 | 227 |  | RGA -FINISHING | 7849582 |
| 229 | 40100.40200.40400.56000.58600.59300.61000.330000.2591800 | WATERPROOFING WORK FOR TOILETS, KITCHEN SUNK & PLANTERS | 8d | 2026-02-20 | 2026-02-27 | 228 |  | RGA -FINISHING | 7849592 |

| ID | WBS | Task | Duration | Start | Finish | Predecessors | Constraint | Calendar | Unique_Task_ID |
| --- | --- | --- | --- | --- | --- | --- | --- | --- | --- |
| 230 | 40100.40200.40400.56000.58600.59300.61000.329900 | **8th FLOOR** | 71d | 2025-12-30 | 2026-03-10 |  | start no earlier than 2025-12-30 | RGA -FINISHING | 7807092 |
| 231 | 40100.40200.40400.56000.58600.59300.61000.329900.2591900 | BALCONY RAILING FIXING | 9d | 2026-01-16 | 2026-01-24 | 97FS-16d |  | RGA -FINISHING | 7849602 |
| 232 | 40100.40200.40400.56000.58600.59300.61000.329900.2592000 | Block work | 2d | 2026-03-09 | 2026-03-10 | 236 |  | RGA -FINISHING | 7849612 |
| 233 | 40100.40200.40400.56000.58600.59300.61000.329900.2592100 | CONCEALED ELEC CONDUITING & ITS FINISHING | 5d | 2025-12-30 | 2026-01-03 | 82FS-5d |  | RGA -FINISHING | 7849622 |
| 234 | 40100.40200.40400.56000.58600.59300.61000.329900.2592200 | PLASTER APPLICATION | 6d | 2026-02-15 | 2026-02-20 | 473FS+15d |  | RGA -FINISHING | 7849632 |
| 235 | 40100.40200.40400.56000.58600.59300.61000.329900.2592300 | CONCEALED PLUMBING | 8d | 2026-02-21 | 2026-02-28 | 234 |  | RGA -FINISHING | 7849642 |
| 236 | 40100.40200.40400.56000.58600.59300.61000.329900.2592400 | WATERPROOFING WORK FOR TOILETS, KITCHEN SUNK & PLANTERS | 8d | 2026-03-01 | 2026-03-08 | 235 |  | RGA -FINISHING | 7849652 |
| 237 | 40100.40200.40400.56000.58600.59300.61000.329800 | **9th FLOOR** | 71d | 2026-01-08 | 2026-03-19 |  | start no earlier than 2026-01-08 | RGA -FINISHING | 7807102 |
| 238 | 40100.40200.40400.56000.58600.59300.61000.329800.2592500 | BALCONY RAILING FIXING | 9d | 2026-01-25 | 2026-02-02 | 101FS-16d |  | RGA -FINISHING | 7849662 |
| 239 | 40100.40200.40400.56000.58600.59300.61000.329800.2592600 | Block work | 2d | 2026-03-18 | 2026-03-19 | 243 |  | RGA -FINISHING | 7849672 |
| 240 | 40100.40200.40400.56000.58600.59300.61000.329800.2592700 | CONCEALED ELEC CONDUITING & ITS FINISHING | 5d | 2026-01-08 | 2026-01-12 | 86FS-5d |  | RGA -FINISHING | 7849682 |
| 241 | 40100.40200.40400.56000.58600.59300.61000.329800.2592800 | PLASTER APPLICATION | 6d | 2026-02-24 | 2026-03-01 | 486FS+15d |  | RGA -FINISHING | 7849692 |
| 242 | 40100.40200.40400.56000.58600.59300.61000.329800.2592900 | CONCEALED PLUMBING | 8d | 2026-03-02 | 2026-03-09 | 241 |  | RGA -FINISHING | 7849702 |
| 243 | 40100.40200.40400.56000.58600.59300.61000.329800.2593000 | WATERPROOFING WORK FOR TOILETS, KITCHEN SUNK & PLANTERS | 8d | 2026-03-10 | 2026-03-17 | 242 |  | RGA -FINISHING | 7849712 |
| 244 | 40100.40200.40400.56000.58600.59300.61000.329700 | **10th FLOOR** | 72d | 2026-01-17 | 2026-03-29 |  | start no earlier than 2026-01-17 | RGA -FINISHING | 7807112 |
| 245 | 40100.40200.40400.56000.58600.59300.61000.329700.2593100 | BALCONY RAILING FIXING | 9d | 2026-02-04 | 2026-02-12 | 105FS-15d |  | RGA -FINISHING | 7849722 |
| 246 | 40100.40200.40400.56000.58600.59300.61000.329700.2593200 | Block work | 2d | 2026-03-28 | 2026-03-29 | 250 |  | RGA -FINISHING | 7849732 |
| 247 | 40100.40200.40400.56000.58600.59300.61000.329700.2593300 | CONCEALED ELEC CONDUITING & ITS FINISHING | 5d | 2026-01-17 | 2026-01-21 | 90FS-5d |  | RGA -FINISHING | 7849742 |
| 248 | 40100.40200.40400.56000.58600.59300.61000.329700.2593400 | PLASTER APPLICATION | 6d | 2026-03-06 | 2026-03-11 | 499FS+15d |  | RGA -FINISHING | 7849752 |
| 249 | 40100.40200.40400.56000.58600.59300.61000.329700.2593500 | CONCEALED PLUMBING | 8d | 2026-03-12 | 2026-03-19 | 248 |  | RGA -FINISHING | 7849762 |
| 250 | 40100.40200.40400.56000.58600.59300.61000.329700.2593600 | WATERPROOFING WORK FOR TOILETS, KITCHEN SUNK & PLANTERS | 8d | 2026-03-20 | 2026-03-27 | 249 |  | RGA -FINISHING | 7849772 |
| 251 | 40100.40200.40400.56000.58600.59300.61000.329600 | **11th FLOOR** | 71d | 2026-01-27 | 2026-04-07 |  | start no earlier than 2026-01-27 | RGA -FINISHING | 7807122 |
| 252 | 40100.40200.40400.56000.58600.59300.61000.329600.2593700 | BALCONY RAILING FIXING | 9d | 2026-02-13 | 2026-02-21 | 109FS-15d |  | RGA -FINISHING | 7849782 |
| 253 | 40100.40200.40400.56000.58600.59300.61000.329600.2593800 | Block work | 2d | 2026-04-06 | 2026-04-07 | 257 |  | RGA -FINISHING | 7849792 |
| 254 | 40100.40200.40400.56000.58600.59300.61000.329600.2593900 | CONCEALED ELEC CONDUITING & ITS FINISHING | 5d | 2026-01-27 | 2026-01-31 | 94FS-5d |  | RGA -FINISHING | 7849802 |
| 255 | 40100.40200.40400.56000.58600.59300.61000.329600.2594000 | PLASTER APPLICATION | 6d | 2026-03-15 | 2026-03-20 | 512FS+15d |  | RGA -FINISHING | 7849812 |
| 256 | 40100.40200.40400.56000.58600.59300.61000.329600.2594100 | CONCEALED PLUMBING | 8d | 2026-03-21 | 2026-03-28 | 255 |  | RGA -FINISHING | 7849822 |
| 257 | 40100.40200.40400.56000.58600.59300.61000.329600.2594200 | WATERPROOFING WORK FOR TOILETS, KITCHEN SUNK & PLANTERS | 8d | 2026-03-29 | 2026-04-05 | 256 |  | RGA -FINISHING | 7849832 |

| ID | WBS | Task | Duration | Start | Finish | Predecessors | Constraint | Calendar | Unique_Task_ID |
| --- | --- | --- | --- | --- | --- | --- | --- | --- | --- |
| 258 | 40100.40200.40400.56000.58600.59300.61000.329500 | **12th FLOOR** | 71d | 2026-02-05 | 2026-04-16 |  | start no earlier than 2026-02-05 | RGA -FINISHING | 7807132 |
| 259 | 40100.40200.40400.56000.58600.59300.61000.329500.2594300 | BALCONY RAILING FIXING | 9d | 2026-02-22 | 2026-03-02 | 113FS-15d |  | RGA -FINISHING | 7849842 |
| 260 | 40100.40200.40400.56000.58600.59300.61000.329500.2594400 | Block work | 2d | 2026-04-15 | 2026-04-16 | 264 |  | RGA -FINISHING | 7849852 |
| 261 | 40100.40200.40400.56000.58600.59300.61000.329500.2594500 | CONCEALED ELEC CONDUITING & ITS FINISHING | 5d | 2026-02-05 | 2026-02-09 | 98FS-5d |  | RGA -FINISHING | 7849862 |
| 262 | 40100.40200.40400.56000.58600.59300.61000.329500.2594600 | PLASTER APPLICATION | 6d | 2026-03-24 | 2026-03-29 | 525FS+15d |  | RGA -FINISHING | 7849872 |
| 263 | 40100.40200.40400.56000.58600.59300.61000.329500.2594700 | CONCEALED PLUMBING | 8d | 2026-03-30 | 2026-04-06 | 262 |  | RGA -FINISHING | 7849882 |
| 264 | 40100.40200.40400.56000.58600.59300.61000.329500.2594800 | WATERPROOFING WORK FOR TOILETS, KITCHEN SUNK & PLANTERS | 8d | 2026-04-07 | 2026-04-14 | 263 |  | RGA -FINISHING | 7849892 |
| 265 | 40100.40200.40400.56000.58600.59300.61000.329400 | **13th FLOOR** | 71d | 2026-02-14 | 2026-04-25 |  | start no earlier than 2026-02-14 | RGA -FINISHING | 7807142 |
| 266 | 40100.40200.40400.56000.58600.59300.61000.329400.2594900 | BALCONY RAILING FIXING | 9d | 2026-03-03 | 2026-03-11 | 117FS-15d |  | RGA -FINISHING | 7849902 |
| 267 | 40100.40200.40400.56000.58600.59300.61000.329400.2595000 | Block work | 2d | 2026-04-24 | 2026-04-25 | 271 |  | RGA -FINISHING | 7849912 |
| 268 | 40100.40200.40400.56000.58600.59300.61000.329400.2595100 | CONCEALED ELEC CONDUITING & ITS FINISHING | 5d | 2026-02-14 | 2026-02-18 | 102FS-5d |  | RGA -FINISHING | 7849922 |
| 269 | 40100.40200.40400.56000.58600.59300.61000.329400.2595200 | PLASTER APPLICATION | 6d | 2026-04-02 | 2026-04-07 | 538FS+15d |  | RGA -FINISHING | 7849932 |
| 270 | 40100.40200.40400.56000.58600.59300.61000.329400.2595300 | CONCEALED PLUMBING | 8d | 2026-04-08 | 2026-04-15 | 269 |  | RGA -FINISHING | 7849942 |
| 271 | 40100.40200.40400.56000.58600.59300.61000.329400.2595400 | WATERPROOFING WORK FOR TOILETS, KITCHEN SUNK & PLANTERS | 8d | 2026-04-16 | 2026-04-23 | 270 |  | RGA -FINISHING | 7849952 |
| 272 | 40100.40200.40400.56000.58600.59300.61000.329300 | **14th FLOOR** | 71d | 2026-02-23 | 2026-05-04 |  | start no earlier than 2026-02-23 | RGA -FINISHING | 7807152 |
| 273 | 40100.40200.40400.56000.58600.59300.61000.329300.2595500 | BALCONY RAILING FIXING | 9d | 2026-03-12 | 2026-03-20 | 121FS-15d |  | RGA -FINISHING | 7849962 |
| 274 | 40100.40200.40400.56000.58600.59300.61000.329300.2595600 | Block work | 2d | 2026-05-03 | 2026-05-04 | 278 |  | RGA -FINISHING | 7849972 |
| 275 | 40100.40200.40400.56000.58600.59300.61000.329300.2595700 | CONCEALED ELEC CONDUITING & ITS FINISHING | 5d | 2026-02-23 | 2026-02-27 | 106FS-5d |  | RGA -FINISHING | 7849982 |
| 276 | 40100.40200.40400.56000.58600.59300.61000.329300.2595800 | PLASTER APPLICATION | 6d | 2026-04-11 | 2026-04-16 | 551FS+15d |  | RGA -FINISHING | 7849992 |
| 277 | 40100.40200.40400.56000.58600.59300.61000.329300.2595900 | CONCEALED PLUMBING | 8d | 2026-04-17 | 2026-04-24 | 276 |  | RGA -FINISHING | 7850002 |
| 278 | 40100.40200.40400.56000.58600.59300.61000.329300.2596000 | WATERPROOFING WORK FOR TOILETS, KITCHEN SUNK & PLANTERS | 8d | 2026-04-25 | 2026-05-02 | 277 |  | RGA -FINISHING | 7850012 |
| 279 | 40100.40200.40400.56000.58600.59300.61000.329200 | **15th FLOOR** | 71d | 2026-03-04 | 2026-05-13 |  | start no earlier than 2026-03-04 | RGA -FINISHING | 7807162 |
| 280 | 40100.40200.40400.56000.58600.59300.61000.329200.2596100 | BALCONY RAILING FIXING | 9d | 2026-03-21 | 2026-03-29 | 125FS-15d |  | RGA -FINISHING | 7850022 |
| 281 | 40100.40200.40400.56000.58600.59300.61000.329200.2596200 | Block work | 2d | 2026-05-12 | 2026-05-13 | 285 |  | RGA -FINISHING | 7850032 |
| 282 | 40100.40200.40400.56000.58600.59300.61000.329200.2596300 | CONCEALED ELEC CONDUITING & ITS FINISHING | 5d | 2026-03-04 | 2026-03-08 | 110FS-5d |  | RGA -FINISHING | 7850042 |
| 283 | 40100.40200.40400.56000.58600.59300.61000.329200.2596400 | PLASTER APPLICATION | 6d | 2026-04-20 | 2026-04-25 | 564FS+15d |  | RGA -FINISHING | 7850052 |
| 284 | 40100.40200.40400.56000.58600.59300.61000.329200.2596500 | CONCEALED PLUMBING | 8d | 2026-04-26 | 2026-05-03 | 283 |  | RGA -FINISHING | 7850062 |
| 285 | 40100.40200.40400.56000.58600.59300.61000.329200.2596600 | WATERPROOFING WORK FOR TOILETS, KITCHEN SUNK & PLANTERS | 8d | 2026-05-04 | 2026-05-11 | 284 |  | RGA -FINISHING | 7850072 |

| ID | WBS | Task | Duration | Start | Finish | Predecessors | Constraint | Calendar | Unique_Task_ID |
| --- | --- | --- | --- | --- | --- | --- | --- | --- | --- |
| 286 | 40100.40200.40400.56000.58600.59300.61000.329100 | **16th FLOOR** | 71d | 2026-03-13 | 2026-05-22 |  | start no earlier than 2026-03-13 | RGA -FINISHING | 7807172 |
| 287 | 40100.40200.40400.56000.58600.59300.61000.329100.2596700 | BALCONY RAILING FIXING | 9d | 2026-03-30 | 2026-04-07 | 129FS-15d |  | RGA -FINISHING | 7850082 |
| 288 | 40100.40200.40400.56000.58600.59300.61000.329100.2596800 | Block work | 2d | 2026-05-21 | 2026-05-22 | 292 |  | RGA -FINISHING | 7850092 |
| 289 | 40100.40200.40400.56000.58600.59300.61000.329100.2596900 | CONCEALED ELEC CONDUITING & ITS FINISHING | 5d | 2026-03-13 | 2026-03-17 | 114FS-5d |  | RGA -FINISHING | 7850102 |
| 290 | 40100.40200.40400.56000.58600.59300.61000.329100.2597000 | PLASTER APPLICATION | 6d | 2026-04-29 | 2026-05-04 | 577FS+15d |  | RGA -FINISHING | 7850112 |
| 291 | 40100.40200.40400.56000.58600.59300.61000.329100.2597100 | CONCEALED PLUMBING | 8d | 2026-05-05 | 2026-05-12 | 290 |  | RGA -FINISHING | 7850122 |
| 292 | 40100.40200.40400.56000.58600.59300.61000.329100.2597200 | WATERPROOFING WORK FOR TOILETS, KITCHEN SUNK & PLANTERS | 8d | 2026-05-13 | 2026-05-20 | 291 |  | RGA -FINISHING | 7850132 |
| 293 | 40100.40200.40400.56000.58600.59300.61000.329000 | **17th FLOOR** | 70d | 2026-03-22 | 2026-05-30 |  | start no earlier than 2026-03-22 | RGA -FINISHING | 7807182 |
| 294 | 40100.40200.40400.56000.58600.59300.61000.329000.2597300 | BALCONY RAILING FIXING | 9d | 2026-04-07 | 2026-04-15 | 133FS-15d |  | RGA -FINISHING | 7850142 |
| 295 | 40100.40200.40400.56000.58600.59300.61000.329000.2597400 | Block work | 2d | 2026-05-29 | 2026-05-30 | 299 |  | RGA -FINISHING | 7850152 |
| 296 | 40100.40200.40400.56000.58600.59300.61000.329000.2597500 | CONCEALED ELEC CONDUITING & ITS FINISHING | 5d | 2026-03-22 | 2026-03-26 | 118FS-5d |  | RGA -FINISHING | 7850162 |
| 297 | 40100.40200.40400.56000.58600.59300.61000.329000.2597600 | PLASTER APPLICATION | 6d | 2026-05-07 | 2026-05-12 | 590FS+15d |  | RGA -FINISHING | 7850172 |
| 298 | 40100.40200.40400.56000.58600.59300.61000.329000.2597700 | CONCEALED PLUMBING | 8d | 2026-05-13 | 2026-05-20 | 297 |  | RGA -FINISHING | 7850182 |
| 299 | 40100.40200.40400.56000.58600.59300.61000.329000.2597800 | WATERPROOFING WORK FOR TOILETS, KITCHEN SUNK & PLANTERS | 8d | 2026-05-21 | 2026-05-28 | 298 |  | RGA -FINISHING | 7850192 |
| 300 | 40100.40200.40400.56000.58600.59300.61000.328900 | **18th FLOOR** | 73d | 2026-03-31 | 2026-06-11 |  | start no earlier than 2026-03-31 | RGA -FINISHING | 7807192 |
| 301 | 40100.40200.40400.56000.58600.59300.61000.328900.2597900 | BALCONY RAILING FIXING | 9d | 2026-04-19 | 2026-04-27 | 137FS-16d |  | RGA -FINISHING | 7850202 |
| 302 | 40100.40200.40400.56000.58600.59300.61000.328900.2598000 | Block work | 2d | 2026-06-10 | 2026-06-11 | 306 |  | RGA -FINISHING | 7850212 |
| 303 | 40100.40200.40400.56000.58600.59300.61000.328900.2598100 | CONCEALED ELEC CONDUITING & ITS FINISHING | 5d | 2026-03-31 | 2026-04-04 | 122FS-5d |  | RGA -FINISHING | 7850222 |
| 304 | 40100.40200.40400.56000.58600.59300.61000.328900.2598200 | PLASTER APPLICATION | 6d | 2026-05-19 | 2026-05-24 | 603FS+15d |  | RGA -FINISHING | 7850232 |
| 305 | 40100.40200.40400.56000.58600.59300.61000.328900.2598300 | CONCEALED PLUMBING | 8d | 2026-05-25 | 2026-06-01 | 304 |  | RGA -FINISHING | 7850242 |
| 306 | 40100.40200.40400.56000.58600.59300.61000.328900.2598400 | WATERPROOFING WORK FOR TOILETS, KITCHEN SUNK & PLANTERS | 8d | 2026-06-02 | 2026-06-09 | 305 |  | RGA -FINISHING | 7850252 |
| 307 | 40100.40200.40400.56000.58600.59300.61000.328800 | **19th FLOOR** | 72d | 2026-04-09 | 2026-06-19 |  | start no earlier than 2026-04-09 | RGA -FINISHING | 7807202 |
| 308 | 40100.40200.40400.56000.58600.59300.61000.328800.2598500 | BALCONY RAILING FIXING | 9d | 2026-04-27 | 2026-05-05 | 141FS-16d |  | RGA -FINISHING | 7850262 |
| 309 | 40100.40200.40400.56000.58600.59300.61000.328800.2598600 | Block work | 2d | 2026-06-18 | 2026-06-19 | 313 |  | RGA -FINISHING | 7850272 |
| 310 | 40100.40200.40400.56000.58600.59300.61000.328800.2598700 | CONCEALED ELEC CONDUITING & ITS FINISHING | 5d | 2026-04-09 | 2026-04-13 | 126FS-5d |  | RGA -FINISHING | 7850282 |
| 311 | 40100.40200.40400.56000.58600.59300.61000.328800.2598800 | PLASTER APPLICATION | 6d | 2026-05-27 | 2026-06-01 | 616FS+15d |  | RGA -FINISHING | 7850292 |
| 312 | 40100.40200.40400.56000.58600.59300.61000.328800.2598900 | CONCEALED PLUMBING | 8d | 2026-06-02 | 2026-06-09 | 311 |  | RGA -FINISHING | 7850302 |
| 313 | 40100.40200.40400.56000.58600.59300.61000.328800.2599000 | WATERPROOFING WORK FOR TOILETS, KITCHEN SUNK & PLANTERS | 8d | 2026-06-10 | 2026-06-17 | 312 |  | RGA -FINISHING | 7850312 |

Notes:
- 302: Last floor BW completion 2 months post Last RCC
- 309: Last floor BW completion 2 months post Last RCC

| ID | WBS | Task | Duration | Start | Finish | Predecessors | Constraint | Calendar | Unique_Task_ID |
| --- | --- | --- | --- | --- | --- | --- | --- | --- | --- |
| 314 | 40100.40200.40400.56000.58600.59300.61000.328700 | **20th FLOOR** | 73d | 2026-04-17 | 2026-06-28 |  | start no earlier than 2026-04-17 | RGA -FINISHING | 7807212 |
| 315 | 40100.40200.40400.56000.58600.59300.61000.328700.2599100 | BALCONY RAILING FIXING | 9d | 2026-05-06 | 2026-05-14 | 145FS-15d |  | RGA -FINISHING | 7850322 |
| 316 | 40100.40200.40400.56000.58600.59300.61000.328700.2599200 | Block work | 2d | 2026-06-27 | 2026-06-28 | 320 |  | RGA -FINISHING | 7850332 |
| 317 | 40100.40200.40400.56000.58600.59300.61000.328700.2599300 | CONCEALED ELEC CONDUITING & ITS FINISHING | 5d | 2026-04-17 | 2026-04-21 | 130FS-5d |  | RGA -FINISHING | 7850342 |
| 318 | 40100.40200.40400.56000.58600.59300.61000.328700.2599400 | PLASTER APPLICATION | 6d | 2026-06-05 | 2026-06-10 | 629FS+15d |  | RGA -FINISHING | 7850352 |
| 319 | 40100.40200.40400.56000.58600.59300.61000.328700.2599500 | CONCEALED PLUMBING | 8d | 2026-06-11 | 2026-06-18 | 318 |  | RGA -FINISHING | 7850362 |
| 320 | 40100.40200.40400.56000.58600.59300.61000.328700.2599600 | WATERPROOFING WORK FOR TOILETS, KITCHEN SUNK & PLANTERS | 8d | 2026-06-19 | 2026-06-26 | 319 |  | RGA -FINISHING | 7850372 |
| 321 | 40100.40200.40400.56000.58600.59300.61000.328600 | **21st FLOOR** | 69d | 2026-04-29 | 2026-07-06 |  | start no earlier than 2026-04-29 | RGA -FINISHING | 7807222 |
| 322 | 40100.40200.40400.56000.58600.59300.61000.328600.2599700 | BALCONY RAILING FIXING | 9d | 2026-05-14 | 2026-05-22 | 149FS-15d |  | RGA -FINISHING | 7850382 |
| 323 | 40100.40200.40400.56000.58600.59300.61000.328600.2599800 | Block work | 2d | 2026-07-05 | 2026-07-06 | 327 |  | RGA -FINISHING | 7850392 |
| 324 | 40100.40200.40400.56000.58600.59300.61000.328600.2599900 | CONCEALED ELEC CONDUITING & ITS FINISHING | 5d | 2026-04-29 | 2026-05-03 | 134FS-6d |  | RGA -FINISHING | 7850402 |
| 325 | 40100.40200.40400.56000.58600.59300.61000.328600.2600000 | PLASTER APPLICATION | 6d | 2026-06-13 | 2026-06-18 | 642FS+15d |  | RGA -FINISHING | 7850412 |
| 326 | 40100.40200.40400.56000.58600.59300.61000.328600.2600100 | CONCEALED PLUMBING | 8d | 2026-06-19 | 2026-06-26 | 325 |  | RGA -FINISHING | 7850422 |
| 327 | 40100.40200.40400.56000.58600.59300.61000.328600.2600200 | WATERPROOFING WORK FOR TOILETS, KITCHEN SUNK & PLANTERS | 8d | 2026-06-27 | 2026-07-04 | 326 |  | RGA -FINISHING | 7850432 |
| 328 | 40100.40200.40400.56000.58600.59300.61000.328500 | **22th FLOOR** | 83d | 2026-05-08 | 2026-07-29 |  | start no earlier than 2026-05-08 | RGA -FINISHING | 7807232 |
| 329 | 40100.40200.40400.56000.58600.59300.61000.328500.2600300 | BALCONY RAILING FIXING | 9d | 2026-05-22 | 2026-05-30 | 153FS-15d |  | RGA -FINISHING | 7850442 |
| 330 | 40100.40200.40400.56000.58600.59300.61000.328500.2600400 | Block work | 2d | 2026-07-28 | 2026-07-29 | 334 |  | RGA -FINISHING | 7850452 |
| 331 | 40100.40200.40400.56000.58600.59300.61000.328500.2600500 | CONCEALED ELEC CONDUITING & ITS FINISHING | 5d | 2026-05-08 | 2026-05-12 | 138FS-5d |  | RGA -FINISHING | 7850462 |
| 332 | 40100.40200.40400.56000.58600.59300.61000.328500.2600600 | PLASTER APPLICATION | 6d | 2026-07-06 | 2026-07-11 | 655FS+30d |  | RGA -FINISHING | 7850472 |
| 333 | 40100.40200.40400.56000.58600.59300.61000.328500.2600700 | CONCEALED PLUMBING | 8d | 2026-07-12 | 2026-07-19 | 332 |  | RGA -FINISHING | 7850482 |
| 334 | 40100.40200.40400.56000.58600.59300.61000.328500.2600800 | WATERPROOFING WORK FOR TOILETS, KITCHEN SUNK & PLANTERS | 8d | 2026-07-20 | 2026-07-27 | 333 |  | RGA -FINISHING | 7850492 |
| 335 | 40100.40200.40400.56000.58600.59300.61000.328400 | **23th FLOOR** | 83d | 2026-05-16 | 2026-08-06 |  | start no earlier than 2026-05-16 | RGA -FINISHING | 7807242 |
| 336 | 40100.40200.40400.56000.58600.59300.61000.328400.2600900 | BALCONY RAILING FIXING | 9d | 2026-05-30 | 2026-06-07 | 157FS-15d |  | RGA -FINISHING | 7850502 |
| 337 | 40100.40200.40400.56000.58600.59300.61000.328400.2601000 | Block work | 2d | 2026-08-05 | 2026-08-06 | 341 |  | RGA -FINISHING | 7850512 |
| 338 | 40100.40200.40400.56000.58600.59300.61000.328400.2601100 | CONCEALED ELEC CONDUITING & ITS FINISHING | 5d | 2026-05-16 | 2026-05-20 | 142FS-5d |  | RGA -FINISHING | 7850522 |
| 339 | 40100.40200.40400.56000.58600.59300.61000.328400.2601200 | PLASTER APPLICATION | 6d | 2026-07-14 | 2026-07-19 | 668FS+30d |  | RGA -FINISHING | 7850532 |
| 340 | 40100.40200.40400.56000.58600.59300.61000.328400.2601300 | CONCEALED PLUMBING | 8d | 2026-07-20 | 2026-07-27 | 339 |  | RGA -FINISHING | 7850542 |
| 341 | 40100.40200.40400.56000.58600.59300.61000.328400.2601400 | WATERPROOFING WORK FOR TOILETS, KITCHEN SUNK & PLANTERS | 8d | 2026-07-28 | 2026-08-04 | 340 |  | RGA -FINISHING | 7850552 |

Notes:
- 316: Last floor BW completion 2 months post Last RCC
- 323: Last floor BW completion 2 months post Last RCC
- 330: Last floor BW completion 2 months post Last RCC
- 337: Last floor BW completion 2 months post Last RCC

| ID | WBS | Task | Duration | Start | Finish | Predecessors | Constraint | Calendar | Unique_Task_ID |
| --- | --- | --- | --- | --- | --- | --- | --- | --- | --- |
| 342 | 40100.40200.40400.56000.58600.59300.61000.328300 | **24th FLOOR** | 87d | 2026-05-24 | 2026-08-18 |  | start no earlier than 2026-05-24 | RGA -FINISHING | 7807252 |
| 343 | 40100.40200.40400.56000.58600.59300.61000.328300.2601500 | BALCONY RAILING FIXING | 9d | 2026-06-11 | 2026-06-19 | 161FS-24.5d |  | RGA -FINISHING | 7850562 |
| 344 | 40100.40200.40400.56000.58600.59300.61000.328300.2601600 | Block work | 2d | 2026-08-17 | 2026-08-18 | 348 |  | RGA -FINISHING | 7850572 |
| 345 | 40100.40200.40400.56000.58600.59300.61000.328300.2601700 | CONCEALED ELEC CONDUITING & ITS FINISHING | 5d | 2026-05-24 | 2026-05-28 | 146FS-5d |  | RGA -FINISHING | 7850582 |
| 346 | 40100.40200.40400.56000.58600.59300.61000.328300.2601800 | PLASTER APPLICATION | 6d | 2026-07-26 | 2026-07-31 | 681FS+30d |  | RGA -FINISHING | 7850592 |
| 347 | 40100.40200.40400.56000.58600.59300.61000.328300.2601900 | CONCEALED PLUMBING | 8d | 2026-08-01 | 2026-08-08 | 346 |  | RGA -FINISHING | 7850602 |
| 348 | 40100.40200.40400.56000.58600.59300.61000.328300.2602000 | WATERPROOFING WORK FOR TOILETS, KITCHEN SUNK & PLANTERS | 8d | 2026-08-09 | 2026-08-16 | 347 |  | RGA -FINISHING | 7850612 |
| 349 | 40100.40200.40400.56000.58600.59300.61000.328200 | **25thFLOOR** | 88d | 2026-06-01 | 2026-08-27 |  | start no earlier than 2026-06-01 | RGA -FINISHING | 7807262 |
| 350 | 40100.40200.40400.56000.58600.59300.61000.328200.2602100 | BALCONY RAILING FIXING | 9d | 2026-06-20 | 2026-06-28 | 343 |  | RGA -FINISHING | 7850622 |
| 351 | 40100.40200.40400.56000.58600.59300.61000.328200.2602200 | Block work | 2d | 2026-08-26 | 2026-08-27 | 355 |  | RGA -FINISHING | 7850632 |
| 352 | 40100.40200.40400.56000.58600.59300.61000.328200.2602300 | CONCEALED ELEC CONDUITING & ITS FINISHING | 5d | 2026-06-01 | 2026-06-05 | 150FS-5d |  | RGA -FINISHING | 7850642 |
| 353 | 40100.40200.40400.56000.58600.59300.61000.328200.2602400 | PLASTER APPLICATION | 6d | 2026-08-04 | 2026-08-09 | 694FS+30d |  | RGA -FINISHING | 7850652 |
| 354 | 40100.40200.40400.56000.58600.59300.61000.328200.2602500 | CONCEALED PLUMBING | 8d | 2026-08-10 | 2026-08-17 | 353 |  | RGA -FINISHING | 7850662 |
| 355 | 40100.40200.40400.56000.58600.59300.61000.328200.2602600 | WATERPROOFING WORK FOR TOILETS, KITCHEN SUNK & PLANTERS | 8d | 2026-08-18 | 2026-08-25 | 354 |  | RGA -FINISHING | 7850672 |
| 356 | 40100.40200.40400.56000.58600.59300.61000.369500 | **LMR (To be Deleted)** | 33d | 2026-08-13 | 2026-09-14 |  | start no earlier than 2026-08-13 | RGA -FINISHING | 7808892 |
| 357 | 40100.40200.40400.56000.58600.59300.61000.369500.2602700 | Block work | 8d | 2026-08-13 | 2026-08-20 | 171 |  | RGA -FINISHING | 7850802 |
| 358 | 40100.40200.40400.56000.58600.59300.61000.369500.2602800 | CONCEALED ELEC CONDUITING & ITS FINISHING | 7d | 2026-08-21 | 2026-08-27 | 357 |  | RGA -FINISHING | 7850812 |
| 359 | 40100.40200.40400.56000.58600.59300.61000.369500.2602900 | PLASTER APPLICATION | 15d | 2026-08-28 | 2026-09-11 | 358 |  | RGA -FINISHING | 7850822 |
| 360 | 40100.40200.40400.56000.58600.59300.61000.369500.2603000 | DOOR FRAME FIXING | 3d | 2026-09-12 | 2026-09-14 | 359 |  | RGA -FINISHING | 7850832 |
| 361 | 40100.40200.40400.56000.58600.59300.505400 | **Terrace Finishing works** | 30d | 2027-02-19 | 2027-03-20 |  | start no earlier than 2027-02-19 | RGA -FINISHING | 7812352 |
| 362 | 40100.40200.40400.56000.58600.59300.505400.2191700 | Terrace Waterproofing work | 30d | 2027-02-19 | 2027-03-20 | 364FS+7d |  | RGA -FINISHING | 7832782 |
| 363 | 40100.40200.40400.56000.58600.59300.505500 | **EXTERNAL Painting** | 165d | 2026-08-31 | 2027-02-11 |  | start no earlier than 2026-08-31 | RGA -FINISHING | 7812342 |
| 364 | 40100.40200.40400.56000.58600.59300.505500.2191800 | 2nd coat | 165d | 2026-08-31 | 2027-02-11 | 161FS+56.5d |  | RGA -FINISHING | 7832792 |
| 365 | 40100.40200.40400.56000.58100 | **Flat internal finishing & services works** | 444d | 2025-10-03 | 2026-12-20 |  | start no earlier than 2025-10-03 | RGA -FINISHING | 7803412 |
| 366 | 40100.40200.40400.56000.58100.97200 | **GROUND FLOOR** | 378d | 2025-10-03 | 2026-10-15 |  | start no earlier than 2025-10-03 | RGA -FINISHING | 7804522 |
| 367 | 40100.40200.40400.56000.58100.97200.864900 | TOILET DADO TILE FIXING | 10d | 2025-12-21 | 2025-12-30 | 176 |  | RGA -FINISHING | 7821062 |
| 368 | 40100.40200.40400.56000.58100.97200.865000 | TOILET FLOORING WORK | 7d | 2025-12-25 | 2025-12-31 | 367FF+1d |  | RGA -FINISHING | 7821072 |
| 369 | 40100.40200.40400.56000.58100.97200.865100 | FIRE FIGHTING | 20d | 2025-10-03 | 2025-10-22 | 175SS |  | RGA -FINISHING | 7821082 |
| 370 | 40100.40200.40400.56000.58100.97200.865200 | INTERNAL PAINTING - PUTTY / PRIMER APPLICATION | 12d | 2026-01-28 | 2026-02-08 | 372 |  | RGA -FINISHING | 7821092 |
| 371 | 40100.40200.40400.56000.58100.97200.865300 | FLAT FLOORING | 15d | 2026-01-01 | 2026-01-15 | 368 |  | RGA -FINISHING | 7821102 |
| 372 | 40100.40200.40400.56000.58100.97200.865400 | WINDOW FIXING | 12d | 2026-01-16 | 2026-01-27 | 371 |  | RGA -FINISHING | 7821112 |
| 373 | 40100.40200.40400.56000.58100.97200.865500 | INTERNAL PAINTING - 1ST COAT | 12d | 2026-02-09 | 2026-02-20 | 370 |  | RGA -FINISHING | 7821122 |
| 374 | 40100.40200.40400.56000.58100.97200.865600 | INTERNAL DOOR FIXING | 15d | 2026-02-19 | 2026-03-05 | 373FS-2d |  | RGA -FINISHING | 7821132 |
| 375 | 40100.40200.40400.56000.58100.97200.865700 | WIRING & SWITCH PLATE FIXING | 8d | 2026-03-02 | 2026-03-09 | 374FS-4d |  | RGA -FINISHING | 7821142 |
| 376 | 40100.40200.40400.56000.58100.97200.865800 | TOILET FALSE CEILING | 7d | 2026-03-10 | 2026-03-16 | 375 |  | RGA -FINISHING | 7821152 |
| 377 | 40100.40200.40400.56000.58100.97200.865900 | MAIN DOOR FRAME SHUTTER FIXING | 6d | 2026-10-02 | 2026-10-07 | 709 |  | RGA -FINISHING | 7821162 |
| 378 | 40100.40200.40400.56000.58100.97200.866000 | FINAL COAT PAINT | 8d | 2026-10-08 | 2026-10-15 | 377 |  | RGA -FINISHING | 7821172 |

Notes:
- 344: Last floor BW completion 2 months post Last RCC
- 363: Ext Plaster (in 2 phases) completion 3.5 months post last BW
- 365: Completion in 12 months post last RCC

| ID | WBS | Task | Duration | Start | Finish | Predecessors | Constraint | Calendar | Unique_Task_ID |
| --- | --- | --- | --- | --- | --- | --- | --- | --- | --- |
| 379 | 40100.40200.40400.56000.58100.97600 | **1ST FLOOR** | 364d | 2025-10-23 | 2026-10-21 |  | start no earlier than 2025-10-23 | RGA -FINISHING | 7804512 |
| 380 | 40100.40200.40400.56000.58100.97600.866100 | TOILET DADO TILE FIXING | 7d | 2025-12-22 | 2025-12-28 | 183 |  | RGA -FINISHING | 7821182 |
| 381 | 40100.40200.40400.56000.58100.97600.866200 | TOILET FLOORING WORK | 7d | 2025-12-23 | 2025-12-29 | 380FF+1d |  | RGA -FINISHING | 7821192 |
| 382 | 40100.40200.40400.56000.58100.97600.866300 | FIRE FIGHTING | 6d | 2025-10-23 | 2025-10-28 | 182SS |  | RGA -FINISHING | 7821202 |
| 383 | 40100.40200.40400.56000.58100.97600.866400 | INTERNAL PAINTING - PUTTY / PRIMER APPLICATION | 6d | 2026-01-11 | 2026-01-16 | 385 |  | RGA -FINISHING | 7821212 |
| 384 | 40100.40200.40400.56000.58100.97600.866500 | FLAT FLOORING | 5d | 2025-12-30 | 2026-01-03 | 381 |  | RGA -FINISHING | 7821222 |
| 385 | 40100.40200.40400.56000.58100.97600.866600 | WINDOW FIXING | 7d | 2026-01-04 | 2026-01-10 | 384 |  | RGA -FINISHING | 7821232 |
| 386 | 40100.40200.40400.56000.58100.97600.866700 | INTERNAL PAINTING - 1ST COAT | 7d | 2026-01-17 | 2026-01-23 | 383 |  | RGA -FINISHING | 7821242 |
| 387 | 40100.40200.40400.56000.58100.97600.866800 | INTERNAL DOOR FIXING | 15d | 2026-01-22 | 2026-02-05 | 386FS-2d |  | RGA -FINISHING | 7821252 |
| 388 | 40100.40200.40400.56000.58100.97600.866900 | WIRING & SWITCH PLATE FIXING | 8d | 2026-02-02 | 2026-02-09 | 387FS-4d |  | RGA -FINISHING | 7821262 |
| 389 | 40100.40200.40400.56000.58100.97600.867000 | TOILET FALSE CEILING | 7d | 2026-02-10 | 2026-02-16 | 388 |  | RGA -FINISHING | 7821272 |
| 390 | 40100.40200.40400.56000.58100.97600.867100 | MAIN DOOR FRAME SHUTTER FIXING | 6d | 2026-10-08 | 2026-10-13 | 717 |  | RGA -FINISHING | 7821282 |
| 391 | 40100.40200.40400.56000.58100.97600.867200 | FINAL COAT PAINT | 8d | 2026-10-14 | 2026-10-21 | 390 |  | RGA -FINISHING | 7821292 |
| 392 | 40100.40200.40400.56000.58100.98000 | **2ND FLOOR** | 339d | 2025-11-17 | 2026-10-21 |  | start no earlier than 2025-11-17 | RGA -FINISHING | 7804502 |
| 393 | 40100.40200.40400.56000.58100.98000.867300 | TOILET DADO TILE FIXING | 7d | 2026-01-01 | 2026-01-07 | 190 |  | RGA -FINISHING | 7821302 |
| 394 | 40100.40200.40400.56000.58100.98000.867400 | TOILET FLOORING WORK | 7d | 2026-01-02 | 2026-01-08 | 393FF+1d |  | RGA -FINISHING | 7821312 |
| 395 | 40100.40200.40400.56000.58100.98000.867500 | FIRE FIGHTING | 6d | 2025-11-17 | 2025-11-22 | 189 |  | RGA -FINISHING | 7821322 |
| 396 | 40100.40200.40400.56000.58100.98000.867600 | INTERNAL PAINTING - PUTTY / PRIMER APPLICATION | 6d | 2026-01-21 | 2026-01-26 | 398 |  | RGA -FINISHING | 7821332 |
| 397 | 40100.40200.40400.56000.58100.98000.867700 | FLAT FLOORING | 5d | 2026-01-09 | 2026-01-13 | 394 |  | RGA -FINISHING | 7821342 |
| 398 | 40100.40200.40400.56000.58100.98000.867800 | WINDOW FIXING | 7d | 2026-01-14 | 2026-01-20 | 397 |  | RGA -FINISHING | 7821352 |
| 399 | 40100.40200.40400.56000.58100.98000.867900 | INTERNAL PAINTING - 1ST COAT | 7d | 2026-01-27 | 2026-02-02 | 396 |  | RGA -FINISHING | 7821362 |
| 400 | 40100.40200.40400.56000.58100.98000.868000 | INTERNAL DOOR FIXING | 15d | 2026-02-01 | 2026-02-15 | 399FS-2d |  | RGA -FINISHING | 7821372 |
| 401 | 40100.40200.40400.56000.58100.98000.868100 | WIRING & SWITCH PLATE FIXING | 8d | 2026-02-12 | 2026-02-19 | 400FS-4d |  | RGA -FINISHING | 7821382 |
| 402 | 40100.40200.40400.56000.58100.98000.868200 | TOILET FALSE CEILING | 7d | 2026-02-20 | 2026-02-26 | 401 |  | RGA -FINISHING | 7821392 |
| 403 | 40100.40200.40400.56000.58100.98000.868300 | MAIN DOOR FRAME SHUTTER FIXING | 6d | 2026-10-08 | 2026-10-13 | 725 |  | RGA -FINISHING | 7821402 |
| 404 | 40100.40200.40400.56000.58100.98000.868400 | FINAL COAT PAINT | 8d | 2026-10-14 | 2026-10-21 | 403 |  | RGA -FINISHING | 7821412 |

| ID | WBS | Task | Duration | Start | Finish | Predecessors | Constraint | Calendar | Unique_Task_ID |
| --- | --- | --- | --- | --- | --- | --- | --- | --- | --- |
| 405 | 40100.40200.40400.56000.58100.98500 | **3RD FLOOR** | 324d | 2025-12-12 | 2026-10-31 |  | start no earlier than 2025-12-12 | RGA -FINISHING | 7804492 |
| 406 | 40100.40200.40400.56000.58100.98500.868500 | TOILET DADO TILE FIXING | 7d | 2026-01-26 | 2026-02-01 | 197 |  | RGA -FINISHING | 7821422 |
| 407 | 40100.40200.40400.56000.58100.98500.868600 | TOILET FLOORING WORK | 7d | 2026-01-27 | 2026-02-02 | 406FF+1d |  | RGA -FINISHING | 7821432 |
| 408 | 40100.40200.40400.56000.58100.98500.868700 | FIRE FIGHTING | 6d | 2025-12-12 | 2025-12-17 | 196 |  | RGA -FINISHING | 7821442 |
| 409 | 40100.40200.40400.56000.58100.98500.868800 | INTERNAL PAINTING - PUTTY / PRIMER APPLICATION | 6d | 2026-02-15 | 2026-02-20 | 411 |  | RGA -FINISHING | 7821452 |
| 410 | 40100.40200.40400.56000.58100.98500.868900 | FLAT FLOORING | 5d | 2026-02-03 | 2026-02-07 | 407 |  | RGA -FINISHING | 7821462 |
| 411 | 40100.40200.40400.56000.58100.98500.869000 | WINDOW FIXING | 7d | 2026-02-08 | 2026-02-14 | 410 |  | RGA -FINISHING | 7821472 |
| 412 | 40100.40200.40400.56000.58100.98500.869100 | INTERNAL PAINTING - 1ST COAT | 7d | 2026-02-21 | 2026-02-27 | 409 |  | RGA -FINISHING | 7821482 |
| 413 | 40100.40200.40400.56000.58100.98500.869200 | INTERNAL DOOR FIXING | 15d | 2026-02-26 | 2026-03-12 | 412FS-2d |  | RGA -FINISHING | 7821492 |
| 414 | 40100.40200.40400.56000.58100.98500.869300 | WIRING & SWITCH PLATE FIXING | 8d | 2026-03-09 | 2026-03-16 | 413FS-4d |  | RGA -FINISHING | 7821502 |
| 415 | 40100.40200.40400.56000.58100.98500.869400 | TOILET FALSE CEILING | 7d | 2026-03-17 | 2026-03-23 | 414 |  | RGA -FINISHING | 7821512 |
| 416 | 40100.40200.40400.56000.58100.98500.869500 | MAIN DOOR FRAME SHUTTER FIXING | 6d | 2026-10-18 | 2026-10-23 | 733 |  | RGA -FINISHING | 7821522 |
| 417 | 40100.40200.40400.56000.58100.98500.869600 | FINAL COAT PAINT | 8d | 2026-10-24 | 2026-10-31 | 416 |  | RGA -FINISHING | 7821532 |
| 418 | 40100.40200.40400.56000.58100.99600 | **4TH FLOOR** | 316d | 2025-12-20 | 2026-10-31 |  | start no earlier than 2025-12-20 | RGA -FINISHING | 7804482 |
| 419 | 40100.40200.40400.56000.58100.99600.869700 | TOILET DADO TILE FIXING | 7d | 2026-02-03 | 2026-02-09 | 204 |  | RGA -FINISHING | 7821542 |
| 420 | 40100.40200.40400.56000.58100.99600.869800 | TOILET FLOORING WORK | 7d | 2026-02-10 | 2026-02-16 | 419 |  | RGA -FINISHING | 7821552 |
| 421 | 40100.40200.40400.56000.58100.99600.869900 | FIRE FIGHTING | 6d | 2025-12-20 | 2025-12-25 | 203 |  | RGA -FINISHING | 7821562 |
| 422 | 40100.40200.40400.56000.58100.99600.870000 | INTERNAL PAINTING - PUTTY / PRIMER APPLICATION | 6d | 2026-03-01 | 2026-03-06 | 424 |  | RGA -FINISHING | 7821572 |
| 423 | 40100.40200.40400.56000.58100.99600.870100 | FLAT FLOORING | 5d | 2026-02-17 | 2026-02-21 | 420 |  | RGA -FINISHING | 7821582 |
| 424 | 40100.40200.40400.56000.58100.99600.870200 | WINDOW FIXING | 7d | 2026-02-22 | 2026-02-28 | 423 |  | RGA -FINISHING | 7821592 |
| 425 | 40100.40200.40400.56000.58100.99600.870300 | INTERNAL PAINTING - 1ST COAT | 7d | 2026-03-07 | 2026-03-13 | 422 |  | RGA -FINISHING | 7821602 |
| 426 | 40100.40200.40400.56000.58100.99600.870400 | INTERNAL DOOR FIXING | 15d | 2026-03-12 | 2026-03-26 | 425FS-2d |  | RGA -FINISHING | 7821612 |
| 427 | 40100.40200.40400.56000.58100.99600.870500 | WIRING & SWITCH PLATE FIXING | 8d | 2026-03-23 | 2026-03-30 | 426FS-4d |  | RGA -FINISHING | 7821622 |
| 428 | 40100.40200.40400.56000.58100.99600.870600 | TOILET FALSE CEILING | 7d | 2026-03-31 | 2026-04-06 | 427 |  | RGA -FINISHING | 7821632 |
| 429 | 40100.40200.40400.56000.58100.99600.870700 | MAIN DOOR FRAME SHUTTER FIXING | 6d | 2026-10-18 | 2026-10-23 | 741 |  | RGA -FINISHING | 7821642 |
| 430 | 40100.40200.40400.56000.58100.99600.870800 | FINAL COAT PAINT | 8d | 2026-10-24 | 2026-10-31 | 429 |  | RGA -FINISHING | 7821652 |

| ID | WBS | Task | Duration | Start | Finish | Predecessors | Constraint | Calendar | Unique_Task_ID |
| --- | --- | --- | --- | --- | --- | --- | --- | --- | --- |
| 431 | 40100.40200.40400.56000.58100.100500 | **5TH FLOOR** | 307d | 2025-12-29 | 2026-10-31 |  | start no earlier than 2025-12-29 | RGA -FINISHING | 7804472 |
| 432 | 40100.40200.40400.56000.58100.100500.870900 | TOILET DADO TILE FIXING | 7d | 2026-02-12 | 2026-02-18 | 211 |  | RGA -FINISHING | 7821662 |
| 433 | 40100.40200.40400.56000.58100.100500.871000 | TOILET FLOORING WORK | 7d | 2026-02-19 | 2026-02-25 | 432 |  | RGA -FINISHING | 7821672 |
| 434 | 40100.40200.40400.56000.58100.100500.871100 | FIRE FIGHTING | 6d | 2025-12-29 | 2026-01-03 | 210 |  | RGA -FINISHING | 7821682 |
| 435 | 40100.40200.40400.56000.58100.100500.871200 | INTERNAL PAINTING - PUTTY / PRIMER APPLICATION | 6d | 2026-03-10 | 2026-03-15 | 437 |  | RGA -FINISHING | 7821692 |
| 436 | 40100.40200.40400.56000.58100.100500.871300 | FLAT FLOORING | 5d | 2026-02-26 | 2026-03-02 | 433 |  | RGA -FINISHING | 7821702 |
| 437 | 40100.40200.40400.56000.58100.100500.871400 | WINDOW FIXING | 7d | 2026-03-03 | 2026-03-09 | 436 |  | RGA -FINISHING | 7821712 |
| 438 | 40100.40200.40400.56000.58100.100500.871500 | INTERNAL PAINTING - 1ST COAT | 7d | 2026-03-10 | 2026-03-16 | 437 |  | RGA -FINISHING | 7821722 |
| 439 | 40100.40200.40400.56000.58100.100500.871600 | INTERNAL DOOR FIXING | 15d | 2026-03-15 | 2026-03-29 | 438FS-2d |  | RGA -FINISHING | 7821732 |
| 440 | 40100.40200.40400.56000.58100.100500.871700 | WIRING & SWITCH PLATE FIXING | 8d | 2026-03-26 | 2026-04-02 | 439FS-4d |  | RGA -FINISHING | 7821742 |
| 441 | 40100.40200.40400.56000.58100.100500.871800 | TOILET FALSE CEILING | 7d | 2026-04-03 | 2026-04-09 | 440 |  | RGA -FINISHING | 7821752 |
| 442 | 40100.40200.40400.56000.58100.100500.871900 | MAIN DOOR FRAME SHUTTER FIXING | 6d | 2026-10-18 | 2026-10-23 | 749 |  | RGA -FINISHING | 7821762 |
| 443 | 40100.40200.40400.56000.58100.100500.872000 | FINAL COAT PAINT | 8d | 2026-10-24 | 2026-10-31 | 442 |  | RGA -FINISHING | 7821772 |
| 444 | 40100.40200.40400.56000.58100.100700 | **6TH FLOOR** | 308d | 2026-01-07 | 2026-11-10 |  | start no earlier than 2026-01-07 | RGA -FINISHING | 7804462 |
| 445 | 40100.40200.40400.56000.58100.100700.872100 | TOILET DADO TILE FIXING | 7d | 2026-02-21 | 2026-02-27 | 218 |  | RGA -FINISHING | 7821782 |
| 446 | 40100.40200.40400.56000.58100.100700.872200 | TOILET FLOORING WORK | 7d | 2026-02-28 | 2026-03-06 | 445 |  | RGA -FINISHING | 7821792 |
| 447 | 40100.40200.40400.56000.58100.100700.872300 | FIRE FIGHTING | 6d | 2026-01-07 | 2026-01-12 | 217 |  | RGA -FINISHING | 7821802 |
| 448 | 40100.40200.40400.56000.58100.100700.872400 | INTERNAL PAINTING - PUTTY / PRIMER APPLICATION | 6d | 2026-03-19 | 2026-03-24 | 450 |  | RGA -FINISHING | 7821812 |
| 449 | 40100.40200.40400.56000.58100.100700.872500 | FLAT FLOORING | 5d | 2026-03-07 | 2026-03-11 | 446 |  | RGA -FINISHING | 7821822 |
| 450 | 40100.40200.40400.56000.58100.100700.872600 | WINDOW FIXING | 7d | 2026-03-12 | 2026-03-18 | 449 |  | RGA -FINISHING | 7821832 |
| 451 | 40100.40200.40400.56000.58100.100700.872700 | INTERNAL PAINTING - 1ST COAT | 7d | 2026-03-25 | 2026-03-31 | 448 |  | RGA -FINISHING | 7821842 |
| 452 | 40100.40200.40400.56000.58100.100700.872800 | INTERNAL DOOR FIXING | 15d | 2026-03-30 | 2026-04-13 | 451FS-2d |  | RGA -FINISHING | 7821852 |
| 453 | 40100.40200.40400.56000.58100.100700.872900 | WIRING & SWITCH PLATE FIXING | 8d | 2026-04-10 | 2026-04-17 | 452FS-4d |  | RGA -FINISHING | 7821862 |
| 454 | 40100.40200.40400.56000.58100.100700.873000 | TOILET FALSE CEILING | 7d | 2026-04-18 | 2026-04-24 | 453 |  | RGA -FINISHING | 7821872 |
| 455 | 40100.40200.40400.56000.58100.100700.873100 | MAIN DOOR FRAME SHUTTER FIXING | 6d | 2026-10-28 | 2026-11-02 | 757 |  | RGA -FINISHING | 7821882 |
| 456 | 40100.40200.40400.56000.58100.100700.873200 | FINAL COAT PAINT | 8d | 2026-11-03 | 2026-11-10 | 455 |  | RGA -FINISHING | 7821892 |

| ID | WBS | Task | Duration | Start | Finish | Predecessors | Constraint | Calendar | Unique_Task_ID |
| --- | --- | --- | --- | --- | --- | --- | --- | --- | --- |
| 457 | 40100.40200.40400.56000.58100.100800 | **7TH FLOOR** | 299d | 2026-01-16 | 2026-11-10 |  | start no earlier than 2026-01-16 | RGA -FINISHING | 7804452 |
| 458 | 40100.40200.40400.56000.58100.100800.873300 | TOILET DADO TILE FIXING | 7d | 2026-03-02 | 2026-03-08 | 225 |  | RGA -FINISHING | 7821902 |
| 459 | 40100.40200.40400.56000.58100.100800.873400 | TOILET FLOORING WORK | 7d | 2026-03-09 | 2026-03-15 | 458 |  | RGA -FINISHING | 7821912 |
| 460 | 40100.40200.40400.56000.58100.100800.873500 | FIRE FIGHTING | 6d | 2026-01-16 | 2026-01-21 | 224 |  | RGA -FINISHING | 7821922 |
| 461 | 40100.40200.40400.56000.58100.100800.873600 | INTERNAL PAINTING - PUTTY / PRIMER APPLICATION | 6d | 2026-03-28 | 2026-04-02 | 463 |  | RGA -FINISHING | 7821932 |
| 462 | 40100.40200.40400.56000.58100.100800.873700 | FLAT FLOORING | 5d | 2026-03-16 | 2026-03-20 | 459 |  | RGA -FINISHING | 7821942 |
| 463 | 40100.40200.40400.56000.58100.100800.873800 | WINDOW FIXING | 7d | 2026-03-21 | 2026-03-27 | 462 |  | RGA -FINISHING | 7821952 |
| 464 | 40100.40200.40400.56000.58100.100800.873900 | INTERNAL PAINTING - 1ST COAT | 7d | 2026-04-03 | 2026-04-09 | 461 |  | RGA -FINISHING | 7821962 |
| 465 | 40100.40200.40400.56000.58100.100800.874000 | INTERNAL DOOR FIXING | 15d | 2026-04-08 | 2026-04-22 | 464FS-2d |  | RGA -FINISHING | 7821972 |
| 466 | 40100.40200.40400.56000.58100.100800.874100 | WIRING & SWITCH PLATE FIXING | 8d | 2026-04-19 | 2026-04-26 | 465FS-4d |  | RGA -FINISHING | 7821982 |
| 467 | 40100.40200.40400.56000.58100.100800.874200 | TOILET FALSE CEILING | 7d | 2026-04-27 | 2026-05-03 | 466 |  | RGA -FINISHING | 7821992 |
| 468 | 40100.40200.40400.56000.58100.100800.874300 | MAIN DOOR FRAME SHUTTER FIXING | 6d | 2026-10-28 | 2026-11-02 | 765 |  | RGA -FINISHING | 7822002 |
| 469 | 40100.40200.40400.56000.58100.100800.874400 | FINAL COAT PAINT | 8d | 2026-11-03 | 2026-11-10 | 468 |  | RGA -FINISHING | 7822012 |
| 470 | 40100.40200.40400.56000.58100.101700 | **8TH FLOOR** | 290d | 2026-01-25 | 2026-11-10 |  | start no earlier than 2026-01-25 | RGA -FINISHING | 7804442 |
| 471 | 40100.40200.40400.56000.58100.101700.874500 | TOILET DADO TILE FIXING | 7d | 2026-03-11 | 2026-03-17 | 232 |  | RGA -FINISHING | 7822022 |
| 472 | 40100.40200.40400.56000.58100.101700.874600 | TOILET FLOORING WORK | 7d | 2026-03-18 | 2026-03-24 | 471 |  | RGA -FINISHING | 7822032 |
| 473 | 40100.40200.40400.56000.58100.101700.874700 | FIRE FIGHTING | 6d | 2026-01-25 | 2026-01-30 | 231 |  | RGA -FINISHING | 7822042 |
| 474 | 40100.40200.40400.56000.58100.101700.874800 | INTERNAL PAINTING - PUTTY / PRIMER APPLICATION | 6d | 2026-04-06 | 2026-04-11 | 476 |  | RGA -FINISHING | 7822052 |
| 475 | 40100.40200.40400.56000.58100.101700.874900 | FLAT FLOORING | 5d | 2026-03-25 | 2026-03-29 | 472 |  | RGA -FINISHING | 7822062 |
| 476 | 40100.40200.40400.56000.58100.101700.875000 | WINDOW FIXING | 7d | 2026-03-30 | 2026-04-05 | 475 |  | RGA -FINISHING | 7822072 |
| 477 | 40100.40200.40400.56000.58100.101700.875100 | INTERNAL PAINTING - 1ST COAT | 7d | 2026-04-12 | 2026-04-18 | 474 |  | RGA -FINISHING | 7822082 |
| 478 | 40100.40200.40400.56000.58100.101700.875200 | INTERNAL DOOR FIXING | 15d | 2026-04-17 | 2026-05-01 | 477FS-2d |  | RGA -FINISHING | 7822092 |
| 479 | 40100.40200.40400.56000.58100.101700.875300 | WIRING & SWITCH PLATE FIXING | 8d | 2026-04-28 | 2026-05-05 | 478FS-4d |  | RGA -FINISHING | 7822102 |
| 480 | 40100.40200.40400.56000.58100.101700.875400 | TOILET FALSE CEILING | 7d | 2026-05-06 | 2026-05-12 | 479 |  | RGA -FINISHING | 7822112 |
| 481 | 40100.40200.40400.56000.58100.101700.875500 | MAIN DOOR FRAME SHUTTER FIXING | 6d | 2026-10-28 | 2026-11-02 | 773 |  | RGA -FINISHING | 7822122 |
| 482 | 40100.40200.40400.56000.58100.101700.875600 | FINAL COAT PAINT | 8d | 2026-11-03 | 2026-11-10 | 481 |  | RGA -FINISHING | 7822132 |

| ID | WBS | Task | Duration | Start | Finish | Predecessors | Constraint | Calendar | Unique_Task_ID |
| --- | --- | --- | --- | --- | --- | --- | --- | --- | --- |
| 483 | 40100.40200.40400.56000.58100.102000 | **9TH FLOOR** | 281d | 2026-02-03 | 2026-11-10 |  | start no earlier than 2026-02-03 | RGA -FINISHING | 7804432 |
| 484 | 40100.40200.40400.56000.58100.102000.875700 | TOILET DADO TILE FIXING | 7d | 2026-03-20 | 2026-03-26 | 239 |  | RGA -FINISHING | 7822142 |
| 485 | 40100.40200.40400.56000.58100.102000.875800 | TOILET FLOORING WORK | 7d | 2026-03-27 | 2026-04-02 | 484 |  | RGA -FINISHING | 7822152 |
| 486 | 40100.40200.40400.56000.58100.102000.875900 | FIRE FIGHTING | 6d | 2026-02-03 | 2026-02-08 | 238 |  | RGA -FINISHING | 7822162 |
| 487 | 40100.40200.40400.56000.58100.102000.876000 | INTERNAL PAINTING - PUTTY / PRIMER APPLICATION | 6d | 2026-04-20 | 2026-04-25 | 489 |  | RGA -FINISHING | 7822172 |
| 488 | 40100.40200.40400.56000.58100.102000.876100 | FLAT FLOORING | 5d | 2026-04-03 | 2026-04-07 | 485 |  | RGA -FINISHING | 7822182 |
| 489 | 40100.40200.40400.56000.58100.102000.876200 | WINDOW FIXING | 12d | 2026-04-08 | 2026-04-19 | 488 |  | RGA -FINISHING | 7822192 |
| 490 | 40100.40200.40400.56000.58100.102000.876300 | INTERNAL PAINTING - 1ST COAT | 12d | 2026-04-26 | 2026-05-07 | 487 |  | RGA -FINISHING | 7822202 |
| 491 | 40100.40200.40400.56000.58100.102000.876400 | INTERNAL DOOR FIXING | 15d | 2026-05-06 | 2026-05-20 | 490FS-2d |  | RGA -FINISHING | 7822212 |
| 492 | 40100.40200.40400.56000.58100.102000.876500 | WIRING & SWITCH PLATE FIXING | 8d | 2026-05-23 | 2026-05-30 | 491FS+2d |  | RGA -FINISHING | 7822222 |
| 493 | 40100.40200.40400.56000.58100.102000.876600 | TOILET FALSE CEILING | 7d | 2026-05-31 | 2026-06-06 | 492 |  | RGA -FINISHING | 7822232 |
| 494 | 40100.40200.40400.56000.58100.102000.876700 | MAIN DOOR FRAME SHUTTER FIXING | 6d | 2026-10-28 | 2026-11-02 | 781 |  | RGA -FINISHING | 7822242 |
| 495 | 40100.40200.40400.56000.58100.102000.876800 | FINAL COAT PAINT | 8d | 2026-11-03 | 2026-11-10 | 494 |  | RGA -FINISHING | 7822252 |
| 496 | 40100.40200.40400.56000.58100.102400 | **10TH FLOOR** | 281d | 2026-02-13 | 2026-11-20 |  | start no earlier than 2026-02-13 | RGA -FINISHING | 7804422 |
| 497 | 40100.40200.40400.56000.58100.102400.876900 | TOILET DADO TILE FIXING | 7d | 2026-03-30 | 2026-04-05 | 246 |  | RGA -FINISHING | 7822262 |
| 498 | 40100.40200.40400.56000.58100.102400.877000 | TOILET FLOORING WORK | 7d | 2026-04-06 | 2026-04-12 | 497 |  | RGA -FINISHING | 7822272 |
| 499 | 40100.40200.40400.56000.58100.102400.877100 | FIRE FIGHTING | 6d | 2026-02-13 | 2026-02-18 | 245 |  | RGA -FINISHING | 7822282 |
| 500 | 40100.40200.40400.56000.58100.102400.877200 | INTERNAL PAINTING - PUTTY / PRIMER APPLICATION | 6d | 2026-04-30 | 2026-05-05 | 502 |  | RGA -FINISHING | 7822292 |
| 501 | 40100.40200.40400.56000.58100.102400.877300 | FLAT FLOORING | 5d | 2026-04-13 | 2026-04-17 | 498 |  | RGA -FINISHING | 7822302 |
| 502 | 40100.40200.40400.56000.58100.102400.877400 | WINDOW FIXING | 12d | 2026-04-18 | 2026-04-29 | 501 |  | RGA -FINISHING | 7822312 |
| 503 | 40100.40200.40400.56000.58100.102400.877500 | INTERNAL PAINTING - 1ST COAT | 12d | 2026-05-06 | 2026-05-17 | 500 |  | RGA -FINISHING | 7822322 |
| 504 | 40100.40200.40400.56000.58100.102400.877600 | INTERNAL DOOR FIXING | 15d | 2026-05-16 | 2026-05-30 | 503FS-2d |  | RGA -FINISHING | 7822332 |
| 505 | 40100.40200.40400.56000.58100.102400.877700 | WIRING & SWITCH PLATE FIXING | 8d | 2026-05-27 | 2026-06-03 | 504FS-4d |  | RGA -FINISHING | 7822342 |
| 506 | 40100.40200.40400.56000.58100.102400.877800 | TOILET FALSE CEILING | 7d | 2026-06-04 | 2026-06-10 | 505 |  | RGA -FINISHING | 7822352 |
| 507 | 40100.40200.40400.56000.58100.102400.877900 | MAIN DOOR FRAME SHUTTER FIXING | 6d | 2026-11-07 | 2026-11-12 | 789 |  | RGA -FINISHING | 7822362 |
| 508 | 40100.40200.40400.56000.58100.102400.878000 | FINAL COAT PAINT | 8d | 2026-11-13 | 2026-11-20 | 507 |  | RGA -FINISHING | 7822372 |

| ID | WBS | Task | Duration | Start | Finish | Predecessors | Constraint | Calendar | Unique_Task_ID |
| --- | --- | --- | --- | --- | --- | --- | --- | --- | --- |
| 509 | 40100.40200.40400.56000.58100.102500 | **11TH FLOOR** | 272d | 2026-02-22 | 2026-11-20 |  | start no earlier than 2026-02-22 | RGA -FINISHING | 7804412 |
| 510 | 40100.40200.40400.56000.58100.102500.878100 | TOILET DADO TILE FIXING | 7d | 2026-04-08 | 2026-04-14 | 253 |  | RGA -FINISHING | 7822382 |
| 511 | 40100.40200.40400.56000.58100.102500.878200 | TOILET FLOORING WORK | 7d | 2026-04-15 | 2026-04-21 | 510 |  | RGA -FINISHING | 7822392 |
| 512 | 40100.40200.40400.56000.58100.102500.878300 | FIRE FIGHTING | 6d | 2026-02-22 | 2026-02-27 | 252 |  | RGA -FINISHING | 7822402 |
| 513 | 40100.40200.40400.56000.58100.102500.878400 | INTERNAL PAINTING - PUTTY / PRIMER APPLICATION | 6d | 2026-05-09 | 2026-05-14 | 515 |  | RGA -FINISHING | 7822412 |
| 514 | 40100.40200.40400.56000.58100.102500.878500 | FLAT FLOORING | 5d | 2026-04-22 | 2026-04-26 | 511 |  | RGA -FINISHING | 7822422 |
| 515 | 40100.40200.40400.56000.58100.102500.878600 | WINDOW FIXING | 12d | 2026-04-27 | 2026-05-08 | 514 |  | RGA -FINISHING | 7822432 |
| 516 | 40100.40200.40400.56000.58100.102500.878700 | INTERNAL PAINTING - 1ST COAT | 12d | 2026-05-15 | 2026-05-26 | 513 |  | RGA -FINISHING | 7822442 |
| 517 | 40100.40200.40400.56000.58100.102500.878800 | INTERNAL DOOR FIXING | 15d | 2026-05-27 | 2026-06-10 | 516 |  | RGA -FINISHING | 7822452 |
| 518 | 40100.40200.40400.56000.58100.102500.878900 | WIRING & SWITCH PLATE FIXING | 8d | 2026-06-09 | 2026-06-16 | 517FS-2d |  | RGA -FINISHING | 7822462 |
| 519 | 40100.40200.40400.56000.58100.102500.879000 | TOILET FALSE CEILING | 7d | 2026-06-13 | 2026-06-19 | 518FS-4d |  | RGA -FINISHING | 7822472 |
| 520 | 40100.40200.40400.56000.58100.102500.879100 | MAIN DOOR FRAME SHUTTER FIXING | 6d | 2026-11-07 | 2026-11-12 | 797 |  | RGA -FINISHING | 7822482 |
| 521 | 40100.40200.40400.56000.58100.102500.879200 | FINAL COAT PAINT | 8d | 2026-11-13 | 2026-11-20 | 520 |  | RGA -FINISHING | 7822492 |
| 522 | 40100.40200.40400.56000.58100.102700 | **12TH FLOOR** | 263d | 2026-03-03 | 2026-11-20 |  | start no earlier than 2026-03-03 | RGA -FINISHING | 7804402 |
| 523 | 40100.40200.40400.56000.58100.102700.879300 | TOILET DADO TILE FIXING | 7d | 2026-04-17 | 2026-04-23 | 260 |  | RGA -FINISHING | 7822502 |
| 524 | 40100.40200.40400.56000.58100.102700.879400 | TOILET FLOORING WORK | 7d | 2026-04-24 | 2026-04-30 | 523 |  | RGA -FINISHING | 7822512 |
| 525 | 40100.40200.40400.56000.58100.102700.879500 | FIRE FIGHTING | 6d | 2026-03-03 | 2026-03-08 | 259 |  | RGA -FINISHING | 7822522 |
| 526 | 40100.40200.40400.56000.58100.102700.879600 | INTERNAL PAINTING - PUTTY / PRIMER APPLICATION | 6d | 2026-05-18 | 2026-05-23 | 528 |  | RGA -FINISHING | 7822532 |
| 527 | 40100.40200.40400.56000.58100.102700.879700 | FLAT FLOORING | 5d | 2026-05-01 | 2026-05-05 | 524 |  | RGA -FINISHING | 7822542 |
| 528 | 40100.40200.40400.56000.58100.102700.879800 | WINDOW FIXING | 12d | 2026-05-06 | 2026-05-17 | 527 |  | RGA -FINISHING | 7822552 |
| 529 | 40100.40200.40400.56000.58100.102700.879900 | INTERNAL PAINTING - 1ST COAT | 12d | 2026-05-24 | 2026-06-04 | 526 |  | RGA -FINISHING | 7822562 |
| 530 | 40100.40200.40400.56000.58100.102700.880000 | INTERNAL DOOR FIXING | 15d | 2026-06-05 | 2026-06-19 | 529 |  | RGA -FINISHING | 7822572 |
| 531 | 40100.40200.40400.56000.58100.102700.880100 | WIRING & SWITCH PLATE FIXING | 8d | 2026-06-18 | 2026-06-25 | 530FS-2d |  | RGA -FINISHING | 7822582 |
| 532 | 40100.40200.40400.56000.58100.102700.880200 | TOILET FALSE CEILING | 7d | 2026-06-22 | 2026-06-28 | 531FS-4d |  | RGA -FINISHING | 7822592 |
| 533 | 40100.40200.40400.56000.58100.102700.880300 | MAIN DOOR FRAME SHUTTER FIXING | 6d | 2026-11-07 | 2026-11-12 | 805 |  | RGA -FINISHING | 7822602 |
| 534 | 40100.40200.40400.56000.58100.102700.880400 | FINAL COAT PAINT | 8d | 2026-11-13 | 2026-11-20 | 533 |  | RGA -FINISHING | 7822612 |

| ID | WBS | Task | Duration | Start | Finish | Predecessors | Constraint | Calendar | Unique_Task_ID |
| --- | --- | --- | --- | --- | --- | --- | --- | --- | --- |
| 535 | 40100.40200.40400.56000.58100.103200 | **13TH FLOOR** | 264d | 2026-03-12 | 2026-11-30 |  | start no earlier than 2026-03-12 | RGA -FINISHING | 7804392 |
| 536 | 40100.40200.40400.56000.58100.103200.880500 | TOILET DADO TILE FIXING | 10d | 2026-04-26 | 2026-05-05 | 267 |  | RGA -FINISHING | 7822622 |
| 537 | 40100.40200.40400.56000.58100.103200.880600 | TOILET FLOORING WORK | 7d | 2026-05-06 | 2026-05-12 | 536 |  | RGA -FINISHING | 7822632 |
| 538 | 40100.40200.40400.56000.58100.103200.880700 | FIRE FIGHTING | 6d | 2026-03-12 | 2026-03-17 | 266 |  | RGA -FINISHING | 7822642 |
| 539 | 40100.40200.40400.56000.58100.103200.880800 | INTERNAL PAINTING - PUTTY / PRIMER APPLICATION | 8d | 2026-06-04 | 2026-06-11 | 541 |  | RGA -FINISHING | 7822652 |
| 540 | 40100.40200.40400.56000.58100.103200.880900 | FLAT FLOORING | 10d | 2026-05-13 | 2026-05-22 | 537 |  | RGA -FINISHING | 7822662 |
| 541 | 40100.40200.40400.56000.58100.103200.881000 | WINDOW FIXING | 12d | 2026-05-23 | 2026-06-03 | 540 |  | RGA -FINISHING | 7822672 |
| 542 | 40100.40200.40400.56000.58100.103200.881100 | INTERNAL PAINTING - 1ST COAT | 12d | 2026-06-12 | 2026-06-23 | 539 |  | RGA -FINISHING | 7822682 |
| 543 | 40100.40200.40400.56000.58100.103200.881200 | INTERNAL DOOR FIXING | 15d | 2026-06-22 | 2026-07-06 | 542FS-2d |  | RGA -FINISHING | 7822692 |
| 544 | 40100.40200.40400.56000.58100.103200.881300 | WIRING & SWITCH PLATE FIXING | 8d | 2026-07-03 | 2026-07-10 | 543FS-4d |  | RGA -FINISHING | 7822702 |
| 545 | 40100.40200.40400.56000.58100.103200.881400 | TOILET FALSE CEILING | 7d | 2026-07-11 | 2026-07-17 | 544 |  | RGA -FINISHING | 7822712 |
| 546 | 40100.40200.40400.56000.58100.103200.881500 | MAIN DOOR FRAME SHUTTER FIXING | 6d | 2026-11-17 | 2026-11-22 | 813 |  | RGA -FINISHING | 7822722 |
| 547 | 40100.40200.40400.56000.58100.103200.881600 | FINAL COAT PAINT | 8d | 2026-11-23 | 2026-11-30 | 546 |  | RGA -FINISHING | 7822732 |
| 548 | 40100.40200.40400.56000.58100.104000 | **14TH FLOOR** | 255d | 2026-03-21 | 2026-11-30 |  | start no earlier than 2026-03-21 | RGA -FINISHING | 7804382 |
| 549 | 40100.40200.40400.56000.58100.104000.881700 | TOILET DADO TILE FIXING | 10d | 2026-05-05 | 2026-05-14 | 274 |  | RGA -FINISHING | 7822742 |
| 550 | 40100.40200.40400.56000.58100.104000.881800 | TOILET FLOORING WORK | 7d | 2026-05-15 | 2026-05-21 | 549 |  | RGA -FINISHING | 7822752 |
| 551 | 40100.40200.40400.56000.58100.104000.881900 | FIRE FIGHTING | 6d | 2026-03-21 | 2026-03-26 | 273 |  | RGA -FINISHING | 7822762 |
| 552 | 40100.40200.40400.56000.58100.104000.882000 | INTERNAL PAINTING - PUTTY / PRIMER APPLICATION | 8d | 2026-06-13 | 2026-06-20 | 554 |  | RGA -FINISHING | 7822772 |
| 553 | 40100.40200.40400.56000.58100.104000.882100 | FLAT FLOORING | 10d | 2026-05-22 | 2026-05-31 | 550 |  | RGA -FINISHING | 7822782 |
| 554 | 40100.40200.40400.56000.58100.104000.882200 | WINDOW FIXING | 12d | 2026-06-01 | 2026-06-12 | 553 |  | RGA -FINISHING | 7822792 |
| 555 | 40100.40200.40400.56000.58100.104000.882300 | INTERNAL PAINTING - 1ST COAT | 12d | 2026-06-21 | 2026-07-02 | 552 |  | RGA -FINISHING | 7822802 |
| 556 | 40100.40200.40400.56000.58100.104000.882400 | INTERNAL DOOR FIXING | 15d | 2026-07-01 | 2026-07-15 | 555FS-2d |  | RGA -FINISHING | 7822812 |
| 557 | 40100.40200.40400.56000.58100.104000.882500 | WIRING & SWITCH PLATE FIXING | 8d | 2026-07-12 | 2026-07-19 | 556FS-4d |  | RGA -FINISHING | 7822822 |
| 558 | 40100.40200.40400.56000.58100.104000.882600 | TOILET FALSE CEILING | 7d | 2026-07-20 | 2026-07-26 | 557 |  | RGA -FINISHING | 7822832 |
| 559 | 40100.40200.40400.56000.58100.104000.882700 | MAIN DOOR FRAME SHUTTER FIXING | 6d | 2026-11-17 | 2026-11-22 | 821 |  | RGA -FINISHING | 7822842 |
| 560 | 40100.40200.40400.56000.58100.104000.882800 | FINAL COAT PAINT | 8d | 2026-11-23 | 2026-11-30 | 559 |  | RGA -FINISHING | 7822852 |

| ID | WBS | Task | Duration | Start | Finish | Predecessors | Constraint | Calendar | Unique_Task_ID |
| --- | --- | --- | --- | --- | --- | --- | --- | --- | --- |
| 561 | 40100.40200.40400.56000.58100.104200 | **15TH FLOOR** | 246d | 2026-03-30 | 2026-11-30 |  | start no earlier than 2026-03-30 | RGA -FINISHING | 7804372 |
| 562 | 40100.40200.40400.56000.58100.104200.882900 | TOILET DADO TILE FIXING | 10d | 2026-05-14 | 2026-05-23 | 281 |  | RGA -FINISHING | 7822862 |
| 563 | 40100.40200.40400.56000.58100.104200.883000 | TOILET FLOORING WORK | 7d | 2026-05-24 | 2026-05-30 | 562 |  | RGA -FINISHING | 7822872 |
| 564 | 40100.40200.40400.56000.58100.104200.883100 | FIRE FIGHTING | 6d | 2026-03-30 | 2026-04-04 | 280 |  | RGA -FINISHING | 7822882 |
| 565 | 40100.40200.40400.56000.58100.104200.883200 | INTERNAL PAINTING - PUTTY / PRIMER APPLICATION | 8d | 2026-06-15 | 2026-06-22 | 567 |  | RGA -FINISHING | 7822892 |
| 566 | 40100.40200.40400.56000.58100.104200.883300 | FLAT FLOORING | 10d | 2026-05-31 | 2026-06-09 | 563 |  | RGA -FINISHING | 7822902 |
| 567 | 40100.40200.40400.56000.58100.104200.883400 | WINDOW FIXING | 5d | 2026-06-10 | 2026-06-14 | 566 |  | RGA -FINISHING | 7822912 |
| 568 | 40100.40200.40400.56000.58100.104200.883500 | INTERNAL PAINTING - 1ST COAT | 4d | 2026-06-23 | 2026-06-26 | 565 |  | RGA -FINISHING | 7822922 |
| 569 | 40100.40200.40400.56000.58100.104200.883600 | INTERNAL DOOR FIXING | 15d | 2026-06-25 | 2026-07-09 | 568FS-2d |  | RGA -FINISHING | 7822932 |
| 570 | 40100.40200.40400.56000.58100.104200.883700 | WIRING & SWITCH PLATE FIXING | 8d | 2026-07-06 | 2026-07-13 | 569FS-4d |  | RGA -FINISHING | 7822942 |
| 571 | 40100.40200.40400.56000.58100.104200.883800 | TOILET FALSE CEILING | 7d | 2026-07-14 | 2026-07-20 | 570 |  | RGA -FINISHING | 7822952 |
| 572 | 40100.40200.40400.56000.58100.104200.883900 | MAIN DOOR FRAME SHUTTER FIXING | 6d | 2026-11-17 | 2026-11-22 | 829 |  | RGA -FINISHING | 7822962 |
| 573 | 40100.40200.40400.56000.58100.104200.884000 | FINAL COAT PAINT | 8d | 2026-11-23 | 2026-11-30 | 572 |  | RGA -FINISHING | 7822972 |
| 574 | 40100.40200.40400.56000.58100.104500 | **16TH FLOOR** | 237d | 2026-04-08 | 2026-11-30 |  | start no earlier than 2026-04-08 | RGA -FINISHING | 7804352 |
| 575 | 40100.40200.40400.56000.58100.104500.884100 | TOILET DADO TILE FIXING | 10d | 2026-05-23 | 2026-06-01 | 288 |  | RGA -FINISHING | 7822982 |
| 576 | 40100.40200.40400.56000.58100.104500.884200 | TOILET FLOORING WORK | 7d | 2026-06-02 | 2026-06-08 | 575 |  | RGA -FINISHING | 7822992 |
| 577 | 40100.40200.40400.56000.58100.104500.884300 | FIRE FIGHTING | 6d | 2026-04-08 | 2026-04-13 | 287 |  | RGA -FINISHING | 7823002 |
| 578 | 40100.40200.40400.56000.58100.104500.884400 | INTERNAL PAINTING - PUTTY / PRIMER APPLICATION | 8d | 2026-06-24 | 2026-07-01 | 580 |  | RGA -FINISHING | 7823012 |
| 579 | 40100.40200.40400.56000.58100.104500.884500 | FLAT FLOORING | 10d | 2026-06-09 | 2026-06-18 | 576 |  | RGA -FINISHING | 7823022 |
| 580 | 40100.40200.40400.56000.58100.104500.884600 | WINDOW FIXING | 5d | 2026-06-19 | 2026-06-23 | 579 |  | RGA -FINISHING | 7823032 |
| 581 | 40100.40200.40400.56000.58100.104500.884700 | INTERNAL PAINTING - 1ST COAT | 4d | 2026-07-02 | 2026-07-05 | 578 |  | RGA -FINISHING | 7823042 |
| 582 | 40100.40200.40400.56000.58100.104500.884800 | INTERNAL DOOR FIXING | 15d | 2026-07-04 | 2026-07-18 | 581FS-2d |  | RGA -FINISHING | 7823052 |
| 583 | 40100.40200.40400.56000.58100.104500.884900 | WIRING & SWITCH PLATE FIXING | 8d | 2026-07-15 | 2026-07-22 | 582FS-4d |  | RGA -FINISHING | 7823062 |
| 584 | 40100.40200.40400.56000.58100.104500.885000 | TOILET FALSE CEILING | 7d | 2026-07-23 | 2026-07-29 | 583 |  | RGA -FINISHING | 7823072 |
| 585 | 40100.40200.40400.56000.58100.104500.885100 | MAIN DOOR FRAME SHUTTER FIXING | 6d | 2026-11-17 | 2026-11-22 | 837 |  | RGA -FINISHING | 7823082 |
| 586 | 40100.40200.40400.56000.58100.104500.885200 | FINAL COAT PAINT | 8d | 2026-11-23 | 2026-11-30 | 585 |  | RGA -FINISHING | 7823092 |

| ID | WBS | Task | Duration | Start | Finish | Predecessors | Constraint | Calendar | Unique_Task_ID |
| --- | --- | --- | --- | --- | --- | --- | --- | --- | --- |
| 587 | 40100.40200.40400.56000.58100.104700 | **17TH FLOOR** | 229d | 2026-04-16 | 2026-11-30 |  | start no earlier than 2026-04-16 | RGA -FINISHING | 7804342 |
| 588 | 40100.40200.40400.56000.58100.104700.885300 | TOILET DADO TILE FIXING | 10d | 2026-05-31 | 2026-06-09 | 295 |  | RGA -FINISHING | 7823102 |
| 589 | 40100.40200.40400.56000.58100.104700.885400 | TOILET FLOORING WORK | 7d | 2026-06-10 | 2026-06-16 | 588 |  | RGA -FINISHING | 7823112 |
| 590 | 40100.40200.40400.56000.58100.104700.885500 | FIRE FIGHTING | 6d | 2026-04-16 | 2026-04-21 | 294 |  | RGA -FINISHING | 7823122 |
| 591 | 40100.40200.40400.56000.58100.104700.885600 | INTERNAL PAINTING - PUTTY / PRIMER APPLICATION | 8d | 2026-07-02 | 2026-07-09 | 593 |  | RGA -FINISHING | 7823132 |
| 592 | 40100.40200.40400.56000.58100.104700.885700 | FLAT FLOORING | 10d | 2026-06-17 | 2026-06-26 | 589 |  | RGA -FINISHING | 7823142 |
| 593 | 40100.40200.40400.56000.58100.104700.885800 | WINDOW FIXING | 5d | 2026-06-27 | 2026-07-01 | 592 |  | RGA -FINISHING | 7823152 |
| 594 | 40100.40200.40400.56000.58100.104700.885900 | INTERNAL PAINTING - 1ST COAT | 4d | 2026-07-10 | 2026-07-13 | 591 |  | RGA -FINISHING | 7823162 |
| 595 | 40100.40200.40400.56000.58100.104700.886000 | INTERNAL DOOR FIXING | 15d | 2026-07-12 | 2026-07-26 | 594FS-2d |  | RGA -FINISHING | 7823172 |
| 596 | 40100.40200.40400.56000.58100.104700.886100 | WIRING & SWITCH PLATE FIXING | 8d | 2026-07-23 | 2026-07-30 | 595FS-4d |  | RGA -FINISHING | 7823182 |
| 597 | 40100.40200.40400.56000.58100.104700.886200 | TOILET FALSE CEILING | 7d | 2026-07-31 | 2026-08-06 | 596 |  | RGA -FINISHING | 7823192 |
| 598 | 40100.40200.40400.56000.58100.104700.886300 | MAIN DOOR FRAME SHUTTER FIXING | 6d | 2026-11-17 | 2026-11-22 | 845 |  | RGA -FINISHING | 7823202 |
| 599 | 40100.40200.40400.56000.58100.104700.886400 | FINAL COAT PAINT | 8d | 2026-11-23 | 2026-11-30 | 598 |  | RGA -FINISHING | 7823212 |
| 600 | 40100.40200.40400.56000.58100.105200 | **18TH FLOOR** | 227d | 2026-04-28 | 2026-12-10 |  | start no earlier than 2026-04-28 | RGA -FINISHING | 7804332 |
| 601 | 40100.40200.40400.56000.58100.105200.886500 | TOILET DADO TILE FIXING | 10d | 2026-06-12 | 2026-06-21 | 302 |  | RGA -FINISHING | 7823222 |
| 602 | 40100.40200.40400.56000.58100.105200.886600 | TOILET FLOORING WORK | 7d | 2026-06-22 | 2026-06-28 | 601 |  | RGA -FINISHING | 7823232 |
| 603 | 40100.40200.40400.56000.58100.105200.886700 | FIRE FIGHTING | 6d | 2026-04-28 | 2026-05-03 | 301 |  | RGA -FINISHING | 7823242 |
| 604 | 40100.40200.40400.56000.58100.105200.886800 | INTERNAL PAINTING - PUTTY / PRIMER APPLICATION | 8d | 2026-07-14 | 2026-07-21 | 606 |  | RGA -FINISHING | 7823252 |
| 605 | 40100.40200.40400.56000.58100.105200.886900 | FLAT FLOORING | 10d | 2026-06-29 | 2026-07-08 | 602 |  | RGA -FINISHING | 7823262 |
| 606 | 40100.40200.40400.56000.58100.105200.887000 | WINDOW FIXING | 5d | 2026-07-09 | 2026-07-13 | 605 |  | RGA -FINISHING | 7823272 |
| 607 | 40100.40200.40400.56000.58100.105200.887100 | INTERNAL PAINTING - 1ST COAT | 4d | 2026-07-22 | 2026-07-25 | 604 |  | RGA -FINISHING | 7823282 |
| 608 | 40100.40200.40400.56000.58100.105200.887200 | INTERNAL DOOR FIXING | 15d | 2026-07-24 | 2026-08-07 | 607FS-2d |  | RGA -FINISHING | 7823292 |
| 609 | 40100.40200.40400.56000.58100.105200.887300 | WIRING & SWITCH PLATE FIXING | 8d | 2026-08-04 | 2026-08-11 | 608FS-4d |  | RGA -FINISHING | 7823302 |
| 610 | 40100.40200.40400.56000.58100.105200.887400 | TOILET FALSE CEILING | 7d | 2026-08-12 | 2026-08-18 | 609 |  | RGA -FINISHING | 7823312 |
| 611 | 40100.40200.40400.56000.58100.105200.887500 | MAIN DOOR FRAME SHUTTER FIXING | 6d | 2026-11-27 | 2026-12-02 | 853 |  | RGA -FINISHING | 7823322 |
| 612 | 40100.40200.40400.56000.58100.105200.887600 | FINAL COAT PAINT | 8d | 2026-12-03 | 2026-12-10 | 611 |  | RGA -FINISHING | 7823332 |

| ID | WBS | Task | Duration | Start | Finish | Predecessors | Constraint | Calendar | Unique_Task_ID |
| --- | --- | --- | --- | --- | --- | --- | --- | --- | --- |
| 613 | 40100.40200.40400.56000.58100.106800 | **19TH FLOOR** | 219d | 2026-05-06 | 2026-12-10 |  | start no earlier than 2026-05-06 | RGA -FINISHING | 7804322 |
| 614 | 40100.40200.40400.56000.58100.106800.887700 | TOILET DADO TILE FIXING | 10d | 2026-06-20 | 2026-06-29 | 309 |  | RGA -FINISHING | 7823342 |
| 615 | 40100.40200.40400.56000.58100.106800.887800 | TOILET FLOORING WORK | 7d | 2026-06-30 | 2026-07-06 | 614 |  | RGA -FINISHING | 7823352 |
| 616 | 40100.40200.40400.56000.58100.106800.887900 | FIRE FIGHTING | 6d | 2026-05-06 | 2026-05-11 | 308 |  | RGA -FINISHING | 7823362 |
| 617 | 40100.40200.40400.56000.58100.106800.888000 | INTERNAL PAINTING - PUTTY / PRIMER APPLICATION | 8d | 2026-07-22 | 2026-07-29 | 619 |  | RGA -FINISHING | 7823372 |
| 618 | 40100.40200.40400.56000.58100.106800.888100 | FLAT FLOORING | 10d | 2026-07-07 | 2026-07-16 | 615 |  | RGA -FINISHING | 7823382 |
| 619 | 40100.40200.40400.56000.58100.106800.888200 | WINDOW FIXING | 5d | 2026-07-17 | 2026-07-21 | 618 |  | RGA -FINISHING | 7823392 |
| 620 | 40100.40200.40400.56000.58100.106800.888300 | INTERNAL PAINTING - 1ST COAT | 4d | 2026-07-30 | 2026-08-02 | 617 |  | RGA -FINISHING | 7823402 |
| 621 | 40100.40200.40400.56000.58100.106800.888400 | INTERNAL DOOR FIXING | 15d | 2026-08-05 | 2026-08-19 | 620FS+2d |  | RGA -FINISHING | 7823412 |
| 622 | 40100.40200.40400.56000.58100.106800.888500 | WIRING & SWITCH PLATE FIXING | 8d | 2026-08-16 | 2026-08-23 | 621FS-4d |  | RGA -FINISHING | 7823422 |
| 623 | 40100.40200.40400.56000.58100.106800.888600 | TOILET FALSE CEILING | 7d | 2026-08-24 | 2026-08-30 | 622 |  | RGA -FINISHING | 7823432 |
| 624 | 40100.40200.40400.56000.58100.106800.888700 | MAIN DOOR FRAME SHUTTER FIXING | 6d | 2026-11-27 | 2026-12-02 | 861 |  | RGA -FINISHING | 7823442 |
| 625 | 40100.40200.40400.56000.58100.106800.888800 | FINAL COAT PAINT | 8d | 2026-12-03 | 2026-12-10 | 624 |  | RGA -FINISHING | 7823452 |
| 626 | 40100.40200.40400.56000.58100.107200 | **20TH FLOOR** | 210d | 2026-05-15 | 2026-12-10 |  | start no earlier than 2026-05-15 | RGA -FINISHING | 7804312 |
| 627 | 40100.40200.40400.56000.58100.107200.888900 | TOILET DADO TILE FIXING | 10d | 2026-06-29 | 2026-07-08 | 316 |  | RGA -FINISHING | 7823462 |
| 628 | 40100.40200.40400.56000.58100.107200.889000 | TOILET FLOORING WORK | 7d | 2026-07-09 | 2026-07-15 | 627 |  | RGA -FINISHING | 7823472 |
| 629 | 40100.40200.40400.56000.58100.107200.889100 | FIRE FIGHTING | 6d | 2026-05-15 | 2026-05-20 | 315 |  | RGA -FINISHING | 7823482 |
| 630 | 40100.40200.40400.56000.58100.107200.889200 | INTERNAL PAINTING - PUTTY / PRIMER APPLICATION | 8d | 2026-07-31 | 2026-08-07 | 632 |  | RGA -FINISHING | 7823492 |
| 631 | 40100.40200.40400.56000.58100.107200.889300 | FLAT FLOORING | 10d | 2026-07-16 | 2026-07-25 | 628 |  | RGA -FINISHING | 7823502 |
| 632 | 40100.40200.40400.56000.58100.107200.889400 | WINDOW FIXING | 5d | 2026-07-26 | 2026-07-30 | 631 |  | RGA -FINISHING | 7823512 |
| 633 | 40100.40200.40400.56000.58100.107200.889500 | INTERNAL PAINTING - 1ST COAT | 4d | 2026-08-08 | 2026-08-11 | 630 |  | RGA -FINISHING | 7823522 |
| 634 | 40100.40200.40400.56000.58100.107200.889600 | INTERNAL DOOR FIXING | 15d | 2026-08-10 | 2026-08-24 | 633FS-2d |  | RGA -FINISHING | 7823532 |
| 635 | 40100.40200.40400.56000.58100.107200.889700 | WIRING & SWITCH PLATE FIXING | 8d | 2026-08-21 | 2026-08-28 | 634FS-4d |  | RGA -FINISHING | 7823542 |
| 636 | 40100.40200.40400.56000.58100.107200.889800 | TOILET FALSE CEILING | 7d | 2026-08-29 | 2026-09-04 | 635 |  | RGA -FINISHING | 7823552 |
| 637 | 40100.40200.40400.56000.58100.107200.889900 | MAIN DOOR FRAME SHUTTER FIXING | 6d | 2026-11-27 | 2026-12-02 | 869 |  | RGA -FINISHING | 7823562 |
| 638 | 40100.40200.40400.56000.58100.107200.890000 | FINAL COAT PAINT | 8d | 2026-12-03 | 2026-12-10 | 637 |  | RGA -FINISHING | 7823572 |

| ID | WBS | Task | Duration | Start | Finish | Predecessors | Constraint | Calendar | Unique_Task_ID |
| --- | --- | --- | --- | --- | --- | --- | --- | --- | --- |
| 639 | 40100.40200.40400.56000.58100.107300 | **21TH FLOOR** | 202d | 2026-05-23 | 2026-12-10 |  | start no earlier than 2026-05-23 | RGA -FINISHING | 7804302 |
| 640 | 40100.40200.40400.56000.58100.107300.890100 | TOILET DADO TILE FIXING | 10d | 2026-07-07 | 2026-07-16 | 323 |  | RGA -FINISHING | 7823582 |
| 641 | 40100.40200.40400.56000.58100.107300.890200 | TOILET FLOORING WORK | 7d | 2026-07-17 | 2026-07-23 | 640 |  | RGA -FINISHING | 7823592 |
| 642 | 40100.40200.40400.56000.58100.107300.890300 | FIRE FIGHTING | 6d | 2026-05-23 | 2026-05-28 | 322 |  | RGA -FINISHING | 7823602 |
| 643 | 40100.40200.40400.56000.58100.107300.890400 | INTERNAL PAINTING - PUTTY / PRIMER APPLICATION | 8d | 2026-08-08 | 2026-08-15 | 645 |  | RGA -FINISHING | 7823612 |
| 644 | 40100.40200.40400.56000.58100.107300.890500 | FLAT FLOORING | 10d | 2026-07-24 | 2026-08-02 | 641 |  | RGA -FINISHING | 7823622 |
| 645 | 40100.40200.40400.56000.58100.107300.890600 | WINDOW FIXING | 5d | 2026-08-03 | 2026-08-07 | 644 |  | RGA -FINISHING | 7823632 |
| 646 | 40100.40200.40400.56000.58100.107300.890700 | INTERNAL PAINTING - 1ST COAT | 4d | 2026-08-16 | 2026-08-19 | 643 |  | RGA -FINISHING | 7823642 |
| 647 | 40100.40200.40400.56000.58100.107300.890800 | INTERNAL DOOR FIXING | 15d | 2026-08-18 | 2026-09-01 | 646FS-2d |  | RGA -FINISHING | 7823652 |
| 648 | 40100.40200.40400.56000.58100.107300.890900 | WIRING & SWITCH PLATE FIXING | 8d | 2026-08-29 | 2026-09-05 | 647FS-4d |  | RGA -FINISHING | 7823662 |
| 649 | 40100.40200.40400.56000.58100.107300.891000 | TOILET FALSE CEILING | 7d | 2026-09-06 | 2026-09-12 | 648 |  | RGA -FINISHING | 7823672 |
| 650 | 40100.40200.40400.56000.58100.107300.891100 | MAIN DOOR FRAME SHUTTER FIXING | 6d | 2026-11-27 | 2026-12-02 | 877 |  | RGA -FINISHING | 7823682 |
| 651 | 40100.40200.40400.56000.58100.107300.891200 | FINAL COAT PAINT | 8d | 2026-12-03 | 2026-12-10 | 650 |  | RGA -FINISHING | 7823692 |
| 652 | 40100.40200.40400.56000.58100.107500 | **22TH FLOOR** | 204d | 2026-05-31 | 2026-12-20 |  | start no earlier than 2026-05-31 | RGA -FINISHING | 7804292 |
| 653 | 40100.40200.40400.56000.58100.107500.891300 | TOILET DADO TILE FIXING | 10d | 2026-07-30 | 2026-08-08 | 330 |  | RGA -FINISHING | 7823702 |
| 654 | 40100.40200.40400.56000.58100.107500.891400 | TOILET FLOORING WORK | 7d | 2026-08-09 | 2026-08-15 | 653 |  | RGA -FINISHING | 7823712 |
| 655 | 40100.40200.40400.56000.58100.107500.891500 | FIRE FIGHTING | 6d | 2026-05-31 | 2026-06-05 | 329 |  | RGA -FINISHING | 7823722 |
| 656 | 40100.40200.40400.56000.58100.107500.891600 | INTERNAL PAINTING - PUTTY / PRIMER APPLICATION | 8d | 2026-09-05 | 2026-09-12 | 658 |  | RGA -FINISHING | 7823732 |
| 657 | 40100.40200.40400.56000.58100.107500.891700 | FLAT FLOORING | 15d | 2026-08-16 | 2026-08-30 | 654 |  | RGA -FINISHING | 7823742 |
| 658 | 40100.40200.40400.56000.58100.107500.891800 | WINDOW FIXING | 5d | 2026-08-31 | 2026-09-04 | 657 |  | RGA -FINISHING | 7823752 |
| 659 | 40100.40200.40400.56000.58100.107500.891900 | INTERNAL PAINTING - 1ST COAT | 4d | 2026-09-13 | 2026-09-16 | 656 |  | RGA -FINISHING | 7823762 |
| 660 | 40100.40200.40400.56000.58100.107500.892000 | INTERNAL DOOR FIXING | 15d | 2026-09-15 | 2026-09-29 | 659FS-2d |  | RGA -FINISHING | 7823772 |
| 661 | 40100.40200.40400.56000.58100.107500.892100 | WIRING & SWITCH PLATE FIXING | 8d | 2026-09-26 | 2026-10-03 | 660FS-4d |  | RGA -FINISHING | 7823782 |
| 662 | 40100.40200.40400.56000.58100.107500.892200 | TOILET FALSE CEILING | 7d | 2026-10-04 | 2026-10-10 | 661 |  | RGA -FINISHING | 7823792 |
| 663 | 40100.40200.40400.56000.58100.107500.892300 | MAIN DOOR FRAME SHUTTER FIXING | 6d | 2026-12-07 | 2026-12-12 | 885 |  | RGA -FINISHING | 7823802 |
| 664 | 40100.40200.40400.56000.58100.107500.892400 | FINAL COAT PAINT | 8d | 2026-12-13 | 2026-12-20 | 663 |  | RGA -FINISHING | 7823812 |

| ID | WBS | Task | Duration | Start | Finish | Predecessors | Constraint | Calendar | Unique_Task_ID |
| --- | --- | --- | --- | --- | --- | --- | --- | --- | --- |
| 665 | 40100.40200.40400.56000.58100.107900 | **23TH FLOOR** | 196d | 2026-06-08 | 2026-12-20 |  | start no earlier than 2026-06-08 | RGA -FINISHING | 7804282 |
| 666 | 40100.40200.40400.56000.58100.107900.892500 | TOILET DADO TILE FIXING | 10d | 2026-08-07 | 2026-08-16 | 337 |  | RGA -FINISHING | 7823822 |
| 667 | 40100.40200.40400.56000.58100.107900.892600 | TOILET FLOORING WORK | 7d | 2026-08-17 | 2026-08-23 | 666 |  | RGA -FINISHING | 7823832 |
| 668 | 40100.40200.40400.56000.58100.107900.892700 | FIRE FIGHTING | 6d | 2026-06-08 | 2026-06-13 | 336 |  | RGA -FINISHING | 7823842 |
| 669 | 40100.40200.40400.56000.58100.107900.892800 | INTERNAL PAINTING - PUTTY / PRIMER APPLICATION | 8d | 2026-09-13 | 2026-09-20 | 671 |  | RGA -FINISHING | 7823852 |
| 670 | 40100.40200.40400.56000.58100.107900.892900 | FLAT FLOORING | 15d | 2026-08-24 | 2026-09-07 | 667 |  | RGA -FINISHING | 7823862 |
| 671 | 40100.40200.40400.56000.58100.107900.893000 | WINDOW FIXING | 5d | 2026-09-08 | 2026-09-12 | 670 |  | RGA -FINISHING | 7823872 |
| 672 | 40100.40200.40400.56000.58100.107900.893100 | INTERNAL PAINTING - 1ST COAT | 4d | 2026-09-21 | 2026-09-24 | 669 |  | RGA -FINISHING | 7823882 |
| 673 | 40100.40200.40400.56000.58100.107900.893200 | INTERNAL DOOR FIXING | 15d | 2026-09-23 | 2026-10-07 | 672FS-2d |  | RGA -FINISHING | 7823892 |
| 674 | 40100.40200.40400.56000.58100.107900.893300 | WIRING & SWITCH PLATE FIXING | 8d | 2026-10-04 | 2026-10-11 | 673FS-4d |  | RGA -FINISHING | 7823902 |
| 675 | 40100.40200.40400.56000.58100.107900.893400 | TOILET FALSE CEILING | 7d | 2026-10-12 | 2026-10-18 | 674 |  | RGA -FINISHING | 7823912 |
| 676 | 40100.40200.40400.56000.58100.107900.893500 | MAIN DOOR FRAME SHUTTER FIXING | 6d | 2026-12-07 | 2026-12-12 | 893 |  | RGA -FINISHING | 7823922 |
| 677 | 40100.40200.40400.56000.58100.107900.893600 | FINAL COAT PAINT | 8d | 2026-12-13 | 2026-12-20 | 676 |  | RGA -FINISHING | 7823932 |
| 678 | 40100.40200.40400.56000.58100.108100 | **24TH FLOOR** | 184d | 2026-06-20 | 2026-12-20 |  | start no earlier than 2026-06-20 | RGA -FINISHING | 7804272 |
| 679 | 40100.40200.40400.56000.58100.108100.893700 | TOILET DADO TILE FIXING | 10d | 2026-08-19 | 2026-08-28 | 344 |  | RGA -FINISHING | 7823942 |
| 680 | 40100.40200.40400.56000.58100.108100.893800 | TOILET FLOORING WORK | 7d | 2026-08-29 | 2026-09-04 | 679 |  | RGA -FINISHING | 7823952 |
| 681 | 40100.40200.40400.56000.58100.108100.893900 | FIRE FIGHTING | 6d | 2026-06-20 | 2026-06-25 | 343 |  | RGA -FINISHING | 7823962 |
| 682 | 40100.40200.40400.56000.58100.108100.894000 | INTERNAL PAINTING - PUTTY / PRIMER APPLICATION | 8d | 2026-09-29 | 2026-10-06 | 684 |  | RGA -FINISHING | 7823972 |
| 683 | 40100.40200.40400.56000.58100.108100.894100 | FLAT FLOORING | 19d | 2026-09-05 | 2026-09-23 | 680 |  | RGA -FINISHING | 7823982 |
| 684 | 40100.40200.40400.56000.58100.108100.894200 | WINDOW FIXING | 5d | 2026-09-24 | 2026-09-28 | 683 |  | RGA -FINISHING | 7823992 |
| 685 | 40100.40200.40400.56000.58100.108100.894300 | INTERNAL PAINTING - 1ST COAT | 4d | 2026-10-07 | 2026-10-10 | 682 |  | RGA -FINISHING | 7824002 |
| 686 | 40100.40200.40400.56000.58100.108100.894400 | INTERNAL DOOR FIXING | 15d | 2026-10-09 | 2026-10-23 | 685FS-2d |  | RGA -FINISHING | 7824012 |
| 687 | 40100.40200.40400.56000.58100.108100.894500 | WIRING & SWITCH PLATE FIXING | 8d | 2026-10-22 | 2026-10-29 | 686FS-2d |  | RGA -FINISHING | 7824022 |
| 688 | 40100.40200.40400.56000.58100.108100.894600 | TOILET FALSE CEILING | 7d | 2026-10-30 | 2026-11-05 | 687 |  | RGA -FINISHING | 7824032 |
| 689 | 40100.40200.40400.56000.58100.108100.894700 | MAIN DOOR FRAME SHUTTER FIXING | 6d | 2026-12-07 | 2026-12-12 | 901 |  | RGA -FINISHING | 7824042 |
| 690 | 40100.40200.40400.56000.58100.108100.894800 | FINAL COAT PAINT | 8d | 2026-12-13 | 2026-12-20 | 689 |  | RGA -FINISHING | 7824052 |

| ID | WBS | Task | Duration | Start | Finish | Predecessors | Constraint | Calendar | Unique_Task_ID |
| --- | --- | --- | --- | --- | --- | --- | --- | --- | --- |
| 691 | 40100.40200.40400.56000.58100.108300 | **25TH FLOOR** | 175d | 2026-06-29 | 2026-12-20 |  | start no earlier than 2026-06-29 | RGA -FINISHING | 7804262 |
| 692 | 40100.40200.40400.56000.58100.108300.894900 | TOILET DADO TILE FIXING | 10d | 2026-08-28 | 2026-09-06 | 351 |  | RGA -FINISHING | 7824062 |
| 693 | 40100.40200.40400.56000.58100.108300.895000 | TOILET FLOORING WORK | 7d | 2026-09-07 | 2026-09-13 | 692 |  | RGA -FINISHING | 7824072 |
| 694 | 40100.40200.40400.56000.58100.108300.895100 | FIRE FIGHTING | 6d | 2026-06-29 | 2026-07-04 | 350 |  | RGA -FINISHING | 7824082 |
| 695 | 40100.40200.40400.56000.58100.108300.895200 | INTERNAL PAINTING - PUTTY / PRIMER APPLICATION | 8d | 2026-10-10 | 2026-10-17 | 697 |  | RGA -FINISHING | 7824092 |
| 696 | 40100.40200.40400.56000.58100.108300.895300 | FLAT FLOORING | 21d | 2026-09-14 | 2026-10-04 | 693 |  | RGA -FINISHING | 7824102 |
| 697 | 40100.40200.40400.56000.58100.108300.895400 | WINDOW FIXING | 5d | 2026-10-05 | 2026-10-09 | 696 |  | RGA -FINISHING | 7824112 |
| 698 | 40100.40200.40400.56000.58100.108300.895500 | INTERNAL PAINTING - 1ST COAT | 4d | 2026-10-18 | 2026-10-21 | 695 |  | RGA -FINISHING | 7824122 |
| 699 | 40100.40200.40400.56000.58100.108300.895600 | INTERNAL DOOR FIXING | 15d | 2026-10-20 | 2026-11-03 | 698FS-2d |  | RGA -FINISHING | 7824132 |
| 700 | 40100.40200.40400.56000.58100.108300.895700 | WIRING & SWITCH PLATE FIXING | 8d | 2026-10-31 | 2026-11-07 | 699FS-4d |  | RGA -FINISHING | 7824142 |
| 701 | 40100.40200.40400.56000.58100.108300.895800 | TOILET FALSE CEILING | 7d | 2026-11-08 | 2026-11-14 | 700 |  | RGA -FINISHING | 7824152 |
| 702 | 40100.40200.40400.56000.58100.108300.895900 | MAIN DOOR FRAME SHUTTER FIXING | 6d | 2026-12-07 | 2026-12-12 | 909 |  | RGA -FINISHING | 7824162 |
| 703 | 40100.40200.40400.56000.58100.108300.896000 | FINAL COAT PAINT | 8d | 2026-12-13 | 2026-12-20 | 702 |  | RGA -FINISHING | 7824172 |
| 704 | 40100.40200.40400.56000.60300 | **LIFT LOBBY & STAIRCASE FINISHING WORK** | 439d | 2025-10-18 | 2026-12-30 |  | start no earlier than 2025-10-18 | RGA -FINISHING | 7803522 |
| 705 | 40100.40200.40400.56000.60300.168800 | **GROUND FLOOR** | 368d | 2025-10-18 | 2026-10-20 |  | start no earlier than 2025-10-18 | RGA -FINISHING | 7805972 |
| 706 | 40100.40200.40400.56000.60300.168800.896100 | FIRE FIGHTING | 5d | 2025-10-18 | 2025-10-22 | 369FS-5d |  | RGA -FINISHING | 7824442 |
| 707 | 40100.40200.40400.56000.60300.168800.896200 | LIFT BLOCK WORK | 3d | 2026-08-05 | 2026-08-07 | 171SS |  | RGA -FINISHING | 7824452 |
| 708 | 40100.40200.40400.56000.60300.168800.896300 | LIFT DADO WORK | 6d | 2026-09-18 | 2026-09-23 | 916FS-60d |  | RGA -FINISHING | 7824462 |
| 709 | 40100.40200.40400.56000.60300.168800.896400 | LOBBY FLOORING WORK | 8d | 2026-09-24 | 2026-10-01 | 708 |  | RGA -FINISHING | 7824472 |
| 710 | 40100.40200.40400.56000.60300.168800.896500 | ELECTRICAL WIRING & SWITCH PLATE FIXING WORK | 6d | 2026-10-02 | 2026-10-07 | 709 |  | RGA -FINISHING | 7824482 |
| 711 | 40100.40200.40400.56000.60300.168800.896600 | False ceiling & 1ST COAT PAINTING | 10d | 2026-10-08 | 2026-10-17 | 710 |  | RGA -FINISHING | 7824492 |
| 712 | 40100.40200.40400.56000.60300.168800.896700 | CLEANING | 3d | 2026-10-18 | 2026-10-20 | 711 |  | RGA -FINISHING | 7824502 |
| 713 | 40100.40200.40400.56000.60300.168900 | **1ST FLOOR** | 370d | 2025-10-27 | 2026-10-31 |  | start no earlier than 2025-10-27 | RGA -FINISHING | 7805962 |
| 714 | 40100.40200.40400.56000.60300.168900.896800 | FIRE FIGHTING | 10d | 2025-10-27 | 2025-11-05 | 182FS-5d |  | RGA -FINISHING | 7824512 |
| 715 | 40100.40200.40400.56000.60300.168900.896900 | LIFT BLOCK WORK | 3d | 2026-08-05 | 2026-08-07 | 707SS |  | RGA -FINISHING | 7824522 |
| 716 | 40100.40200.40400.56000.60300.168900.897000 | LIFT DADO WORK | 10d | 2026-09-18 | 2026-09-27 | 708SS |  | RGA -FINISHING | 7824532 |
| 717 | 40100.40200.40400.56000.60300.168900.897100 | LOBBY FLOORING WORK | 10d | 2026-09-28 | 2026-10-07 | 716 |  | RGA -FINISHING | 7824542 |
| 718 | 40100.40200.40400.56000.60300.168900.897200 | ELECTRICAL WIRING & SWITCH PLATE FIXING WORK | 6d | 2026-10-08 | 2026-10-13 | 717 |  | RGA -FINISHING | 7824552 |
| 719 | 40100.40200.40400.56000.60300.168900.897300 | False ceiling & 1ST COAT PAINTING | 15d | 2026-10-14 | 2026-10-28 | 718 |  | RGA -FINISHING | 7824562 |
| 720 | 40100.40200.40400.56000.60300.168900.897400 | CLEANING | 3d | 2026-10-29 | 2026-10-31 | 719 |  | RGA -FINISHING | 7824572 |

Notes:
- 704: Completion in 12 months post last RCC
- 706: Assumed
- 714: Assumed

| ID | WBS | Task | Duration | Start | Finish | Predecessors | Constraint | Calendar | Unique_Task_ID |
| --- | --- | --- | --- | --- | --- | --- | --- | --- | --- |
| 721 | 40100.40200.40400.56000.60300.169000 | **2nd FLOOR** | 348d | 2025-11-18 | 2026-10-31 |  | start no earlier than 2025-11-18 | RGA -FINISHING | 7805952 |
| 722 | 40100.40200.40400.56000.60300.169000.897500 | FIRE FIGHTING | 10d | 2025-11-18 | 2025-11-27 | 395FS-5d |  | RGA -FINISHING | 7824582 |
| 723 | 40100.40200.40400.56000.60300.169000.897600 | LIFT BLOCK WORK | 3d | 2026-08-05 | 2026-08-07 | 715SS |  | RGA -FINISHING | 7824592 |
| 724 | 40100.40200.40400.56000.60300.169000.897700 | LIFT DADO WORK | 10d | 2026-09-18 | 2026-09-27 | 716SS |  | RGA -FINISHING | 7824602 |
| 725 | 40100.40200.40400.56000.60300.169000.897800 | LOBBY FLOORING WORK | 10d | 2026-09-28 | 2026-10-07 | 724 |  | RGA -FINISHING | 7824612 |
| 726 | 40100.40200.40400.56000.60300.169000.897900 | ELECTRICAL WIRING & SWITCH PLATE FIXING WORK | 6d | 2026-10-08 | 2026-10-13 | 725 |  | RGA -FINISHING | 7824622 |
| 727 | 40100.40200.40400.56000.60300.169000.898000 | False ceiling & 1ST COAT PAINTING | 15d | 2026-10-14 | 2026-10-28 | 726 |  | RGA -FINISHING | 7824632 |
| 728 | 40100.40200.40400.56000.60300.169000.898100 | CLEANING | 3d | 2026-10-29 | 2026-10-31 | 727 |  | RGA -FINISHING | 7824642 |
| 729 | 40100.40200.40400.56000.60300.169100 | **3rd FLOOR** | 333d | 2025-12-13 | 2026-11-10 |  | start no earlier than 2025-12-13 | RGA -FINISHING | 7805942 |
| 730 | 40100.40200.40400.56000.60300.169100.898200 | FIRE FIGHTING | 10d | 2025-12-13 | 2025-12-22 | 408FS-5d |  | RGA -FINISHING | 7824652 |
| 731 | 40100.40200.40400.56000.60300.169100.898300 | LIFT BLOCK WORK | 3d | 2026-08-08 | 2026-08-10 | 723 |  | RGA -FINISHING | 7824662 |
| 732 | 40100.40200.40400.56000.60300.169100.898400 | LIFT DADO WORK | 10d | 2026-09-28 | 2026-10-07 | 724 |  | RGA -FINISHING | 7824672 |
| 733 | 40100.40200.40400.56000.60300.169100.898500 | LOBBY FLOORING WORK | 10d | 2026-10-08 | 2026-10-17 | 732 |  | RGA -FINISHING | 7824682 |
| 734 | 40100.40200.40400.56000.60300.169100.898600 | ELECTRICAL WIRING & SWITCH PLATE FIXING WORK | 6d | 2026-10-18 | 2026-10-23 | 733 |  | RGA -FINISHING | 7824692 |
| 735 | 40100.40200.40400.56000.60300.169100.898700 | False ceiling & 1ST COAT PAINTING | 15d | 2026-10-24 | 2026-11-07 | 734 |  | RGA -FINISHING | 7824702 |
| 736 | 40100.40200.40400.56000.60300.169100.898800 | CLEANING | 3d | 2026-11-08 | 2026-11-10 | 735 |  | RGA -FINISHING | 7824712 |
| 737 | 40100.40200.40400.56000.60300.169200 | **4th FLOOR** | 325d | 2025-12-21 | 2026-11-10 |  | start no earlier than 2025-12-21 | RGA -FINISHING | 7805932 |
| 738 | 40100.40200.40400.56000.60300.169200.898900 | FIRE FIGHTING | 10d | 2025-12-21 | 2025-12-30 | 421FS-5d |  | RGA -FINISHING | 7824722 |
| 739 | 40100.40200.40400.56000.60300.169200.899000 | LIFT BLOCK WORK | 3d | 2026-08-08 | 2026-08-10 | 731SS |  | RGA -FINISHING | 7824732 |
| 740 | 40100.40200.40400.56000.60300.169200.899100 | LIFT DADO WORK | 10d | 2026-09-28 | 2026-10-07 | 732SS |  | RGA -FINISHING | 7824742 |
| 741 | 40100.40200.40400.56000.60300.169200.899200 | LOBBY FLOORING WORK | 10d | 2026-10-08 | 2026-10-17 | 740 |  | RGA -FINISHING | 7824752 |
| 742 | 40100.40200.40400.56000.60300.169200.899300 | ELECTRICAL WIRING & SWITCH PLATE FIXING WORK | 6d | 2026-10-18 | 2026-10-23 | 741 |  | RGA -FINISHING | 7824762 |
| 743 | 40100.40200.40400.56000.60300.169200.899400 | False ceiling & 1ST COAT PAINTING | 15d | 2026-10-24 | 2026-11-07 | 742 |  | RGA -FINISHING | 7824772 |
| 744 | 40100.40200.40400.56000.60300.169200.899500 | CLEANING | 3d | 2026-11-08 | 2026-11-10 | 743 |  | RGA -FINISHING | 7824782 |

Notes:
- 722: Assumed
- 730: Assumed
- 738: Assumed

| ID | WBS | Task | Duration | Start | Finish | Predecessors | Constraint | Calendar | Unique_Task_ID |
| --- | --- | --- | --- | --- | --- | --- | --- | --- | --- |
| 745 | 40100.40200.40400.56000.60300.169300 | **5th FLOOR** | 316d | 2025-12-30 | 2026-11-10 |  | start no earlier than 2025-12-30 | RGA -FINISHING | 7805922 |
| 746 | 40100.40200.40400.56000.60300.169300.899600 | FIRE FIGHTING | 10d | 2025-12-30 | 2026-01-08 | 434FS-5d |  | RGA -FINISHING | 7824792 |
| 747 | 40100.40200.40400.56000.60300.169300.899700 | LIFT BLOCK WORK | 3d | 2026-08-08 | 2026-08-10 | 739SS |  | RGA -FINISHING | 7824802 |
| 748 | 40100.40200.40400.56000.60300.169300.899800 | LIFT DADO WORK | 10d | 2026-09-28 | 2026-10-07 | 740SS |  | RGA -FINISHING | 7824812 |
| 749 | 40100.40200.40400.56000.60300.169300.899900 | LOBBY FLOORING WORK | 10d | 2026-10-08 | 2026-10-17 | 748 |  | RGA -FINISHING | 7824822 |
| 750 | 40100.40200.40400.56000.60300.169300.900000 | ELECTRICAL WIRING & SWITCH PLATE FIXING WORK | 6d | 2026-10-18 | 2026-10-23 | 749 |  | RGA -FINISHING | 7824832 |
| 751 | 40100.40200.40400.56000.60300.169300.900100 | False ceiling & 1ST COAT PAINTING | 15d | 2026-10-24 | 2026-11-07 | 750 |  | RGA -FINISHING | 7824842 |
| 752 | 40100.40200.40400.56000.60300.169300.900200 | CLEANING | 3d | 2026-11-08 | 2026-11-10 | 751 |  | RGA -FINISHING | 7824852 |
| 753 | 40100.40200.40400.56000.60300.169400 | **6th FLOOR** | 317d | 2026-01-08 | 2026-11-20 |  | start no earlier than 2026-01-08 | RGA -FINISHING | 7805912 |
| 754 | 40100.40200.40400.56000.60300.169400.900300 | FIRE FIGHTING | 10d | 2026-01-08 | 2026-01-17 | 447FS-5d |  | RGA -FINISHING | 7824862 |
| 755 | 40100.40200.40400.56000.60300.169400.900400 | LIFT BLOCK WORK | 3d | 2026-08-11 | 2026-08-13 | 747 |  | RGA -FINISHING | 7824872 |
| 756 | 40100.40200.40400.56000.60300.169400.900500 | LIFT DADO WORK | 10d | 2026-10-08 | 2026-10-17 | 748 |  | RGA -FINISHING | 7824882 |
| 757 | 40100.40200.40400.56000.60300.169400.900600 | LOBBY FLOORING WORK | 10d | 2026-10-18 | 2026-10-27 | 756 |  | RGA -FINISHING | 7824892 |
| 758 | 40100.40200.40400.56000.60300.169400.900700 | ELECTRICAL WIRING & SWITCH PLATE FIXING WORK | 6d | 2026-10-28 | 2026-11-02 | 757 |  | RGA -FINISHING | 7824902 |
| 759 | 40100.40200.40400.56000.60300.169400.900800 | False ceiling & 1ST COAT PAINTING | 15d | 2026-11-03 | 2026-11-17 | 758 |  | RGA -FINISHING | 7824912 |
| 760 | 40100.40200.40400.56000.60300.169400.900900 | CLEANING | 3d | 2026-11-18 | 2026-11-20 | 759 |  | RGA -FINISHING | 7824922 |
| 761 | 40100.40200.40400.56000.60300.169500 | **7th FLOOR** | 308d | 2026-01-17 | 2026-11-20 |  | start no earlier than 2026-01-17 | RGA -FINISHING | 7805902 |
| 762 | 40100.40200.40400.56000.60300.169500.901000 | FIRE FIGHTING | 10d | 2026-01-17 | 2026-01-26 | 460FS-5d |  | RGA -FINISHING | 7824932 |
| 763 | 40100.40200.40400.56000.60300.169500.901100 | LIFT BLOCK WORK | 3d | 2026-08-11 | 2026-08-13 | 755SS |  | RGA -FINISHING | 7824942 |
| 764 | 40100.40200.40400.56000.60300.169500.901200 | LIFT DADO WORK | 10d | 2026-10-08 | 2026-10-17 | 756SS |  | RGA -FINISHING | 7824952 |
| 765 | 40100.40200.40400.56000.60300.169500.901300 | LOBBY FLOORING WORK | 10d | 2026-10-18 | 2026-10-27 | 764 |  | RGA -FINISHING | 7824962 |
| 766 | 40100.40200.40400.56000.60300.169500.901400 | ELECTRICAL WIRING & SWITCH PLATE FIXING WORK | 6d | 2026-10-28 | 2026-11-02 | 765 |  | RGA -FINISHING | 7824972 |
| 767 | 40100.40200.40400.56000.60300.169500.901500 | False ceiling & 1ST COAT PAINTING | 15d | 2026-11-03 | 2026-11-17 | 766 |  | RGA -FINISHING | 7824982 |
| 768 | 40100.40200.40400.56000.60300.169500.901600 | CLEANING | 3d | 2026-11-18 | 2026-11-20 | 767 |  | RGA -FINISHING | 7824992 |

Notes:
- 746: Assumed
- 754: Assumed
- 762: Assumed

| ID | WBS | Task | Duration | Start | Finish | Predecessors | Constraint | Calendar | Unique_Task_ID |
| --- | --- | --- | --- | --- | --- | --- | --- | --- | --- |
| 769 | 40100.40200.40400.56000.60300.169600 | **8th FLOOR** | 299d | 2026-01-26 | 2026-11-20 |  | start no earlier than 2026-01-26 | RGA -FINISHING | 7805892 |
| 770 | 40100.40200.40400.56000.60300.169600.901700 | FIRE FIGHTING | 10d | 2026-01-26 | 2026-02-04 | 473FS-5d |  | RGA -FINISHING | 7825002 |
| 771 | 40100.40200.40400.56000.60300.169600.901800 | LIFT BLOCK WORK | 3d | 2026-08-11 | 2026-08-13 | 763SS |  | RGA -FINISHING | 7825012 |
| 772 | 40100.40200.40400.56000.60300.169600.901900 | LIFT DADO WORK | 10d | 2026-10-08 | 2026-10-17 | 764SS |  | RGA -FINISHING | 7825022 |
| 773 | 40100.40200.40400.56000.60300.169600.902000 | LOBBY FLOORING WORK | 10d | 2026-10-18 | 2026-10-27 | 772 |  | RGA -FINISHING | 7825032 |
| 774 | 40100.40200.40400.56000.60300.169600.902100 | ELECTRICAL WIRING & SWITCH PLATE FIXING WORK | 6d | 2026-10-28 | 2026-11-02 | 773 |  | RGA -FINISHING | 7825042 |
| 775 | 40100.40200.40400.56000.60300.169600.902200 | False ceiling & 1ST COAT PAINTING | 15d | 2026-11-03 | 2026-11-17 | 774 |  | RGA -FINISHING | 7825052 |
| 776 | 40100.40200.40400.56000.60300.169600.902300 | CLEANING | 3d | 2026-11-18 | 2026-11-20 | 775 |  | RGA -FINISHING | 7825062 |
| 777 | 40100.40200.40400.56000.60300.169700 | **9th FLOOR** | 285d | 2026-02-09 | 2026-11-20 |  | start no earlier than 2026-02-09 | RGA -FINISHING | 7805882 |
| 778 | 40100.40200.40400.56000.60300.169700.902400 | FIRE FIGHTING | 10d | 2026-02-09 | 2026-02-18 | 486 |  | RGA -FINISHING | 7825072 |
| 779 | 40100.40200.40400.56000.60300.169700.902500 | LIFT BLOCK WORK | 3d | 2026-08-11 | 2026-08-13 | 771SS |  | RGA -FINISHING | 7825082 |
| 780 | 40100.40200.40400.56000.60300.169700.902600 | LIFT DADO WORK | 10d | 2026-10-08 | 2026-10-17 | 772SS |  | RGA -FINISHING | 7825092 |
| 781 | 40100.40200.40400.56000.60300.169700.902700 | LOBBY FLOORING WORK | 10d | 2026-10-18 | 2026-10-27 | 780 |  | RGA -FINISHING | 7825102 |
| 782 | 40100.40200.40400.56000.60300.169700.902800 | ELECTRICAL WIRING & SWITCH PLATE FIXING WORK | 6d | 2026-10-28 | 2026-11-02 | 781 |  | RGA -FINISHING | 7825112 |
| 783 | 40100.40200.40400.56000.60300.169700.902900 | False ceiling & 1ST COAT PAINTING | 15d | 2026-11-03 | 2026-11-17 | 782 |  | RGA -FINISHING | 7825122 |
| 784 | 40100.40200.40400.56000.60300.169700.903000 | CLEANING | 3d | 2026-11-18 | 2026-11-20 | 783 |  | RGA -FINISHING | 7825132 |
| 785 | 40100.40200.40400.56000.60300.169800 | **10th FLOOR** | 290d | 2026-02-14 | 2026-11-30 |  | start no earlier than 2026-02-14 | RGA -FINISHING | 7805872 |
| 786 | 40100.40200.40400.56000.60300.169800.903100 | FIRE FIGHTING | 10d | 2026-02-14 | 2026-02-23 | 499FS-5d |  | RGA -FINISHING | 7825142 |
| 787 | 40100.40200.40400.56000.60300.169800.903200 | LIFT BLOCK WORK | 3d | 2026-08-14 | 2026-08-16 | 779 |  | RGA -FINISHING | 7825152 |
| 788 | 40100.40200.40400.56000.60300.169800.903300 | LIFT DADO WORK | 10d | 2026-10-18 | 2026-10-27 | 780 |  | RGA -FINISHING | 7825162 |
| 789 | 40100.40200.40400.56000.60300.169800.903400 | LOBBY FLOORING WORK | 10d | 2026-10-28 | 2026-11-06 | 788 |  | RGA -FINISHING | 7825172 |
| 790 | 40100.40200.40400.56000.60300.169800.903500 | ELECTRICAL WIRING & SWITCH PLATE FIXING WORK | 6d | 2026-11-07 | 2026-11-12 | 789 |  | RGA -FINISHING | 7825182 |
| 791 | 40100.40200.40400.56000.60300.169800.903600 | False ceiling & 1ST COAT PAINTING | 15d | 2026-11-13 | 2026-11-27 | 790 |  | RGA -FINISHING | 7825192 |
| 792 | 40100.40200.40400.56000.60300.169800.903700 | CLEANING | 3d | 2026-11-28 | 2026-11-30 | 791 |  | RGA -FINISHING | 7825202 |

Notes:
- 770: Assumed
- 778: Assumed
- 786: Assumed

| ID | WBS | Task | Duration | Start | Finish | Predecessors | Constraint | Calendar | Unique_Task_ID |
| --- | --- | --- | --- | --- | --- | --- | --- | --- | --- |
| 793 | 40100.40200.40400.56000.60300.169900 | **11th FLOOR** | 281d | 2026-02-23 | 2026-11-30 |  | start no earlier than 2026-02-23 | RGA -FINISHING | 7805862 |
| 794 | 40100.40200.40400.56000.60300.169900.903800 | FIRE FIGHTING | 10d | 2026-02-23 | 2026-03-04 | 512FS-5d |  | RGA -FINISHING | 7825212 |
| 795 | 40100.40200.40400.56000.60300.169900.903900 | LIFT BLOCK WORK | 3d | 2026-08-14 | 2026-08-16 | 787SS |  | RGA -FINISHING | 7825222 |
| 796 | 40100.40200.40400.56000.60300.169900.904000 | LIFT DADO WORK | 10d | 2026-10-18 | 2026-10-27 | 788SS |  | RGA -FINISHING | 7825232 |
| 797 | 40100.40200.40400.56000.60300.169900.904100 | LOBBY FLOORING WORK | 10d | 2026-10-28 | 2026-11-06 | 796 |  | RGA -FINISHING | 7825242 |
| 798 | 40100.40200.40400.56000.60300.169900.904200 | ELECTRICAL WIRING & SWITCH PLATE FIXING WORK | 6d | 2026-11-07 | 2026-11-12 | 797 |  | RGA -FINISHING | 7825252 |
| 799 | 40100.40200.40400.56000.60300.169900.904300 | False ceiling & 1ST COAT PAINTING | 15d | 2026-11-13 | 2026-11-27 | 798 |  | RGA -FINISHING | 7825262 |
| 800 | 40100.40200.40400.56000.60300.169900.904400 | CLEANING | 3d | 2026-11-28 | 2026-11-30 | 799 |  | RGA -FINISHING | 7825272 |
| 801 | 40100.40200.40400.56000.60300.170000 | **12th FLOOR** | 267d | 2026-03-09 | 2026-11-30 |  | start no earlier than 2026-03-09 | RGA -FINISHING | 7805852 |
| 802 | 40100.40200.40400.56000.60300.170000.904500 | FIRE FIGHTING | 10d | 2026-03-09 | 2026-03-18 | 525 |  | RGA -FINISHING | 7825282 |
| 803 | 40100.40200.40400.56000.60300.170000.904600 | LIFT BLOCK WORK | 3d | 2026-08-14 | 2026-08-16 | 795SS |  | RGA -FINISHING | 7825292 |
| 804 | 40100.40200.40400.56000.60300.170000.904700 | LIFT DADO WORK | 10d | 2026-10-18 | 2026-10-27 | 796SS |  | RGA -FINISHING | 7825302 |
| 805 | 40100.40200.40400.56000.60300.170000.904800 | LOBBY FLOORING WORK | 10d | 2026-10-28 | 2026-11-06 | 804 |  | RGA -FINISHING | 7825312 |
| 806 | 40100.40200.40400.56000.60300.170000.904900 | ELECTRICAL WIRING & SWITCH PLATE FIXING WORK | 6d | 2026-11-07 | 2026-11-12 | 805 |  | RGA -FINISHING | 7825322 |
| 807 | 40100.40200.40400.56000.60300.170000.905000 | False ceiling & 1ST COAT PAINTING | 15d | 2026-11-13 | 2026-11-27 | 806 |  | RGA -FINISHING | 7825332 |
| 808 | 40100.40200.40400.56000.60300.170000.905100 | CLEANING | 3d | 2026-11-28 | 2026-11-30 | 807 |  | RGA -FINISHING | 7825342 |
| 809 | 40100.40200.40400.56000.60300.170100 | **13th FLOOR** | 263d | 2026-03-23 | 2026-12-10 |  | start no earlier than 2026-03-23 | RGA -FINISHING | 7805842 |
| 810 | 40100.40200.40400.56000.60300.170100.905200 | FIRE FIGHTING | 10d | 2026-03-23 | 2026-04-01 | 538FS+5d |  | RGA -FINISHING | 7825352 |
| 811 | 40100.40200.40400.56000.60300.170100.905300 | LIFT BLOCK WORK | 3d | 2026-08-17 | 2026-08-19 | 803 |  | RGA -FINISHING | 7825362 |
| 812 | 40100.40200.40400.56000.60300.170100.905400 | LIFT DADO WORK | 10d | 2026-10-28 | 2026-11-06 | 804 |  | RGA -FINISHING | 7825372 |
| 813 | 40100.40200.40400.56000.60300.170100.905500 | LOBBY FLOORING WORK | 10d | 2026-11-07 | 2026-11-16 | 812 |  | RGA -FINISHING | 7825382 |
| 814 | 40100.40200.40400.56000.60300.170100.905600 | ELECTRICAL WIRING & SWITCH PLATE FIXING WORK | 6d | 2026-11-17 | 2026-11-22 | 813 |  | RGA -FINISHING | 7825392 |
| 815 | 40100.40200.40400.56000.60300.170100.905700 | False ceiling & 1ST COAT PAINTING | 15d | 2026-11-23 | 2026-12-07 | 814 |  | RGA -FINISHING | 7825402 |
| 816 | 40100.40200.40400.56000.60300.170100.905800 | CLEANING | 3d | 2026-12-08 | 2026-12-10 | 815 |  | RGA -FINISHING | 7825412 |

Notes:
- 794: Assumed
- 802: Assumed
- 810: Assumed

| ID | WBS | Task | Duration | Start | Finish | Predecessors | Constraint | Calendar | Unique_Task_ID |
| --- | --- | --- | --- | --- | --- | --- | --- | --- | --- |
| 817 | 40100.40200.40400.56000.60300.170200 | **14th FLOOR** | 264d | 2026-03-22 | 2026-12-10 |  | start no earlier than 2026-03-22 | RGA -FINISHING | 7805832 |
| 818 | 40100.40200.40400.56000.60300.170200.905900 | FIRE FIGHTING | 10d | 2026-03-22 | 2026-03-31 | 551FS-5d |  | RGA -FINISHING | 7825422 |
| 819 | 40100.40200.40400.56000.60300.170200.906000 | LIFT BLOCK WORK | 3d | 2026-08-17 | 2026-08-19 | 811SS |  | RGA -FINISHING | 7825432 |
| 820 | 40100.40200.40400.56000.60300.170200.906100 | LIFT DADO WORK | 10d | 2026-10-28 | 2026-11-06 | 812SS |  | RGA -FINISHING | 7825442 |
| 821 | 40100.40200.40400.56000.60300.170200.906200 | LOBBY FLOORING WORK | 10d | 2026-11-07 | 2026-11-16 | 820 |  | RGA -FINISHING | 7825452 |
| 822 | 40100.40200.40400.56000.60300.170200.906300 | ELECTRICAL WIRING & SWITCH PLATE FIXING WORK | 6d | 2026-11-17 | 2026-11-22 | 821 |  | RGA -FINISHING | 7825462 |
| 823 | 40100.40200.40400.56000.60300.170200.906400 | False ceiling & 1ST COAT PAINTING | 15d | 2026-11-23 | 2026-12-07 | 822 |  | RGA -FINISHING | 7825472 |
| 824 | 40100.40200.40400.56000.60300.170200.906500 | CLEANING | 3d | 2026-12-08 | 2026-12-10 | 823 |  | RGA -FINISHING | 7825482 |
| 825 | 40100.40200.40400.56000.60300.170300 | **15th FLOOR** | 255d | 2026-03-31 | 2026-12-10 |  | start no earlier than 2026-03-31 | RGA -FINISHING | 7805822 |
| 826 | 40100.40200.40400.56000.60300.170300.906600 | FIRE FIGHTING | 10d | 2026-03-31 | 2026-04-09 | 564FS-5d |  | RGA -FINISHING | 7825492 |
| 827 | 40100.40200.40400.56000.60300.170300.906700 | LIFT BLOCK WORK | 3d | 2026-08-17 | 2026-08-19 | 819SS |  | RGA -FINISHING | 7825502 |
| 828 | 40100.40200.40400.56000.60300.170300.906800 | LIFT DADO WORK | 10d | 2026-10-28 | 2026-11-06 | 820SS |  | RGA -FINISHING | 7825512 |
| 829 | 40100.40200.40400.56000.60300.170300.906900 | LOBBY FLOORING WORK | 10d | 2026-11-07 | 2026-11-16 | 828 |  | RGA -FINISHING | 7825522 |
| 830 | 40100.40200.40400.56000.60300.170300.907000 | ELECTRICAL WIRING & SWITCH PLATE FIXING WORK | 6d | 2026-11-17 | 2026-11-22 | 829 |  | RGA -FINISHING | 7825532 |
| 831 | 40100.40200.40400.56000.60300.170300.907100 | False ceiling & 1ST COAT PAINTING | 15d | 2026-11-23 | 2026-12-07 | 830 |  | RGA -FINISHING | 7825542 |
| 832 | 40100.40200.40400.56000.60300.170300.907200 | CLEANING | 3d | 2026-12-08 | 2026-12-10 | 831 |  | RGA -FINISHING | 7825552 |
| 833 | 40100.40200.40400.56000.60300.170400 | **16th FLOOR** | 246d | 2026-04-09 | 2026-12-10 |  | start no earlier than 2026-04-09 | RGA -FINISHING | 7805812 |
| 834 | 40100.40200.40400.56000.60300.170400.907300 | FIRE FIGHTING | 10d | 2026-04-09 | 2026-04-18 | 577FS-5d |  | RGA -FINISHING | 7825562 |
| 835 | 40100.40200.40400.56000.60300.170400.907400 | LIFT BLOCK WORK | 3d | 2026-08-17 | 2026-08-19 | 827SS |  | RGA -FINISHING | 7825572 |
| 836 | 40100.40200.40400.56000.60300.170400.907500 | LIFT DADO WORK | 10d | 2026-10-28 | 2026-11-06 | 828SS |  | RGA -FINISHING | 7825582 |
| 837 | 40100.40200.40400.56000.60300.170400.907600 | LOBBY FLOORING WORK | 10d | 2026-11-07 | 2026-11-16 | 836 |  | RGA -FINISHING | 7825592 |
| 838 | 40100.40200.40400.56000.60300.170400.907700 | ELECTRICAL WIRING & SWITCH PLATE FIXING WORK | 6d | 2026-11-17 | 2026-11-22 | 837 |  | RGA -FINISHING | 7825602 |
| 839 | 40100.40200.40400.56000.60300.170400.907800 | False ceiling & 1ST COAT PAINTING | 15d | 2026-11-23 | 2026-12-07 | 838 |  | RGA -FINISHING | 7825612 |
| 840 | 40100.40200.40400.56000.60300.170400.907900 | CLEANING | 3d | 2026-12-08 | 2026-12-10 | 839 |  | RGA -FINISHING | 7825622 |

Notes:
- 818: Assumed
- 826: Assumed
- 834: Assumed

| ID | WBS | Task | Duration | Start | Finish | Predecessors | Constraint | Calendar | Unique_Task_ID |
| --- | --- | --- | --- | --- | --- | --- | --- | --- | --- |
| 841 | 40100.40200.40400.56000.60300.170500 | **17th FLOOR** | 238d | 2026-04-17 | 2026-12-10 |  | start no earlier than 2026-04-17 | RGA -FINISHING | 7805802 |
| 842 | 40100.40200.40400.56000.60300.170500.908000 | FIRE FIGHTING | 10d | 2026-04-17 | 2026-04-26 | 590FS-5d |  | RGA -FINISHING | 7825632 |
| 843 | 40100.40200.40400.56000.60300.170500.908100 | LIFT BLOCK WORK | 3d | 2026-08-17 | 2026-08-19 | 835SS |  | RGA -FINISHING | 7825642 |
| 844 | 40100.40200.40400.56000.60300.170500.908200 | LIFT DADO WORK | 10d | 2026-10-28 | 2026-11-06 | 836SS |  | RGA -FINISHING | 7825652 |
| 845 | 40100.40200.40400.56000.60300.170500.908300 | LOBBY FLOORING WORK | 10d | 2026-11-07 | 2026-11-16 | 844 |  | RGA -FINISHING | 7825662 |
| 846 | 40100.40200.40400.56000.60300.170500.908400 | ELECTRICAL WIRING & SWITCH PLATE FIXING WORK | 6d | 2026-11-17 | 2026-11-22 | 845 |  | RGA -FINISHING | 7825672 |
| 847 | 40100.40200.40400.56000.60300.170500.908500 | False ceiling & 1ST COAT PAINTING | 15d | 2026-11-23 | 2026-12-07 | 846 |  | RGA -FINISHING | 7825682 |
| 848 | 40100.40200.40400.56000.60300.170500.908600 | CLEANING | 3d | 2026-12-08 | 2026-12-10 | 847 |  | RGA -FINISHING | 7825692 |
| 849 | 40100.40200.40400.56000.60300.170600 | **18th FLOOR** | 236d | 2026-04-29 | 2026-12-20 |  | start no earlier than 2026-04-29 | RGA -FINISHING | 7805792 |
| 850 | 40100.40200.40400.56000.60300.170600.908700 | FIRE FIGHTING | 10d | 2026-04-29 | 2026-05-08 | 603FS-5d |  | RGA -FINISHING | 7825702 |
| 851 | 40100.40200.40400.56000.60300.170600.908800 | LIFT BLOCK WORK | 3d | 2026-08-20 | 2026-08-22 | 843 |  | RGA -FINISHING | 7825712 |
| 852 | 40100.40200.40400.56000.60300.170600.908900 | LIFT DADO WORK | 10d | 2026-11-07 | 2026-11-16 | 844 |  | RGA -FINISHING | 7825722 |
| 853 | 40100.40200.40400.56000.60300.170600.909000 | LOBBY FLOORING WORK | 10d | 2026-11-17 | 2026-11-26 | 852 |  | RGA -FINISHING | 7825732 |
| 854 | 40100.40200.40400.56000.60300.170600.909100 | ELECTRICAL WIRING & SWITCH PLATE FIXING WORK | 6d | 2026-11-27 | 2026-12-02 | 853 |  | RGA -FINISHING | 7825742 |
| 855 | 40100.40200.40400.56000.60300.170600.909200 | False ceiling & 1ST COAT PAINTING | 15d | 2026-12-03 | 2026-12-17 | 854 |  | RGA -FINISHING | 7825752 |
| 856 | 40100.40200.40400.56000.60300.170600.909300 | CLEANING | 3d | 2026-12-18 | 2026-12-20 | 855 |  | RGA -FINISHING | 7825762 |
| 857 | 40100.40200.40400.56000.60300.170700 | **19th FLOOR** | 228d | 2026-05-07 | 2026-12-20 |  | start no earlier than 2026-05-07 | RGA -FINISHING | 7805782 |
| 858 | 40100.40200.40400.56000.60300.170700.909400 | FIRE FIGHTING | 10d | 2026-05-07 | 2026-05-16 | 616FS-5d |  | RGA -FINISHING | 7825772 |
| 859 | 40100.40200.40400.56000.60300.170700.909500 | LIFT BLOCK WORK | 3d | 2026-08-20 | 2026-08-22 | 851SS |  | RGA -FINISHING | 7825782 |
| 860 | 40100.40200.40400.56000.60300.170700.909600 | LIFT DADO WORK | 10d | 2026-11-07 | 2026-11-16 | 852SS |  | RGA -FINISHING | 7825792 |
| 861 | 40100.40200.40400.56000.60300.170700.909700 | LOBBY FLOORING WORK | 10d | 2026-11-17 | 2026-11-26 | 860 |  | RGA -FINISHING | 7825802 |
| 862 | 40100.40200.40400.56000.60300.170700.909800 | ELECTRICAL WIRING & SWITCH PLATE FIXING WORK | 6d | 2026-11-27 | 2026-12-02 | 861 |  | RGA -FINISHING | 7825812 |
| 863 | 40100.40200.40400.56000.60300.170700.909900 | False ceiling & 1ST COAT PAINTING | 15d | 2026-12-03 | 2026-12-17 | 862 |  | RGA -FINISHING | 7825822 |
| 864 | 40100.40200.40400.56000.60300.170700.910000 | CLEANING | 3d | 2026-12-18 | 2026-12-20 | 863 |  | RGA -FINISHING | 7825832 |

Notes:
- 842: Assumed
- 850: Assumed
- 858: Assumed

| ID | WBS | Task | Duration | Start | Finish | Predecessors | Constraint | Calendar | Unique_Task_ID |
| --- | --- | --- | --- | --- | --- | --- | --- | --- | --- |
| 865 | 40100.40200.40400.56000.60300.170800 | **20th FLOOR** | 219d | 2026-05-16 | 2026-12-20 |  | start no earlier than 2026-05-16 | RGA -FINISHING | 7805772 |
| 866 | 40100.40200.40400.56000.60300.170800.910100 | FIRE FIGHTING | 10d | 2026-05-16 | 2026-05-25 | 629FS-5d |  | RGA -FINISHING | 7825842 |
| 867 | 40100.40200.40400.56000.60300.170800.910200 | LIFT BLOCK WORK | 3d | 2026-08-20 | 2026-08-22 | 859SS |  | RGA -FINISHING | 7825852 |
| 868 | 40100.40200.40400.56000.60300.170800.910300 | LIFT DADO WORK | 10d | 2026-11-07 | 2026-11-16 | 860SS |  | RGA -FINISHING | 7825862 |
| 869 | 40100.40200.40400.56000.60300.170800.910400 | LOBBY FLOORING WORK | 10d | 2026-11-17 | 2026-11-26 | 868 |  | RGA -FINISHING | 7825872 |
| 870 | 40100.40200.40400.56000.60300.170800.910500 | ELECTRICAL WIRING & SWITCH PLATE FIXING WORK | 6d | 2026-11-27 | 2026-12-02 | 869 |  | RGA -FINISHING | 7825882 |
| 871 | 40100.40200.40400.56000.60300.170800.910600 | False ceiling & 1ST COAT PAINTING | 15d | 2026-12-03 | 2026-12-17 | 870 |  | RGA -FINISHING | 7825892 |
| 872 | 40100.40200.40400.56000.60300.170800.910700 | CLEANING | 3d | 2026-12-18 | 2026-12-20 | 871 |  | RGA -FINISHING | 7825902 |
| 873 | 40100.40200.40400.56000.60300.170900 | **21ST FLOOR** | 211d | 2026-05-24 | 2026-12-20 |  | start no earlier than 2026-05-24 | RGA -FINISHING | 7805762 |
| 874 | 40100.40200.40400.56000.60300.170900.910800 | FIRE FIGHTING | 10d | 2026-05-24 | 2026-06-02 | 642FS-5d |  | RGA -FINISHING | 7825912 |
| 875 | 40100.40200.40400.56000.60300.170900.910900 | LIFT BLOCK WORK | 3d | 2026-08-20 | 2026-08-22 | 867SS |  | RGA -FINISHING | 7825922 |
| 876 | 40100.40200.40400.56000.60300.170900.911000 | LIFT DADO WORK | 10d | 2026-11-07 | 2026-11-16 | 868SS |  | RGA -FINISHING | 7825932 |
| 877 | 40100.40200.40400.56000.60300.170900.911100 | LOBBY FLOORING WORK | 10d | 2026-11-17 | 2026-11-26 | 876 |  | RGA -FINISHING | 7825942 |
| 878 | 40100.40200.40400.56000.60300.170900.911200 | ELECTRICAL WIRING & SWITCH PLATE FIXING WORK | 6d | 2026-11-27 | 2026-12-02 | 877 |  | RGA -FINISHING | 7825952 |
| 879 | 40100.40200.40400.56000.60300.170900.911300 | False ceiling & 1ST COAT PAINTING | 15d | 2026-12-03 | 2026-12-17 | 878 |  | RGA -FINISHING | 7825962 |
| 880 | 40100.40200.40400.56000.60300.170900.911400 | CLEANING | 3d | 2026-12-18 | 2026-12-20 | 879 |  | RGA -FINISHING | 7825972 |
| 881 | 40100.40200.40400.56000.60300.171000 | **22th FLOOR** | 213d | 2026-06-01 | 2026-12-30 |  | start no earlier than 2026-06-01 | RGA -FINISHING | 7805752 |
| 882 | 40100.40200.40400.56000.60300.171000.911500 | FIRE FIGHTING | 10d | 2026-06-01 | 2026-06-10 | 655FS-5d |  | RGA -FINISHING | 7825982 |
| 883 | 40100.40200.40400.56000.60300.171000.911600 | LIFT BLOCK WORK | 3d | 2026-08-23 | 2026-08-25 | 875 |  | RGA -FINISHING | 7825992 |
| 884 | 40100.40200.40400.56000.60300.171000.911700 | LIFT DADO WORK | 10d | 2026-11-17 | 2026-11-26 | 876 |  | RGA -FINISHING | 7826002 |
| 885 | 40100.40200.40400.56000.60300.171000.911800 | LOBBY FLOORING WORK | 10d | 2026-11-27 | 2026-12-06 | 884 |  | RGA -FINISHING | 7826012 |
| 886 | 40100.40200.40400.56000.60300.171000.911900 | ELECTRICAL WIRING & SWITCH PLATE FIXING WORK | 6d | 2026-12-07 | 2026-12-12 | 885 |  | RGA -FINISHING | 7826022 |
| 887 | 40100.40200.40400.56000.60300.171000.912000 | False ceiling & 1ST COAT PAINTING | 15d | 2026-12-13 | 2026-12-27 | 886 |  | RGA -FINISHING | 7826032 |
| 888 | 40100.40200.40400.56000.60300.171000.912100 | CLEANING | 3d | 2026-12-28 | 2026-12-30 | 887 |  | RGA -FINISHING | 7826042 |

Notes:
- 866: Assumed
- 874: Assumed
- 882: Assumed

| ID | WBS | Task | Duration | Start | Finish | Predecessors | Constraint | Calendar | Unique_Task_ID |
| --- | --- | --- | --- | --- | --- | --- | --- | --- | --- |
| 889 | 40100.40200.40400.56000.60300.171100 | **23th FLOOR** | 205d | 2026-06-09 | 2026-12-30 |  | start no earlier than 2026-06-09 | RGA -FINISHING | 7805742 |
| 890 | 40100.40200.40400.56000.60300.171100.912200 | FIRE FIGHTING | 10d | 2026-06-09 | 2026-06-18 | 668FS-5d |  | RGA -FINISHING | 7826052 |
| 891 | 40100.40200.40400.56000.60300.171100.912300 | LIFT BLOCK WORK | 3d | 2026-08-23 | 2026-08-25 | 883SS |  | RGA -FINISHING | 7826062 |
| 892 | 40100.40200.40400.56000.60300.171100.912400 | LIFT DADO WORK | 10d | 2026-11-17 | 2026-11-26 | 884SS |  | RGA -FINISHING | 7826072 |
| 893 | 40100.40200.40400.56000.60300.171100.912500 | LOBBY FLOORING WORK | 10d | 2026-11-27 | 2026-12-06 | 892 |  | RGA -FINISHING | 7826082 |
| 894 | 40100.40200.40400.56000.60300.171100.912600 | ELECTRICAL WIRING & SWITCH PLATE FIXING WORK | 6d | 2026-12-07 | 2026-12-12 | 893 |  | RGA -FINISHING | 7826092 |
| 895 | 40100.40200.40400.56000.60300.171100.912700 | False ceiling & 1ST COAT PAINTING | 15d | 2026-12-13 | 2026-12-27 | 894 |  | RGA -FINISHING | 7826102 |
| 896 | 40100.40200.40400.56000.60300.171100.912800 | CLEANING | 3d | 2026-12-28 | 2026-12-30 | 895 |  | RGA -FINISHING | 7826112 |
| 897 | 40100.40200.40400.56000.60300.171200 | **24th FLOOR** | 193d | 2026-06-21 | 2026-12-30 |  | start no earlier than 2026-06-21 | RGA -FINISHING | 7805732 |
| 898 | 40100.40200.40400.56000.60300.171200.912900 | FIRE FIGHTING | 10d | 2026-06-21 | 2026-06-30 | 681FS-5d |  | RGA -FINISHING | 7826122 |
| 899 | 40100.40200.40400.56000.60300.171200.913000 | LIFT BLOCK WORK | 3d | 2026-08-23 | 2026-08-25 | 891SS |  | RGA -FINISHING | 7826132 |
| 900 | 40100.40200.40400.56000.60300.171200.913100 | LIFT DADO WORK | 10d | 2026-11-17 | 2026-11-26 | 892SS |  | RGA -FINISHING | 7826142 |
| 901 | 40100.40200.40400.56000.60300.171200.913200 | LOBBY FLOORING WORK | 10d | 2026-11-27 | 2026-12-06 | 900 |  | RGA -FINISHING | 7826152 |
| 902 | 40100.40200.40400.56000.60300.171200.913300 | ELECTRICAL WIRING & SWITCH PLATE FIXING WORK | 6d | 2026-12-07 | 2026-12-12 | 901 |  | RGA -FINISHING | 7826162 |
| 903 | 40100.40200.40400.56000.60300.171200.913400 | False ceiling & 1ST COAT PAINTING | 15d | 2026-12-13 | 2026-12-27 | 902 |  | RGA -FINISHING | 7826172 |
| 904 | 40100.40200.40400.56000.60300.171200.913500 | CLEANING | 3d | 2026-12-28 | 2026-12-30 | 903 |  | RGA -FINISHING | 7826182 |
| 905 | 40100.40200.40400.56000.60300.171300 | **25th FLOOR** | 184d | 2026-06-30 | 2026-12-30 |  | start no earlier than 2026-06-30 | RGA -FINISHING | 7805722 |
| 906 | 40100.40200.40400.56000.60300.171300.913600 | FIRE FIGHTING | 10d | 2026-06-30 | 2026-07-09 | 694FS-5d |  | RGA -FINISHING | 7826192 |
| 907 | 40100.40200.40400.56000.60300.171300.913700 | LIFT BLOCK WORK | 3d | 2026-08-23 | 2026-08-25 | 899SS |  | RGA -FINISHING | 7826202 |
| 908 | 40100.40200.40400.56000.60300.171300.913800 | LIFT DADO WORK | 10d | 2026-11-17 | 2026-11-26 | 900SS |  | RGA -FINISHING | 7826212 |
| 909 | 40100.40200.40400.56000.60300.171300.913900 | LOBBY FLOORING WORK | 10d | 2026-11-27 | 2026-12-06 | 908 |  | RGA -FINISHING | 7826222 |
| 910 | 40100.40200.40400.56000.60300.171300.914000 | ELECTRICAL WIRING & SWITCH PLATE FIXING WORK | 6d | 2026-12-07 | 2026-12-12 | 909 |  | RGA -FINISHING | 7826232 |
| 911 | 40100.40200.40400.56000.60300.171300.914100 | False ceiling & 1ST COAT PAINTING | 15d | 2026-12-13 | 2026-12-27 | 910 |  | RGA -FINISHING | 7826242 |
| 912 | 40100.40200.40400.56000.60300.171300.914200 | CLEANING | 3d | 2026-12-28 | 2026-12-30 | 911 |  | RGA -FINISHING | 7826252 |

Notes:
- 890: Assumed
- 898: Assumed
- 906: Assumed

| ID | WBS | Task | Duration | Start | Finish | Predecessors | Constraint | Calendar | Unique_Task_ID |
| --- | --- | --- | --- | --- | --- | --- | --- | --- | --- |
| 913 | 40100.40200.40400.56000.162100 | **Common MEP Works** | 312d | 2026-08-11 | 2027-06-18 |  | start no earlier than 2026-08-11 | RGA -FINISHING | 7805302 |
| 914 | 40100.40200.40400.56000.162100.504000 | **Lift Works** | 96d | 2026-08-13 | 2026-11-16 |  | start no earlier than 2026-08-13 | RGA -FINISHING | 7811502 |
| 915 | 40100.40200.40400.56000.162100.504000.914300 | Lift Shaft Handover | 15d | 2026-08-13 | 2026-08-27 | 171 |  | RGA -FINISHING | 7826402 |
| 916 | 40100.40200.40400.56000.162100.504000.914400 | Lift installation work | 80d | 2026-08-29 | 2026-11-16 | 930FS-111d, 915FS+1d |  | RGA -FINISHING | 7826412 |
| 917 | 40100.40200.40400.56000.162100.503800 | **Plumbing works** | 127d | 2027-02-12 | 2027-06-18 |  | start no earlier than 2027-02-12 | RGA -FINISHING | 7811512 |
| 918 | 40100.40200.40400.56000.162100.503800.914500 | Shaft Plumbing | 90d | 2027-02-12 | 2027-05-12 | 364 |  | RGA -FINISHING | 7826422 |
| 919 | 40100.40200.40400.56000.162100.503800.914600 | Terrace Looping | 90d | 2027-03-21 | 2027-06-18 | 362 |  | RGA -FINISHING | 7826432 |
| 920 | 40100.40200.40400.56000.162100.503700 | **Fire Fighting works** | 75d | 2026-08-11 | 2026-10-24 |  | start no earlier than 2026-08-11 | RGA -FINISHING | 7811522 |
| 921 | 40100.40200.40400.56000.162100.503700.914700 | Shaft Downtake works | 60d | 2026-08-11 | 2026-10-09 | 166FS+21d |  | RGA -FINISHING | 7826442 |
| 922 | 40100.40200.40400.56000.162100.503700.914800 | Connection to pump room | 15d | 2026-10-10 | 2026-10-24 | 921 |  | RGA -FINISHING | 7826452 |
| 923 | 40100.40200.40400.56000.162100.351800 | **Electrical works** | 218d | 2026-09-20 | 2027-04-25 |  | start no earlier than 2026-09-20 | RGA -FINISHING | 7808192 |
| 924 | 40100.40200.40400.56000.162100.351800.914900 | Shaft cabling | 45d | 2026-09-20 | 2026-11-03 | 166FS+61d |  | RGA -FINISHING | 7826462 |
| 925 | 40100.40200.40400.56000.162100.351800.915000 | Meter room erection | 15d | 2027-03-27 | 2027-04-10 | 24FS+227d |  | RGA -FINISHING | 7826472 |
| 926 | 40100.40200.40400.56000.162100.351800.915100 | Panel erection | 15d | 2027-04-11 | 2027-04-25 | 925 |  | RGA -FINISHING | 7826482 |
| 927 | 40100.40200.40400.56000.162100.351800.915200 | DG Installtion | 10d | 2026-12-27 | 2027-01-05 | 925SS-90d |  | RGA -FINISHING | 7826492 |
| 928 | 40100.40200.40400.56000.162100.351800.915300 | Transformer erection | 15d | 2026-12-27 | 2027-01-10 | 927SS |  | RGA -FINISHING | 7826502 |
| 929 | 40100.40200.40400.351900 | **Capex Item Procurment** | 241d | 2026-06-14 | 2027-02-09 |  | start no earlier than 2026-06-14 | RGA -FINISHING | 7808792 |
| 930 | 40100.40200.40400.351900.529000 | Lift Procurement & delivery | 30d | 2026-06-14 | 2026-07-13 | 915SS-60d |  | RGA -FINISHING | 7812662 |
| 931 | 40100.40200.40400.351900.529100 | Panels | 30d | 2027-01-11 | 2027-02-09 | 926SS-90d |  | RGA -FINISHING | 7812672 |
| 932 | 40100.40200.40400.351900.529200 | DG procurement | 30d | 2026-09-28 | 2026-10-27 | 927SS-90d |  | RGA -FINISHING | 7812682 |
| 933 | 40100.40200.40400.351900.529300 | Transformer | 30d | 2026-09-28 | 2026-10-27 | 928SS-90d |  | RGA -FINISHING | 7812692 |
| 934 | 40100.40200.40400.43600 | **Handing Over Activities** | 56d | 2027-04-30 | 2027-06-24 |  | start no earlier than 2027-04-30 | RGA -FINISHING | 7803212 |
| 935 | 40100.40200.40400.43600.529400 | SOAP WASHING GROUND FLOOR | 1d | 2027-04-30 | 2027-04-30 | 912FS+120d |  | RGA -FINISHING | 7812702 |
| 936 | 40100.40200.40400.43600.529500 | SOAP WASHING L1 | 1d | 2027-05-01 | 2027-05-01 | 935 |  | RGA -FINISHING | 7812712 |
| 937 | 40100.40200.40400.43600.529600 | SOAP WASHING L2 | 1d | 2027-05-02 | 2027-05-02 | 936 |  | RGA -FINISHING | 7812722 |
| 938 | 40100.40200.40400.43600.529700 | SOAP WASHING L3 | 1d | 2027-05-03 | 2027-05-03 | 937 |  | RGA -FINISHING | 7812732 |
| 939 | 40100.40200.40400.43600.529800 | SOAP WASHING L4 | 1d | 2027-05-04 | 2027-05-04 | 938 |  | RGA -FINISHING | 7812742 |
| 940 | 40100.40200.40400.43600.529900 | SOAP WASHING L5 | 1d | 2027-05-05 | 2027-05-05 | 939 |  | RGA -FINISHING | 7812752 |
| 941 | 40100.40200.40400.43600.530000 | SOAP WASHING L6 | 1d | 2027-05-06 | 2027-05-06 | 940 |  | RGA -FINISHING | 7812762 |
| 942 | 40100.40200.40400.43600.530100 | SOAP WASHING L7 | 1d | 2027-05-07 | 2027-05-07 | 941 |  | RGA -FINISHING | 7812772 |
| 943 | 40100.40200.40400.43600.530200 | SOAP WASHING L8 | 1d | 2027-05-08 | 2027-05-08 | 942 |  | RGA -FINISHING | 7812782 |
| 944 | 40100.40200.40400.43600.530300 | SOAP WASHING L9 | 1d | 2027-05-09 | 2027-05-09 | 943 |  | RGA -FINISHING | 7812792 |
| 945 | 40100.40200.40400.43600.530400 | SOAP WASHING L10 | 1d | 2027-05-10 | 2027-05-10 | 944 |  | RGA -FINISHING | 7812802 |
| 946 | 40100.40200.40400.43600.530500 | SOAP WASHING L11 | 1d | 2027-05-11 | 2027-05-11 | 945 |  | RGA -FINISHING | 7812812 |
| 947 | 40100.40200.40400.43600.530600 | SOAP WASHING L12 | 1d | 2027-05-12 | 2027-05-12 | 946 |  | RGA -FINISHING | 7812822 |
| 948 | 40100.40200.40400.43600.530700 | SOAP WASHING L13 | 1d | 2027-05-13 | 2027-05-13 | 947 |  | RGA -FINISHING | 7812832 |
| 949 | 40100.40200.40400.43600.530800 | SOAP WASHING L14 | 1d | 2027-05-14 | 2027-05-14 | 948 |  | RGA -FINISHING | 7812842 |
| 950 | 40100.40200.40400.43600.530900 | SOAP WASHING L15 | 1d | 2027-05-15 | 2027-05-15 | 949 |  | RGA -FINISHING | 7812852 |
| 951 | 40100.40200.40400.43600.531000 | SOAP WASHING L16 | 1d | 2027-05-16 | 2027-05-16 | 950 |  | RGA -FINISHING | 7812862 |
| 952 | 40100.40200.40400.43600.531100 | SOAP WASHING L17 | 1d | 2027-05-17 | 2027-05-17 | 951 |  | RGA -FINISHING | 7812872 |
| 953 | 40100.40200.40400.43600.531200 | SOAP WASHING L18 | 1d | 2027-05-18 | 2027-05-18 | 952 |  | RGA -FINISHING | 7812882 |
| 954 | 40100.40200.40400.43600.531300 | SOAP WASHING L19 | 1d | 2027-05-19 | 2027-05-19 | 953 |  | RGA -FINISHING | 7812892 |
| 955 | 40100.40200.40400.43600.531400 | SOAP WASHING L20 | 1d | 2027-05-20 | 2027-05-20 | 954 |  | RGA -FINISHING | 7812902 |
| 956 | 40100.40200.40400.43600.531500 | SOAP WASHING L21 | 1d | 2027-05-21 | 2027-05-21 | 955 |  | RGA -FINISHING | 7812912 |
| 957 | 40100.40200.40400.43600.531600 | SOAP WASHING L22 | 1d | 2027-05-22 | 2027-05-22 | 956 |  | RGA -FINISHING | 7812922 |
| 958 | 40100.40200.40400.43600.531700 | SOAP WASHING L23 | 1d | 2027-05-23 | 2027-05-23 | 957 |  | RGA -FINISHING | 7812932 |
| 959 | 40100.40200.40400.43600.531800 | SOAP WASHING L24 | 1d | 2027-05-24 | 2027-05-24 | 958 |  | RGA -FINISHING | 7812942 |
| 960 | 40100.40200.40400.43600.531900 | SOAP WASHING L25 | 1d | 2027-05-25 | 2027-05-25 | 959 |  | RGA -FINISHING | 7812952 |
| 961 | 40100.40200.40400.43600.532000 | CP & SANITARYWARE FIXING Ground | 2d | 2027-05-02 | 2027-05-03 | 936 |  | RGA -FINISHING | 7812992 |
| 962 | 40100.40200.40400.43600.532100 | CP & SANITARYWARE FIXING L1 | 2d | 2027-05-04 | 2027-05-05 | 961 |  | RGA -FINISHING | 7813002 |
| 963 | 40100.40200.40400.43600.532200 | CP & SANITARYWARE FIXING L2 | 2d | 2027-05-06 | 2027-05-07 | 962 |  | RGA -FINISHING | 7813012 |
| 964 | 40100.40200.40400.43600.532300 | CP & SANITARYWARE FIXING L3 | 2d | 2027-05-08 | 2027-05-09 | 963 |  | RGA -FINISHING | 7813022 |
| 965 | 40100.40200.40400.43600.532400 | CP & SANITARYWARE FIXING L4 | 2d | 2027-05-10 | 2027-05-11 | 964 |  | RGA -FINISHING | 7813032 |
| 966 | 40100.40200.40400.43600.532500 | CP & SANITARYWARE FIXING L5 | 2d | 2027-05-12 | 2027-05-13 | 965 |  | RGA -FINISHING | 7813042 |
| 967 | 40100.40200.40400.43600.532600 | CP & SANITARYWARE FIXING L6 | 2d | 2027-05-14 | 2027-05-15 | 966 |  | RGA -FINISHING | 7813052 |
| 968 | 40100.40200.40400.43600.532700 | CP & SANITARYWARE FIXING L7 | 2d | 2027-05-16 | 2027-05-17 | 967 |  | RGA -FINISHING | 7813062 |
| 969 | 40100.40200.40400.43600.532800 | CP & SANITARYWARE FIXING L8 | 2d | 2027-05-18 | 2027-05-19 | 968 |  | RGA -FINISHING | 7813072 |
| 970 | 40100.40200.40400.43600.532900 | CP & SANITARYWARE FIXING L9 | 2d | 2027-05-20 | 2027-05-21 | 969 |  | RGA -FINISHING | 7813082 |
| 971 | 40100.40200.40400.43600.533000 | CP & SANITARYWARE FIXING L10 | 2d | 2027-05-22 | 2027-05-23 | 970 |  | RGA -FINISHING | 7813092 |
| 972 | 40100.40200.40400.43600.533100 | CP & SANITARYWARE FIXING L11 | 2d | 2027-05-24 | 2027-05-25 | 971 |  | RGA -FINISHING | 7813102 |
| 973 | 40100.40200.40400.43600.533200 | CP & SANITARYWARE FIXING L12 | 2d | 2027-05-26 | 2027-05-27 | 972 |  | RGA -FINISHING | 7813112 |
| 974 | 40100.40200.40400.43600.533300 | CP & SANITARYWARE FIXING L13 | 2d | 2027-05-28 | 2027-05-29 | 973 |  | RGA -FINISHING | 7813122 |
| 975 | 40100.40200.40400.43600.533400 | CP & SANITARYWARE FIXING L14 | 2d | 2027-05-30 | 2027-05-31 | 974 |  | RGA -FINISHING | 7813132 |
| 976 | 40100.40200.40400.43600.533500 | CP & SANITARYWARE FIXING L15 | 2d | 2027-06-01 | 2027-06-02 | 975 |  | RGA -FINISHING | 7813142 |
| 977 | 40100.40200.40400.43600.533600 | CP & SANITARYWARE FIXING L16 | 2d | 2027-06-03 | 2027-06-04 | 976 |  | RGA -FINISHING | 7813152 |
| 978 | 40100.40200.40400.43600.533700 | CP & SANITARYWARE FIXING L17 | 2d | 2027-06-05 | 2027-06-06 | 977 |  | RGA -FINISHING | 7813162 |
| 979 | 40100.40200.40400.43600.533800 | CP & SANITARYWARE FIXING L18 | 2d | 2027-06-07 | 2027-06-08 | 978 |  | RGA -FINISHING | 7813172 |
| 980 | 40100.40200.40400.43600.533900 | CP & SANITARYWARE FIXING L18 | 2d | 2027-06-09 | 2027-06-10 | 979 |  | RGA -FINISHING | 7813182 |
| 981 | 40100.40200.40400.43600.534000 | CP & SANITARYWARE FIXING L19 | 2d | 2027-06-11 | 2027-06-12 | 980 |  | RGA -FINISHING | 7813192 |
| 982 | 40100.40200.40400.43600.534100 | CP & SANITARYWARE FIXING L20 | 2d | 2027-06-13 | 2027-06-14 | 981 |  | RGA -FINISHING | 7813202 |

Notes:
- 913: Completion in 12 months post last RCC

| ID | WBS | Task | Type | Duration | Start | Finish | Predecessors | Complete | Constraint | Calendar | Unique_Task_ID |
| --- | --- | --- | --- | --- | --- | --- | --- | --- | --- | --- | --- |
| 983 | 40100.40200.40400.43600.534200 | CP & SANITARYWARE FIXING L21 |  | 2d | 2027-06-15 | 2027-06-16 | 982 |  |  | RGA -FINISHING | 7813212 |
| 984 | 40100.40200.40400.43600.534300 | CP & SANITARYWARE FIXING L22 |  | 2d | 2027-06-17 | 2027-06-18 | 983 |  |  | RGA -FINISHING | 7813222 |
| 985 | 40100.40200.40400.43600.534400 | CP & SANITARYWARE FIXING L23 |  | 2d | 2027-06-19 | 2027-06-20 | 984 |  |  | RGA -FINISHING | 7813232 |
| 986 | 40100.40200.40400.43600.534500 | CP & SANITARYWARE FIXING L24 |  | 2d | 2027-06-21 | 2027-06-22 | 985 |  |  | RGA -FINISHING | 7813242 |
| 987 | 40100.40200.40400.43600.534600 | CP & SANITARYWARE FIXING L25 |  | 2d | 2027-06-23 | 2027-06-24 | 986 |  |  | RGA -FINISHING | 7813252 |
| 988 | 40100.40200.40400.520500 | Miscellaneous (Aluform Supply) |  | 90d | 2025-08-02 | 2025-10-30 | 61FS-51d |  |  | RGA -FINISHING | 7812512 |
| 989 | 40100.40200.40400.520600 | Miscellaneous |  | 365d | 2026-10-21 | 2027-12-20 | 988FS+304d |  |  | Indian Calendar | 7812522 |
| 990 | 40100.40200.40500 | **TOWER 6 - (B+G+25 Floors+Terrace)** |  | 1086d | 2025-02-15 | 2028-03-15 |  |  | start no earlier than 2025-02-15 | RGA - STRUCTURE | 7803162 |
| 991 | 40100.40200.40500.2746600 | Start date for Tower 6 | milestone | 0d | 2025-05-14 | 2025-05-14 | 1977FS+7d |  |  | RGA - STRUCTURE | 7847672 |
| 992 | 40100.40200.40500.374300 | **Earth work** |  | 155d | 2025-02-15 | 2025-07-21 |  | 43% | start no earlier than 2025-02-15 | RGA - STRUCTURE | 7811742 |
| 993 | 40100.40200.40500.374300.520200 | EXCAVATION - Tower Area |  | 48d | 2025-02-15 | 2025-06-23 | 991SS-86d | 14% |  | RGA - STRUCTURE | 7813292 |
| 994 | 40100.40200.40500.374300.520100 | Excavation - Non Tower Area |  | 60d | 2025-03-18 | 2025-07-21 | 993FS-66d | 66% |  | 5 day week, Bank Hols Xmas | 7433465 |
| 995 | 40100.40200.40500.69600 | **Substructure works (Works up to plinth)** |  | 714d | 2025-07-22 | 2027-08-11 |  |  | start no earlier than 2025-07-22 | RGA - STRUCTURE | 7803912 |
| 996 | 40100.40200.40500.69600.153500 | **Civil works (Shell & Core basement)** |  | 57d | 2025-07-22 | 2025-09-17 |  |  | start no earlier than 2025-07-22 | RGA - STRUCTURE | 7806842 |
| 997 | 40100.40200.40500.69600.153500.165300 | **RCC Works - Tower area 1st Basement** |  | 57d | 2025-07-22 | 2025-09-17 |  |  | start no earlier than 2025-07-22 | RGA - STRUCTURE | 7808182 |
| 998 | 40100.40200.40500.69600.153500.165300.383100 | **Foundation** |  | 26d | 2025-07-22 | 2025-08-17 |  |  | start no earlier than 2025-07-22 | RGA - STRUCTURE | 7809302 |
| 999 | 40100.40200.40500.69600.153500.165300.383100.2191900 | Pocket Excavation |  | 1d | 2025-07-22 | 2025-07-22 | 994 |  |  | RGA - STRUCTURE | 7832802 |
| 1000 | 40100.40200.40500.69600.153500.165300.383100.2192000 | Footing PCC |  | 4d | 2025-07-23 | 2025-07-26 | 999 |  |  | RGA - STRUCTURE | 7832812 |
| 1001 | 40100.40200.40500.69600.153500.165300.383100.2192100 | Footing / Raft works |  | 21d | 2025-07-27 | 2025-08-17 | 1000 |  |  | RGA - STRUCTURE | 7832822 |
| 1002 | 40100.40200.40500.69600.153500.165300.251600 | **UB Floor Slab (Dummy To Be Deleted)** |  | 31d | 2025-08-18 | 2025-09-17 |  |  | start no earlier than 2025-08-18 | RGA - STRUCTURE | 7811812 |
| 1003 | 40100.40200.40500.69600.153500.165300.251600.2748400 | Columns in Upper basement | milestone | 0d | 2025-08-18 | 2025-08-18 | 1001 |  |  | RGA - STRUCTURE | 7832832 |
| 1004 | 40100.40200.40500.69600.153500.165300.251600.2748500 | Upper Basement slab | milestone | 0d | 2025-08-18 | 2025-08-18 | 1003 |  |  | RGA - STRUCTURE | 7832842 |
| 1005 | 40100.40200.40500.69600.153500.165300.251600.476500 | **Ground Floor Slab** |  | 31d | 2025-08-18 | 2025-09-17 |  |  | start no earlier than 2025-08-18 | RGA - STRUCTURE | 8865294 |
| 1006 | 40100.40200.40500.69600.153500.165300.251600.476500.2603100 | Columns in Upper basement |  | 14d | 2025-08-18 | 2025-08-31 | 1004 |  |  | RGA - STRUCTURE | 8865304 |
| 1007 | 40100.40200.40500.69600.153500.165300.251600.476500.2603200 | Upper Basement slab |  | 17d | 2025-09-01 | 2025-09-17 | 1006 |  |  | RGA - STRUCTURE | 8865314 |

Notes:
- 992: 2 Months for Excavation

| ID | WBS | Task | Duration | Start | Finish | Predecessors | Constraint | Calendar | Unique_Task_ID |
| --- | --- | --- | --- | --- | --- | --- | --- | --- | --- |
| 1008 | 40100.40200.40500.69600.473200 | **Basement Block work and Plaster finishing** | 90d | 2026-05-19 | 2026-09-01 |  | start no earlier than 2026-05-19 | RGA - STRUCTURE | 7812142 |
| 1009 | 40100.40200.40500.69600.473200.828500 | Upper basement | 45d | 2026-05-19 | 2026-07-17 | 1120 |  | RGA - STRUCTURE | 7820092 |
| 1010 | 40100.40200.40500.69600.473200.828600 | 2nd Basement | 45d | 2026-07-18 | 2026-09-01 | 1009 |  | RGA - STRUCTURE | 8865324 |
| 1011 | 40100.40200.40500.69600.162000 | **Services** | 450d | 2026-05-19 | 2027-08-11 |  | start no earlier than 2026-05-19 | RGA -FINISHING | 7805382 |
| 1012 | 40100.40200.40500.69600.162000.364800 | **Plumbing** | 180d | 2026-08-17 | 2027-02-12 |  | start no earlier than 2026-08-17 | RGA -FINISHING | 7808992 |
| 1013 | 40100.40200.40500.69600.162000.364800.486200 | **Upper Basement Plumbing** | 180d | 2026-08-17 | 2027-02-12 |  | start no earlier than 2026-08-17 | RGA -FINISHING | 7812332 |
| 1014 | 40100.40200.40500.69600.162000.364800.486200.2192200 | Upper Basement Plumbing | 90d | 2026-08-17 | 2026-11-14 | 1018 |  | RGA -FINISHING | 7832852 |
| 1015 | 40100.40200.40500.69600.162000.364800.486200.2192300 | Upper Basement Plumbing | 90d | 2026-11-15 | 2027-02-12 | 1014 |  | RGA -FINISHING | 8865334 |
| 1016 | 40100.40200.40500.69600.162000.364900 | **Fire fighting** | 180d | 2026-05-19 | 2026-11-14 |  | start no earlier than 2026-05-19 | RGA -FINISHING | 7809002 |
| 1017 | 40100.40200.40500.69600.162000.364900.486300 | **Upper Basement Fire fighting** | 180d | 2026-05-19 | 2026-11-14 |  | start no earlier than 2026-05-19 | RGA -FINISHING | 7812322 |
| 1018 | 40100.40200.40500.69600.162000.364900.486300.2192400 | Upper Basement Fire fighting | 90d | 2026-05-19 | 2026-08-16 | 1120 |  | RGA -FINISHING | 7832862 |
| 1019 | 40100.40200.40500.69600.162000.364900.486300.2192500 | Upper Basement Fire fighting | 90d | 2026-08-17 | 2026-11-14 | 1018 |  | RGA -FINISHING | 8865354 |
| 1020 | 40100.40200.40500.69600.162000.365000 | **Ventilation** | 180d | 2026-08-17 | 2027-02-12 |  | start no earlier than 2026-08-17 | RGA -FINISHING | 7809012 |
| 1021 | 40100.40200.40500.69600.162000.365000.486400 | **Upper Basement ventilation** | 180d | 2026-08-17 | 2027-02-12 |  | start no earlier than 2026-08-17 | RGA -FINISHING | 7812312 |
| 1022 | 40100.40200.40500.69600.162000.365000.486400.2192600 | Upper Basement ventilation | 90d | 2026-08-17 | 2026-11-14 | 1018 |  | RGA -FINISHING | 7832872 |
| 1023 | 40100.40200.40500.69600.162000.365000.486400.2192700 | Upper Basement ventilation | 90d | 2026-11-15 | 2027-02-12 | 1022 |  | RGA -FINISHING | 8865364 |
| 1024 | 40100.40200.40500.69600.162000.365100 | **Electrification** | 180d | 2026-11-15 | 2027-05-13 |  | start no earlier than 2026-11-15 | RGA -FINISHING | 7809022 |
| 1025 | 40100.40200.40500.69600.162000.365100.486500 | **Upper Basement Electrification** | 180d | 2026-11-15 | 2027-05-13 |  | start no earlier than 2026-11-15 | RGA -FINISHING | 7812302 |
| 1026 | 40100.40200.40500.69600.162000.365100.486500.2192800 | Upper Basement Electrification | 90d | 2026-11-15 | 2027-02-12 | 1022 |  | RGA -FINISHING | 7832882 |
| 1027 | 40100.40200.40500.69600.162000.365100.486500.2192900 | Upper Basement Electrification | 90d | 2027-02-13 | 2027-05-13 | 1026 |  | RGA -FINISHING | 8865374 |
| 1028 | 40100.40200.40500.69600.162000.365200 | **Security installations** | 180d | 2027-02-13 | 2027-08-11 |  | start no earlier than 2027-02-13 | RGA -FINISHING | 7809032 |
| 1029 | 40100.40200.40500.69600.162000.365200.486600 | **Upper Basement Security installations** | 180d | 2027-02-13 | 2027-08-11 |  | start no earlier than 2027-02-13 | RGA -FINISHING | 7812292 |
| 1030 | 40100.40200.40500.69600.162000.365200.486600.2193000 | Upper Basement Security installations | 90d | 2027-02-13 | 2027-05-13 | 1026 |  | RGA -FINISHING | 7832892 |
| 1031 | 40100.40200.40500.69600.162000.365200.486600.2193100 | Upper Basement Security installations | 90d | 2027-05-14 | 2027-08-11 | 1030 |  | RGA -FINISHING | 8865384 |

| ID | WBS | Task | Duration | Start | Finish | Predecessors | Constraint | Calendar | Unique_Task_ID |
| --- | --- | --- | --- | --- | --- | --- | --- | --- | --- |
| 1032 | 40100.40200.40500.69600.343100 | **Finishing work** | 270d | 2026-07-18 | 2027-04-13 |  | start no earlier than 2026-07-18 | RGA -FINISHING | 7808512 |
| 1033 | 40100.40200.40500.69600.343100.503500 | **Basement Flooring** | 180d | 2026-07-18 | 2027-01-13 |  | start no earlier than 2026-07-18 | RGA -FINISHING | 7812362 |
| 1034 | 40100.40200.40500.69600.343100.503500.915400 | 1st Basement ventilation | 90d | 2026-07-18 | 2026-10-15 | 1009 |  | RGA -FINISHING | 7826512 |
| 1035 | 40100.40200.40500.69600.343100.503500.915500 | 1st Basement ventilation | 90d | 2026-10-16 | 2027-01-13 | 1034 |  | RGA -FINISHING | 8865394 |
| 1036 | 40100.40200.40500.69600.343100.503400 | **Basement Painting (1st Coat)** | 180d | 2026-10-16 | 2027-04-13 |  | start no earlier than 2026-10-16 | RGA -FINISHING | 7812372 |
| 1037 | 40100.40200.40500.69600.343100.503400.915600 | 2nd Basement ventilation | 90d | 2026-10-16 | 2027-01-13 | 1034 |  | RGA -FINISHING | 7826522 |
| 1038 | 40100.40200.40500.69600.343100.503400.915700 | 2nd Basement ventilation | 90d | 2027-01-14 | 2027-04-13 | 1037 |  | RGA -FINISHING | 8865404 |
| 1039 | 40100.40200.40500.69600.473300 | **Water Proofing work** | 90d | 2026-07-18 | 2026-10-15 |  | start no earlier than 2026-07-18 | RGA -FINISHING | 7812062 |
| 1040 | 40100.40200.40500.69600.473300.828700 | 1st Basement | 45d | 2026-07-18 | 2026-08-31 | 1009 |  | RGA -FINISHING | 7820102 |
| 1041 | 40100.40200.40500.69600.473300.828800 | 2nd Basement | 45d | 2026-09-01 | 2026-10-15 | 1040 |  | RGA -FINISHING | 8865414 |
| 1042 | 40100.40200.40500.55900 | **Superstructure works** | 737d | 2025-04-01 | 2027-05-15 |  | start no earlier than 2025-04-01 | RGA - STRUCTURE | 7803352 |
| 1043 | 40100.40200.40500.55900.58700 | **Civil works** | 706d | 2025-04-01 | 2027-04-14 |  | start no earlier than 2025-04-01 | RGA - STRUCTURE | 7803442 |
| 1044 | 40100.40200.40500.55900.58700.61500 | **Superstructure RCC Work** | 333d | 2025-09-25 | 2026-09-12 |  | start no earlier than 2025-09-25 | RGA - STRUCTURE | 7803622 |
| 1045 | 40100.40200.40500.55900.58700.61500.62600 | **Slab RCC works** | 284d | 2025-09-25 | 2026-07-24 |  | start no earlier than 2025-09-25 | RGA - STRUCTURE | 7803672 |
| 1046 | 40100.40200.40500.55900.58700.61500.62600.476400 | **1st Floor slab (Height More)** | 25d | 2025-09-25 | 2025-10-20 |  | start no earlier than 2025-09-25 | RGA - STRUCTURE | 7811672 |
| 1047 | 40100.40200.40500.55900.58700.61500.62600.476400.2603300 | Columns | 10d | 2025-09-25 | 2025-10-05 | 1007FS+7d |  | RGA - STRUCTURE | 7850842 |
| 1048 | 40100.40200.40500.55900.58700.61500.62600.476400.2603400 | Slabs | 15d | 2025-10-06 | 2025-10-20 | 1047 |  | RGA - STRUCTURE | 7850852 |
| 1049 | 40100.40200.40500.55900.58700.61500.62600.476300 | **2nd Floor slab (Combo Height More)** | 25d | 2025-10-21 | 2025-11-15 |  | start no earlier than 2025-10-21 | RGA - STRUCTURE | 7811682 |
| 1050 | 40100.40200.40500.55900.58700.61500.62600.476300.2603500 | Columns | 10d | 2025-10-21 | 2025-10-31 | 1048 |  | RGA - STRUCTURE | 7850862 |
| 1051 | 40100.40200.40500.55900.58700.61500.62600.476300.2603600 | Slabs | 15d | 2025-11-01 | 2025-11-15 | 1050 |  | RGA - STRUCTURE | 7850872 |
| 1052 | 40100.40200.40500.55900.58700.61500.62600.394100 | **3rd Floor slab (1st Set Up)** | 21d | 2025-11-16 | 2025-12-06 |  | start no earlier than 2025-11-16 | RGA - STRUCTURE | 7809632 |
| 1053 | 40100.40200.40500.55900.58700.61500.62600.394100.2603700 | Walls rebar & Form work | 10d | 2025-11-16 | 2025-11-25 | 1051 |  | RGA - STRUCTURE | 7850882 |
| 1054 | 40100.40200.40500.55900.58700.61500.62600.394100.2603800 | Slab formwork & rebar | 10d | 2025-11-26 | 2025-12-05 | 1053 |  | RGA - STRUCTURE | 7850892 |
| 1055 | 40100.40200.40500.55900.58700.61500.62600.394100.2603900 | Concreting | 1d | 2025-12-06 | 2025-12-06 | 1054 |  | RGA - STRUCTURE | 7850902 |

Notes:
- 1049: AVg Slab Cycle of 21 days
- 1052: AVg Slab Cycle of 21 days

| ID | WBS | Task | Duration | Start | Finish | Predecessors | Constraint | Calendar | Unique_Task_ID |
| --- | --- | --- | --- | --- | --- | --- | --- | --- | --- |
| 1056 | 40100.40200.40500.55900.58700.61500.62600.394200 | **4th Floor slab (2nd Set Up)** | 15d | 2025-12-07 | 2025-12-21 |  | start no earlier than 2025-12-07 | RGA - STRUCTURE | 7809642 |
| 1057 | 40100.40200.40500.55900.58700.61500.62600.394200.2604000 | Wall & Slab Form work | 7d | 2025-12-07 | 2025-12-13 | 1055 |  | RGA - STRUCTURE | 7850912 |
| 1058 | 40100.40200.40500.55900.58700.61500.62600.394200.2604100 | Slab & Beam Reinf. | 7d | 2025-12-14 | 2025-12-20 | 1057 |  | RGA - STRUCTURE | 7850922 |
| 1059 | 40100.40200.40500.55900.58700.61500.62600.394200.2604200 | Concreting | 1d | 2025-12-21 | 2025-12-21 | 1058 |  | RGA - STRUCTURE | 7850932 |
| 1060 | 40100.40200.40500.55900.58700.61500.62600.394300 | **5th Floor slab** | 9d | 2025-12-22 | 2025-12-30 |  | start no earlier than 2025-12-22 | RGA - STRUCTURE | 7809652 |
| 1061 | 40100.40200.40500.55900.58700.61500.62600.394300.2604300 | Wall & Slab Form work | 4d | 2025-12-22 | 2025-12-25 | 1059 |  | RGA - STRUCTURE | 7850942 |
| 1062 | 40100.40200.40500.55900.58700.61500.62600.394300.2604400 | Slab & Beam Reinf. | 4d | 2025-12-26 | 2025-12-29 | 1061 |  | RGA - STRUCTURE | 7850952 |
| 1063 | 40100.40200.40500.55900.58700.61500.62600.394300.2604500 | Concreting | 1d | 2025-12-30 | 2025-12-30 | 1062 |  | RGA - STRUCTURE | 7850962 |
| 1064 | 40100.40200.40500.55900.58700.61500.62600.394400 | **6th Floor slab** | 9d | 2025-12-31 | 2026-01-08 |  | start no earlier than 2025-12-31 | RGA - STRUCTURE | 7809662 |
| 1065 | 40100.40200.40500.55900.58700.61500.62600.394400.2604600 | Wall & Slab Form work | 4d | 2025-12-31 | 2026-01-03 | 1063 |  | RGA - STRUCTURE | 7850972 |
| 1066 | 40100.40200.40500.55900.58700.61500.62600.394400.2604700 | Slab & Beam Reinf. | 4d | 2026-01-04 | 2026-01-07 | 1065 |  | RGA - STRUCTURE | 7850982 |
| 1067 | 40100.40200.40500.55900.58700.61500.62600.394400.2604800 | Concreting | 1d | 2026-01-08 | 2026-01-08 | 1066 |  | RGA - STRUCTURE | 7850992 |
| 1068 | 40100.40200.40500.55900.58700.61500.62600.394500 | **7th Floor slab** | 9d | 2026-01-09 | 2026-01-17 |  | start no earlier than 2026-01-09 | RGA - STRUCTURE | 7809672 |
| 1069 | 40100.40200.40500.55900.58700.61500.62600.394500.2604900 | Wall & Slab Form work | 4d | 2026-01-09 | 2026-01-12 | 1067 |  | RGA - STRUCTURE | 7851002 |
| 1070 | 40100.40200.40500.55900.58700.61500.62600.394500.2605000 | Slab & Beam Reinf. | 4d | 2026-01-13 | 2026-01-16 | 1069 |  | RGA - STRUCTURE | 7851012 |
| 1071 | 40100.40200.40500.55900.58700.61500.62600.394500.2605100 | Concreting | 1d | 2026-01-17 | 2026-01-17 | 1070 |  | RGA - STRUCTURE | 7851022 |
| 1072 | 40100.40200.40500.55900.58700.61500.62600.394600 | **8th Floor slab** | 9d | 2026-01-18 | 2026-01-27 |  | start no earlier than 2026-01-18 | RGA - STRUCTURE | 7809682 |
| 1073 | 40100.40200.40500.55900.58700.61500.62600.394600.2605200 | Wall & Slab Form work | 4d | 2026-01-18 | 2026-01-21 | 1071 |  | RGA - STRUCTURE | 7851032 |
| 1074 | 40100.40200.40500.55900.58700.61500.62600.394600.2605300 | Slab & Beam Reinf. | 4d | 2026-01-22 | 2026-01-25 | 1073 |  | RGA - STRUCTURE | 7851042 |
| 1075 | 40100.40200.40500.55900.58700.61500.62600.394600.2605400 | Concreting | 1d | 2026-01-27 | 2026-01-27 | 1074 |  | RGA - STRUCTURE | 7851052 |
| 1076 | 40100.40200.40500.55900.58700.61500.62600.394700 | **9th Floor slab** | 9d | 2026-01-28 | 2026-02-05 |  | start no earlier than 2026-01-28 | RGA - STRUCTURE | 7809692 |
| 1077 | 40100.40200.40500.55900.58700.61500.62600.394700.2605500 | Wall & Slab Form work | 4d | 2026-01-28 | 2026-01-31 | 1075 |  | RGA - STRUCTURE | 7851062 |
| 1078 | 40100.40200.40500.55900.58700.61500.62600.394700.2605600 | Slab & Beam Reinf. | 4d | 2026-02-01 | 2026-02-04 | 1077 |  | RGA - STRUCTURE | 7851072 |
| 1079 | 40100.40200.40500.55900.58700.61500.62600.394700.2605700 | Concreting | 1d | 2026-02-05 | 2026-02-05 | 1078 |  | RGA - STRUCTURE | 7851082 |

Notes:
- 1056: AVg Slab Cycle of 21 days

| ID | WBS | Task | Duration | Start | Finish | Predecessors | Constraint | Calendar | Unique_Task_ID |
| --- | --- | --- | --- | --- | --- | --- | --- | --- | --- |
| 1080 | 40100.40200.40500.55900.58700.61500.62600.394800 | **10th Floor slab** | 9d | 2026-02-06 | 2026-02-14 |  | start no earlier than 2026-02-06 | RGA - STRUCTURE | 7809702 |
| 1081 | 40100.40200.40500.55900.58700.61500.62600.394800.2605800 | Wall & Slab Form work | 4d | 2026-02-06 | 2026-02-09 | 1079 |  | RGA - STRUCTURE | 7851092 |
| 1082 | 40100.40200.40500.55900.58700.61500.62600.394800.2605900 | Slab & Beam Reinf. | 4d | 2026-02-10 | 2026-02-13 | 1081 |  | RGA - STRUCTURE | 7851102 |
| 1083 | 40100.40200.40500.55900.58700.61500.62600.394800.2606000 | Concreting | 1d | 2026-02-14 | 2026-02-14 | 1082 |  | RGA - STRUCTURE | 7851112 |
| 1084 | 40100.40200.40500.55900.58700.61500.62600.394900 | **11th Floor slab** | 9d | 2026-02-15 | 2026-02-23 |  | start no earlier than 2026-02-15 | RGA - STRUCTURE | 7809712 |
| 1085 | 40100.40200.40500.55900.58700.61500.62600.394900.2606100 | Wall & Slab Form work | 4d | 2026-02-15 | 2026-02-18 | 1083 |  | RGA - STRUCTURE | 7851122 |
| 1086 | 40100.40200.40500.55900.58700.61500.62600.394900.2606200 | Slab & Beam Reinf. | 4d | 2026-02-19 | 2026-02-22 | 1085 |  | RGA - STRUCTURE | 7851132 |
| 1087 | 40100.40200.40500.55900.58700.61500.62600.394900.2606300 | Concreting | 1d | 2026-02-23 | 2026-02-23 | 1086 |  | RGA - STRUCTURE | 7851142 |
| 1088 | 40100.40200.40500.55900.58700.61500.62600.395000 | **12th Floor slab** | 9d | 2026-02-24 | 2026-03-04 |  | start no earlier than 2026-02-24 | RGA - STRUCTURE | 7809722 |
| 1089 | 40100.40200.40500.55900.58700.61500.62600.395000.2606400 | Wall & Slab Form work | 4d | 2026-02-24 | 2026-02-27 | 1087 |  | RGA - STRUCTURE | 7851152 |
| 1090 | 40100.40200.40500.55900.58700.61500.62600.395000.2606500 | Slab & Beam Reinf. | 4d | 2026-02-28 | 2026-03-03 | 1089 |  | RGA - STRUCTURE | 7851162 |
| 1091 | 40100.40200.40500.55900.58700.61500.62600.395000.2606600 | Concreting | 1d | 2026-03-04 | 2026-03-04 | 1090 |  | RGA - STRUCTURE | 7851172 |
| 1092 | 40100.40200.40500.55900.58700.61500.62600.395100 | **13th Floor slab** | 9d | 2026-03-05 | 2026-03-13 |  | start no earlier than 2026-03-05 | RGA - STRUCTURE | 7809732 |
| 1093 | 40100.40200.40500.55900.58700.61500.62600.395100.2606700 | Wall & Slab Form work | 4d | 2026-03-05 | 2026-03-08 | 1091 |  | RGA - STRUCTURE | 7851182 |
| 1094 | 40100.40200.40500.55900.58700.61500.62600.395100.2606800 | Slab & Beam Reinf. | 4d | 2026-03-09 | 2026-03-12 | 1093 |  | RGA - STRUCTURE | 7851192 |
| 1095 | 40100.40200.40500.55900.58700.61500.62600.395100.2606900 | Concreting | 1d | 2026-03-13 | 2026-03-13 | 1094 |  | RGA - STRUCTURE | 7851202 |
| 1096 | 40100.40200.40500.55900.58700.61500.62600.395200 | **14th Floor slab** | 9d | 2026-03-14 | 2026-03-22 |  | start no earlier than 2026-03-14 | RGA - STRUCTURE | 7809742 |
| 1097 | 40100.40200.40500.55900.58700.61500.62600.395200.2607000 | Wall & Slab Form work | 4d | 2026-03-14 | 2026-03-17 | 1095 |  | RGA - STRUCTURE | 7851212 |
| 1098 | 40100.40200.40500.55900.58700.61500.62600.395200.2607100 | Slab & Beam Reinf. | 4d | 2026-03-18 | 2026-03-21 | 1097 |  | RGA - STRUCTURE | 7851222 |
| 1099 | 40100.40200.40500.55900.58700.61500.62600.395200.2607200 | Concreting | 1d | 2026-03-22 | 2026-03-22 | 1098 |  | RGA - STRUCTURE | 7851232 |
| 1100 | 40100.40200.40500.55900.58700.61500.62600.395300 | **15th Floor slab** | 9d | 2026-03-23 | 2026-03-31 |  | start no earlier than 2026-03-23 | RGA - STRUCTURE | 7809752 |
| 1101 | 40100.40200.40500.55900.58700.61500.62600.395300.2607300 | Wall & Slab Form work | 4d | 2026-03-23 | 2026-03-26 | 1099 |  | RGA - STRUCTURE | 7851242 |
| 1102 | 40100.40200.40500.55900.58700.61500.62600.395300.2607400 | Slab & Beam Reinf. | 4d | 2026-03-27 | 2026-03-30 | 1101 |  | RGA - STRUCTURE | 7851252 |
| 1103 | 40100.40200.40500.55900.58700.61500.62600.395300.2607500 | Concreting | 1d | 2026-03-31 | 2026-03-31 | 1102 |  | RGA - STRUCTURE | 7851262 |

Notes:
- 1088: AVg Slab Cycle of 21 days
- 1092: AVg Slab Cycle of 21 days
- 1096: AVg Slab Cycle of 21 days

| ID | WBS | Task | Duration | Start | Finish | Predecessors | Constraint | Calendar | Unique_Task_ID |
| --- | --- | --- | --- | --- | --- | --- | --- | --- | --- |
| 1104 | 40100.40200.40500.55900.58700.61500.62600.395400 | **16th Floor slab** | 9d | 2026-04-01 | 2026-04-09 |  | start no earlier than 2026-04-01 | RGA - STRUCTURE | 7809762 |
| 1105 | 40100.40200.40500.55900.58700.61500.62600.395400.2607600 | Wall & Slab Form work | 4d | 2026-04-01 | 2026-04-04 | 1103 |  | RGA - STRUCTURE | 7851272 |
| 1106 | 40100.40200.40500.55900.58700.61500.62600.395400.2607700 | Slab & Beam Reinf. | 4d | 2026-04-05 | 2026-04-08 | 1105 |  | RGA - STRUCTURE | 7851282 |
| 1107 | 40100.40200.40500.55900.58700.61500.62600.395400.2607800 | Concreting | 1d | 2026-04-09 | 2026-04-09 | 1106 |  | RGA - STRUCTURE | 7851292 |
| 1108 | 40100.40200.40500.55900.58700.61500.62600.395500 | **17th Floor slab** | 9d | 2026-04-10 | 2026-04-18 |  | start no earlier than 2026-04-10 | RGA - STRUCTURE | 7809772 |
| 1109 | 40100.40200.40500.55900.58700.61500.62600.395500.2607900 | Wall & Slab Form work | 4d | 2026-04-10 | 2026-04-13 | 1107 |  | RGA - STRUCTURE | 7851302 |
| 1110 | 40100.40200.40500.55900.58700.61500.62600.395500.2608000 | Slab & Beam Reinf. | 4d | 2026-04-14 | 2026-04-17 | 1109 |  | RGA - STRUCTURE | 7851312 |
| 1111 | 40100.40200.40500.55900.58700.61500.62600.395500.2608100 | Concreting | 1d | 2026-04-18 | 2026-04-18 | 1110 |  | RGA - STRUCTURE | 7851322 |
| 1112 | 40100.40200.40500.55900.58700.61500.62600.395600 | **18th Floor slab** | 9d | 2026-04-19 | 2026-04-27 |  | start no earlier than 2026-04-19 | RGA - STRUCTURE | 7809782 |
| 1113 | 40100.40200.40500.55900.58700.61500.62600.395600.2608200 | Wall & Slab Form work | 4d | 2026-04-19 | 2026-04-22 | 1111 |  | RGA - STRUCTURE | 7851332 |
| 1114 | 40100.40200.40500.55900.58700.61500.62600.395600.2608300 | Slab & Beam Reinf. | 4d | 2026-04-23 | 2026-04-26 | 1113 |  | RGA - STRUCTURE | 7851342 |
| 1115 | 40100.40200.40500.55900.58700.61500.62600.395600.2608400 | Concreting | 1d | 2026-04-27 | 2026-04-27 | 1114 |  | RGA - STRUCTURE | 7851352 |
| 1116 | 40100.40200.40500.55900.58700.61500.62600.395700 | **19th Floor slab** | 8d | 2026-04-28 | 2026-05-06 |  | start no earlier than 2026-04-28 | RGA - STRUCTURE | 7809792 |
| 1117 | 40100.40200.40500.55900.58700.61500.62600.395700.2608500 | Wall & Slab Form work | 4d | 2026-04-28 | 2026-05-02 | 1115 |  | RGA - STRUCTURE | 7851362 |
| 1118 | 40100.40200.40500.55900.58700.61500.62600.395700.2608600 | Slab & Beam Reinf. | 3d | 2026-05-03 | 2026-05-05 | 1117 |  | RGA - STRUCTURE | 7851372 |
| 1119 | 40100.40200.40500.55900.58700.61500.62600.395700.2608700 | Concreting | 1d | 2026-05-06 | 2026-05-06 | 1118 |  | RGA - STRUCTURE | 7851382 |
| 1120 | 40100.40200.40500.55900.58700.61500.62600.395800 | **20th Floor slab (Refuge floor )** | 12d | 2026-05-07 | 2026-05-18 |  | start no earlier than 2026-05-07 | RGA - STRUCTURE | 7809802 |
| 1121 | 40100.40200.40500.55900.58700.61500.62600.395800.2608800 | Wall & Slab Form work | 6d | 2026-05-07 | 2026-05-12 | 1119 |  | RGA - STRUCTURE | 7851392 |
| 1122 | 40100.40200.40500.55900.58700.61500.62600.395800.2608900 | Slab & Beam Reinf. | 5d | 2026-05-13 | 2026-05-17 | 1121 |  | RGA - STRUCTURE | 7851402 |
| 1123 | 40100.40200.40500.55900.58700.61500.62600.395800.2609000 | Concreting | 1d | 2026-05-18 | 2026-05-18 | 1122 |  | RGA - STRUCTURE | 7851412 |
| 1124 | 40100.40200.40500.55900.58700.61500.62600.395900 | **21th Floor slab** | 8d | 2026-05-19 | 2026-05-26 |  | start no earlier than 2026-05-19 | RGA - STRUCTURE | 7809812 |
| 1125 | 40100.40200.40500.55900.58700.61500.62600.395900.2609100 | Wall & Slab Form work | 4d | 2026-05-19 | 2026-05-22 | 1123 |  | RGA - STRUCTURE | 7851422 |
| 1126 | 40100.40200.40500.55900.58700.61500.62600.395900.2609200 | Slab & Beam Reinf. | 3d | 2026-05-23 | 2026-05-25 | 1125 |  | RGA - STRUCTURE | 7851432 |
| 1127 | 40100.40200.40500.55900.58700.61500.62600.395900.2609300 | Concreting | 1d | 2026-05-26 | 2026-05-26 | 1126 |  | RGA - STRUCTURE | 7851442 |

| ID | WBS | Task | Duration | Start | Finish | Predecessors | Constraint | Calendar | Unique_Task_ID |
| --- | --- | --- | --- | --- | --- | --- | --- | --- | --- |
| 1128 | 40100.40200.40500.55900.58700.61500.62600.396000 | **22th Floor slab** | 8d | 2026-05-27 | 2026-06-03 |  | start no earlier than 2026-05-27 | RGA - STRUCTURE | 7809822 |
| 1129 | 40100.40200.40500.55900.58700.61500.62600.396000.2609400 | Wall & Slab Form work | 4d | 2026-05-27 | 2026-05-30 | 1127 |  | RGA - STRUCTURE | 7851452 |
| 1130 | 40100.40200.40500.55900.58700.61500.62600.396000.2609500 | Slab & Beam Reinf. | 3d | 2026-05-31 | 2026-06-02 | 1129 |  | RGA - STRUCTURE | 7851462 |
| 1131 | 40100.40200.40500.55900.58700.61500.62600.396000.2609600 | Concreting | 1d | 2026-06-03 | 2026-06-03 | 1130 |  | RGA - STRUCTURE | 7851472 |
| 1132 | 40100.40200.40500.55900.58700.61500.62600.396100 | **23th Floor slab** | 8d | 2026-06-04 | 2026-06-11 |  | start no earlier than 2026-06-04 | RGA - STRUCTURE | 7809832 |
| 1133 | 40100.40200.40500.55900.58700.61500.62600.396100.2609700 | Wall & Slab Form work | 4d | 2026-06-04 | 2026-06-07 | 1131 |  | RGA - STRUCTURE | 7851482 |
| 1134 | 40100.40200.40500.55900.58700.61500.62600.396100.2609800 | Slab & Beam Reinf. | 3d | 2026-06-08 | 2026-06-10 | 1133 |  | RGA - STRUCTURE | 7851492 |
| 1135 | 40100.40200.40500.55900.58700.61500.62600.396100.2609900 | Concreting | 1d | 2026-06-11 | 2026-06-11 | 1134 |  | RGA - STRUCTURE | 7851502 |
| 1136 | 40100.40200.40500.55900.58700.61500.62600.396200 | **24th Floor slab** | 8d | 2026-06-12 | 2026-06-23 |  | start no earlier than 2026-06-12 | RGA - STRUCTURE | 7809842 |
| 1137 | 40100.40200.40500.55900.58700.61500.62600.396200.2610000 | Wall & Slab Form work | 4d | 2026-06-12 | 2026-06-15 | 1135 |  | RGA - STRUCTURE | 7851512 |
| 1138 | 40100.40200.40500.55900.58700.61500.62600.396200.2610100 | Slab & Beam Reinf. | 3d | 2026-06-16 | 2026-06-21 | 1137 |  | RGA - STRUCTURE | 7851522 |
| 1139 | 40100.40200.40500.55900.58700.61500.62600.396200.2610200 | Concreting | 1d | 2026-06-22 | 2026-06-23 | 1138 |  | RGA - STRUCTURE | 7851532 |
| 1140 | 40100.40200.40500.55900.58700.61500.62600.396300 | **25th Floor slab** | 8d | 2026-06-24 | 2026-07-09 |  | start no earlier than 2026-06-24 | RGA - STRUCTURE | 7809852 |
| 1141 | 40100.40200.40500.55900.58700.61500.62600.396300.2610300 | Wall & Slab Form work | 4d | 2026-06-24 | 2026-07-01 | 1139 |  | RGA - STRUCTURE | 7851542 |
| 1142 | 40100.40200.40500.55900.58700.61500.62600.396300.2610400 | Slab & Beam Reinf. | 3d | 2026-07-02 | 2026-07-07 | 1141 |  | RGA - STRUCTURE | 7851552 |
| 1143 | 40100.40200.40500.55900.58700.61500.62600.396300.2610500 | Concreting | 1d | 2026-07-08 | 2026-07-09 | 1142 |  | RGA - STRUCTURE | 7851562 |
| 1144 | 40100.40200.40500.55900.58700.61500.62600.396400 | **Terrace Floor slab work** | 12d | 2026-07-10 | 2026-07-24 |  | start no earlier than 2026-07-10 | RGA - STRUCTURE | 7809892 |
| 1145 | 40100.40200.40500.55900.58700.61500.62600.396400.2610600 | Wall & Slab Form work | 6d | 2026-07-10 | 2026-07-18 | 1143 |  | RGA - STRUCTURE | 7851632 |
| 1146 | 40100.40200.40500.55900.58700.61500.62600.396400.2610700 | Slab & Beam Reinf. | 5d | 2026-07-19 | 2026-07-23 | 1145 |  | RGA - STRUCTURE | 7851642 |
| 1147 | 40100.40200.40500.55900.58700.61500.62600.396400.2610800 | Concreting | 1d | 2026-07-24 | 2026-07-24 | 1146 |  | RGA - STRUCTURE | 7851652 |
| 1148 | 40100.40200.40500.55900.58700.61500.251700 | **RCC work above Terrace** | 49d | 2026-07-25 | 2026-09-12 |  | start no earlier than 2026-07-25 | RGA - STRUCTURE | 7806952 |
| 1149 | 40100.40200.40500.55900.58700.61500.251700.369600 | **STAIRCASE & OHT CORE** | 49d | 2026-07-25 | 2026-09-12 |  | start no earlier than 2026-07-25 | RGA - STRUCTURE | 7808842 |
| 1150 | 40100.40200.40500.55900.58700.61500.251700.369600.2610900 | STAIRCASE HEAD ROOM | 10d | 2026-07-25 | 2026-08-03 | 1147 |  | RGA - STRUCTURE | 7851662 |
| 1151 | 40100.40200.40500.55900.58700.61500.251700.369600.2611000 | OHT | 25d | 2026-08-04 | 2026-08-29 | 1150 |  | RGA - STRUCTURE | 7851672 |
| 1152 | 40100.40200.40500.55900.58700.61500.251700.369600.2611100 | SHAFT COVERING SLAB | 10d | 2026-07-25 | 2026-08-03 | 1147 |  | RGA - STRUCTURE | 7851682 |
| 1153 | 40100.40200.40500.55900.58700.61500.251700.369600.2611200 | DESHUTTERING OF OHT TOP SLAB | 7d | 2026-09-06 | 2026-09-12 | 1151FS+7d |  | RGA - STRUCTURE | 7851692 |

Notes:
- 1144: AVg Slab Cycle of 21 days

| ID | WBS | Task | Duration | Start | Finish | Predecessors | Constraint | Calendar | Unique_Task_ID |
| --- | --- | --- | --- | --- | --- | --- | --- | --- | --- |
| 1154 | 40100.40200.40500.55900.58700.61500.251700.396500 | **LMR BOTTOM & TOP SLAB** | 43d | 2026-07-25 | 2026-09-06 |  | start no earlier than 2026-07-25 | RGA - STRUCTURE | 7809902 |
| 1155 | 40100.40200.40500.55900.58700.61500.251700.396500.2611300 | LMR COLUMNS / WALLS | 15d | 2026-07-25 | 2026-08-08 | 1147 |  | RGA - STRUCTURE | 7851702 |
| 1156 | 40100.40200.40500.55900.58700.61500.251700.396500.2611400 | LMR TOP SLAB | 20d | 2026-08-09 | 2026-08-29 | 1155 |  | RGA - STRUCTURE | 7851712 |
| 1157 | 40100.40200.40500.55900.58700.61500.251700.396500.2611500 | DESHUTTERING | 8d | 2026-08-30 | 2026-09-06 | 1156 |  | RGA - STRUCTURE | 7851722 |
| 1158 | 40100.40200.40500.55900.58700.59600 | **Civil Finishing works (Brick work, Plaster,conduiting, concled plumbing, waterproofing)** | 744d | 2025-04-01 | 2027-04-14 |  | start no earlier than 2025-04-01 | RGA -FINISHING | 7803492 |
| 1159 | 40100.40200.40500.55900.58700.59600.60700 | **Flat finishing works** | 559d | 2025-04-01 | 2026-10-11 |  | start no earlier than 2025-04-01 | RGA -FINISHING | 7803582 |
| 1160 | 40100.40200.40500.55900.58700.59600.60700.328100 | **Ground FLOOR** | 68d | 2025-11-07 | 2026-01-13 |  | start no earlier than 2025-11-07 | RGA -FINISHING | 7807302 |
| 1161 | 40100.40200.40500.55900.58700.59600.60700.328100.2611600 | BALCONY RAILING FIXING | 9d | 2025-11-07 | 2025-11-15 | 1055FS-30d |  | RGA -FINISHING | 7851732 |
| 1162 | 40100.40200.40500.55900.58700.59600.60700.328100.2611700 | Block work | 2d | 2026-01-07 | 2026-01-08 | 1166 |  | RGA -FINISHING | 7851742 |
| 1163 | 40100.40200.40500.55900.58700.59600.60700.328100.2611800 | CONCEALED ELEC CONDUITING & ITS FINISHING | 5d | 2026-01-09 | 2026-01-13 | 1162 |  | RGA -FINISHING | 7851752 |
| 1164 | 40100.40200.40500.55900.58700.59600.60700.328100.2611900 | PLASTER APPLICATION | 6d | 2025-12-16 | 2025-12-21 | 1355FS+15d |  | RGA -FINISHING | 7851762 |
| 1165 | 40100.40200.40500.55900.58700.59600.60700.328100.2612000 | CONCEALED PLUMBING | 8d | 2025-12-22 | 2025-12-29 | 1164 |  | RGA -FINISHING | 7851772 |
| 1166 | 40100.40200.40500.55900.58700.59600.60700.328100.2612100 | WATERPROOFING WORK FOR TOILETS, KITCHEN SUNK & PLANTERS | 8d | 2025-12-30 | 2026-01-06 | 1165 |  | RGA -FINISHING | 7851782 |
| 1167 | 40100.40200.40500.55900.58700.59600.60700.328000 | **1ST FLOOR** | 96d | 2025-10-16 | 2026-01-19 |  | start no earlier than 2025-10-16 | RGA -FINISHING | 7807312 |
| 1168 | 40100.40200.40500.55900.58700.59600.60700.328000.2612200 | BALCONY RAILING FIXING | 9d | 2025-11-22 | 2025-11-30 | 1059FS-30d |  | RGA -FINISHING | 7851792 |
| 1169 | 40100.40200.40500.55900.58700.59600.60700.328000.2612300 | Block work | 2d | 2026-01-18 | 2026-01-19 | 1173 |  | RGA -FINISHING | 7851802 |
| 1170 | 40100.40200.40500.55900.58700.59600.60700.328000.2612400 | CONCEALED ELEC CONDUITING & ITS FINISHING | 5d | 2025-10-16 | 2025-10-20 | 1048FS-5d |  | RGA -FINISHING | 7851812 |
| 1171 | 40100.40200.40500.55900.58700.59600.60700.328000.2612500 | PLASTER APPLICATION | 6d | 2025-12-27 | 2026-01-01 | 1368FS+20d |  | RGA -FINISHING | 7851822 |
| 1172 | 40100.40200.40500.55900.58700.59600.60700.328000.2612600 | CONCEALED PLUMBING | 8d | 2026-01-02 | 2026-01-09 | 1171 |  | RGA -FINISHING | 7851832 |
| 1173 | 40100.40200.40500.55900.58700.59600.60700.328000.2612700 | WATERPROOFING WORK FOR TOILETS, KITCHEN SUNK & PLANTERS | 8d | 2026-01-10 | 2026-01-17 | 1172 |  | RGA -FINISHING | 7851842 |
| 1174 | 40100.40200.40500.55900.58700.59600.60700.327900 | **2nd FLOOR** | 79d | 2025-11-11 | 2026-01-28 |  | start no earlier than 2025-11-11 | RGA -FINISHING | 7807322 |
| 1175 | 40100.40200.40500.55900.58700.59600.60700.327900.2612800 | BALCONY RAILING FIXING | 9d | 2025-12-01 | 2025-12-09 | 1063FS-30d |  | RGA -FINISHING | 7851852 |
| 1176 | 40100.40200.40500.55900.58700.59600.60700.327900.2612900 | Block work | 2d | 2026-01-27 | 2026-01-28 | 1180 |  | RGA -FINISHING | 7851862 |
| 1177 | 40100.40200.40500.55900.58700.59600.60700.327900.2613000 | CONCEALED ELEC CONDUITING & ITS FINISHING | 5d | 2025-11-11 | 2025-11-15 | 1051FS-5d |  | RGA -FINISHING | 7851872 |
| 1178 | 40100.40200.40500.55900.58700.59600.60700.327900.2613100 | PLASTER APPLICATION | 6d | 2026-01-05 | 2026-01-10 | 1381FS+20d |  | RGA -FINISHING | 7851882 |
| 1179 | 40100.40200.40500.55900.58700.59600.60700.327900.2613200 | CONCEALED PLUMBING | 8d | 2026-01-11 | 2026-01-18 | 1178 |  | RGA -FINISHING | 7851892 |
| 1180 | 40100.40200.40500.55900.58700.59600.60700.327900.2613300 | WATERPROOFING WORK FOR TOILETS, KITCHEN SUNK & PLANTERS | 8d | 2026-01-19 | 2026-01-26 | 1179 |  | RGA -FINISHING | 7851902 |

| ID | WBS | Task | Duration | Start | Finish | Predecessors | Constraint | Calendar | Unique_Task_ID |
| --- | --- | --- | --- | --- | --- | --- | --- | --- | --- |
| 1181 | 40100.40200.40500.55900.58700.59600.60700.327800 | **3rd FLOOR** | 67d | 2025-12-02 | 2026-02-06 |  | start no earlier than 2025-12-02 | RGA -FINISHING | 7807332 |
| 1182 | 40100.40200.40500.55900.58700.59600.60700.327800.2613400 | BALCONY RAILING FIXING | 9d | 2025-12-25 | 2026-01-02 | 1067FS-15d |  | RGA -FINISHING | 7851912 |
| 1183 | 40100.40200.40500.55900.58700.59600.60700.327800.2613500 | Block work | 2d | 2026-02-05 | 2026-02-06 | 1187 |  | RGA -FINISHING | 7851922 |
| 1184 | 40100.40200.40500.55900.58700.59600.60700.327800.2613600 | CONCEALED ELEC CONDUITING & ITS FINISHING | 5d | 2025-12-02 | 2025-12-06 | 1055FS-5d |  | RGA -FINISHING | 7851932 |
| 1185 | 40100.40200.40500.55900.58700.59600.60700.327800.2613700 | PLASTER APPLICATION | 6d | 2026-01-14 | 2026-01-19 | 1394FS+5d |  | RGA -FINISHING | 7851942 |
| 1186 | 40100.40200.40500.55900.58700.59600.60700.327800.2613800 | CONCEALED PLUMBING | 8d | 2026-01-20 | 2026-01-27 | 1185 |  | RGA -FINISHING | 7851952 |
| 1187 | 40100.40200.40500.55900.58700.59600.60700.327800.2613900 | WATERPROOFING WORK FOR TOILETS, KITCHEN SUNK & PLANTERS | 8d | 2026-01-28 | 2026-02-04 | 1186 |  | RGA -FINISHING | 7851962 |
| 1188 | 40100.40200.40500.55900.58700.59600.60700.327700 | **4th FLOOR** | 60d | 2025-12-17 | 2026-02-14 |  | start no earlier than 2025-12-17 | RGA -FINISHING | 7807342 |
| 1189 | 40100.40200.40500.55900.58700.59600.60700.327700.2614000 | BALCONY RAILING FIXING | 9d | 2026-01-03 | 2026-01-11 | 1071FS-15d |  | RGA -FINISHING | 7851972 |
| 1190 | 40100.40200.40500.55900.58700.59600.60700.327700.2614100 | Block work | 2d | 2026-02-13 | 2026-02-14 | 1194 |  | RGA -FINISHING | 7851982 |
| 1191 | 40100.40200.40500.55900.58700.59600.60700.327700.2614200 | CONCEALED ELEC CONDUITING & ITS FINISHING | 5d | 2025-12-17 | 2025-12-21 | 1059FS-5d |  | RGA -FINISHING | 7851992 |
| 1192 | 40100.40200.40500.55900.58700.59600.60700.327700.2614300 | PLASTER APPLICATION | 6d | 2026-01-22 | 2026-01-27 | 1407FS+4d |  | RGA -FINISHING | 7852002 |
| 1193 | 40100.40200.40500.55900.58700.59600.60700.327700.2614400 | CONCEALED PLUMBING | 8d | 2026-01-28 | 2026-02-04 | 1192 |  | RGA -FINISHING | 7852012 |
| 1194 | 40100.40200.40500.55900.58700.59600.60700.327700.2614500 | WATERPROOFING WORK FOR TOILETS, KITCHEN SUNK & PLANTERS | 8d | 2026-02-05 | 2026-02-12 | 1193 |  | RGA -FINISHING | 7852022 |
| 1195 | 40100.40200.40500.55900.58700.59600.60700.327600 | **5th FLOOR** | 56d | 2025-12-26 | 2026-02-19 |  | start no earlier than 2025-12-26 | RGA -FINISHING | 7807352 |
| 1196 | 40100.40200.40500.55900.58700.59600.60700.327600.2614600 | BALCONY RAILING FIXING | 9d | 2026-01-12 | 2026-01-20 | 1075FS-16d |  | RGA -FINISHING | 7852032 |
| 1197 | 40100.40200.40500.55900.58700.59600.60700.327600.2614700 | Block work | 2d | 2026-02-18 | 2026-02-19 | 1201 |  | RGA -FINISHING | 7852042 |
| 1198 | 40100.40200.40500.55900.58700.59600.60700.327600.2614800 | CONCEALED ELEC CONDUITING & ITS FINISHING | 5d | 2025-12-26 | 2025-12-30 | 1063FS-5d |  | RGA -FINISHING | 7852052 |
| 1199 | 40100.40200.40500.55900.58700.59600.60700.327600.2614900 | PLASTER APPLICATION | 6d | 2026-01-27 | 2026-02-01 | 1420 |  | RGA -FINISHING | 7852062 |
| 1200 | 40100.40200.40500.55900.58700.59600.60700.327600.2615000 | CONCEALED PLUMBING | 8d | 2026-02-02 | 2026-02-09 | 1199 |  | RGA -FINISHING | 7852072 |
| 1201 | 40100.40200.40500.55900.58700.59600.60700.327600.2615100 | WATERPROOFING WORK FOR TOILETS, KITCHEN SUNK & PLANTERS | 8d | 2026-02-10 | 2026-02-17 | 1200 |  | RGA -FINISHING | 7852082 |
| 1202 | 40100.40200.40500.55900.58700.59600.60700.327500 | **6th FLOOR** | 56d | 2026-01-04 | 2026-02-28 |  | start no earlier than 2026-01-04 | RGA -FINISHING | 7807362 |
| 1203 | 40100.40200.40500.55900.58700.59600.60700.327500.2615200 | BALCONY RAILING FIXING | 9d | 2026-01-21 | 2026-01-29 | 1079FS-16d |  | RGA -FINISHING | 7852092 |
| 1204 | 40100.40200.40500.55900.58700.59600.60700.327500.2615300 | Block work | 2d | 2026-02-27 | 2026-02-28 | 1208 |  | RGA -FINISHING | 7852102 |
| 1205 | 40100.40200.40500.55900.58700.59600.60700.327500.2615400 | CONCEALED ELEC CONDUITING & ITS FINISHING | 5d | 2026-01-04 | 2026-01-08 | 1067FS-5d |  | RGA -FINISHING | 7852112 |
| 1206 | 40100.40200.40500.55900.58700.59600.60700.327500.2615500 | PLASTER APPLICATION | 6d | 2026-02-05 | 2026-02-10 | 1433 |  | RGA -FINISHING | 7852122 |
| 1207 | 40100.40200.40500.55900.58700.59600.60700.327500.2615600 | CONCEALED PLUMBING | 8d | 2026-02-11 | 2026-02-18 | 1206 |  | RGA -FINISHING | 7852132 |
| 1208 | 40100.40200.40500.55900.58700.59600.60700.327500.2615700 | WATERPROOFING WORK FOR TOILETS, KITCHEN SUNK & PLANTERS | 8d | 2026-02-19 | 2026-02-26 | 1207 |  | RGA -FINISHING | 7852142 |

| ID | WBS | Task | Duration | Start | Finish | Predecessors | Constraint | Calendar | Unique_Task_ID |
| --- | --- | --- | --- | --- | --- | --- | --- | --- | --- |
| 1209 | 40100.40200.40500.55900.58700.59600.60700.327400 | **7th FLOOR** | 57d | 2026-01-13 | 2026-03-10 |  | start no earlier than 2026-01-13 | RGA -FINISHING | 7807372 |
| 1210 | 40100.40200.40500.55900.58700.59600.60700.327400.2615800 | BALCONY RAILING FIXING | 9d | 2026-01-31 | 2026-02-08 | 1083FS-15d |  | RGA -FINISHING | 7852152 |
| 1211 | 40100.40200.40500.55900.58700.59600.60700.327400.2615900 | Block work | 2d | 2026-03-09 | 2026-03-10 | 1215 |  | RGA -FINISHING | 7852162 |
| 1212 | 40100.40200.40500.55900.58700.59600.60700.327400.2616000 | CONCEALED ELEC CONDUITING & ITS FINISHING | 5d | 2026-01-13 | 2026-01-17 | 1071FS-5d |  | RGA -FINISHING | 7852172 |
| 1213 | 40100.40200.40500.55900.58700.59600.60700.327400.2616100 | PLASTER APPLICATION | 6d | 2026-02-15 | 2026-02-20 | 1446 |  | RGA -FINISHING | 7852182 |
| 1214 | 40100.40200.40500.55900.58700.59600.60700.327400.2616200 | CONCEALED PLUMBING | 8d | 2026-02-21 | 2026-02-28 | 1213 |  | RGA -FINISHING | 7852192 |
| 1215 | 40100.40200.40500.55900.58700.59600.60700.327400.2616300 | WATERPROOFING WORK FOR TOILETS, KITCHEN SUNK & PLANTERS | 8d | 2026-03-01 | 2026-03-08 | 1214 |  | RGA -FINISHING | 7852202 |
| 1216 | 40100.40200.40500.55900.58700.59600.60700.327300 | **8th FLOOR** | 57d | 2026-01-22 | 2026-03-19 |  | start no earlier than 2026-01-22 | RGA -FINISHING | 7807382 |
| 1217 | 40100.40200.40500.55900.58700.59600.60700.327300.2616400 | BALCONY RAILING FIXING | 9d | 2026-02-09 | 2026-02-17 | 1087FS-15d |  | RGA -FINISHING | 7852212 |
| 1218 | 40100.40200.40500.55900.58700.59600.60700.327300.2616500 | Block work | 2d | 2026-03-18 | 2026-03-19 | 1222 |  | RGA -FINISHING | 7852222 |
| 1219 | 40100.40200.40500.55900.58700.59600.60700.327300.2616600 | CONCEALED ELEC CONDUITING & ITS FINISHING | 6d | 2026-01-22 | 2026-01-27 | 1075FS-6d |  | RGA -FINISHING | 7852232 |
| 1220 | 40100.40200.40500.55900.58700.59600.60700.327300.2616700 | PLASTER APPLICATION | 6d | 2026-02-24 | 2026-03-01 | 1459 |  | RGA -FINISHING | 7852242 |
| 1221 | 40100.40200.40500.55900.58700.59600.60700.327300.2616800 | CONCEALED PLUMBING | 8d | 2026-03-02 | 2026-03-09 | 1220 |  | RGA -FINISHING | 7852252 |
| 1222 | 40100.40200.40500.55900.58700.59600.60700.327300.2616900 | WATERPROOFING WORK FOR TOILETS, KITCHEN SUNK & PLANTERS | 8d | 2026-03-10 | 2026-03-17 | 1221 |  | RGA -FINISHING | 7852262 |
| 1223 | 40100.40200.40500.55900.58700.59600.60700.327200 | **9th FLOOR** | 56d | 2026-02-01 | 2026-03-28 |  | start no earlier than 2026-02-01 | RGA -FINISHING | 7807392 |
| 1224 | 40100.40200.40500.55900.58700.59600.60700.327200.2617000 | BALCONY RAILING FIXING | 9d | 2026-02-18 | 2026-02-26 | 1091FS-15d |  | RGA -FINISHING | 7852272 |
| 1225 | 40100.40200.40500.55900.58700.59600.60700.327200.2617100 | Block work | 2d | 2026-03-27 | 2026-03-28 | 1229 |  | RGA -FINISHING | 7852282 |
| 1226 | 40100.40200.40500.55900.58700.59600.60700.327200.2617200 | CONCEALED ELEC CONDUITING & ITS FINISHING | 5d | 2026-02-01 | 2026-02-05 | 1079FS-5d |  | RGA -FINISHING | 7852292 |
| 1227 | 40100.40200.40500.55900.58700.59600.60700.327200.2617300 | PLASTER APPLICATION | 6d | 2026-03-05 | 2026-03-10 | 1472 |  | RGA -FINISHING | 7852302 |
| 1228 | 40100.40200.40500.55900.58700.59600.60700.327200.2617400 | CONCEALED PLUMBING | 8d | 2026-03-11 | 2026-03-18 | 1227 |  | RGA -FINISHING | 7852312 |
| 1229 | 40100.40200.40500.55900.58700.59600.60700.327200.2617500 | WATERPROOFING WORK FOR TOILETS, KITCHEN SUNK & PLANTERS | 8d | 2026-03-19 | 2026-03-26 | 1228 |  | RGA -FINISHING | 7852322 |
| 1230 | 40100.40200.40500.55900.58700.59600.60700.327100 | **10th FLOOR** | 56d | 2026-02-10 | 2026-04-06 |  | start no earlier than 2026-02-10 | RGA -FINISHING | 7807402 |
| 1231 | 40100.40200.40500.55900.58700.59600.60700.327100.2617600 | BALCONY RAILING FIXING | 9d | 2026-02-27 | 2026-03-07 | 1095FS-15d |  | RGA -FINISHING | 7852332 |
| 1232 | 40100.40200.40500.55900.58700.59600.60700.327100.2617700 | Block work | 2d | 2026-04-05 | 2026-04-06 | 1236 |  | RGA -FINISHING | 7852342 |
| 1233 | 40100.40200.40500.55900.58700.59600.60700.327100.2617800 | CONCEALED ELEC CONDUITING & ITS FINISHING | 5d | 2026-02-10 | 2026-02-14 | 1083FS-5d |  | RGA -FINISHING | 7852352 |
| 1234 | 40100.40200.40500.55900.58700.59600.60700.327100.2617900 | PLASTER APPLICATION | 6d | 2026-03-14 | 2026-03-19 | 1485 |  | RGA -FINISHING | 7852362 |
| 1235 | 40100.40200.40500.55900.58700.59600.60700.327100.2618000 | CONCEALED PLUMBING | 8d | 2026-03-20 | 2026-03-27 | 1234 |  | RGA -FINISHING | 7852372 |
| 1236 | 40100.40200.40500.55900.58700.59600.60700.327100.2618100 | WATERPROOFING WORK FOR TOILETS, KITCHEN SUNK & PLANTERS | 8d | 2026-03-28 | 2026-04-04 | 1235 |  | RGA -FINISHING | 7852382 |

| ID | WBS | Task | Duration | Start | Finish | Predecessors | Constraint | Calendar | Unique_Task_ID |
| --- | --- | --- | --- | --- | --- | --- | --- | --- | --- |
| 1237 | 40100.40200.40500.55900.58700.59600.60700.326900 | **11th FLOOR** | 60d | 2026-02-19 | 2026-04-19 |  | start no earlier than 2026-02-19 | RGA -FINISHING | 7807412 |
| 1238 | 40100.40200.40500.55900.58700.59600.60700.326900.2618200 | BALCONY RAILING FIXING | 9d | 2026-03-08 | 2026-03-16 | 1099FS-15d |  | RGA -FINISHING | 7852392 |
| 1239 | 40100.40200.40500.55900.58700.59600.60700.326900.2618300 | Block work | 2d | 2026-04-18 | 2026-04-19 | 1243 |  | RGA -FINISHING | 7852402 |
| 1240 | 40100.40200.40500.55900.58700.59600.60700.326900.2618400 | CONCEALED ELEC CONDUITING & ITS FINISHING | 5d | 2026-02-19 | 2026-02-23 | 1087FS-5d |  | RGA -FINISHING | 7852412 |
| 1241 | 40100.40200.40500.55900.58700.59600.60700.326900.2618500 | PLASTER APPLICATION | 6d | 2026-03-27 | 2026-04-01 | 1498FS+4d |  | RGA -FINISHING | 7852422 |
| 1242 | 40100.40200.40500.55900.58700.59600.60700.326900.2618600 | CONCEALED PLUMBING | 8d | 2026-04-02 | 2026-04-09 | 1241 |  | RGA -FINISHING | 7852432 |
| 1243 | 40100.40200.40500.55900.58700.59600.60700.326900.2618700 | WATERPROOFING WORK FOR TOILETS, KITCHEN SUNK & PLANTERS | 8d | 2026-04-10 | 2026-04-17 | 1242 |  | RGA -FINISHING | 7852442 |
| 1244 | 40100.40200.40500.55900.58700.59600.60700.326800 | **12th FLOOR** | 58d | 2026-02-28 | 2026-04-26 |  | start no earlier than 2026-02-28 | RGA -FINISHING | 7807422 |
| 1245 | 40100.40200.40500.55900.58700.59600.60700.326800.2618800 | BALCONY RAILING FIXING | 9d | 2026-03-17 | 2026-03-25 | 1103FS-15d |  | RGA -FINISHING | 7852452 |
| 1246 | 40100.40200.40500.55900.58700.59600.60700.326800.2618900 | Block work | 2d | 2026-04-19 | 2026-04-20 | 1249 |  | RGA -FINISHING | 7852462 |
| 1247 | 40100.40200.40500.55900.58700.59600.60700.326800.2619000 | CONCEALED ELEC CONDUITING & ITS FINISHING | 5d | 2026-02-28 | 2026-03-04 | 1091FS-5d |  | RGA -FINISHING | 7852472 |
| 1248 | 40100.40200.40500.55900.58700.59600.60700.326800.2619100 | PLASTER APPLICATION | 6d | 2026-04-05 | 2026-04-10 | 1511FS+4d |  | RGA -FINISHING | 7852482 |
| 1249 | 40100.40200.40500.55900.58700.59600.60700.326800.2619200 | CONCEALED PLUMBING | 8d | 2026-04-11 | 2026-04-18 | 1248 |  | RGA -FINISHING | 7852492 |
| 1250 | 40100.40200.40500.55900.58700.59600.60700.326800.2619300 | WATERPROOFING WORK FOR TOILETS, KITCHEN SUNK & PLANTERS | 8d | 2026-04-19 | 2026-04-26 | 1249 |  | RGA -FINISHING | 7852502 |
| 1251 | 40100.40200.40500.55900.58700.59600.60700.326700 | **13th FLOOR** | 76d | 2026-03-09 | 2026-05-23 |  | start no earlier than 2026-03-09 | RGA -FINISHING | 7807432 |
| 1252 | 40100.40200.40500.55900.58700.59600.60700.326700.2619400 | BALCONY RAILING FIXING | 9d | 2026-03-26 | 2026-04-03 | 1107FS-15d |  | RGA -FINISHING | 7852512 |
| 1253 | 40100.40200.40500.55900.58700.59600.60700.326700.2619500 | Block work | 2d | 2026-05-22 | 2026-05-23 | 1257 |  | RGA -FINISHING | 7852522 |
| 1254 | 40100.40200.40500.55900.58700.59600.60700.326700.2619600 | CONCEALED ELEC CONDUITING & ITS FINISHING | 5d | 2026-03-09 | 2026-03-13 | 1095FS-5d |  | RGA -FINISHING | 7852532 |
| 1255 | 40100.40200.40500.55900.58700.59600.60700.326700.2619700 | PLASTER APPLICATION | 15d | 2026-04-16 | 2026-04-30 | 1524FS+4d |  | RGA -FINISHING | 7852542 |
| 1256 | 40100.40200.40500.55900.58700.59600.60700.326700.2619800 | CONCEALED PLUMBING | 9d | 2026-05-01 | 2026-05-09 | 1255 |  | RGA -FINISHING | 7852552 |
| 1257 | 40100.40200.40500.55900.58700.59600.60700.326700.2619900 | WATERPROOFING WORK FOR TOILETS, KITCHEN SUNK & PLANTERS | 12d | 2026-05-10 | 2026-05-21 | 1256 |  | RGA -FINISHING | 7852562 |
| 1258 | 40100.40200.40500.55900.58700.59600.60700.326600 | **14th FLOOR** | 76d | 2026-03-18 | 2026-06-01 |  | start no earlier than 2026-03-18 | RGA -FINISHING | 7807442 |
| 1259 | 40100.40200.40500.55900.58700.59600.60700.326600.2620000 | BALCONY RAILING FIXING | 9d | 2026-04-04 | 2026-04-12 | 1111FS-15d |  | RGA -FINISHING | 7852572 |
| 1260 | 40100.40200.40500.55900.58700.59600.60700.326600.2620100 | Block work | 2d | 2026-05-31 | 2026-06-01 | 1264 |  | RGA -FINISHING | 7852582 |
| 1261 | 40100.40200.40500.55900.58700.59600.60700.326600.2620200 | CONCEALED ELEC CONDUITING & ITS FINISHING | 5d | 2026-03-18 | 2026-03-22 | 1099FS-5d |  | RGA -FINISHING | 7852592 |
| 1262 | 40100.40200.40500.55900.58700.59600.60700.326600.2620300 | PLASTER APPLICATION | 15d | 2026-04-25 | 2026-05-09 | 1537FS+4d |  | RGA -FINISHING | 7852602 |
| 1263 | 40100.40200.40500.55900.58700.59600.60700.326600.2620400 | CONCEALED PLUMBING | 9d | 2026-05-10 | 2026-05-18 | 1262 |  | RGA -FINISHING | 7852612 |
| 1264 | 40100.40200.40500.55900.58700.59600.60700.326600.2620500 | WATERPROOFING WORK FOR TOILETS, KITCHEN SUNK & PLANTERS | 12d | 2026-05-19 | 2026-05-30 | 1263 |  | RGA -FINISHING | 7852622 |

| ID | WBS | Task | Duration | Start | Finish | Predecessors | Constraint | Calendar | Unique_Task_ID |
| --- | --- | --- | --- | --- | --- | --- | --- | --- | --- |
| 1265 | 40100.40200.40500.55900.58700.59600.60700.326500 | **15th FLOOR** | 77d | 2026-03-26 | 2026-06-10 |  | start no earlier than 2026-03-26 | RGA -FINISHING | 7807452 |
| 1266 | 40100.40200.40500.55900.58700.59600.60700.326500.2620600 | BALCONY RAILING FIXING | 9d | 2026-04-13 | 2026-04-21 | 1115FS-15d |  | RGA -FINISHING | 7852632 |
| 1267 | 40100.40200.40500.55900.58700.59600.60700.326500.2620700 | Block work | 2d | 2026-06-09 | 2026-06-10 | 1271 |  | RGA -FINISHING | 7852642 |
| 1268 | 40100.40200.40500.55900.58700.59600.60700.326500.2620800 | CONCEALED ELEC CONDUITING & ITS FINISHING | 5d | 2026-03-26 | 2026-03-30 | 1103FS-6d |  | RGA -FINISHING | 7852652 |
| 1269 | 40100.40200.40500.55900.58700.59600.60700.326500.2620900 | PLASTER APPLICATION | 15d | 2026-05-04 | 2026-05-18 | 1550FS+4d |  | RGA -FINISHING | 7852662 |
| 1270 | 40100.40200.40500.55900.58700.59600.60700.326500.2621000 | CONCEALED PLUMBING | 9d | 2026-05-19 | 2026-05-27 | 1269 |  | RGA -FINISHING | 7852672 |
| 1271 | 40100.40200.40500.55900.58700.59600.60700.326500.2621100 | WATERPROOFING WORK FOR TOILETS, KITCHEN SUNK & PLANTERS | 12d | 2026-05-28 | 2026-06-08 | 1270 |  | RGA -FINISHING | 7852682 |
| 1272 | 40100.40200.40500.55900.58700.59600.60700.326400 | **16th FLOOR** | 76d | 2026-04-04 | 2026-06-18 |  | start no earlier than 2026-04-04 | RGA -FINISHING | 7807462 |
| 1273 | 40100.40200.40500.55900.58700.59600.60700.326400.2621200 | BALCONY RAILING FIXING | 9d | 2026-04-21 | 2026-04-29 | 1119FS-16d |  | RGA -FINISHING | 7852692 |
| 1274 | 40100.40200.40500.55900.58700.59600.60700.326400.2621300 | Block work | 2d | 2026-06-17 | 2026-06-18 | 1278 |  | RGA -FINISHING | 7852702 |
| 1275 | 40100.40200.40500.55900.58700.59600.60700.326400.2621400 | CONCEALED ELEC CONDUITING & ITS FINISHING | 5d | 2026-04-04 | 2026-04-08 | 1107FS-6d |  | RGA -FINISHING | 7852712 |
| 1276 | 40100.40200.40500.55900.58700.59600.60700.326400.2621500 | PLASTER APPLICATION | 15d | 2026-05-12 | 2026-05-26 | 1563FS+4d |  | RGA -FINISHING | 7852722 |
| 1277 | 40100.40200.40500.55900.58700.59600.60700.326400.2621600 | CONCEALED PLUMBING | 9d | 2026-05-27 | 2026-06-04 | 1276 |  | RGA -FINISHING | 7852732 |
| 1278 | 40100.40200.40500.55900.58700.59600.60700.326400.2621700 | WATERPROOFING WORK FOR TOILETS, KITCHEN SUNK & PLANTERS | 12d | 2026-06-05 | 2026-06-16 | 1277 |  | RGA -FINISHING | 7852742 |
| 1279 | 40100.40200.40500.55900.58700.59600.60700.326300 | **17th FLOOR** | 80d | 2026-04-13 | 2026-07-01 |  | start no earlier than 2026-04-13 | RGA -FINISHING | 7807472 |
| 1280 | 40100.40200.40500.55900.58700.59600.60700.326300.2621800 | BALCONY RAILING FIXING | 9d | 2026-05-04 | 2026-05-12 | 1123FS-15d |  | RGA -FINISHING | 7852752 |
| 1281 | 40100.40200.40500.55900.58700.59600.60700.326300.2621900 | Block work | 2d | 2026-06-30 | 2026-07-01 | 1285 |  | RGA -FINISHING | 7852762 |
| 1282 | 40100.40200.40500.55900.58700.59600.60700.326300.2622000 | CONCEALED ELEC CONDUITING & ITS FINISHING | 5d | 2026-04-13 | 2026-04-17 | 1111FS-6d |  | RGA -FINISHING | 7852772 |
| 1283 | 40100.40200.40500.55900.58700.59600.60700.326300.2622100 | PLASTER APPLICATION | 15d | 2026-05-25 | 2026-06-08 | 1576FS+4d |  | RGA -FINISHING | 7852782 |
| 1284 | 40100.40200.40500.55900.58700.59600.60700.326300.2622200 | CONCEALED PLUMBING | 9d | 2026-06-09 | 2026-06-17 | 1283 |  | RGA -FINISHING | 7852792 |
| 1285 | 40100.40200.40500.55900.58700.59600.60700.326300.2622300 | WATERPROOFING WORK FOR TOILETS, KITCHEN SUNK & PLANTERS | 12d | 2026-06-18 | 2026-06-29 | 1284 |  | RGA -FINISHING | 7852802 |
| 1286 | 40100.40200.40500.55900.58700.59600.60700.326200 | **18th FLOOR** | 79d | 2026-04-22 | 2026-07-09 |  | start no earlier than 2026-04-22 | RGA -FINISHING | 7807482 |
| 1287 | 40100.40200.40500.55900.58700.59600.60700.326200.2622400 | BALCONY RAILING FIXING | 9d | 2026-05-12 | 2026-05-20 | 1127FS-15d |  | RGA -FINISHING | 7852812 |
| 1288 | 40100.40200.40500.55900.58700.59600.60700.326200.2622500 | Block work | 2d | 2026-07-08 | 2026-07-09 | 1292 |  | RGA -FINISHING | 7852822 |
| 1289 | 40100.40200.40500.55900.58700.59600.60700.326200.2622600 | CONCEALED ELEC CONDUITING & ITS FINISHING | 5d | 2026-04-22 | 2026-04-26 | 1115FS-6d |  | RGA -FINISHING | 7852832 |
| 1290 | 40100.40200.40500.55900.58700.59600.60700.326200.2622700 | PLASTER APPLICATION | 15d | 2026-06-02 | 2026-06-16 | 1589FS+4d |  | RGA -FINISHING | 7852842 |
| 1291 | 40100.40200.40500.55900.58700.59600.60700.326200.2622800 | CONCEALED PLUMBING | 9d | 2026-06-17 | 2026-06-25 | 1290 |  | RGA -FINISHING | 7852852 |
| 1292 | 40100.40200.40500.55900.58700.59600.60700.326200.2622900 | WATERPROOFING WORK FOR TOILETS, KITCHEN SUNK & PLANTERS | 12d | 2026-06-26 | 2026-07-07 | 1291 |  | RGA -FINISHING | 7852862 |

Notes:
- 1288: Last floor BW completion 2 months post Last RCC

| ID | WBS | Task | Duration | Start | Finish | Predecessors | Constraint | Calendar | Unique_Task_ID |
| --- | --- | --- | --- | --- | --- | --- | --- | --- | --- |
| 1293 | 40100.40200.40500.55900.58700.59600.60700.326100 | **19th FLOOR** | 79d | 2026-04-30 | 2026-07-17 |  | start no earlier than 2026-04-30 | RGA -FINISHING | 7807492 |
| 1294 | 40100.40200.40500.55900.58700.59600.60700.326100.2623000 | BALCONY RAILING FIXING | 9d | 2026-05-20 | 2026-05-28 | 1131FS-15d |  | RGA -FINISHING | 7852872 |
| 1295 | 40100.40200.40500.55900.58700.59600.60700.326100.2623100 | Block work | 2d | 2026-07-16 | 2026-07-17 | 1299 |  | RGA -FINISHING | 7852882 |
| 1296 | 40100.40200.40500.55900.58700.59600.60700.326100.2623200 | CONCEALED ELEC CONDUITING & ITS FINISHING | 5d | 2026-04-30 | 2026-05-04 | 1119FS-7d |  | RGA -FINISHING | 7852892 |
| 1297 | 40100.40200.40500.55900.58700.59600.60700.326100.2623300 | PLASTER APPLICATION | 15d | 2026-06-10 | 2026-06-24 | 1602FS+4d |  | RGA -FINISHING | 7852902 |
| 1298 | 40100.40200.40500.55900.58700.59600.60700.326100.2623400 | CONCEALED PLUMBING | 9d | 2026-06-25 | 2026-07-03 | 1297 |  | RGA -FINISHING | 7852912 |
| 1299 | 40100.40200.40500.55900.58700.59600.60700.326100.2623500 | WATERPROOFING WORK FOR TOILETS, KITCHEN SUNK & PLANTERS | 12d | 2026-07-04 | 2026-07-15 | 1298 |  | RGA -FINISHING | 7852922 |
| 1300 | 40100.40200.40500.55900.58700.59600.60700.326000 | **20th FLOOR** | 74d | 2026-05-13 | 2026-07-25 |  | start no earlier than 2026-05-13 | RGA -FINISHING | 7807502 |
| 1301 | 40100.40200.40500.55900.58700.59600.60700.326000.2623600 | BALCONY RAILING FIXING | 9d | 2026-05-28 | 2026-06-05 | 1135FS-15d |  | RGA -FINISHING | 7852932 |
| 1302 | 40100.40200.40500.55900.58700.59600.60700.326000.2623700 | Block work | 2d | 2026-07-24 | 2026-07-25 | 1306 |  | RGA -FINISHING | 7852942 |
| 1303 | 40100.40200.40500.55900.58700.59600.60700.326000.2623800 | CONCEALED ELEC CONDUITING & ITS FINISHING | 5d | 2026-05-13 | 2026-05-17 | 1123FS-6d |  | RGA -FINISHING | 7852952 |
| 1304 | 40100.40200.40500.55900.58700.59600.60700.326000.2623900 | PLASTER APPLICATION | 15d | 2026-06-18 | 2026-07-02 | 1615FS+4d |  | RGA -FINISHING | 7852962 |
| 1305 | 40100.40200.40500.55900.58700.59600.60700.326000.2624000 | CONCEALED PLUMBING | 9d | 2026-07-03 | 2026-07-11 | 1304 |  | RGA -FINISHING | 7852972 |
| 1306 | 40100.40200.40500.55900.58700.59600.60700.326000.2624100 | WATERPROOFING WORK FOR TOILETS, KITCHEN SUNK & PLANTERS | 12d | 2026-07-12 | 2026-07-23 | 1305 |  | RGA -FINISHING | 7852982 |
| 1307 | 40100.40200.40500.55900.58700.59600.60700.325900 | **21th FLOOR** | 74d | 2026-05-21 | 2026-08-02 |  | start no earlier than 2026-05-21 | RGA -FINISHING | 7807512 |
| 1308 | 40100.40200.40500.55900.58700.59600.60700.325900.2624200 | BALCONY RAILING FIXING | 9d | 2026-06-05 | 2026-06-13 | 1139FS-18.5d |  | RGA -FINISHING | 7852992 |
| 1309 | 40100.40200.40500.55900.58700.59600.60700.325900.2624300 | Block work | 2d | 2026-08-01 | 2026-08-02 | 1313 |  | RGA -FINISHING | 7853002 |
| 1310 | 40100.40200.40500.55900.58700.59600.60700.325900.2624400 | CONCEALED ELEC CONDUITING & ITS FINISHING | 5d | 2026-05-21 | 2026-05-25 | 1127FS-6d |  | RGA -FINISHING | 7853012 |
| 1311 | 40100.40200.40500.55900.58700.59600.60700.325900.2624500 | PLASTER APPLICATION | 15d | 2026-06-26 | 2026-07-10 | 1628FS+4d |  | RGA -FINISHING | 7853022 |
| 1312 | 40100.40200.40500.55900.58700.59600.60700.325900.2624600 | CONCEALED PLUMBING | 9d | 2026-07-11 | 2026-07-19 | 1311 |  | RGA -FINISHING | 7853032 |
| 1313 | 40100.40200.40500.55900.58700.59600.60700.325900.2624700 | WATERPROOFING WORK FOR TOILETS, KITCHEN SUNK & PLANTERS | 12d | 2026-07-20 | 2026-07-31 | 1312 |  | RGA -FINISHING | 7853042 |
| 1314 | 40100.40200.40500.55900.58700.59600.60700.325800 | **22th FLOOR** | 77d | 2026-05-29 | 2026-08-13 |  | start no earlier than 2026-05-29 | RGA -FINISHING | 7807522 |
| 1315 | 40100.40200.40500.55900.58700.59600.60700.325800.2624800 | BALCONY RAILING FIXING | 9d | 2026-06-16 | 2026-06-24 | 1143FS-23.5d |  | RGA -FINISHING | 7853052 |
| 1316 | 40100.40200.40500.55900.58700.59600.60700.325800.2624900 | Block work | 2d | 2026-08-12 | 2026-08-13 | 1320 |  | RGA -FINISHING | 7853062 |
| 1317 | 40100.40200.40500.55900.58700.59600.60700.325800.2625000 | CONCEALED ELEC CONDUITING & ITS FINISHING | 5d | 2026-05-29 | 2026-06-02 | 1131FS-6d |  | RGA -FINISHING | 7853072 |
| 1318 | 40100.40200.40500.55900.58700.59600.60700.325800.2625100 | PLASTER APPLICATION | 15d | 2026-07-07 | 2026-07-21 | 1641FS+4d |  | RGA -FINISHING | 7853082 |
| 1319 | 40100.40200.40500.55900.58700.59600.60700.325800.2625200 | CONCEALED PLUMBING | 9d | 2026-07-22 | 2026-07-30 | 1318 |  | RGA -FINISHING | 7853092 |
| 1320 | 40100.40200.40500.55900.58700.59600.60700.325800.2625300 | WATERPROOFING WORK FOR TOILETS, KITCHEN SUNK & PLANTERS | 12d | 2026-07-31 | 2026-08-11 | 1319 |  | RGA -FINISHING | 7853102 |

Notes:
- 1295: Last floor BW completion 2 months post Last RCC
- 1302: Last floor BW completion 2 months post Last RCC
- 1309: Last floor BW completion 2 months post Last RCC
- 1316: Last floor BW completion 2 months post Last RCC

| ID | WBS | Task | Duration | Start | Finish | Predecessors | Constraint | Calendar | Unique_Task_ID |
| --- | --- | --- | --- | --- | --- | --- | --- | --- | --- |
| 1321 | 40100.40200.40500.55900.58700.59600.60700.325700 | **23th FLOOR** | 119d | 2026-06-06 | 2026-10-02 |  | start no earlier than 2026-06-06 | RGA -FINISHING | 7807532 |
| 1322 | 40100.40200.40500.55900.58700.59600.60700.325700.2625400 | BALCONY RAILING FIXING | 9d | 2026-06-10 | 2026-06-18 | 1315FS-15d |  | RGA -FINISHING | 7853112 |
| 1323 | 40100.40200.40500.55900.58700.59600.60700.325700.2625500 | Block work | 2d | 2026-10-01 | 2026-10-02 | 1327 |  | RGA -FINISHING | 7853122 |
| 1324 | 40100.40200.40500.55900.58700.59600.60700.325700.2625600 | CONCEALED ELEC CONDUITING & ITS FINISHING | 5d | 2026-06-06 | 2026-06-10 | 1135FS-6d |  | RGA -FINISHING | 7853132 |
| 1325 | 40100.40200.40500.55900.58700.59600.60700.325700.2625700 | PLASTER APPLICATION | 15d | 2026-08-26 | 2026-09-09 | 1654FS+60d |  | RGA -FINISHING | 7853142 |
| 1326 | 40100.40200.40500.55900.58700.59600.60700.325700.2625800 | CONCEALED PLUMBING | 9d | 2026-09-10 | 2026-09-18 | 1325 |  | RGA -FINISHING | 7853152 |
| 1327 | 40100.40200.40500.55900.58700.59600.60700.325700.2625900 | WATERPROOFING WORK FOR TOILETS, KITCHEN SUNK & PLANTERS | 12d | 2026-09-19 | 2026-09-30 | 1326 |  | RGA -FINISHING | 7853162 |
| 1328 | 40100.40200.40500.55900.58700.59600.60700.325600 | **24th FLOOR** | 115d | 2026-06-04 | 2026-09-26 |  | start no earlier than 2026-06-04 | RGA -FINISHING | 7807542 |
| 1329 | 40100.40200.40500.55900.58700.59600.60700.325600.2626000 | BALCONY RAILING FIXING | 9d | 2026-06-04 | 2026-06-12 | 1322FS-15d |  | RGA -FINISHING | 7853172 |
| 1330 | 40100.40200.40500.55900.58700.59600.60700.325600.2626100 | Block work | 2d | 2026-09-25 | 2026-09-26 | 1334 |  | RGA -FINISHING | 7853182 |
| 1331 | 40100.40200.40500.55900.58700.59600.60700.325600.2626200 | CONCEALED ELEC CONDUITING & ITS FINISHING | 5d | 2026-06-14 | 2026-06-18 | 1139FS-9.5d |  | RGA -FINISHING | 7853192 |
| 1332 | 40100.40200.40500.55900.58700.59600.60700.325600.2626300 | PLASTER APPLICATION | 15d | 2026-08-20 | 2026-09-03 | 1667FS+60d |  | RGA -FINISHING | 7853202 |
| 1333 | 40100.40200.40500.55900.58700.59600.60700.325600.2626400 | CONCEALED PLUMBING | 9d | 2026-09-04 | 2026-09-12 | 1332 |  | RGA -FINISHING | 7853212 |
| 1334 | 40100.40200.40500.55900.58700.59600.60700.325600.2626500 | WATERPROOFING WORK FOR TOILETS, KITCHEN SUNK & PLANTERS | 12d | 2026-09-13 | 2026-09-24 | 1333 |  | RGA -FINISHING | 7853222 |
| 1335 | 40100.40200.40500.55900.58700.59600.60700.325500 | **25thFLOOR** | 121d | 2026-06-13 | 2026-10-11 |  | start no earlier than 2026-06-13 | RGA -FINISHING | 7807552 |
| 1336 | 40100.40200.40500.55900.58700.59600.60700.325500.2626600 | BALCONY RAILING FIXING | 9d | 2026-06-13 | 2026-06-21 | 1329 |  | RGA -FINISHING | 7853232 |
| 1337 | 40100.40200.40500.55900.58700.59600.60700.325500.2626700 | Block work | 8d | 2026-10-04 | 2026-10-11 | 1341 |  | RGA -FINISHING | 7853242 |
| 1338 | 40100.40200.40500.55900.58700.59600.60700.325500.2626800 | CONCEALED ELEC CONDUITING & ITS FINISHING | 5d | 2026-06-28 | 2026-07-02 | 1143FS-11.5d |  | RGA -FINISHING | 7853252 |
| 1339 | 40100.40200.40500.55900.58700.59600.60700.325500.2626900 | PLASTER APPLICATION | 15d | 2026-08-29 | 2026-09-12 | 1680FS+60d |  | RGA -FINISHING | 7853262 |
| 1340 | 40100.40200.40500.55900.58700.59600.60700.325500.2627000 | CONCEALED PLUMBING | 9d | 2026-09-13 | 2026-09-21 | 1339 |  | RGA -FINISHING | 7853272 |
| 1341 | 40100.40200.40500.55900.58700.59600.60700.325500.2627100 | WATERPROOFING WORK FOR TOILETS, KITCHEN SUNK & PLANTERS | 12d | 2026-09-22 | 2026-10-03 | 1340 |  | RGA -FINISHING | 7853282 |
| 1342 | 40100.40200.40500.55900.58700.59600.60700.369700 | **LMR (To be Deleted)** | 15d | 2025-04-01 | 2025-04-15 |  | start no earlier than 2025-04-01 | RGA -FINISHING | 7808832 |
| 1343 | 40100.40200.40500.55900.58700.59600.60700.369700.2627200 | Block work | 8d | 2025-04-01 | 2025-04-08 |  | start no earlier than 2025-04-01 | RGA -FINISHING | 7853412 |
| 1344 | 40100.40200.40500.55900.58700.59600.60700.369700.2627300 | CONCEALED ELEC CONDUITING & ITS FINISHING | 7d | 2025-04-01 | 2025-04-07 |  | start no earlier than 2025-04-01 | RGA -FINISHING | 7853422 |
| 1345 | 40100.40200.40500.55900.58700.59600.60700.369700.2627400 | PLASTER APPLICATION | 15d | 2025-04-01 | 2025-04-15 |  | start no earlier than 2025-04-01 | RGA -FINISHING | 7853432 |
| 1346 | 40100.40200.40500.55900.58700.59600.60700.369700.2627500 | DOOR FRAME FIXING | 3d | 2025-04-01 | 2025-04-03 |  | start no earlier than 2025-04-01 | RGA -FINISHING | 7853442 |

Notes:
- 1323: Last floor BW completion 2 months post Last RCC
- 1330: Last floor BW completion 2 months post Last RCC

| ID | WBS | Task | Duration | Start | Finish | Predecessors | Constraint | Calendar | Unique_Task_ID |
| --- | --- | --- | --- | --- | --- | --- | --- | --- | --- |
| 1347 | 40100.40200.40500.55900.58700.59600.505600 | **Terrace Finishing works** | 30d | 2027-03-16 | 2027-04-14 |  | start no earlier than 2027-03-16 | RGA -FINISHING | 7812282 |
| 1348 | 40100.40200.40500.55900.58700.59600.505600.2193200 | Terrace Waterproofing work | 30d | 2027-03-16 | 2027-04-14 | 1350FS+7d |  | RGA -FINISHING | 7832902 |
| 1349 | 40100.40200.40500.55900.58700.59600.505700 | **EXTERNAL Painting** | 165d | 2026-09-25 | 2027-03-08 |  | start no earlier than 2026-09-25 | RGA -FINISHING | 7812272 |
| 1350 | 40100.40200.40500.55900.58700.59600.505700.2193300 | 2nd coat | 165d | 2026-09-25 | 2027-03-08 | 1147FS+62d |  | RGA -FINISHING | 7832912 |
| 1351 | 40100.40200.40500.55900.58200 | **Flat internal finishing & services works** | 455d | 2025-11-16 | 2027-02-13 |  | start no earlier than 2025-11-16 | RGA -FINISHING | 7803422 |
| 1352 | 40100.40200.40500.55900.58200.147500 | **GROUND FLOOR** | 380d | 2025-11-16 | 2026-11-30 |  | start no earlier than 2025-11-16 | RGA -FINISHING | 7803952 |
| 1353 | 40100.40200.40500.55900.58200.147500.915800 | TOILET DADO TILE FIXING | 10d | 2026-01-09 | 2026-01-18 | 1162 |  | RGA -FINISHING | 7826532 |
| 1354 | 40100.40200.40500.55900.58200.147500.915900 | TOILET FLOORING WORK | 7d | 2026-01-19 | 2026-01-25 | 1353 |  | RGA -FINISHING | 7826542 |
| 1355 | 40100.40200.40500.55900.58200.147500.916000 | FIRE FIGHTING | 15d | 2025-11-16 | 2025-11-30 | 1161 |  | RGA -FINISHING | 7826552 |
| 1356 | 40100.40200.40500.55900.58200.147500.916100 | INTERNAL PAINTING - PUTTY / PRIMER APPLICATION | 15d | 2026-02-18 | 2026-03-04 | 1358 |  | RGA -FINISHING | 7826562 |
| 1357 | 40100.40200.40500.55900.58200.147500.916200 | FLAT FLOORING | 11d | 2026-01-26 | 2026-02-05 | 1354 |  | RGA -FINISHING | 7826572 |
| 1358 | 40100.40200.40500.55900.58200.147500.916300 | WINDOW FIXING | 12d | 2026-02-06 | 2026-02-17 | 1357 |  | RGA -FINISHING | 7826582 |
| 1359 | 40100.40200.40500.55900.58200.147500.916400 | INTERNAL PAINTING - 1ST COAT | 12d | 2026-03-05 | 2026-03-16 | 1356 |  | RGA -FINISHING | 7826592 |
| 1360 | 40100.40200.40500.55900.58200.147500.916500 | INTERNAL DOOR FIXING | 15d | 2026-03-17 | 2026-03-31 | 1359 |  | RGA -FINISHING | 7826602 |
| 1361 | 40100.40200.40500.55900.58200.147500.916600 | WIRING & SWITCH PLATE FIXING | 8d | 2026-04-01 | 2026-04-08 | 1360 |  | RGA -FINISHING | 7826612 |
| 1362 | 40100.40200.40500.55900.58200.147500.916700 | TOILET FALSE CEILING | 7d | 2026-04-09 | 2026-04-15 | 1361 |  | RGA -FINISHING | 7826622 |
| 1363 | 40100.40200.40500.55900.58200.147500.916800 | MAIN DOOR FRAME SHUTTER FIXING | 6d | 2026-11-17 | 2026-11-22 | 1695 |  | RGA -FINISHING | 7826632 |
| 1364 | 40100.40200.40500.55900.58200.147500.916900 | FINAL COAT PAINT | 8d | 2026-11-23 | 2026-11-30 | 1363 |  | RGA -FINISHING | 7826642 |
| 1365 | 40100.40200.40500.55900.58200.150700 | **1ST FLOOR** | 375d | 2025-12-01 | 2026-12-10 |  | start no earlier than 2025-12-01 | RGA -FINISHING | 7803962 |
| 1366 | 40100.40200.40500.55900.58200.150700.917000 | TOILET DADO TILE FIXING | 7d | 2026-01-20 | 2026-01-26 | 1169 |  | RGA -FINISHING | 7826652 |
| 1367 | 40100.40200.40500.55900.58200.150700.917100 | TOILET FLOORING WORK | 7d | 2026-01-20 | 2026-01-26 | 1366FF |  | RGA -FINISHING | 7826662 |
| 1368 | 40100.40200.40500.55900.58200.150700.917200 | FIRE FIGHTING | 6d | 2025-12-01 | 2025-12-06 | 1168 |  | RGA -FINISHING | 7826672 |
| 1369 | 40100.40200.40500.55900.58200.150700.917300 | INTERNAL PAINTING - PUTTY / PRIMER APPLICATION | 6d | 2026-02-13 | 2026-02-18 | 1371 |  | RGA -FINISHING | 7826682 |
| 1370 | 40100.40200.40500.55900.58200.150700.917400 | FLAT FLOORING | 5d | 2026-01-27 | 2026-01-31 | 1367 |  | RGA -FINISHING | 7826692 |
| 1371 | 40100.40200.40500.55900.58200.150700.917500 | WINDOW FIXING | 12d | 2026-02-01 | 2026-02-12 | 1370 |  | RGA -FINISHING | 7826702 |
| 1372 | 40100.40200.40500.55900.58200.150700.917600 | INTERNAL PAINTING - 1ST COAT | 12d | 2026-02-19 | 2026-03-02 | 1369 |  | RGA -FINISHING | 7826712 |
| 1373 | 40100.40200.40500.55900.58200.150700.917700 | INTERNAL DOOR FIXING | 15d | 2026-03-01 | 2026-03-15 | 1372FS-2d |  | RGA -FINISHING | 7826722 |
| 1374 | 40100.40200.40500.55900.58200.150700.917800 | WIRING & SWITCH PLATE FIXING | 8d | 2026-03-12 | 2026-03-19 | 1373FS-4d |  | RGA -FINISHING | 7826732 |
| 1375 | 40100.40200.40500.55900.58200.150700.917900 | TOILET FALSE CEILING | 7d | 2026-03-20 | 2026-03-26 | 1374 |  | RGA -FINISHING | 7826742 |
| 1376 | 40100.40200.40500.55900.58200.150700.918000 | MAIN DOOR FRAME SHUTTER FIXING | 6d | 2026-11-27 | 2026-12-02 | 1703 |  | RGA -FINISHING | 7826752 |
| 1377 | 40100.40200.40500.55900.58200.150700.918100 | FINAL COAT PAINT | 8d | 2026-12-03 | 2026-12-10 | 1376 |  | RGA -FINISHING | 7826762 |

Notes:
- 1349: Ext Plaster (in 2 phases) completion 3.5 months post last BW
- 1351: Completion in 12 months post last RCC

| ID | WBS | Task | Duration | Start | Finish | Predecessors | Constraint | Calendar | Unique_Task_ID |
| --- | --- | --- | --- | --- | --- | --- | --- | --- | --- |
| 1378 | 40100.40200.40500.55900.58200.141200 | **2ND FLOOR** | 366d | 2025-12-10 | 2026-12-10 |  | start no earlier than 2025-12-10 | RGA -FINISHING | 7803972 |
| 1379 | 40100.40200.40500.55900.58200.141200.918200 | TOILET DADO TILE FIXING | 7d | 2026-01-29 | 2026-02-04 | 1176 |  | RGA -FINISHING | 7826772 |
| 1380 | 40100.40200.40500.55900.58200.141200.918300 | TOILET FLOORING WORK | 7d | 2026-02-05 | 2026-02-11 | 1379 |  | RGA -FINISHING | 7826782 |
| 1381 | 40100.40200.40500.55900.58200.141200.918400 | FIRE FIGHTING | 6d | 2025-12-10 | 2025-12-15 | 1175 |  | RGA -FINISHING | 7826792 |
| 1382 | 40100.40200.40500.55900.58200.141200.918500 | INTERNAL PAINTING - PUTTY / PRIMER APPLICATION | 6d | 2026-03-01 | 2026-03-06 | 1384 |  | RGA -FINISHING | 7826802 |
| 1383 | 40100.40200.40500.55900.58200.141200.918600 | FLAT FLOORING | 5d | 2026-02-12 | 2026-02-16 | 1380 |  | RGA -FINISHING | 7826812 |
| 1384 | 40100.40200.40500.55900.58200.141200.918700 | WINDOW FIXING | 12d | 2026-02-17 | 2026-02-28 | 1383 |  | RGA -FINISHING | 7826822 |
| 1385 | 40100.40200.40500.55900.58200.141200.918800 | INTERNAL PAINTING - 1ST COAT | 12d | 2026-03-07 | 2026-03-18 | 1382 |  | RGA -FINISHING | 7826832 |
| 1386 | 40100.40200.40500.55900.58200.141200.918900 | INTERNAL DOOR FIXING | 15d | 2026-03-17 | 2026-03-31 | 1385FS-2d |  | RGA -FINISHING | 7826842 |
| 1387 | 40100.40200.40500.55900.58200.141200.919000 | WIRING & SWITCH PLATE FIXING | 8d | 2026-03-28 | 2026-04-04 | 1386FS-4d |  | RGA -FINISHING | 7826852 |
| 1388 | 40100.40200.40500.55900.58200.141200.919100 | TOILET FALSE CEILING | 7d | 2026-04-05 | 2026-04-11 | 1387 |  | RGA -FINISHING | 7826862 |
| 1389 | 40100.40200.40500.55900.58200.141200.919200 | MAIN DOOR FRAME SHUTTER FIXING | 6d | 2026-11-27 | 2026-12-02 | 1711 |  | RGA -FINISHING | 7826872 |
| 1390 | 40100.40200.40500.55900.58200.141200.919300 | FINAL COAT PAINT | 8d | 2026-12-03 | 2026-12-10 | 1389 |  | RGA -FINISHING | 7826882 |
| 1391 | 40100.40200.40500.55900.58200.141100 | **3RD FLOOR** | 352d | 2026-01-03 | 2026-12-20 |  | start no earlier than 2026-01-03 | RGA -FINISHING | 7803982 |
| 1392 | 40100.40200.40500.55900.58200.141100.919400 | TOILET DADO TILE FIXING | 7d | 2026-02-07 | 2026-02-13 | 1183 |  | RGA -FINISHING | 7826892 |
| 1393 | 40100.40200.40500.55900.58200.141100.919500 | TOILET FLOORING WORK | 7d | 2026-02-14 | 2026-02-20 | 1392 |  | RGA -FINISHING | 7826902 |
| 1394 | 40100.40200.40500.55900.58200.141100.919600 | FIRE FIGHTING | 6d | 2026-01-03 | 2026-01-08 | 1182 |  | RGA -FINISHING | 7826912 |
| 1395 | 40100.40200.40500.55900.58200.141100.919700 | INTERNAL PAINTING - PUTTY / PRIMER APPLICATION | 6d | 2026-03-05 | 2026-03-10 | 1397 |  | RGA -FINISHING | 7826922 |
| 1396 | 40100.40200.40500.55900.58200.141100.919800 | FLAT FLOORING | 5d | 2026-02-21 | 2026-02-25 | 1393 |  | RGA -FINISHING | 7826932 |
| 1397 | 40100.40200.40500.55900.58200.141100.919900 | WINDOW FIXING | 7d | 2026-02-26 | 2026-03-04 | 1396 |  | RGA -FINISHING | 7826942 |
| 1398 | 40100.40200.40500.55900.58200.141100.920000 | INTERNAL PAINTING - 1ST COAT | 7d | 2026-03-11 | 2026-03-17 | 1395 |  | RGA -FINISHING | 7826952 |
| 1399 | 40100.40200.40500.55900.58200.141100.920100 | INTERNAL DOOR FIXING | 15d | 2026-03-16 | 2026-03-30 | 1398FS-2d |  | RGA -FINISHING | 7826962 |
| 1400 | 40100.40200.40500.55900.58200.141100.920200 | WIRING & SWITCH PLATE FIXING | 8d | 2026-03-27 | 2026-04-03 | 1399FS-4d |  | RGA -FINISHING | 7826972 |
| 1401 | 40100.40200.40500.55900.58200.141100.920300 | TOILET FALSE CEILING | 7d | 2026-04-04 | 2026-04-10 | 1400 |  | RGA -FINISHING | 7826982 |
| 1402 | 40100.40200.40500.55900.58200.141100.920400 | MAIN DOOR FRAME SHUTTER FIXING | 6d | 2026-12-07 | 2026-12-12 | 1719 |  | RGA -FINISHING | 7826992 |
| 1403 | 40100.40200.40500.55900.58200.141100.920500 | FINAL COAT PAINT | 8d | 2026-12-13 | 2026-12-20 | 1402 |  | RGA -FINISHING | 7827002 |

| ID | WBS | Task | Duration | Start | Finish | Predecessors | Constraint | Calendar | Unique_Task_ID |
| --- | --- | --- | --- | --- | --- | --- | --- | --- | --- |
| 1404 | 40100.40200.40500.55900.58200.140700 | **4TH FLOOR** | 343d | 2026-01-12 | 2026-12-20 |  | start no earlier than 2026-01-12 | RGA -FINISHING | 7803992 |
| 1405 | 40100.40200.40500.55900.58200.140700.920600 | TOILET DADO TILE FIXING | 7d | 2026-02-15 | 2026-02-21 | 1190 |  | RGA -FINISHING | 7827012 |
| 1406 | 40100.40200.40500.55900.58200.140700.920700 | TOILET FLOORING WORK | 7d | 2026-02-22 | 2026-02-28 | 1405 |  | RGA -FINISHING | 7827022 |
| 1407 | 40100.40200.40500.55900.58200.140700.920800 | FIRE FIGHTING | 6d | 2026-01-12 | 2026-01-17 | 1189 |  | RGA -FINISHING | 7827032 |
| 1408 | 40100.40200.40500.55900.58200.140700.920900 | INTERNAL PAINTING - PUTTY / PRIMER APPLICATION | 6d | 2026-03-13 | 2026-03-18 | 1410 |  | RGA -FINISHING | 7827042 |
| 1409 | 40100.40200.40500.55900.58200.140700.921000 | FLAT FLOORING | 5d | 2026-03-01 | 2026-03-05 | 1406 |  | RGA -FINISHING | 7827052 |
| 1410 | 40100.40200.40500.55900.58200.140700.921100 | WINDOW FIXING | 7d | 2026-03-06 | 2026-03-12 | 1409 |  | RGA -FINISHING | 7827062 |
| 1411 | 40100.40200.40500.55900.58200.140700.921200 | INTERNAL PAINTING - 1ST COAT | 7d | 2026-03-19 | 2026-03-25 | 1408 |  | RGA -FINISHING | 7827072 |
| 1412 | 40100.40200.40500.55900.58200.140700.921300 | INTERNAL DOOR FIXING | 15d | 2026-03-24 | 2026-04-07 | 1411FS-2d |  | RGA -FINISHING | 7827082 |
| 1413 | 40100.40200.40500.55900.58200.140700.921400 | WIRING & SWITCH PLATE FIXING | 8d | 2026-04-04 | 2026-04-11 | 1412FS-4d |  | RGA -FINISHING | 7827092 |
| 1414 | 40100.40200.40500.55900.58200.140700.921500 | TOILET FALSE CEILING | 7d | 2026-04-12 | 2026-04-18 | 1413 |  | RGA -FINISHING | 7827102 |
| 1415 | 40100.40200.40500.55900.58200.140700.921600 | MAIN DOOR FRAME SHUTTER FIXING | 6d | 2026-12-07 | 2026-12-12 | 1727 |  | RGA -FINISHING | 7827112 |
| 1416 | 40100.40200.40500.55900.58200.140700.921700 | FINAL COAT PAINT | 8d | 2026-12-13 | 2026-12-20 | 1415 |  | RGA -FINISHING | 7827122 |
| 1417 | 40100.40200.40500.55900.58200.140600 | **5TH FLOOR** | 334d | 2026-01-21 | 2026-12-20 |  | start no earlier than 2026-01-21 | RGA -FINISHING | 7804002 |
| 1418 | 40100.40200.40500.55900.58200.140600.921800 | TOILET DADO TILE FIXING | 7d | 2026-02-20 | 2026-02-26 | 1197 |  | RGA -FINISHING | 7827132 |
| 1419 | 40100.40200.40500.55900.58200.140600.921900 | TOILET FLOORING WORK | 7d | 2026-02-27 | 2026-03-05 | 1418 |  | RGA -FINISHING | 7827142 |
| 1420 | 40100.40200.40500.55900.58200.140600.922000 | FIRE FIGHTING | 6d | 2026-01-21 | 2026-01-26 | 1196 |  | RGA -FINISHING | 7827152 |
| 1421 | 40100.40200.40500.55900.58200.140600.922100 | INTERNAL PAINTING - PUTTY / PRIMER APPLICATION | 6d | 2026-03-18 | 2026-03-23 | 1423 |  | RGA -FINISHING | 7827162 |
| 1422 | 40100.40200.40500.55900.58200.140600.922200 | FLAT FLOORING | 5d | 2026-03-06 | 2026-03-10 | 1419 |  | RGA -FINISHING | 7827172 |
| 1423 | 40100.40200.40500.55900.58200.140600.922300 | WINDOW FIXING | 7d | 2026-03-11 | 2026-03-17 | 1422 |  | RGA -FINISHING | 7827182 |
| 1424 | 40100.40200.40500.55900.58200.140600.922400 | INTERNAL PAINTING - 1ST COAT | 7d | 2026-03-24 | 2026-03-30 | 1421 |  | RGA -FINISHING | 7827192 |
| 1425 | 40100.40200.40500.55900.58200.140600.922500 | INTERNAL DOOR FIXING | 15d | 2026-03-29 | 2026-04-12 | 1424FS-2d |  | RGA -FINISHING | 7827202 |
| 1426 | 40100.40200.40500.55900.58200.140600.922600 | WIRING & SWITCH PLATE FIXING | 8d | 2026-04-09 | 2026-04-16 | 1425FS-4d |  | RGA -FINISHING | 7827212 |
| 1427 | 40100.40200.40500.55900.58200.140600.922700 | TOILET FALSE CEILING | 7d | 2026-04-17 | 2026-04-23 | 1426 |  | RGA -FINISHING | 7827222 |
| 1428 | 40100.40200.40500.55900.58200.140600.922800 | MAIN DOOR FRAME SHUTTER FIXING | 6d | 2026-12-07 | 2026-12-12 | 1735 |  | RGA -FINISHING | 7827232 |
| 1429 | 40100.40200.40500.55900.58200.140600.922900 | FINAL COAT PAINT | 8d | 2026-12-13 | 2026-12-20 | 1428 |  | RGA -FINISHING | 7827242 |

| ID | WBS | Task | Duration | Start | Finish | Predecessors | Constraint | Calendar | Unique_Task_ID |
| --- | --- | --- | --- | --- | --- | --- | --- | --- | --- |
| 1430 | 40100.40200.40500.55900.58200.139900 | **6TH FLOOR** | 325d | 2026-01-30 | 2026-12-20 |  | start no earlier than 2026-01-30 | RGA -FINISHING | 7804012 |
| 1431 | 40100.40200.40500.55900.58200.139900.923000 | TOILET DADO TILE FIXING | 7d | 2026-03-01 | 2026-03-07 | 1204 |  | RGA -FINISHING | 7827252 |
| 1432 | 40100.40200.40500.55900.58200.139900.923100 | TOILET FLOORING WORK | 7d | 2026-03-01 | 2026-03-07 | 1431FF |  | RGA -FINISHING | 7827262 |
| 1433 | 40100.40200.40500.55900.58200.139900.923200 | FIRE FIGHTING | 6d | 2026-01-30 | 2026-02-04 | 1203 |  | RGA -FINISHING | 7827272 |
| 1434 | 40100.40200.40500.55900.58200.139900.923300 | INTERNAL PAINTING - PUTTY / PRIMER APPLICATION | 6d | 2026-03-25 | 2026-03-30 | 1436 |  | RGA -FINISHING | 7827282 |
| 1435 | 40100.40200.40500.55900.58200.139900.923400 | FLAT FLOORING | 5d | 2026-03-08 | 2026-03-12 | 1432 |  | RGA -FINISHING | 7827292 |
| 1436 | 40100.40200.40500.55900.58200.139900.923500 | WINDOW FIXING | 12d | 2026-03-13 | 2026-03-24 | 1435 |  | RGA -FINISHING | 7827302 |
| 1437 | 40100.40200.40500.55900.58200.139900.923600 | INTERNAL PAINTING - 1ST COAT | 12d | 2026-03-31 | 2026-04-11 | 1434 |  | RGA -FINISHING | 7827312 |
| 1438 | 40100.40200.40500.55900.58200.139900.923700 | INTERNAL DOOR FIXING | 15d | 2026-04-10 | 2026-04-24 | 1437FS-2d |  | RGA -FINISHING | 7827322 |
| 1439 | 40100.40200.40500.55900.58200.139900.923800 | WIRING & SWITCH PLATE FIXING | 8d | 2026-04-21 | 2026-04-28 | 1438FS-4d |  | RGA -FINISHING | 7827332 |
| 1440 | 40100.40200.40500.55900.58200.139900.923900 | TOILET FALSE CEILING | 7d | 2026-04-29 | 2026-05-05 | 1439 |  | RGA -FINISHING | 7827342 |
| 1441 | 40100.40200.40500.55900.58200.139900.924000 | MAIN DOOR FRAME SHUTTER FIXING | 6d | 2026-12-07 | 2026-12-12 | 1743 |  | RGA -FINISHING | 7827352 |
| 1442 | 40100.40200.40500.55900.58200.139900.924100 | FINAL COAT PAINT | 8d | 2026-12-13 | 2026-12-20 | 1441 |  | RGA -FINISHING | 7827362 |
| 1443 | 40100.40200.40500.55900.58200.138800 | **7TH FLOOR** | 325d | 2026-02-09 | 2026-12-30 |  | start no earlier than 2026-02-09 | RGA -FINISHING | 7804022 |
| 1444 | 40100.40200.40500.55900.58200.138800.924200 | TOILET DADO TILE FIXING | 7d | 2026-03-11 | 2026-03-17 | 1211 |  | RGA -FINISHING | 7827372 |
| 1445 | 40100.40200.40500.55900.58200.138800.924300 | TOILET FLOORING WORK | 7d | 2026-03-18 | 2026-03-24 | 1444 |  | RGA -FINISHING | 7827382 |
| 1446 | 40100.40200.40500.55900.58200.138800.924400 | FIRE FIGHTING | 6d | 2026-02-09 | 2026-02-14 | 1210 |  | RGA -FINISHING | 7827392 |
| 1447 | 40100.40200.40500.55900.58200.138800.924500 | INTERNAL PAINTING - PUTTY / PRIMER APPLICATION | 6d | 2026-04-11 | 2026-04-16 | 1449 |  | RGA -FINISHING | 7827402 |
| 1448 | 40100.40200.40500.55900.58200.138800.924600 | FLAT FLOORING | 5d | 2026-03-25 | 2026-03-29 | 1445 |  | RGA -FINISHING | 7827412 |
| 1449 | 40100.40200.40500.55900.58200.138800.924700 | WINDOW FIXING | 12d | 2026-03-30 | 2026-04-10 | 1448 |  | RGA -FINISHING | 7827422 |
| 1450 | 40100.40200.40500.55900.58200.138800.924800 | INTERNAL PAINTING - 1ST COAT | 5d | 2026-04-17 | 2026-04-21 | 1447 |  | RGA -FINISHING | 7827432 |
| 1451 | 40100.40200.40500.55900.58200.138800.924900 | INTERNAL DOOR FIXING | 15d | 2026-04-20 | 2026-05-04 | 1450FS-2d |  | RGA -FINISHING | 7827442 |
| 1452 | 40100.40200.40500.55900.58200.138800.925000 | WIRING & SWITCH PLATE FIXING | 8d | 2026-05-01 | 2026-05-08 | 1451FS-4d |  | RGA -FINISHING | 7827452 |
| 1453 | 40100.40200.40500.55900.58200.138800.925100 | TOILET FALSE CEILING | 7d | 2026-05-09 | 2026-05-15 | 1452 |  | RGA -FINISHING | 7827462 |
| 1454 | 40100.40200.40500.55900.58200.138800.925200 | MAIN DOOR FRAME SHUTTER FIXING | 6d | 2026-12-17 | 2026-12-22 | 1751 |  | RGA -FINISHING | 7827472 |
| 1455 | 40100.40200.40500.55900.58200.138800.925300 | FINAL COAT PAINT | 8d | 2026-12-23 | 2026-12-30 | 1454 |  | RGA -FINISHING | 7827482 |

| ID | WBS | Task | Duration | Start | Finish | Predecessors | Constraint | Calendar | Unique_Task_ID |
| --- | --- | --- | --- | --- | --- | --- | --- | --- | --- |
| 1456 | 40100.40200.40500.55900.58200.138300 | **8TH FLOOR** | 316d | 2026-02-18 | 2026-12-30 |  | start no earlier than 2026-02-18 | RGA -FINISHING | 7804032 |
| 1457 | 40100.40200.40500.55900.58200.138300.925400 | TOILET DADO TILE FIXING | 7d | 2026-03-20 | 2026-03-26 | 1218 |  | RGA -FINISHING | 7827492 |
| 1458 | 40100.40200.40500.55900.58200.138300.925500 | TOILET FLOORING WORK | 7d | 2026-03-27 | 2026-04-02 | 1457 |  | RGA -FINISHING | 7827502 |
| 1459 | 40100.40200.40500.55900.58200.138300.925600 | FIRE FIGHTING | 6d | 2026-02-18 | 2026-02-23 | 1217 |  | RGA -FINISHING | 7827512 |
| 1460 | 40100.40200.40500.55900.58200.138300.925700 | INTERNAL PAINTING - PUTTY / PRIMER APPLICATION | 6d | 2026-04-20 | 2026-04-25 | 1462 |  | RGA -FINISHING | 7827522 |
| 1461 | 40100.40200.40500.55900.58200.138300.925800 | FLAT FLOORING | 5d | 2026-04-03 | 2026-04-07 | 1458 |  | RGA -FINISHING | 7827532 |
| 1462 | 40100.40200.40500.55900.58200.138300.925900 | WINDOW FIXING | 12d | 2026-04-08 | 2026-04-19 | 1461 |  | RGA -FINISHING | 7827542 |
| 1463 | 40100.40200.40500.55900.58200.138300.926000 | INTERNAL PAINTING - 1ST COAT | 10d | 2026-04-26 | 2026-05-05 | 1460 |  | RGA -FINISHING | 7827552 |
| 1464 | 40100.40200.40500.55900.58200.138300.926100 | INTERNAL DOOR FIXING | 15d | 2026-05-04 | 2026-05-18 | 1463FS-2d |  | RGA -FINISHING | 7827562 |
| 1465 | 40100.40200.40500.55900.58200.138300.926200 | WIRING & SWITCH PLATE FIXING | 8d | 2026-05-15 | 2026-05-22 | 1464FS-4d |  | RGA -FINISHING | 7827572 |
| 1466 | 40100.40200.40500.55900.58200.138300.926300 | TOILET FALSE CEILING | 7d | 2026-05-23 | 2026-05-29 | 1465 |  | RGA -FINISHING | 7827582 |
| 1467 | 40100.40200.40500.55900.58200.138300.926400 | MAIN DOOR FRAME SHUTTER FIXING | 6d | 2026-12-17 | 2026-12-22 | 1759 |  | RGA -FINISHING | 7827592 |
| 1468 | 40100.40200.40500.55900.58200.138300.926500 | FINAL COAT PAINT | 8d | 2026-12-23 | 2026-12-30 | 1467 |  | RGA -FINISHING | 7827602 |
| 1469 | 40100.40200.40500.55900.58200.137400 | **9TH FLOOR** | 311d | 2026-02-27 | 2027-01-03 |  | start no earlier than 2026-02-27 | RGA -FINISHING | 7804042 |
| 1470 | 40100.40200.40500.55900.58200.137400.926600 | TOILET DADO TILE FIXING | 7d | 2026-03-29 | 2026-04-04 | 1225 |  | RGA -FINISHING | 7827612 |
| 1471 | 40100.40200.40500.55900.58200.137400.926700 | TOILET FLOORING WORK | 7d | 2026-04-05 | 2026-04-11 | 1470 |  | RGA -FINISHING | 7827622 |
| 1472 | 40100.40200.40500.55900.58200.137400.926800 | FIRE FIGHTING | 6d | 2026-02-27 | 2026-03-04 | 1224 |  | RGA -FINISHING | 7827632 |
| 1473 | 40100.40200.40500.55900.58200.137400.926900 | INTERNAL PAINTING - PUTTY / PRIMER APPLICATION | 6d | 2026-04-29 | 2026-05-04 | 1475 |  | RGA -FINISHING | 7827642 |
| 1474 | 40100.40200.40500.55900.58200.137400.927000 | FLAT FLOORING | 5d | 2026-04-12 | 2026-04-16 | 1471 |  | RGA -FINISHING | 7827652 |
| 1475 | 40100.40200.40500.55900.58200.137400.927100 | WINDOW FIXING | 12d | 2026-04-17 | 2026-04-28 | 1474 |  | RGA -FINISHING | 7827662 |
| 1476 | 40100.40200.40500.55900.58200.137400.927200 | INTERNAL PAINTING - 1ST COAT | 2d | 2026-05-05 | 2026-05-06 | 1473 |  | RGA -FINISHING | 7827672 |
| 1477 | 40100.40200.40500.55900.58200.137400.927300 | INTERNAL DOOR FIXING | 15d | 2026-05-05 | 2026-05-19 | 1476FS-2d |  | RGA -FINISHING | 7827682 |
| 1478 | 40100.40200.40500.55900.58200.137400.927400 | WIRING & SWITCH PLATE FIXING | 8d | 2026-05-16 | 2026-05-23 | 1477FS-4d |  | RGA -FINISHING | 7827692 |
| 1479 | 40100.40200.40500.55900.58200.137400.927500 | TOILET FALSE CEILING | 7d | 2026-05-24 | 2026-05-30 | 1478 |  | RGA -FINISHING | 7827702 |
| 1480 | 40100.40200.40500.55900.58200.137400.927600 | MAIN DOOR FRAME SHUTTER FIXING | 6d | 2026-12-17 | 2026-12-22 | 1767 |  | RGA -FINISHING | 7827712 |
| 1481 | 40100.40200.40500.55900.58200.137400.927700 | FINAL COAT PAINT | 8d | 2026-12-27 | 2027-01-03 | 1480FS+4d |  | RGA -FINISHING | 7827722 |

| ID | WBS | Task | Duration | Start | Finish | Predecessors | Constraint | Calendar | Unique_Task_ID |
| --- | --- | --- | --- | --- | --- | --- | --- | --- | --- |
| 1482 | 40100.40200.40500.55900.58200.137000 | **10TH FLOOR** | 298d | 2026-03-08 | 2026-12-30 |  | start no earlier than 2026-03-08 | RGA -FINISHING | 7804052 |
| 1483 | 40100.40200.40500.55900.58200.137000.927800 | TOILET DADO TILE FIXING | 7d | 2026-04-07 | 2026-04-13 | 1232 |  | RGA -FINISHING | 7827732 |
| 1484 | 40100.40200.40500.55900.58200.137000.927900 | TOILET FLOORING WORK | 7d | 2026-04-14 | 2026-04-20 | 1483 |  | RGA -FINISHING | 7827742 |
| 1485 | 40100.40200.40500.55900.58200.137000.928000 | FIRE FIGHTING | 6d | 2026-03-08 | 2026-03-13 | 1231 |  | RGA -FINISHING | 7827752 |
| 1486 | 40100.40200.40500.55900.58200.137000.928100 | INTERNAL PAINTING - PUTTY / PRIMER APPLICATION | 6d | 2026-05-08 | 2026-05-13 | 1488 |  | RGA -FINISHING | 7827762 |
| 1487 | 40100.40200.40500.55900.58200.137000.928200 | FLAT FLOORING | 5d | 2026-04-21 | 2026-04-25 | 1484 |  | RGA -FINISHING | 7827772 |
| 1488 | 40100.40200.40500.55900.58200.137000.928300 | WINDOW FIXING | 12d | 2026-04-26 | 2026-05-07 | 1487 |  | RGA -FINISHING | 7827782 |
| 1489 | 40100.40200.40500.55900.58200.137000.928400 | INTERNAL PAINTING - 1ST COAT | 12d | 2026-05-14 | 2026-05-25 | 1486 |  | RGA -FINISHING | 7827792 |
| 1490 | 40100.40200.40500.55900.58200.137000.928500 | INTERNAL DOOR FIXING | 15d | 2026-05-24 | 2026-06-07 | 1489FS-2d |  | RGA -FINISHING | 7827802 |
| 1491 | 40100.40200.40500.55900.58200.137000.928600 | WIRING & SWITCH PLATE FIXING | 8d | 2026-06-04 | 2026-06-11 | 1490FS-4d |  | RGA -FINISHING | 7827812 |
| 1492 | 40100.40200.40500.55900.58200.137000.928700 | TOILET FALSE CEILING | 7d | 2026-06-12 | 2026-06-18 | 1491 |  | RGA -FINISHING | 7827822 |
| 1493 | 40100.40200.40500.55900.58200.137000.928800 | MAIN DOOR FRAME SHUTTER FIXING | 6d | 2026-12-17 | 2026-12-22 | 1775 |  | RGA -FINISHING | 7827832 |
| 1494 | 40100.40200.40500.55900.58200.137000.928900 | FINAL COAT PAINT | 8d | 2026-12-23 | 2026-12-30 | 1493 |  | RGA -FINISHING | 7827842 |
| 1495 | 40100.40200.40500.55900.58200.136800 | **11TH FLOOR** | 289d | 2026-03-17 | 2026-12-30 |  | start no earlier than 2026-03-17 | RGA -FINISHING | 7804062 |
| 1496 | 40100.40200.40500.55900.58200.136800.929000 | TOILET DADO TILE FIXING | 7d | 2026-04-20 | 2026-04-26 | 1239 |  | RGA -FINISHING | 7827852 |
| 1497 | 40100.40200.40500.55900.58200.136800.929100 | TOILET FLOORING WORK | 7d | 2026-04-27 | 2026-05-03 | 1496 |  | RGA -FINISHING | 7827862 |
| 1498 | 40100.40200.40500.55900.58200.136800.929200 | FIRE FIGHTING | 6d | 2026-03-17 | 2026-03-22 | 1238 |  | RGA -FINISHING | 7827872 |
| 1499 | 40100.40200.40500.55900.58200.136800.929300 | INTERNAL PAINTING - PUTTY / PRIMER APPLICATION | 6d | 2026-05-21 | 2026-05-26 | 1501 |  | RGA -FINISHING | 7827882 |
| 1500 | 40100.40200.40500.55900.58200.136800.929400 | FLAT FLOORING | 5d | 2026-05-04 | 2026-05-08 | 1497 |  | RGA -FINISHING | 7827892 |
| 1501 | 40100.40200.40500.55900.58200.136800.929500 | WINDOW FIXING | 12d | 2026-05-09 | 2026-05-20 | 1500 |  | RGA -FINISHING | 7827902 |
| 1502 | 40100.40200.40500.55900.58200.136800.929600 | INTERNAL PAINTING - 1ST COAT | 12d | 2026-05-27 | 2026-06-07 | 1499 |  | RGA -FINISHING | 7827912 |
| 1503 | 40100.40200.40500.55900.58200.136800.929700 | INTERNAL DOOR FIXING | 15d | 2026-06-06 | 2026-06-20 | 1502FS-2d |  | RGA -FINISHING | 7827922 |
| 1504 | 40100.40200.40500.55900.58200.136800.929800 | WIRING & SWITCH PLATE FIXING | 8d | 2026-06-17 | 2026-06-24 | 1503FS-4d |  | RGA -FINISHING | 7827932 |
| 1505 | 40100.40200.40500.55900.58200.136800.929900 | TOILET FALSE CEILING | 7d | 2026-06-25 | 2026-07-01 | 1504 |  | RGA -FINISHING | 7827942 |
| 1506 | 40100.40200.40500.55900.58200.136800.930000 | MAIN DOOR FRAME SHUTTER FIXING | 6d | 2026-12-17 | 2026-12-22 | 1783 |  | RGA -FINISHING | 7827952 |
| 1507 | 40100.40200.40500.55900.58200.136800.930100 | FINAL COAT PAINT | 8d | 2026-12-23 | 2026-12-30 | 1506 |  | RGA -FINISHING | 7827962 |

| ID | WBS | Task | Duration | Start | Finish | Predecessors | Constraint | Calendar | Unique_Task_ID |
| --- | --- | --- | --- | --- | --- | --- | --- | --- | --- |
| 1508 | 40100.40200.40500.55900.58200.135800 | **12TH FLOOR** | 290d | 2026-03-26 | 2027-01-09 |  | start no earlier than 2026-03-26 | RGA -FINISHING | 7804072 |
| 1509 | 40100.40200.40500.55900.58200.135800.930200 | TOILET DADO TILE FIXING | 7d | 2026-04-21 | 2026-04-27 | 1246 |  | RGA -FINISHING | 7827972 |
| 1510 | 40100.40200.40500.55900.58200.135800.930300 | TOILET FLOORING WORK | 7d | 2026-04-21 | 2026-04-27 | 1509FF |  | RGA -FINISHING | 7827982 |
| 1511 | 40100.40200.40500.55900.58200.135800.930400 | FIRE FIGHTING | 6d | 2026-03-26 | 2026-03-31 | 1245 |  | RGA -FINISHING | 7827992 |
| 1512 | 40100.40200.40500.55900.58200.135800.930500 | INTERNAL PAINTING - PUTTY / PRIMER APPLICATION | 6d | 2026-05-15 | 2026-05-20 | 1514 |  | RGA -FINISHING | 7828002 |
| 1513 | 40100.40200.40500.55900.58200.135800.930600 | FLAT FLOORING | 5d | 2026-04-28 | 2026-05-02 | 1510 |  | RGA -FINISHING | 7828012 |
| 1514 | 40100.40200.40500.55900.58200.135800.930700 | WINDOW FIXING | 12d | 2026-05-03 | 2026-05-14 | 1513 |  | RGA -FINISHING | 7828022 |
| 1515 | 40100.40200.40500.55900.58200.135800.930800 | INTERNAL PAINTING - 1ST COAT | 12d | 2026-05-21 | 2026-06-01 | 1512 |  | RGA -FINISHING | 7828032 |
| 1516 | 40100.40200.40500.55900.58200.135800.930900 | INTERNAL DOOR FIXING | 15d | 2026-05-31 | 2026-06-14 | 1515FS-2d |  | RGA -FINISHING | 7828042 |
| 1517 | 40100.40200.40500.55900.58200.135800.931000 | WIRING & SWITCH PLATE FIXING | 8d | 2026-06-11 | 2026-06-18 | 1516FS-4d |  | RGA -FINISHING | 7828052 |
| 1518 | 40100.40200.40500.55900.58200.135800.931100 | TOILET FALSE CEILING | 7d | 2026-06-19 | 2026-06-25 | 1517 |  | RGA -FINISHING | 7828062 |
| 1519 | 40100.40200.40500.55900.58200.135800.931200 | MAIN DOOR FRAME SHUTTER FIXING | 6d | 2026-12-27 | 2027-01-01 | 1791 |  | RGA -FINISHING | 7828072 |
| 1520 | 40100.40200.40500.55900.58200.135800.931300 | FINAL COAT PAINT | 8d | 2027-01-02 | 2027-01-09 | 1519 |  | RGA -FINISHING | 7828082 |
| 1521 | 40100.40200.40500.55900.58200.133700 | **13TH FLOOR** | 281d | 2026-04-04 | 2027-01-09 |  | start no earlier than 2026-04-04 | RGA -FINISHING | 7804082 |
| 1522 | 40100.40200.40500.55900.58200.133700.931400 | TOILET DADO TILE FIXING | 10d | 2026-05-24 | 2026-06-02 | 1253 |  | RGA -FINISHING | 7828092 |
| 1523 | 40100.40200.40500.55900.58200.133700.931500 | TOILET FLOORING WORK | 7d | 2026-06-03 | 2026-06-09 | 1522 |  | RGA -FINISHING | 7828102 |
| 1524 | 40100.40200.40500.55900.58200.133700.931600 | FIRE FIGHTING | 8d | 2026-04-04 | 2026-04-11 | 1252 |  | RGA -FINISHING | 7828112 |
| 1525 | 40100.40200.40500.55900.58200.133700.931700 | INTERNAL PAINTING - PUTTY / PRIMER APPLICATION | 5d | 2026-06-22 | 2026-06-26 | 1527 |  | RGA -FINISHING | 7828122 |
| 1526 | 40100.40200.40500.55900.58200.133700.931800 | FLAT FLOORING | 7d | 2026-06-10 | 2026-06-16 | 1523 |  | RGA -FINISHING | 7828132 |
| 1527 | 40100.40200.40500.55900.58200.133700.931900 | WINDOW FIXING | 5d | 2026-06-17 | 2026-06-21 | 1526 |  | RGA -FINISHING | 7828142 |
| 1528 | 40100.40200.40500.55900.58200.133700.932000 | INTERNAL PAINTING - 1ST COAT | 4d | 2026-06-27 | 2026-06-30 | 1525 |  | RGA -FINISHING | 7828152 |
| 1529 | 40100.40200.40500.55900.58200.133700.932100 | INTERNAL DOOR FIXING | 15d | 2026-06-29 | 2026-07-13 | 1528FS-2d |  | RGA -FINISHING | 7828162 |
| 1530 | 40100.40200.40500.55900.58200.133700.932200 | WIRING & SWITCH PLATE FIXING | 8d | 2026-07-10 | 2026-07-17 | 1529FS-4d |  | RGA -FINISHING | 7828172 |
| 1531 | 40100.40200.40500.55900.58200.133700.932300 | TOILET FALSE CEILING | 7d | 2026-07-18 | 2026-07-24 | 1530 |  | RGA -FINISHING | 7828182 |
| 1532 | 40100.40200.40500.55900.58200.133700.932400 | MAIN DOOR FRAME SHUTTER FIXING | 6d | 2026-12-27 | 2027-01-01 | 1799 |  | RGA -FINISHING | 7828192 |
| 1533 | 40100.40200.40500.55900.58200.133700.932500 | FINAL COAT PAINT | 8d | 2027-01-02 | 2027-01-09 | 1532 |  | RGA -FINISHING | 7828202 |

| ID | WBS | Task | Duration | Start | Finish | Predecessors | Constraint | Calendar | Unique_Task_ID |
| --- | --- | --- | --- | --- | --- | --- | --- | --- | --- |
| 1534 | 40100.40200.40500.55900.58200.132900 | **14TH FLOOR** | 272d | 2026-04-13 | 2027-01-09 |  | start no earlier than 2026-04-13 | RGA -FINISHING | 7804092 |
| 1535 | 40100.40200.40500.55900.58200.132900.932600 | TOILET DADO TILE FIXING | 10d | 2026-06-02 | 2026-06-11 | 1260 |  | RGA -FINISHING | 7828212 |
| 1536 | 40100.40200.40500.55900.58200.132900.932700 | TOILET FLOORING WORK | 7d | 2026-06-12 | 2026-06-18 | 1535 |  | RGA -FINISHING | 7828222 |
| 1537 | 40100.40200.40500.55900.58200.132900.932800 | FIRE FIGHTING | 8d | 2026-04-13 | 2026-04-20 | 1259 |  | RGA -FINISHING | 7828232 |
| 1538 | 40100.40200.40500.55900.58200.132900.932900 | INTERNAL PAINTING - PUTTY / PRIMER APPLICATION | 5d | 2026-07-01 | 2026-07-05 | 1540 |  | RGA -FINISHING | 7828242 |
| 1539 | 40100.40200.40500.55900.58200.132900.933000 | FLAT FLOORING | 7d | 2026-06-19 | 2026-06-25 | 1536 |  | RGA -FINISHING | 7828252 |
| 1540 | 40100.40200.40500.55900.58200.132900.933100 | WINDOW FIXING | 5d | 2026-06-26 | 2026-06-30 | 1539 |  | RGA -FINISHING | 7828262 |
| 1541 | 40100.40200.40500.55900.58200.132900.933200 | INTERNAL PAINTING - 1ST COAT | 4d | 2026-07-06 | 2026-07-09 | 1538 |  | RGA -FINISHING | 7828272 |
| 1542 | 40100.40200.40500.55900.58200.132900.933300 | INTERNAL DOOR FIXING | 15d | 2026-07-08 | 2026-07-22 | 1541FS-2d |  | RGA -FINISHING | 7828282 |
| 1543 | 40100.40200.40500.55900.58200.132900.933400 | WIRING & SWITCH PLATE FIXING | 8d | 2026-07-19 | 2026-07-26 | 1542FS-4d |  | RGA -FINISHING | 7828292 |
| 1544 | 40100.40200.40500.55900.58200.132900.933500 | TOILET FALSE CEILING | 7d | 2026-07-27 | 2026-08-02 | 1543 |  | RGA -FINISHING | 7828302 |
| 1545 | 40100.40200.40500.55900.58200.132900.933600 | MAIN DOOR FRAME SHUTTER FIXING | 6d | 2026-12-27 | 2027-01-01 | 1807 |  | RGA -FINISHING | 7828312 |
| 1546 | 40100.40200.40500.55900.58200.132900.933700 | FINAL COAT PAINT | 8d | 2027-01-02 | 2027-01-09 | 1545 |  | RGA -FINISHING | 7828322 |
| 1547 | 40100.40200.40500.55900.58200.132200 | **15TH FLOOR** | 263d | 2026-04-22 | 2027-01-09 |  | start no earlier than 2026-04-22 | RGA -FINISHING | 7804112 |
| 1548 | 40100.40200.40500.55900.58200.132200.933800 | TOILET DADO TILE FIXING | 10d | 2026-06-11 | 2026-06-20 | 1267 |  | RGA -FINISHING | 7828332 |
| 1549 | 40100.40200.40500.55900.58200.132200.933900 | TOILET FLOORING WORK | 7d | 2026-06-21 | 2026-06-27 | 1548 |  | RGA -FINISHING | 7828342 |
| 1550 | 40100.40200.40500.55900.58200.132200.934000 | FIRE FIGHTING | 8d | 2026-04-22 | 2026-04-29 | 1266 |  | RGA -FINISHING | 7828352 |
| 1551 | 40100.40200.40500.55900.58200.132200.934100 | INTERNAL PAINTING - PUTTY / PRIMER APPLICATION | 5d | 2026-07-10 | 2026-07-14 | 1553 |  | RGA -FINISHING | 7828362 |
| 1552 | 40100.40200.40500.55900.58200.132200.934200 | FLAT FLOORING | 7d | 2026-06-28 | 2026-07-04 | 1549 |  | RGA -FINISHING | 7828372 |
| 1553 | 40100.40200.40500.55900.58200.132200.934300 | WINDOW FIXING | 5d | 2026-07-05 | 2026-07-09 | 1552 |  | RGA -FINISHING | 7828382 |
| 1554 | 40100.40200.40500.55900.58200.132200.934400 | INTERNAL PAINTING - 1ST COAT | 4d | 2026-07-15 | 2026-07-18 | 1551 |  | RGA -FINISHING | 7828392 |
| 1555 | 40100.40200.40500.55900.58200.132200.934500 | INTERNAL DOOR FIXING | 15d | 2026-07-17 | 2026-07-31 | 1554FS-2d |  | RGA -FINISHING | 7828402 |
| 1556 | 40100.40200.40500.55900.58200.132200.934600 | WIRING & SWITCH PLATE FIXING | 8d | 2026-07-28 | 2026-08-04 | 1555FS-4d |  | RGA -FINISHING | 7828412 |
| 1557 | 40100.40200.40500.55900.58200.132200.934700 | TOILET FALSE CEILING | 7d | 2026-08-05 | 2026-08-11 | 1556 |  | RGA -FINISHING | 7828422 |
| 1558 | 40100.40200.40500.55900.58200.132200.934800 | MAIN DOOR FRAME SHUTTER FIXING | 6d | 2026-12-27 | 2027-01-01 | 1815 |  | RGA -FINISHING | 7828432 |
| 1559 | 40100.40200.40500.55900.58200.132200.934900 | FINAL COAT PAINT | 8d | 2027-01-02 | 2027-01-09 | 1558 |  | RGA -FINISHING | 7828442 |

| ID | WBS | Task | Duration | Start | Finish | Predecessors | Constraint | Calendar | Unique_Task_ID |
| --- | --- | --- | --- | --- | --- | --- | --- | --- | --- |
| 1560 | 40100.40200.40500.55900.58200.131700 | **16TH FLOOR** | 265d | 2026-04-30 | 2027-01-19 |  | start no earlier than 2026-04-30 | RGA -FINISHING | 7804122 |
| 1561 | 40100.40200.40500.55900.58200.131700.935000 | TOILET DADO TILE FIXING | 10d | 2026-06-19 | 2026-06-28 | 1274 |  | RGA -FINISHING | 7828452 |
| 1562 | 40100.40200.40500.55900.58200.131700.935100 | TOILET FLOORING WORK | 7d | 2026-06-29 | 2026-07-05 | 1561 |  | RGA -FINISHING | 7828462 |
| 1563 | 40100.40200.40500.55900.58200.131700.935200 | FIRE FIGHTING | 8d | 2026-04-30 | 2026-05-07 | 1273 |  | RGA -FINISHING | 7828472 |
| 1564 | 40100.40200.40500.55900.58200.131700.935300 | INTERNAL PAINTING - PUTTY / PRIMER APPLICATION | 5d | 2026-07-18 | 2026-07-22 | 1566 |  | RGA -FINISHING | 7828482 |
| 1565 | 40100.40200.40500.55900.58200.131700.935400 | FLAT FLOORING | 7d | 2026-07-06 | 2026-07-12 | 1562 |  | RGA -FINISHING | 7828492 |
| 1566 | 40100.40200.40500.55900.58200.131700.935500 | WINDOW FIXING | 5d | 2026-07-13 | 2026-07-17 | 1565 |  | RGA -FINISHING | 7828502 |
| 1567 | 40100.40200.40500.55900.58200.131700.935600 | INTERNAL PAINTING - 1ST COAT | 4d | 2026-07-23 | 2026-07-26 | 1564 |  | RGA -FINISHING | 7828512 |
| 1568 | 40100.40200.40500.55900.58200.131700.935700 | INTERNAL DOOR FIXING | 15d | 2026-07-25 | 2026-08-08 | 1567FS-2d |  | RGA -FINISHING | 7828522 |
| 1569 | 40100.40200.40500.55900.58200.131700.935800 | WIRING & SWITCH PLATE FIXING | 8d | 2026-08-05 | 2026-08-12 | 1568FS-4d |  | RGA -FINISHING | 7828532 |
| 1570 | 40100.40200.40500.55900.58200.131700.935900 | TOILET FALSE CEILING | 7d | 2026-08-13 | 2026-08-19 | 1569 |  | RGA -FINISHING | 7828542 |
| 1571 | 40100.40200.40500.55900.58200.131700.936000 | MAIN DOOR FRAME SHUTTER FIXING | 6d | 2027-01-06 | 2027-01-11 | 1823 |  | RGA -FINISHING | 7828552 |
| 1572 | 40100.40200.40500.55900.58200.131700.936100 | FINAL COAT PAINT | 8d | 2027-01-12 | 2027-01-19 | 1571 |  | RGA -FINISHING | 7828562 |
| 1573 | 40100.40200.40500.55900.58200.130900 | **17TH FLOOR** | 252d | 2026-05-13 | 2027-01-19 |  | start no earlier than 2026-05-13 | RGA -FINISHING | 7804132 |
| 1574 | 40100.40200.40500.55900.58200.130900.936200 | TOILET DADO TILE FIXING | 10d | 2026-07-02 | 2026-07-11 | 1281 |  | RGA -FINISHING | 7828572 |
| 1575 | 40100.40200.40500.55900.58200.130900.936300 | TOILET FLOORING WORK | 7d | 2026-07-12 | 2026-07-18 | 1574 |  | RGA -FINISHING | 7828582 |
| 1576 | 40100.40200.40500.55900.58200.130900.936400 | FIRE FIGHTING | 8d | 2026-05-13 | 2026-05-20 | 1280 |  | RGA -FINISHING | 7828592 |
| 1577 | 40100.40200.40500.55900.58200.130900.936500 | INTERNAL PAINTING - PUTTY / PRIMER APPLICATION | 5d | 2026-07-31 | 2026-08-04 | 1579 |  | RGA -FINISHING | 7828602 |
| 1578 | 40100.40200.40500.55900.58200.130900.936600 | FLAT FLOORING | 7d | 2026-07-19 | 2026-07-25 | 1575 |  | RGA -FINISHING | 7828612 |
| 1579 | 40100.40200.40500.55900.58200.130900.936700 | WINDOW FIXING | 5d | 2026-07-26 | 2026-07-30 | 1578 |  | RGA -FINISHING | 7828622 |
| 1580 | 40100.40200.40500.55900.58200.130900.936800 | INTERNAL PAINTING - 1ST COAT | 4d | 2026-08-05 | 2026-08-08 | 1577 |  | RGA -FINISHING | 7828632 |
| 1581 | 40100.40200.40500.55900.58200.130900.936900 | INTERNAL DOOR FIXING | 15d | 2026-08-07 | 2026-08-21 | 1580FS-2d |  | RGA -FINISHING | 7828642 |
| 1582 | 40100.40200.40500.55900.58200.130900.937000 | WIRING & SWITCH PLATE FIXING | 8d | 2026-08-18 | 2026-08-25 | 1581FS-4d |  | RGA -FINISHING | 7828652 |
| 1583 | 40100.40200.40500.55900.58200.130900.937100 | TOILET FALSE CEILING | 7d | 2026-08-26 | 2026-09-01 | 1582 |  | RGA -FINISHING | 7828662 |
| 1584 | 40100.40200.40500.55900.58200.130900.937200 | MAIN DOOR FRAME SHUTTER FIXING | 6d | 2027-01-06 | 2027-01-11 | 1831 |  | RGA -FINISHING | 7828672 |
| 1585 | 40100.40200.40500.55900.58200.130900.937300 | FINAL COAT PAINT | 8d | 2027-01-12 | 2027-01-19 | 1584 |  | RGA -FINISHING | 7828682 |

| ID | WBS | Task | Duration | Start | Finish | Predecessors | Constraint | Calendar | Unique_Task_ID |
| --- | --- | --- | --- | --- | --- | --- | --- | --- | --- |
| 1586 | 40100.40200.40500.55900.58200.130300 | **18TH FLOOR** | 244d | 2026-05-21 | 2027-01-19 |  | start no earlier than 2026-05-21 | RGA -FINISHING | 7804142 |
| 1587 | 40100.40200.40500.55900.58200.130300.937400 | TOILET DADO TILE FIXING | 10d | 2026-07-10 | 2026-07-19 | 1288 |  | RGA -FINISHING | 7828692 |
| 1588 | 40100.40200.40500.55900.58200.130300.937500 | TOILET FLOORING WORK | 7d | 2026-07-20 | 2026-07-26 | 1587 |  | RGA -FINISHING | 7828702 |
| 1589 | 40100.40200.40500.55900.58200.130300.937600 | FIRE FIGHTING | 8d | 2026-05-21 | 2026-05-28 | 1287 |  | RGA -FINISHING | 7828712 |
| 1590 | 40100.40200.40500.55900.58200.130300.937700 | INTERNAL PAINTING - PUTTY / PRIMER APPLICATION | 5d | 2026-08-08 | 2026-08-12 | 1592 |  | RGA -FINISHING | 7828722 |
| 1591 | 40100.40200.40500.55900.58200.130300.937800 | FLAT FLOORING | 7d | 2026-07-27 | 2026-08-02 | 1588 |  | RGA -FINISHING | 7828732 |
| 1592 | 40100.40200.40500.55900.58200.130300.937900 | WINDOW FIXING | 5d | 2026-08-03 | 2026-08-07 | 1591 |  | RGA -FINISHING | 7828742 |
| 1593 | 40100.40200.40500.55900.58200.130300.938000 | INTERNAL PAINTING - 1ST COAT | 4d | 2026-08-13 | 2026-08-16 | 1590 |  | RGA -FINISHING | 7828752 |
| 1594 | 40100.40200.40500.55900.58200.130300.938100 | INTERNAL DOOR FIXING | 15d | 2026-08-15 | 2026-08-29 | 1593FS-2d |  | RGA -FINISHING | 7828762 |
| 1595 | 40100.40200.40500.55900.58200.130300.938200 | WIRING & SWITCH PLATE FIXING | 8d | 2026-08-26 | 2026-09-02 | 1594FS-4d |  | RGA -FINISHING | 7828772 |
| 1596 | 40100.40200.40500.55900.58200.130300.938300 | TOILET FALSE CEILING | 7d | 2026-09-03 | 2026-09-09 | 1595 |  | RGA -FINISHING | 7828782 |
| 1597 | 40100.40200.40500.55900.58200.130300.938400 | MAIN DOOR FRAME SHUTTER FIXING | 6d | 2027-01-06 | 2027-01-11 | 1839 |  | RGA -FINISHING | 7828792 |
| 1598 | 40100.40200.40500.55900.58200.130300.938500 | FINAL COAT PAINT | 8d | 2027-01-12 | 2027-01-19 | 1597 |  | RGA -FINISHING | 7828802 |
| 1599 | 40100.40200.40500.55900.58200.128200 | **19TH FLOOR** | 236d | 2026-05-29 | 2027-01-19 |  | start no earlier than 2026-05-29 | RGA -FINISHING | 7804152 |
| 1600 | 40100.40200.40500.55900.58200.128200.938600 | TOILET DADO TILE FIXING | 10d | 2026-07-18 | 2026-07-27 | 1295 |  | RGA -FINISHING | 7828812 |
| 1601 | 40100.40200.40500.55900.58200.128200.938700 | TOILET FLOORING WORK | 7d | 2026-07-28 | 2026-08-03 | 1600 |  | RGA -FINISHING | 7828822 |
| 1602 | 40100.40200.40500.55900.58200.128200.938800 | FIRE FIGHTING | 8d | 2026-05-29 | 2026-06-05 | 1294 |  | RGA -FINISHING | 7828832 |
| 1603 | 40100.40200.40500.55900.58200.128200.938900 | INTERNAL PAINTING - PUTTY / PRIMER APPLICATION | 5d | 2026-08-16 | 2026-08-20 | 1605 |  | RGA -FINISHING | 7828842 |
| 1604 | 40100.40200.40500.55900.58200.128200.939000 | FLAT FLOORING | 7d | 2026-08-04 | 2026-08-10 | 1601 |  | RGA -FINISHING | 7828852 |
| 1605 | 40100.40200.40500.55900.58200.128200.939100 | WINDOW FIXING | 5d | 2026-08-11 | 2026-08-15 | 1604 |  | RGA -FINISHING | 7828862 |
| 1606 | 40100.40200.40500.55900.58200.128200.939200 | INTERNAL PAINTING - 1ST COAT | 4d | 2026-08-21 | 2026-08-24 | 1603 |  | RGA -FINISHING | 7828872 |
| 1607 | 40100.40200.40500.55900.58200.128200.939300 | INTERNAL DOOR FIXING | 15d | 2026-08-23 | 2026-09-06 | 1606FS-2d |  | RGA -FINISHING | 7828882 |
| 1608 | 40100.40200.40500.55900.58200.128200.939400 | WIRING & SWITCH PLATE FIXING | 8d | 2026-09-03 | 2026-09-10 | 1607FS-4d |  | RGA -FINISHING | 7828892 |
| 1609 | 40100.40200.40500.55900.58200.128200.939500 | TOILET FALSE CEILING | 7d | 2026-09-11 | 2026-09-17 | 1608 |  | RGA -FINISHING | 7828902 |
| 1610 | 40100.40200.40500.55900.58200.128200.939600 | MAIN DOOR FRAME SHUTTER FIXING | 6d | 2027-01-06 | 2027-01-11 | 1847 |  | RGA -FINISHING | 7828912 |
| 1611 | 40100.40200.40500.55900.58200.128200.939700 | FINAL COAT PAINT | 8d | 2027-01-12 | 2027-01-19 | 1610 |  | RGA -FINISHING | 7828922 |

| ID | WBS | Task | Duration | Start | Finish | Predecessors | Constraint | Calendar | Unique_Task_ID |
| --- | --- | --- | --- | --- | --- | --- | --- | --- | --- |
| 1612 | 40100.40200.40500.55900.58200.126700 | **20TH FLOOR** | 228d | 2026-06-06 | 2027-01-19 |  | start no earlier than 2026-06-06 | RGA -FINISHING | 7804162 |
| 1613 | 40100.40200.40500.55900.58200.126700.939800 | TOILET DADO TILE FIXING | 10d | 2026-07-26 | 2026-08-04 | 1302 |  | RGA -FINISHING | 7828932 |
| 1614 | 40100.40200.40500.55900.58200.126700.939900 | TOILET FLOORING WORK | 7d | 2026-08-05 | 2026-08-11 | 1613 |  | RGA -FINISHING | 7828942 |
| 1615 | 40100.40200.40500.55900.58200.126700.940000 | FIRE FIGHTING | 8d | 2026-06-06 | 2026-06-13 | 1301 |  | RGA -FINISHING | 7828952 |
| 1616 | 40100.40200.40500.55900.58200.126700.940100 | INTERNAL PAINTING - PUTTY / PRIMER APPLICATION | 5d | 2026-08-24 | 2026-08-28 | 1618 |  | RGA -FINISHING | 7828962 |
| 1617 | 40100.40200.40500.55900.58200.126700.940200 | FLAT FLOORING | 7d | 2026-08-12 | 2026-08-18 | 1614 |  | RGA -FINISHING | 7828972 |
| 1618 | 40100.40200.40500.55900.58200.126700.940300 | WINDOW FIXING | 5d | 2026-08-19 | 2026-08-23 | 1617 |  | RGA -FINISHING | 7828982 |
| 1619 | 40100.40200.40500.55900.58200.126700.940400 | INTERNAL PAINTING - 1ST COAT | 4d | 2026-08-29 | 2026-09-01 | 1616 |  | RGA -FINISHING | 7828992 |
| 1620 | 40100.40200.40500.55900.58200.126700.940500 | INTERNAL DOOR FIXING | 15d | 2026-08-31 | 2026-09-14 | 1619FS-2d |  | RGA -FINISHING | 7829002 |
| 1621 | 40100.40200.40500.55900.58200.126700.940600 | WIRING & SWITCH PLATE FIXING | 8d | 2026-09-11 | 2026-09-18 | 1620FS-4d |  | RGA -FINISHING | 7829012 |
| 1622 | 40100.40200.40500.55900.58200.126700.940700 | TOILET FALSE CEILING | 7d | 2026-09-19 | 2026-09-25 | 1621 |  | RGA -FINISHING | 7829022 |
| 1623 | 40100.40200.40500.55900.58200.126700.940800 | MAIN DOOR FRAME SHUTTER FIXING | 6d | 2027-01-06 | 2027-01-11 | 1855 |  | RGA -FINISHING | 7829032 |
| 1624 | 40100.40200.40500.55900.58200.126700.940900 | FINAL COAT PAINT | 8d | 2027-01-12 | 2027-01-19 | 1623 |  | RGA -FINISHING | 7829042 |
| 1625 | 40100.40200.40500.55900.58200.125900 | **21st FLOOR** | 220d | 2026-06-14 | 2027-01-19 |  | start no earlier than 2026-06-14 | RGA -FINISHING | 7804172 |
| 1626 | 40100.40200.40500.55900.58200.125900.941000 | TOILET DADO TILE FIXING | 10d | 2026-08-03 | 2026-08-12 | 1309 |  | RGA -FINISHING | 7829052 |
| 1627 | 40100.40200.40500.55900.58200.125900.941100 | TOILET FLOORING WORK | 7d | 2026-08-13 | 2026-08-19 | 1626 |  | RGA -FINISHING | 7829062 |
| 1628 | 40100.40200.40500.55900.58200.125900.941200 | FIRE FIGHTING | 8d | 2026-06-14 | 2026-06-21 | 1308 |  | RGA -FINISHING | 7829072 |
| 1629 | 40100.40200.40500.55900.58200.125900.941300 | INTERNAL PAINTING - PUTTY / PRIMER APPLICATION | 15d | 2026-09-01 | 2026-09-15 | 1631 |  | RGA -FINISHING | 7829082 |
| 1630 | 40100.40200.40500.55900.58200.125900.941400 | FLAT FLOORING | 5d | 2026-08-20 | 2026-08-24 | 1627 |  | RGA -FINISHING | 7829092 |
| 1631 | 40100.40200.40500.55900.58200.125900.941500 | WINDOW FIXING | 7d | 2026-08-25 | 2026-08-31 | 1630 |  | RGA -FINISHING | 7829102 |
| 1632 | 40100.40200.40500.55900.58200.125900.941600 | INTERNAL PAINTING - 1ST COAT | 5d | 2026-09-16 | 2026-09-20 | 1629 |  | RGA -FINISHING | 7829112 |
| 1633 | 40100.40200.40500.55900.58200.125900.941700 | INTERNAL DOOR FIXING | 4d | 2026-09-19 | 2026-09-22 | 1632FS-2d |  | RGA -FINISHING | 7829122 |
| 1634 | 40100.40200.40500.55900.58200.125900.941800 | WIRING & SWITCH PLATE FIXING | 8d | 2026-09-19 | 2026-09-26 | 1633FS-4d |  | RGA -FINISHING | 7829132 |
| 1635 | 40100.40200.40500.55900.58200.125900.941900 | TOILET FALSE CEILING | 7d | 2026-09-27 | 2026-10-03 | 1634 |  | RGA -FINISHING | 7829142 |
| 1636 | 40100.40200.40500.55900.58200.125900.942000 | MAIN DOOR FRAME SHUTTER FIXING | 6d | 2027-01-06 | 2027-01-11 | 1863 |  | RGA -FINISHING | 7829152 |
| 1637 | 40100.40200.40500.55900.58200.125900.942100 | FINAL COAT PAINT | 8d | 2027-01-12 | 2027-01-19 | 1636 |  | RGA -FINISHING | 7829162 |

| ID | WBS | Task | Duration | Start | Finish | Predecessors | Constraint | Calendar | Unique_Task_ID |
| --- | --- | --- | --- | --- | --- | --- | --- | --- | --- |
| 1638 | 40100.40200.40500.55900.58200.125400 | **22nd FLOOR** | 209d | 2026-06-25 | 2027-01-19 |  | start no earlier than 2026-06-25 | RGA -FINISHING | 7804182 |
| 1639 | 40100.40200.40500.55900.58200.125400.942200 | TOILET DADO TILE FIXING | 10d | 2026-08-14 | 2026-08-23 | 1316 |  | RGA -FINISHING | 7829172 |
| 1640 | 40100.40200.40500.55900.58200.125400.942300 | TOILET FLOORING WORK | 7d | 2026-08-24 | 2026-08-30 | 1639 |  | RGA -FINISHING | 7829182 |
| 1641 | 40100.40200.40500.55900.58200.125400.942400 | FIRE FIGHTING | 8d | 2026-06-25 | 2026-07-02 | 1315 |  | RGA -FINISHING | 7829192 |
| 1642 | 40100.40200.40500.55900.58200.125400.942500 | INTERNAL PAINTING - PUTTY / PRIMER APPLICATION | 5d | 2026-09-06 | 2026-09-10 | 1644 |  | RGA -FINISHING | 7829202 |
| 1643 | 40100.40200.40500.55900.58200.125400.942600 | FLAT FLOORING | 7d | 2026-08-31 | 2026-09-06 | 1640 |  | RGA -FINISHING | 7829212 |
| 1644 | 40100.40200.40500.55900.58200.125400.942700 | WINDOW FIXING | 5d | 2026-09-01 | 2026-09-05 | 1631 |  | RGA -FINISHING | 7829222 |
| 1645 | 40100.40200.40500.55900.58200.125400.942800 | INTERNAL PAINTING - 1ST COAT | 4d | 2026-09-11 | 2026-09-14 | 1642 |  | RGA -FINISHING | 7829232 |
| 1646 | 40100.40200.40500.55900.58200.125400.942900 | INTERNAL DOOR FIXING | 15d | 2026-09-13 | 2026-09-27 | 1645FS-2d |  | RGA -FINISHING | 7829242 |
| 1647 | 40100.40200.40500.55900.58200.125400.943000 | WIRING & SWITCH PLATE FIXING | 8d | 2026-09-24 | 2026-10-01 | 1646FS-4d |  | RGA -FINISHING | 7829252 |
| 1648 | 40100.40200.40500.55900.58200.125400.943100 | TOILET FALSE CEILING | 7d | 2026-10-02 | 2026-10-08 | 1647 |  | RGA -FINISHING | 7829262 |
| 1649 | 40100.40200.40500.55900.58200.125400.943200 | MAIN DOOR FRAME SHUTTER FIXING | 6d | 2027-01-06 | 2027-01-11 | 1871 |  | RGA -FINISHING | 7829272 |
| 1650 | 40100.40200.40500.55900.58200.125400.943300 | FINAL COAT PAINT | 8d | 2027-01-12 | 2027-01-19 | 1649 |  | RGA -FINISHING | 7829282 |
| 1651 | 40100.40200.40500.55900.58200.125300 | **23TH FLOOR** | 215d | 2026-06-19 | 2027-01-19 |  | start no earlier than 2026-06-19 | RGA -FINISHING | 7804192 |
| 1652 | 40100.40200.40500.55900.58200.125300.943400 | TOILET DADO TILE FIXING | 10d | 2026-10-03 | 2026-10-12 | 1323 |  | RGA -FINISHING | 7829292 |
| 1653 | 40100.40200.40500.55900.58200.125300.943500 | TOILET FLOORING WORK | 7d | 2026-10-13 | 2026-10-19 | 1652 |  | RGA -FINISHING | 7829302 |
| 1654 | 40100.40200.40500.55900.58200.125300.943600 | FIRE FIGHTING | 8d | 2026-06-19 | 2026-06-26 | 1322 |  | RGA -FINISHING | 7829312 |
| 1655 | 40100.40200.40500.55900.58200.125300.943700 | INTERNAL PAINTING - PUTTY / PRIMER APPLICATION | 5d | 2026-11-01 | 2026-11-05 | 1657 |  | RGA -FINISHING | 7829322 |
| 1656 | 40100.40200.40500.55900.58200.125300.943800 | FLAT FLOORING | 7d | 2026-10-20 | 2026-10-26 | 1653 |  | RGA -FINISHING | 7829332 |
| 1657 | 40100.40200.40500.55900.58200.125300.943900 | WINDOW FIXING | 5d | 2026-10-27 | 2026-10-31 | 1656 |  | RGA -FINISHING | 7829342 |
| 1658 | 40100.40200.40500.55900.58200.125300.944000 | INTERNAL PAINTING - 1ST COAT | 4d | 2026-11-06 | 2026-11-09 | 1655 |  | RGA -FINISHING | 7829352 |
| 1659 | 40100.40200.40500.55900.58200.125300.944100 | INTERNAL DOOR FIXING | 15d | 2026-11-08 | 2026-11-22 | 1658FS-2d |  | RGA -FINISHING | 7829362 |
| 1660 | 40100.40200.40500.55900.58200.125300.944200 | WIRING & SWITCH PLATE FIXING | 8d | 2026-11-19 | 2026-11-26 | 1659FS-4d |  | RGA -FINISHING | 7829372 |
| 1661 | 40100.40200.40500.55900.58200.125300.944300 | TOILET FALSE CEILING | 7d | 2026-11-27 | 2026-12-03 | 1660 |  | RGA -FINISHING | 7829382 |
| 1662 | 40100.40200.40500.55900.58200.125300.944400 | MAIN DOOR FRAME SHUTTER FIXING | 6d | 2027-01-06 | 2027-01-11 | 1879 |  | RGA -FINISHING | 7829392 |
| 1663 | 40100.40200.40500.55900.58200.125300.944500 | FINAL COAT PAINT | 8d | 2027-01-12 | 2027-01-19 | 1662 |  | RGA -FINISHING | 7829402 |

| ID | WBS | Task | Duration | Start | Finish | Predecessors | Constraint | Calendar | Unique_Task_ID |
| --- | --- | --- | --- | --- | --- | --- | --- | --- | --- |
| 1664 | 40100.40200.40500.55900.58200.125200 | **24TH FLOOR** | 221d | 2026-06-13 | 2027-01-19 |  | start no earlier than 2026-06-13 | RGA -FINISHING | 7804202 |
| 1665 | 40100.40200.40500.55900.58200.125200.944600 | TOILET DADO TILE FIXING | 10d | 2026-09-27 | 2026-10-06 | 1330 |  | RGA -FINISHING | 7829412 |
| 1666 | 40100.40200.40500.55900.58200.125200.944700 | TOILET FLOORING WORK | 7d | 2026-10-07 | 2026-10-13 | 1665 |  | RGA -FINISHING | 7829422 |
| 1667 | 40100.40200.40500.55900.58200.125200.944800 | FIRE FIGHTING | 8d | 2026-06-13 | 2026-06-20 | 1329 |  | RGA -FINISHING | 7829432 |
| 1668 | 40100.40200.40500.55900.58200.125200.944900 | INTERNAL PAINTING - PUTTY / PRIMER APPLICATION | 5d | 2026-10-26 | 2026-10-30 | 1670 |  | RGA -FINISHING | 7829442 |
| 1669 | 40100.40200.40500.55900.58200.125200.945000 | FLAT FLOORING | 7d | 2026-10-14 | 2026-10-20 | 1666 |  | RGA -FINISHING | 7829452 |
| 1670 | 40100.40200.40500.55900.58200.125200.945100 | WINDOW FIXING | 5d | 2026-10-21 | 2026-10-25 | 1669 |  | RGA -FINISHING | 7829462 |
| 1671 | 40100.40200.40500.55900.58200.125200.945200 | INTERNAL PAINTING - 1ST COAT | 4d | 2026-10-31 | 2026-11-03 | 1668 |  | RGA -FINISHING | 7829472 |
| 1672 | 40100.40200.40500.55900.58200.125200.945300 | INTERNAL DOOR FIXING | 15d | 2026-11-02 | 2026-11-16 | 1671FS-2d |  | RGA -FINISHING | 7829482 |
| 1673 | 40100.40200.40500.55900.58200.125200.945400 | WIRING & SWITCH PLATE FIXING | 8d | 2026-11-13 | 2026-11-20 | 1672FS-4d |  | RGA -FINISHING | 7829492 |
| 1674 | 40100.40200.40500.55900.58200.125200.945500 | TOILET FALSE CEILING | 7d | 2026-11-21 | 2026-11-27 | 1673 |  | RGA -FINISHING | 7829502 |
| 1675 | 40100.40200.40500.55900.58200.125200.945600 | MAIN DOOR FRAME SHUTTER FIXING | 6d | 2027-01-06 | 2027-01-11 | 1887 |  | RGA -FINISHING | 7829512 |
| 1676 | 40100.40200.40500.55900.58200.125200.945700 | FINAL COAT PAINT | 8d | 2027-01-12 | 2027-01-19 | 1675 |  | RGA -FINISHING | 7829522 |
| 1677 | 40100.40200.40500.55900.58200.125100 | **25TH FLOOR** | 237d | 2026-06-22 | 2027-02-13 |  | start no earlier than 2026-06-22 | RGA -FINISHING | 7804212 |
| 1678 | 40100.40200.40500.55900.58200.125100.945800 | TOILET DADO TILE FIXING | 10d | 2026-10-12 | 2026-10-21 | 1337 |  | RGA -FINISHING | 7829532 |
| 1679 | 40100.40200.40500.55900.58200.125100.945900 | TOILET FLOORING WORK | 7d | 2026-10-22 | 2026-10-28 | 1678 |  | RGA -FINISHING | 7829542 |
| 1680 | 40100.40200.40500.55900.58200.125100.946000 | FIRE FIGHTING | 8d | 2026-06-22 | 2026-06-29 | 1336 |  | RGA -FINISHING | 7829552 |
| 1681 | 40100.40200.40500.55900.58200.125100.946100 | INTERNAL PAINTING - PUTTY / PRIMER APPLICATION | 5d | 2026-12-10 | 2026-12-14 | 1683 |  | RGA -FINISHING | 7829562 |
| 1682 | 40100.40200.40500.55900.58200.125100.946200 | FLAT FLOORING | 7d | 2026-11-28 | 2026-12-04 | 1679FS+30d |  | RGA -FINISHING | 7829572 |
| 1683 | 40100.40200.40500.55900.58200.125100.946300 | WINDOW FIXING | 5d | 2026-12-05 | 2026-12-09 | 1682 |  | RGA -FINISHING | 7829582 |
| 1684 | 40100.40200.40500.55900.58200.125100.946400 | INTERNAL PAINTING - 1ST COAT | 4d | 2026-12-15 | 2026-12-18 | 1681 |  | RGA -FINISHING | 7829592 |
| 1685 | 40100.40200.40500.55900.58200.125100.946500 | INTERNAL DOOR FIXING | 15d | 2026-12-17 | 2026-12-31 | 1684FS-2d |  | RGA -FINISHING | 7829602 |
| 1686 | 40100.40200.40500.55900.58200.125100.946600 | WIRING & SWITCH PLATE FIXING | 8d | 2026-12-28 | 2027-01-04 | 1685FS-4d |  | RGA -FINISHING | 7829612 |
| 1687 | 40100.40200.40500.55900.58200.125100.946700 | TOILET FALSE CEILING | 7d | 2027-01-05 | 2027-01-11 | 1686 |  | RGA -FINISHING | 7829622 |
| 1688 | 40100.40200.40500.55900.58200.125100.946800 | MAIN DOOR FRAME SHUTTER FIXING | 6d | 2027-01-31 | 2027-02-05 | 1895 |  | RGA -FINISHING | 7829632 |
| 1689 | 40100.40200.40500.55900.58200.125100.946900 | FINAL COAT PAINT | 8d | 2027-02-06 | 2027-02-13 | 1688 |  | RGA -FINISHING | 7829642 |

| ID | WBS | Task | Duration | Start | Finish | Predecessors | Constraint | Calendar | Unique_Task_ID |
| --- | --- | --- | --- | --- | --- | --- | --- | --- | --- |
| 1690 | 40100.40200.40500.55900.59900 | **LIFT LOBBY & STAIRCASE FINISHING WORK** | 456d | 2025-11-25 | 2027-02-23 |  | start no earlier than 2025-11-25 | RGA -FINISHING | 7803542 |
| 1691 | 40100.40200.40500.55900.59900.171400 | **GROUND FLOOR** | 381d | 2025-11-25 | 2026-12-10 |  | start no earlier than 2025-11-25 | RGA -FINISHING | 7805692 |
| 1692 | 40100.40200.40500.55900.59900.171400.947000 | FIRE FIGHTING | 10d | 2025-11-25 | 2025-12-04 | 1355FS-6d |  | RGA -FINISHING | 7829892 |
| 1693 | 40100.40200.40500.55900.59900.171400.947100 | LIFT BLOCK WORK | 3d | 2026-09-07 | 2026-09-09 | 1157 |  | RGA -FINISHING | 7829902 |
| 1694 | 40100.40200.40500.55900.59900.171400.947200 | LIFT DADO WORK | 10d | 2026-10-28 | 2026-11-06 | 1902FS-60d |  | RGA -FINISHING | 7829912 |
| 1695 | 40100.40200.40500.55900.59900.171400.947300 | LOBBY FLOORING WORK | 10d | 2026-11-07 | 2026-11-16 | 1694 |  | RGA -FINISHING | 7829922 |
| 1696 | 40100.40200.40500.55900.59900.171400.947400 | ELECTRICAL WIRING & SWITCH PLATE FIXING WORK | 6d | 2026-11-17 | 2026-11-22 | 1695 |  | RGA -FINISHING | 7829932 |
| 1697 | 40100.40200.40500.55900.59900.171400.947500 | False ceiling & 1ST COAT PAINTING | 15d | 2026-11-23 | 2026-12-07 | 1696 |  | RGA -FINISHING | 7829942 |
| 1698 | 40100.40200.40500.55900.59900.171400.947600 | CLEANING | 3d | 2026-12-08 | 2026-12-10 | 1697 |  | RGA -FINISHING | 7829952 |
| 1699 | 40100.40200.40500.55900.59900.171500 | **1ST FLOOR** | 384d | 2025-12-02 | 2026-12-20 |  | start no earlier than 2025-12-02 | RGA -FINISHING | 7805682 |
| 1700 | 40100.40200.40500.55900.59900.171500.947700 | FIRE FIGHTING | 10d | 2025-12-02 | 2025-12-11 | 1368FS-5d |  | RGA -FINISHING | 7829962 |
| 1701 | 40100.40200.40500.55900.59900.171500.947800 | LIFT BLOCK WORK | 3d | 2026-09-10 | 2026-09-12 | 1693 |  | RGA -FINISHING | 7829972 |
| 1702 | 40100.40200.40500.55900.59900.171500.947900 | LIFT DADO WORK | 10d | 2026-11-07 | 2026-11-16 | 1694 |  | RGA -FINISHING | 7829982 |
| 1703 | 40100.40200.40500.55900.59900.171500.948000 | LOBBY FLOORING WORK | 10d | 2026-11-17 | 2026-11-26 | 1702 |  | RGA -FINISHING | 7829992 |
| 1704 | 40100.40200.40500.55900.59900.171500.948100 | ELECTRICAL WIRING & SWITCH PLATE FIXING WORK | 6d | 2026-11-27 | 2026-12-02 | 1703 |  | RGA -FINISHING | 7830002 |
| 1705 | 40100.40200.40500.55900.59900.171500.948200 | False ceiling & 1ST COAT PAINTING | 15d | 2026-12-03 | 2026-12-17 | 1704 |  | RGA -FINISHING | 7830012 |
| 1706 | 40100.40200.40500.55900.59900.171500.948300 | CLEANING | 3d | 2026-12-18 | 2026-12-20 | 1705 |  | RGA -FINISHING | 7830022 |
| 1707 | 40100.40200.40500.55900.59900.171600 | **2nd FLOOR** | 375d | 2025-12-11 | 2026-12-20 |  | start no earlier than 2025-12-11 | RGA -FINISHING | 7805672 |
| 1708 | 40100.40200.40500.55900.59900.171600.948400 | FIRE FIGHTING | 10d | 2025-12-11 | 2025-12-20 | 1381FS-5d |  | RGA -FINISHING | 7830032 |
| 1709 | 40100.40200.40500.55900.59900.171600.948500 | LIFT BLOCK WORK | 3d | 2026-09-10 | 2026-09-12 | 1701SS |  | RGA -FINISHING | 7830042 |
| 1710 | 40100.40200.40500.55900.59900.171600.948600 | LIFT DADO WORK | 10d | 2026-11-07 | 2026-11-16 | 1702SS |  | RGA -FINISHING | 7830052 |
| 1711 | 40100.40200.40500.55900.59900.171600.948700 | LOBBY FLOORING WORK | 10d | 2026-11-17 | 2026-11-26 | 1710 |  | RGA -FINISHING | 7830062 |
| 1712 | 40100.40200.40500.55900.59900.171600.948800 | ELECTRICAL WIRING & SWITCH PLATE FIXING WORK | 6d | 2026-11-27 | 2026-12-02 | 1711 |  | RGA -FINISHING | 7830072 |
| 1713 | 40100.40200.40500.55900.59900.171600.948900 | False ceiling & 1ST COAT PAINTING | 15d | 2026-12-03 | 2026-12-17 | 1712 |  | RGA -FINISHING | 7830082 |
| 1714 | 40100.40200.40500.55900.59900.171600.949000 | CLEANING | 3d | 2026-12-18 | 2026-12-20 | 1713 |  | RGA -FINISHING | 7830092 |

Notes:
- 1690: Completion in 12 months post last RCC
- 1692: Assumed
- 1700: Assumed
- 1708: Assumed

| ID | WBS | Task | Duration | Start | Finish | Predecessors | Constraint | Calendar | Unique_Task_ID |
| --- | --- | --- | --- | --- | --- | --- | --- | --- | --- |
| 1715 | 40100.40200.40500.55900.59900.171700 | **3rd FLOOR** | 361d | 2026-01-04 | 2026-12-30 |  | start no earlier than 2026-01-04 | RGA -FINISHING | 7805662 |
| 1716 | 40100.40200.40500.55900.59900.171700.949100 | FIRE FIGHTING | 10d | 2026-01-04 | 2026-01-13 | 1394FS-5d |  | RGA -FINISHING | 7830102 |
| 1717 | 40100.40200.40500.55900.59900.171700.949200 | LIFT BLOCK WORK | 3d | 2026-09-13 | 2026-09-15 | 1709 |  | RGA -FINISHING | 7830112 |
| 1718 | 40100.40200.40500.55900.59900.171700.949300 | LIFT DADO WORK | 10d | 2026-11-17 | 2026-11-26 | 1710 |  | RGA -FINISHING | 7830122 |
| 1719 | 40100.40200.40500.55900.59900.171700.949400 | LOBBY FLOORING WORK | 10d | 2026-11-27 | 2026-12-06 | 1718 |  | RGA -FINISHING | 7830132 |
| 1720 | 40100.40200.40500.55900.59900.171700.949500 | ELECTRICAL WIRING & SWITCH PLATE FIXING WORK | 6d | 2026-12-07 | 2026-12-12 | 1719 |  | RGA -FINISHING | 7830142 |
| 1721 | 40100.40200.40500.55900.59900.171700.949600 | False ceiling & 1ST COAT PAINTING | 15d | 2026-12-13 | 2026-12-27 | 1720 |  | RGA -FINISHING | 7830152 |
| 1722 | 40100.40200.40500.55900.59900.171700.949700 | CLEANING | 3d | 2026-12-28 | 2026-12-30 | 1721 |  | RGA -FINISHING | 7830162 |
| 1723 | 40100.40200.40500.55900.59900.171800 | **4th FLOOR** | 352d | 2026-01-13 | 2026-12-30 |  | start no earlier than 2026-01-13 | RGA -FINISHING | 7805652 |
| 1724 | 40100.40200.40500.55900.59900.171800.949800 | FIRE FIGHTING | 10d | 2026-01-13 | 2026-01-22 | 1407FS-5d |  | RGA -FINISHING | 7830172 |
| 1725 | 40100.40200.40500.55900.59900.171800.949900 | LIFT BLOCK WORK | 3d | 2026-09-13 | 2026-09-15 | 1717SS |  | RGA -FINISHING | 7830182 |
| 1726 | 40100.40200.40500.55900.59900.171800.950000 | LIFT DADO WORK | 10d | 2026-11-17 | 2026-11-26 | 1718SS |  | RGA -FINISHING | 7830192 |
| 1727 | 40100.40200.40500.55900.59900.171800.950100 | LOBBY FLOORING WORK | 10d | 2026-11-27 | 2026-12-06 | 1726 |  | RGA -FINISHING | 7830202 |
| 1728 | 40100.40200.40500.55900.59900.171800.950200 | ELECTRICAL WIRING & SWITCH PLATE FIXING WORK | 6d | 2026-12-07 | 2026-12-12 | 1727 |  | RGA -FINISHING | 7830212 |
| 1729 | 40100.40200.40500.55900.59900.171800.950300 | False ceiling & 1ST COAT PAINTING | 15d | 2026-12-13 | 2026-12-27 | 1728 |  | RGA -FINISHING | 7830222 |
| 1730 | 40100.40200.40500.55900.59900.171800.950400 | CLEANING | 3d | 2026-12-28 | 2026-12-30 | 1729 |  | RGA -FINISHING | 7830232 |
| 1731 | 40100.40200.40500.55900.59900.171900 | **5th FLOOR** | 343d | 2026-01-22 | 2026-12-30 |  | start no earlier than 2026-01-22 | RGA -FINISHING | 7805642 |
| 1732 | 40100.40200.40500.55900.59900.171900.950500 | FIRE FIGHTING | 10d | 2026-01-22 | 2026-01-31 | 1420FS-5d |  | RGA -FINISHING | 7830242 |
| 1733 | 40100.40200.40500.55900.59900.171900.950600 | LIFT BLOCK WORK | 3d | 2026-09-13 | 2026-09-15 | 1725SS |  | RGA -FINISHING | 7830252 |
| 1734 | 40100.40200.40500.55900.59900.171900.950700 | LIFT DADO WORK | 10d | 2026-11-17 | 2026-11-26 | 1726SS |  | RGA -FINISHING | 7830262 |
| 1735 | 40100.40200.40500.55900.59900.171900.950800 | LOBBY FLOORING WORK | 10d | 2026-11-27 | 2026-12-06 | 1734 |  | RGA -FINISHING | 7830272 |
| 1736 | 40100.40200.40500.55900.59900.171900.950900 | ELECTRICAL WIRING & SWITCH PLATE FIXING WORK | 6d | 2026-12-07 | 2026-12-12 | 1735 |  | RGA -FINISHING | 7830282 |
| 1737 | 40100.40200.40500.55900.59900.171900.951000 | False ceiling & 1ST COAT PAINTING | 15d | 2026-12-13 | 2026-12-27 | 1736 |  | RGA -FINISHING | 7830292 |
| 1738 | 40100.40200.40500.55900.59900.171900.951100 | CLEANING | 3d | 2026-12-28 | 2026-12-30 | 1737 |  | RGA -FINISHING | 7830302 |

Notes:
- 1716: Assumed
- 1724: Assumed
- 1732: Assumed

| ID | WBS | Task | Duration | Start | Finish | Predecessors | Constraint | Calendar | Unique_Task_ID |
| --- | --- | --- | --- | --- | --- | --- | --- | --- | --- |
| 1739 | 40100.40200.40500.55900.59900.172000 | **6th FLOOR** | 334d | 2026-01-31 | 2026-12-30 |  | start no earlier than 2026-01-31 | RGA -FINISHING | 7805632 |
| 1740 | 40100.40200.40500.55900.59900.172000.951200 | FIRE FIGHTING | 10d | 2026-01-31 | 2026-02-09 | 1433FS-5d |  | RGA -FINISHING | 7830312 |
| 1741 | 40100.40200.40500.55900.59900.172000.951300 | LIFT BLOCK WORK | 3d | 2026-09-13 | 2026-09-15 | 1733SS |  | RGA -FINISHING | 7830322 |
| 1742 | 40100.40200.40500.55900.59900.172000.951400 | LIFT DADO WORK | 10d | 2026-11-17 | 2026-11-26 | 1734SS |  | RGA -FINISHING | 7830332 |
| 1743 | 40100.40200.40500.55900.59900.172000.951500 | LOBBY FLOORING WORK | 10d | 2026-11-27 | 2026-12-06 | 1742 |  | RGA -FINISHING | 7830342 |
| 1744 | 40100.40200.40500.55900.59900.172000.951600 | ELECTRICAL WIRING & SWITCH PLATE FIXING WORK | 6d | 2026-12-07 | 2026-12-12 | 1743 |  | RGA -FINISHING | 7830352 |
| 1745 | 40100.40200.40500.55900.59900.172000.951700 | False ceiling & 1ST COAT PAINTING | 15d | 2026-12-13 | 2026-12-27 | 1744 |  | RGA -FINISHING | 7830362 |
| 1746 | 40100.40200.40500.55900.59900.172000.951800 | CLEANING | 3d | 2026-12-28 | 2026-12-30 | 1745 |  | RGA -FINISHING | 7830372 |
| 1747 | 40100.40200.40500.55900.59900.172100 | **7th FLOOR** | 334d | 2026-02-10 | 2027-01-09 |  | start no earlier than 2026-02-10 | RGA -FINISHING | 7805622 |
| 1748 | 40100.40200.40500.55900.59900.172100.951900 | FIRE FIGHTING | 10d | 2026-02-10 | 2026-02-19 | 1446FS-5d |  | RGA -FINISHING | 7830382 |
| 1749 | 40100.40200.40500.55900.59900.172100.952000 | LIFT BLOCK WORK | 3d | 2026-09-16 | 2026-09-18 | 1741 |  | RGA -FINISHING | 7830392 |
| 1750 | 40100.40200.40500.55900.59900.172100.952100 | LIFT DADO WORK | 10d | 2026-11-27 | 2026-12-06 | 1742 |  | RGA -FINISHING | 7830402 |
| 1751 | 40100.40200.40500.55900.59900.172100.952200 | LOBBY FLOORING WORK | 10d | 2026-12-07 | 2026-12-16 | 1750 |  | RGA -FINISHING | 7830412 |
| 1752 | 40100.40200.40500.55900.59900.172100.952300 | ELECTRICAL WIRING & SWITCH PLATE FIXING WORK | 6d | 2026-12-17 | 2026-12-22 | 1751 |  | RGA -FINISHING | 7830422 |
| 1753 | 40100.40200.40500.55900.59900.172100.952400 | False ceiling & 1ST COAT PAINTING | 15d | 2026-12-23 | 2027-01-06 | 1752 |  | RGA -FINISHING | 7830432 |
| 1754 | 40100.40200.40500.55900.59900.172100.952500 | CLEANING | 3d | 2027-01-07 | 2027-01-09 | 1753 |  | RGA -FINISHING | 7830442 |
| 1755 | 40100.40200.40500.55900.59900.172200 | **8th FLOOR** | 325d | 2026-02-19 | 2027-01-09 |  | start no earlier than 2026-02-19 | RGA -FINISHING | 7805612 |
| 1756 | 40100.40200.40500.55900.59900.172200.952600 | FIRE FIGHTING | 10d | 2026-02-19 | 2026-02-28 | 1459FS-5d |  | RGA -FINISHING | 7830452 |
| 1757 | 40100.40200.40500.55900.59900.172200.952700 | LIFT BLOCK WORK | 3d | 2026-09-16 | 2026-09-18 | 1749SS |  | RGA -FINISHING | 7830462 |
| 1758 | 40100.40200.40500.55900.59900.172200.952800 | LIFT DADO WORK | 10d | 2026-11-27 | 2026-12-06 | 1750SS |  | RGA -FINISHING | 7830472 |
| 1759 | 40100.40200.40500.55900.59900.172200.952900 | LOBBY FLOORING WORK | 10d | 2026-12-07 | 2026-12-16 | 1758 |  | RGA -FINISHING | 7830482 |
| 1760 | 40100.40200.40500.55900.59900.172200.953000 | ELECTRICAL WIRING & SWITCH PLATE FIXING WORK | 6d | 2026-12-17 | 2026-12-22 | 1759 |  | RGA -FINISHING | 7830492 |
| 1761 | 40100.40200.40500.55900.59900.172200.953100 | False ceiling & 1ST COAT PAINTING | 15d | 2026-12-23 | 2027-01-06 | 1760 |  | RGA -FINISHING | 7830502 |
| 1762 | 40100.40200.40500.55900.59900.172200.953200 | CLEANING | 3d | 2027-01-07 | 2027-01-09 | 1761 |  | RGA -FINISHING | 7830512 |

Notes:
- 1740: Assumed
- 1748: Assumed
- 1756: Assumed

| ID | WBS | Task | Duration | Start | Finish | Predecessors | Constraint | Calendar | Unique_Task_ID |
| --- | --- | --- | --- | --- | --- | --- | --- | --- | --- |
| 1763 | 40100.40200.40500.55900.59900.172300 | **9th FLOOR** | 316d | 2026-02-28 | 2027-01-09 |  | start no earlier than 2026-02-28 | RGA -FINISHING | 7805602 |
| 1764 | 40100.40200.40500.55900.59900.172300.953300 | FIRE FIGHTING | 10d | 2026-02-28 | 2026-03-09 | 1472FS-5d |  | RGA -FINISHING | 7830522 |
| 1765 | 40100.40200.40500.55900.59900.172300.953400 | LIFT BLOCK WORK | 3d | 2026-09-16 | 2026-09-18 | 1757SS |  | RGA -FINISHING | 7830532 |
| 1766 | 40100.40200.40500.55900.59900.172300.953500 | LIFT DADO WORK | 10d | 2026-11-27 | 2026-12-06 | 1758SS |  | RGA -FINISHING | 7830542 |
| 1767 | 40100.40200.40500.55900.59900.172300.953600 | LOBBY FLOORING WORK | 10d | 2026-12-07 | 2026-12-16 | 1766 |  | RGA -FINISHING | 7830552 |
| 1768 | 40100.40200.40500.55900.59900.172300.953700 | ELECTRICAL WIRING & SWITCH PLATE FIXING WORK | 6d | 2026-12-17 | 2026-12-22 | 1767 |  | RGA -FINISHING | 7830562 |
| 1769 | 40100.40200.40500.55900.59900.172300.953800 | False ceiling & 1ST COAT PAINTING | 15d | 2026-12-23 | 2027-01-06 | 1768 |  | RGA -FINISHING | 7830572 |
| 1770 | 40100.40200.40500.55900.59900.172300.953900 | CLEANING | 3d | 2027-01-07 | 2027-01-09 | 1769 |  | RGA -FINISHING | 7830582 |
| 1771 | 40100.40200.40500.55900.59900.172400 | **10th FLOOR** | 307d | 2026-03-09 | 2027-01-09 |  | start no earlier than 2026-03-09 | RGA -FINISHING | 7805592 |
| 1772 | 40100.40200.40500.55900.59900.172400.954000 | FIRE FIGHTING | 10d | 2026-03-09 | 2026-03-18 | 1485FS-5d |  | RGA -FINISHING | 7830592 |
| 1773 | 40100.40200.40500.55900.59900.172400.954100 | LIFT BLOCK WORK | 3d | 2026-09-16 | 2026-09-18 | 1765SS |  | RGA -FINISHING | 7830602 |
| 1774 | 40100.40200.40500.55900.59900.172400.954200 | LIFT DADO WORK | 10d | 2026-11-27 | 2026-12-06 | 1766SS |  | RGA -FINISHING | 7830612 |
| 1775 | 40100.40200.40500.55900.59900.172400.954300 | LOBBY FLOORING WORK | 10d | 2026-12-07 | 2026-12-16 | 1774 |  | RGA -FINISHING | 7830622 |
| 1776 | 40100.40200.40500.55900.59900.172400.954400 | ELECTRICAL WIRING & SWITCH PLATE FIXING WORK | 6d | 2026-12-17 | 2026-12-22 | 1775 |  | RGA -FINISHING | 7830632 |
| 1777 | 40100.40200.40500.55900.59900.172400.954500 | False ceiling & 1ST COAT PAINTING | 15d | 2026-12-23 | 2027-01-06 | 1776 |  | RGA -FINISHING | 7830642 |
| 1778 | 40100.40200.40500.55900.59900.172400.954600 | CLEANING | 3d | 2027-01-07 | 2027-01-09 | 1777 |  | RGA -FINISHING | 7830652 |
| 1779 | 40100.40200.40500.55900.59900.172500 | **11th FLOOR** | 298d | 2026-03-18 | 2027-01-09 |  | start no earlier than 2026-03-18 | RGA -FINISHING | 7805582 |
| 1780 | 40100.40200.40500.55900.59900.172500.954700 | FIRE FIGHTING | 10d | 2026-03-18 | 2026-03-27 | 1498FS-5d |  | RGA -FINISHING | 7830662 |
| 1781 | 40100.40200.40500.55900.59900.172500.954800 | LIFT BLOCK WORK | 3d | 2026-09-16 | 2026-09-18 | 1773SS |  | RGA -FINISHING | 7830672 |
| 1782 | 40100.40200.40500.55900.59900.172500.954900 | LIFT DADO WORK | 10d | 2026-11-27 | 2026-12-06 | 1774SS |  | RGA -FINISHING | 7830682 |
| 1783 | 40100.40200.40500.55900.59900.172500.955000 | LOBBY FLOORING WORK | 10d | 2026-12-07 | 2026-12-16 | 1782 |  | RGA -FINISHING | 7830692 |
| 1784 | 40100.40200.40500.55900.59900.172500.955100 | ELECTRICAL WIRING & SWITCH PLATE FIXING WORK | 6d | 2026-12-17 | 2026-12-22 | 1783 |  | RGA -FINISHING | 7830702 |
| 1785 | 40100.40200.40500.55900.59900.172500.955200 | False ceiling & 1ST COAT PAINTING | 15d | 2026-12-23 | 2027-01-06 | 1784 |  | RGA -FINISHING | 7830712 |
| 1786 | 40100.40200.40500.55900.59900.172500.955300 | CLEANING | 3d | 2027-01-07 | 2027-01-09 | 1785 |  | RGA -FINISHING | 7830722 |

Notes:
- 1764: Assumed
- 1772: Assumed
- 1780: Assumed

| ID | WBS | Task | Duration | Start | Finish | Predecessors | Constraint | Calendar | Unique_Task_ID |
| --- | --- | --- | --- | --- | --- | --- | --- | --- | --- |
| 1787 | 40100.40200.40500.55900.59900.172600 | **12th FLOOR** | 299d | 2026-03-27 | 2027-01-19 |  | start no earlier than 2026-03-27 | RGA -FINISHING | 7805572 |
| 1788 | 40100.40200.40500.55900.59900.172600.955400 | FIRE FIGHTING | 10d | 2026-03-27 | 2026-04-05 | 1511FS-5d |  | RGA -FINISHING | 7830732 |
| 1789 | 40100.40200.40500.55900.59900.172600.955500 | LIFT BLOCK WORK | 3d | 2026-09-19 | 2026-09-21 | 1781 |  | RGA -FINISHING | 7830742 |
| 1790 | 40100.40200.40500.55900.59900.172600.955600 | LIFT DADO WORK | 10d | 2026-12-07 | 2026-12-16 | 1782 |  | RGA -FINISHING | 7830752 |
| 1791 | 40100.40200.40500.55900.59900.172600.955700 | LOBBY FLOORING WORK | 10d | 2026-12-17 | 2026-12-26 | 1790 |  | RGA -FINISHING | 7830762 |
| 1792 | 40100.40200.40500.55900.59900.172600.955800 | ELECTRICAL WIRING & SWITCH PLATE FIXING WORK | 6d | 2026-12-27 | 2027-01-01 | 1791 |  | RGA -FINISHING | 7830772 |
| 1793 | 40100.40200.40500.55900.59900.172600.955900 | False ceiling & 1ST COAT PAINTING | 15d | 2027-01-02 | 2027-01-16 | 1792 |  | RGA -FINISHING | 7830782 |
| 1794 | 40100.40200.40500.55900.59900.172600.956000 | CLEANING | 3d | 2027-01-17 | 2027-01-19 | 1793 |  | RGA -FINISHING | 7830792 |
| 1795 | 40100.40200.40500.55900.59900.172700 | **13th FLOOR** | 288d | 2026-04-07 | 2027-01-19 |  | start no earlier than 2026-04-07 | RGA -FINISHING | 7805562 |
| 1796 | 40100.40200.40500.55900.59900.172700.956100 | FIRE FIGHTING | 10d | 2026-04-07 | 2026-04-16 | 1524FS-5d |  | RGA -FINISHING | 7830802 |
| 1797 | 40100.40200.40500.55900.59900.172700.956200 | LIFT BLOCK WORK | 3d | 2026-09-19 | 2026-09-21 | 1789SS |  | RGA -FINISHING | 7830812 |
| 1798 | 40100.40200.40500.55900.59900.172700.956300 | LIFT DADO WORK | 10d | 2026-12-07 | 2026-12-16 | 1790SS |  | RGA -FINISHING | 7830822 |
| 1799 | 40100.40200.40500.55900.59900.172700.956400 | LOBBY FLOORING WORK | 10d | 2026-12-17 | 2026-12-26 | 1798 |  | RGA -FINISHING | 7830832 |
| 1800 | 40100.40200.40500.55900.59900.172700.956500 | ELECTRICAL WIRING & SWITCH PLATE FIXING WORK | 6d | 2026-12-27 | 2027-01-01 | 1799 |  | RGA -FINISHING | 7830842 |
| 1801 | 40100.40200.40500.55900.59900.172700.956600 | False ceiling & 1ST COAT PAINTING | 15d | 2027-01-02 | 2027-01-16 | 1800 |  | RGA -FINISHING | 7830852 |
| 1802 | 40100.40200.40500.55900.59900.172700.956700 | CLEANING | 3d | 2027-01-17 | 2027-01-19 | 1801 |  | RGA -FINISHING | 7830862 |
| 1803 | 40100.40200.40500.55900.59900.172800 | **14th FLOOR** | 279d | 2026-04-16 | 2027-01-19 |  | start no earlier than 2026-04-16 | RGA -FINISHING | 7805552 |
| 1804 | 40100.40200.40500.55900.59900.172800.956800 | FIRE FIGHTING | 10d | 2026-04-16 | 2026-04-25 | 1537FS-5d |  | RGA -FINISHING | 7830872 |
| 1805 | 40100.40200.40500.55900.59900.172800.956900 | LIFT BLOCK WORK | 3d | 2026-09-19 | 2026-09-21 | 1797SS |  | RGA -FINISHING | 7830882 |
| 1806 | 40100.40200.40500.55900.59900.172800.957000 | LIFT DADO WORK | 10d | 2026-12-07 | 2026-12-16 | 1798SS |  | RGA -FINISHING | 7830892 |
| 1807 | 40100.40200.40500.55900.59900.172800.957100 | LOBBY FLOORING WORK | 10d | 2026-12-17 | 2026-12-26 | 1806 |  | RGA -FINISHING | 7830902 |
| 1808 | 40100.40200.40500.55900.59900.172800.957200 | ELECTRICAL WIRING & SWITCH PLATE FIXING WORK | 6d | 2026-12-27 | 2027-01-01 | 1807 |  | RGA -FINISHING | 7830912 |
| 1809 | 40100.40200.40500.55900.59900.172800.957300 | False ceiling & 1ST COAT PAINTING | 15d | 2027-01-02 | 2027-01-16 | 1808 |  | RGA -FINISHING | 7830922 |
| 1810 | 40100.40200.40500.55900.59900.172800.957400 | CLEANING | 3d | 2027-01-17 | 2027-01-19 | 1809 |  | RGA -FINISHING | 7830932 |

Notes:
- 1788: Assumed
- 1796: Assumed
- 1804: Assumed

| ID | WBS | Task | Duration | Start | Finish | Predecessors | Constraint | Calendar | Unique_Task_ID |
| --- | --- | --- | --- | --- | --- | --- | --- | --- | --- |
| 1811 | 40100.40200.40500.55900.59900.172900 | **15th FLOOR** | 270d | 2026-04-25 | 2027-01-19 |  | start no earlier than 2026-04-25 | RGA -FINISHING | 7805542 |
| 1812 | 40100.40200.40500.55900.59900.172900.957500 | FIRE FIGHTING | 10d | 2026-04-25 | 2026-05-04 | 1550FS-5d |  | RGA -FINISHING | 7830942 |
| 1813 | 40100.40200.40500.55900.59900.172900.957600 | LIFT BLOCK WORK | 3d | 2026-09-19 | 2026-09-21 | 1805SS |  | RGA -FINISHING | 7830952 |
| 1814 | 40100.40200.40500.55900.59900.172900.957700 | LIFT DADO WORK | 10d | 2026-12-07 | 2026-12-16 | 1806SS |  | RGA -FINISHING | 7830962 |
| 1815 | 40100.40200.40500.55900.59900.172900.957800 | LOBBY FLOORING WORK | 10d | 2026-12-17 | 2026-12-26 | 1814 |  | RGA -FINISHING | 7830972 |
| 1816 | 40100.40200.40500.55900.59900.172900.957900 | ELECTRICAL WIRING & SWITCH PLATE FIXING WORK | 6d | 2026-12-27 | 2027-01-01 | 1815 |  | RGA -FINISHING | 7830982 |
| 1817 | 40100.40200.40500.55900.59900.172900.958000 | False ceiling & 1ST COAT PAINTING | 15d | 2027-01-02 | 2027-01-16 | 1816 |  | RGA -FINISHING | 7830992 |
| 1818 | 40100.40200.40500.55900.59900.172900.958100 | CLEANING | 3d | 2027-01-17 | 2027-01-19 | 1817 |  | RGA -FINISHING | 7831002 |
| 1819 | 40100.40200.40500.55900.59900.173000 | **16th FLOOR** | 272d | 2026-05-03 | 2027-01-29 |  | start no earlier than 2026-05-03 | RGA -FINISHING | 7805532 |
| 1820 | 40100.40200.40500.55900.59900.173000.958200 | FIRE FIGHTING | 10d | 2026-05-03 | 2026-05-12 | 1563FS-5d |  | RGA -FINISHING | 7831012 |
| 1821 | 40100.40200.40500.55900.59900.173000.958300 | LIFT BLOCK WORK | 3d | 2026-09-22 | 2026-09-24 | 1813 |  | RGA -FINISHING | 7831022 |
| 1822 | 40100.40200.40500.55900.59900.173000.958400 | LIFT DADO WORK | 10d | 2026-12-17 | 2026-12-26 | 1814 |  | RGA -FINISHING | 7831032 |
| 1823 | 40100.40200.40500.55900.59900.173000.958500 | LOBBY FLOORING WORK | 10d | 2026-12-27 | 2027-01-05 | 1822 |  | RGA -FINISHING | 7831042 |
| 1824 | 40100.40200.40500.55900.59900.173000.958600 | ELECTRICAL WIRING & SWITCH PLATE FIXING WORK | 6d | 2027-01-06 | 2027-01-11 | 1823 |  | RGA -FINISHING | 7831052 |
| 1825 | 40100.40200.40500.55900.59900.173000.958700 | False ceiling & 1ST COAT PAINTING | 15d | 2027-01-12 | 2027-01-26 | 1824 |  | RGA -FINISHING | 7831062 |
| 1826 | 40100.40200.40500.55900.59900.173000.958800 | CLEANING | 3d | 2027-01-27 | 2027-01-29 | 1825 |  | RGA -FINISHING | 7831072 |
| 1827 | 40100.40200.40500.55900.59900.173100 | **17th FLOOR** | 259d | 2026-05-16 | 2027-01-29 |  | start no earlier than 2026-05-16 | RGA -FINISHING | 7805522 |
| 1828 | 40100.40200.40500.55900.59900.173100.958900 | FIRE FIGHTING | 10d | 2026-05-16 | 2026-05-25 | 1576FS-5d |  | RGA -FINISHING | 7831082 |
| 1829 | 40100.40200.40500.55900.59900.173100.959000 | LIFT BLOCK WORK | 3d | 2026-09-22 | 2026-09-24 | 1821SS |  | RGA -FINISHING | 7831092 |
| 1830 | 40100.40200.40500.55900.59900.173100.959100 | LIFT DADO WORK | 10d | 2026-12-17 | 2026-12-26 | 1822SS |  | RGA -FINISHING | 7831102 |
| 1831 | 40100.40200.40500.55900.59900.173100.959200 | LOBBY FLOORING WORK | 10d | 2026-12-27 | 2027-01-05 | 1830 |  | RGA -FINISHING | 7831112 |
| 1832 | 40100.40200.40500.55900.59900.173100.959300 | ELECTRICAL WIRING & SWITCH PLATE FIXING WORK | 6d | 2027-01-06 | 2027-01-11 | 1831 |  | RGA -FINISHING | 7831122 |
| 1833 | 40100.40200.40500.55900.59900.173100.959400 | False ceiling & 1ST COAT PAINTING | 15d | 2027-01-12 | 2027-01-26 | 1832 |  | RGA -FINISHING | 7831132 |
| 1834 | 40100.40200.40500.55900.59900.173100.959500 | CLEANING | 3d | 2027-01-27 | 2027-01-29 | 1833 |  | RGA -FINISHING | 7831142 |

Notes:
- 1812: Assumed
- 1820: Assumed
- 1828: Assumed

| ID | WBS | Task | Duration | Start | Finish | Predecessors | Constraint | Calendar | Unique_Task_ID |
| --- | --- | --- | --- | --- | --- | --- | --- | --- | --- |
| 1835 | 40100.40200.40500.55900.59900.173200 | **18th FLOOR** | 251d | 2026-05-24 | 2027-01-29 |  | start no earlier than 2026-05-24 | RGA -FINISHING | 7805512 |
| 1836 | 40100.40200.40500.55900.59900.173200.959600 | FIRE FIGHTING | 10d | 2026-05-24 | 2026-06-02 | 1589FS-5d |  | RGA -FINISHING | 7831152 |
| 1837 | 40100.40200.40500.55900.59900.173200.959700 | LIFT BLOCK WORK | 3d | 2026-09-22 | 2026-09-24 | 1829SS |  | RGA -FINISHING | 7831162 |
| 1838 | 40100.40200.40500.55900.59900.173200.959800 | LIFT DADO WORK | 10d | 2026-12-17 | 2026-12-26 | 1830SS |  | RGA -FINISHING | 7831172 |
| 1839 | 40100.40200.40500.55900.59900.173200.959900 | LOBBY FLOORING WORK | 10d | 2026-12-27 | 2027-01-05 | 1838 |  | RGA -FINISHING | 7831182 |
| 1840 | 40100.40200.40500.55900.59900.173200.960000 | ELECTRICAL WIRING & SWITCH PLATE FIXING WORK | 6d | 2027-01-06 | 2027-01-11 | 1839 |  | RGA -FINISHING | 7831192 |
| 1841 | 40100.40200.40500.55900.59900.173200.960100 | False ceiling & 1ST COAT PAINTING | 15d | 2027-01-12 | 2027-01-26 | 1840 |  | RGA -FINISHING | 7831202 |
| 1842 | 40100.40200.40500.55900.59900.173200.960200 | CLEANING | 3d | 2027-01-27 | 2027-01-29 | 1841 |  | RGA -FINISHING | 7831212 |
| 1843 | 40100.40200.40500.55900.59900.173300 | **19th FLOOR** | 243d | 2026-06-01 | 2027-01-29 |  | start no earlier than 2026-06-01 | RGA -FINISHING | 7805502 |
| 1844 | 40100.40200.40500.55900.59900.173300.960300 | FIRE FIGHTING | 10d | 2026-06-01 | 2026-06-10 | 1602FS-5d |  | RGA -FINISHING | 7831222 |
| 1845 | 40100.40200.40500.55900.59900.173300.960400 | LIFT BLOCK WORK | 3d | 2026-09-22 | 2026-09-24 | 1837SS |  | RGA -FINISHING | 7831232 |
| 1846 | 40100.40200.40500.55900.59900.173300.960500 | LIFT DADO WORK | 10d | 2026-12-17 | 2026-12-26 | 1838SS |  | RGA -FINISHING | 7831242 |
| 1847 | 40100.40200.40500.55900.59900.173300.960600 | LOBBY FLOORING WORK | 10d | 2026-12-27 | 2027-01-05 | 1846 |  | RGA -FINISHING | 7831252 |
| 1848 | 40100.40200.40500.55900.59900.173300.960700 | ELECTRICAL WIRING & SWITCH PLATE FIXING WORK | 6d | 2027-01-06 | 2027-01-11 | 1847 |  | RGA -FINISHING | 7831262 |
| 1849 | 40100.40200.40500.55900.59900.173300.960800 | False ceiling & 1ST COAT PAINTING | 15d | 2027-01-12 | 2027-01-26 | 1848 |  | RGA -FINISHING | 7831272 |
| 1850 | 40100.40200.40500.55900.59900.173300.960900 | CLEANING | 3d | 2027-01-27 | 2027-01-29 | 1849 |  | RGA -FINISHING | 7831282 |
| 1851 | 40100.40200.40500.55900.59900.173400 | **20th FLOOR** | 235d | 2026-06-09 | 2027-01-29 |  | start no earlier than 2026-06-09 | RGA -FINISHING | 7805492 |
| 1852 | 40100.40200.40500.55900.59900.173400.961000 | FIRE FIGHTING | 10d | 2026-06-09 | 2026-06-18 | 1615FS-5d |  | RGA -FINISHING | 7831292 |
| 1853 | 40100.40200.40500.55900.59900.173400.961100 | LIFT BLOCK WORK | 3d | 2026-09-25 | 2026-09-27 | 1845 |  | RGA -FINISHING | 7831302 |
| 1854 | 40100.40200.40500.55900.59900.173400.961200 | LIFT DADO WORK | 10d | 2026-12-17 | 2026-12-26 | 1846SS |  | RGA -FINISHING | 7831312 |
| 1855 | 40100.40200.40500.55900.59900.173400.961300 | LOBBY FLOORING WORK | 10d | 2026-12-27 | 2027-01-05 | 1854 |  | RGA -FINISHING | 7831322 |
| 1856 | 40100.40200.40500.55900.59900.173400.961400 | ELECTRICAL WIRING & SWITCH PLATE FIXING WORK | 6d | 2027-01-06 | 2027-01-11 | 1855 |  | RGA -FINISHING | 7831332 |
| 1857 | 40100.40200.40500.55900.59900.173400.961500 | False ceiling & 1ST COAT PAINTING | 15d | 2027-01-12 | 2027-01-26 | 1856 |  | RGA -FINISHING | 7831342 |
| 1858 | 40100.40200.40500.55900.59900.173400.961600 | CLEANING | 3d | 2027-01-27 | 2027-01-29 | 1857 |  | RGA -FINISHING | 7831352 |

Notes:
- 1836: Assumed
- 1844: Assumed
- 1852: Assumed

| ID | WBS | Task | Duration | Start | Finish | Predecessors | Constraint | Calendar | Unique_Task_ID |
| --- | --- | --- | --- | --- | --- | --- | --- | --- | --- |
| 1859 | 40100.40200.40500.55900.59900.173500 | **21th FLOOR** | 227d | 2026-06-17 | 2027-01-29 |  | start no earlier than 2026-06-17 | RGA -FINISHING | 7805482 |
| 1860 | 40100.40200.40500.55900.59900.173500.961700 | FIRE FIGHTING | 10d | 2026-06-17 | 2026-06-26 | 1628FS-5d |  | RGA -FINISHING | 7831362 |
| 1861 | 40100.40200.40500.55900.59900.173500.961800 | LIFT BLOCK WORK | 3d | 2026-09-25 | 2026-09-27 | 1853SS |  | RGA -FINISHING | 7831372 |
| 1862 | 40100.40200.40500.55900.59900.173500.961900 | LIFT DADO WORK | 10d | 2026-12-17 | 2026-12-26 | 1854SS |  | RGA -FINISHING | 7831382 |
| 1863 | 40100.40200.40500.55900.59900.173500.962000 | LOBBY FLOORING WORK | 10d | 2026-12-27 | 2027-01-05 | 1862 |  | RGA -FINISHING | 7831392 |
| 1864 | 40100.40200.40500.55900.59900.173500.962100 | ELECTRICAL WIRING & SWITCH PLATE FIXING WORK | 6d | 2027-01-06 | 2027-01-11 | 1863 |  | RGA -FINISHING | 7831402 |
| 1865 | 40100.40200.40500.55900.59900.173500.962200 | False ceiling & 1ST COAT PAINTING | 15d | 2027-01-12 | 2027-01-26 | 1864 |  | RGA -FINISHING | 7831412 |
| 1866 | 40100.40200.40500.55900.59900.173500.962300 | CLEANING | 3d | 2027-01-27 | 2027-01-29 | 1865 |  | RGA -FINISHING | 7831422 |
| 1867 | 40100.40200.40500.55900.59900.173600 | **22th FLOOR** | 216d | 2026-06-28 | 2027-01-29 |  | start no earlier than 2026-06-28 | RGA -FINISHING | 7805472 |
| 1868 | 40100.40200.40500.55900.59900.173600.962400 | FIRE FIGHTING | 10d | 2026-06-28 | 2026-07-07 | 1641FS-5d |  | RGA -FINISHING | 7831432 |
| 1869 | 40100.40200.40500.55900.59900.173600.962500 | LIFT BLOCK WORK | 3d | 2026-09-25 | 2026-09-27 | 1861SS |  | RGA -FINISHING | 7831442 |
| 1870 | 40100.40200.40500.55900.59900.173600.962600 | LIFT DADO WORK | 10d | 2026-12-17 | 2026-12-26 | 1862SS |  | RGA -FINISHING | 7831452 |
| 1871 | 40100.40200.40500.55900.59900.173600.962700 | LOBBY FLOORING WORK | 10d | 2026-12-27 | 2027-01-05 | 1870 |  | RGA -FINISHING | 7831462 |
| 1872 | 40100.40200.40500.55900.59900.173600.962800 | ELECTRICAL WIRING & SWITCH PLATE FIXING WORK | 6d | 2027-01-06 | 2027-01-11 | 1871 |  | RGA -FINISHING | 7831472 |
| 1873 | 40100.40200.40500.55900.59900.173600.962900 | False ceiling & 1ST COAT PAINTING | 15d | 2027-01-12 | 2027-01-26 | 1872 |  | RGA -FINISHING | 7831482 |
| 1874 | 40100.40200.40500.55900.59900.173600.963000 | CLEANING | 3d | 2027-01-27 | 2027-01-29 | 1873 |  | RGA -FINISHING | 7831492 |
| 1875 | 40100.40200.40500.55900.59900.173700 | **23th FLOOR** | 222d | 2026-06-22 | 2027-01-29 |  | start no earlier than 2026-06-22 | RGA -FINISHING | 7805462 |
| 1876 | 40100.40200.40500.55900.59900.173700.963100 | FIRE FIGHTING | 10d | 2026-06-22 | 2026-07-01 | 1654FS-5d |  | RGA -FINISHING | 7831502 |
| 1877 | 40100.40200.40500.55900.59900.173700.963200 | LIFT BLOCK WORK | 3d | 2026-09-25 | 2026-09-27 | 1869SS |  | RGA -FINISHING | 7831512 |
| 1878 | 40100.40200.40500.55900.59900.173700.963300 | LIFT DADO WORK | 10d | 2026-12-17 | 2026-12-26 | 1870SS |  | RGA -FINISHING | 7831522 |
| 1879 | 40100.40200.40500.55900.59900.173700.963400 | LOBBY FLOORING WORK | 10d | 2026-12-27 | 2027-01-05 | 1878 |  | RGA -FINISHING | 7831532 |
| 1880 | 40100.40200.40500.55900.59900.173700.963500 | ELECTRICAL WIRING & SWITCH PLATE FIXING WORK | 6d | 2027-01-06 | 2027-01-11 | 1879 |  | RGA -FINISHING | 7831542 |
| 1881 | 40100.40200.40500.55900.59900.173700.963600 | False ceiling & 1ST COAT PAINTING | 15d | 2027-01-12 | 2027-01-26 | 1880 |  | RGA -FINISHING | 7831552 |
| 1882 | 40100.40200.40500.55900.59900.173700.963700 | CLEANING | 3d | 2027-01-27 | 2027-01-29 | 1881 |  | RGA -FINISHING | 7831562 |

Notes:
- 1860: Assumed
- 1868: Assumed
- 1876: Assumed

| ID | WBS | Task | Duration | Start | Finish | Predecessors | Constraint | Calendar | Unique_Task_ID |
| --- | --- | --- | --- | --- | --- | --- | --- | --- | --- |
| 1883 | 40100.40200.40500.55900.59900.173800 | **24th FLOOR** | 228d | 2026-06-16 | 2027-01-29 |  | start no earlier than 2026-06-16 | RGA -FINISHING | 7805452 |
| 1884 | 40100.40200.40500.55900.59900.173800.963800 | FIRE FIGHTING | 10d | 2026-06-16 | 2026-06-25 | 1667FS-5d |  | RGA -FINISHING | 7831572 |
| 1885 | 40100.40200.40500.55900.59900.173800.963900 | LIFT BLOCK WORK | 3d | 2026-09-25 | 2026-09-27 | 1877SS |  | RGA -FINISHING | 7831582 |
| 1886 | 40100.40200.40500.55900.59900.173800.964000 | LIFT DADO WORK | 10d | 2026-12-17 | 2026-12-26 | 1878SS |  | RGA -FINISHING | 7831592 |
| 1887 | 40100.40200.40500.55900.59900.173800.964100 | LOBBY FLOORING WORK | 10d | 2026-12-27 | 2027-01-05 | 1886 |  | RGA -FINISHING | 7831602 |
| 1888 | 40100.40200.40500.55900.59900.173800.964200 | ELECTRICAL WIRING & SWITCH PLATE FIXING WORK | 6d | 2027-01-06 | 2027-01-11 | 1887 |  | RGA -FINISHING | 7831612 |
| 1889 | 40100.40200.40500.55900.59900.173800.964300 | False ceiling & 1ST COAT PAINTING | 15d | 2027-01-12 | 2027-01-26 | 1888 |  | RGA -FINISHING | 7831622 |
| 1890 | 40100.40200.40500.55900.59900.173800.964400 | CLEANING | 3d | 2027-01-27 | 2027-01-29 | 1889 |  | RGA -FINISHING | 7831632 |
| 1891 | 40100.40200.40500.55900.59900.173900 | **25th FLOOR** | 244d | 2026-06-25 | 2027-02-23 |  | start no earlier than 2026-06-25 | RGA -FINISHING | 7805442 |
| 1892 | 40100.40200.40500.55900.59900.173900.964500 | FIRE FIGHTING | 10d | 2026-06-25 | 2026-07-04 | 1680FS-5d |  | RGA -FINISHING | 7831642 |
| 1893 | 40100.40200.40500.55900.59900.173900.964600 | LIFT BLOCK WORK | 3d | 2026-09-28 | 2026-09-30 | 1885 |  | RGA -FINISHING | 7831652 |
| 1894 | 40100.40200.40500.55900.59900.173900.964700 | LIFT DADO WORK | 10d | 2026-12-27 | 2027-01-05 | 1886 |  | RGA -FINISHING | 7831662 |
| 1895 | 40100.40200.40500.55900.59900.173900.964800 | LOBBY FLOORING WORK | 10d | 2027-01-21 | 2027-01-30 | 1894FS+15d |  | RGA -FINISHING | 7831672 |
| 1896 | 40100.40200.40500.55900.59900.173900.964900 | ELECTRICAL WIRING & SWITCH PLATE FIXING WORK | 6d | 2027-01-31 | 2027-02-05 | 1895 |  | RGA -FINISHING | 7831682 |
| 1897 | 40100.40200.40500.55900.59900.173900.965000 | False ceiling & 1ST COAT PAINTING | 15d | 2027-02-06 | 2027-02-20 | 1896 |  | RGA -FINISHING | 7831692 |
| 1898 | 40100.40200.40500.55900.59900.173900.965100 | CLEANING | 3d | 2027-02-21 | 2027-02-23 | 1897 |  | RGA -FINISHING | 7831702 |
| 1899 | 40100.40200.40500.55900.161900 | **Common MEP Works** | 263d | 2026-08-26 | 2027-05-15 |  | start no earlier than 2026-08-26 | RGA -FINISHING | 7805312 |
| 1900 | 40100.40200.40500.55900.161900.502600 | **Lift Works** | 111d | 2026-09-07 | 2026-12-26 |  | start no earlier than 2026-09-07 | RGA -FINISHING | 7811572 |
| 1901 | 40100.40200.40500.55900.161900.502600.965200 | Lift Shaft Handover | 30d | 2026-09-07 | 2026-10-06 | 1157 |  | RGA -FINISHING | 7831852 |
| 1902 | 40100.40200.40500.55900.161900.502600.965300 | Lift installation work | 80d | 2026-10-08 | 2026-12-26 | 1901FS+1d |  | RGA -FINISHING | 7831862 |
| 1903 | 40100.40200.40500.55900.161900.502500 | **Plumbing works** | 127d | 2026-12-09 | 2027-04-14 |  | start no earlier than 2026-12-09 | RGA -FINISHING | 7811582 |
| 1904 | 40100.40200.40500.55900.161900.502500.965400 | Shaft Plumbing | 90d | 2026-12-09 | 2027-03-08 | 1350FF |  | RGA -FINISHING | 7831872 |
| 1905 | 40100.40200.40500.55900.161900.502500.965500 | Terrace Looping | 90d | 2027-01-15 | 2027-04-14 | 1348FF |  | RGA -FINISHING | 7831882 |
| 1906 | 40100.40200.40500.55900.161900.502400 | **Fire Fighting works** | 75d | 2026-08-26 | 2026-11-08 |  | start no earlier than 2026-08-26 | RGA -FINISHING | 7811722 |
| 1907 | 40100.40200.40500.55900.161900.502400.965600 | Shaft Downtake works | 60d | 2026-08-26 | 2026-10-24 | 1152FS+22d |  | RGA -FINISHING | 7831892 |
| 1908 | 40100.40200.40500.55900.161900.502400.965700 | Connection to pump room | 15d | 2026-10-25 | 2026-11-08 | 1907 |  | RGA -FINISHING | 7831902 |

Notes:
- 1884: Assumed
- 1892: Assumed
- 1899: Completion in 12 months post last RCC

| ID | WBS | Task | Duration | Start | Finish | Predecessors | Constraint | Calendar | Unique_Task_ID |
| --- | --- | --- | --- | --- | --- | --- | --- | --- | --- |
| 1909 | 40100.40200.40500.55900.161900.351100 | **Electrical works** | 223d | 2026-10-05 | 2027-05-15 |  | start no earlier than 2026-10-05 | RGA -FINISHING | 7808172 |
| 1910 | 40100.40200.40500.55900.161900.351100.965800 | Shaft cabling | 45d | 2026-10-05 | 2026-11-18 | 1152FS+62d |  | RGA -FINISHING | 7831912 |
| 1911 | 40100.40200.40500.55900.161900.351100.965900 | Meter room erection | 15d | 2027-04-16 | 2027-04-30 | 1010FS+226d |  | RGA -FINISHING | 7831922 |
| 1912 | 40100.40200.40500.55900.161900.351100.966000 | Panel erection | 15d | 2027-05-01 | 2027-05-15 | 1911 |  | RGA -FINISHING | 7831932 |
| 1913 | 40100.40200.40500.55900.161900.351100.966100 | DG Installtion | 10d | 2027-01-16 | 2027-01-25 | 1911SS-90d |  | RGA -FINISHING | 7831942 |
| 1914 | 40100.40200.40500.55900.161900.351100.966200 | Transformer erection | 15d | 2027-01-16 | 2027-01-30 | 1913SS |  | RGA -FINISHING | 7831952 |
| 1915 | 40100.40200.40500.352000 | **Capex Item Procurment** | 291d | 2026-04-30 | 2027-02-14 |  | start no earlier than 2026-04-30 | RGA -FINISHING | 7808752 |
| 1916 | 40100.40200.40500.352000.534700 | Lift Procurement & delivery | 30d | 2026-04-30 | 2026-05-29 | 1901SS-130d |  | RGA -FINISHING | 7813302 |
| 1917 | 40100.40200.40500.352000.534800 | Panels | 30d | 2027-01-16 | 2027-02-14 | 1911SS-90d |  | RGA -FINISHING | 7813312 |
| 1918 | 40100.40200.40500.352000.534900 | DG procurement | 30d | 2026-10-18 | 2026-11-16 | 1913SS-90d |  | RGA -FINISHING | 7813322 |
| 1919 | 40100.40200.40500.352000.535000 | Transformer | 30d | 2026-10-18 | 2026-11-16 | 1914SS-90d |  | RGA -FINISHING | 7813332 |
| 1920 | 40100.40200.40500.43500 | **Handing Over Activities** | 56d | 2027-07-24 | 2027-09-17 |  | start no earlier than 2027-07-24 | RGA -FINISHING | 7803222 |
| 1921 | 40100.40200.40500.43500.535100 | SOAP WASHING GROUND FLOOR | 1d | 2027-07-24 | 2027-07-24 | 1898FS+150d |  | RGA -FINISHING | 7813342 |
| 1922 | 40100.40200.40500.43500.535200 | SOAP WASHING L1 | 1d | 2027-07-25 | 2027-07-25 | 1921 |  | RGA -FINISHING | 7813352 |
| 1923 | 40100.40200.40500.43500.535300 | SOAP WASHING L2 | 1d | 2027-07-26 | 2027-07-26 | 1922 |  | RGA -FINISHING | 7813362 |
| 1924 | 40100.40200.40500.43500.535400 | SOAP WASHING L3 | 1d | 2027-07-27 | 2027-07-27 | 1923 |  | RGA -FINISHING | 7813372 |
| 1925 | 40100.40200.40500.43500.535500 | SOAP WASHING L4 | 1d | 2027-07-28 | 2027-07-28 | 1924 |  | RGA -FINISHING | 7813382 |
| 1926 | 40100.40200.40500.43500.535600 | SOAP WASHING L5 | 1d | 2027-07-29 | 2027-07-29 | 1925 |  | RGA -FINISHING | 7813392 |
| 1927 | 40100.40200.40500.43500.535700 | SOAP WASHING L6 | 1d | 2027-07-30 | 2027-07-30 | 1926 |  | RGA -FINISHING | 7813402 |
| 1928 | 40100.40200.40500.43500.535800 | SOAP WASHING L7 | 1d | 2027-07-31 | 2027-07-31 | 1927 |  | RGA -FINISHING | 7813412 |
| 1929 | 40100.40200.40500.43500.535900 | SOAP WASHING L8 | 1d | 2027-08-01 | 2027-08-01 | 1928 |  | RGA -FINISHING | 7813422 |
| 1930 | 40100.40200.40500.43500.536000 | SOAP WASHING L9 | 1d | 2027-08-02 | 2027-08-02 | 1929 |  | RGA -FINISHING | 7813432 |
| 1931 | 40100.40200.40500.43500.536100 | SOAP WASHING L10 | 1d | 2027-08-03 | 2027-08-03 | 1930 |  | RGA -FINISHING | 7813442 |
| 1932 | 40100.40200.40500.43500.536200 | SOAP WASHING L11 | 1d | 2027-08-04 | 2027-08-04 | 1931 |  | RGA -FINISHING | 7813452 |
| 1933 | 40100.40200.40500.43500.536300 | SOAP WASHING L12 | 1d | 2027-08-05 | 2027-08-05 | 1932 |  | RGA -FINISHING | 7813462 |
| 1934 | 40100.40200.40500.43500.536400 | SOAP WASHING L13 | 1d | 2027-08-06 | 2027-08-06 | 1933 |  | RGA -FINISHING | 7813472 |
| 1935 | 40100.40200.40500.43500.536500 | SOAP WASHING L14 | 1d | 2027-08-07 | 2027-08-07 | 1934 |  | RGA -FINISHING | 7813482 |
| 1936 | 40100.40200.40500.43500.536600 | SOAP WASHING L15 | 1d | 2027-08-08 | 2027-08-08 | 1935 |  | RGA -FINISHING | 7813492 |
| 1937 | 40100.40200.40500.43500.536700 | SOAP WASHING L16 | 1d | 2027-08-09 | 2027-08-09 | 1936 |  | RGA -FINISHING | 7813502 |
| 1938 | 40100.40200.40500.43500.536800 | SOAP WASHING L17 | 1d | 2027-08-10 | 2027-08-10 | 1937 |  | RGA -FINISHING | 7813512 |
| 1939 | 40100.40200.40500.43500.536900 | SOAP WASHING L18 | 1d | 2027-08-11 | 2027-08-11 | 1938 |  | RGA -FINISHING | 7813522 |
| 1940 | 40100.40200.40500.43500.537000 | SOAP WASHING L19 | 1d | 2027-08-12 | 2027-08-12 | 1939 |  | RGA -FINISHING | 7813532 |
| 1941 | 40100.40200.40500.43500.537100 | SOAP WASHING L20 | 1d | 2027-08-13 | 2027-08-13 | 1940 |  | RGA -FINISHING | 7813542 |
| 1942 | 40100.40200.40500.43500.537200 | SOAP WASHING L21 | 1d | 2027-08-14 | 2027-08-14 | 1941 |  | RGA -FINISHING | 7813552 |
| 1943 | 40100.40200.40500.43500.537300 | SOAP WASHING L22 | 1d | 2027-08-15 | 2027-08-15 | 1942 |  | RGA -FINISHING | 7813562 |
| 1944 | 40100.40200.40500.43500.537400 | SOAP WASHING L23 | 1d | 2027-08-16 | 2027-08-16 | 1943 |  | RGA -FINISHING | 7813572 |
| 1945 | 40100.40200.40500.43500.537500 | SOAP WASHING L24 | 1d | 2027-08-17 | 2027-08-17 | 1944 |  | RGA -FINISHING | 7813582 |
| 1946 | 40100.40200.40500.43500.537600 | SOAP WASHING L25 | 1d | 2027-08-18 | 2027-08-18 | 1945 |  | RGA -FINISHING | 7813592 |
| 1947 | 40100.40200.40500.43500.537700 | CP & SANITARYWARE FIXING Ground | 2d | 2027-07-26 | 2027-07-27 | 1922 |  | RGA -FINISHING | 7813622 |
| 1948 | 40100.40200.40500.43500.537800 | CP & SANITARYWARE FIXING L1 | 2d | 2027-07-28 | 2027-07-29 | 1947 |  | RGA -FINISHING | 7813632 |
| 1949 | 40100.40200.40500.43500.537900 | CP & SANITARYWARE FIXING L2 | 2d | 2027-07-30 | 2027-07-31 | 1948 |  | RGA -FINISHING | 7813642 |
| 1950 | 40100.40200.40500.43500.538000 | CP & SANITARYWARE FIXING L3 | 2d | 2027-08-01 | 2027-08-02 | 1949 |  | RGA -FINISHING | 7813652 |
| 1951 | 40100.40200.40500.43500.538100 | CP & SANITARYWARE FIXING L4 | 2d | 2027-08-03 | 2027-08-04 | 1950 |  | RGA -FINISHING | 7813662 |
| 1952 | 40100.40200.40500.43500.538200 | CP & SANITARYWARE FIXING L5 | 2d | 2027-08-05 | 2027-08-06 | 1951 |  | RGA -FINISHING | 7813672 |
| 1953 | 40100.40200.40500.43500.538300 | CP & SANITARYWARE FIXING L6 | 2d | 2027-08-07 | 2027-08-08 | 1952 |  | RGA -FINISHING | 7813682 |
| 1954 | 40100.40200.40500.43500.538400 | CP & SANITARYWARE FIXING L7 | 2d | 2027-08-09 | 2027-08-10 | 1953 |  | RGA -FINISHING | 7813692 |
| 1955 | 40100.40200.40500.43500.538500 | CP & SANITARYWARE FIXING L8 | 2d | 2027-08-11 | 2027-08-12 | 1954 |  | RGA -FINISHING | 7813702 |
| 1956 | 40100.40200.40500.43500.538600 | CP & SANITARYWARE FIXING L9 | 2d | 2027-08-13 | 2027-08-14 | 1955 |  | RGA -FINISHING | 7813712 |
| 1957 | 40100.40200.40500.43500.538700 | CP & SANITARYWARE FIXING L10 | 2d | 2027-08-15 | 2027-08-16 | 1956 |  | RGA -FINISHING | 7813722 |
| 1958 | 40100.40200.40500.43500.538800 | CP & SANITARYWARE FIXING L11 | 2d | 2027-08-17 | 2027-08-18 | 1957 |  | RGA -FINISHING | 7813732 |
| 1959 | 40100.40200.40500.43500.538900 | CP & SANITARYWARE FIXING L12 | 2d | 2027-08-19 | 2027-08-20 | 1958 |  | RGA -FINISHING | 7813742 |
| 1960 | 40100.40200.40500.43500.539000 | CP & SANITARYWARE FIXING L13 | 2d | 2027-08-21 | 2027-08-22 | 1959 |  | RGA -FINISHING | 7813752 |
| 1961 | 40100.40200.40500.43500.539100 | CP & SANITARYWARE FIXING L14 | 2d | 2027-08-23 | 2027-08-24 | 1960 |  | RGA -FINISHING | 7813762 |
| 1962 | 40100.40200.40500.43500.539200 | CP & SANITARYWARE FIXING L15 | 2d | 2027-08-25 | 2027-08-26 | 1961 |  | RGA -FINISHING | 7813772 |
| 1963 | 40100.40200.40500.43500.539300 | CP & SANITARYWARE FIXING L16 | 2d | 2027-08-27 | 2027-08-28 | 1962 |  | RGA -FINISHING | 7813782 |
| 1964 | 40100.40200.40500.43500.539400 | CP & SANITARYWARE FIXING L17 | 2d | 2027-08-29 | 2027-08-30 | 1963 |  | RGA -FINISHING | 7813792 |
| 1965 | 40100.40200.40500.43500.539500 | CP & SANITARYWARE FIXING L18 | 2d | 2027-08-31 | 2027-09-01 | 1964 |  | RGA -FINISHING | 7813802 |
| 1966 | 40100.40200.40500.43500.539600 | CP & SANITARYWARE FIXING L18 | 2d | 2027-09-02 | 2027-09-03 | 1965 |  | RGA -FINISHING | 7813812 |
| 1967 | 40100.40200.40500.43500.539700 | CP & SANITARYWARE FIXING L19 | 2d | 2027-09-04 | 2027-09-05 | 1966 |  | RGA -FINISHING | 7813822 |
| 1968 | 40100.40200.40500.43500.539800 | CP & SANITARYWARE FIXING L20 | 2d | 2027-09-06 | 2027-09-07 | 1967 |  | RGA -FINISHING | 7813832 |
| 1969 | 40100.40200.40500.43500.539900 | CP & SANITARYWARE FIXING L21 | 2d | 2027-09-08 | 2027-09-09 | 1968 |  | RGA -FINISHING | 7813842 |
| 1970 | 40100.40200.40500.43500.540000 | CP & SANITARYWARE FIXING L22 | 2d | 2027-09-10 | 2027-09-11 | 1969 |  | RGA -FINISHING | 7813852 |
| 1971 | 40100.40200.40500.43500.540100 | CP & SANITARYWARE FIXING L23 | 2d | 2027-09-12 | 2027-09-13 | 1970 |  | RGA -FINISHING | 7813862 |
| 1972 | 40100.40200.40500.43500.540200 | CP & SANITARYWARE FIXING L24 | 2d | 2027-09-14 | 2027-09-15 | 1971 |  | RGA -FINISHING | 7813872 |
| 1973 | 40100.40200.40500.43500.540300 | CP & SANITARYWARE FIXING L25 | 2d | 2027-09-16 | 2027-09-17 | 1972 |  | RGA -FINISHING | 7813882 |
| 1974 | 40100.40200.40500.520700 | MIscellaneous (Aluform Supply) | 90d | 2025-08-10 | 2025-11-07 | 1047FS-57d |  | RGA -FINISHING | 7812532 |
| 1975 | 40100.40200.40500.520800 | MIscellaneous | 265d | 2027-05-12 | 2028-03-15 | 1974FS+471d |  | Indian Calendar | 7812542 |

| ID | WBS | Task | Type | Duration | Start | Finish | Predecessors | Complete | Constraint | Calendar | Unique_Task_ID |
| --- | --- | --- | --- | --- | --- | --- | --- | --- | --- | --- | --- |
| 1976 | 40100.40200.40600 | **TOWER 5 - (2B+G+25 Floors+Terrace)** |  | 1076d | 2025-02-14 | 2028-03-04 |  |  | start no earlier than 2025-02-14 | RGA - STRUCTURE | 7803252 |
| 1977 | 40100.40200.40600.2746700 | Start date for Tower 5 | milestone | 0d | 2025-05-07 | 2025-05-07 | 2963FS+7d |  |  | RGA - STRUCTURE | 7847662 |
| 1978 | 40100.40200.40600.374400 | **Earth work** |  | 226d | 2025-02-14 | 2025-09-30 |  | 19% | start no earlier than 2025-02-14 | RGA - STRUCTURE | 7811752 |
| 1979 | 40100.40200.40600.374400.519300 | EXCAVATION - Tower Area |  | 118d | 2025-02-14 | 2025-08-27 | 1977SS-80d | 5% |  | RGA - STRUCTURE | 7813912 |
| 1980 | 40100.40200.40600.374400.519200 | Excavation - Non Tower Area |  | 50d | 2025-03-19 | 2025-09-30 | 1979FS-111d | 52% |  | 5 day week, Bank Hols Xmas | 7433475 |
| 1981 | 40100.40200.40600.69400 | **Substructure works (Works up to plinth)** |  | 884d | 2025-08-28 | 2028-03-04 |  |  | start no earlier than 2025-08-28 | RGA - STRUCTURE | 7803872 |
| 1982 | 40100.40200.40600.69400.167800 | **Civil works (Shell & Core basement)** |  | 589d | 2025-08-28 | 2027-05-14 |  |  | start no earlier than 2025-08-28 | RGA - STRUCTURE | 7806852 |
| 1983 | 40100.40200.40600.69400.167800.351000 | **RCC Works - Tower area- 1st Basement** |  | 51d | 2025-08-28 | 2025-10-18 |  |  | start no earlier than 2025-08-28 | RGA - STRUCTURE | 7808162 |
| 1984 | 40100.40200.40600.69400.167800.351000.383200 | **Foundation** |  | 26d | 2025-08-28 | 2025-09-22 |  |  | start no earlier than 2025-08-28 | RGA - STRUCTURE | 7809312 |
| 1985 | 40100.40200.40600.69400.167800.351000.383200.2193400 | Pocket Excavation |  | 1d | 2025-08-28 | 2025-08-28 | 1979 |  |  | RGA - STRUCTURE | 7832922 |
| 1986 | 40100.40200.40600.69400.167800.351000.383200.2193500 | Footing PCC |  | 4d | 2025-08-29 | 2025-09-01 | 1985 |  |  | RGA - STRUCTURE | 7832932 |
| 1987 | 40100.40200.40600.69400.167800.351000.383200.2193600 | Footing / Raft works |  | 21d | 2025-09-02 | 2025-09-22 | 1986 |  |  | RGA - STRUCTURE | 7832942 |
| 1988 | 40100.40200.40600.69400.167800.351000.486700 | **UB Slab** |  | 25d | 2025-09-23 | 2025-10-18 |  |  | start no earlier than 2025-09-23 | RGA - STRUCTURE | 7811392 |
| 1989 | 40100.40200.40600.69400.167800.351000.486700.2193700 | Columns in Upper basement |  | 15d | 2025-09-23 | 2025-10-08 | 1987 |  |  | RGA - STRUCTURE | 7832952 |
| 1990 | 40100.40200.40600.69400.167800.351000.486700.2193800 | Upper Basement slab |  | 10d | 2025-10-09 | 2025-10-18 | 1989 |  |  | RGA - STRUCTURE | 7832962 |
| 1991 | 40100.40200.40600.69400.167800.502000 | **Ground Floor Slab** |  | 31d | 2025-10-19 | 2025-11-19 |  |  | start no earlier than 2025-10-19 | RGA - STRUCTURE | 8865424 |
| 1992 | 40100.40200.40600.69400.167800.502000.966300 | Columns in Upper basement |  | 14d | 2025-10-19 | 2025-11-02 | 1990 |  |  | RGA - STRUCTURE | 8865434 |
| 1993 | 40100.40200.40600.69400.167800.502000.966400 | Upper Basement slab |  | 17d | 2025-11-03 | 2025-11-19 | 1992 |  |  | RGA - STRUCTURE | 8865444 |
| 1994 | 40100.40200.40600.69400.167800.828900 | Backfilling |  | 10d | 2027-05-05 | 2027-05-14 | 7871FS+198d |  |  | RGA - STRUCTURE | 7820112 |
| 1995 | 40100.40200.40600.69400.473400 | **GF/Stilt Block work and Plaster finishing** |  | 75d | 2026-08-12 | 2026-10-27 |  |  | start no earlier than 2026-08-12 | RGA - STRUCTURE | 7811832 |
| 1996 | 40100.40200.40600.69400.473400.829000 | Upper basement |  | 30d | 2026-08-12 | 2026-09-11 | 2109 |  |  | RGA - STRUCTURE | 7820122 |
| 1997 | 40100.40200.40600.69400.473400.829100 | 2nd Basement |  | 45d | 2026-09-12 | 2026-10-27 | 1996 |  |  | RGA - STRUCTURE | 8865454 |
| 1998 | 40100.40200.40600.69400.161800 | **Services** |  | 540d | 2026-09-12 | 2028-03-04 |  |  | start no earlier than 2026-09-12 | RGA -FINISHING | 7805392 |
| 1999 | 40100.40200.40600.69400.161800.365300 | **Plumbing** |  | 180d | 2026-09-12 | 2027-03-10 |  |  | start no earlier than 2026-09-12 | RGA -FINISHING | 7809042 |
| 2000 | 40100.40200.40600.69400.161800.365300.486800 | **Upper Basement Plumbing** |  | 180d | 2026-09-12 | 2027-03-10 |  |  | start no earlier than 2026-09-12 | RGA -FINISHING | 7812192 |
| 2001 | 40100.40200.40600.69400.161800.365300.486800.2193900 | Upper Basement Plumbing |  | 90d | 2026-09-12 | 2026-12-10 | 1996 |  |  | RGA -FINISHING | 7832972 |
| 2002 | 40100.40200.40600.69400.161800.365300.486800.2194000 | Upper Basement Plumbing |  | 90d | 2026-12-11 | 2027-03-10 | 2001 |  |  | RGA -FINISHING | 8865464 |

Notes:
- 1978: 2 Months for Excavation

| ID | WBS | Task | Duration | Start | Finish | Predecessors | Constraint | Calendar | Unique_Task_ID |
| --- | --- | --- | --- | --- | --- | --- | --- | --- | --- |
| 2003 | 40100.40200.40600.69400.161800.365400 | **Fire fighting** | 180d | 2026-12-11 | 2027-06-08 |  | start no earlier than 2026-12-11 | RGA -FINISHING | 7809052 |
| 2004 | 40100.40200.40600.69400.161800.365400.486900 | **Upper Basement Fire fighting** | 180d | 2026-12-11 | 2027-06-08 |  | start no earlier than 2026-12-11 | RGA -FINISHING | 7812182 |
| 2005 | 40100.40200.40600.69400.161800.365400.486900.2194100 | Upper Basement Fire fighting | 90d | 2026-12-11 | 2027-03-10 | 2001 |  | RGA -FINISHING | 7832982 |
| 2006 | 40100.40200.40600.69400.161800.365400.486900.2194200 | Upper Basement Fire fighting | 90d | 2027-03-11 | 2027-06-08 | 2005 |  | RGA -FINISHING | 8865474 |
| 2007 | 40100.40200.40600.69400.161800.365500 | **Ventilation** | 180d | 2027-03-11 | 2027-09-06 |  | start no earlier than 2027-03-11 | RGA -FINISHING | 7809062 |
| 2008 | 40100.40200.40600.69400.161800.365500.487000 | **Upper Basement ventilation** | 180d | 2027-03-11 | 2027-09-06 |  | start no earlier than 2027-03-11 | RGA -FINISHING | 7812172 |
| 2009 | 40100.40200.40600.69400.161800.365500.487000.2194300 | Upper Basement ventilation | 90d | 2027-03-11 | 2027-06-08 | 2005 |  | RGA -FINISHING | 7832992 |
| 2010 | 40100.40200.40600.69400.161800.365500.487000.2194400 | Upper Basement ventilation | 90d | 2027-06-09 | 2027-09-06 | 2009 |  | RGA -FINISHING | 8865484 |
| 2011 | 40100.40200.40600.69400.161800.365600 | **Electrification** | 180d | 2027-06-09 | 2027-12-05 |  | start no earlier than 2027-06-09 | RGA -FINISHING | 7809072 |
| 2012 | 40100.40200.40600.69400.161800.365600.487100 | **Upper Basement Electrification** | 180d | 2027-06-09 | 2027-12-05 |  | start no earlier than 2027-06-09 | RGA -FINISHING | 7812162 |
| 2013 | 40100.40200.40600.69400.161800.365600.487100.2194500 | Upper Basement Electrification | 90d | 2027-06-09 | 2027-09-06 | 2009 |  | RGA -FINISHING | 7833002 |
| 2014 | 40100.40200.40600.69400.161800.365600.487100.2194600 | Upper Basement Electrification | 90d | 2027-09-07 | 2027-12-05 | 2013 |  | RGA -FINISHING | 8865494 |
| 2015 | 40100.40200.40600.69400.161800.365700 | **Security installations** | 180d | 2027-09-07 | 2028-03-04 |  | start no earlier than 2027-09-07 | RGA -FINISHING | 7809082 |
| 2016 | 40100.40200.40600.69400.161800.365700.487200 | **Upper Basement Security installations** | 180d | 2027-09-07 | 2028-03-04 |  | start no earlier than 2027-09-07 | RGA -FINISHING | 7812152 |
| 2017 | 40100.40200.40600.69400.161800.365700.487200.2194700 | Upper Basement Security installations | 90d | 2027-09-07 | 2027-12-05 | 2013 |  | RGA -FINISHING | 7833012 |
| 2018 | 40100.40200.40600.69400.161800.365700.487200.2194800 | Upper Basement Security installations | 90d | 2027-12-06 | 2028-03-04 | 2017 |  | RGA -FINISHING | 8865504 |
| 2019 | 40100.40200.40600.69400.342900 | **Finishing work** | 180d | 2026-09-12 | 2027-03-10 |  | start no earlier than 2026-09-12 | RGA -FINISHING | 7808662 |
| 2020 | 40100.40200.40600.69400.342900.501800 | **Basement Flooring** | 180d | 2026-09-12 | 2027-03-10 |  | start no earlier than 2026-09-12 | RGA -FINISHING | 7812382 |
| 2021 | 40100.40200.40600.69400.342900.501800.966500 | 1st Basement ventilation | 90d | 2026-09-12 | 2026-12-10 | 1996 |  | RGA -FINISHING | 7831962 |
| 2022 | 40100.40200.40600.69400.342900.501800.966600 | 1st Basement ventilation | 90d | 2026-12-11 | 2027-03-10 | 2021 |  | RGA -FINISHING | 8865514 |
| 2023 | 40100.40200.40600.69400.342900.501700 | **Basement Painting (1st Coat)** | 90d | 2026-12-11 | 2027-03-10 |  | start no earlier than 2026-12-11 | RGA -FINISHING | 7812392 |
| 2024 | 40100.40200.40600.69400.342900.501700.966700 | 2nd Basement ventilation | 45d | 2026-12-11 | 2027-01-24 | 2021 |  | RGA -FINISHING | 7831972 |
| 2025 | 40100.40200.40600.69400.342900.501700.966800 | 2nd Basement ventilation | 45d | 2027-01-25 | 2027-03-10 | 2024 |  | RGA -FINISHING | 8865524 |
| 2026 | 40100.40200.40600.69400.473500 | **Water Proofing work** | 90d | 2026-09-12 | 2026-12-10 |  | start no earlier than 2026-09-12 | RGA -FINISHING | 7811842 |
| 2027 | 40100.40200.40600.69400.473500.829200 | GF/Stilt Floor | 45d | 2026-09-12 | 2026-10-26 | 1996 |  | RGA -FINISHING | 7820132 |
| 2028 | 40100.40200.40600.69400.473500.829300 | 2nd Basement | 45d | 2026-10-27 | 2026-12-10 | 2027 |  | RGA -FINISHING | 8865534 |

| ID | WBS | Task | Duration | Start | Finish | Predecessors | Constraint | Calendar | Unique_Task_ID |
| --- | --- | --- | --- | --- | --- | --- | --- | --- | --- |
| 2029 | 40100.40200.40600.53500 | **Superstructure works** | 781.5d | 2025-04-01 | 2027-06-29 |  | start no earlier than 2025-04-01 | RGA - STRUCTURE | 7803382 |
| 2030 | 40100.40200.40600.53500.55300 | **Civil works** | 781.5d | 2025-04-01 | 2027-06-29 |  | start no earlier than 2025-04-01 | RGA - STRUCTURE | 7803452 |
| 2031 | 40100.40200.40600.53500.55300.61900 | **Superstructure RCC Work** | 349d | 2025-11-20 | 2026-11-29 |  | start no earlier than 2025-11-20 | RGA - STRUCTURE | 7803702 |
| 2032 | 40100.40200.40600.53500.55300.61900.62900 | **Slab RCC works** | 300d | 2025-11-20 | 2026-10-04 |  | start no earlier than 2025-11-20 | RGA - STRUCTURE | 7803722 |
| 2033 | 40100.40200.40600.53500.55300.61900.62900.476200 | **1st Floor slab (Height More)** | 25d | 2025-11-20 | 2025-12-14 |  | start no earlier than 2025-11-20 | RGA - STRUCTURE | 7811692 |
| 2034 | 40100.40200.40600.53500.55300.61900.62900.476200.2627600 | Columns | 10d | 2025-11-20 | 2025-11-29 | 1993 |  | RGA - STRUCTURE | 7853452 |
| 2035 | 40100.40200.40600.53500.55300.61900.62900.476200.2627700 | Slab works | 15d | 2025-11-30 | 2025-12-14 | 2034 |  | RGA - STRUCTURE | 7853462 |
| 2036 | 40100.40200.40600.53500.55300.61900.62900.476100 | **2nd Floor slab (Combo Height More)** | 25d | 2025-12-15 | 2026-01-08 |  | start no earlier than 2025-12-15 | RGA - STRUCTURE | 7811702 |
| 2037 | 40100.40200.40600.53500.55300.61900.62900.476100.2627800 | Columns | 10d | 2025-12-15 | 2025-12-24 | 2035 |  | RGA - STRUCTURE | 7853472 |
| 2038 | 40100.40200.40600.53500.55300.61900.62900.476100.2627900 | Slab works | 15d | 2025-12-25 | 2026-01-08 | 2037 |  | RGA - STRUCTURE | 7853482 |
| 2039 | 40100.40200.40600.53500.55300.61900.62900.476000 | **3rd Floor slab (Combo)** | 25d | 2026-01-09 | 2026-02-03 |  | start no earlier than 2026-01-09 | RGA - STRUCTURE | 7811712 |
| 2040 | 40100.40200.40600.53500.55300.61900.62900.476000.2628000 | Formwork & Rebar Works | 24d | 2026-01-09 | 2026-02-02 | 2038 |  | RGA - STRUCTURE | 7853492 |
| 2041 | 40100.40200.40600.53500.55300.61900.62900.476000.2628100 | Concreting | 1d | 2026-02-03 | 2026-02-03 | 2040 |  | RGA - STRUCTURE | 7853502 |
| 2042 | 40100.40200.40600.53500.55300.61900.62900.396600 | **4th Floor slab (1st Set Up)** | 21d | 2026-02-04 | 2026-02-24 |  | start no earlier than 2026-02-04 | RGA - STRUCTURE | 7809912 |
| 2043 | 40100.40200.40600.53500.55300.61900.62900.396600.2628200 | Wall rebar &Form work | 10d | 2026-02-04 | 2026-02-13 | 2041 |  | RGA - STRUCTURE | 7853512 |
| 2044 | 40100.40200.40600.53500.55300.61900.62900.396600.2628300 | Slab formwork & rebar | 10d | 2026-02-14 | 2026-02-23 | 2043 |  | RGA - STRUCTURE | 7853522 |
| 2045 | 40100.40200.40600.53500.55300.61900.62900.396600.2628400 | Concreting | 1d | 2026-02-24 | 2026-02-24 | 2044 |  | RGA - STRUCTURE | 7853532 |
| 2046 | 40100.40200.40600.53500.55300.61900.62900.396700 | **5th Floor slab (2nd Set Up)** | 15d | 2026-02-25 | 2026-03-11 |  | start no earlier than 2026-02-25 | RGA - STRUCTURE | 7809922 |
| 2047 | 40100.40200.40600.53500.55300.61900.62900.396700.2628500 | Wall rebar &Form work | 7d | 2026-02-25 | 2026-03-03 | 2045 |  | RGA - STRUCTURE | 7853542 |
| 2048 | 40100.40200.40600.53500.55300.61900.62900.396700.2628600 | Slab formwork & rebar | 7d | 2026-03-04 | 2026-03-10 | 2047 |  | RGA - STRUCTURE | 7853552 |
| 2049 | 40100.40200.40600.53500.55300.61900.62900.396700.2628700 | Concreting | 1d | 2026-03-11 | 2026-03-11 | 2048 |  | RGA - STRUCTURE | 7853562 |
| 2050 | 40100.40200.40600.53500.55300.61900.62900.396800 | **6th Floor slab** | 9d | 2026-03-12 | 2026-03-20 |  | start no earlier than 2026-03-12 | RGA - STRUCTURE | 7809932 |
| 2051 | 40100.40200.40600.53500.55300.61900.62900.396800.2628800 | Wall rebar &Form work | 4d | 2026-03-12 | 2026-03-15 | 2049 |  | RGA - STRUCTURE | 7853572 |
| 2052 | 40100.40200.40600.53500.55300.61900.62900.396800.2628900 | Slab formwork & rebar | 4d | 2026-03-16 | 2026-03-19 | 2051 |  | RGA - STRUCTURE | 7853582 |
| 2053 | 40100.40200.40600.53500.55300.61900.62900.396800.2629000 | Concreting | 1d | 2026-03-20 | 2026-03-20 | 2052 |  | RGA - STRUCTURE | 7853592 |

Notes:
- 2036: AVg Slab Cycle of 21 days
- 2039: AVg Slab Cycle of 21 days
- 2042: AVg Slab Cycle of 21 days

| ID | WBS | Task | Duration | Start | Finish | Predecessors | Constraint | Calendar | Unique_Task_ID |
| --- | --- | --- | --- | --- | --- | --- | --- | --- | --- |
| 2054 | 40100.40200.40600.53500.55300.61900.62900.396900 | **7th Floor slab** | 9d | 2026-03-21 | 2026-03-29 |  | start no earlier than 2026-03-21 | RGA - STRUCTURE | 7809942 |
| 2055 | 40100.40200.40600.53500.55300.61900.62900.396900.2629100 | Wall rebar &Form work | 4d | 2026-03-21 | 2026-03-24 | 2053 |  | RGA - STRUCTURE | 7853602 |
| 2056 | 40100.40200.40600.53500.55300.61900.62900.396900.2629200 | Slab formwork & rebar | 4d | 2026-03-25 | 2026-03-28 | 2055 |  | RGA - STRUCTURE | 7853612 |
| 2057 | 40100.40200.40600.53500.55300.61900.62900.396900.2629300 | Concreting | 1d | 2026-03-29 | 2026-03-29 | 2056 |  | RGA - STRUCTURE | 7853622 |
| 2058 | 40100.40200.40600.53500.55300.61900.62900.397000 | **8th Floor slab** | 9d | 2026-03-30 | 2026-04-07 |  | start no earlier than 2026-03-30 | RGA - STRUCTURE | 7809952 |
| 2059 | 40100.40200.40600.53500.55300.61900.62900.397000.2629400 | Wall rebar &Form work | 4d | 2026-03-30 | 2026-04-02 | 2057 |  | RGA - STRUCTURE | 7853632 |
| 2060 | 40100.40200.40600.53500.55300.61900.62900.397000.2629500 | Slab formwork & rebar | 4d | 2026-04-03 | 2026-04-06 | 2059 |  | RGA - STRUCTURE | 7853642 |
| 2061 | 40100.40200.40600.53500.55300.61900.62900.397000.2629600 | Concreting | 1d | 2026-04-07 | 2026-04-07 | 2060 |  | RGA - STRUCTURE | 7853652 |
| 2062 | 40100.40200.40600.53500.55300.61900.62900.397100 | **9th Floor slab** | 9d | 2026-04-08 | 2026-04-16 |  | start no earlier than 2026-04-08 | RGA - STRUCTURE | 7809962 |
| 2063 | 40100.40200.40600.53500.55300.61900.62900.397100.2629700 | Wall rebar &Form work | 4d | 2026-04-08 | 2026-04-11 | 2061 |  | RGA - STRUCTURE | 7853662 |
| 2064 | 40100.40200.40600.53500.55300.61900.62900.397100.2629800 | Slab formwork & rebar | 4d | 2026-04-12 | 2026-04-15 | 2063 |  | RGA - STRUCTURE | 7853672 |
| 2065 | 40100.40200.40600.53500.55300.61900.62900.397100.2629900 | Concreting | 1d | 2026-04-16 | 2026-04-16 | 2064 |  | RGA - STRUCTURE | 7853682 |
| 2066 | 40100.40200.40600.53500.55300.61900.62900.397200 | **10th Floor slab** | 9d | 2026-04-17 | 2026-04-25 |  | start no earlier than 2026-04-17 | RGA - STRUCTURE | 7809972 |
| 2067 | 40100.40200.40600.53500.55300.61900.62900.397200.2630000 | Wall rebar &Form work | 4d | 2026-04-17 | 2026-04-20 | 2065 |  | RGA - STRUCTURE | 7853692 |
| 2068 | 40100.40200.40600.53500.55300.61900.62900.397200.2630100 | Slab formwork & rebar | 4d | 2026-04-21 | 2026-04-24 | 2067 |  | RGA - STRUCTURE | 7853702 |
| 2069 | 40100.40200.40600.53500.55300.61900.62900.397200.2630200 | Concreting | 1d | 2026-04-25 | 2026-04-25 | 2068 |  | RGA - STRUCTURE | 7853712 |
| 2070 | 40100.40200.40600.53500.55300.61900.62900.397300 | **11th Floor slab** | 9d | 2026-04-26 | 2026-05-05 |  | start no earlier than 2026-04-26 | RGA - STRUCTURE | 7809982 |
| 2071 | 40100.40200.40600.53500.55300.61900.62900.397300.2630300 | Wall rebar &Form work | 4d | 2026-04-26 | 2026-04-29 | 2069 |  | RGA - STRUCTURE | 7853722 |
| 2072 | 40100.40200.40600.53500.55300.61900.62900.397300.2630400 | Slab formwork & rebar | 4d | 2026-04-30 | 2026-05-04 | 2071 |  | RGA - STRUCTURE | 7853732 |
| 2073 | 40100.40200.40600.53500.55300.61900.62900.397300.2630500 | Concreting | 1d | 2026-05-05 | 2026-05-05 | 2072 |  | RGA - STRUCTURE | 7853742 |
| 2074 | 40100.40200.40600.53500.55300.61900.62900.397400 | **12th Floor slab** | 9d | 2026-05-06 | 2026-05-14 |  | start no earlier than 2026-05-06 | RGA - STRUCTURE | 7809992 |
| 2075 | 40100.40200.40600.53500.55300.61900.62900.397400.2630600 | Wall rebar &Form work | 4d | 2026-05-06 | 2026-05-09 | 2073 |  | RGA - STRUCTURE | 7853752 |
| 2076 | 40100.40200.40600.53500.55300.61900.62900.397400.2630700 | Slab formwork & rebar | 4d | 2026-05-10 | 2026-05-13 | 2075 |  | RGA - STRUCTURE | 7853762 |
| 2077 | 40100.40200.40600.53500.55300.61900.62900.397400.2630800 | Concreting | 1d | 2026-05-14 | 2026-05-14 | 2076 |  | RGA - STRUCTURE | 7853772 |

Notes:
- 2074: AVg Slab Cycle of 21 days

| ID | WBS | Task | Duration | Start | Finish | Predecessors | Constraint | Calendar | Unique_Task_ID |
| --- | --- | --- | --- | --- | --- | --- | --- | --- | --- |
| 2078 | 40100.40200.40600.53500.55300.61900.62900.397500 | **13th Floor slab** | 9d | 2026-05-15 | 2026-05-23 |  | start no earlier than 2026-05-15 | RGA - STRUCTURE | 7810002 |
| 2079 | 40100.40200.40600.53500.55300.61900.62900.397500.2630900 | Wall rebar &Form work | 4d | 2026-05-15 | 2026-05-18 | 2077 |  | RGA - STRUCTURE | 7853782 |
| 2080 | 40100.40200.40600.53500.55300.61900.62900.397500.2631000 | Slab formwork & rebar | 4d | 2026-05-19 | 2026-05-22 | 2079 |  | RGA - STRUCTURE | 7853792 |
| 2081 | 40100.40200.40600.53500.55300.61900.62900.397500.2631100 | Concreting | 1d | 2026-05-23 | 2026-05-23 | 2080 |  | RGA - STRUCTURE | 7853802 |
| 2082 | 40100.40200.40600.53500.55300.61900.62900.397600 | **14th Floor slab** | 9d | 2026-05-24 | 2026-06-01 |  | start no earlier than 2026-05-24 | RGA - STRUCTURE | 7810012 |
| 2083 | 40100.40200.40600.53500.55300.61900.62900.397600.2631200 | Wall rebar &Form work | 4d | 2026-05-24 | 2026-05-27 | 2081 |  | RGA - STRUCTURE | 7853812 |
| 2084 | 40100.40200.40600.53500.55300.61900.62900.397600.2631300 | Slab formwork & rebar | 4d | 2026-05-28 | 2026-05-31 | 2083 |  | RGA - STRUCTURE | 7853822 |
| 2085 | 40100.40200.40600.53500.55300.61900.62900.397600.2631400 | Concreting | 1d | 2026-06-01 | 2026-06-01 | 2084 |  | RGA - STRUCTURE | 7853832 |
| 2086 | 40100.40200.40600.53500.55300.61900.62900.397700 | **15th Floor slab** | 9d | 2026-06-02 | 2026-06-10 |  | start no earlier than 2026-06-02 | RGA - STRUCTURE | 7810022 |
| 2087 | 40100.40200.40600.53500.55300.61900.62900.397700.2631500 | Wall rebar &Form work | 4d | 2026-06-02 | 2026-06-05 | 2085 |  | RGA - STRUCTURE | 7853842 |
| 2088 | 40100.40200.40600.53500.55300.61900.62900.397700.2631600 | Slab formwork & rebar | 4d | 2026-06-06 | 2026-06-09 | 2087 |  | RGA - STRUCTURE | 7853852 |
| 2089 | 40100.40200.40600.53500.55300.61900.62900.397700.2631700 | Concreting | 1d | 2026-06-10 | 2026-06-10 | 2088 |  | RGA - STRUCTURE | 7853862 |
| 2090 | 40100.40200.40600.53500.55300.61900.62900.397800 | **16th Floor slab** | 9d | 2026-06-11 | 2026-06-23 |  | start no earlier than 2026-06-11 | RGA - STRUCTURE | 7810032 |
| 2091 | 40100.40200.40600.53500.55300.61900.62900.397800.2631800 | Wall rebar &Form work | 4d | 2026-06-11 | 2026-06-14 | 2089 |  | RGA - STRUCTURE | 7853872 |
| 2092 | 40100.40200.40600.53500.55300.61900.62900.397800.2631900 | Slab formwork & rebar | 4d | 2026-06-15 | 2026-06-21 | 2091 |  | RGA - STRUCTURE | 7853882 |
| 2093 | 40100.40200.40600.53500.55300.61900.62900.397800.2632000 | Concreting | 1d | 2026-06-22 | 2026-06-23 | 2092 |  | RGA - STRUCTURE | 7853892 |
| 2094 | 40100.40200.40600.53500.55300.61900.62900.397900 | **17th Floor slab** | 9d | 2026-06-24 | 2026-07-11 |  | start no earlier than 2026-06-24 | RGA - STRUCTURE | 7810042 |
| 2095 | 40100.40200.40600.53500.55300.61900.62900.397900.2632100 | Wall rebar &Form work | 4d | 2026-06-24 | 2026-07-01 | 2093 |  | RGA - STRUCTURE | 7853902 |
| 2096 | 40100.40200.40600.53500.55300.61900.62900.397900.2632200 | Slab formwork & rebar | 4d | 2026-07-02 | 2026-07-09 | 2095 |  | RGA - STRUCTURE | 7853912 |
| 2097 | 40100.40200.40600.53500.55300.61900.62900.397900.2632300 | Concreting | 1d | 2026-07-10 | 2026-07-11 | 2096 |  | RGA - STRUCTURE | 7853922 |
| 2098 | 40100.40200.40600.53500.55300.61900.62900.398000 | **18th Floor slab** | 9d | 2026-07-12 | 2026-07-22 |  | start no earlier than 2026-07-12 | RGA - STRUCTURE | 7810052 |
| 2099 | 40100.40200.40600.53500.55300.61900.62900.398000.2632400 | Wall rebar &Form work | 4d | 2026-07-12 | 2026-07-17 | 2097 |  | RGA - STRUCTURE | 7853932 |
| 2100 | 40100.40200.40600.53500.55300.61900.62900.398000.2632500 | Slab formwork & rebar | 4d | 2026-07-18 | 2026-07-21 | 2099 |  | RGA - STRUCTURE | 7853942 |
| 2101 | 40100.40200.40600.53500.55300.61900.62900.398000.2632600 | Concreting | 1d | 2026-07-22 | 2026-07-22 | 2100 |  | RGA - STRUCTURE | 7853952 |

Notes:
- 2078: AVg Slab Cycle of 21 days
- 2082: AVg Slab Cycle of 21 days

| ID | WBS | Task | Duration | Start | Finish | Predecessors | Constraint | Calendar | Unique_Task_ID |
| --- | --- | --- | --- | --- | --- | --- | --- | --- | --- |
| 2102 | 40100.40200.40600.53500.55300.61900.62900.398100 | **19th Floor slab** | 8d | 2026-07-23 | 2026-07-30 |  | start no earlier than 2026-07-23 | RGA - STRUCTURE | 7810062 |
| 2103 | 40100.40200.40600.53500.55300.61900.62900.398100.2632700 | Wall rebar &Form work | 4d | 2026-07-23 | 2026-07-26 | 2101 |  | RGA - STRUCTURE | 7853962 |
| 2104 | 40100.40200.40600.53500.55300.61900.62900.398100.2632800 | Slab formwork & rebar | 3d | 2026-07-27 | 2026-07-29 | 2103 |  | RGA - STRUCTURE | 7853972 |
| 2105 | 40100.40200.40600.53500.55300.61900.62900.398100.2632900 | Concreting | 1d | 2026-07-30 | 2026-07-30 | 2104 |  | RGA - STRUCTURE | 7853982 |
| 2106 | 40100.40200.40600.53500.55300.61900.62900.398200 | **20th Floor slab (Refuge Floor)** | 12d | 2026-07-31 | 2026-08-11 |  | start no earlier than 2026-07-31 | RGA - STRUCTURE | 7810072 |
| 2107 | 40100.40200.40600.53500.55300.61900.62900.398200.2633000 | Wall rebar &Form work | 6d | 2026-07-31 | 2026-08-05 | 2105 |  | RGA - STRUCTURE | 7853992 |
| 2108 | 40100.40200.40600.53500.55300.61900.62900.398200.2633100 | Slab formwork & rebar | 5d | 2026-08-06 | 2026-08-10 | 2107 |  | RGA - STRUCTURE | 7854002 |
| 2109 | 40100.40200.40600.53500.55300.61900.62900.398200.2633200 | Concreting | 1d | 2026-08-11 | 2026-08-11 | 2108 |  | RGA - STRUCTURE | 7854012 |
| 2110 | 40100.40200.40600.53500.55300.61900.62900.398300 | **21th Floor slab** | 8d | 2026-08-12 | 2026-08-20 |  | start no earlier than 2026-08-12 | RGA - STRUCTURE | 7810082 |
| 2111 | 40100.40200.40600.53500.55300.61900.62900.398300.2633300 | Wall rebar &Form work | 4d | 2026-08-12 | 2026-08-16 | 2109 |  | RGA - STRUCTURE | 7854022 |
| 2112 | 40100.40200.40600.53500.55300.61900.62900.398300.2633400 | Slab formwork & rebar | 3d | 2026-08-17 | 2026-08-19 | 2111 |  | RGA - STRUCTURE | 7854032 |
| 2113 | 40100.40200.40600.53500.55300.61900.62900.398300.2633500 | Concreting | 1d | 2026-08-20 | 2026-08-20 | 2112 |  | RGA - STRUCTURE | 7854042 |
| 2114 | 40100.40200.40600.53500.55300.61900.62900.398400 | **22th Floor slab** | 8d | 2026-08-21 | 2026-08-28 |  | start no earlier than 2026-08-21 | RGA - STRUCTURE | 7810092 |
| 2115 | 40100.40200.40600.53500.55300.61900.62900.398400.2633600 | Wall rebar &Form work | 4d | 2026-08-21 | 2026-08-24 | 2113 |  | RGA - STRUCTURE | 7854052 |
| 2116 | 40100.40200.40600.53500.55300.61900.62900.398400.2633700 | Slab formwork & rebar | 3d | 2026-08-25 | 2026-08-27 | 2115 |  | RGA - STRUCTURE | 7854062 |
| 2117 | 40100.40200.40600.53500.55300.61900.62900.398400.2633800 | Concreting | 1d | 2026-08-28 | 2026-08-28 | 2116 |  | RGA - STRUCTURE | 7854072 |
| 2118 | 40100.40200.40600.53500.55300.61900.62900.398500 | **23th Floor slab** | 8d | 2026-08-29 | 2026-09-05 |  | start no earlier than 2026-08-29 | RGA - STRUCTURE | 7810102 |
| 2119 | 40100.40200.40600.53500.55300.61900.62900.398500.2633900 | Wall rebar &Form work | 4d | 2026-08-29 | 2026-09-01 | 2117 |  | RGA - STRUCTURE | 7854082 |
| 2120 | 40100.40200.40600.53500.55300.61900.62900.398500.2634000 | Slab formwork & rebar | 3d | 2026-09-02 | 2026-09-04 | 2119 |  | RGA - STRUCTURE | 7854092 |
| 2121 | 40100.40200.40600.53500.55300.61900.62900.398500.2634100 | Concreting | 1d | 2026-09-05 | 2026-09-05 | 2120 |  | RGA - STRUCTURE | 7854102 |
| 2122 | 40100.40200.40600.53500.55300.61900.62900.398600 | **24th Floor slab** | 8d | 2026-09-06 | 2026-09-13 |  | start no earlier than 2026-09-06 | RGA - STRUCTURE | 7810112 |
| 2123 | 40100.40200.40600.53500.55300.61900.62900.398600.2634200 | Wall rebar &Form work | 4d | 2026-09-06 | 2026-09-09 | 2121 |  | RGA - STRUCTURE | 7854112 |
| 2124 | 40100.40200.40600.53500.55300.61900.62900.398600.2634300 | Slab formwork & rebar | 3d | 2026-09-10 | 2026-09-12 | 2123 |  | RGA - STRUCTURE | 7854122 |
| 2125 | 40100.40200.40600.53500.55300.61900.62900.398600.2634400 | Concreting | 1d | 2026-09-13 | 2026-09-13 | 2124 |  | RGA - STRUCTURE | 7854132 |

| ID | WBS | Task | Duration | Start | Finish | Predecessors | Constraint | Calendar | Unique_Task_ID |
| --- | --- | --- | --- | --- | --- | --- | --- | --- | --- |
| 2126 | 40100.40200.40600.53500.55300.61900.62900.398700 | **25th Floor slab** | 8d | 2026-09-14 | 2026-09-21 |  | start no earlier than 2026-09-14 | RGA - STRUCTURE | 7810122 |
| 2127 | 40100.40200.40600.53500.55300.61900.62900.398700.2634500 | Wall rebar &Form work | 4d | 2026-09-14 | 2026-09-17 | 2125 |  | RGA - STRUCTURE | 7854142 |
| 2128 | 40100.40200.40600.53500.55300.61900.62900.398700.2634600 | Slab formwork & rebar | 3d | 2026-09-18 | 2026-09-20 | 2127 |  | RGA - STRUCTURE | 7854152 |
| 2129 | 40100.40200.40600.53500.55300.61900.62900.398700.2634700 | Concreting | 1d | 2026-09-21 | 2026-09-21 | 2128 |  | RGA - STRUCTURE | 7854162 |
| 2130 | 40100.40200.40600.53500.55300.61900.62900.398800 | **Terrace Floor slab work** | 12d | 2026-09-22 | 2026-10-04 |  | start no earlier than 2026-09-22 | RGA - STRUCTURE | 7810152 |
| 2131 | 40100.40200.40600.53500.55300.61900.62900.398800.2634800 | Wall rebar &Form work | 6d | 2026-09-22 | 2026-09-27 | 2129 |  | RGA - STRUCTURE | 7854232 |
| 2132 | 40100.40200.40600.53500.55300.61900.62900.398800.2634900 | Slab formwork & rebar | 5d | 2026-09-28 | 2026-10-03 | 2131 |  | RGA - STRUCTURE | 7854242 |
| 2133 | 40100.40200.40600.53500.55300.61900.62900.398800.2635000 | Concreting | 1d | 2026-10-04 | 2026-10-04 | 2132 |  | RGA - STRUCTURE | 7854252 |
| 2134 | 40100.40200.40600.53500.55300.61900.253200 | **RCC work above Terrace** | 49d | 2026-10-05 | 2026-11-29 |  | start no earlier than 2026-10-05 | RGA - STRUCTURE | 7806962 |
| 2135 | 40100.40200.40600.53500.55300.61900.253200.369800 | **STAIRCASE & OHT CORE** | 49d | 2026-10-05 | 2026-11-29 |  | start no earlier than 2026-10-05 | RGA - STRUCTURE | 7808492 |
| 2136 | 40100.40200.40600.53500.55300.61900.253200.369800.2635100 | STAIRCASE HEAD ROOM | 10d | 2026-10-05 | 2026-10-14 | 2133 |  | RGA - STRUCTURE | 7854262 |
| 2137 | 40100.40200.40600.53500.55300.61900.253200.369800.2635200 | OHT | 25d | 2026-10-15 | 2026-11-08 | 2136 |  | RGA - STRUCTURE | 7854272 |
| 2138 | 40100.40200.40600.53500.55300.61900.253200.369800.2635300 | SHAFT COVERING SLAB | 10d | 2026-10-05 | 2026-10-14 | 2133 |  | RGA - STRUCTURE | 7854282 |
| 2139 | 40100.40200.40600.53500.55300.61900.253200.369800.2635400 | DESHUTTERING OF OHT TOP SLAB | 7d | 2026-11-16 | 2026-11-29 | 2137FS+7d |  | RGA - STRUCTURE | 7854292 |
| 2140 | 40100.40200.40600.53500.55300.61900.253200.398900 | **LMR BOTTOM & TOP SLAB** | 43d | 2026-10-05 | 2026-11-17 |  | start no earlier than 2026-10-05 | RGA - STRUCTURE | 7810162 |
| 2141 | 40100.40200.40600.53500.55300.61900.253200.398900.2635500 | LMR COLUMNS / WALLS | 15d | 2026-10-05 | 2026-10-19 | 2133 |  | RGA - STRUCTURE | 7854302 |
| 2142 | 40100.40200.40600.53500.55300.61900.253200.398900.2635600 | LMR TOP SLAB | 20d | 2026-10-20 | 2026-11-08 | 2141 |  | RGA - STRUCTURE | 7854312 |
| 2143 | 40100.40200.40600.53500.55300.61900.253200.398900.2635700 | DESHUTTERING | 8d | 2026-11-09 | 2026-11-17 | 2142 |  | RGA - STRUCTURE | 7854322 |
| 2144 | 40100.40200.40600.53500.55300.59000 | **Civil Finishing works (Brick work, Plaster,conduiting, concled plumbing, waterproofing)** | 811.5d | 2025-04-01 | 2027-06-21 |  | start no earlier than 2025-04-01 | RGA -FINISHING | 7362185 |
| 2145 | 40100.40200.40600.53500.55300.59000.60900 | **Flat finishing works** | 648d | 2025-04-01 | 2027-01-08 |  | start no earlier than 2025-04-01 | RGA -FINISHING | 7362205 |
| 2146 | 40100.40200.40600.53500.55300.59000.60900.325400 | **Ground FLOOR** | 129d | 2025-11-20 | 2026-03-28 |  | start no earlier than 2025-11-20 | RGA -FINISHING | 7807592 |
| 2147 | 40100.40200.40600.53500.55300.59000.60900.325400.2635800 | BALCONY RAILING FIXING | 9d | 2026-01-04 | 2026-01-12 | 2041FS-31d |  | RGA -FINISHING | 7854332 |
| 2148 | 40100.40200.40600.53500.55300.59000.60900.325400.2635900 | Block work | 8d | 2026-03-21 | 2026-03-28 | 2152 |  | RGA -FINISHING | 7854342 |
| 2149 | 40100.40200.40600.53500.55300.59000.60900.325400.2636000 | CONCEALED ELEC CONDUITING & ITS FINISHING | 5d | 2025-11-20 | 2025-11-24 | 1993 |  | RGA -FINISHING | 7854352 |
| 2150 | 40100.40200.40600.53500.55300.59000.60900.325400.2636100 | PLASTER APPLICATION | 6d | 2026-02-27 | 2026-03-04 | 2341FS+30d |  | RGA -FINISHING | 7854362 |
| 2151 | 40100.40200.40600.53500.55300.59000.60900.325400.2636200 | CONCEALED PLUMBING | 8d | 2026-03-05 | 2026-03-12 | 2150 |  | RGA -FINISHING | 7854372 |
| 2152 | 40100.40200.40600.53500.55300.59000.60900.325400.2636300 | WATERPROOFING WORK FOR TOILETS, KITCHEN SUNK & PLANTERS | 8d | 2026-03-13 | 2026-03-20 | 2151 |  | RGA -FINISHING | 7854382 |

Notes:
- 2130: AVg Slab Cycle of 21 days

| ID | WBS | Task | Duration | Start | Finish | Predecessors | Constraint | Calendar | Unique_Task_ID |
| --- | --- | --- | --- | --- | --- | --- | --- | --- | --- |
| 2153 | 40100.40200.40600.53500.55300.59000.60900.325300 | **1ST FLOOR** | 114d | 2025-12-10 | 2026-04-02 |  | start no earlier than 2025-12-10 | RGA -FINISHING | 7807602 |
| 2154 | 40100.40200.40600.53500.55300.59000.60900.325300.2636400 | BALCONY RAILING FIXING | 9d | 2026-01-25 | 2026-02-02 | 2045FS-31d |  | RGA -FINISHING | 7854392 |
| 2155 | 40100.40200.40600.53500.55300.59000.60900.325300.2636500 | Block work | 8d | 2026-03-26 | 2026-04-02 | 2159 |  | RGA -FINISHING | 7854402 |
| 2156 | 40100.40200.40600.53500.55300.59000.60900.325300.2636600 | CONCEALED ELEC CONDUITING & ITS FINISHING | 5d | 2025-12-10 | 2025-12-14 | 2035FS-5d |  | RGA -FINISHING | 7854412 |
| 2157 | 40100.40200.40600.53500.55300.59000.60900.325300.2636700 | PLASTER APPLICATION | 6d | 2026-03-04 | 2026-03-09 | 2354FS+23d |  | RGA -FINISHING | 7854422 |
| 2158 | 40100.40200.40600.53500.55300.59000.60900.325300.2636800 | CONCEALED PLUMBING | 8d | 2026-03-10 | 2026-03-17 | 2157 |  | RGA -FINISHING | 7854432 |
| 2159 | 40100.40200.40600.53500.55300.59000.60900.325300.2636900 | WATERPROOFING WORK FOR TOILETS, KITCHEN SUNK & PLANTERS | 8d | 2026-03-18 | 2026-03-25 | 2158 |  | RGA -FINISHING | 7854442 |
| 2160 | 40100.40200.40600.53500.55300.59000.60900.325200 | **2nd FLOOR** | 97d | 2026-01-04 | 2026-04-10 |  | start no earlier than 2026-01-04 | RGA -FINISHING | 7362915 |
| 2161 | 40100.40200.40600.53500.55300.59000.60900.325200.2637000 | BALCONY RAILING FIXING | 9d | 2026-02-10 | 2026-02-18 | 2049FS-30d |  | RGA -FINISHING | 7854452 |
| 2162 | 40100.40200.40600.53500.55300.59000.60900.325200.2637100 | Block work | 8d | 2026-04-03 | 2026-04-10 | 2166 |  | RGA -FINISHING | 7854462 |
| 2163 | 40100.40200.40600.53500.55300.59000.60900.325200.2637200 | CONCEALED ELEC CONDUITING & ITS FINISHING | 5d | 2026-01-04 | 2026-01-08 | 2038FS-5d |  | RGA -FINISHING | 7854472 |
| 2164 | 40100.40200.40600.53500.55300.59000.60900.325200.2637300 | PLASTER APPLICATION | 6d | 2026-03-12 | 2026-03-17 | 2367FS+15d |  | RGA -FINISHING | 7854482 |
| 2165 | 40100.40200.40600.53500.55300.59000.60900.325200.2637400 | CONCEALED PLUMBING | 8d | 2026-03-18 | 2026-03-25 | 2164 |  | RGA -FINISHING | 7854492 |
| 2166 | 40100.40200.40600.53500.55300.59000.60900.325200.2637500 | WATERPROOFING WORK FOR TOILETS, KITCHEN SUNK & PLANTERS | 8d | 2026-03-26 | 2026-04-02 | 2165 |  | RGA -FINISHING | 7854502 |
| 2167 | 40100.40200.40600.53500.55300.59000.60900.325100 | **3rd FLOOR** | 85d | 2026-01-30 | 2026-04-24 |  | start no earlier than 2026-01-30 | RGA -FINISHING | 7362925 |
| 2168 | 40100.40200.40600.53500.55300.59000.60900.325100.2637600 | BALCONY RAILING FIXING | 9d | 2026-03-06 | 2026-03-14 | 2053FS-15d |  | RGA -FINISHING | 7854512 |
| 2169 | 40100.40200.40600.53500.55300.59000.60900.325100.2637700 | Block work | 8d | 2026-04-17 | 2026-04-24 | 2173 |  | RGA -FINISHING | 7854522 |
| 2170 | 40100.40200.40600.53500.55300.59000.60900.325100.2637800 | CONCEALED ELEC CONDUITING & ITS FINISHING | 5d | 2026-01-30 | 2026-02-03 | 2041FS-5d |  | RGA -FINISHING | 7854532 |
| 2171 | 40100.40200.40600.53500.55300.59000.60900.325100.2637900 | PLASTER APPLICATION | 6d | 2026-03-26 | 2026-03-31 | 2380FS+5d |  | RGA -FINISHING | 7854542 |
| 2172 | 40100.40200.40600.53500.55300.59000.60900.325100.2638000 | CONCEALED PLUMBING | 8d | 2026-04-01 | 2026-04-08 | 2171 |  | RGA -FINISHING | 7854552 |
| 2173 | 40100.40200.40600.53500.55300.59000.60900.325100.2638100 | WATERPROOFING WORK FOR TOILETS, KITCHEN SUNK & PLANTERS | 8d | 2026-04-09 | 2026-04-16 | 2172 |  | RGA -FINISHING | 7854562 |
| 2174 | 40100.40200.40600.53500.55300.59000.60900.325000 | **4th FLOOR** | 72d | 2026-02-20 | 2026-05-02 |  | start no earlier than 2026-02-20 | RGA -FINISHING | 7362935 |
| 2175 | 40100.40200.40600.53500.55300.59000.60900.325000.2638200 | BALCONY RAILING FIXING | 9d | 2026-03-15 | 2026-03-23 | 2057FS-15d |  | RGA -FINISHING | 7854572 |
| 2176 | 40100.40200.40600.53500.55300.59000.60900.325000.2638300 | Block work | 8d | 2026-04-25 | 2026-05-02 | 2180 |  | RGA -FINISHING | 7854582 |
| 2177 | 40100.40200.40600.53500.55300.59000.60900.325000.2638400 | CONCEALED ELEC CONDUITING & ITS FINISHING | 5d | 2026-02-20 | 2026-02-24 | 2045FS-5d |  | RGA -FINISHING | 7854592 |
| 2178 | 40100.40200.40600.53500.55300.59000.60900.325000.2638500 | PLASTER APPLICATION | 6d | 2026-04-03 | 2026-04-08 | 2393FS+4d |  | RGA -FINISHING | 7854602 |
| 2179 | 40100.40200.40600.53500.55300.59000.60900.325000.2638600 | CONCEALED PLUMBING | 8d | 2026-04-09 | 2026-04-16 | 2178 |  | RGA -FINISHING | 7854612 |
| 2180 | 40100.40200.40600.53500.55300.59000.60900.325000.2638700 | WATERPROOFING WORK FOR TOILETS, KITCHEN SUNK & PLANTERS | 8d | 2026-04-17 | 2026-04-24 | 2179 |  | RGA -FINISHING | 7854622 |

| ID | WBS | Task | Duration | Start | Finish | Predecessors | Constraint | Calendar | Unique_Task_ID |
| --- | --- | --- | --- | --- | --- | --- | --- | --- | --- |
| 2181 | 40100.40200.40600.53500.55300.59000.60900.324900 | **5th FLOOR** | 66d | 2026-03-07 | 2026-05-11 |  | start no earlier than 2026-03-07 | RGA -FINISHING | 7362945 |
| 2182 | 40100.40200.40600.53500.55300.59000.60900.324900.2638800 | BALCONY RAILING FIXING | 9d | 2026-03-24 | 2026-04-01 | 2061FS-15d |  | RGA -FINISHING | 7854632 |
| 2183 | 40100.40200.40600.53500.55300.59000.60900.324900.2638900 | Block work | 8d | 2026-05-04 | 2026-05-11 | 2187 |  | RGA -FINISHING | 7854642 |
| 2184 | 40100.40200.40600.53500.55300.59000.60900.324900.2639000 | CONCEALED ELEC CONDUITING & ITS FINISHING | 5d | 2026-03-07 | 2026-03-11 | 2049FS-5d |  | RGA -FINISHING | 7854652 |
| 2185 | 40100.40200.40600.53500.55300.59000.60900.324900.2639100 | PLASTER APPLICATION | 6d | 2026-04-12 | 2026-04-17 | 2406FS+4d |  | RGA -FINISHING | 7854662 |
| 2186 | 40100.40200.40600.53500.55300.59000.60900.324900.2639200 | CONCEALED PLUMBING | 8d | 2026-04-18 | 2026-04-25 | 2185 |  | RGA -FINISHING | 7854672 |
| 2187 | 40100.40200.40600.53500.55300.59000.60900.324900.2639300 | WATERPROOFING WORK FOR TOILETS, KITCHEN SUNK & PLANTERS | 8d | 2026-04-26 | 2026-05-03 | 2186 |  | RGA -FINISHING | 7854682 |
| 2188 | 40100.40200.40600.53500.55300.59000.60900.324800 | **6th FLOOR** | 66d | 2026-03-16 | 2026-05-20 |  | start no earlier than 2026-03-16 | RGA -FINISHING | 7362955 |
| 2189 | 40100.40200.40600.53500.55300.59000.60900.324800.2639400 | BALCONY RAILING FIXING | 9d | 2026-04-02 | 2026-04-10 | 2065FS-15d |  | RGA -FINISHING | 7854692 |
| 2190 | 40100.40200.40600.53500.55300.59000.60900.324800.2639500 | Block work | 8d | 2026-05-13 | 2026-05-20 | 2194 |  | RGA -FINISHING | 7854702 |
| 2191 | 40100.40200.40600.53500.55300.59000.60900.324800.2639600 | CONCEALED ELEC CONDUITING & ITS FINISHING | 5d | 2026-03-16 | 2026-03-20 | 2053FS-5d |  | RGA -FINISHING | 7854712 |
| 2192 | 40100.40200.40600.53500.55300.59000.60900.324800.2639700 | PLASTER APPLICATION | 6d | 2026-04-21 | 2026-04-26 | 2419FS+4d |  | RGA -FINISHING | 7854722 |
| 2193 | 40100.40200.40600.53500.55300.59000.60900.324800.2639800 | CONCEALED PLUMBING | 8d | 2026-04-27 | 2026-05-04 | 2192 |  | RGA -FINISHING | 7854732 |
| 2194 | 40100.40200.40600.53500.55300.59000.60900.324800.2639900 | WATERPROOFING WORK FOR TOILETS, KITCHEN SUNK & PLANTERS | 8d | 2026-05-05 | 2026-05-12 | 2193 |  | RGA -FINISHING | 7854742 |
| 2195 | 40100.40200.40600.53500.55300.59000.60900.324700 | **7th FLOOR** | 66d | 2026-03-25 | 2026-05-29 |  | start no earlier than 2026-03-25 | RGA -FINISHING | 7362965 |
| 2196 | 40100.40200.40600.53500.55300.59000.60900.324700.2640000 | BALCONY RAILING FIXING | 9d | 2026-04-11 | 2026-04-19 | 2069FS-15d |  | RGA -FINISHING | 7854752 |
| 2197 | 40100.40200.40600.53500.55300.59000.60900.324700.2640100 | Block work | 8d | 2026-05-22 | 2026-05-29 | 2201 |  | RGA -FINISHING | 7854762 |
| 2198 | 40100.40200.40600.53500.55300.59000.60900.324700.2640200 | CONCEALED ELEC CONDUITING & ITS FINISHING | 5d | 2026-03-25 | 2026-03-29 | 2057FS-5d |  | RGA -FINISHING | 7854772 |
| 2199 | 40100.40200.40600.53500.55300.59000.60900.324700.2640300 | PLASTER APPLICATION | 6d | 2026-04-30 | 2026-05-05 | 2432FS+4d |  | RGA -FINISHING | 7854782 |
| 2200 | 40100.40200.40600.53500.55300.59000.60900.324700.2640400 | CONCEALED PLUMBING | 8d | 2026-05-06 | 2026-05-13 | 2199 |  | RGA -FINISHING | 7854792 |
| 2201 | 40100.40200.40600.53500.55300.59000.60900.324700.2640500 | WATERPROOFING WORK FOR TOILETS, KITCHEN SUNK & PLANTERS | 8d | 2026-05-14 | 2026-05-21 | 2200 |  | RGA -FINISHING | 7854802 |
| 2202 | 40100.40200.40600.53500.55300.59000.60900.324600 | **8th FLOOR** | 66d | 2026-04-03 | 2026-06-07 |  | start no earlier than 2026-04-03 | RGA -FINISHING | 7362975 |
| 2203 | 40100.40200.40600.53500.55300.59000.60900.324600.2640600 | BALCONY RAILING FIXING | 9d | 2026-04-20 | 2026-04-28 | 2073FS-16d |  | RGA -FINISHING | 7854812 |
| 2204 | 40100.40200.40600.53500.55300.59000.60900.324600.2640700 | Block work | 8d | 2026-05-31 | 2026-06-07 | 2208 |  | RGA -FINISHING | 7854822 |
| 2205 | 40100.40200.40600.53500.55300.59000.60900.324600.2640800 | CONCEALED ELEC CONDUITING & ITS FINISHING | 5d | 2026-04-03 | 2026-04-07 | 2061FS-5d |  | RGA -FINISHING | 7854832 |
| 2206 | 40100.40200.40600.53500.55300.59000.60900.324600.2640900 | PLASTER APPLICATION | 6d | 2026-05-09 | 2026-05-14 | 2445FS+4d |  | RGA -FINISHING | 7854842 |
| 2207 | 40100.40200.40600.53500.55300.59000.60900.324600.2641000 | CONCEALED PLUMBING | 8d | 2026-05-15 | 2026-05-22 | 2206 |  | RGA -FINISHING | 7854852 |
| 2208 | 40100.40200.40600.53500.55300.59000.60900.324600.2641100 | WATERPROOFING WORK FOR TOILETS, KITCHEN SUNK & PLANTERS | 8d | 2026-05-23 | 2026-05-30 | 2207 |  | RGA -FINISHING | 7854862 |

| ID | WBS | Task | Duration | Start | Finish | Predecessors | Constraint | Calendar | Unique_Task_ID |
| --- | --- | --- | --- | --- | --- | --- | --- | --- | --- |
| 2209 | 40100.40200.40600.53500.55300.59000.60900.324500 | **9th FLOOR** | 66d | 2026-04-12 | 2026-06-16 |  | start no earlier than 2026-04-12 | RGA -FINISHING | 7362985 |
| 2210 | 40100.40200.40600.53500.55300.59000.60900.324500.2641200 | BALCONY RAILING FIXING | 9d | 2026-04-29 | 2026-05-07 | 2077FS-16d |  | RGA -FINISHING | 7854872 |
| 2211 | 40100.40200.40600.53500.55300.59000.60900.324500.2641300 | Block work | 8d | 2026-06-09 | 2026-06-16 | 2215 |  | RGA -FINISHING | 7854882 |
| 2212 | 40100.40200.40600.53500.55300.59000.60900.324500.2641400 | CONCEALED ELEC CONDUITING & ITS FINISHING | 5d | 2026-04-12 | 2026-04-16 | 2065FS-5d |  | RGA -FINISHING | 7854892 |
| 2213 | 40100.40200.40600.53500.55300.59000.60900.324500.2641500 | PLASTER APPLICATION | 6d | 2026-05-18 | 2026-05-23 | 2458FS+4d |  | RGA -FINISHING | 7854902 |
| 2214 | 40100.40200.40600.53500.55300.59000.60900.324500.2641600 | CONCEALED PLUMBING | 8d | 2026-05-24 | 2026-05-31 | 2213 |  | RGA -FINISHING | 7854912 |
| 2215 | 40100.40200.40600.53500.55300.59000.60900.324500.2641700 | WATERPROOFING WORK FOR TOILETS, KITCHEN SUNK & PLANTERS | 8d | 2026-06-01 | 2026-06-08 | 2214 |  | RGA -FINISHING | 7854922 |
| 2216 | 40100.40200.40600.53500.55300.59000.60900.324400 | **10th FLOOR** | 67d | 2026-04-21 | 2026-06-26 |  | start no earlier than 2026-04-21 | RGA -FINISHING | 7362995 |
| 2217 | 40100.40200.40600.53500.55300.59000.60900.324400.2641800 | BALCONY RAILING FIXING | 9d | 2026-05-09 | 2026-05-17 | 2081FS-15d |  | RGA -FINISHING | 7854932 |
| 2218 | 40100.40200.40600.53500.55300.59000.60900.324400.2641900 | Block work | 8d | 2026-06-19 | 2026-06-26 | 2222 |  | RGA -FINISHING | 7854942 |
| 2219 | 40100.40200.40600.53500.55300.59000.60900.324400.2642000 | CONCEALED ELEC CONDUITING & ITS FINISHING | 5d | 2026-04-21 | 2026-04-25 | 2069FS-5d |  | RGA -FINISHING | 7854952 |
| 2220 | 40100.40200.40600.53500.55300.59000.60900.324400.2642100 | PLASTER APPLICATION | 6d | 2026-05-28 | 2026-06-02 | 2471FS+4d |  | RGA -FINISHING | 7854962 |
| 2221 | 40100.40200.40600.53500.55300.59000.60900.324400.2642200 | CONCEALED PLUMBING | 8d | 2026-06-03 | 2026-06-10 | 2220 |  | RGA -FINISHING | 7854972 |
| 2222 | 40100.40200.40600.53500.55300.59000.60900.324400.2642300 | WATERPROOFING WORK FOR TOILETS, KITCHEN SUNK & PLANTERS | 8d | 2026-06-11 | 2026-06-18 | 2221 |  | RGA -FINISHING | 7854982 |
| 2223 | 40100.40200.40600.53500.55300.59000.60900.324300 | **11th FLOOR** | 75d | 2026-04-30 | 2026-07-13 |  | start no earlier than 2026-04-30 | RGA -FINISHING | 7363005 |
| 2224 | 40100.40200.40600.53500.55300.59000.60900.324300.2642400 | BALCONY RAILING FIXING | 9d | 2026-05-26 | 2026-06-03 | 2085FS-7d |  | RGA -FINISHING | 7854992 |
| 2225 | 40100.40200.40600.53500.55300.59000.60900.324300.2642500 | Block work | 8d | 2026-07-06 | 2026-07-13 | 2229 |  | RGA -FINISHING | 7855002 |
| 2226 | 40100.40200.40600.53500.55300.59000.60900.324300.2642600 | CONCEALED ELEC CONDUITING & ITS FINISHING | 5d | 2026-04-30 | 2026-05-04 | 2073FS-6d |  | RGA -FINISHING | 7855012 |
| 2227 | 40100.40200.40600.53500.55300.59000.60900.324300.2642700 | PLASTER APPLICATION | 6d | 2026-06-14 | 2026-06-19 | 2484FS+4d |  | RGA -FINISHING | 7855022 |
| 2228 | 40100.40200.40600.53500.55300.59000.60900.324300.2642800 | CONCEALED PLUMBING | 8d | 2026-06-20 | 2026-06-27 | 2227 |  | RGA -FINISHING | 7855032 |
| 2229 | 40100.40200.40600.53500.55300.59000.60900.324300.2642900 | WATERPROOFING WORK FOR TOILETS, KITCHEN SUNK & PLANTERS | 8d | 2026-06-28 | 2026-07-05 | 2228 |  | RGA -FINISHING | 7855042 |
| 2230 | 40100.40200.40600.53500.55300.59000.60900.324200 | **12th FLOOR** | 66d | 2026-05-10 | 2026-07-14 |  | start no earlier than 2026-05-10 | RGA -FINISHING | 7363015 |
| 2231 | 40100.40200.40600.53500.55300.59000.60900.324200.2643000 | BALCONY RAILING FIXING | 9d | 2026-06-04 | 2026-06-12 | 2089FS-7d |  | RGA -FINISHING | 7855052 |
| 2232 | 40100.40200.40600.53500.55300.59000.60900.324200.2643100 | Block work | 8d | 2026-07-07 | 2026-07-14 | 2235 |  | RGA -FINISHING | 7855062 |
| 2233 | 40100.40200.40600.53500.55300.59000.60900.324200.2643200 | CONCEALED ELEC CONDUITING & ITS FINISHING | 5d | 2026-05-10 | 2026-05-14 | 2077FS-5d |  | RGA -FINISHING | 7855072 |
| 2234 | 40100.40200.40600.53500.55300.59000.60900.324200.2643300 | PLASTER APPLICATION | 6d | 2026-06-23 | 2026-06-28 | 2497FS+4d |  | RGA -FINISHING | 7855082 |
| 2235 | 40100.40200.40600.53500.55300.59000.60900.324200.2643400 | CONCEALED PLUMBING | 8d | 2026-06-29 | 2026-07-06 | 2234 |  | RGA -FINISHING | 7855092 |
| 2236 | 40100.40200.40600.53500.55300.59000.60900.324200.2643500 | WATERPROOFING WORK FOR TOILETS, KITCHEN SUNK & PLANTERS | 8d | 2026-07-07 | 2026-07-14 | 2235 |  | RGA -FINISHING | 7855102 |

| ID | WBS | Task | Duration | Start | Finish | Predecessors | Constraint | Calendar | Unique_Task_ID |
| --- | --- | --- | --- | --- | --- | --- | --- | --- | --- |
| 2237 | 40100.40200.40600.53500.55300.59000.60900.324100 | **13th FLOOR** | 85d | 2026-05-19 | 2026-08-11 |  | start no earlier than 2026-05-19 | RGA -FINISHING | 7363025 |
| 2238 | 40100.40200.40600.53500.55300.59000.60900.324100.2643600 | BALCONY RAILING FIXING | 9d | 2026-06-08 | 2026-06-16 | 2093FS-15.5d |  | RGA -FINISHING | 7855112 |
| 2239 | 40100.40200.40600.53500.55300.59000.60900.324100.2643700 | Block work | 8d | 2026-08-04 | 2026-08-11 | 2243 |  | RGA -FINISHING | 7371245 |
| 2240 | 40100.40200.40600.53500.55300.59000.60900.324100.2643800 | CONCEALED ELEC CONDUITING & ITS FINISHING | 5d | 2026-05-19 | 2026-05-23 | 2081FS-5d |  | RGA -FINISHING | 7371255 |
| 2241 | 40100.40200.40600.53500.55300.59000.60900.324100.2643900 | PLASTER APPLICATION | 15d | 2026-06-29 | 2026-07-13 | 2510FS+4d |  | RGA -FINISHING | 7371265 |
| 2242 | 40100.40200.40600.53500.55300.59000.60900.324100.2644000 | CONCEALED PLUMBING | 9d | 2026-07-14 | 2026-07-22 | 2241 |  | RGA -FINISHING | 7855122 |
| 2243 | 40100.40200.40600.53500.55300.59000.60900.324100.2644100 | WATERPROOFING WORK FOR TOILETS, KITCHEN SUNK & PLANTERS | 12d | 2026-07-23 | 2026-08-03 | 2242 |  | RGA -FINISHING | 7855132 |
| 2244 | 40100.40200.40600.53500.55300.59000.60900.324000 | **14th FLOOR** | 78d | 2026-05-28 | 2026-08-13 |  | start no earlier than 2026-05-28 | RGA -FINISHING | 7807612 |
| 2245 | 40100.40200.40600.53500.55300.59000.60900.324000.2644200 | BALCONY RAILING FIXING | 9d | 2026-06-14 | 2026-06-22 | 2097FS-27.5d |  | RGA -FINISHING | 7855142 |
| 2246 | 40100.40200.40600.53500.55300.59000.60900.324000.2644300 | Block work | 8d | 2026-08-06 | 2026-08-13 | 2250 |  | RGA -FINISHING | 7855152 |
| 2247 | 40100.40200.40600.53500.55300.59000.60900.324000.2644400 | CONCEALED ELEC CONDUITING & ITS FINISHING | 5d | 2026-05-28 | 2026-06-01 | 2085FS-5d |  | RGA -FINISHING | 7855162 |
| 2248 | 40100.40200.40600.53500.55300.59000.60900.324000.2644500 | PLASTER APPLICATION | 15d | 2026-07-01 | 2026-07-15 | 2523 |  | RGA -FINISHING | 7855172 |
| 2249 | 40100.40200.40600.53500.55300.59000.60900.324000.2644600 | CONCEALED PLUMBING | 9d | 2026-07-16 | 2026-07-24 | 2248 |  | RGA -FINISHING | 7855182 |
| 2250 | 40100.40200.40600.53500.55300.59000.60900.324000.2644700 | WATERPROOFING WORK FOR TOILETS, KITCHEN SUNK & PLANTERS | 12d | 2026-07-25 | 2026-08-05 | 2249 |  | RGA -FINISHING | 7855192 |
| 2251 | 40100.40200.40600.53500.55300.59000.60900.323900 | **15th FLOOR** | 85d | 2026-06-06 | 2026-08-29 |  | start no earlier than 2026-06-06 | RGA -FINISHING | 7807622 |
| 2252 | 40100.40200.40600.53500.55300.59000.60900.323900.2644800 | BALCONY RAILING FIXING | 9d | 2026-06-30 | 2026-07-08 | 2101FS-23d |  | RGA -FINISHING | 7855202 |
| 2253 | 40100.40200.40600.53500.55300.59000.60900.323900.2644900 | Block work | 8d | 2026-08-22 | 2026-08-29 | 2257 |  | RGA -FINISHING | 7855212 |
| 2254 | 40100.40200.40600.53500.55300.59000.60900.323900.2645000 | CONCEALED ELEC CONDUITING & ITS FINISHING | 5d | 2026-06-06 | 2026-06-10 | 2089FS-5d |  | RGA -FINISHING | 7855222 |
| 2255 | 40100.40200.40600.53500.55300.59000.60900.323900.2645100 | PLASTER APPLICATION | 15d | 2026-07-17 | 2026-07-31 | 2536 |  | RGA -FINISHING | 7855232 |
| 2256 | 40100.40200.40600.53500.55300.59000.60900.323900.2645200 | CONCEALED PLUMBING | 9d | 2026-08-01 | 2026-08-09 | 2255 |  | RGA -FINISHING | 7855242 |
| 2257 | 40100.40200.40600.53500.55300.59000.60900.323900.2645300 | WATERPROOFING WORK FOR TOILETS, KITCHEN SUNK & PLANTERS | 12d | 2026-08-10 | 2026-08-21 | 2256 |  | RGA -FINISHING | 7855252 |
| 2258 | 40100.40200.40600.53500.55300.59000.60900.323800 | **16th FLOOR** | 92d | 2026-06-15 | 2026-09-14 |  | start no earlier than 2026-06-15 | RGA -FINISHING | 7807632 |
| 2259 | 40100.40200.40600.53500.55300.59000.60900.323800.2645400 | BALCONY RAILING FIXING | 9d | 2026-07-16 | 2026-07-24 | 2105FS-15d |  | RGA -FINISHING | 7855262 |
| 2260 | 40100.40200.40600.53500.55300.59000.60900.323800.2645500 | Block work | 8d | 2026-09-07 | 2026-09-14 | 2264 |  | RGA -FINISHING | 7855272 |
| 2261 | 40100.40200.40600.53500.55300.59000.60900.323800.2645600 | CONCEALED ELEC CONDUITING & ITS FINISHING | 5d | 2026-06-15 | 2026-06-19 | 2093FS-8.5d |  | RGA -FINISHING | 7855282 |
| 2262 | 40100.40200.40600.53500.55300.59000.60900.323800.2645700 | PLASTER APPLICATION | 15d | 2026-08-02 | 2026-08-16 | 2549 |  | RGA -FINISHING | 7855292 |
| 2263 | 40100.40200.40600.53500.55300.59000.60900.323800.2645800 | CONCEALED PLUMBING | 9d | 2026-08-17 | 2026-08-25 | 2262 |  | RGA -FINISHING | 7855302 |
| 2264 | 40100.40200.40600.53500.55300.59000.60900.323800.2645900 | WATERPROOFING WORK FOR TOILETS, KITCHEN SUNK & PLANTERS | 12d | 2026-08-26 | 2026-09-06 | 2263 |  | RGA -FINISHING | 7855312 |

| ID | WBS | Task | Duration | Start | Finish | Predecessors | Constraint | Calendar | Unique_Task_ID |
| --- | --- | --- | --- | --- | --- | --- | --- | --- | --- |
| 2265 | 40100.40200.40600.53500.55300.59000.60900.323700 | **17th FLOOR** | 77d | 2026-07-02 | 2026-09-16 |  | start no earlier than 2026-07-02 | RGA -FINISHING | 7807642 |
| 2266 | 40100.40200.40600.53500.55300.59000.60900.323700.2646000 | BALCONY RAILING FIXING | 9d | 2026-07-28 | 2026-08-05 | 2109FS-15d |  | RGA -FINISHING | 7855322 |
| 2267 | 40100.40200.40600.53500.55300.59000.60900.323700.2646100 | Block work | 8d | 2026-09-09 | 2026-09-16 | 2271 |  | RGA -FINISHING | 7855332 |
| 2268 | 40100.40200.40600.53500.55300.59000.60900.323700.2646200 | CONCEALED ELEC CONDUITING & ITS FINISHING | 5d | 2026-07-02 | 2026-07-06 | 2097FS-9.5d |  | RGA -FINISHING | 7855342 |
| 2269 | 40100.40200.40600.53500.55300.59000.60900.323700.2646300 | PLASTER APPLICATION | 15d | 2026-08-04 | 2026-08-18 | 2562FS-10d |  | RGA -FINISHING | 7855352 |
| 2270 | 40100.40200.40600.53500.55300.59000.60900.323700.2646400 | CONCEALED PLUMBING | 9d | 2026-08-19 | 2026-08-27 | 2269 |  | RGA -FINISHING | 7855362 |
| 2271 | 40100.40200.40600.53500.55300.59000.60900.323700.2646500 | WATERPROOFING WORK FOR TOILETS, KITCHEN SUNK & PLANTERS | 12d | 2026-08-28 | 2026-09-08 | 2270 |  | RGA -FINISHING | 7855372 |
| 2272 | 40100.40200.40600.53500.55300.59000.60900.323600 | **18th FLOOR** | 69d | 2026-07-18 | 2026-09-24 |  | start no earlier than 2026-07-18 | RGA -FINISHING | 7807652 |
| 2273 | 40100.40200.40600.53500.55300.59000.60900.323600.2646600 | BALCONY RAILING FIXING | 9d | 2026-08-05 | 2026-08-13 | 2113FS-16d |  | RGA -FINISHING | 7855382 |
| 2274 | 40100.40200.40600.53500.55300.59000.60900.323600.2646700 | Block work | 8d | 2026-09-17 | 2026-09-24 | 2278 |  | RGA -FINISHING | 7855392 |
| 2275 | 40100.40200.40600.53500.55300.59000.60900.323600.2646800 | CONCEALED ELEC CONDUITING & ITS FINISHING | 5d | 2026-07-18 | 2026-07-22 | 2101FS-5d |  | RGA -FINISHING | 7855402 |
| 2276 | 40100.40200.40600.53500.55300.59000.60900.323600.2646900 | PLASTER APPLICATION | 15d | 2026-08-12 | 2026-08-26 | 2575FS-10d |  | RGA -FINISHING | 7855412 |
| 2277 | 40100.40200.40600.53500.55300.59000.60900.323600.2647000 | CONCEALED PLUMBING | 9d | 2026-08-27 | 2026-09-04 | 2276 |  | RGA -FINISHING | 7855422 |
| 2278 | 40100.40200.40600.53500.55300.59000.60900.323600.2647100 | WATERPROOFING WORK FOR TOILETS, KITCHEN SUNK & PLANTERS | 12d | 2026-09-05 | 2026-09-16 | 2277 |  | RGA -FINISHING | 7855432 |
| 2279 | 40100.40200.40600.53500.55300.59000.60900.323500 | **19th FLOOR** | 69d | 2026-07-26 | 2026-10-02 |  | start no earlier than 2026-07-26 | RGA -FINISHING | 7807662 |
| 2280 | 40100.40200.40600.53500.55300.59000.60900.323500.2647200 | BALCONY RAILING FIXING | 9d | 2026-08-13 | 2026-08-21 | 2117FS-16d |  | RGA -FINISHING | 7855442 |
| 2281 | 40100.40200.40600.53500.55300.59000.60900.323500.2647300 | Block work | 8d | 2026-09-25 | 2026-10-02 | 2285 |  | RGA -FINISHING | 7855452 |
| 2282 | 40100.40200.40600.53500.55300.59000.60900.323500.2647400 | CONCEALED ELEC CONDUITING & ITS FINISHING | 5d | 2026-07-26 | 2026-07-30 | 2105FS-5d |  | RGA -FINISHING | 7855462 |
| 2283 | 40100.40200.40600.53500.55300.59000.60900.323500.2647500 | PLASTER APPLICATION | 15d | 2026-08-20 | 2026-09-03 | 2588FS-10d |  | RGA -FINISHING | 7855472 |
| 2284 | 40100.40200.40600.53500.55300.59000.60900.323500.2647600 | CONCEALED PLUMBING | 9d | 2026-09-04 | 2026-09-12 | 2283 |  | RGA -FINISHING | 7855482 |
| 2285 | 40100.40200.40600.53500.55300.59000.60900.323500.2647700 | WATERPROOFING WORK FOR TOILETS, KITCHEN SUNK & PLANTERS | 12d | 2026-09-13 | 2026-09-24 | 2284 |  | RGA -FINISHING | 7855492 |
| 2286 | 40100.40200.40600.53500.55300.59000.60900.323400 | **20th FLOOR** | 68d | 2026-08-07 | 2026-10-13 |  | start no earlier than 2026-08-07 | RGA -FINISHING | 7807672 |
| 2287 | 40100.40200.40600.53500.55300.59000.60900.323400.2647800 | BALCONY RAILING FIXING | 9d | 2026-08-22 | 2026-08-30 | 2121FS-15d |  | RGA -FINISHING | 7855502 |
| 2288 | 40100.40200.40600.53500.55300.59000.60900.323400.2647900 | Block work | 8d | 2026-10-06 | 2026-10-13 | 2292 |  | RGA -FINISHING | 7855512 |
| 2289 | 40100.40200.40600.53500.55300.59000.60900.323400.2648000 | CONCEALED ELEC CONDUITING & ITS FINISHING | 5d | 2026-08-07 | 2026-08-11 | 2109FS-5d |  | RGA -FINISHING | 7855522 |
| 2290 | 40100.40200.40600.53500.55300.59000.60900.323400.2648100 | PLASTER APPLICATION | 15d | 2026-08-31 | 2026-09-14 | 2601FS-8d |  | RGA -FINISHING | 7855532 |
| 2291 | 40100.40200.40600.53500.55300.59000.60900.323400.2648200 | CONCEALED PLUMBING | 9d | 2026-09-15 | 2026-09-23 | 2290 |  | RGA -FINISHING | 7855542 |
| 2292 | 40100.40200.40600.53500.55300.59000.60900.323400.2648300 | WATERPROOFING WORK FOR TOILETS, KITCHEN SUNK & PLANTERS | 12d | 2026-09-24 | 2026-10-05 | 2291 |  | RGA -FINISHING | 7855552 |

Notes:
- 2274: Last floor BW completion 2 months post Last RCC
- 2281: Last floor BW completion 2 months post Last RCC
- 2288: Last floor BW completion 2 months post Last RCC

| ID | WBS | Task | Duration | Start | Finish | Predecessors | Constraint | Calendar | Unique_Task_ID |
| --- | --- | --- | --- | --- | --- | --- | --- | --- | --- |
| 2293 | 40100.40200.40600.53500.55300.59000.60900.323300 | **21th FLOOR** | 67d | 2026-08-16 | 2026-10-21 |  | start no earlier than 2026-08-16 | RGA -FINISHING | 7807682 |
| 2294 | 40100.40200.40600.53500.55300.59000.60900.323300.2648400 | BALCONY RAILING FIXING | 9d | 2026-08-30 | 2026-09-07 | 2125FS-15d |  | RGA -FINISHING | 7855562 |
| 2295 | 40100.40200.40600.53500.55300.59000.60900.323300.2648500 | Block work | 8d | 2026-10-14 | 2026-10-21 | 2299 |  | RGA -FINISHING | 7855572 |
| 2296 | 40100.40200.40600.53500.55300.59000.60900.323300.2648600 | CONCEALED ELEC CONDUITING & ITS FINISHING | 5d | 2026-08-16 | 2026-08-20 | 2113FS-5d |  | RGA -FINISHING | 7855582 |
| 2297 | 40100.40200.40600.53500.55300.59000.60900.323300.2648700 | PLASTER APPLICATION | 15d | 2026-09-08 | 2026-09-22 | 2614FS-8d |  | RGA -FINISHING | 7855592 |
| 2298 | 40100.40200.40600.53500.55300.59000.60900.323300.2648800 | CONCEALED PLUMBING | 9d | 2026-09-23 | 2026-10-01 | 2297 |  | RGA -FINISHING | 7855602 |
| 2299 | 40100.40200.40600.53500.55300.59000.60900.323300.2648900 | WATERPROOFING WORK FOR TOILETS, KITCHEN SUNK & PLANTERS | 12d | 2026-10-02 | 2026-10-13 | 2298 |  | RGA -FINISHING | 7855612 |
| 2300 | 40100.40200.40600.53500.55300.59000.60900.323200 | **22th FLOOR** | 75d | 2026-08-24 | 2026-11-06 |  | start no earlier than 2026-08-24 | RGA -FINISHING | 7807692 |
| 2301 | 40100.40200.40600.53500.55300.59000.60900.323200.2649000 | BALCONY RAILING FIXING | 9d | 2026-09-07 | 2026-09-15 | 2129FS-15d |  | RGA -FINISHING | 7855622 |
| 2302 | 40100.40200.40600.53500.55300.59000.60900.323200.2649100 | Block work | 8d | 2026-10-30 | 2026-11-06 | 2306 |  | RGA -FINISHING | 7855632 |
| 2303 | 40100.40200.40600.53500.55300.59000.60900.323200.2649200 | CONCEALED ELEC CONDUITING & ITS FINISHING | 5d | 2026-08-24 | 2026-08-28 | 2117FS-5d |  | RGA -FINISHING | 7855642 |
| 2304 | 40100.40200.40600.53500.55300.59000.60900.323200.2649300 | PLASTER APPLICATION | 15d | 2026-09-24 | 2026-10-08 | 2627 |  | RGA -FINISHING | 7855652 |
| 2305 | 40100.40200.40600.53500.55300.59000.60900.323200.2649400 | CONCEALED PLUMBING | 9d | 2026-10-09 | 2026-10-17 | 2304 |  | RGA -FINISHING | 7855662 |
| 2306 | 40100.40200.40600.53500.55300.59000.60900.323200.2649500 | WATERPROOFING WORK FOR TOILETS, KITCHEN SUNK & PLANTERS | 12d | 2026-10-18 | 2026-10-29 | 2305 |  | RGA -FINISHING | 7855672 |
| 2307 | 40100.40200.40600.53500.55300.59000.60900.323100 | **23th FLOOR** | 106d | 2026-09-01 | 2026-12-15 |  | start no earlier than 2026-09-01 | RGA -FINISHING | 7807702 |
| 2308 | 40100.40200.40600.53500.55300.59000.60900.323100.2649600 | BALCONY RAILING FIXING | 9d | 2026-09-01 | 2026-09-09 | 2301FS-15d |  | RGA -FINISHING | 7855682 |
| 2309 | 40100.40200.40600.53500.55300.59000.60900.323100.2649700 | Block work | 8d | 2026-12-08 | 2026-12-15 | 2313 |  | RGA -FINISHING | 7855692 |
| 2310 | 40100.40200.40600.53500.55300.59000.60900.323100.2649800 | CONCEALED ELEC CONDUITING & ITS FINISHING | 5d | 2026-09-01 | 2026-09-05 | 2121FS-5d |  | RGA -FINISHING | 7855702 |
| 2311 | 40100.40200.40600.53500.55300.59000.60900.323100.2649900 | PLASTER APPLICATION | 15d | 2026-11-02 | 2026-11-16 | 2640FS+45d |  | RGA -FINISHING | 7855712 |
| 2312 | 40100.40200.40600.53500.55300.59000.60900.323100.2650000 | CONCEALED PLUMBING | 9d | 2026-11-17 | 2026-11-25 | 2311 |  | RGA -FINISHING | 7855722 |
| 2313 | 40100.40200.40600.53500.55300.59000.60900.323100.2650100 | WATERPROOFING WORK FOR TOILETS, KITCHEN SUNK & PLANTERS | 12d | 2026-11-26 | 2026-12-07 | 2312 |  | RGA -FINISHING | 7855732 |
| 2314 | 40100.40200.40600.53500.55300.59000.60900.323000 | **24th FLOOR** | 136d | 2026-08-26 | 2027-01-08 |  | start no earlier than 2026-08-26 | RGA -FINISHING | 7807712 |
| 2315 | 40100.40200.40600.53500.55300.59000.60900.323000.2650200 | BALCONY RAILING FIXING | 9d | 2026-08-26 | 2026-09-03 | 2308FS-15d |  | RGA -FINISHING | 7855742 |
| 2316 | 40100.40200.40600.53500.55300.59000.60900.323000.2650300 | Block work | 8d | 2027-01-01 | 2027-01-08 | 2320 |  | RGA -FINISHING | 7855752 |
| 2317 | 40100.40200.40600.53500.55300.59000.60900.323000.2650400 | CONCEALED ELEC CONDUITING & ITS FINISHING | 5d | 2026-09-09 | 2026-09-13 | 2125FS-5d |  | RGA -FINISHING | 7371915 |
| 2318 | 40100.40200.40600.53500.55300.59000.60900.323000.2650500 | PLASTER APPLICATION | 15d | 2026-11-26 | 2026-12-10 | 2653FS+75d |  | RGA -FINISHING | 7371925 |
| 2319 | 40100.40200.40600.53500.55300.59000.60900.323000.2650600 | CONCEALED PLUMBING | 9d | 2026-12-11 | 2026-12-19 | 2318 |  | RGA -FINISHING | 7855762 |
| 2320 | 40100.40200.40600.53500.55300.59000.60900.323000.2650700 | WATERPROOFING WORK FOR TOILETS, KITCHEN SUNK & PLANTERS | 12d | 2026-12-20 | 2026-12-31 | 2319 |  | RGA -FINISHING | 7855772 |

Notes:
- 2295: Last floor BW completion 2 months post Last RCC
- 2302: Last floor BW completion 2 months post Last RCC
- 2309: Last floor BW completion 2 months post Last RCC
- 2316: Last floor BW completion 2 months post Last RCC

| ID | WBS | Task | Duration | Start | Finish | Predecessors | Constraint | Calendar | Unique_Task_ID |
| --- | --- | --- | --- | --- | --- | --- | --- | --- | --- |
| 2321 | 40100.40200.40600.53500.55300.59000.60900.322900 | **25thFLOOR** | 136d | 2026-08-20 | 2027-01-02 |  | start no earlier than 2026-08-20 | RGA -FINISHING | 7807722 |
| 2322 | 40100.40200.40600.53500.55300.59000.60900.322900.2650800 | BALCONY RAILING FIXING | 9d | 2026-08-20 | 2026-08-28 | 2315FS-15d |  | RGA -FINISHING | 7855782 |
| 2323 | 40100.40200.40600.53500.55300.59000.60900.322900.2650900 | Block work | 8d | 2026-12-26 | 2027-01-02 | 2327 |  | RGA -FINISHING | 7855792 |
| 2324 | 40100.40200.40600.53500.55300.59000.60900.322900.2651000 | CONCEALED ELEC CONDUITING & ITS FINISHING | 5d | 2026-09-17 | 2026-09-21 | 2129FS-5d |  | RGA -FINISHING | 7855802 |
| 2325 | 40100.40200.40600.53500.55300.59000.60900.322900.2651100 | PLASTER APPLICATION | 15d | 2026-11-20 | 2026-12-04 | 2666FS+75d |  | RGA -FINISHING | 7855812 |
| 2326 | 40100.40200.40600.53500.55300.59000.60900.322900.2651200 | CONCEALED PLUMBING | 9d | 2026-12-05 | 2026-12-13 | 2325 |  | RGA -FINISHING | 7855822 |
| 2327 | 40100.40200.40600.53500.55300.59000.60900.322900.2651300 | WATERPROOFING WORK FOR TOILETS, KITCHEN SUNK & PLANTERS | 12d | 2026-12-14 | 2026-12-25 | 2326 |  | RGA -FINISHING | 7855832 |
| 2328 | 40100.40200.40600.53500.55300.59000.60900.369900 | **LMR (To Be Deleted)** | 15d | 2025-04-01 | 2025-04-15 |  | start no earlier than 2025-04-01 | RGA -FINISHING | 7808402 |
| 2329 | 40100.40200.40600.53500.55300.59000.60900.369900.2651400 | Block work | 8d | 2025-04-01 | 2025-04-08 |  | start no earlier than 2025-04-01 | RGA -FINISHING | 7855962 |
| 2330 | 40100.40200.40600.53500.55300.59000.60900.369900.2651500 | CONCEALED ELEC CONDUITING & ITS FINISHING | 7d | 2025-04-01 | 2025-04-07 |  | start no earlier than 2025-04-01 | RGA -FINISHING | 7855972 |
| 2331 | 40100.40200.40600.53500.55300.59000.60900.369900.2651600 | PLASTER APPLICATION | 15d | 2025-04-01 | 2025-04-15 |  | start no earlier than 2025-04-01 | RGA -FINISHING | 7855982 |
| 2332 | 40100.40200.40600.53500.55300.59000.60900.369900.2651700 | DOOR FRAME FIXING | 3d | 2025-04-01 | 2025-04-03 |  | start no earlier than 2025-04-01 | RGA -FINISHING | 7855992 |
| 2333 | 40100.40200.40600.53500.55300.59000.505800 | **Terrace Finishing works** | 30d | 2027-05-22 | 2027-06-21 |  | start no earlier than 2027-05-22 | RGA -FINISHING | 7812132 |
| 2334 | 40100.40200.40600.53500.55300.59000.505800.2194900 | Terrace Waterproofing work | 30d | 2027-05-22 | 2027-06-21 | 2336FS+7d |  | RGA -FINISHING | 7363935 |
| 2335 | 40100.40200.40600.53500.55300.59000.505900 | **EXTERNAL Painting** | 165d | 2026-12-01 | 2027-05-15 |  | start no earlier than 2026-12-01 | RGA -FINISHING | 7812122 |
| 2336 | 40100.40200.40600.53500.55300.59000.505900.2195000 | 2nd coat | 165d | 2026-12-01 | 2027-05-15 | 2133FS+57.5d |  | RGA -FINISHING | 7363945 |
| 2337 | 40100.40200.40600.53500.55300.57400 | **Flat internal finishing & services works** | 462.5d | 2026-01-13 | 2027-04-20 |  | start no earlier than 2026-01-13 | RGA -FINISHING | 7362175 |
| 2338 | 40100.40200.40600.53500.55300.57400.93100 | **GROUND FLOOR** | 346.5d | 2026-01-13 | 2026-12-25 |  | start no earlier than 2026-01-13 | RGA -FINISHING | 7362225 |
| 2339 | 40100.40200.40600.53500.55300.57400.93100.2195100 | TOILET DADO TILE FIXING | 10d | 2026-03-29 | 2026-04-07 | 2148 |  | RGA -FINISHING | 7364075 |
| 2340 | 40100.40200.40600.53500.55300.57400.93100.2195200 | TOILET FLOORING WORK | 7d | 2026-04-08 | 2026-04-14 | 2339 |  | RGA -FINISHING | 7364085 |
| 2341 | 40100.40200.40600.53500.55300.57400.93100.2195300 | FIRE FIGHTING | 15d | 2026-01-13 | 2026-01-27 | 2147 |  | RGA -FINISHING | 7364095 |
| 2342 | 40100.40200.40600.53500.55300.57400.93100.2195400 | INTERNAL PAINTING - PUTTY / PRIMER APPLICATION | 15d | 2026-05-08 | 2026-05-22 | 2344 |  | RGA -FINISHING | 7364105 |
| 2343 | 40100.40200.40600.53500.55300.57400.93100.2195500 | FLAT FLOORING | 11d | 2026-04-15 | 2026-04-25 | 2340 |  | RGA -FINISHING | 7364115 |
| 2344 | 40100.40200.40600.53500.55300.57400.93100.2195600 | WINDOW FIXING | 12d | 2026-04-26 | 2026-05-07 | 2343 |  | RGA -FINISHING | 7364125 |
| 2345 | 40100.40200.40600.53500.55300.57400.93100.2195700 | INTERNAL PAINTING - 1ST COAT | 12d | 2026-05-23 | 2026-06-03 | 2342 |  | RGA -FINISHING | 7364135 |
| 2346 | 40100.40200.40600.53500.55300.57400.93100.2195800 | INTERNAL DOOR FIXING | 15d | 2026-06-04 | 2026-06-18 | 2345 |  | RGA -FINISHING | 7364145 |
| 2347 | 40100.40200.40600.53500.55300.57400.93100.2195900 | WIRING & SWITCH PLATE FIXING | 8d | 2026-06-19 | 2026-06-26 | 2346 |  | RGA -FINISHING | 7364155 |
| 2348 | 40100.40200.40600.53500.55300.57400.93100.2196000 | TOILET FALSE CEILING | 7d | 2026-06-27 | 2026-07-03 | 2347 |  | RGA -FINISHING | 7364165 |
| 2349 | 40100.40200.40600.53500.55300.57400.93100.2196100 | MAIN DOOR FRAME SHUTTER FIXING | 6d | 2026-12-11 | 2026-12-17 | 2681 |  | RGA -FINISHING | 7364175 |
| 2350 | 40100.40200.40600.53500.55300.57400.93100.2196200 | FINAL COAT PAINT | 8d | 2026-12-17 | 2026-12-25 | 2349 |  | RGA -FINISHING | 7364185 |

Notes:
- 2335: Ext Plaster (in 2 phases) completion 3.5 months post last BW
- 2337: Completion in 12 months post last RCC

| ID | WBS | Task | Duration | Start | Finish | Predecessors | Constraint | Calendar | Unique_Task_ID |
| --- | --- | --- | --- | --- | --- | --- | --- | --- | --- |
| 2351 | 40100.40200.40600.53500.55300.57400.93000 | **1ST FLOOR** | 331.5d | 2026-02-03 | 2026-12-31 |  | start no earlier than 2026-02-03 | RGA -FINISHING | 7362235 |
| 2352 | 40100.40200.40600.53500.55300.57400.93000.2196300 | TOILET DADO TILE FIXING | 7d | 2026-04-03 | 2026-04-09 | 2155 |  | RGA -FINISHING | 7364195 |
| 2353 | 40100.40200.40600.53500.55300.57400.93000.2196400 | TOILET FLOORING WORK | 7d | 2026-04-03 | 2026-04-09 | 2352FF |  | RGA -FINISHING | 7364205 |
| 2354 | 40100.40200.40600.53500.55300.57400.93000.2196500 | FIRE FIGHTING | 6d | 2026-02-03 | 2026-02-08 | 2154 |  | RGA -FINISHING | 7364215 |
| 2355 | 40100.40200.40600.53500.55300.57400.93000.2196600 | INTERNAL PAINTING - PUTTY / PRIMER APPLICATION | 6d | 2026-04-27 | 2026-05-02 | 2357 |  | RGA -FINISHING | 7364225 |
| 2356 | 40100.40200.40600.53500.55300.57400.93000.2196700 | FLAT FLOORING | 5d | 2026-04-10 | 2026-04-14 | 2353 |  | RGA -FINISHING | 7364235 |
| 2357 | 40100.40200.40600.53500.55300.57400.93000.2196800 | WINDOW FIXING | 12d | 2026-04-15 | 2026-04-26 | 2356 |  | RGA -FINISHING | 7364245 |
| 2358 | 40100.40200.40600.53500.55300.57400.93000.2196900 | INTERNAL PAINTING - 1ST COAT | 12d | 2026-05-03 | 2026-05-14 | 2355 |  | RGA -FINISHING | 7364255 |
| 2359 | 40100.40200.40600.53500.55300.57400.93000.2197000 | INTERNAL DOOR FIXING | 15d | 2026-05-13 | 2026-05-27 | 2358FS-2d |  | RGA -FINISHING | 7364265 |
| 2360 | 40100.40200.40600.53500.55300.57400.93000.2197100 | WIRING & SWITCH PLATE FIXING | 8d | 2026-05-24 | 2026-05-31 | 2359FS-4d |  | RGA -FINISHING | 7364275 |
| 2361 | 40100.40200.40600.53500.55300.57400.93000.2197200 | TOILET FALSE CEILING | 7d | 2026-06-01 | 2026-06-07 | 2360 |  | RGA -FINISHING | 7364285 |
| 2362 | 40100.40200.40600.53500.55300.57400.93000.2197300 | MAIN DOOR FRAME SHUTTER FIXING | 6d | 2026-12-17 | 2026-12-23 | 2689 |  | RGA -FINISHING | 7364295 |
| 2363 | 40100.40200.40600.53500.55300.57400.93000.2197400 | FINAL COAT PAINT | 8d | 2026-12-23 | 2026-12-31 | 2362 |  | RGA -FINISHING | 7364305 |
| 2364 | 40100.40200.40600.53500.55300.57400.92700 | **2ND FLOOR** | 315.5d | 2026-02-19 | 2026-12-31 |  | start no earlier than 2026-02-19 | RGA -FINISHING | 7362245 |
| 2365 | 40100.40200.40600.53500.55300.57400.92700.2197500 | TOILET DADO TILE FIXING | 7d | 2026-04-11 | 2026-04-17 | 2162 |  | RGA -FINISHING | 7364315 |
| 2366 | 40100.40200.40600.53500.55300.57400.92700.2197600 | TOILET FLOORING WORK | 7d | 2026-04-18 | 2026-04-24 | 2365 |  | RGA -FINISHING | 7364325 |
| 2367 | 40100.40200.40600.53500.55300.57400.92700.2197700 | FIRE FIGHTING | 6d | 2026-02-19 | 2026-02-24 | 2161 |  | RGA -FINISHING | 7364335 |
| 2368 | 40100.40200.40600.53500.55300.57400.92700.2197800 | INTERNAL PAINTING - PUTTY / PRIMER APPLICATION | 6d | 2026-05-12 | 2026-05-17 | 2370 |  | RGA -FINISHING | 7364345 |
| 2369 | 40100.40200.40600.53500.55300.57400.92700.2197900 | FLAT FLOORING | 5d | 2026-04-25 | 2026-04-29 | 2366 |  | RGA -FINISHING | 7364355 |
| 2370 | 40100.40200.40600.53500.55300.57400.92700.2198000 | WINDOW FIXING | 12d | 2026-04-30 | 2026-05-11 | 2369 |  | RGA -FINISHING | 7364365 |
| 2371 | 40100.40200.40600.53500.55300.57400.92700.2198100 | INTERNAL PAINTING - 1ST COAT | 12d | 2026-05-18 | 2026-05-29 | 2368 |  | RGA -FINISHING | 7364375 |
| 2372 | 40100.40200.40600.53500.55300.57400.92700.2198200 | INTERNAL DOOR FIXING | 15d | 2026-05-28 | 2026-06-11 | 2371FS-2d |  | RGA -FINISHING | 7364385 |
| 2373 | 40100.40200.40600.53500.55300.57400.92700.2198300 | WIRING & SWITCH PLATE FIXING | 8d | 2026-06-08 | 2026-06-15 | 2372FS-4d |  | RGA -FINISHING | 7364395 |
| 2374 | 40100.40200.40600.53500.55300.57400.92700.2198400 | TOILET FALSE CEILING | 7d | 2026-06-16 | 2026-06-22 | 2373 |  | RGA -FINISHING | 7364405 |
| 2375 | 40100.40200.40600.53500.55300.57400.92700.2198500 | MAIN DOOR FRAME SHUTTER FIXING | 6d | 2026-12-17 | 2026-12-23 | 2697 |  | RGA -FINISHING | 7364415 |
| 2376 | 40100.40200.40600.53500.55300.57400.92700.2198600 | FINAL COAT PAINT | 8d | 2026-12-23 | 2026-12-31 | 2375 |  | RGA -FINISHING | 7364425 |

| ID | WBS | Task | Duration | Start | Finish | Predecessors | Constraint | Calendar | Unique_Task_ID |
| --- | --- | --- | --- | --- | --- | --- | --- | --- | --- |
| 2377 | 40100.40200.40600.53500.55300.57400.92500 | **3RD FLOOR** | 301.5d | 2026-03-15 | 2027-01-10 |  | start no earlier than 2026-03-15 | RGA -FINISHING | 7362255 |
| 2378 | 40100.40200.40600.53500.55300.57400.92500.2198700 | TOILET DADO TILE FIXING | 7d | 2026-04-25 | 2026-05-01 | 2169 |  | RGA -FINISHING | 7364435 |
| 2379 | 40100.40200.40600.53500.55300.57400.92500.2198800 | TOILET FLOORING WORK | 7d | 2026-05-02 | 2026-05-08 | 2378 |  | RGA -FINISHING | 7364445 |
| 2380 | 40100.40200.40600.53500.55300.57400.92500.2198900 | FIRE FIGHTING | 6d | 2026-03-15 | 2026-03-20 | 2168 |  | RGA -FINISHING | 7364455 |
| 2381 | 40100.40200.40600.53500.55300.57400.92500.2199000 | INTERNAL PAINTING - PUTTY / PRIMER APPLICATION | 6d | 2026-05-21 | 2026-05-26 | 2383 |  | RGA -FINISHING | 7364465 |
| 2382 | 40100.40200.40600.53500.55300.57400.92500.2199100 | FLAT FLOORING | 5d | 2026-05-09 | 2026-05-13 | 2379 |  | RGA -FINISHING | 7364475 |
| 2383 | 40100.40200.40600.53500.55300.57400.92500.2199200 | WINDOW FIXING | 7d | 2026-05-14 | 2026-05-20 | 2382 |  | RGA -FINISHING | 7364485 |
| 2384 | 40100.40200.40600.53500.55300.57400.92500.2199300 | INTERNAL PAINTING - 1ST COAT | 7d | 2026-05-27 | 2026-06-02 | 2381 |  | RGA -FINISHING | 7364495 |
| 2385 | 40100.40200.40600.53500.55300.57400.92500.2199400 | INTERNAL DOOR FIXING | 15d | 2026-06-01 | 2026-06-15 | 2384FS-2d |  | RGA -FINISHING | 7364505 |
| 2386 | 40100.40200.40600.53500.55300.57400.92500.2199500 | WIRING & SWITCH PLATE FIXING | 8d | 2026-06-12 | 2026-06-19 | 2385FS-4d |  | RGA -FINISHING | 7364515 |
| 2387 | 40100.40200.40600.53500.55300.57400.92500.2199600 | TOILET FALSE CEILING | 7d | 2026-06-20 | 2026-06-26 | 2386 |  | RGA -FINISHING | 7364525 |
| 2388 | 40100.40200.40600.53500.55300.57400.92500.2199700 | MAIN DOOR FRAME SHUTTER FIXING | 6d | 2026-12-27 | 2027-01-02 | 2705 |  | RGA -FINISHING | 7364535 |
| 2389 | 40100.40200.40600.53500.55300.57400.92500.2199800 | FINAL COAT PAINT | 8d | 2027-01-02 | 2027-01-10 | 2388 |  | RGA -FINISHING | 7364545 |
| 2390 | 40100.40200.40600.53500.55300.57400.92400 | **4TH FLOOR** | 302.5d | 2026-03-24 | 2027-01-20 |  | start no earlier than 2026-03-24 | RGA -FINISHING | 7362265 |
| 2391 | 40100.40200.40600.53500.55300.57400.92400.2199900 | TOILET DADO TILE FIXING | 7d | 2026-05-03 | 2026-05-09 | 2176 |  | RGA -FINISHING | 7364555 |
| 2392 | 40100.40200.40600.53500.55300.57400.92400.2200000 | TOILET FLOORING WORK | 7d | 2026-05-10 | 2026-05-16 | 2391 |  | RGA -FINISHING | 7364565 |
| 2393 | 40100.40200.40600.53500.55300.57400.92400.2200100 | FIRE FIGHTING | 6d | 2026-03-24 | 2026-03-29 | 2175 |  | RGA -FINISHING | 7364575 |
| 2394 | 40100.40200.40600.53500.55300.57400.92400.2200200 | INTERNAL PAINTING - PUTTY / PRIMER APPLICATION | 6d | 2026-05-29 | 2026-06-03 | 2396 |  | RGA -FINISHING | 7364585 |
| 2395 | 40100.40200.40600.53500.55300.57400.92400.2200300 | FLAT FLOORING | 5d | 2026-05-17 | 2026-05-21 | 2392 |  | RGA -FINISHING | 7364595 |
| 2396 | 40100.40200.40600.53500.55300.57400.92400.2200400 | WINDOW FIXING | 7d | 2026-05-22 | 2026-05-28 | 2395 |  | RGA -FINISHING | 7364605 |
| 2397 | 40100.40200.40600.53500.55300.57400.92400.2200500 | INTERNAL PAINTING - 1ST COAT | 7d | 2026-06-04 | 2026-06-10 | 2394 |  | RGA -FINISHING | 7364615 |
| 2398 | 40100.40200.40600.53500.55300.57400.92400.2200600 | INTERNAL DOOR FIXING | 15d | 2026-06-09 | 2026-06-23 | 2397FS-2d |  | RGA -FINISHING | 7364625 |
| 2399 | 40100.40200.40600.53500.55300.57400.92400.2200700 | WIRING & SWITCH PLATE FIXING | 8d | 2026-06-20 | 2026-06-27 | 2398FS-4d |  | RGA -FINISHING | 7364635 |
| 2400 | 40100.40200.40600.53500.55300.57400.92400.2200800 | TOILET FALSE CEILING | 7d | 2026-06-28 | 2026-07-04 | 2399 |  | RGA -FINISHING | 7364645 |
| 2401 | 40100.40200.40600.53500.55300.57400.92400.2200900 | MAIN DOOR FRAME SHUTTER FIXING | 6d | 2027-01-06 | 2027-01-12 | 2713 |  | RGA -FINISHING | 7364655 |
| 2402 | 40100.40200.40600.53500.55300.57400.92400.2201000 | FINAL COAT PAINT | 8d | 2027-01-12 | 2027-01-20 | 2401 |  | RGA -FINISHING | 7364665 |

| ID | WBS | Task | Duration | Start | Finish | Predecessors | Constraint | Calendar | Unique_Task_ID |
| --- | --- | --- | --- | --- | --- | --- | --- | --- | --- |
| 2403 | 40100.40200.40600.53500.55300.57400.92000 | **5TH FLOOR** | 293.5d | 2026-04-02 | 2027-01-20 |  | start no earlier than 2026-04-02 | RGA -FINISHING | 7362275 |
| 2404 | 40100.40200.40600.53500.55300.57400.92000.2201100 | TOILET DADO TILE FIXING | 7d | 2026-05-12 | 2026-05-18 | 2183 |  | RGA -FINISHING | 7364675 |
| 2405 | 40100.40200.40600.53500.55300.57400.92000.2201200 | TOILET FLOORING WORK | 7d | 2026-05-19 | 2026-05-25 | 2404 |  | RGA -FINISHING | 7364685 |
| 2406 | 40100.40200.40600.53500.55300.57400.92000.2201300 | FIRE FIGHTING | 6d | 2026-04-02 | 2026-04-07 | 2182 |  | RGA -FINISHING | 7364695 |
| 2407 | 40100.40200.40600.53500.55300.57400.92000.2201400 | INTERNAL PAINTING - PUTTY / PRIMER APPLICATION | 6d | 2026-06-07 | 2026-06-12 | 2409 |  | RGA -FINISHING | 7364705 |
| 2408 | 40100.40200.40600.53500.55300.57400.92000.2201500 | FLAT FLOORING | 5d | 2026-05-26 | 2026-05-30 | 2405 |  | RGA -FINISHING | 7364715 |
| 2409 | 40100.40200.40600.53500.55300.57400.92000.2201600 | WINDOW FIXING | 7d | 2026-05-31 | 2026-06-06 | 2408 |  | RGA -FINISHING | 7364725 |
| 2410 | 40100.40200.40600.53500.55300.57400.92000.2201700 | INTERNAL PAINTING - 1ST COAT | 7d | 2026-06-13 | 2026-06-19 | 2407 |  | RGA -FINISHING | 7364735 |
| 2411 | 40100.40200.40600.53500.55300.57400.92000.2201800 | INTERNAL DOOR FIXING | 15d | 2026-06-18 | 2026-07-02 | 2410FS-2d |  | RGA -FINISHING | 7364745 |
| 2412 | 40100.40200.40600.53500.55300.57400.92000.2201900 | WIRING & SWITCH PLATE FIXING | 8d | 2026-06-29 | 2026-07-06 | 2411FS-4d |  | RGA -FINISHING | 7364755 |
| 2413 | 40100.40200.40600.53500.55300.57400.92000.2202000 | TOILET FALSE CEILING | 7d | 2026-07-07 | 2026-07-13 | 2412 |  | RGA -FINISHING | 7364765 |
| 2414 | 40100.40200.40600.53500.55300.57400.92000.2202100 | MAIN DOOR FRAME SHUTTER FIXING | 6d | 2027-01-06 | 2027-01-12 | 2721 |  | RGA -FINISHING | 7364775 |
| 2415 | 40100.40200.40600.53500.55300.57400.92000.2202200 | FINAL COAT PAINT | 8d | 2027-01-12 | 2027-01-20 | 2414 |  | RGA -FINISHING | 7364785 |
| 2416 | 40100.40200.40600.53500.55300.57400.91900 | **6TH FLOOR** | 284.5d | 2026-04-11 | 2027-01-20 |  | start no earlier than 2026-04-11 | RGA -FINISHING | 7362285 |
| 2417 | 40100.40200.40600.53500.55300.57400.91900.2202300 | TOILET DADO TILE FIXING | 7d | 2026-05-21 | 2026-05-27 | 2190 |  | RGA -FINISHING | 7364795 |
| 2418 | 40100.40200.40600.53500.55300.57400.91900.2202400 | TOILET FLOORING WORK | 7d | 2026-05-21 | 2026-05-27 | 2417FF |  | RGA -FINISHING | 7364805 |
| 2419 | 40100.40200.40600.53500.55300.57400.91900.2202500 | FIRE FIGHTING | 6d | 2026-04-11 | 2026-04-16 | 2189 |  | RGA -FINISHING | 7364815 |
| 2420 | 40100.40200.40600.53500.55300.57400.91900.2202600 | INTERNAL PAINTING - PUTTY / PRIMER APPLICATION | 6d | 2026-06-14 | 2026-06-19 | 2422 |  | RGA -FINISHING | 7364825 |
| 2421 | 40100.40200.40600.53500.55300.57400.91900.2202700 | FLAT FLOORING | 5d | 2026-05-28 | 2026-06-01 | 2418 |  | RGA -FINISHING | 7364835 |
| 2422 | 40100.40200.40600.53500.55300.57400.91900.2202800 | WINDOW FIXING | 12d | 2026-06-02 | 2026-06-13 | 2421 |  | RGA -FINISHING | 7364845 |
| 2423 | 40100.40200.40600.53500.55300.57400.91900.2202900 | INTERNAL PAINTING - 1ST COAT | 12d | 2026-06-20 | 2026-07-01 | 2420 |  | RGA -FINISHING | 7364855 |
| 2424 | 40100.40200.40600.53500.55300.57400.91900.2203000 | INTERNAL DOOR FIXING | 15d | 2026-06-30 | 2026-07-14 | 2423FS-2d |  | RGA -FINISHING | 7364865 |
| 2425 | 40100.40200.40600.53500.55300.57400.91900.2203100 | WIRING & SWITCH PLATE FIXING | 8d | 2026-07-11 | 2026-07-18 | 2424FS-4d |  | RGA -FINISHING | 7364875 |
| 2426 | 40100.40200.40600.53500.55300.57400.91900.2203200 | TOILET FALSE CEILING | 7d | 2026-07-19 | 2026-07-25 | 2425 |  | RGA -FINISHING | 7364885 |
| 2427 | 40100.40200.40600.53500.55300.57400.91900.2203300 | MAIN DOOR FRAME SHUTTER FIXING | 6d | 2027-01-06 | 2027-01-12 | 2729 |  | RGA -FINISHING | 7364895 |
| 2428 | 40100.40200.40600.53500.55300.57400.91900.2203400 | FINAL COAT PAINT | 8d | 2027-01-12 | 2027-01-20 | 2427 |  | RGA -FINISHING | 7364905 |

| ID | WBS | Task | Duration | Start | Finish | Predecessors | Constraint | Calendar | Unique_Task_ID |
| --- | --- | --- | --- | --- | --- | --- | --- | --- | --- |
| 2429 | 40100.40200.40600.53500.55300.57400.91800 | **7TH FLOOR** | 275.5d | 2026-04-20 | 2027-01-20 |  | start no earlier than 2026-04-20 | RGA -FINISHING | 7362295 |
| 2430 | 40100.40200.40600.53500.55300.57400.91800.2203500 | TOILET DADO TILE FIXING | 7d | 2026-05-30 | 2026-06-05 | 2197 |  | RGA -FINISHING | 7364915 |
| 2431 | 40100.40200.40600.53500.55300.57400.91800.2203600 | TOILET FLOORING WORK | 7d | 2026-06-06 | 2026-06-12 | 2430 |  | RGA -FINISHING | 7364925 |
| 2432 | 40100.40200.40600.53500.55300.57400.91800.2203700 | FIRE FIGHTING | 6d | 2026-04-20 | 2026-04-25 | 2196 |  | RGA -FINISHING | 7364935 |
| 2433 | 40100.40200.40600.53500.55300.57400.91800.2203800 | INTERNAL PAINTING - PUTTY / PRIMER APPLICATION | 6d | 2026-06-30 | 2026-07-05 | 2435 |  | RGA -FINISHING | 7364945 |
| 2434 | 40100.40200.40600.53500.55300.57400.91800.2203900 | FLAT FLOORING | 5d | 2026-06-13 | 2026-06-17 | 2431 |  | RGA -FINISHING | 7364955 |
| 2435 | 40100.40200.40600.53500.55300.57400.91800.2204000 | WINDOW FIXING | 12d | 2026-06-18 | 2026-06-29 | 2434 |  | RGA -FINISHING | 7364965 |
| 2436 | 40100.40200.40600.53500.55300.57400.91800.2204100 | INTERNAL PAINTING - 1ST COAT | 5d | 2026-07-06 | 2026-07-10 | 2433 |  | RGA -FINISHING | 7364975 |
| 2437 | 40100.40200.40600.53500.55300.57400.91800.2204200 | INTERNAL DOOR FIXING | 15d | 2026-07-09 | 2026-07-23 | 2436FS-2d |  | RGA -FINISHING | 7364985 |
| 2438 | 40100.40200.40600.53500.55300.57400.91800.2204300 | WIRING & SWITCH PLATE FIXING | 8d | 2026-07-20 | 2026-07-27 | 2437FS-4d |  | RGA -FINISHING | 7833022 |
| 2439 | 40100.40200.40600.53500.55300.57400.91800.2204400 | TOILET FALSE CEILING | 7d | 2026-07-28 | 2026-08-03 | 2438 |  | RGA -FINISHING | 7833032 |
| 2440 | 40100.40200.40600.53500.55300.57400.91800.2204500 | MAIN DOOR FRAME SHUTTER FIXING | 6d | 2027-01-06 | 2027-01-12 | 2737 |  | RGA -FINISHING | 7833042 |
| 2441 | 40100.40200.40600.53500.55300.57400.91800.2204600 | FINAL COAT PAINT | 8d | 2027-01-12 | 2027-01-20 | 2440 |  | RGA -FINISHING | 7833052 |
| 2442 | 40100.40200.40600.53500.55300.57400.91400 | **8TH FLOOR** | 276.5d | 2026-04-29 | 2027-01-30 |  | start no earlier than 2026-04-29 | RGA -FINISHING | 7362305 |
| 2443 | 40100.40200.40600.53500.55300.57400.91400.2204700 | TOILET DADO TILE FIXING | 7d | 2026-06-08 | 2026-06-14 | 2204 |  | RGA -FINISHING | 7833062 |
| 2444 | 40100.40200.40600.53500.55300.57400.91400.2204800 | TOILET FLOORING WORK | 7d | 2026-06-15 | 2026-06-21 | 2443 |  | RGA -FINISHING | 7365045 |
| 2445 | 40100.40200.40600.53500.55300.57400.91400.2204900 | FIRE FIGHTING | 6d | 2026-04-29 | 2026-05-04 | 2203 |  | RGA -FINISHING | 7833072 |
| 2446 | 40100.40200.40600.53500.55300.57400.91400.2205000 | INTERNAL PAINTING - PUTTY / PRIMER APPLICATION | 6d | 2026-07-09 | 2026-07-14 | 2448 |  | RGA -FINISHING | 7833082 |
| 2447 | 40100.40200.40600.53500.55300.57400.91400.2205100 | FLAT FLOORING | 5d | 2026-06-22 | 2026-06-26 | 2444 |  | RGA -FINISHING | 7833092 |
| 2448 | 40100.40200.40600.53500.55300.57400.91400.2205200 | WINDOW FIXING | 12d | 2026-06-27 | 2026-07-08 | 2447 |  | RGA -FINISHING | 7833102 |
| 2449 | 40100.40200.40600.53500.55300.57400.91400.2205300 | INTERNAL PAINTING - 1ST COAT | 10d | 2026-07-15 | 2026-07-24 | 2446 |  | RGA -FINISHING | 7833112 |
| 2450 | 40100.40200.40600.53500.55300.57400.91400.2205400 | INTERNAL DOOR FIXING | 15d | 2026-07-23 | 2026-08-06 | 2449FS-2d |  | RGA -FINISHING | 7365105 |
| 2451 | 40100.40200.40600.53500.55300.57400.91400.2205500 | WIRING & SWITCH PLATE FIXING | 8d | 2026-08-03 | 2026-08-10 | 2450FS-4d |  | RGA -FINISHING | 7833122 |
| 2452 | 40100.40200.40600.53500.55300.57400.91400.2205600 | TOILET FALSE CEILING | 7d | 2026-08-11 | 2026-08-17 | 2451 |  | RGA -FINISHING | 7833132 |
| 2453 | 40100.40200.40600.53500.55300.57400.91400.2205700 | MAIN DOOR FRAME SHUTTER FIXING | 6d | 2027-01-16 | 2027-01-22 | 2745 |  | RGA -FINISHING | 7833142 |
| 2454 | 40100.40200.40600.53500.55300.57400.91400.2205800 | FINAL COAT PAINT | 8d | 2027-01-22 | 2027-01-30 | 2453 |  | RGA -FINISHING | 7833152 |

| ID | WBS | Task | Duration | Start | Finish | Predecessors | Constraint | Calendar | Unique_Task_ID |
| --- | --- | --- | --- | --- | --- | --- | --- | --- | --- |
| 2455 | 40100.40200.40600.53500.55300.57400.91300 | **9TH FLOOR** | 271.5d | 2026-05-08 | 2027-02-03 |  | start no earlier than 2026-05-08 | RGA -FINISHING | 7362315 |
| 2456 | 40100.40200.40600.53500.55300.57400.91300.2205900 | TOILET DADO TILE FIXING | 7d | 2026-06-17 | 2026-06-23 | 2211 |  | RGA -FINISHING | 7833162 |
| 2457 | 40100.40200.40600.53500.55300.57400.91300.2206000 | TOILET FLOORING WORK | 7d | 2026-06-24 | 2026-06-30 | 2456 |  | RGA -FINISHING | 7365165 |
| 2458 | 40100.40200.40600.53500.55300.57400.91300.2206100 | FIRE FIGHTING | 6d | 2026-05-08 | 2026-05-13 | 2210 |  | RGA -FINISHING | 7833172 |
| 2459 | 40100.40200.40600.53500.55300.57400.91300.2206200 | INTERNAL PAINTING - PUTTY / PRIMER APPLICATION | 6d | 2026-07-18 | 2026-07-23 | 2461 |  | RGA -FINISHING | 7833182 |
| 2460 | 40100.40200.40600.53500.55300.57400.91300.2206300 | FLAT FLOORING | 5d | 2026-07-01 | 2026-07-05 | 2457 |  | RGA -FINISHING | 7833192 |
| 2461 | 40100.40200.40600.53500.55300.57400.91300.2206400 | WINDOW FIXING | 12d | 2026-07-06 | 2026-07-17 | 2460 |  | RGA -FINISHING | 7833202 |
| 2462 | 40100.40200.40600.53500.55300.57400.91300.2206500 | INTERNAL PAINTING - 1ST COAT | 2d | 2026-07-24 | 2026-07-25 | 2459 |  | RGA -FINISHING | 7833212 |
| 2463 | 40100.40200.40600.53500.55300.57400.91300.2206600 | INTERNAL DOOR FIXING | 15d | 2026-07-24 | 2026-08-07 | 2462FS-2d |  | RGA -FINISHING | 7365225 |
| 2464 | 40100.40200.40600.53500.55300.57400.91300.2206700 | WIRING & SWITCH PLATE FIXING | 8d | 2026-08-04 | 2026-08-11 | 2463FS-4d |  | RGA -FINISHING | 7833222 |
| 2465 | 40100.40200.40600.53500.55300.57400.91300.2206800 | TOILET FALSE CEILING | 7d | 2026-08-12 | 2026-08-18 | 2464 |  | RGA -FINISHING | 7833232 |
| 2466 | 40100.40200.40600.53500.55300.57400.91300.2206900 | MAIN DOOR FRAME SHUTTER FIXING | 6d | 2027-01-16 | 2027-01-22 | 2753 |  | RGA -FINISHING | 7833242 |
| 2467 | 40100.40200.40600.53500.55300.57400.91300.2207000 | FINAL COAT PAINT | 8d | 2027-01-26 | 2027-02-03 | 2466FS+4d |  | RGA -FINISHING | 7833252 |
| 2468 | 40100.40200.40600.53500.55300.57400.91200 | **10TH FLOOR** | 257.5d | 2026-05-18 | 2027-01-30 |  | start no earlier than 2026-05-18 | RGA -FINISHING | 7362325 |
| 2469 | 40100.40200.40600.53500.55300.57400.91200.2207100 | TOILET DADO TILE FIXING | 7d | 2026-06-27 | 2026-07-03 | 2218 |  | RGA -FINISHING | 7833262 |
| 2470 | 40100.40200.40600.53500.55300.57400.91200.2207200 | TOILET FLOORING WORK | 7d | 2026-07-04 | 2026-07-10 | 2469 |  | RGA -FINISHING | 7365285 |
| 2471 | 40100.40200.40600.53500.55300.57400.91200.2207300 | FIRE FIGHTING | 6d | 2026-05-18 | 2026-05-23 | 2217 |  | RGA -FINISHING | 7833272 |
| 2472 | 40100.40200.40600.53500.55300.57400.91200.2207400 | INTERNAL PAINTING - PUTTY / PRIMER APPLICATION | 6d | 2026-07-28 | 2026-08-02 | 2474 |  | RGA -FINISHING | 7833282 |
| 2473 | 40100.40200.40600.53500.55300.57400.91200.2207500 | FLAT FLOORING | 5d | 2026-07-11 | 2026-07-15 | 2470 |  | RGA -FINISHING | 7833292 |
| 2474 | 40100.40200.40600.53500.55300.57400.91200.2207600 | WINDOW FIXING | 12d | 2026-07-16 | 2026-07-27 | 2473 |  | RGA -FINISHING | 7833302 |
| 2475 | 40100.40200.40600.53500.55300.57400.91200.2207700 | INTERNAL PAINTING - 1ST COAT | 12d | 2026-08-03 | 2026-08-14 | 2472 |  | RGA -FINISHING | 7833312 |
| 2476 | 40100.40200.40600.53500.55300.57400.91200.2207800 | INTERNAL DOOR FIXING | 15d | 2026-08-13 | 2026-08-27 | 2475FS-2d |  | RGA -FINISHING | 7365345 |
| 2477 | 40100.40200.40600.53500.55300.57400.91200.2207900 | WIRING & SWITCH PLATE FIXING | 8d | 2026-08-24 | 2026-08-31 | 2476FS-4d |  | RGA -FINISHING | 7833322 |
| 2478 | 40100.40200.40600.53500.55300.57400.91200.2208000 | TOILET FALSE CEILING | 7d | 2026-09-01 | 2026-09-07 | 2477 |  | RGA -FINISHING | 7833332 |
| 2479 | 40100.40200.40600.53500.55300.57400.91200.2208100 | MAIN DOOR FRAME SHUTTER FIXING | 6d | 2027-01-16 | 2027-01-22 | 2761 |  | RGA -FINISHING | 7833342 |
| 2480 | 40100.40200.40600.53500.55300.57400.91200.2208200 | FINAL COAT PAINT | 8d | 2027-01-22 | 2027-01-30 | 2479 |  | RGA -FINISHING | 7833352 |

| ID | WBS | Task | Duration | Start | Finish | Predecessors | Constraint | Calendar | Unique_Task_ID |
| --- | --- | --- | --- | --- | --- | --- | --- | --- | --- |
| 2481 | 40100.40200.40600.53500.55300.57400.90900 | **11TH FLOOR** | 240.5d | 2026-06-04 | 2027-01-30 |  | start no earlier than 2026-06-04 | RGA -FINISHING | 7362335 |
| 2482 | 40100.40200.40600.53500.55300.57400.90900.2208300 | TOILET DADO TILE FIXING | 7d | 2026-07-14 | 2026-07-20 | 2225 |  | RGA -FINISHING | 7833362 |
| 2483 | 40100.40200.40600.53500.55300.57400.90900.2208400 | TOILET FLOORING WORK | 7d | 2026-07-21 | 2026-07-27 | 2482 |  | RGA -FINISHING | 7365405 |
| 2484 | 40100.40200.40600.53500.55300.57400.90900.2208500 | FIRE FIGHTING | 6d | 2026-06-04 | 2026-06-09 | 2224 |  | RGA -FINISHING | 7833372 |
| 2485 | 40100.40200.40600.53500.55300.57400.90900.2208600 | INTERNAL PAINTING - PUTTY / PRIMER APPLICATION | 6d | 2026-08-14 | 2026-08-19 | 2487 |  | RGA -FINISHING | 7833382 |
| 2486 | 40100.40200.40600.53500.55300.57400.90900.2208700 | FLAT FLOORING | 5d | 2026-07-28 | 2026-08-01 | 2483 |  | RGA -FINISHING | 7833392 |
| 2487 | 40100.40200.40600.53500.55300.57400.90900.2208800 | WINDOW FIXING | 12d | 2026-08-02 | 2026-08-13 | 2486 |  | RGA -FINISHING | 7833402 |
| 2488 | 40100.40200.40600.53500.55300.57400.90900.2208900 | INTERNAL PAINTING - 1ST COAT | 12d | 2026-08-20 | 2026-08-31 | 2485 |  | RGA -FINISHING | 7833412 |
| 2489 | 40100.40200.40600.53500.55300.57400.90900.2209000 | INTERNAL DOOR FIXING | 15d | 2026-08-30 | 2026-09-13 | 2488FS-2d |  | RGA -FINISHING | 7365465 |
| 2490 | 40100.40200.40600.53500.55300.57400.90900.2209100 | WIRING & SWITCH PLATE FIXING | 8d | 2026-09-10 | 2026-09-17 | 2489FS-4d |  | RGA -FINISHING | 7833422 |
| 2491 | 40100.40200.40600.53500.55300.57400.90900.2209200 | TOILET FALSE CEILING | 7d | 2026-09-18 | 2026-09-24 | 2490 |  | RGA -FINISHING | 7833432 |
| 2492 | 40100.40200.40600.53500.55300.57400.90900.2209300 | MAIN DOOR FRAME SHUTTER FIXING | 6d | 2027-01-16 | 2027-01-22 | 2769 |  | RGA -FINISHING | 7833442 |
| 2493 | 40100.40200.40600.53500.55300.57400.90900.2209400 | FINAL COAT PAINT | 8d | 2027-01-22 | 2027-01-30 | 2492 |  | RGA -FINISHING | 7833452 |
| 2494 | 40100.40200.40600.53500.55300.57400.90800 | **12TH FLOOR** | 241.5d | 2026-06-13 | 2027-02-09 |  | start no earlier than 2026-06-13 | RGA -FINISHING | 7362345 |
| 2495 | 40100.40200.40600.53500.55300.57400.90800.2209500 | TOILET DADO TILE FIXING | 7d | 2026-07-15 | 2026-07-21 | 2232 |  | RGA -FINISHING | 7833462 |
| 2496 | 40100.40200.40600.53500.55300.57400.90800.2209600 | TOILET FLOORING WORK | 7d | 2026-07-15 | 2026-07-21 | 2495FF |  | RGA -FINISHING | 7365525 |
| 2497 | 40100.40200.40600.53500.55300.57400.90800.2209700 | FIRE FIGHTING | 6d | 2026-06-13 | 2026-06-18 | 2231 |  | RGA -FINISHING | 7833472 |
| 2498 | 40100.40200.40600.53500.55300.57400.90800.2209800 | INTERNAL PAINTING - PUTTY / PRIMER APPLICATION | 6d | 2026-08-08 | 2026-08-13 | 2500 |  | RGA -FINISHING | 7833482 |
| 2499 | 40100.40200.40600.53500.55300.57400.90800.2209900 | FLAT FLOORING | 5d | 2026-07-22 | 2026-07-26 | 2496 |  | RGA -FINISHING | 7833492 |
| 2500 | 40100.40200.40600.53500.55300.57400.90800.2210000 | WINDOW FIXING | 12d | 2026-07-27 | 2026-08-07 | 2499 |  | RGA -FINISHING | 7365565 |
| 2501 | 40100.40200.40600.53500.55300.57400.90800.2210100 | INTERNAL PAINTING - 1ST COAT | 12d | 2026-08-14 | 2026-08-25 | 2498 |  | RGA -FINISHING | 7365575 |
| 2502 | 40100.40200.40600.53500.55300.57400.90800.2210200 | INTERNAL DOOR FIXING | 15d | 2026-08-24 | 2026-09-07 | 2501FS-2d |  | RGA -FINISHING | 7365585 |
| 2503 | 40100.40200.40600.53500.55300.57400.90800.2210300 | WIRING & SWITCH PLATE FIXING | 8d | 2026-09-04 | 2026-09-11 | 2502FS-4d |  | RGA -FINISHING | 7365595 |
| 2504 | 40100.40200.40600.53500.55300.57400.90800.2210400 | TOILET FALSE CEILING | 7d | 2026-09-12 | 2026-09-18 | 2503 |  | RGA -FINISHING | 7365605 |
| 2505 | 40100.40200.40600.53500.55300.57400.90800.2210500 | MAIN DOOR FRAME SHUTTER FIXING | 6d | 2027-01-26 | 2027-02-01 | 2777 |  | RGA -FINISHING | 7365615 |
| 2506 | 40100.40200.40600.53500.55300.57400.90800.2210600 | FINAL COAT PAINT | 8d | 2027-02-01 | 2027-02-09 | 2505 |  | RGA -FINISHING | 7365625 |

| ID | WBS | Task | Duration | Start | Finish | Predecessors | Constraint | Calendar | Unique_Task_ID |
| --- | --- | --- | --- | --- | --- | --- | --- | --- | --- |
| 2507 | 40100.40200.40600.53500.55300.57400.90700 | **13TH FLOOR** | 237.5d | 2026-06-17 | 2027-02-09 |  | start no earlier than 2026-06-17 | RGA -FINISHING | 7362355 |
| 2508 | 40100.40200.40600.53500.55300.57400.90700.2210700 | TOILET DADO TILE FIXING | 10d | 2026-08-12 | 2026-08-21 | 2239 |  | RGA -FINISHING | 7365635 |
| 2509 | 40100.40200.40600.53500.55300.57400.90700.2210800 | TOILET FLOORING WORK | 7d | 2026-08-22 | 2026-08-28 | 2508 |  | RGA -FINISHING | 7365645 |
| 2510 | 40100.40200.40600.53500.55300.57400.90700.2210900 | FIRE FIGHTING | 8d | 2026-06-17 | 2026-06-24 | 2238 |  | RGA -FINISHING | 7833502 |
| 2511 | 40100.40200.40600.53500.55300.57400.90700.2211000 | INTERNAL PAINTING - PUTTY / PRIMER APPLICATION | 5d | 2026-09-10 | 2026-09-14 | 2513 |  | RGA -FINISHING | 7833512 |
| 2512 | 40100.40200.40600.53500.55300.57400.90700.2211100 | FLAT FLOORING | 7d | 2026-08-29 | 2026-09-04 | 2509 |  | RGA -FINISHING | 7833522 |
| 2513 | 40100.40200.40600.53500.55300.57400.90700.2211200 | WINDOW FIXING | 5d | 2026-09-05 | 2026-09-09 | 2512 |  | RGA -FINISHING | 7833532 |
| 2514 | 40100.40200.40600.53500.55300.57400.90700.2211300 | INTERNAL PAINTING - 1ST COAT | 4d | 2026-09-15 | 2026-09-18 | 2511 |  | RGA -FINISHING | 7833542 |
| 2515 | 40100.40200.40600.53500.55300.57400.90700.2211400 | INTERNAL DOOR FIXING | 15d | 2026-09-17 | 2026-10-01 | 2514FS-2d |  | RGA -FINISHING | 7833552 |
| 2516 | 40100.40200.40600.53500.55300.57400.90700.2211500 | WIRING & SWITCH PLATE FIXING | 8d | 2026-09-28 | 2026-10-05 | 2515FS-4d |  | RGA -FINISHING | 7833562 |
| 2517 | 40100.40200.40600.53500.55300.57400.90700.2211600 | TOILET FALSE CEILING | 7d | 2026-10-06 | 2026-10-12 | 2516 |  | RGA -FINISHING | 7833572 |
| 2518 | 40100.40200.40600.53500.55300.57400.90700.2211700 | MAIN DOOR FRAME SHUTTER FIXING | 6d | 2027-01-26 | 2027-02-01 | 2785 |  | RGA -FINISHING | 7833582 |
| 2519 | 40100.40200.40600.53500.55300.57400.90700.2211800 | FINAL COAT PAINT | 8d | 2027-02-01 | 2027-02-09 | 2518 |  | RGA -FINISHING | 7833592 |
| 2520 | 40100.40200.40600.53500.55300.57400.90100 | **14TH FLOOR** | 231.5d | 2026-06-23 | 2027-02-09 |  | start no earlier than 2026-06-23 | RGA -FINISHING | 7362365 |
| 2521 | 40100.40200.40600.53500.55300.57400.90100.2211900 | TOILET DADO TILE FIXING | 10d | 2026-08-14 | 2026-08-23 | 2246 |  | RGA -FINISHING | 7833602 |
| 2522 | 40100.40200.40600.53500.55300.57400.90100.2212000 | TOILET FLOORING WORK | 7d | 2026-08-24 | 2026-08-30 | 2521 |  | RGA -FINISHING | 7833612 |
| 2523 | 40100.40200.40600.53500.55300.57400.90100.2212100 | FIRE FIGHTING | 8d | 2026-06-23 | 2026-06-30 | 2245 |  | RGA -FINISHING | 7833622 |
| 2524 | 40100.40200.40600.53500.55300.57400.90100.2212200 | INTERNAL PAINTING - PUTTY / PRIMER APPLICATION | 5d | 2026-09-12 | 2026-09-16 | 2526 |  | RGA -FINISHING | 7833632 |
| 2525 | 40100.40200.40600.53500.55300.57400.90100.2212300 | FLAT FLOORING | 7d | 2026-08-31 | 2026-09-06 | 2522 |  | RGA -FINISHING | 7833642 |
| 2526 | 40100.40200.40600.53500.55300.57400.90100.2212400 | WINDOW FIXING | 5d | 2026-09-07 | 2026-09-11 | 2525 |  | RGA -FINISHING | 7833652 |
| 2527 | 40100.40200.40600.53500.55300.57400.90100.2212500 | INTERNAL PAINTING - 1ST COAT | 4d | 2026-09-17 | 2026-09-20 | 2524 |  | RGA -FINISHING | 7833662 |
| 2528 | 40100.40200.40600.53500.55300.57400.90100.2212600 | INTERNAL DOOR FIXING | 15d | 2026-09-19 | 2026-10-03 | 2527FS-2d |  | RGA -FINISHING | 7365825 |
| 2529 | 40100.40200.40600.53500.55300.57400.90100.2212700 | WIRING & SWITCH PLATE FIXING | 8d | 2026-09-30 | 2026-10-07 | 2528FS-4d |  | RGA -FINISHING | 7365835 |
| 2530 | 40100.40200.40600.53500.55300.57400.90100.2212800 | TOILET FALSE CEILING | 7d | 2026-10-08 | 2026-10-14 | 2529 |  | RGA -FINISHING | 7365845 |
| 2531 | 40100.40200.40600.53500.55300.57400.90100.2212900 | MAIN DOOR FRAME SHUTTER FIXING | 6d | 2027-01-26 | 2027-02-01 | 2793 |  | RGA -FINISHING | 7365855 |
| 2532 | 40100.40200.40600.53500.55300.57400.90100.2213000 | FINAL COAT PAINT | 8d | 2027-02-01 | 2027-02-09 | 2531 |  | RGA -FINISHING | 7365865 |

| ID | WBS | Task | Duration | Start | Finish | Predecessors | Constraint | Calendar | Unique_Task_ID |
| --- | --- | --- | --- | --- | --- | --- | --- | --- | --- |
| 2533 | 40100.40200.40600.53500.55300.57400.90000 | **15TH FLOOR** | 215.5d | 2026-07-09 | 2027-02-09 |  | start no earlier than 2026-07-09 | RGA -FINISHING | 7805232 |
| 2534 | 40100.40200.40600.53500.55300.57400.90000.2213100 | TOILET DADO TILE FIXING | 10d | 2026-08-30 | 2026-09-08 | 2253 |  | RGA -FINISHING | 7365875 |
| 2535 | 40100.40200.40600.53500.55300.57400.90000.2213200 | TOILET FLOORING WORK | 7d | 2026-09-09 | 2026-09-15 | 2534 |  | RGA -FINISHING | 7365885 |
| 2536 | 40100.40200.40600.53500.55300.57400.90000.2213300 | FIRE FIGHTING | 8d | 2026-07-09 | 2026-07-16 | 2252 |  | RGA -FINISHING | 7365895 |
| 2537 | 40100.40200.40600.53500.55300.57400.90000.2213400 | INTERNAL PAINTING - PUTTY / PRIMER APPLICATION | 5d | 2026-09-28 | 2026-10-02 | 2539 |  | RGA -FINISHING | 7365905 |
| 2538 | 40100.40200.40600.53500.55300.57400.90000.2213500 | FLAT FLOORING | 7d | 2026-09-16 | 2026-09-22 | 2535 |  | RGA -FINISHING | 7833672 |
| 2539 | 40100.40200.40600.53500.55300.57400.90000.2213600 | WINDOW FIXING | 5d | 2026-09-23 | 2026-09-27 | 2538 |  | RGA -FINISHING | 7833682 |
| 2540 | 40100.40200.40600.53500.55300.57400.90000.2213700 | INTERNAL PAINTING - 1ST COAT | 4d | 2026-10-03 | 2026-10-06 | 2537 |  | RGA -FINISHING | 7833692 |
| 2541 | 40100.40200.40600.53500.55300.57400.90000.2213800 | INTERNAL DOOR FIXING | 15d | 2026-10-05 | 2026-10-19 | 2540FS-2d |  | RGA -FINISHING | 7833702 |
| 2542 | 40100.40200.40600.53500.55300.57400.90000.2213900 | WIRING & SWITCH PLATE FIXING | 8d | 2026-10-16 | 2026-10-23 | 2541FS-4d |  | RGA -FINISHING | 7833712 |
| 2543 | 40100.40200.40600.53500.55300.57400.90000.2214000 | TOILET FALSE CEILING | 7d | 2026-10-24 | 2026-10-30 | 2542 |  | RGA -FINISHING | 7833722 |
| 2544 | 40100.40200.40600.53500.55300.57400.90000.2214100 | MAIN DOOR FRAME SHUTTER FIXING | 6d | 2027-01-26 | 2027-02-01 | 2801 |  | RGA -FINISHING | 7833732 |
| 2545 | 40100.40200.40600.53500.55300.57400.90000.2214200 | FINAL COAT PAINT | 8d | 2027-02-01 | 2027-02-09 | 2544 |  | RGA -FINISHING | 7833742 |
| 2546 | 40100.40200.40600.53500.55300.57400.89800 | **16TH FLOOR** | 209.5d | 2026-07-25 | 2027-02-19 |  | start no earlier than 2026-07-25 | RGA -FINISHING | 7805222 |
| 2547 | 40100.40200.40600.53500.55300.57400.89800.2214300 | TOILET DADO TILE FIXING | 10d | 2026-09-15 | 2026-09-24 | 2260 |  | RGA -FINISHING | 7833752 |
| 2548 | 40100.40200.40600.53500.55300.57400.89800.2214400 | TOILET FLOORING WORK | 7d | 2026-09-25 | 2026-10-01 | 2547 |  | RGA -FINISHING | 7833762 |
| 2549 | 40100.40200.40600.53500.55300.57400.89800.2214500 | FIRE FIGHTING | 8d | 2026-07-25 | 2026-08-01 | 2259 |  | RGA -FINISHING | 7833772 |
| 2550 | 40100.40200.40600.53500.55300.57400.89800.2214600 | INTERNAL PAINTING - PUTTY / PRIMER APPLICATION | 5d | 2026-10-14 | 2026-10-18 | 2552 |  | RGA -FINISHING | 7833782 |
| 2551 | 40100.40200.40600.53500.55300.57400.89800.2214700 | FLAT FLOORING | 7d | 2026-10-02 | 2026-10-08 | 2548 |  | RGA -FINISHING | 7833792 |
| 2552 | 40100.40200.40600.53500.55300.57400.89800.2214800 | WINDOW FIXING | 5d | 2026-10-09 | 2026-10-13 | 2551 |  | RGA -FINISHING | 7833802 |
| 2553 | 40100.40200.40600.53500.55300.57400.89800.2214900 | INTERNAL PAINTING - 1ST COAT | 4d | 2026-10-19 | 2026-10-22 | 2550 |  | RGA -FINISHING | 7833812 |
| 2554 | 40100.40200.40600.53500.55300.57400.89800.2215000 | INTERNAL DOOR FIXING | 15d | 2026-10-21 | 2026-11-04 | 2553FS-2d |  | RGA -FINISHING | 7833822 |
| 2555 | 40100.40200.40600.53500.55300.57400.89800.2215100 | WIRING & SWITCH PLATE FIXING | 8d | 2026-11-01 | 2026-11-08 | 2554FS-4d |  | RGA -FINISHING | 7833832 |
| 2556 | 40100.40200.40600.53500.55300.57400.89800.2215200 | TOILET FALSE CEILING | 7d | 2026-11-09 | 2026-11-15 | 2555 |  | RGA -FINISHING | 7366085 |
| 2557 | 40100.40200.40600.53500.55300.57400.89800.2215300 | MAIN DOOR FRAME SHUTTER FIXING | 6d | 2027-02-05 | 2027-02-11 | 2809 |  | RGA -FINISHING | 7366095 |
| 2558 | 40100.40200.40600.53500.55300.57400.89800.2215400 | FINAL COAT PAINT | 8d | 2027-02-11 | 2027-02-19 | 2557 |  | RGA -FINISHING | 7366105 |

| ID | WBS | Task | Duration | Start | Finish | Predecessors | Constraint | Calendar | Unique_Task_ID |
| --- | --- | --- | --- | --- | --- | --- | --- | --- | --- |
| 2559 | 40100.40200.40600.53500.55300.57400.89500 | **17TH FLOOR** | 197.5d | 2026-08-06 | 2027-02-19 |  | start no earlier than 2026-08-06 | RGA -FINISHING | 7362395 |
| 2560 | 40100.40200.40600.53500.55300.57400.89500.2215500 | TOILET DADO TILE FIXING | 10d | 2026-09-17 | 2026-09-26 | 2267 |  | RGA -FINISHING | 7366115 |
| 2561 | 40100.40200.40600.53500.55300.57400.89500.2215600 | TOILET FLOORING WORK | 7d | 2026-09-27 | 2026-10-03 | 2560 |  | RGA -FINISHING | 7366125 |
| 2562 | 40100.40200.40600.53500.55300.57400.89500.2215700 | FIRE FIGHTING | 8d | 2026-08-06 | 2026-08-13 | 2266 |  | RGA -FINISHING | 7366135 |
| 2563 | 40100.40200.40600.53500.55300.57400.89500.2215800 | INTERNAL PAINTING - PUTTY / PRIMER APPLICATION | 5d | 2026-10-16 | 2026-10-20 | 2565 |  | RGA -FINISHING | 7366145 |
| 2564 | 40100.40200.40600.53500.55300.57400.89500.2215900 | FLAT FLOORING | 7d | 2026-10-04 | 2026-10-10 | 2561 |  | RGA -FINISHING | 7366155 |
| 2565 | 40100.40200.40600.53500.55300.57400.89500.2216000 | WINDOW FIXING | 5d | 2026-10-11 | 2026-10-15 | 2564 |  | RGA -FINISHING | 7366165 |
| 2566 | 40100.40200.40600.53500.55300.57400.89500.2216100 | INTERNAL PAINTING - 1ST COAT | 4d | 2026-10-21 | 2026-10-24 | 2563 |  | RGA -FINISHING | 7833842 |
| 2567 | 40100.40200.40600.53500.55300.57400.89500.2216200 | INTERNAL DOOR FIXING | 15d | 2026-10-23 | 2026-11-06 | 2566FS-2d |  | RGA -FINISHING | 7833852 |
| 2568 | 40100.40200.40600.53500.55300.57400.89500.2216300 | WIRING & SWITCH PLATE FIXING | 8d | 2026-11-03 | 2026-11-10 | 2567FS-4d |  | RGA -FINISHING | 7833862 |
| 2569 | 40100.40200.40600.53500.55300.57400.89500.2216400 | TOILET FALSE CEILING | 7d | 2026-11-11 | 2026-11-17 | 2568 |  | RGA -FINISHING | 7833872 |
| 2570 | 40100.40200.40600.53500.55300.57400.89500.2216500 | MAIN DOOR FRAME SHUTTER FIXING | 6d | 2027-02-05 | 2027-02-11 | 2817 |  | RGA -FINISHING | 7833882 |
| 2571 | 40100.40200.40600.53500.55300.57400.89500.2216600 | FINAL COAT PAINT | 8d | 2027-02-11 | 2027-02-19 | 2570 |  | RGA -FINISHING | 7833892 |
| 2572 | 40100.40200.40600.53500.55300.57400.89400 | **18TH FLOOR** | 189.5d | 2026-08-14 | 2027-02-19 |  | start no earlier than 2026-08-14 | RGA -FINISHING | 7362405 |
| 2573 | 40100.40200.40600.53500.55300.57400.89400.2216700 | TOILET DADO TILE FIXING | 10d | 2026-09-25 | 2026-10-04 | 2274 |  | RGA -FINISHING | 7833902 |
| 2574 | 40100.40200.40600.53500.55300.57400.89400.2216800 | TOILET FLOORING WORK | 7d | 2026-10-05 | 2026-10-11 | 2573 |  | RGA -FINISHING | 7833912 |
| 2575 | 40100.40200.40600.53500.55300.57400.89400.2216900 | FIRE FIGHTING | 8d | 2026-08-14 | 2026-08-21 | 2273 |  | RGA -FINISHING | 7833922 |
| 2576 | 40100.40200.40600.53500.55300.57400.89400.2217000 | INTERNAL PAINTING - PUTTY / PRIMER APPLICATION | 5d | 2026-10-24 | 2026-10-28 | 2578 |  | RGA -FINISHING | 7833932 |
| 2577 | 40100.40200.40600.53500.55300.57400.89400.2217100 | FLAT FLOORING | 7d | 2026-10-12 | 2026-10-18 | 2574 |  | RGA -FINISHING | 7833942 |
| 2578 | 40100.40200.40600.53500.55300.57400.89400.2217200 | WINDOW FIXING | 5d | 2026-10-19 | 2026-10-23 | 2577 |  | RGA -FINISHING | 7833952 |
| 2579 | 40100.40200.40600.53500.55300.57400.89400.2217300 | INTERNAL PAINTING - 1ST COAT | 4d | 2026-10-29 | 2026-11-01 | 2576 |  | RGA -FINISHING | 7833962 |
| 2580 | 40100.40200.40600.53500.55300.57400.89400.2217400 | INTERNAL DOOR FIXING | 15d | 2026-10-31 | 2026-11-14 | 2579FS-2d |  | RGA -FINISHING | 7833972 |
| 2581 | 40100.40200.40600.53500.55300.57400.89400.2217500 | WIRING & SWITCH PLATE FIXING | 8d | 2026-11-11 | 2026-11-18 | 2580FS-4d |  | RGA -FINISHING | 7833982 |
| 2582 | 40100.40200.40600.53500.55300.57400.89400.2217600 | TOILET FALSE CEILING | 7d | 2026-11-19 | 2026-11-25 | 2581 |  | RGA -FINISHING | 7833992 |
| 2583 | 40100.40200.40600.53500.55300.57400.89400.2217700 | MAIN DOOR FRAME SHUTTER FIXING | 6d | 2027-02-05 | 2027-02-11 | 2825 |  | RGA -FINISHING | 7834002 |
| 2584 | 40100.40200.40600.53500.55300.57400.89400.2217800 | FINAL COAT PAINT | 8d | 2027-02-11 | 2027-02-19 | 2583 |  | RGA -FINISHING | 7366345 |

| ID | WBS | Task | Duration | Start | Finish | Predecessors | Constraint | Calendar | Unique_Task_ID |
| --- | --- | --- | --- | --- | --- | --- | --- | --- | --- |
| 2585 | 40100.40200.40600.53500.55300.57400.89300 | **19TH FLOOR** | 181.5d | 2026-08-22 | 2027-02-19 |  | start no earlier than 2026-08-22 | RGA -FINISHING | 7362415 |
| 2586 | 40100.40200.40600.53500.55300.57400.89300.2217900 | TOILET DADO TILE FIXING | 10d | 2026-10-03 | 2026-10-12 | 2281 |  | RGA -FINISHING | 7366355 |
| 2587 | 40100.40200.40600.53500.55300.57400.89300.2218000 | TOILET FLOORING WORK | 7d | 2026-10-13 | 2026-10-19 | 2586 |  | RGA -FINISHING | 7366365 |
| 2588 | 40100.40200.40600.53500.55300.57400.89300.2218100 | FIRE FIGHTING | 8d | 2026-08-22 | 2026-08-29 | 2280 |  | RGA -FINISHING | 7366375 |
| 2589 | 40100.40200.40600.53500.55300.57400.89300.2218200 | INTERNAL PAINTING - PUTTY / PRIMER APPLICATION | 5d | 2026-11-01 | 2026-11-05 | 2591 |  | RGA -FINISHING | 7366385 |
| 2590 | 40100.40200.40600.53500.55300.57400.89300.2218300 | FLAT FLOORING | 7d | 2026-10-20 | 2026-10-26 | 2587 |  | RGA -FINISHING | 7366395 |
| 2591 | 40100.40200.40600.53500.55300.57400.89300.2218400 | WINDOW FIXING | 5d | 2026-10-27 | 2026-10-31 | 2590 |  | RGA -FINISHING | 7366405 |
| 2592 | 40100.40200.40600.53500.55300.57400.89300.2218500 | INTERNAL PAINTING - 1ST COAT | 4d | 2026-11-06 | 2026-11-09 | 2589 |  | RGA -FINISHING | 7366415 |
| 2593 | 40100.40200.40600.53500.55300.57400.89300.2218600 | INTERNAL DOOR FIXING | 15d | 2026-11-08 | 2026-11-22 | 2592FS-2d |  | RGA -FINISHING | 7366425 |
| 2594 | 40100.40200.40600.53500.55300.57400.89300.2218700 | WIRING & SWITCH PLATE FIXING | 8d | 2026-11-19 | 2026-11-26 | 2593FS-4d |  | RGA -FINISHING | 7834012 |
| 2595 | 40100.40200.40600.53500.55300.57400.89300.2218800 | TOILET FALSE CEILING | 7d | 2026-11-27 | 2026-12-03 | 2594 |  | RGA -FINISHING | 7834022 |
| 2596 | 40100.40200.40600.53500.55300.57400.89300.2218900 | MAIN DOOR FRAME SHUTTER FIXING | 6d | 2027-02-05 | 2027-02-11 | 2833 |  | RGA -FINISHING | 7834032 |
| 2597 | 40100.40200.40600.53500.55300.57400.89300.2219000 | FINAL COAT PAINT | 8d | 2027-02-11 | 2027-02-19 | 2596 |  | RGA -FINISHING | 7834042 |
| 2598 | 40100.40200.40600.53500.55300.57400.89000 | **20TH FLOOR** | 172.5d | 2026-08-31 | 2027-02-19 |  | start no earlier than 2026-08-31 | RGA -FINISHING | 7362425 |
| 2599 | 40100.40200.40600.53500.55300.57400.89000.2219100 | TOILET DADO TILE FIXING | 10d | 2026-10-14 | 2026-10-23 | 2288 |  | RGA -FINISHING | 7834052 |
| 2600 | 40100.40200.40600.53500.55300.57400.89000.2219200 | TOILET FLOORING WORK | 7d | 2026-10-24 | 2026-10-30 | 2599 |  | RGA -FINISHING | 7834062 |
| 2601 | 40100.40200.40600.53500.55300.57400.89000.2219300 | FIRE FIGHTING | 8d | 2026-08-31 | 2026-09-07 | 2287 |  | RGA -FINISHING | 7834072 |
| 2602 | 40100.40200.40600.53500.55300.57400.89000.2219400 | INTERNAL PAINTING - PUTTY / PRIMER APPLICATION | 5d | 2026-11-12 | 2026-11-16 | 2604 |  | RGA -FINISHING | 7834082 |
| 2603 | 40100.40200.40600.53500.55300.57400.89000.2219500 | FLAT FLOORING | 7d | 2026-10-31 | 2026-11-06 | 2600 |  | RGA -FINISHING | 7834092 |
| 2604 | 40100.40200.40600.53500.55300.57400.89000.2219600 | WINDOW FIXING | 5d | 2026-11-07 | 2026-11-11 | 2603 |  | RGA -FINISHING | 7834102 |
| 2605 | 40100.40200.40600.53500.55300.57400.89000.2219700 | INTERNAL PAINTING - 1ST COAT | 4d | 2026-11-17 | 2026-11-20 | 2602 |  | RGA -FINISHING | 7834112 |
| 2606 | 40100.40200.40600.53500.55300.57400.89000.2219800 | INTERNAL DOOR FIXING | 15d | 2026-11-19 | 2026-12-03 | 2605FS-2d |  | RGA -FINISHING | 7834122 |
| 2607 | 40100.40200.40600.53500.55300.57400.89000.2219900 | WIRING & SWITCH PLATE FIXING | 8d | 2026-11-30 | 2026-12-07 | 2606FS-4d |  | RGA -FINISHING | 7834132 |
| 2608 | 40100.40200.40600.53500.55300.57400.89000.2220000 | TOILET FALSE CEILING | 7d | 2026-12-08 | 2026-12-14 | 2607 |  | RGA -FINISHING | 7834142 |
| 2609 | 40100.40200.40600.53500.55300.57400.89000.2220100 | MAIN DOOR FRAME SHUTTER FIXING | 6d | 2027-02-05 | 2027-02-11 | 2841 |  | RGA -FINISHING | 7834152 |
| 2610 | 40100.40200.40600.53500.55300.57400.89000.2220200 | FINAL COAT PAINT | 8d | 2027-02-11 | 2027-02-19 | 2609 |  | RGA -FINISHING | 7834162 |

| ID | WBS | Task | Duration | Start | Finish | Predecessors | Constraint | Calendar | Unique_Task_ID |
| --- | --- | --- | --- | --- | --- | --- | --- | --- | --- |
| 2611 | 40100.40200.40600.53500.55300.57400.88900 | **21st FLOOR** | 174.5d | 2026-09-08 | 2027-03-01 |  | start no earlier than 2026-09-08 | RGA -FINISHING | 7362435 |
| 2612 | 40100.40200.40600.53500.55300.57400.88900.2220300 | TOILET DADO TILE FIXING | 10d | 2026-10-22 | 2026-10-31 | 2295 |  | RGA -FINISHING | 7834172 |
| 2613 | 40100.40200.40600.53500.55300.57400.88900.2220400 | TOILET FLOORING WORK | 7d | 2026-11-01 | 2026-11-07 | 2612 |  | RGA -FINISHING | 7834182 |
| 2614 | 40100.40200.40600.53500.55300.57400.88900.2220500 | FIRE FIGHTING | 8d | 2026-09-08 | 2026-09-15 | 2294 |  | RGA -FINISHING | 7834192 |
| 2615 | 40100.40200.40600.53500.55300.57400.88900.2220600 | INTERNAL PAINTING - PUTTY / PRIMER APPLICATION | 15d | 2026-11-20 | 2026-12-04 | 2617 |  | RGA -FINISHING | 7834202 |
| 2616 | 40100.40200.40600.53500.55300.57400.88900.2220700 | FLAT FLOORING | 5d | 2026-11-08 | 2026-11-12 | 2613 |  | RGA -FINISHING | 7834212 |
| 2617 | 40100.40200.40600.53500.55300.57400.88900.2220800 | WINDOW FIXING | 7d | 2026-11-13 | 2026-11-19 | 2616 |  | RGA -FINISHING | 7834222 |
| 2618 | 40100.40200.40600.53500.55300.57400.88900.2220900 | INTERNAL PAINTING - 1ST COAT | 5d | 2026-12-05 | 2026-12-09 | 2615 |  | RGA -FINISHING | 7834232 |
| 2619 | 40100.40200.40600.53500.55300.57400.88900.2221000 | INTERNAL DOOR FIXING | 4d | 2026-12-08 | 2026-12-11 | 2618FS-2d |  | RGA -FINISHING | 7834242 |
| 2620 | 40100.40200.40600.53500.55300.57400.88900.2221100 | WIRING & SWITCH PLATE FIXING | 8d | 2026-12-08 | 2026-12-15 | 2619FS-4d |  | RGA -FINISHING | 7834252 |
| 2621 | 40100.40200.40600.53500.55300.57400.88900.2221200 | TOILET FALSE CEILING | 7d | 2026-12-16 | 2026-12-22 | 2620 |  | RGA -FINISHING | 7834262 |
| 2622 | 40100.40200.40600.53500.55300.57400.88900.2221300 | MAIN DOOR FRAME SHUTTER FIXING | 6d | 2027-02-15 | 2027-02-21 | 2849 |  | RGA -FINISHING | 7834272 |
| 2623 | 40100.40200.40600.53500.55300.57400.88900.2221400 | FINAL COAT PAINT | 8d | 2027-02-21 | 2027-03-01 | 2622 |  | RGA -FINISHING | 7834282 |
| 2624 | 40100.40200.40600.53500.55300.57400.88800 | **22nd FLOOR** | 166.5d | 2026-09-16 | 2027-03-01 |  | start no earlier than 2026-09-16 | RGA -FINISHING | 7362445 |
| 2625 | 40100.40200.40600.53500.55300.57400.88800.2221500 | TOILET DADO TILE FIXING | 10d | 2026-11-07 | 2026-11-16 | 2302 |  | RGA -FINISHING | 7834292 |
| 2626 | 40100.40200.40600.53500.55300.57400.88800.2221600 | TOILET FLOORING WORK | 7d | 2026-11-17 | 2026-11-23 | 2625 |  | RGA -FINISHING | 7834302 |
| 2627 | 40100.40200.40600.53500.55300.57400.88800.2221700 | FIRE FIGHTING | 8d | 2026-09-16 | 2026-09-23 | 2301 |  | RGA -FINISHING | 7834312 |
| 2628 | 40100.40200.40600.53500.55300.57400.88800.2221800 | INTERNAL PAINTING - PUTTY / PRIMER APPLICATION | 5d | 2026-11-25 | 2026-11-29 | 2630 |  | RGA -FINISHING | 7834322 |
| 2629 | 40100.40200.40600.53500.55300.57400.88800.2221900 | FLAT FLOORING | 7d | 2026-11-24 | 2026-11-30 | 2626 |  | RGA -FINISHING | 7834332 |
| 2630 | 40100.40200.40600.53500.55300.57400.88800.2222000 | WINDOW FIXING | 5d | 2026-11-20 | 2026-11-24 | 2617 |  | RGA -FINISHING | 7834342 |
| 2631 | 40100.40200.40600.53500.55300.57400.88800.2222100 | INTERNAL PAINTING - 1ST COAT | 4d | 2026-11-30 | 2026-12-03 | 2628 |  | RGA -FINISHING | 7834352 |
| 2632 | 40100.40200.40600.53500.55300.57400.88800.2222200 | INTERNAL DOOR FIXING | 15d | 2026-12-02 | 2026-12-16 | 2631FS-2d |  | RGA -FINISHING | 7834362 |
| 2633 | 40100.40200.40600.53500.55300.57400.88800.2222300 | WIRING & SWITCH PLATE FIXING | 8d | 2026-12-13 | 2026-12-20 | 2632FS-4d |  | RGA -FINISHING | 7834372 |
| 2634 | 40100.40200.40600.53500.55300.57400.88800.2222400 | TOILET FALSE CEILING | 7d | 2026-12-21 | 2026-12-27 | 2633 |  | RGA -FINISHING | 7834382 |
| 2635 | 40100.40200.40600.53500.55300.57400.88800.2222500 | MAIN DOOR FRAME SHUTTER FIXING | 6d | 2027-02-15 | 2027-02-21 | 2857 |  | RGA -FINISHING | 7834392 |
| 2636 | 40100.40200.40600.53500.55300.57400.88800.2222600 | FINAL COAT PAINT | 8d | 2027-02-21 | 2027-03-01 | 2635 |  | RGA -FINISHING | 7834402 |

| ID | WBS | Task | Duration | Start | Finish | Predecessors | Constraint | Calendar | Unique_Task_ID |
| --- | --- | --- | --- | --- | --- | --- | --- | --- | --- |
| 2637 | 40100.40200.40600.53500.55300.57400.88600 | **23rd FLOOR** | 172.5d | 2026-09-10 | 2027-03-01 |  | start no earlier than 2026-09-10 | RGA -FINISHING | 7362455 |
| 2638 | 40100.40200.40600.53500.55300.57400.88600.2222700 | TOILET DADO TILE FIXING | 10d | 2026-12-16 | 2026-12-25 | 2309 |  | RGA -FINISHING | 7834412 |
| 2639 | 40100.40200.40600.53500.55300.57400.88600.2222800 | TOILET FLOORING WORK | 7d | 2026-12-26 | 2027-01-01 | 2638 |  | RGA -FINISHING | 7834422 |
| 2640 | 40100.40200.40600.53500.55300.57400.88600.2222900 | FIRE FIGHTING | 8d | 2026-09-10 | 2026-09-17 | 2308 |  | RGA -FINISHING | 7834432 |
| 2641 | 40100.40200.40600.53500.55300.57400.88600.2223000 | INTERNAL PAINTING - PUTTY / PRIMER APPLICATION | 5d | 2027-01-14 | 2027-01-18 | 2643 |  | RGA -FINISHING | 7834442 |
| 2642 | 40100.40200.40600.53500.55300.57400.88600.2223100 | FLAT FLOORING | 7d | 2027-01-02 | 2027-01-08 | 2639 |  | RGA -FINISHING | 7834452 |
| 2643 | 40100.40200.40600.53500.55300.57400.88600.2223200 | WINDOW FIXING | 5d | 2027-01-09 | 2027-01-13 | 2642 |  | RGA -FINISHING | 7834462 |
| 2644 | 40100.40200.40600.53500.55300.57400.88600.2223300 | INTERNAL PAINTING - 1ST COAT | 4d | 2027-01-19 | 2027-01-22 | 2641 |  | RGA -FINISHING | 7834472 |
| 2645 | 40100.40200.40600.53500.55300.57400.88600.2223400 | INTERNAL DOOR FIXING | 15d | 2027-01-21 | 2027-02-04 | 2644FS-2d |  | RGA -FINISHING | 7834482 |
| 2646 | 40100.40200.40600.53500.55300.57400.88600.2223500 | WIRING & SWITCH PLATE FIXING | 8d | 2027-02-01 | 2027-02-08 | 2645FS-4d |  | RGA -FINISHING | 7834492 |
| 2647 | 40100.40200.40600.53500.55300.57400.88600.2223600 | TOILET FALSE CEILING | 7d | 2027-02-09 | 2027-02-15 | 2646 |  | RGA -FINISHING | 7834502 |
| 2648 | 40100.40200.40600.53500.55300.57400.88600.2223700 | MAIN DOOR FRAME SHUTTER FIXING | 6d | 2027-02-15 | 2027-02-21 | 2865 |  | RGA -FINISHING | 7834512 |
| 2649 | 40100.40200.40600.53500.55300.57400.88600.2223800 | FINAL COAT PAINT | 8d | 2027-02-21 | 2027-03-01 | 2648 |  | RGA -FINISHING | 7834522 |
| 2650 | 40100.40200.40600.53500.55300.57400.88500 | **24TH FLOOR** | 198.5d | 2026-09-04 | 2027-03-21 |  | start no earlier than 2026-09-04 | RGA -FINISHING | 7805212 |
| 2651 | 40100.40200.40600.53500.55300.57400.88500.2223900 | TOILET DADO TILE FIXING | 10d | 2027-01-09 | 2027-01-18 | 2316 |  | RGA -FINISHING | 7834532 |
| 2652 | 40100.40200.40600.53500.55300.57400.88500.2224000 | TOILET FLOORING WORK | 7d | 2027-01-19 | 2027-01-25 | 2651 |  | RGA -FINISHING | 7834542 |
| 2653 | 40100.40200.40600.53500.55300.57400.88500.2224100 | FIRE FIGHTING | 8d | 2026-09-04 | 2026-09-11 | 2315 |  | RGA -FINISHING | 7834552 |
| 2654 | 40100.40200.40600.53500.55300.57400.88500.2224200 | INTERNAL PAINTING - PUTTY / PRIMER APPLICATION | 5d | 2027-02-07 | 2027-02-11 | 2656 |  | RGA -FINISHING | 7834562 |
| 2655 | 40100.40200.40600.53500.55300.57400.88500.2224300 | FLAT FLOORING | 7d | 2027-01-26 | 2027-02-01 | 2652 |  | RGA -FINISHING | 7834572 |
| 2656 | 40100.40200.40600.53500.55300.57400.88500.2224400 | WINDOW FIXING | 5d | 2027-02-02 | 2027-02-06 | 2655 |  | RGA -FINISHING | 7834582 |
| 2657 | 40100.40200.40600.53500.55300.57400.88500.2224500 | INTERNAL PAINTING - 1ST COAT | 4d | 2027-02-12 | 2027-02-15 | 2654 |  | RGA -FINISHING | 7834592 |
| 2658 | 40100.40200.40600.53500.55300.57400.88500.2224600 | INTERNAL DOOR FIXING | 15d | 2027-02-14 | 2027-02-28 | 2657FS-2d |  | RGA -FINISHING | 7834602 |
| 2659 | 40100.40200.40600.53500.55300.57400.88500.2224700 | WIRING & SWITCH PLATE FIXING | 8d | 2027-02-25 | 2027-03-04 | 2658FS-4d |  | RGA -FINISHING | 7834612 |
| 2660 | 40100.40200.40600.53500.55300.57400.88500.2224800 | TOILET FALSE CEILING | 7d | 2027-03-05 | 2027-03-11 | 2659 |  | RGA -FINISHING | 7834622 |
| 2661 | 40100.40200.40600.53500.55300.57400.88500.2224900 | MAIN DOOR FRAME SHUTTER FIXING | 6d | 2027-03-07 | 2027-03-13 | 2873 |  | RGA -FINISHING | 7834632 |
| 2662 | 40100.40200.40600.53500.55300.57400.88500.2225000 | FINAL COAT PAINT | 8d | 2027-03-13 | 2027-03-21 | 2661 |  | RGA -FINISHING | 7834642 |

| ID | WBS | Task | Duration | Start | Finish | Predecessors | Constraint | Calendar | Unique_Task_ID |
| --- | --- | --- | --- | --- | --- | --- | --- | --- | --- |
| 2663 | 40100.40200.40600.53500.55300.57400.88400 | **25TH FLOOR** | 234.5d | 2026-08-29 | 2027-04-20 |  | start no earlier than 2026-08-29 | RGA -FINISHING | 7805202 |
| 2664 | 40100.40200.40600.53500.55300.57400.88400.2225100 | TOILET DADO TILE FIXING | 10d | 2027-01-03 | 2027-01-12 | 2323 |  | RGA -FINISHING | 7834652 |
| 2665 | 40100.40200.40600.53500.55300.57400.88400.2225200 | TOILET FLOORING WORK | 7d | 2027-01-13 | 2027-01-19 | 2664 |  | RGA -FINISHING | 7834662 |
| 2666 | 40100.40200.40600.53500.55300.57400.88400.2225300 | FIRE FIGHTING | 8d | 2026-08-29 | 2026-09-05 | 2322 |  | RGA -FINISHING | 7834672 |
| 2667 | 40100.40200.40600.53500.55300.57400.88400.2225400 | INTERNAL PAINTING - PUTTY / PRIMER APPLICATION | 5d | 2027-02-16 | 2027-02-20 | 2669 |  | RGA -FINISHING | 7834682 |
| 2668 | 40100.40200.40600.53500.55300.57400.88400.2225500 | FLAT FLOORING | 7d | 2027-02-04 | 2027-02-10 | 2665FS+15d |  | RGA -FINISHING | 7834692 |
| 2669 | 40100.40200.40600.53500.55300.57400.88400.2225600 | WINDOW FIXING | 5d | 2027-02-11 | 2027-02-15 | 2668 |  | RGA -FINISHING | 7834702 |
| 2670 | 40100.40200.40600.53500.55300.57400.88400.2225700 | INTERNAL PAINTING - 1ST COAT | 4d | 2027-02-21 | 2027-02-24 | 2667 |  | RGA -FINISHING | 7834712 |
| 2671 | 40100.40200.40600.53500.55300.57400.88400.2225800 | INTERNAL DOOR FIXING | 15d | 2027-02-23 | 2027-03-09 | 2670FS-2d |  | RGA -FINISHING | 7834722 |
| 2672 | 40100.40200.40600.53500.55300.57400.88400.2225900 | WIRING & SWITCH PLATE FIXING | 8d | 2027-03-06 | 2027-03-13 | 2671FS-4d |  | RGA -FINISHING | 7834732 |
| 2673 | 40100.40200.40600.53500.55300.57400.88400.2226000 | TOILET FALSE CEILING | 7d | 2027-03-14 | 2027-03-20 | 2672 |  | RGA -FINISHING | 7834742 |
| 2674 | 40100.40200.40600.53500.55300.57400.88400.2226100 | MAIN DOOR FRAME SHUTTER FIXING | 6d | 2027-04-06 | 2027-04-12 | 2881 |  | RGA -FINISHING | 7834752 |
| 2675 | 40100.40200.40600.53500.55300.57400.88400.2226200 | FINAL COAT PAINT | 8d | 2027-04-12 | 2027-04-20 | 2674 |  | RGA -FINISHING | 7834762 |
| 2676 | 40100.40200.40600.53500.55300.60200 | **LIFT LOBBY & STAIRCASE FINISHING WORK** | 462.5d | 2026-01-23 | 2027-04-30 |  | start no earlier than 2026-01-23 | RGA -FINISHING | 7362195 |
| 2677 | 40100.40200.40600.53500.55300.60200.234300 | **GROUND FLOOR** | 341.5d | 2026-01-23 | 2026-12-30 |  | start no earlier than 2026-01-23 | RGA -FINISHING | 7805982 |
| 2678 | 40100.40200.40600.53500.55300.60200.234300.2226300 | FIRE FIGHTING | 5d | 2026-01-23 | 2026-01-27 | 2341FS-5d |  | RGA -FINISHING | 7835012 |
| 2679 | 40100.40200.40600.53500.55300.60200.234300.2226400 | LIFT BLOCK WORK | 6d | 2026-10-05 | 2026-10-10 | 2133 |  | RGA -FINISHING | 7835022 |
| 2680 | 40100.40200.40600.53500.55300.60200.234300.2226500 | LIFT DADO WORK | 6d | 2026-11-27 | 2026-12-03 | 2888FS-85d |  | RGA -FINISHING | 7835032 |
| 2681 | 40100.40200.40600.53500.55300.60200.234300.2226600 | LOBBY FLOORING WORK | 8d | 2026-12-03 | 2026-12-11 | 2680 |  | RGA -FINISHING | 7835042 |
| 2682 | 40100.40200.40600.53500.55300.60200.234300.2226700 | ELECTRICAL WIRING & SWITCH PLATE FIXING WORK | 6d | 2026-12-11 | 2026-12-17 | 2681 |  | RGA -FINISHING | 7835052 |
| 2683 | 40100.40200.40600.53500.55300.60200.234300.2226800 | False ceiling & 1ST COAT PAINTING | 10d | 2026-12-17 | 2026-12-27 | 2682 |  | RGA -FINISHING | 7835062 |
| 2684 | 40100.40200.40600.53500.55300.60200.234300.2226900 | CLEANING | 3d | 2026-12-27 | 2026-12-30 | 2683 |  | RGA -FINISHING | 7835072 |
| 2685 | 40100.40200.40600.53500.55300.60200.234400 | **1ST FLOOR** | 340.5d | 2026-02-04 | 2027-01-10 |  | start no earlier than 2026-02-04 | RGA -FINISHING | 7805992 |
| 2686 | 40100.40200.40600.53500.55300.60200.234400.2227000 | FIRE FIGHTING | 10d | 2026-02-04 | 2026-02-13 | 2354FS-5d |  | RGA -FINISHING | 7835082 |
| 2687 | 40100.40200.40600.53500.55300.60200.234400.2227100 | LIFT BLOCK WORK | 3d | 2026-10-05 | 2026-10-07 | 2679SS |  | RGA -FINISHING | 7835092 |
| 2688 | 40100.40200.40600.53500.55300.60200.234400.2227200 | LIFT DADO WORK | 10d | 2026-11-27 | 2026-12-07 | 2680SS |  | RGA -FINISHING | 7835102 |
| 2689 | 40100.40200.40600.53500.55300.60200.234400.2227300 | LOBBY FLOORING WORK | 10d | 2026-12-07 | 2026-12-17 | 2688 |  | RGA -FINISHING | 7835112 |
| 2690 | 40100.40200.40600.53500.55300.60200.234400.2227400 | ELECTRICAL WIRING & SWITCH PLATE FIXING WORK | 6d | 2026-12-17 | 2026-12-23 | 2689 |  | RGA -FINISHING | 7835122 |
| 2691 | 40100.40200.40600.53500.55300.60200.234400.2227500 | False ceiling & 1ST COAT PAINTING | 15d | 2026-12-23 | 2027-01-07 | 2690 |  | RGA -FINISHING | 7835132 |
| 2692 | 40100.40200.40600.53500.55300.60200.234400.2227600 | CLEANING | 3d | 2027-01-07 | 2027-01-10 | 2691 |  | RGA -FINISHING | 7835142 |

Notes:
- 2676: Completion in 12 months post last RCC
- 2678: Assumed
- 2686: Assumed

| ID | WBS | Task | Duration | Start | Finish | Predecessors | Constraint | Calendar | Unique_Task_ID |
| --- | --- | --- | --- | --- | --- | --- | --- | --- | --- |
| 2693 | 40100.40200.40600.53500.55300.60200.234500 | **2nd FLOOR** | 324.5d | 2026-02-20 | 2027-01-10 |  | start no earlier than 2026-02-20 | RGA -FINISHING | 7806002 |
| 2694 | 40100.40200.40600.53500.55300.60200.234500.2227700 | FIRE FIGHTING | 10d | 2026-02-20 | 2026-03-01 | 2367FS-5d |  | RGA -FINISHING | 7835152 |
| 2695 | 40100.40200.40600.53500.55300.60200.234500.2227800 | LIFT BLOCK WORK | 3d | 2026-10-05 | 2026-10-07 | 2687SS |  | RGA -FINISHING | 7835162 |
| 2696 | 40100.40200.40600.53500.55300.60200.234500.2227900 | LIFT DADO WORK | 10d | 2026-11-27 | 2026-12-07 | 2688SS |  | RGA -FINISHING | 7835172 |
| 2697 | 40100.40200.40600.53500.55300.60200.234500.2228000 | LOBBY FLOORING WORK | 10d | 2026-12-07 | 2026-12-17 | 2696 |  | RGA -FINISHING | 7835182 |
| 2698 | 40100.40200.40600.53500.55300.60200.234500.2228100 | ELECTRICAL WIRING & SWITCH PLATE FIXING WORK | 6d | 2026-12-17 | 2026-12-23 | 2697 |  | RGA -FINISHING | 7835192 |
| 2699 | 40100.40200.40600.53500.55300.60200.234500.2228200 | False ceiling & 1ST COAT PAINTING | 15d | 2026-12-23 | 2027-01-07 | 2698 |  | RGA -FINISHING | 7835202 |
| 2700 | 40100.40200.40600.53500.55300.60200.234500.2228300 | CLEANING | 3d | 2027-01-07 | 2027-01-10 | 2699 |  | RGA -FINISHING | 7835212 |
| 2701 | 40100.40200.40600.53500.55300.60200.234600 | **3rd FLOOR** | 310.5d | 2026-03-16 | 2027-01-20 |  | start no earlier than 2026-03-16 | RGA -FINISHING | 7806012 |
| 2702 | 40100.40200.40600.53500.55300.60200.234600.2228400 | FIRE FIGHTING | 10d | 2026-03-16 | 2026-03-25 | 2380FS-5d |  | RGA -FINISHING | 7835222 |
| 2703 | 40100.40200.40600.53500.55300.60200.234600.2228500 | LIFT BLOCK WORK | 3d | 2026-10-05 | 2026-10-07 | 2695SS |  | RGA -FINISHING | 7835232 |
| 2704 | 40100.40200.40600.53500.55300.60200.234600.2228600 | LIFT DADO WORK | 10d | 2026-12-07 | 2026-12-17 | 2696 |  | RGA -FINISHING | 7835242 |
| 2705 | 40100.40200.40600.53500.55300.60200.234600.2228700 | LOBBY FLOORING WORK | 10d | 2026-12-17 | 2026-12-27 | 2704 |  | RGA -FINISHING | 7835252 |
| 2706 | 40100.40200.40600.53500.55300.60200.234600.2228800 | ELECTRICAL WIRING & SWITCH PLATE FIXING WORK | 6d | 2026-12-27 | 2027-01-02 | 2705 |  | RGA -FINISHING | 7835262 |
| 2707 | 40100.40200.40600.53500.55300.60200.234600.2228900 | False ceiling & 1ST COAT PAINTING | 15d | 2027-01-02 | 2027-01-17 | 2706 |  | RGA -FINISHING | 7835272 |
| 2708 | 40100.40200.40600.53500.55300.60200.234600.2229000 | CLEANING | 3d | 2027-01-17 | 2027-01-20 | 2707 |  | RGA -FINISHING | 7835282 |
| 2709 | 40100.40200.40600.53500.55300.60200.234700 | **4th FLOOR** | 311.5d | 2026-03-25 | 2027-01-30 |  | start no earlier than 2026-03-25 | RGA -FINISHING | 7806022 |
| 2710 | 40100.40200.40600.53500.55300.60200.234700.2229100 | FIRE FIGHTING | 10d | 2026-03-25 | 2026-04-03 | 2393FS-5d |  | RGA -FINISHING | 7835292 |
| 2711 | 40100.40200.40600.53500.55300.60200.234700.2229200 | LIFT BLOCK WORK | 3d | 2026-10-08 | 2026-10-10 | 2703 |  | RGA -FINISHING | 7835302 |
| 2712 | 40100.40200.40600.53500.55300.60200.234700.2229300 | LIFT DADO WORK | 10d | 2026-12-17 | 2026-12-27 | 2704 |  | RGA -FINISHING | 7835312 |
| 2713 | 40100.40200.40600.53500.55300.60200.234700.2229400 | LOBBY FLOORING WORK | 10d | 2026-12-27 | 2027-01-06 | 2712 |  | RGA -FINISHING | 7835322 |
| 2714 | 40100.40200.40600.53500.55300.60200.234700.2229500 | ELECTRICAL WIRING & SWITCH PLATE FIXING WORK | 6d | 2027-01-06 | 2027-01-12 | 2713 |  | RGA -FINISHING | 7835332 |
| 2715 | 40100.40200.40600.53500.55300.60200.234700.2229600 | False ceiling & 1ST COAT PAINTING | 15d | 2027-01-12 | 2027-01-27 | 2714 |  | RGA -FINISHING | 7835342 |
| 2716 | 40100.40200.40600.53500.55300.60200.234700.2229700 | CLEANING | 3d | 2027-01-27 | 2027-01-30 | 2715 |  | RGA -FINISHING | 7835352 |

Notes:
- 2694: Assumed
- 2702: Assumed
- 2710: Assumed

| ID | WBS | Task | Duration | Start | Finish | Predecessors | Constraint | Calendar | Unique_Task_ID |
| --- | --- | --- | --- | --- | --- | --- | --- | --- | --- |
| 2717 | 40100.40200.40600.53500.55300.60200.234800 | **5th FLOOR** | 302.5d | 2026-04-03 | 2027-01-30 |  | start no earlier than 2026-04-03 | RGA -FINISHING | 7806032 |
| 2718 | 40100.40200.40600.53500.55300.60200.234800.2229800 | FIRE FIGHTING | 10d | 2026-04-03 | 2026-04-12 | 2406FS-5d |  | RGA -FINISHING | 7835362 |
| 2719 | 40100.40200.40600.53500.55300.60200.234800.2229900 | LIFT BLOCK WORK | 3d | 2026-10-08 | 2026-10-10 | 2711SS |  | RGA -FINISHING | 7835372 |
| 2720 | 40100.40200.40600.53500.55300.60200.234800.2230000 | LIFT DADO WORK | 10d | 2026-12-17 | 2026-12-27 | 2712SS |  | RGA -FINISHING | 7835382 |
| 2721 | 40100.40200.40600.53500.55300.60200.234800.2230100 | LOBBY FLOORING WORK | 10d | 2026-12-27 | 2027-01-06 | 2720 |  | RGA -FINISHING | 7835392 |
| 2722 | 40100.40200.40600.53500.55300.60200.234800.2230200 | ELECTRICAL WIRING & SWITCH PLATE FIXING WORK | 6d | 2027-01-06 | 2027-01-12 | 2721 |  | RGA -FINISHING | 7835402 |
| 2723 | 40100.40200.40600.53500.55300.60200.234800.2230300 | False ceiling & 1ST COAT PAINTING | 15d | 2027-01-12 | 2027-01-27 | 2722 |  | RGA -FINISHING | 7835412 |
| 2724 | 40100.40200.40600.53500.55300.60200.234800.2230400 | CLEANING | 3d | 2027-01-27 | 2027-01-30 | 2723 |  | RGA -FINISHING | 7835422 |
| 2725 | 40100.40200.40600.53500.55300.60200.234900 | **6th FLOOR** | 293.5d | 2026-04-12 | 2027-01-30 |  | start no earlier than 2026-04-12 | RGA -FINISHING | 7806042 |
| 2726 | 40100.40200.40600.53500.55300.60200.234900.2230500 | FIRE FIGHTING | 10d | 2026-04-12 | 2026-04-21 | 2419FS-5d |  | RGA -FINISHING | 7835432 |
| 2727 | 40100.40200.40600.53500.55300.60200.234900.2230600 | LIFT BLOCK WORK | 3d | 2026-10-08 | 2026-10-10 | 2719SS |  | RGA -FINISHING | 7835442 |
| 2728 | 40100.40200.40600.53500.55300.60200.234900.2230700 | LIFT DADO WORK | 10d | 2026-12-17 | 2026-12-27 | 2720SS |  | RGA -FINISHING | 7835452 |
| 2729 | 40100.40200.40600.53500.55300.60200.234900.2230800 | LOBBY FLOORING WORK | 10d | 2026-12-27 | 2027-01-06 | 2728 |  | RGA -FINISHING | 7835462 |
| 2730 | 40100.40200.40600.53500.55300.60200.234900.2230900 | ELECTRICAL WIRING & SWITCH PLATE FIXING WORK | 6d | 2027-01-06 | 2027-01-12 | 2729 |  | RGA -FINISHING | 7835472 |
| 2731 | 40100.40200.40600.53500.55300.60200.234900.2231000 | False ceiling & 1ST COAT PAINTING | 15d | 2027-01-12 | 2027-01-27 | 2730 |  | RGA -FINISHING | 7835482 |
| 2732 | 40100.40200.40600.53500.55300.60200.234900.2231100 | CLEANING | 3d | 2027-01-27 | 2027-01-30 | 2731 |  | RGA -FINISHING | 7835492 |
| 2733 | 40100.40200.40600.53500.55300.60200.235000 | **7th FLOOR** | 284.5d | 2026-04-21 | 2027-01-30 |  | start no earlier than 2026-04-21 | RGA -FINISHING | 7806052 |
| 2734 | 40100.40200.40600.53500.55300.60200.235000.2231200 | FIRE FIGHTING | 10d | 2026-04-21 | 2026-04-30 | 2432FS-5d |  | RGA -FINISHING | 7835502 |
| 2735 | 40100.40200.40600.53500.55300.60200.235000.2231300 | LIFT BLOCK WORK | 3d | 2026-10-08 | 2026-10-10 | 2727SS |  | RGA -FINISHING | 7835512 |
| 2736 | 40100.40200.40600.53500.55300.60200.235000.2231400 | LIFT DADO WORK | 10d | 2026-12-17 | 2026-12-27 | 2728SS |  | RGA -FINISHING | 7835522 |
| 2737 | 40100.40200.40600.53500.55300.60200.235000.2231500 | LOBBY FLOORING WORK | 10d | 2026-12-27 | 2027-01-06 | 2736 |  | RGA -FINISHING | 7835532 |
| 2738 | 40100.40200.40600.53500.55300.60200.235000.2231600 | ELECTRICAL WIRING & SWITCH PLATE FIXING WORK | 6d | 2027-01-06 | 2027-01-12 | 2737 |  | RGA -FINISHING | 7835542 |
| 2739 | 40100.40200.40600.53500.55300.60200.235000.2231700 | False ceiling & 1ST COAT PAINTING | 15d | 2027-01-12 | 2027-01-27 | 2738 |  | RGA -FINISHING | 7835552 |
| 2740 | 40100.40200.40600.53500.55300.60200.235000.2231800 | CLEANING | 3d | 2027-01-27 | 2027-01-30 | 2739 |  | RGA -FINISHING | 7835562 |

Notes:
- 2718: Assumed
- 2726: Assumed
- 2734: Assumed

| ID | WBS | Task | Duration | Start | Finish | Predecessors | Constraint | Calendar | Unique_Task_ID |
| --- | --- | --- | --- | --- | --- | --- | --- | --- | --- |
| 2741 | 40100.40200.40600.53500.55300.60200.235100 | **8th FLOOR** | 285.5d | 2026-04-30 | 2027-02-09 |  | start no earlier than 2026-04-30 | RGA -FINISHING | 7806062 |
| 2742 | 40100.40200.40600.53500.55300.60200.235100.2231900 | FIRE FIGHTING | 10d | 2026-04-30 | 2026-05-09 | 2445FS-5d |  | RGA -FINISHING | 7835572 |
| 2743 | 40100.40200.40600.53500.55300.60200.235100.2232000 | LIFT BLOCK WORK | 3d | 2026-10-11 | 2026-10-13 | 2735 |  | RGA -FINISHING | 7835582 |
| 2744 | 40100.40200.40600.53500.55300.60200.235100.2232100 | LIFT DADO WORK | 10d | 2026-12-27 | 2027-01-06 | 2736 |  | RGA -FINISHING | 7835592 |
| 2745 | 40100.40200.40600.53500.55300.60200.235100.2232200 | LOBBY FLOORING WORK | 10d | 2027-01-06 | 2027-01-16 | 2744 |  | RGA -FINISHING | 7835602 |
| 2746 | 40100.40200.40600.53500.55300.60200.235100.2232300 | ELECTRICAL WIRING & SWITCH PLATE FIXING WORK | 6d | 2027-01-16 | 2027-01-22 | 2745 |  | RGA -FINISHING | 7835612 |
| 2747 | 40100.40200.40600.53500.55300.60200.235100.2232400 | False ceiling & 1ST COAT PAINTING | 15d | 2027-01-22 | 2027-02-06 | 2746 |  | RGA -FINISHING | 7835622 |
| 2748 | 40100.40200.40600.53500.55300.60200.235100.2232500 | CLEANING | 3d | 2027-02-06 | 2027-02-09 | 2747 |  | RGA -FINISHING | 7835632 |
| 2749 | 40100.40200.40600.53500.55300.60200.235200 | **9th FLOOR** | 276.5d | 2026-05-09 | 2027-02-09 |  | start no earlier than 2026-05-09 | RGA -FINISHING | 7362655 |
| 2750 | 40100.40200.40600.53500.55300.60200.235200.2232600 | FIRE FIGHTING | 10d | 2026-05-09 | 2026-05-18 | 2458FS-5d |  | RGA -FINISHING | 7835642 |
| 2751 | 40100.40200.40600.53500.55300.60200.235200.2232700 | LIFT BLOCK WORK | 3d | 2026-10-11 | 2026-10-13 | 2743SS |  | RGA -FINISHING | 7835652 |
| 2752 | 40100.40200.40600.53500.55300.60200.235200.2232800 | LIFT DADO WORK | 10d | 2026-12-27 | 2027-01-06 | 2744SS |  | RGA -FINISHING | 7835662 |
| 2753 | 40100.40200.40600.53500.55300.60200.235200.2232900 | LOBBY FLOORING WORK | 10d | 2027-01-06 | 2027-01-16 | 2752 |  | RGA -FINISHING | 7835672 |
| 2754 | 40100.40200.40600.53500.55300.60200.235200.2233000 | ELECTRICAL WIRING & SWITCH PLATE FIXING WORK | 6d | 2027-01-16 | 2027-01-22 | 2753 |  | RGA -FINISHING | 7835682 |
| 2755 | 40100.40200.40600.53500.55300.60200.235200.2233100 | False ceiling & 1ST COAT PAINTING | 15d | 2027-01-22 | 2027-02-06 | 2754 |  | RGA -FINISHING | 7835692 |
| 2756 | 40100.40200.40600.53500.55300.60200.235200.2233200 | CLEANING | 3d | 2027-02-06 | 2027-02-09 | 2755 |  | RGA -FINISHING | 7835702 |
| 2757 | 40100.40200.40600.53500.55300.60200.235300 | **10th FLOOR** | 266.5d | 2026-05-19 | 2027-02-09 |  | start no earlier than 2026-05-19 | RGA -FINISHING | 7806072 |
| 2758 | 40100.40200.40600.53500.55300.60200.235300.2233300 | FIRE FIGHTING | 10d | 2026-05-19 | 2026-05-28 | 2471FS-5d |  | RGA -FINISHING | 7835712 |
| 2759 | 40100.40200.40600.53500.55300.60200.235300.2233400 | LIFT BLOCK WORK | 3d | 2026-10-11 | 2026-10-13 | 2751SS |  | RGA -FINISHING | 7835722 |
| 2760 | 40100.40200.40600.53500.55300.60200.235300.2233500 | LIFT DADO WORK | 10d | 2026-12-27 | 2027-01-06 | 2752SS |  | RGA -FINISHING | 7835732 |
| 2761 | 40100.40200.40600.53500.55300.60200.235300.2233600 | LOBBY FLOORING WORK | 10d | 2027-01-06 | 2027-01-16 | 2760 |  | RGA -FINISHING | 7835742 |
| 2762 | 40100.40200.40600.53500.55300.60200.235300.2233700 | ELECTRICAL WIRING & SWITCH PLATE FIXING WORK | 6d | 2027-01-16 | 2027-01-22 | 2761 |  | RGA -FINISHING | 7835752 |
| 2763 | 40100.40200.40600.53500.55300.60200.235300.2233800 | False ceiling & 1ST COAT PAINTING | 15d | 2027-01-22 | 2027-02-06 | 2762 |  | RGA -FINISHING | 7835762 |
| 2764 | 40100.40200.40600.53500.55300.60200.235300.2233900 | CLEANING | 3d | 2027-02-06 | 2027-02-09 | 2763 |  | RGA -FINISHING | 7835772 |

Notes:
- 2742: Assumed
- 2750: Assumed
- 2758: Assumed

| ID | WBS | Task | Duration | Start | Finish | Predecessors | Constraint | Calendar | Unique_Task_ID |
| --- | --- | --- | --- | --- | --- | --- | --- | --- | --- |
| 2765 | 40100.40200.40600.53500.55300.60200.235400 | **11th FLOOR** | 249.5d | 2026-06-05 | 2027-02-09 |  | start no earlier than 2026-06-05 | RGA -FINISHING | 7806082 |
| 2766 | 40100.40200.40600.53500.55300.60200.235400.2234000 | FIRE FIGHTING | 10d | 2026-06-05 | 2026-06-14 | 2484FS-5d |  | RGA -FINISHING | 7835782 |
| 2767 | 40100.40200.40600.53500.55300.60200.235400.2234100 | LIFT BLOCK WORK | 3d | 2026-10-11 | 2026-10-13 | 2759SS |  | RGA -FINISHING | 7835792 |
| 2768 | 40100.40200.40600.53500.55300.60200.235400.2234200 | LIFT DADO WORK | 10d | 2026-12-27 | 2027-01-06 | 2760SS |  | RGA -FINISHING | 7835802 |
| 2769 | 40100.40200.40600.53500.55300.60200.235400.2234300 | LOBBY FLOORING WORK | 10d | 2027-01-06 | 2027-01-16 | 2768 |  | RGA -FINISHING | 7835812 |
| 2770 | 40100.40200.40600.53500.55300.60200.235400.2234400 | ELECTRICAL WIRING & SWITCH PLATE FIXING WORK | 6d | 2027-01-16 | 2027-01-22 | 2769 |  | RGA -FINISHING | 7835822 |
| 2771 | 40100.40200.40600.53500.55300.60200.235400.2234500 | False ceiling & 1ST COAT PAINTING | 15d | 2027-01-22 | 2027-02-06 | 2770 |  | RGA -FINISHING | 7835832 |
| 2772 | 40100.40200.40600.53500.55300.60200.235400.2234600 | CLEANING | 3d | 2027-02-06 | 2027-02-09 | 2771 |  | RGA -FINISHING | 7835842 |
| 2773 | 40100.40200.40600.53500.55300.60200.235500 | **12th FLOOR** | 250.5d | 2026-06-14 | 2027-02-19 |  | start no earlier than 2026-06-14 | RGA -FINISHING | 7806092 |
| 2774 | 40100.40200.40600.53500.55300.60200.235500.2234700 | FIRE FIGHTING | 10d | 2026-06-14 | 2026-06-23 | 2497FS-5d |  | RGA -FINISHING | 7835852 |
| 2775 | 40100.40200.40600.53500.55300.60200.235500.2234800 | LIFT BLOCK WORK | 3d | 2026-10-14 | 2026-10-16 | 2767 |  | RGA -FINISHING | 7835862 |
| 2776 | 40100.40200.40600.53500.55300.60200.235500.2234900 | LIFT DADO WORK | 10d | 2027-01-06 | 2027-01-16 | 2768 |  | RGA -FINISHING | 7835872 |
| 2777 | 40100.40200.40600.53500.55300.60200.235500.2235000 | LOBBY FLOORING WORK | 10d | 2027-01-16 | 2027-01-26 | 2776 |  | RGA -FINISHING | 7835882 |
| 2778 | 40100.40200.40600.53500.55300.60200.235500.2235100 | ELECTRICAL WIRING & SWITCH PLATE FIXING WORK | 6d | 2027-01-26 | 2027-02-01 | 2777 |  | RGA -FINISHING | 7835892 |
| 2779 | 40100.40200.40600.53500.55300.60200.235500.2235200 | False ceiling & 1ST COAT PAINTING | 15d | 2027-02-01 | 2027-02-16 | 2778 |  | RGA -FINISHING | 7835902 |
| 2780 | 40100.40200.40600.53500.55300.60200.235500.2235300 | CLEANING | 3d | 2027-02-16 | 2027-02-19 | 2779 |  | RGA -FINISHING | 7835912 |
| 2781 | 40100.40200.40600.53500.55300.60200.235600 | **13th FLOOR** | 244.5d | 2026-06-20 | 2027-02-19 |  | start no earlier than 2026-06-20 | RGA -FINISHING | 7806102 |
| 2782 | 40100.40200.40600.53500.55300.60200.235600.2235400 | FIRE FIGHTING | 10d | 2026-06-20 | 2026-06-29 | 2510FS-5d |  | RGA -FINISHING | 7835922 |
| 2783 | 40100.40200.40600.53500.55300.60200.235600.2235500 | LIFT BLOCK WORK | 3d | 2026-10-14 | 2026-10-16 | 2775SS |  | RGA -FINISHING | 7835932 |
| 2784 | 40100.40200.40600.53500.55300.60200.235600.2235600 | LIFT DADO WORK | 10d | 2027-01-06 | 2027-01-16 | 2776SS |  | RGA -FINISHING | 7835942 |
| 2785 | 40100.40200.40600.53500.55300.60200.235600.2235700 | LOBBY FLOORING WORK | 10d | 2027-01-16 | 2027-01-26 | 2784 |  | RGA -FINISHING | 7835952 |
| 2786 | 40100.40200.40600.53500.55300.60200.235600.2235800 | ELECTRICAL WIRING & SWITCH PLATE FIXING WORK | 6d | 2027-01-26 | 2027-02-01 | 2785 |  | RGA -FINISHING | 7835962 |
| 2787 | 40100.40200.40600.53500.55300.60200.235600.2235900 | False ceiling & 1ST COAT PAINTING | 15d | 2027-02-01 | 2027-02-16 | 2786 |  | RGA -FINISHING | 7835972 |
| 2788 | 40100.40200.40600.53500.55300.60200.235600.2236000 | CLEANING | 3d | 2027-02-16 | 2027-02-19 | 2787 |  | RGA -FINISHING | 7835982 |

Notes:
- 2766: Assumed
- 2774: Assumed
- 2782: Assumed

| ID | WBS | Task | Duration | Start | Finish | Predecessors | Constraint | Calendar | Unique_Task_ID |
| --- | --- | --- | --- | --- | --- | --- | --- | --- | --- |
| 2789 | 40100.40200.40600.53500.55300.60200.235700 | **14th FLOOR** | 238.5d | 2026-06-26 | 2027-02-19 |  | start no earlier than 2026-06-26 | RGA -FINISHING | 7806112 |
| 2790 | 40100.40200.40600.53500.55300.60200.235700.2236100 | FIRE FIGHTING | 10d | 2026-06-26 | 2026-07-05 | 2523FS-5d |  | RGA -FINISHING | 7835992 |
| 2791 | 40100.40200.40600.53500.55300.60200.235700.2236200 | LIFT BLOCK WORK | 3d | 2026-10-14 | 2026-10-16 | 2783SS |  | RGA -FINISHING | 7836002 |
| 2792 | 40100.40200.40600.53500.55300.60200.235700.2236300 | LIFT DADO WORK | 10d | 2027-01-06 | 2027-01-16 | 2784SS |  | RGA -FINISHING | 7836012 |
| 2793 | 40100.40200.40600.53500.55300.60200.235700.2236400 | LOBBY FLOORING WORK | 10d | 2027-01-16 | 2027-01-26 | 2792 |  | RGA -FINISHING | 7836022 |
| 2794 | 40100.40200.40600.53500.55300.60200.235700.2236500 | ELECTRICAL WIRING & SWITCH PLATE FIXING WORK | 6d | 2027-01-26 | 2027-02-01 | 2793 |  | RGA -FINISHING | 7836032 |
| 2795 | 40100.40200.40600.53500.55300.60200.235700.2236600 | False ceiling & 1ST COAT PAINTING | 15d | 2027-02-01 | 2027-02-16 | 2794 |  | RGA -FINISHING | 7836042 |
| 2796 | 40100.40200.40600.53500.55300.60200.235700.2236700 | CLEANING | 3d | 2027-02-16 | 2027-02-19 | 2795 |  | RGA -FINISHING | 7836052 |
| 2797 | 40100.40200.40600.53500.55300.60200.235800 | **15th FLOOR** | 222.5d | 2026-07-12 | 2027-02-19 |  | start no earlier than 2026-07-12 | RGA -FINISHING | 7806122 |
| 2798 | 40100.40200.40600.53500.55300.60200.235800.2236800 | FIRE FIGHTING | 10d | 2026-07-12 | 2026-07-21 | 2536FS-5d |  | RGA -FINISHING | 7836062 |
| 2799 | 40100.40200.40600.53500.55300.60200.235800.2236900 | LIFT BLOCK WORK | 3d | 2026-10-14 | 2026-10-16 | 2791SS |  | RGA -FINISHING | 7836072 |
| 2800 | 40100.40200.40600.53500.55300.60200.235800.2237000 | LIFT DADO WORK | 10d | 2027-01-06 | 2027-01-16 | 2792SS |  | RGA -FINISHING | 7836082 |
| 2801 | 40100.40200.40600.53500.55300.60200.235800.2237100 | LOBBY FLOORING WORK | 10d | 2027-01-16 | 2027-01-26 | 2800 |  | RGA -FINISHING | 7836092 |
| 2802 | 40100.40200.40600.53500.55300.60200.235800.2237200 | ELECTRICAL WIRING & SWITCH PLATE FIXING WORK | 6d | 2027-01-26 | 2027-02-01 | 2801 |  | RGA -FINISHING | 7836102 |
| 2803 | 40100.40200.40600.53500.55300.60200.235800.2237300 | False ceiling & 1ST COAT PAINTING | 15d | 2027-02-01 | 2027-02-16 | 2802 |  | RGA -FINISHING | 7836112 |
| 2804 | 40100.40200.40600.53500.55300.60200.235800.2237400 | CLEANING | 3d | 2027-02-16 | 2027-02-19 | 2803 |  | RGA -FINISHING | 7836122 |
| 2805 | 40100.40200.40600.53500.55300.60200.235900 | **16th FLOOR** | 216.5d | 2026-07-28 | 2027-03-01 |  | start no earlier than 2026-07-28 | RGA -FINISHING | 7362725 |
| 2806 | 40100.40200.40600.53500.55300.60200.235900.2237500 | FIRE FIGHTING | 10d | 2026-07-28 | 2026-08-06 | 2549FS-5d |  | RGA -FINISHING | 7836132 |
| 2807 | 40100.40200.40600.53500.55300.60200.235900.2237600 | LIFT BLOCK WORK | 3d | 2026-10-17 | 2026-10-19 | 2799 |  | RGA -FINISHING | 7836142 |
| 2808 | 40100.40200.40600.53500.55300.60200.235900.2237700 | LIFT DADO WORK | 10d | 2027-01-16 | 2027-01-26 | 2800 |  | RGA -FINISHING | 7836152 |
| 2809 | 40100.40200.40600.53500.55300.60200.235900.2237800 | LOBBY FLOORING WORK | 10d | 2027-01-26 | 2027-02-05 | 2808 |  | RGA -FINISHING | 7836162 |
| 2810 | 40100.40200.40600.53500.55300.60200.235900.2237900 | ELECTRICAL WIRING & SWITCH PLATE FIXING WORK | 6d | 2027-02-05 | 2027-02-11 | 2809 |  | RGA -FINISHING | 7836172 |
| 2811 | 40100.40200.40600.53500.55300.60200.235900.2238000 | False ceiling & 1ST COAT PAINTING | 15d | 2027-02-11 | 2027-02-26 | 2810 |  | RGA -FINISHING | 7836182 |
| 2812 | 40100.40200.40600.53500.55300.60200.235900.2238100 | CLEANING | 3d | 2027-02-26 | 2027-03-01 | 2811 |  | RGA -FINISHING | 7836192 |

Notes:
- 2790: Assumed
- 2798: Assumed
- 2806: Assumed

| ID | WBS | Task | Duration | Start | Finish | Predecessors | Constraint | Calendar | Unique_Task_ID |
| --- | --- | --- | --- | --- | --- | --- | --- | --- | --- |
| 2813 | 40100.40200.40600.53500.55300.60200.236000 | **17th FLOOR** | 204.5d | 2026-08-09 | 2027-03-01 |  | start no earlier than 2026-08-09 | RGA -FINISHING | 7806132 |
| 2814 | 40100.40200.40600.53500.55300.60200.236000.2238200 | FIRE FIGHTING | 10d | 2026-08-09 | 2026-08-18 | 2562FS-5d |  | RGA -FINISHING | 7836202 |
| 2815 | 40100.40200.40600.53500.55300.60200.236000.2238300 | LIFT BLOCK WORK | 3d | 2026-10-17 | 2026-10-19 | 2807SS |  | RGA -FINISHING | 7836212 |
| 2816 | 40100.40200.40600.53500.55300.60200.236000.2238400 | LIFT DADO WORK | 10d | 2027-01-16 | 2027-01-26 | 2808SS |  | RGA -FINISHING | 7836222 |
| 2817 | 40100.40200.40600.53500.55300.60200.236000.2238500 | LOBBY FLOORING WORK | 10d | 2027-01-26 | 2027-02-05 | 2816 |  | RGA -FINISHING | 7836232 |
| 2818 | 40100.40200.40600.53500.55300.60200.236000.2238600 | ELECTRICAL WIRING & SWITCH PLATE FIXING WORK | 6d | 2027-02-05 | 2027-02-11 | 2817 |  | RGA -FINISHING | 7836242 |
| 2819 | 40100.40200.40600.53500.55300.60200.236000.2238700 | False ceiling & 1ST COAT PAINTING | 15d | 2027-02-11 | 2027-02-26 | 2818 |  | RGA -FINISHING | 7836252 |
| 2820 | 40100.40200.40600.53500.55300.60200.236000.2238800 | CLEANING | 3d | 2027-02-26 | 2027-03-01 | 2819 |  | RGA -FINISHING | 7836262 |
| 2821 | 40100.40200.40600.53500.55300.60200.236100 | **18th FLOOR** | 196.5d | 2026-08-17 | 2027-03-01 |  | start no earlier than 2026-08-17 | RGA -FINISHING | 7806142 |
| 2822 | 40100.40200.40600.53500.55300.60200.236100.2238900 | FIRE FIGHTING | 10d | 2026-08-17 | 2026-08-26 | 2575FS-5d |  | RGA -FINISHING | 7836272 |
| 2823 | 40100.40200.40600.53500.55300.60200.236100.2239000 | LIFT BLOCK WORK | 3d | 2026-10-17 | 2026-10-19 | 2815SS |  | RGA -FINISHING | 7836282 |
| 2824 | 40100.40200.40600.53500.55300.60200.236100.2239100 | LIFT DADO WORK | 10d | 2027-01-16 | 2027-01-26 | 2816SS |  | RGA -FINISHING | 7836292 |
| 2825 | 40100.40200.40600.53500.55300.60200.236100.2239200 | LOBBY FLOORING WORK | 10d | 2027-01-26 | 2027-02-05 | 2824 |  | RGA -FINISHING | 7836302 |
| 2826 | 40100.40200.40600.53500.55300.60200.236100.2239300 | ELECTRICAL WIRING & SWITCH PLATE FIXING WORK | 6d | 2027-02-05 | 2027-02-11 | 2825 |  | RGA -FINISHING | 7836312 |
| 2827 | 40100.40200.40600.53500.55300.60200.236100.2239400 | False ceiling & 1ST COAT PAINTING | 15d | 2027-02-11 | 2027-02-26 | 2826 |  | RGA -FINISHING | 7836322 |
| 2828 | 40100.40200.40600.53500.55300.60200.236100.2239500 | CLEANING | 3d | 2027-02-26 | 2027-03-01 | 2827 |  | RGA -FINISHING | 7836332 |
| 2829 | 40100.40200.40600.53500.55300.60200.236200 | **19th FLOOR** | 188.5d | 2026-08-25 | 2027-03-01 |  | start no earlier than 2026-08-25 | RGA -FINISHING | 7806152 |
| 2830 | 40100.40200.40600.53500.55300.60200.236200.2239600 | FIRE FIGHTING | 10d | 2026-08-25 | 2026-09-03 | 2588FS-5d |  | RGA -FINISHING | 7836342 |
| 2831 | 40100.40200.40600.53500.55300.60200.236200.2239700 | LIFT BLOCK WORK | 3d | 2026-10-17 | 2026-10-19 | 2823SS |  | RGA -FINISHING | 7836352 |
| 2832 | 40100.40200.40600.53500.55300.60200.236200.2239800 | LIFT DADO WORK | 10d | 2027-01-16 | 2027-01-26 | 2824SS |  | RGA -FINISHING | 7836362 |
| 2833 | 40100.40200.40600.53500.55300.60200.236200.2239900 | LOBBY FLOORING WORK | 10d | 2027-01-26 | 2027-02-05 | 2832 |  | RGA -FINISHING | 7836372 |
| 2834 | 40100.40200.40600.53500.55300.60200.236200.2240000 | ELECTRICAL WIRING & SWITCH PLATE FIXING WORK | 6d | 2027-02-05 | 2027-02-11 | 2833 |  | RGA -FINISHING | 7836382 |
| 2835 | 40100.40200.40600.53500.55300.60200.236200.2240100 | False ceiling & 1ST COAT PAINTING | 15d | 2027-02-11 | 2027-02-26 | 2834 |  | RGA -FINISHING | 7836392 |
| 2836 | 40100.40200.40600.53500.55300.60200.236200.2240200 | CLEANING | 3d | 2027-02-26 | 2027-03-01 | 2835 |  | RGA -FINISHING | 7836402 |

Notes:
- 2814: Assumed
- 2822: Assumed
- 2830: Assumed

| ID | WBS | Task | Duration | Start | Finish | Predecessors | Constraint | Calendar | Unique_Task_ID |
| --- | --- | --- | --- | --- | --- | --- | --- | --- | --- |
| 2837 | 40100.40200.40600.53500.55300.60200.236300 | **20th FLOOR** | 179.5d | 2026-09-03 | 2027-03-01 |  | start no earlier than 2026-09-03 | RGA -FINISHING | 7806162 |
| 2838 | 40100.40200.40600.53500.55300.60200.236300.2240300 | FIRE FIGHTING | 10d | 2026-09-03 | 2026-09-12 | 2601FS-5d |  | RGA -FINISHING | 7836412 |
| 2839 | 40100.40200.40600.53500.55300.60200.236300.2240400 | LIFT BLOCK WORK | 3d | 2026-10-17 | 2026-10-19 | 2831SS |  | RGA -FINISHING | 7836422 |
| 2840 | 40100.40200.40600.53500.55300.60200.236300.2240500 | LIFT DADO WORK | 10d | 2027-01-16 | 2027-01-26 | 2832SS |  | RGA -FINISHING | 7836432 |
| 2841 | 40100.40200.40600.53500.55300.60200.236300.2240600 | LOBBY FLOORING WORK | 10d | 2027-01-26 | 2027-02-05 | 2840 |  | RGA -FINISHING | 7836442 |
| 2842 | 40100.40200.40600.53500.55300.60200.236300.2240700 | ELECTRICAL WIRING & SWITCH PLATE FIXING WORK | 6d | 2027-02-05 | 2027-02-11 | 2841 |  | RGA -FINISHING | 7836452 |
| 2843 | 40100.40200.40600.53500.55300.60200.236300.2240800 | False ceiling & 1ST COAT PAINTING | 15d | 2027-02-11 | 2027-02-26 | 2842 |  | RGA -FINISHING | 7836462 |
| 2844 | 40100.40200.40600.53500.55300.60200.236300.2240900 | CLEANING | 3d | 2027-02-26 | 2027-03-01 | 2843 |  | RGA -FINISHING | 7836472 |
| 2845 | 40100.40200.40600.53500.55300.60200.236400 | **21th FLOOR** | 181.5d | 2026-09-11 | 2027-03-11 |  | start no earlier than 2026-09-11 | RGA -FINISHING | 7362775 |
| 2846 | 40100.40200.40600.53500.55300.60200.236400.2241000 | FIRE FIGHTING | 10d | 2026-09-11 | 2026-09-20 | 2614FS-5d |  | RGA -FINISHING | 7836482 |
| 2847 | 40100.40200.40600.53500.55300.60200.236400.2241100 | LIFT BLOCK WORK | 3d | 2026-10-20 | 2026-10-22 | 2839 |  | RGA -FINISHING | 7836492 |
| 2848 | 40100.40200.40600.53500.55300.60200.236400.2241200 | LIFT DADO WORK | 10d | 2027-01-26 | 2027-02-05 | 2840 |  | RGA -FINISHING | 7836502 |
| 2849 | 40100.40200.40600.53500.55300.60200.236400.2241300 | LOBBY FLOORING WORK | 10d | 2027-02-05 | 2027-02-15 | 2848 |  | RGA -FINISHING | 7836512 |
| 2850 | 40100.40200.40600.53500.55300.60200.236400.2241400 | ELECTRICAL WIRING & SWITCH PLATE FIXING WORK | 6d | 2027-02-15 | 2027-02-21 | 2849 |  | RGA -FINISHING | 7836522 |
| 2851 | 40100.40200.40600.53500.55300.60200.236400.2241500 | False ceiling & 1ST COAT PAINTING | 15d | 2027-02-21 | 2027-03-08 | 2850 |  | RGA -FINISHING | 7836532 |
| 2852 | 40100.40200.40600.53500.55300.60200.236400.2241600 | CLEANING | 3d | 2027-03-08 | 2027-03-11 | 2851 |  | RGA -FINISHING | 7836542 |
| 2853 | 40100.40200.40600.53500.55300.60200.236500 | **22th FLOOR** | 173.5d | 2026-09-19 | 2027-03-11 |  | start no earlier than 2026-09-19 | RGA -FINISHING | 7362785 |
| 2854 | 40100.40200.40600.53500.55300.60200.236500.2241700 | FIRE FIGHTING | 10d | 2026-09-19 | 2026-09-28 | 2627FS-5d |  | RGA -FINISHING | 7836552 |
| 2855 | 40100.40200.40600.53500.55300.60200.236500.2241800 | LIFT BLOCK WORK | 3d | 2026-10-20 | 2026-10-22 | 2847SS |  | RGA -FINISHING | 7836562 |
| 2856 | 40100.40200.40600.53500.55300.60200.236500.2241900 | LIFT DADO WORK | 10d | 2027-01-26 | 2027-02-05 | 2848SS |  | RGA -FINISHING | 7836572 |
| 2857 | 40100.40200.40600.53500.55300.60200.236500.2242000 | LOBBY FLOORING WORK | 10d | 2027-02-05 | 2027-02-15 | 2856 |  | RGA -FINISHING | 7836582 |
| 2858 | 40100.40200.40600.53500.55300.60200.236500.2242100 | ELECTRICAL WIRING & SWITCH PLATE FIXING WORK | 6d | 2027-02-15 | 2027-02-21 | 2857 |  | RGA -FINISHING | 7836592 |
| 2859 | 40100.40200.40600.53500.55300.60200.236500.2242200 | False ceiling & 1ST COAT PAINTING | 15d | 2027-02-21 | 2027-03-08 | 2858 |  | RGA -FINISHING | 7836602 |
| 2860 | 40100.40200.40600.53500.55300.60200.236500.2242300 | CLEANING | 3d | 2027-03-08 | 2027-03-11 | 2859 |  | RGA -FINISHING | 7836612 |

Notes:
- 2838: Assumed
- 2846: Assumed
- 2854: Assumed

| ID | WBS | Task | Duration | Start | Finish | Predecessors | Constraint | Calendar | Unique_Task_ID |
| --- | --- | --- | --- | --- | --- | --- | --- | --- | --- |
| 2861 | 40100.40200.40600.53500.55300.60200.236600 | **23th FLOOR** | 179.5d | 2026-09-13 | 2027-03-11 |  | start no earlier than 2026-09-13 | RGA -FINISHING | 7362795 |
| 2862 | 40100.40200.40600.53500.55300.60200.236600.2242400 | FIRE FIGHTING | 10d | 2026-09-13 | 2026-09-22 | 2640FS-5d |  | RGA -FINISHING | 7836622 |
| 2863 | 40100.40200.40600.53500.55300.60200.236600.2242500 | LIFT BLOCK WORK | 3d | 2026-10-20 | 2026-10-22 | 2855SS |  | RGA -FINISHING | 7836632 |
| 2864 | 40100.40200.40600.53500.55300.60200.236600.2242600 | LIFT DADO WORK | 10d | 2027-01-26 | 2027-02-05 | 2856SS |  | RGA -FINISHING | 7836642 |
| 2865 | 40100.40200.40600.53500.55300.60200.236600.2242700 | LOBBY FLOORING WORK | 10d | 2027-02-05 | 2027-02-15 | 2864 |  | RGA -FINISHING | 7836652 |
| 2866 | 40100.40200.40600.53500.55300.60200.236600.2242800 | ELECTRICAL WIRING & SWITCH PLATE FIXING WORK | 6d | 2027-02-15 | 2027-02-21 | 2865 |  | RGA -FINISHING | 7836662 |
| 2867 | 40100.40200.40600.53500.55300.60200.236600.2242900 | False ceiling & 1ST COAT PAINTING | 15d | 2027-02-21 | 2027-03-08 | 2866 |  | RGA -FINISHING | 7836672 |
| 2868 | 40100.40200.40600.53500.55300.60200.236600.2243000 | CLEANING | 3d | 2027-03-08 | 2027-03-11 | 2867 |  | RGA -FINISHING | 7836682 |
| 2869 | 40100.40200.40600.53500.55300.60200.236700 | **24th FLOOR** | 205.5d | 2026-09-07 | 2027-03-31 |  | start no earlier than 2026-09-07 | RGA -FINISHING | 7362805 |
| 2870 | 40100.40200.40600.53500.55300.60200.236700.2243100 | FIRE FIGHTING | 10d | 2026-09-07 | 2026-09-16 | 2653FS-5d |  | RGA -FINISHING | 7836692 |
| 2871 | 40100.40200.40600.53500.55300.60200.236700.2243200 | LIFT BLOCK WORK | 3d | 2026-10-20 | 2026-10-22 | 2863SS |  | RGA -FINISHING | 7836702 |
| 2872 | 40100.40200.40600.53500.55300.60200.236700.2243300 | LIFT DADO WORK | 10d | 2027-02-15 | 2027-02-25 | 2866SS |  | RGA -FINISHING | 7836712 |
| 2873 | 40100.40200.40600.53500.55300.60200.236700.2243400 | LOBBY FLOORING WORK | 10d | 2027-02-25 | 2027-03-07 | 2872 |  | RGA -FINISHING | 7836722 |
| 2874 | 40100.40200.40600.53500.55300.60200.236700.2243500 | ELECTRICAL WIRING & SWITCH PLATE FIXING WORK | 6d | 2027-03-07 | 2027-03-13 | 2873 |  | RGA -FINISHING | 7836732 |
| 2875 | 40100.40200.40600.53500.55300.60200.236700.2243600 | False ceiling & 1ST COAT PAINTING | 15d | 2027-03-13 | 2027-03-28 | 2874 |  | RGA -FINISHING | 7836742 |
| 2876 | 40100.40200.40600.53500.55300.60200.236700.2243700 | CLEANING | 3d | 2027-03-28 | 2027-03-31 | 2875 |  | RGA -FINISHING | 7836752 |
| 2877 | 40100.40200.40600.53500.55300.60200.236800 | **25th FLOOR** | 241.5d | 2026-09-01 | 2027-04-30 |  | start no earlier than 2026-09-01 | RGA -FINISHING | 7362815 |
| 2878 | 40100.40200.40600.53500.55300.60200.236800.2243800 | FIRE FIGHTING | 10d | 2026-09-01 | 2026-09-10 | 2666FS-5d |  | RGA -FINISHING | 7836762 |
| 2879 | 40100.40200.40600.53500.55300.60200.236800.2243900 | LIFT BLOCK WORK | 3d | 2026-10-20 | 2026-10-22 | 2871SS |  | RGA -FINISHING | 7836772 |
| 2880 | 40100.40200.40600.53500.55300.60200.236800.2244000 | LIFT DADO WORK | 10d | 2027-02-15 | 2027-02-25 | 2872SS |  | RGA -FINISHING | 7836782 |
| 2881 | 40100.40200.40600.53500.55300.60200.236800.2244100 | LOBBY FLOORING WORK | 10d | 2027-03-27 | 2027-04-06 | 2880FS+30d |  | RGA -FINISHING | 7836792 |
| 2882 | 40100.40200.40600.53500.55300.60200.236800.2244200 | ELECTRICAL WIRING & SWITCH PLATE FIXING WORK | 6d | 2027-04-06 | 2027-04-12 | 2881 |  | RGA -FINISHING | 7836802 |
| 2883 | 40100.40200.40600.53500.55300.60200.236800.2244300 | False ceiling & 1ST COAT PAINTING | 15d | 2027-04-12 | 2027-04-27 | 2882 |  | RGA -FINISHING | 7836812 |
| 2884 | 40100.40200.40600.53500.55300.60200.236800.2244400 | CLEANING | 3d | 2027-04-27 | 2027-04-30 | 2883 |  | RGA -FINISHING | 7836822 |

Notes:
- 2862: Assumed
- 2870: Assumed
- 2878: Assumed

| ID | WBS | Task | Duration | Start | Finish | Predecessors | Constraint | Calendar | Unique_Task_ID |
| --- | --- | --- | --- | --- | --- | --- | --- | --- | --- |
| 2885 | 40100.40200.40600.53500.55300.163300 | **Common MEP Works** | 236.5d | 2026-11-05 | 2027-06-29 |  | start no earlier than 2026-11-05 | RGA -FINISHING | 7805272 |
| 2886 | 40100.40200.40600.53500.55300.163300.487300 | **Lift Works** | 95d | 2026-11-17 | 2027-02-20 |  | start no earlier than 2026-11-17 | RGA -FINISHING | 7811382 |
| 2887 | 40100.40200.40600.53500.55300.163300.487300.2244500 | Lift Shaft Handover | 15d | 2026-11-17 | 2026-12-02 | 2143 |  | RGA -FINISHING | 7836972 |
| 2888 | 40100.40200.40600.53500.55300.163300.487300.2244600 | Lift installation work | 80d | 2026-12-02 | 2027-02-20 | 2887 |  | RGA -FINISHING | 7836982 |
| 2889 | 40100.40200.40600.53500.55300.163300.487400 | **Plumbing works** | 98d | 2027-03-23 | 2027-06-29 |  | start no earlier than 2027-03-23 | RGA -FINISHING | 7811372 |
| 2890 | 40100.40200.40600.53500.55300.163300.487400.2244700 | Shaft Plumbing | 90d | 2027-03-31 | 2027-06-29 | 2336FF+45d |  | RGA -FINISHING | 7836992 |
| 2891 | 40100.40200.40600.53500.55300.163300.487400.2244800 | Terrace Looping | 90d | 2027-03-23 | 2027-06-21 | 2334FF |  | RGA -FINISHING | 7837002 |
| 2892 | 40100.40200.40600.53500.55300.163300.487500 | **Fire Fighting works** | 75d | 2026-11-05 | 2027-01-18 |  | start no earlier than 2026-11-05 | RGA -FINISHING | 7811362 |
| 2893 | 40100.40200.40600.53500.55300.163300.487500.2244900 | Shaft Downtake works | 60d | 2026-11-05 | 2027-01-03 | 2138FS+21d |  | RGA -FINISHING | 7837012 |
| 2894 | 40100.40200.40600.53500.55300.163300.487500.2245000 | Connection to pump room | 15d | 2027-01-04 | 2027-01-18 | 2893 |  | RGA -FINISHING | 7837022 |
| 2895 | 40100.40200.40600.53500.55300.163300.340800 | **Electrical works** | 178d | 2026-12-29 | 2027-06-24 |  | start no earlier than 2026-12-29 | RGA -FINISHING | 7808272 |
| 2896 | 40100.40200.40600.53500.55300.163300.340800.2245100 | Shaft cabling | 45d | 2026-12-29 | 2027-02-11 | 2138FS+75d |  | RGA -FINISHING | 7837032 |
| 2897 | 40100.40200.40600.53500.55300.163300.340800.2245200 | Meter room erection | 15d | 2027-06-10 | 2027-06-24 | 1997FS+225d |  | RGA -FINISHING | 7837042 |
| 2898 | 40100.40200.40600.53500.55300.163300.340800.2245300 | Panel erection | 15d | 2027-02-21 | 2027-03-07 | 1897 |  | RGA -FINISHING | 7837052 |
| 2899 | 40100.40200.40600.53500.55300.163300.340800.2245400 | DG Installtion | 10d | 2027-03-12 | 2027-03-21 | 2897SS-90d |  | RGA -FINISHING | 7837062 |
| 2900 | 40100.40200.40600.53500.55300.163300.340800.2245500 | Transformer erection | 15d | 2027-03-12 | 2027-03-26 | 2899SS |  | RGA -FINISHING | 7837072 |
| 2901 | 40100.40200.40600.352100 | **Capex Item Procurment** | 189.5d | 2026-07-05 | 2027-01-10 |  | start no earlier than 2026-07-05 | RGA -FINISHING | 7808742 |
| 2902 | 40100.40200.40600.352100.540400 | Lift Procurement & delivery | 30d | 2026-07-05 | 2026-08-04 | 2887SS-135d |  | RGA -FINISHING | 7813922 |
| 2903 | 40100.40200.40600.352100.540500 | Panels | 30d | 2026-11-23 | 2026-12-22 | 2898SS-90d |  | RGA -FINISHING | 7813932 |
| 2904 | 40100.40200.40600.352100.540600 | DG procurement | 30d | 2026-12-12 | 2027-01-10 | 2899SS-90d |  | RGA -FINISHING | 7813942 |
| 2905 | 40100.40200.40600.352100.540700 | Transformer | 30d | 2026-12-12 | 2027-01-10 | 2900SS-90d |  | RGA -FINISHING | 7813952 |
| 2906 | 40100.40200.40600.43400 | **Handing Over Activities** | 56d | 2027-08-08 | 2027-10-03 |  | start no earlier than 2027-08-08 | RGA -FINISHING | 7803262 |
| 2907 | 40100.40200.40600.43400.540800 | SOAP WASHING GROUND FLOOR | 1d | 2027-08-08 | 2027-08-09 | 2884FS+100d |  | RGA -FINISHING | 7813962 |
| 2908 | 40100.40200.40600.43400.540900 | SOAP WASHING L1 | 1d | 2027-08-09 | 2027-08-10 | 2907 |  | RGA -FINISHING | 7813972 |
| 2909 | 40100.40200.40600.43400.541000 | SOAP WASHING L2 | 1d | 2027-08-10 | 2027-08-11 | 2908 |  | RGA -FINISHING | 7813982 |
| 2910 | 40100.40200.40600.43400.541100 | SOAP WASHING L3 | 1d | 2027-08-11 | 2027-08-12 | 2909 |  | RGA -FINISHING | 7813992 |
| 2911 | 40100.40200.40600.43400.541200 | SOAP WASHING L4 | 1d | 2027-08-12 | 2027-08-13 | 2910 |  | RGA -FINISHING | 7814002 |
| 2912 | 40100.40200.40600.43400.541300 | SOAP WASHING L5 | 1d | 2027-08-13 | 2027-08-14 | 2911 |  | RGA -FINISHING | 7814012 |
| 2913 | 40100.40200.40600.43400.541400 | SOAP WASHING L6 | 1d | 2027-08-14 | 2027-08-15 | 2912 |  | RGA -FINISHING | 7814022 |
| 2914 | 40100.40200.40600.43400.541500 | SOAP WASHING L7 | 1d | 2027-08-15 | 2027-08-16 | 2913 |  | RGA -FINISHING | 7814032 |
| 2915 | 40100.40200.40600.43400.541600 | SOAP WASHING L8 | 1d | 2027-08-16 | 2027-08-17 | 2914 |  | RGA -FINISHING | 7814042 |
| 2916 | 40100.40200.40600.43400.541700 | SOAP WASHING L9 | 1d | 2027-08-17 | 2027-08-18 | 2915 |  | RGA -FINISHING | 7814052 |
| 2917 | 40100.40200.40600.43400.541800 | SOAP WASHING L10 | 1d | 2027-08-18 | 2027-08-19 | 2916 |  | RGA -FINISHING | 7814062 |
| 2918 | 40100.40200.40600.43400.541900 | SOAP WASHING L11 | 1d | 2027-08-19 | 2027-08-20 | 2917 |  | RGA -FINISHING | 7814072 |
| 2919 | 40100.40200.40600.43400.542000 | SOAP WASHING L12 | 1d | 2027-08-20 | 2027-08-21 | 2918 |  | RGA -FINISHING | 7814082 |
| 2920 | 40100.40200.40600.43400.542100 | SOAP WASHING L13 | 1d | 2027-08-21 | 2027-08-22 | 2919 |  | RGA -FINISHING | 7814092 |
| 2921 | 40100.40200.40600.43400.542200 | SOAP WASHING L14 | 1d | 2027-08-22 | 2027-08-23 | 2920 |  | RGA -FINISHING | 7814102 |
| 2922 | 40100.40200.40600.43400.542300 | SOAP WASHING L15 | 1d | 2027-08-23 | 2027-08-24 | 2921 |  | RGA -FINISHING | 7814112 |
| 2923 | 40100.40200.40600.43400.542400 | SOAP WASHING L16 | 1d | 2027-08-24 | 2027-08-25 | 2922 |  | RGA -FINISHING | 7814122 |
| 2924 | 40100.40200.40600.43400.542500 | SOAP WASHING L17 | 1d | 2027-08-25 | 2027-08-26 | 2923 |  | RGA -FINISHING | 7814132 |
| 2925 | 40100.40200.40600.43400.542600 | SOAP WASHING L18 | 1d | 2027-08-26 | 2027-08-27 | 2924 |  | RGA -FINISHING | 7814142 |
| 2926 | 40100.40200.40600.43400.542700 | SOAP WASHING L19 | 1d | 2027-08-27 | 2027-08-28 | 2925 |  | RGA -FINISHING | 7814152 |
| 2927 | 40100.40200.40600.43400.542800 | SOAP WASHING L20 | 1d | 2027-08-28 | 2027-08-29 | 2926 |  | RGA -FINISHING | 7814162 |
| 2928 | 40100.40200.40600.43400.542900 | SOAP WASHING L21 | 1d | 2027-08-29 | 2027-08-30 | 2927 |  | RGA -FINISHING | 7814172 |
| 2929 | 40100.40200.40600.43400.543000 | SOAP WASHING L22 | 1d | 2027-08-30 | 2027-08-31 | 2928 |  | RGA -FINISHING | 7814182 |
| 2930 | 40100.40200.40600.43400.543100 | SOAP WASHING L23 | 1d | 2027-08-31 | 2027-09-01 | 2929 |  | RGA -FINISHING | 7814192 |
| 2931 | 40100.40200.40600.43400.543200 | SOAP WASHING L24 | 1d | 2027-09-01 | 2027-09-02 | 2930 |  | RGA -FINISHING | 7814202 |
| 2932 | 40100.40200.40600.43400.543300 | SOAP WASHING L25 | 1d | 2027-09-02 | 2027-09-03 | 2931 |  | RGA -FINISHING | 7814212 |
| 2933 | 40100.40200.40600.43400.543400 | CP & SANITARYWARE FIXING Ground | 2d | 2027-08-10 | 2027-08-12 | 2908 |  | RGA -FINISHING | 7814242 |
| 2934 | 40100.40200.40600.43400.543500 | CP & SANITARYWARE FIXING L1 | 2d | 2027-08-12 | 2027-08-14 | 2933 |  | RGA -FINISHING | 7814252 |
| 2935 | 40100.40200.40600.43400.543600 | CP & SANITARYWARE FIXING L2 | 2d | 2027-08-14 | 2027-08-16 | 2934 |  | RGA -FINISHING | 7814262 |
| 2936 | 40100.40200.40600.43400.543700 | CP & SANITARYWARE FIXING L3 | 2d | 2027-08-16 | 2027-08-18 | 2935 |  | RGA -FINISHING | 7814272 |
| 2937 | 40100.40200.40600.43400.543800 | CP & SANITARYWARE FIXING L4 | 2d | 2027-08-18 | 2027-08-20 | 2936 |  | RGA -FINISHING | 7814282 |
| 2938 | 40100.40200.40600.43400.543900 | CP & SANITARYWARE FIXING L5 | 2d | 2027-08-20 | 2027-08-22 | 2937 |  | RGA -FINISHING | 7814292 |
| 2939 | 40100.40200.40600.43400.544000 | CP & SANITARYWARE FIXING L6 | 2d | 2027-08-22 | 2027-08-24 | 2938 |  | RGA -FINISHING | 7814302 |
| 2940 | 40100.40200.40600.43400.544100 | CP & SANITARYWARE FIXING L7 | 2d | 2027-08-24 | 2027-08-26 | 2939 |  | RGA -FINISHING | 7814312 |
| 2941 | 40100.40200.40600.43400.544200 | CP & SANITARYWARE FIXING L8 | 2d | 2027-08-26 | 2027-08-28 | 2940 |  | RGA -FINISHING | 7814322 |
| 2942 | 40100.40200.40600.43400.544300 | CP & SANITARYWARE FIXING L9 | 2d | 2027-08-28 | 2027-08-30 | 2941 |  | RGA -FINISHING | 7814332 |
| 2943 | 40100.40200.40600.43400.544400 | CP & SANITARYWARE FIXING L10 | 2d | 2027-08-30 | 2027-09-01 | 2942 |  | RGA -FINISHING | 7814342 |
| 2944 | 40100.40200.40600.43400.544500 | CP & SANITARYWARE FIXING L11 | 2d | 2027-09-01 | 2027-09-03 | 2943 |  | RGA -FINISHING | 7814352 |
| 2945 | 40100.40200.40600.43400.544600 | CP & SANITARYWARE FIXING L12 | 2d | 2027-09-03 | 2027-09-05 | 2944 |  | RGA -FINISHING | 7814362 |
| 2946 | 40100.40200.40600.43400.544700 | CP & SANITARYWARE FIXING L13 | 2d | 2027-09-05 | 2027-09-07 | 2945 |  | RGA -FINISHING | 7814372 |
| 2947 | 40100.40200.40600.43400.544800 | CP & SANITARYWARE FIXING L14 | 2d | 2027-09-07 | 2027-09-09 | 2946 |  | RGA -FINISHING | 7814382 |
| 2948 | 40100.40200.40600.43400.544900 | CP & SANITARYWARE FIXING L15 | 2d | 2027-09-09 | 2027-09-11 | 2947 |  | RGA -FINISHING | 7814392 |
| 2949 | 40100.40200.40600.43400.545000 | CP & SANITARYWARE FIXING L16 | 2d | 2027-09-11 | 2027-09-13 | 2948 |  | RGA -FINISHING | 7814402 |
| 2950 | 40100.40200.40600.43400.545100 | CP & SANITARYWARE FIXING L17 | 2d | 2027-09-13 | 2027-09-15 | 2949 |  | RGA -FINISHING | 7814412 |
| 2951 | 40100.40200.40600.43400.545200 | CP & SANITARYWARE FIXING L18 | 2d | 2027-09-15 | 2027-09-17 | 2950 |  | RGA -FINISHING | 7814422 |
| 2952 | 40100.40200.40600.43400.545300 | CP & SANITARYWARE FIXING L18 | 2d | 2027-09-17 | 2027-09-19 | 2951 |  | RGA -FINISHING | 7814432 |
| 2953 | 40100.40200.40600.43400.545400 | CP & SANITARYWARE FIXING L19 | 2d | 2027-09-19 | 2027-09-21 | 2952 |  | RGA -FINISHING | 7814442 |
| 2954 | 40100.40200.40600.43400.545500 | CP & SANITARYWARE FIXING L20 | 2d | 2027-09-21 | 2027-09-23 | 2953 |  | RGA -FINISHING | 7814452 |

Notes:
- 2885: Completion in 12 months post last RCC

| ID | WBS | Task | Type | Duration | Start | Finish | Predecessors | Complete | Constraint | Calendar | Unique_Task_ID |
| --- | --- | --- | --- | --- | --- | --- | --- | --- | --- | --- | --- |
| 2955 | 40100.40200.40600.43400.545600 | CP & SANITARYWARE FIXING L21 |  | 2d | 2027-09-23 | 2027-09-25 | 2954 |  |  | RGA -FINISHING | 7814462 |
| 2956 | 40100.40200.40600.43400.545700 | CP & SANITARYWARE FIXING L22 |  | 2d | 2027-09-25 | 2027-09-27 | 2955 |  |  | RGA -FINISHING | 7814472 |
| 2957 | 40100.40200.40600.43400.545800 | CP & SANITARYWARE FIXING L23 |  | 2d | 2027-09-27 | 2027-09-29 | 2956 |  |  | RGA -FINISHING | 7814482 |
| 2958 | 40100.40200.40600.43400.545900 | CP & SANITARYWARE FIXING L24 |  | 2d | 2027-09-29 | 2027-10-01 | 2957 |  |  | RGA -FINISHING | 7814492 |
| 2959 | 40100.40200.40600.43400.546000 | CP & SANITARYWARE FIXING L25 |  | 2d | 2027-10-01 | 2027-10-03 | 2958 |  |  | RGA -FINISHING | 7814502 |
| 2960 | 40100.40200.40600.520900 | MIscellaneous (Aluform Supply) |  | 90d | 2025-09-29 | 2025-12-27 | 2034FS-62d |  |  | RGA -FINISHING | 7812552 |
| 2961 | 40100.40200.40600.521000 | Miscellaneous |  | 130d | 2027-08-20 | 2028-01-18 | 2960FS+514d |  |  | Indian Calendar | 7812562 |
| 2962 | 40100.40200.40700 | **TOWER 4 - (2B+G+25 Floors+Terrace)** |  | 1038d | 2025-02-12 | 2028-01-24 |  |  | start no earlier than 2025-02-12 | RGA - STRUCTURE | 7803172 |
| 2963 | 40100.40200.40700.2746800 | Start date for Tower D | milestone | 0d | 2025-04-29 | 2025-04-29 | 3950FS+7d |  |  | RGA - STRUCTURE | 7847652 |
| 2964 | 40100.40200.40700.374500 | **Earth work** |  | 210d | 2025-02-12 | 2025-09-12 |  | 33% | start no earlier than 2025-02-12 | RGA - STRUCTURE | 7811762 |
| 2965 | 40100.40200.40700.374500.519100 | EXCAVATION - Tower Area |  | 116d | 2025-02-12 | 2025-08-16 | 2963SS-75d | 6% |  | RGA - STRUCTURE | 7814532 |
| 2966 | 40100.40200.40700.374500.519000 | Excavation - Non Tower Area |  | 75d | 2025-03-19 | 2025-09-12 | 2965FS-104d | 74% |  | 5 day week, Bank Hols Xmas | 7433485 |
| 2967 | 40100.40200.40700.69300 | **Substructure works (Works up to plinth)** |  | 673d | 2025-08-17 | 2027-07-26 |  |  | start no earlier than 2025-08-17 | RGA - STRUCTURE | 7803882 |
| 2968 | 40100.40200.40700.69300.167900 | **Civil works (Shell & Core basement)** |  | 401d | 2025-08-17 | 2026-10-12 |  |  | start no earlier than 2025-08-17 | RGA - STRUCTURE | 7806862 |
| 2969 | 40100.40200.40700.69300.167900.350900 | **RCC Works - Tower area- 1st Basement** |  | 51d | 2025-08-17 | 2025-10-07 |  |  | start no earlier than 2025-08-17 | RGA - STRUCTURE | 7808302 |
| 2970 | 40100.40200.40700.69300.167900.350900.383300 | **FOundation** |  | 26d | 2025-08-17 | 2025-09-11 |  |  | start no earlier than 2025-08-17 | RGA - STRUCTURE | 7809322 |
| 2971 | 40100.40200.40700.69300.167900.350900.383300.2245600 | Pocket Excavation |  | 1d | 2025-08-17 | 2025-08-17 | 2965 |  |  | RGA - STRUCTURE | 7837082 |
| 2972 | 40100.40200.40700.69300.167900.350900.383300.2245700 | Footing PCC |  | 4d | 2025-08-18 | 2025-08-21 | 2971 |  |  | RGA - STRUCTURE | 7837092 |
| 2973 | 40100.40200.40700.69300.167900.350900.383300.2245800 | Footing / Raft works |  | 21d | 2025-08-22 | 2025-09-11 | 2972 |  |  | RGA - STRUCTURE | 7837102 |
| 2974 | 40100.40200.40700.69300.167900.350900.487600 | **UB Slab** |  | 25d | 2025-09-12 | 2025-10-07 |  |  | start no earlier than 2025-09-12 | RGA - STRUCTURE | 7811352 |
| 2975 | 40100.40200.40700.69300.167900.350900.487600.2245900 | Columns in Upper basement |  | 15d | 2025-09-12 | 2025-09-26 | 2973 |  |  | RGA - STRUCTURE | 7837112 |
| 2976 | 40100.40200.40700.69300.167900.350900.487600.2246000 | Upper Basement slab |  | 10d | 2025-09-27 | 2025-10-07 | 2975 |  |  | RGA - STRUCTURE | 7837122 |
| 2977 | 40100.40200.40700.69300.167900.501300 | **Ground Floor Slab** |  | 31d | 2025-10-08 | 2025-11-08 |  |  | start no earlier than 2025-10-08 | RGA - STRUCTURE | 8865544 |
| 2978 | 40100.40200.40700.69300.167900.501300.966900 | Columns in Upper basement |  | 14d | 2025-10-08 | 2025-10-21 | 2976 |  |  | RGA - STRUCTURE | 8865554 |
| 2979 | 40100.40200.40700.69300.167900.501300.967000 | Upper Basement slab |  | 17d | 2025-10-22 | 2025-11-08 | 2978 |  |  | RGA - STRUCTURE | 8865564 |
| 2980 | 40100.40200.40700.69300.167900.829400 | Backfilling |  | 10d | 2026-10-03 | 2026-10-12 | 7877 |  |  | RGA - STRUCTURE | 7820142 |

Notes:
- 2964: 2 Months for Excavation

| ID | WBS | Task | Duration | Start | Finish | Predecessors | Constraint | Calendar | Unique_Task_ID |
| --- | --- | --- | --- | --- | --- | --- | --- | --- | --- |
| 2981 | 40100.40200.40700.69300.473700 | **Basement Block work and Plaster finishing** | 89d | 2026-08-01 | 2026-10-30 |  | start no earlier than 2026-08-01 | RGA - STRUCTURE | 7811852 |
| 2982 | 40100.40200.40700.69300.473700.829500 | Upper basement | 45d | 2026-08-01 | 2026-09-15 | 3096 |  | RGA - STRUCTURE | 7820152 |
| 2983 | 40100.40200.40700.69300.473700.829600 | Upper Basement Plumbing | 45d | 2026-09-16 | 2026-10-30 | 2982 |  | RGA -FINISHING | 8865654 |
| 2984 | 40100.40200.40700.69300.161500 | **Services** | 360d | 2026-08-01 | 2027-07-26 |  | start no earlier than 2026-08-01 | RGA -FINISHING | 7805372 |
| 2985 | 40100.40200.40700.69300.161500.365800 | **Plumbing** | 180d | 2026-08-01 | 2027-01-27 |  | start no earlier than 2026-08-01 | RGA -FINISHING | 7809092 |
| 2986 | 40100.40200.40700.69300.161500.365800.487700 | **Upper Basement Plumbing** | 180d | 2026-08-01 | 2027-01-27 |  | start no earlier than 2026-08-01 | RGA -FINISHING | 7812112 |
| 2987 | 40100.40200.40700.69300.161500.365800.487700.2246100 | Upper Basement Plumbing | 90d | 2026-08-01 | 2026-10-29 | 3096 |  | RGA -FINISHING | 7837132 |
| 2988 | 40100.40200.40700.69300.161500.365800.487700.2246200 | Upper Basement Plumbing | 90d | 2026-10-30 | 2027-01-27 | 2987 |  | RGA -FINISHING | 8865574 |
| 2989 | 40100.40200.40700.69300.161500.365900 | **Fire fighting** | 180d | 2026-08-01 | 2027-01-27 |  | start no earlier than 2026-08-01 | RGA -FINISHING | 7809102 |
| 2990 | 40100.40200.40700.69300.161500.365900.487800 | **Upper Basement Fire fighting** | 180d | 2026-08-01 | 2027-01-27 |  | start no earlier than 2026-08-01 | RGA -FINISHING | 7812102 |
| 2991 | 40100.40200.40700.69300.161500.365900.487800.2246300 | Upper Basement Fire fighting | 90d | 2026-08-01 | 2026-10-29 | 3096 |  | RGA -FINISHING | 7837142 |
| 2992 | 40100.40200.40700.69300.161500.365900.487800.2246400 | Upper Basement Plumbing | 90d | 2026-10-30 | 2027-01-27 | 2991 |  | RGA -FINISHING | 8865584 |
| 2993 | 40100.40200.40700.69300.161500.366000 | **Ventilation** | 180d | 2026-10-30 | 2027-04-27 |  | start no earlier than 2026-10-30 | RGA -FINISHING | 7809112 |
| 2994 | 40100.40200.40700.69300.161500.366000.487900 | **Upper Basement ventilation** | 180d | 2026-10-30 | 2027-04-27 |  | start no earlier than 2026-10-30 | RGA -FINISHING | 7812092 |
| 2995 | 40100.40200.40700.69300.161500.366000.487900.2246500 | Upper Basement ventilation | 90d | 2026-10-30 | 2027-01-27 | 2991 |  | RGA -FINISHING | 7837152 |
| 2996 | 40100.40200.40700.69300.161500.366000.487900.2246600 | Upper Basement Plumbing | 90d | 2027-01-28 | 2027-04-27 | 2995 |  | RGA -FINISHING | 8865594 |
| 2997 | 40100.40200.40700.69300.161500.366100 | **Electrification** | 180d | 2027-01-28 | 2027-07-26 |  | start no earlier than 2027-01-28 | RGA -FINISHING | 7809122 |
| 2998 | 40100.40200.40700.69300.161500.366100.488000 | **Upper Basement Electrification** | 180d | 2027-01-28 | 2027-07-26 |  | start no earlier than 2027-01-28 | RGA -FINISHING | 7812082 |
| 2999 | 40100.40200.40700.69300.161500.366100.488000.2246700 | Upper Basement Electrification | 90d | 2027-01-28 | 2027-04-27 | 2995 |  | RGA -FINISHING | 7837162 |
| 3000 | 40100.40200.40700.69300.161500.366100.488000.2246800 | Upper Basement Plumbing | 90d | 2027-04-28 | 2027-07-26 | 2999 |  | RGA -FINISHING | 8865604 |
| 3001 | 40100.40200.40700.69300.161500.366200 | **Security installations** | 90d | 2027-04-28 | 2027-07-26 |  | start no earlier than 2027-04-28 | RGA -FINISHING | 7809132 |
| 3002 | 40100.40200.40700.69300.161500.366200.488100 | **Upper Basement Security installations** | 90d | 2027-04-28 | 2027-07-26 |  | start no earlier than 2027-04-28 | RGA -FINISHING | 7812072 |
| 3003 | 40100.40200.40700.69300.161500.366200.488100.2246900 | Upper Basement Security installations | 45d | 2027-04-28 | 2027-06-11 | 2999 |  | RGA -FINISHING | 7837172 |
| 3004 | 40100.40200.40700.69300.161500.366200.488100.2247000 | Upper Basement Plumbing | 45d | 2027-06-12 | 2027-07-26 | 3003 |  | RGA -FINISHING | 8865614 |

| ID | WBS | Task | Duration | Start | Finish | Predecessors | Constraint | Calendar | Unique_Task_ID |
| --- | --- | --- | --- | --- | --- | --- | --- | --- | --- |
| 3005 | 40100.40200.40700.69300.342400 | **Finishing work** | 189d | 2026-09-16 | 2027-03-23 |  | start no earlier than 2026-09-16 | RGA -FINISHING | 7808852 |
| 3006 | 40100.40200.40700.69300.342400.500600 | **Basement Flooring** | 189d | 2026-09-16 | 2027-03-23 |  | start no earlier than 2026-09-16 | RGA -FINISHING | 7812402 |
| 3007 | 40100.40200.40700.69300.342400.500600.967100 | 1st Basement ventilation | 90d | 2026-09-16 | 2026-12-14 | 2982 |  | RGA -FINISHING | 7831982 |
| 3008 | 40100.40200.40700.69300.342400.500600.967200 | Upper Basement Plumbing | 90d | 2026-12-24 | 2027-03-23 | 3007FS+9d |  | RGA -FINISHING | 8865624 |
| 3009 | 40100.40200.40700.69300.342400.500500 | **Basement Painting (1st Coat)** | 90d | 2026-12-15 | 2027-03-14 |  | start no earlier than 2026-12-15 | RGA -FINISHING | 7812412 |
| 3010 | 40100.40200.40700.69300.342400.500500.967300 | 2nd Basement ventilation | 45d | 2026-12-15 | 2027-01-28 | 3007 |  | RGA -FINISHING | 7831992 |
| 3011 | 40100.40200.40700.69300.342400.500500.967400 | Upper Basement Plumbing | 45d | 2027-01-29 | 2027-03-14 | 3010 |  | RGA -FINISHING | 8865634 |
| 3012 | 40100.40200.40700.69300.473800 | **Water Proofing work** | 90d | 2026-09-16 | 2026-12-14 |  | start no earlier than 2026-09-16 | RGA -FINISHING | 7811862 |
| 3013 | 40100.40200.40700.69300.473800.829700 | 1st Basement | 45d | 2026-09-16 | 2026-10-30 | 2982 |  | RGA -FINISHING | 7820162 |
| 3014 | 40100.40200.40700.69300.473800.829800 | Upper Basement Plumbing | 45d | 2026-10-31 | 2026-12-14 | 3013 |  | RGA -FINISHING | 8865644 |
| 3015 | 40100.40200.40700.53000 | **Superstructure works** | 853d | 2025-04-01 | 2027-09-08 |  | start no earlier than 2025-04-01 | RGA - STRUCTURE | 7803302 |
| 3016 | 40100.40200.40700.53000.55400 | **Civil works** | 853d | 2025-04-01 | 2027-09-08 |  | start no earlier than 2025-04-01 | RGA - STRUCTURE | 7803332 |
| 3017 | 40100.40200.40700.53000.55400.61400 | **Superstructure RCC Work** | 349d | 2025-11-09 | 2026-11-11 |  | start no earlier than 2025-11-09 | RGA - STRUCTURE | 7803602 |
| 3018 | 40100.40200.40700.53000.55400.61400.63300 | **Slab RCC works** | 300d | 2025-11-09 | 2026-09-22 |  | start no earlier than 2025-11-09 | RGA - STRUCTURE | 7803692 |
| 3019 | 40100.40200.40700.53000.55400.61400.63300.475700 | **1st Floor slab (Height More)** | 25d | 2025-11-09 | 2025-12-03 |  | start no earlier than 2025-11-09 | RGA - STRUCTURE | 7811552 |
| 3020 | 40100.40200.40700.53000.55400.61400.63300.475700.2651800 | Columns | 10d | 2025-11-09 | 2025-11-18 | 2979 |  | RGA - STRUCTURE | 7856002 |
| 3021 | 40100.40200.40700.53000.55400.61400.63300.475700.2651900 | Slab Work | 15d | 2025-11-19 | 2025-12-03 | 3020 |  | RGA - STRUCTURE | 7856012 |
| 3022 | 40100.40200.40700.53000.55400.61400.63300.475600 | **2nd Floor slab (Height More)** | 25d | 2025-12-04 | 2025-12-28 |  | start no earlier than 2025-12-04 | RGA - STRUCTURE | 7811562 |
| 3023 | 40100.40200.40700.53000.55400.61400.63300.475600.2652000 | Columns | 10d | 2025-12-04 | 2025-12-13 | 3021 |  | RGA - STRUCTURE | 7856022 |
| 3024 | 40100.40200.40700.53000.55400.61400.63300.475600.2652100 | Slab work | 15d | 2025-12-14 | 2025-12-28 | 3023 |  | RGA - STRUCTURE | 7856032 |
| 3025 | 40100.40200.40700.53000.55400.61400.63300.399000 | **3rd Floor slab (Combo)** | 25d | 2025-12-29 | 2026-01-22 |  | start no earlier than 2025-12-29 | RGA - STRUCTURE | 7810172 |
| 3026 | 40100.40200.40700.53000.55400.61400.63300.399000.2652200 | Wall rebar & Form work | 10d | 2025-12-29 | 2026-01-07 | 3024 |  | RGA - STRUCTURE | 7856042 |
| 3027 | 40100.40200.40700.53000.55400.61400.63300.399000.2652300 | Slab form work & reabar | 14d | 2026-01-08 | 2026-01-21 | 3026 |  | RGA - STRUCTURE | 7856052 |
| 3028 | 40100.40200.40700.53000.55400.61400.63300.399000.2652400 | Concreting | 1d | 2026-01-22 | 2026-01-22 | 3027 |  | RGA - STRUCTURE | 7856062 |

Notes:
- 3022: AVg Slab Cycle of 21 days
- 3025: AVg Slab Cycle of 21 days

| ID | WBS | Task | Duration | Start | Finish | Predecessors | Constraint | Calendar | Unique_Task_ID |
| --- | --- | --- | --- | --- | --- | --- | --- | --- | --- |
| 3029 | 40100.40200.40700.53000.55400.61400.63300.399100 | **4th Floor slab (1st setup)** | 21d | 2026-01-23 | 2026-02-13 |  | start no earlier than 2026-01-23 | RGA - STRUCTURE | 7810182 |
| 3030 | 40100.40200.40700.53000.55400.61400.63300.399100.2652500 | Wall rebar & Form work | 10d | 2026-01-23 | 2026-02-02 | 3028 |  | RGA - STRUCTURE | 7856072 |
| 3031 | 40100.40200.40700.53000.55400.61400.63300.399100.2652600 | Slab form work & reabar | 10d | 2026-02-03 | 2026-02-12 | 3030 |  | RGA - STRUCTURE | 7856082 |
| 3032 | 40100.40200.40700.53000.55400.61400.63300.399100.2652700 | Concreting | 1d | 2026-02-13 | 2026-02-13 | 3031 |  | RGA - STRUCTURE | 7856092 |
| 3033 | 40100.40200.40700.53000.55400.61400.63300.399200 | **5th Floor slab (2nd Set Up)** | 15d | 2026-02-14 | 2026-02-28 |  | start no earlier than 2026-02-14 | RGA - STRUCTURE | 7810192 |
| 3034 | 40100.40200.40700.53000.55400.61400.63300.399200.2652800 | Wall rebar & Form work | 7d | 2026-02-14 | 2026-02-20 | 3032 |  | RGA - STRUCTURE | 7856102 |
| 3035 | 40100.40200.40700.53000.55400.61400.63300.399200.2652900 | Slab form work & reabar | 7d | 2026-02-21 | 2026-02-27 | 3034 |  | RGA - STRUCTURE | 7856112 |
| 3036 | 40100.40200.40700.53000.55400.61400.63300.399200.2653000 | Concreting | 1d | 2026-02-28 | 2026-02-28 | 3035 |  | RGA - STRUCTURE | 7856122 |
| 3037 | 40100.40200.40700.53000.55400.61400.63300.399300 | **6th Floor slab** | 9d | 2026-03-01 | 2026-03-09 |  | start no earlier than 2026-03-01 | RGA - STRUCTURE | 7810202 |
| 3038 | 40100.40200.40700.53000.55400.61400.63300.399300.2653100 | Wall rebar & Form work | 4d | 2026-03-01 | 2026-03-04 | 3036 |  | RGA - STRUCTURE | 7856132 |
| 3039 | 40100.40200.40700.53000.55400.61400.63300.399300.2653200 | Slab form work & reabar | 4d | 2026-03-05 | 2026-03-08 | 3038 |  | RGA - STRUCTURE | 7856142 |
| 3040 | 40100.40200.40700.53000.55400.61400.63300.399300.2653300 | Concreting | 1d | 2026-03-09 | 2026-03-09 | 3039 |  | RGA - STRUCTURE | 7856152 |
| 3041 | 40100.40200.40700.53000.55400.61400.63300.399400 | **7th Floor slab** | 9d | 2026-03-10 | 2026-03-18 |  | start no earlier than 2026-03-10 | RGA - STRUCTURE | 7810212 |
| 3042 | 40100.40200.40700.53000.55400.61400.63300.399400.2653400 | Wall rebar & Form work | 4d | 2026-03-10 | 2026-03-13 | 3040 |  | RGA - STRUCTURE | 7856162 |
| 3043 | 40100.40200.40700.53000.55400.61400.63300.399400.2653500 | Slab form work & reabar | 4d | 2026-03-14 | 2026-03-17 | 3042 |  | RGA - STRUCTURE | 7856172 |
| 3044 | 40100.40200.40700.53000.55400.61400.63300.399400.2653600 | Concreting | 1d | 2026-03-18 | 2026-03-18 | 3043 |  | RGA - STRUCTURE | 7856182 |
| 3045 | 40100.40200.40700.53000.55400.61400.63300.399500 | **8th Floor slab** | 9d | 2026-03-19 | 2026-03-27 |  | start no earlier than 2026-03-19 | RGA - STRUCTURE | 7810222 |
| 3046 | 40100.40200.40700.53000.55400.61400.63300.399500.2653700 | Wall rebar & Form work | 4d | 2026-03-19 | 2026-03-22 | 3044 |  | RGA - STRUCTURE | 7856192 |
| 3047 | 40100.40200.40700.53000.55400.61400.63300.399500.2653800 | Slab form work & reabar | 4d | 2026-03-23 | 2026-03-26 | 3046 |  | RGA - STRUCTURE | 7856202 |
| 3048 | 40100.40200.40700.53000.55400.61400.63300.399500.2653900 | Concreting | 1d | 2026-03-27 | 2026-03-27 | 3047 |  | RGA - STRUCTURE | 7856212 |
| 3049 | 40100.40200.40700.53000.55400.61400.63300.399600 | **9th Floor slab** | 9d | 2026-03-28 | 2026-04-05 |  | start no earlier than 2026-03-28 | RGA - STRUCTURE | 7810232 |
| 3050 | 40100.40200.40700.53000.55400.61400.63300.399600.2654000 | Wall rebar & Form work | 4d | 2026-03-28 | 2026-03-31 | 3048 |  | RGA - STRUCTURE | 7856222 |
| 3051 | 40100.40200.40700.53000.55400.61400.63300.399600.2654100 | Slab form work & reabar | 4d | 2026-04-01 | 2026-04-04 | 3050 |  | RGA - STRUCTURE | 7856232 |
| 3052 | 40100.40200.40700.53000.55400.61400.63300.399600.2654200 | Concreting | 1d | 2026-04-05 | 2026-04-05 | 3051 |  | RGA - STRUCTURE | 7856242 |

Notes:
- 3029: AVg Slab Cycle of 21 days

| ID | WBS | Task | Duration | Start | Finish | Predecessors | Constraint | Calendar | Unique_Task_ID |
| --- | --- | --- | --- | --- | --- | --- | --- | --- | --- |
| 3053 | 40100.40200.40700.53000.55400.61400.63300.399700 | **10th Floor slab** | 9d | 2026-04-06 | 2026-04-14 |  | start no earlier than 2026-04-06 | RGA - STRUCTURE | 7810242 |
| 3054 | 40100.40200.40700.53000.55400.61400.63300.399700.2654300 | Wall rebar & Form work | 4d | 2026-04-06 | 2026-04-09 | 3052 |  | RGA - STRUCTURE | 7856252 |
| 3055 | 40100.40200.40700.53000.55400.61400.63300.399700.2654400 | Slab form work & reabar | 4d | 2026-04-10 | 2026-04-13 | 3054 |  | RGA - STRUCTURE | 7856262 |
| 3056 | 40100.40200.40700.53000.55400.61400.63300.399700.2654500 | Concreting | 1d | 2026-04-14 | 2026-04-14 | 3055 |  | RGA - STRUCTURE | 7856272 |
| 3057 | 40100.40200.40700.53000.55400.61400.63300.399800 | **11th Floor slab** | 9d | 2026-04-15 | 2026-04-23 |  | start no earlier than 2026-04-15 | RGA - STRUCTURE | 7810252 |
| 3058 | 40100.40200.40700.53000.55400.61400.63300.399800.2654600 | Wall rebar & Form work | 4d | 2026-04-15 | 2026-04-18 | 3056 |  | RGA - STRUCTURE | 7856282 |
| 3059 | 40100.40200.40700.53000.55400.61400.63300.399800.2654700 | Slab form work & reabar | 4d | 2026-04-19 | 2026-04-22 | 3058 |  | RGA - STRUCTURE | 7856292 |
| 3060 | 40100.40200.40700.53000.55400.61400.63300.399800.2654800 | Concreting | 1d | 2026-04-23 | 2026-04-23 | 3059 |  | RGA - STRUCTURE | 7856302 |
| 3061 | 40100.40200.40700.53000.55400.61400.63300.399900 | **12th Floor slab** | 9d | 2026-04-24 | 2026-05-03 |  | start no earlier than 2026-04-24 | RGA - STRUCTURE | 7810262 |
| 3062 | 40100.40200.40700.53000.55400.61400.63300.399900.2654900 | Wall rebar & Form work | 4d | 2026-04-24 | 2026-04-27 | 3060 |  | RGA - STRUCTURE | 7856312 |
| 3063 | 40100.40200.40700.53000.55400.61400.63300.399900.2655000 | Slab form work & reabar | 4d | 2026-04-28 | 2026-05-02 | 3062 |  | RGA - STRUCTURE | 7856322 |
| 3064 | 40100.40200.40700.53000.55400.61400.63300.399900.2655100 | Concreting | 1d | 2026-05-03 | 2026-05-03 | 3063 |  | RGA - STRUCTURE | 7856332 |
| 3065 | 40100.40200.40700.53000.55400.61400.63300.400000 | **13th Floor slab** | 9d | 2026-05-04 | 2026-05-12 |  | start no earlier than 2026-05-04 | RGA - STRUCTURE | 7810272 |
| 3066 | 40100.40200.40700.53000.55400.61400.63300.400000.2655200 | Wall rebar & Form work | 4d | 2026-05-04 | 2026-05-07 | 3064 |  | RGA - STRUCTURE | 7856342 |
| 3067 | 40100.40200.40700.53000.55400.61400.63300.400000.2655300 | Slab form work & reabar | 4d | 2026-05-08 | 2026-05-11 | 3066 |  | RGA - STRUCTURE | 7856352 |
| 3068 | 40100.40200.40700.53000.55400.61400.63300.400000.2655400 | Concreting | 1d | 2026-05-12 | 2026-05-12 | 3067 |  | RGA - STRUCTURE | 7856362 |
| 3069 | 40100.40200.40700.53000.55400.61400.63300.400100 | **14th Floor slab** | 9d | 2026-05-13 | 2026-05-21 |  | start no earlier than 2026-05-13 | RGA - STRUCTURE | 7810282 |
| 3070 | 40100.40200.40700.53000.55400.61400.63300.400100.2655500 | Wall rebar & Form work | 4d | 2026-05-13 | 2026-05-16 | 3068 |  | RGA - STRUCTURE | 7856372 |
| 3071 | 40100.40200.40700.53000.55400.61400.63300.400100.2655600 | Slab form work & reabar | 4d | 2026-05-17 | 2026-05-20 | 3070 |  | RGA - STRUCTURE | 7856382 |
| 3072 | 40100.40200.40700.53000.55400.61400.63300.400100.2655700 | Concreting | 1d | 2026-05-21 | 2026-05-21 | 3071 |  | RGA - STRUCTURE | 7856392 |
| 3073 | 40100.40200.40700.53000.55400.61400.63300.400200 | **15th Floor slab** | 9d | 2026-05-22 | 2026-05-30 |  | start no earlier than 2026-05-22 | RGA - STRUCTURE | 7810292 |
| 3074 | 40100.40200.40700.53000.55400.61400.63300.400200.2655800 | Wall rebar & Form work | 4d | 2026-05-22 | 2026-05-25 | 3072 |  | RGA - STRUCTURE | 7856402 |
| 3075 | 40100.40200.40700.53000.55400.61400.63300.400200.2655900 | Slab form work & reabar | 4d | 2026-05-26 | 2026-05-29 | 3074 |  | RGA - STRUCTURE | 7856412 |
| 3076 | 40100.40200.40700.53000.55400.61400.63300.400200.2656000 | Concreting | 1d | 2026-05-30 | 2026-05-30 | 3075 |  | RGA - STRUCTURE | 7856422 |

Notes:
- 3061: AVg Slab Cycle of 21 days
- 3065: AVg Slab Cycle of 21 days
- 3069: AVg Slab Cycle of 21 days

| ID | WBS | Task | Duration | Start | Finish | Predecessors | Constraint | Calendar | Unique_Task_ID |
| --- | --- | --- | --- | --- | --- | --- | --- | --- | --- |
| 3077 | 40100.40200.40700.53000.55400.61400.63300.400300 | **16th Floor slab** | 9d | 2026-05-31 | 2026-06-08 |  | start no earlier than 2026-05-31 | RGA - STRUCTURE | 7810302 |
| 3078 | 40100.40200.40700.53000.55400.61400.63300.400300.2656100 | Wall rebar & Form work | 4d | 2026-05-31 | 2026-06-03 | 3076 |  | RGA - STRUCTURE | 7856432 |
| 3079 | 40100.40200.40700.53000.55400.61400.63300.400300.2656200 | Slab form work & reabar | 4d | 2026-06-04 | 2026-06-07 | 3078 |  | RGA - STRUCTURE | 7856442 |
| 3080 | 40100.40200.40700.53000.55400.61400.63300.400300.2656300 | Concreting | 1d | 2026-06-08 | 2026-06-08 | 3079 |  | RGA - STRUCTURE | 7856452 |
| 3081 | 40100.40200.40700.53000.55400.61400.63300.400400 | **17th Floor slab** | 9d | 2026-06-09 | 2026-06-19 |  | start no earlier than 2026-06-09 | RGA - STRUCTURE | 7810312 |
| 3082 | 40100.40200.40700.53000.55400.61400.63300.400400.2656400 | Wall rebar & Form work | 4d | 2026-06-09 | 2026-06-12 | 3080 |  | RGA - STRUCTURE | 7856462 |
| 3083 | 40100.40200.40700.53000.55400.61400.63300.400400.2656500 | Slab form work & reabar | 4d | 2026-06-13 | 2026-06-17 | 3082 |  | RGA - STRUCTURE | 7856472 |
| 3084 | 40100.40200.40700.53000.55400.61400.63300.400400.2656600 | Concreting | 1d | 2026-06-18 | 2026-06-19 | 3083 |  | RGA - STRUCTURE | 7856482 |
| 3085 | 40100.40200.40700.53000.55400.61400.63300.400500 | **18th Floor slab** | 9d | 2026-06-20 | 2026-07-07 |  | start no earlier than 2026-06-20 | RGA - STRUCTURE | 7810322 |
| 3086 | 40100.40200.40700.53000.55400.61400.63300.400500.2656700 | Wall rebar & Form work | 4d | 2026-06-20 | 2026-06-27 | 3084 |  | RGA - STRUCTURE | 7856492 |
| 3087 | 40100.40200.40700.53000.55400.61400.63300.400500.2656800 | Slab form work & reabar | 4d | 2026-06-28 | 2026-07-05 | 3086 |  | RGA - STRUCTURE | 7856502 |
| 3088 | 40100.40200.40700.53000.55400.61400.63300.400500.2656900 | Concreting | 1d | 2026-07-06 | 2026-07-07 | 3087 |  | RGA - STRUCTURE | 7856512 |
| 3089 | 40100.40200.40700.53000.55400.61400.63300.400600 | **19th Floor slab** | 8d | 2026-07-08 | 2026-07-19 |  | start no earlier than 2026-07-08 | RGA - STRUCTURE | 7810332 |
| 3090 | 40100.40200.40700.53000.55400.61400.63300.400600.2657000 | Wall rebar & Form work | 4d | 2026-07-08 | 2026-07-15 | 3088 |  | RGA - STRUCTURE | 7856522 |
| 3091 | 40100.40200.40700.53000.55400.61400.63300.400600.2657100 | Slab form work & reabar | 3d | 2026-07-16 | 2026-07-18 | 3090 |  | RGA - STRUCTURE | 7856532 |
| 3092 | 40100.40200.40700.53000.55400.61400.63300.400600.2657200 | Concreting | 1d | 2026-07-19 | 2026-07-19 | 3091 |  | RGA - STRUCTURE | 7856542 |
| 3093 | 40100.40200.40700.53000.55400.61400.63300.400700 | **20th Floor slab (Refuge Floor)** | 12d | 2026-07-20 | 2026-07-31 |  | start no earlier than 2026-07-20 | RGA - STRUCTURE | 7810342 |
| 3094 | 40100.40200.40700.53000.55400.61400.63300.400700.2657300 | Wall rebar & Form work | 6d | 2026-07-20 | 2026-07-25 | 3092 |  | RGA - STRUCTURE | 7856552 |
| 3095 | 40100.40200.40700.53000.55400.61400.63300.400700.2657400 | Slab form work & reabar | 5d | 2026-07-26 | 2026-07-30 | 3094 |  | RGA - STRUCTURE | 7856562 |
| 3096 | 40100.40200.40700.53000.55400.61400.63300.400700.2657500 | Concreting | 1d | 2026-07-31 | 2026-07-31 | 3095 |  | RGA - STRUCTURE | 7856572 |
| 3097 | 40100.40200.40700.53000.55400.61400.63300.400800 | **21th Floor slab** | 8d | 2026-08-01 | 2026-08-08 |  | start no earlier than 2026-08-01 | RGA - STRUCTURE | 7810352 |
| 3098 | 40100.40200.40700.53000.55400.61400.63300.400800.2657600 | Wall rebar & Form work | 4d | 2026-08-01 | 2026-08-04 | 3096 |  | RGA - STRUCTURE | 7856582 |
| 3099 | 40100.40200.40700.53000.55400.61400.63300.400800.2657700 | Slab form work & reabar | 3d | 2026-08-05 | 2026-08-07 | 3098 |  | RGA - STRUCTURE | 7856592 |
| 3100 | 40100.40200.40700.53000.55400.61400.63300.400800.2657800 | Concreting | 1d | 2026-08-08 | 2026-08-08 | 3099 |  | RGA - STRUCTURE | 7856602 |

| ID | WBS | Task | Duration | Start | Finish | Predecessors | Constraint | Calendar | Unique_Task_ID |
| --- | --- | --- | --- | --- | --- | --- | --- | --- | --- |
| 3101 | 40100.40200.40700.53000.55400.61400.63300.400900 | **22th Floor slab** | 8d | 2026-08-09 | 2026-08-17 |  | start no earlier than 2026-08-09 | RGA - STRUCTURE | 7810362 |
| 3102 | 40100.40200.40700.53000.55400.61400.63300.400900.2657900 | Wall rebar & Form work | 4d | 2026-08-09 | 2026-08-12 | 3100 |  | RGA - STRUCTURE | 7856612 |
| 3103 | 40100.40200.40700.53000.55400.61400.63300.400900.2658000 | Slab form work & reabar | 3d | 2026-08-13 | 2026-08-16 | 3102 |  | RGA - STRUCTURE | 7856622 |
| 3104 | 40100.40200.40700.53000.55400.61400.63300.400900.2658100 | Concreting | 1d | 2026-08-17 | 2026-08-17 | 3103 |  | RGA - STRUCTURE | 7856632 |
| 3105 | 40100.40200.40700.53000.55400.61400.63300.401000 | **23th Floor slab** | 8d | 2026-08-18 | 2026-08-25 |  | start no earlier than 2026-08-18 | RGA - STRUCTURE | 7810372 |
| 3106 | 40100.40200.40700.53000.55400.61400.63300.401000.2658200 | Wall rebar & Form work | 4d | 2026-08-18 | 2026-08-21 | 3104 |  | RGA - STRUCTURE | 7856642 |
| 3107 | 40100.40200.40700.53000.55400.61400.63300.401000.2658300 | Slab form work & reabar | 3d | 2026-08-22 | 2026-08-24 | 3106 |  | RGA - STRUCTURE | 7856652 |
| 3108 | 40100.40200.40700.53000.55400.61400.63300.401000.2658400 | Concreting | 1d | 2026-08-25 | 2026-08-25 | 3107 |  | RGA - STRUCTURE | 7856662 |
| 3109 | 40100.40200.40700.53000.55400.61400.63300.401100 | **24th Floor slab** | 8d | 2026-08-26 | 2026-09-02 |  | start no earlier than 2026-08-26 | RGA - STRUCTURE | 7810382 |
| 3110 | 40100.40200.40700.53000.55400.61400.63300.401100.2658500 | Wall rebar & Form work | 4d | 2026-08-26 | 2026-08-29 | 3108 |  | RGA - STRUCTURE | 7856672 |
| 3111 | 40100.40200.40700.53000.55400.61400.63300.401100.2658600 | Slab form work & reabar | 3d | 2026-08-30 | 2026-09-01 | 3110 |  | RGA - STRUCTURE | 7856682 |
| 3112 | 40100.40200.40700.53000.55400.61400.63300.401100.2658700 | Concreting | 1d | 2026-09-02 | 2026-09-02 | 3111 |  | RGA - STRUCTURE | 7856692 |
| 3113 | 40100.40200.40700.53000.55400.61400.63300.401200 | **25th Floor slab** | 8d | 2026-09-03 | 2026-09-10 |  | start no earlier than 2026-09-03 | RGA - STRUCTURE | 7810392 |
| 3114 | 40100.40200.40700.53000.55400.61400.63300.401200.2658800 | Wall rebar & Form work | 4d | 2026-09-03 | 2026-09-06 | 3112 |  | RGA - STRUCTURE | 7856702 |
| 3115 | 40100.40200.40700.53000.55400.61400.63300.401200.2658900 | Slab form work & reabar | 3d | 2026-09-07 | 2026-09-09 | 3114 |  | RGA - STRUCTURE | 7856712 |
| 3116 | 40100.40200.40700.53000.55400.61400.63300.401200.2659000 | Concreting | 1d | 2026-09-10 | 2026-09-10 | 3115 |  | RGA - STRUCTURE | 7856722 |
| 3117 | 40100.40200.40700.53000.55400.61400.63300.401300 | **Terrace Floor slab work** | 12d | 2026-09-11 | 2026-09-22 |  | start no earlier than 2026-09-11 | RGA - STRUCTURE | 7810422 |
| 3118 | 40100.40200.40700.53000.55400.61400.63300.401300.2659100 | Wall & Slab Form work | 6d | 2026-09-11 | 2026-09-16 | 3116 |  | RGA - STRUCTURE | 7856792 |
| 3119 | 40100.40200.40700.53000.55400.61400.63300.401300.2659200 | Slab & Beam Reinf. | 5d | 2026-09-17 | 2026-09-21 | 3118 |  | RGA - STRUCTURE | 7856802 |
| 3120 | 40100.40200.40700.53000.55400.61400.63300.401300.2659300 | Concreting | 1d | 2026-09-22 | 2026-09-22 | 3119 |  | RGA - STRUCTURE | 7856812 |
| 3121 | 40100.40200.40700.53000.55400.61400.253500 | **RCC work above Terrace** | 49d | 2026-09-23 | 2026-11-11 |  | start no earlier than 2026-09-23 | RGA - STRUCTURE | 7806972 |
| 3122 | 40100.40200.40700.53000.55400.61400.253500.370000 | **STAIRCASE & OHT CORE** | 49d | 2026-09-23 | 2026-11-11 |  | start no earlier than 2026-09-23 | RGA - STRUCTURE | 7808822 |
| 3123 | 40100.40200.40700.53000.55400.61400.253500.370000.2659400 | STAIRCASE HEAD ROOM | 10d | 2026-09-23 | 2026-10-03 | 3120 |  | RGA - STRUCTURE | 7856822 |
| 3124 | 40100.40200.40700.53000.55400.61400.253500.370000.2659500 | OHT | 25d | 2026-10-04 | 2026-10-28 | 3123 |  | RGA - STRUCTURE | 7856832 |
| 3125 | 40100.40200.40700.53000.55400.61400.253500.370000.2659600 | SHAFT COVERING SLAB | 10d | 2026-09-23 | 2026-10-03 | 3120 |  | RGA - STRUCTURE | 7856842 |
| 3126 | 40100.40200.40700.53000.55400.61400.253500.370000.2659700 | DESHUTTERING OF OHT TOP SLAB | 7d | 2026-11-05 | 2026-11-11 | 3124FS+7d |  | RGA - STRUCTURE | 7856852 |

Notes:
- 3117: AVg Slab Cycle of 21 days

| ID | WBS | Task | Duration | Start | Finish | Predecessors | Constraint | Calendar | Unique_Task_ID |
| --- | --- | --- | --- | --- | --- | --- | --- | --- | --- |
| 3127 | 40100.40200.40700.53000.55400.61400.253500.401400 | **LMR BOTTOM & TOP SLAB** | 43d | 2026-09-23 | 2026-11-05 |  | start no earlier than 2026-09-23 | RGA - STRUCTURE | 7810432 |
| 3128 | 40100.40200.40700.53000.55400.61400.253500.401400.2659800 | LMR COLUMNS / WALLS | 15d | 2026-09-23 | 2026-10-08 | 3120 |  | RGA - STRUCTURE | 7856862 |
| 3129 | 40100.40200.40700.53000.55400.61400.253500.401400.2659900 | LMR TOP SLAB | 20d | 2026-10-09 | 2026-10-28 | 3128 |  | RGA - STRUCTURE | 7856872 |
| 3130 | 40100.40200.40700.53000.55400.61400.253500.401400.2660000 | DESHUTTERING | 8d | 2026-10-29 | 2026-11-05 | 3129 |  | RGA - STRUCTURE | 7856882 |
| 3131 | 40100.40200.40700.53000.55400.58900 | **Civil Finishing works (Brick work, Plaster,conduiting, concled plumbing, waterproofing)** | 793d | 2025-04-01 | 2027-06-02 |  | start no earlier than 2025-04-01 | RGA -FINISHING | 7803482 |
| 3132 | 40100.40200.40700.53000.55400.58900.61300 | **Flat finishing works** | 631d | 2025-04-01 | 2026-12-22 |  | start no earlier than 2025-04-01 | RGA -FINISHING | 7803572 |
| 3133 | 40100.40200.40700.53000.55400.58900.61300.339100 | **Ground FLOOR** | 136d | 2025-11-02 | 2026-03-17 |  | start no earlier than 2025-11-02 | RGA -FINISHING | 7807752 |
| 3134 | 40100.40200.40700.53000.55400.58900.61300.339100.2660100 | BALCONY RAILING FIXING | 9d | 2025-12-24 | 2026-01-01 | 3028FS-30d |  | RGA -FINISHING | 7856892 |
| 3135 | 40100.40200.40700.53000.55400.58900.61300.339100.2660200 | Block work | 8d | 2026-03-10 | 2026-03-17 | 3139 |  | RGA -FINISHING | 7856902 |
| 3136 | 40100.40200.40700.53000.55400.58900.61300.339100.2660300 | CONCEALED ELEC CONDUITING & ITS FINISHING | 5d | 2025-11-02 | 2025-11-06 | 2979FS-7d |  | RGA -FINISHING | 7380135 |
| 3137 | 40100.40200.40700.53000.55400.58900.61300.339100.2660400 | PLASTER APPLICATION | 6d | 2026-02-16 | 2026-02-21 | 3328FS+30d |  | RGA -FINISHING | 7856912 |
| 3138 | 40100.40200.40700.53000.55400.58900.61300.339100.2660500 | CONCEALED PLUMBING | 8d | 2026-02-22 | 2026-03-01 | 3137 |  | RGA -FINISHING | 7856922 |
| 3139 | 40100.40200.40700.53000.55400.58900.61300.339100.2660600 | WATERPROOFING WORK FOR TOILETS, KITCHEN SUNK & PLANTERS | 8d | 2026-03-02 | 2026-03-09 | 3138 |  | RGA -FINISHING | 7856932 |
| 3140 | 40100.40200.40700.53000.55400.58900.61300.339000 | **1ST FLOOR** | 123d | 2025-11-27 | 2026-03-29 |  | start no earlier than 2025-11-27 | RGA -FINISHING | 7807762 |
| 3141 | 40100.40200.40700.53000.55400.58900.61300.339000.2660700 | BALCONY RAILING FIXING | 9d | 2026-01-14 | 2026-01-22 | 3032FS-31d |  | RGA -FINISHING | 7856942 |
| 3142 | 40100.40200.40700.53000.55400.58900.61300.339000.2660800 | Block work | 8d | 2026-03-22 | 2026-03-29 | 3146 |  | RGA -FINISHING | 7856952 |
| 3143 | 40100.40200.40700.53000.55400.58900.61300.339000.2660900 | CONCEALED ELEC CONDUITING & ITS FINISHING | 5d | 2025-11-27 | 2025-12-01 | 3019FS-7d |  | RGA -FINISHING | 7856962 |
| 3144 | 40100.40200.40700.53000.55400.58900.61300.339000.2661000 | PLASTER APPLICATION | 6d | 2026-02-28 | 2026-03-05 | 3341FS+30d |  | RGA -FINISHING | 7856972 |
| 3145 | 40100.40200.40700.53000.55400.58900.61300.339000.2661100 | CONCEALED PLUMBING | 8d | 2026-03-06 | 2026-03-13 | 3144 |  | RGA -FINISHING | 7856982 |
| 3146 | 40100.40200.40700.53000.55400.58900.61300.339000.2661200 | WATERPROOFING WORK FOR TOILETS, KITCHEN SUNK & PLANTERS | 8d | 2026-03-14 | 2026-03-21 | 3145 |  | RGA -FINISHING | 7856992 |
| 3147 | 40100.40200.40700.53000.55400.58900.61300.338900 | **2nd FLOOR** | 104d | 2025-12-22 | 2026-04-04 |  | start no earlier than 2025-12-22 | RGA -FINISHING | 7807772 |
| 3148 | 40100.40200.40700.53000.55400.58900.61300.338900.2661300 | BALCONY RAILING FIXING | 9d | 2026-01-30 | 2026-02-07 | 3036FS-30d |  | RGA -FINISHING | 7857002 |
| 3149 | 40100.40200.40700.53000.55400.58900.61300.338900.2661400 | Block work | 8d | 2026-03-28 | 2026-04-04 | 3153 |  | RGA -FINISHING | 7857012 |
| 3150 | 40100.40200.40700.53000.55400.58900.61300.338900.2661500 | CONCEALED ELEC CONDUITING & ITS FINISHING | 5d | 2025-12-22 | 2025-12-26 | 3024FS-7d |  | RGA -FINISHING | 7857022 |
| 3151 | 40100.40200.40700.53000.55400.58900.61300.338900.2661600 | PLASTER APPLICATION | 6d | 2026-03-06 | 2026-03-11 | 3354FS+20d |  | RGA -FINISHING | 7857032 |
| 3152 | 40100.40200.40700.53000.55400.58900.61300.338900.2661700 | CONCEALED PLUMBING | 8d | 2026-03-12 | 2026-03-19 | 3151 |  | RGA -FINISHING | 7857042 |
| 3153 | 40100.40200.40700.53000.55400.58900.61300.338900.2661800 | WATERPROOFING WORK FOR TOILETS, KITCHEN SUNK & PLANTERS | 8d | 2026-03-20 | 2026-03-27 | 3152 |  | RGA -FINISHING | 7857052 |

| ID | WBS | Task | Duration | Start | Finish | Predecessors | Constraint | Calendar | Unique_Task_ID |
| --- | --- | --- | --- | --- | --- | --- | --- | --- | --- |
| 3154 | 40100.40200.40700.53000.55400.58900.61300.338800 | **3rd FLOOR** | 86d | 2026-01-16 | 2026-04-11 |  | start no earlier than 2026-01-16 | RGA -FINISHING | 7807782 |
| 3155 | 40100.40200.40700.53000.55400.58900.61300.338800.2661900 | BALCONY RAILING FIXING | 9d | 2026-02-23 | 2026-03-03 | 3040FS-15d |  | RGA -FINISHING | 7857062 |
| 3156 | 40100.40200.40700.53000.55400.58900.61300.338800.2662000 | Block work | 8d | 2026-04-04 | 2026-04-11 | 3160 |  | RGA -FINISHING | 7857072 |
| 3157 | 40100.40200.40700.53000.55400.58900.61300.338800.2662100 | CONCEALED ELEC CONDUITING & ITS FINISHING | 5d | 2026-01-16 | 2026-01-20 | 3028FS-7d |  | RGA -FINISHING | 7857082 |
| 3158 | 40100.40200.40700.53000.55400.58900.61300.338800.2662200 | PLASTER APPLICATION | 6d | 2026-03-13 | 2026-03-18 | 3367FS+3d |  | RGA -FINISHING | 7857092 |
| 3159 | 40100.40200.40700.53000.55400.58900.61300.338800.2662300 | CONCEALED PLUMBING | 8d | 2026-03-19 | 2026-03-26 | 3158 |  | RGA -FINISHING | 7857102 |
| 3160 | 40100.40200.40700.53000.55400.58900.61300.338800.2662400 | WATERPROOFING WORK FOR TOILETS, KITCHEN SUNK & PLANTERS | 8d | 2026-03-27 | 2026-04-03 | 3159 |  | RGA -FINISHING | 7857112 |
| 3161 | 40100.40200.40700.53000.55400.58900.61300.338700 | **4th FLOOR** | 63d | 2026-02-14 | 2026-04-17 |  | start no earlier than 2026-02-14 | RGA -FINISHING | 7807792 |
| 3162 | 40100.40200.40700.53000.55400.58900.61300.338700.2662500 | BALCONY RAILING FIXING | 9d | 2026-03-04 | 2026-03-12 | 3044FS-15d |  | RGA -FINISHING | 7857122 |
| 3163 | 40100.40200.40700.53000.55400.58900.61300.338700.2662600 | Block work | 8d | 2026-04-10 | 2026-04-17 | 3167 |  | RGA -FINISHING | 7857132 |
| 3164 | 40100.40200.40700.53000.55400.58900.61300.338700.2662700 | CONCEALED ELEC CONDUITING & ITS FINISHING | 5d | 2026-02-14 | 2026-02-18 | 3032 |  | RGA -FINISHING | 7857142 |
| 3165 | 40100.40200.40700.53000.55400.58900.61300.338700.2662800 | PLASTER APPLICATION | 6d | 2026-03-19 | 2026-03-24 | 3380 |  | RGA -FINISHING | 7857152 |
| 3166 | 40100.40200.40700.53000.55400.58900.61300.338700.2662900 | CONCEALED PLUMBING | 8d | 2026-03-25 | 2026-04-01 | 3165 |  | RGA -FINISHING | 7857162 |
| 3167 | 40100.40200.40700.53000.55400.58900.61300.338700.2663000 | WATERPROOFING WORK FOR TOILETS, KITCHEN SUNK & PLANTERS | 8d | 2026-04-02 | 2026-04-09 | 3166 |  | RGA -FINISHING | 7857172 |
| 3168 | 40100.40200.40700.53000.55400.58900.61300.338600 | **5th FLOOR** | 64d | 2026-02-22 | 2026-04-26 |  | start no earlier than 2026-02-22 | RGA -FINISHING | 7807802 |
| 3169 | 40100.40200.40700.53000.55400.58900.61300.338600.2663100 | BALCONY RAILING FIXING | 9d | 2026-03-13 | 2026-03-21 | 3048FS-15d |  | RGA -FINISHING | 7857182 |
| 3170 | 40100.40200.40700.53000.55400.58900.61300.338600.2663200 | Block work | 8d | 2026-04-19 | 2026-04-26 | 3174 |  | RGA -FINISHING | 7857192 |
| 3171 | 40100.40200.40700.53000.55400.58900.61300.338600.2663300 | CONCEALED ELEC CONDUITING & ITS FINISHING | 5d | 2026-02-22 | 2026-02-26 | 3036FS-7d |  | RGA -FINISHING | 7857202 |
| 3172 | 40100.40200.40700.53000.55400.58900.61300.338600.2663400 | PLASTER APPLICATION | 6d | 2026-03-28 | 2026-04-02 | 3393 |  | RGA -FINISHING | 7857212 |
| 3173 | 40100.40200.40700.53000.55400.58900.61300.338600.2663500 | CONCEALED PLUMBING | 8d | 2026-04-03 | 2026-04-10 | 3172 |  | RGA -FINISHING | 7857222 |
| 3174 | 40100.40200.40700.53000.55400.58900.61300.338600.2663600 | WATERPROOFING WORK FOR TOILETS, KITCHEN SUNK & PLANTERS | 8d | 2026-04-11 | 2026-04-18 | 3173 |  | RGA -FINISHING | 7857232 |
| 3175 | 40100.40200.40700.53000.55400.58900.61300.338500 | **6th FLOOR** | 69d | 2026-03-03 | 2026-05-10 |  | start no earlier than 2026-03-03 | RGA -FINISHING | 7807812 |
| 3176 | 40100.40200.40700.53000.55400.58900.61300.338500.2663700 | BALCONY RAILING FIXING | 9d | 2026-03-22 | 2026-03-30 | 3052FS-15d |  | RGA -FINISHING | 7857242 |
| 3177 | 40100.40200.40700.53000.55400.58900.61300.338500.2663800 | Block work | 8d | 2026-05-03 | 2026-05-10 | 3181 |  | RGA -FINISHING | 7857252 |
| 3178 | 40100.40200.40700.53000.55400.58900.61300.338500.2663900 | CONCEALED ELEC CONDUITING & ITS FINISHING | 5d | 2026-03-03 | 2026-03-07 | 3040FS-7d |  | RGA -FINISHING | 7857262 |
| 3179 | 40100.40200.40700.53000.55400.58900.61300.338500.2664000 | PLASTER APPLICATION | 6d | 2026-04-11 | 2026-04-16 | 3406FS+5d |  | RGA -FINISHING | 7857272 |
| 3180 | 40100.40200.40700.53000.55400.58900.61300.338500.2664100 | CONCEALED PLUMBING | 8d | 2026-04-17 | 2026-04-24 | 3179 |  | RGA -FINISHING | 7857282 |
| 3181 | 40100.40200.40700.53000.55400.58900.61300.338500.2664200 | WATERPROOFING WORK FOR TOILETS, KITCHEN SUNK & PLANTERS | 8d | 2026-04-25 | 2026-05-02 | 3180 |  | RGA -FINISHING | 7857292 |

| ID | WBS | Task | Duration | Start | Finish | Predecessors | Constraint | Calendar | Unique_Task_ID |
| --- | --- | --- | --- | --- | --- | --- | --- | --- | --- |
| 3182 | 40100.40200.40700.53000.55400.58900.61300.338400 | **7th FLOOR** | 69d | 2026-03-12 | 2026-05-19 |  | start no earlier than 2026-03-12 | RGA -FINISHING | 7807822 |
| 3183 | 40100.40200.40700.53000.55400.58900.61300.338400.2664300 | BALCONY RAILING FIXING | 9d | 2026-03-31 | 2026-04-08 | 3056FS-15d |  | RGA -FINISHING | 7857302 |
| 3184 | 40100.40200.40700.53000.55400.58900.61300.338400.2664400 | Block work | 8d | 2026-05-12 | 2026-05-19 | 3188 |  | RGA -FINISHING | 7857312 |
| 3185 | 40100.40200.40700.53000.55400.58900.61300.338400.2664500 | CONCEALED ELEC CONDUITING & ITS FINISHING | 5d | 2026-03-12 | 2026-03-16 | 3044FS-7d |  | RGA -FINISHING | 7857322 |
| 3186 | 40100.40200.40700.53000.55400.58900.61300.338400.2664600 | PLASTER APPLICATION | 6d | 2026-04-20 | 2026-04-25 | 3419FS+5d |  | RGA -FINISHING | 7857332 |
| 3187 | 40100.40200.40700.53000.55400.58900.61300.338400.2664700 | CONCEALED PLUMBING | 8d | 2026-04-26 | 2026-05-03 | 3186 |  | RGA -FINISHING | 7857342 |
| 3188 | 40100.40200.40700.53000.55400.58900.61300.338400.2664800 | WATERPROOFING WORK FOR TOILETS, KITCHEN SUNK & PLANTERS | 8d | 2026-05-04 | 2026-05-11 | 3187 |  | RGA -FINISHING | 7857352 |
| 3189 | 40100.40200.40700.53000.55400.58900.61300.338300 | **8th FLOOR** | 69d | 2026-03-21 | 2026-05-28 |  | start no earlier than 2026-03-21 | RGA -FINISHING | 7807832 |
| 3190 | 40100.40200.40700.53000.55400.58900.61300.338300.2664900 | BALCONY RAILING FIXING | 9d | 2026-04-09 | 2026-04-17 | 3060FS-15d |  | RGA -FINISHING | 7857362 |
| 3191 | 40100.40200.40700.53000.55400.58900.61300.338300.2665000 | Block work | 8d | 2026-05-21 | 2026-05-28 | 3195 |  | RGA -FINISHING | 7857372 |
| 3192 | 40100.40200.40700.53000.55400.58900.61300.338300.2665100 | CONCEALED ELEC CONDUITING & ITS FINISHING | 5d | 2026-03-21 | 2026-03-25 | 3048FS-7d |  | RGA -FINISHING | 7857382 |
| 3193 | 40100.40200.40700.53000.55400.58900.61300.338300.2665200 | PLASTER APPLICATION | 6d | 2026-04-29 | 2026-05-04 | 3432FS+5d |  | RGA -FINISHING | 7857392 |
| 3194 | 40100.40200.40700.53000.55400.58900.61300.338300.2665300 | CONCEALED PLUMBING | 8d | 2026-05-05 | 2026-05-12 | 3193 |  | RGA -FINISHING | 7857402 |
| 3195 | 40100.40200.40700.53000.55400.58900.61300.338300.2665400 | WATERPROOFING WORK FOR TOILETS, KITCHEN SUNK & PLANTERS | 8d | 2026-05-13 | 2026-05-20 | 3194 |  | RGA -FINISHING | 7857412 |
| 3196 | 40100.40200.40700.53000.55400.58900.61300.338200 | **9th FLOOR** | 64d | 2026-03-30 | 2026-06-01 |  | start no earlier than 2026-03-30 | RGA -FINISHING | 7807842 |
| 3197 | 40100.40200.40700.53000.55400.58900.61300.338200.2665500 | BALCONY RAILING FIXING | 9d | 2026-04-18 | 2026-04-26 | 3064FS-16d |  | RGA -FINISHING | 7857422 |
| 3198 | 40100.40200.40700.53000.55400.58900.61300.338200.2665600 | Block work | 8d | 2026-05-25 | 2026-06-01 | 3202 |  | RGA -FINISHING | 7857432 |
| 3199 | 40100.40200.40700.53000.55400.58900.61300.338200.2665700 | CONCEALED ELEC CONDUITING & ITS FINISHING | 5d | 2026-03-30 | 2026-04-03 | 3052FS-7d |  | RGA -FINISHING | 7857442 |
| 3200 | 40100.40200.40700.53000.55400.58900.61300.338200.2665800 | PLASTER APPLICATION | 6d | 2026-05-03 | 2026-05-08 | 3445 |  | RGA -FINISHING | 7857452 |
| 3201 | 40100.40200.40700.53000.55400.58900.61300.338200.2665900 | CONCEALED PLUMBING | 8d | 2026-05-09 | 2026-05-16 | 3200 |  | RGA -FINISHING | 7857462 |
| 3202 | 40100.40200.40700.53000.55400.58900.61300.338200.2666000 | WATERPROOFING WORK FOR TOILETS, KITCHEN SUNK & PLANTERS | 8d | 2026-05-17 | 2026-05-24 | 3201 |  | RGA -FINISHING | 7857472 |
| 3203 | 40100.40200.40700.53000.55400.58900.61300.338100 | **10th FLOOR** | 64d | 2026-04-08 | 2026-06-10 |  | start no earlier than 2026-04-08 | RGA -FINISHING | 7807852 |
| 3204 | 40100.40200.40700.53000.55400.58900.61300.338100.2666100 | BALCONY RAILING FIXING | 9d | 2026-04-27 | 2026-05-05 | 3068FS-16d |  | RGA -FINISHING | 7857482 |
| 3205 | 40100.40200.40700.53000.55400.58900.61300.338100.2666200 | Block work | 8d | 2026-06-03 | 2026-06-10 | 3209 |  | RGA -FINISHING | 7857492 |
| 3206 | 40100.40200.40700.53000.55400.58900.61300.338100.2666300 | CONCEALED ELEC CONDUITING & ITS FINISHING | 5d | 2026-04-08 | 2026-04-12 | 3056FS-7d |  | RGA -FINISHING | 7857502 |
| 3207 | 40100.40200.40700.53000.55400.58900.61300.338100.2666400 | PLASTER APPLICATION | 6d | 2026-05-12 | 2026-05-17 | 3458 |  | RGA -FINISHING | 7857512 |
| 3208 | 40100.40200.40700.53000.55400.58900.61300.338100.2666500 | CONCEALED PLUMBING | 8d | 2026-05-18 | 2026-05-25 | 3207 |  | RGA -FINISHING | 7857522 |
| 3209 | 40100.40200.40700.53000.55400.58900.61300.338100.2666600 | WATERPROOFING WORK FOR TOILETS, KITCHEN SUNK & PLANTERS | 8d | 2026-05-26 | 2026-06-02 | 3208 |  | RGA -FINISHING | 7857532 |

| ID | WBS | Task | Duration | Start | Finish | Predecessors | Constraint | Calendar | Unique_Task_ID |
| --- | --- | --- | --- | --- | --- | --- | --- | --- | --- |
| 3210 | 40100.40200.40700.53000.55400.58900.61300.338000 | **11th FLOOR** | 65d | 2026-04-17 | 2026-06-20 |  | start no earlier than 2026-04-17 | RGA -FINISHING | 7807862 |
| 3211 | 40100.40200.40700.53000.55400.58900.61300.338000.2666700 | BALCONY RAILING FIXING | 9d | 2026-05-07 | 2026-05-15 | 3072FS-15d |  | RGA -FINISHING | 7857542 |
| 3212 | 40100.40200.40700.53000.55400.58900.61300.338000.2666800 | Block work | 8d | 2026-06-13 | 2026-06-20 | 3216 |  | RGA -FINISHING | 7857552 |
| 3213 | 40100.40200.40700.53000.55400.58900.61300.338000.2666900 | CONCEALED ELEC CONDUITING & ITS FINISHING | 5d | 2026-04-17 | 2026-04-21 | 3060FS-7d |  | RGA -FINISHING | 7857562 |
| 3214 | 40100.40200.40700.53000.55400.58900.61300.338000.2667000 | PLASTER APPLICATION | 6d | 2026-05-22 | 2026-05-27 | 3471 |  | RGA -FINISHING | 7857572 |
| 3215 | 40100.40200.40700.53000.55400.58900.61300.338000.2667100 | CONCEALED PLUMBING | 8d | 2026-05-28 | 2026-06-04 | 3214 |  | RGA -FINISHING | 7857582 |
| 3216 | 40100.40200.40700.53000.55400.58900.61300.338000.2667200 | WATERPROOFING WORK FOR TOILETS, KITCHEN SUNK & PLANTERS | 8d | 2026-06-05 | 2026-06-12 | 3215 |  | RGA -FINISHING | 7857592 |
| 3217 | 40100.40200.40700.53000.55400.58900.61300.337900 | **12th FLOOR** | 60d | 2026-04-26 | 2026-06-24 |  | start no earlier than 2026-04-26 | RGA -FINISHING | 7807872 |
| 3218 | 40100.40200.40700.53000.55400.58900.61300.337900.2667300 | BALCONY RAILING FIXING | 9d | 2026-05-19 | 2026-05-27 | 3076FS-12d |  | RGA -FINISHING | 7857602 |
| 3219 | 40100.40200.40700.53000.55400.58900.61300.337900.2667400 | Block work | 8d | 2026-06-17 | 2026-06-24 | 3222 |  | RGA -FINISHING | 7857612 |
| 3220 | 40100.40200.40700.53000.55400.58900.61300.337900.2667500 | CONCEALED ELEC CONDUITING & ITS FINISHING | 5d | 2026-04-26 | 2026-04-30 | 3064FS-8d |  | RGA -FINISHING | 7857622 |
| 3221 | 40100.40200.40700.53000.55400.58900.61300.337900.2667600 | PLASTER APPLICATION | 6d | 2026-06-03 | 2026-06-08 | 3484 |  | RGA -FINISHING | 7857632 |
| 3222 | 40100.40200.40700.53000.55400.58900.61300.337900.2667700 | CONCEALED PLUMBING | 8d | 2026-06-09 | 2026-06-16 | 3221 |  | RGA -FINISHING | 7857642 |
| 3223 | 40100.40200.40700.53000.55400.58900.61300.337900.2667800 | WATERPROOFING WORK FOR TOILETS, KITCHEN SUNK & PLANTERS | 8d | 2026-06-17 | 2026-06-24 | 3222 |  | RGA -FINISHING | 7857652 |
| 3224 | 40100.40200.40700.53000.55400.58900.61300.337800 | **13th FLOOR** | 87d | 2026-05-06 | 2026-07-31 |  | start no earlier than 2026-05-06 | RGA -FINISHING | 7807882 |
| 3225 | 40100.40200.40700.53000.55400.58900.61300.337800.2667900 | BALCONY RAILING FIXING | 9d | 2026-06-01 | 2026-06-09 | 3080FS-8d |  | RGA -FINISHING | 7857662 |
| 3226 | 40100.40200.40700.53000.55400.58900.61300.337800.2668000 | Block work | 8d | 2026-07-24 | 2026-07-31 | 3230 |  | RGA -FINISHING | 7857672 |
| 3227 | 40100.40200.40700.53000.55400.58900.61300.337800.2668100 | CONCEALED ELEC CONDUITING & ITS FINISHING | 5d | 2026-05-06 | 2026-05-10 | 3068FS-7d |  | RGA -FINISHING | 7857682 |
| 3228 | 40100.40200.40700.53000.55400.58900.61300.337800.2668200 | PLASTER APPLICATION | 15d | 2026-06-18 | 2026-07-02 | 3497 |  | RGA -FINISHING | 7857692 |
| 3229 | 40100.40200.40700.53000.55400.58900.61300.337800.2668300 | CONCEALED PLUMBING | 9d | 2026-07-03 | 2026-07-11 | 3228 |  | RGA -FINISHING | 7857702 |
| 3230 | 40100.40200.40700.53000.55400.58900.61300.337800.2668400 | WATERPROOFING WORK FOR TOILETS, KITCHEN SUNK & PLANTERS | 12d | 2026-07-12 | 2026-07-23 | 3229 |  | RGA -FINISHING | 7857712 |
| 3231 | 40100.40200.40700.53000.55400.58900.61300.337700 | **14th FLOOR** | 83d | 2026-05-15 | 2026-08-05 |  | start no earlier than 2026-05-15 | RGA -FINISHING | 7807892 |
| 3232 | 40100.40200.40700.53000.55400.58900.61300.337700.2668500 | BALCONY RAILING FIXING | 9d | 2026-06-06 | 2026-06-14 | 3084FS-13.5d |  | RGA -FINISHING | 7857722 |
| 3233 | 40100.40200.40700.53000.55400.58900.61300.337700.2668600 | Block work | 8d | 2026-07-29 | 2026-08-05 | 3237 |  | RGA -FINISHING | 7857732 |
| 3234 | 40100.40200.40700.53000.55400.58900.61300.337700.2668700 | CONCEALED ELEC CONDUITING & ITS FINISHING | 5d | 2026-05-15 | 2026-05-19 | 3072FS-7d |  | RGA -FINISHING | 7857742 |
| 3235 | 40100.40200.40700.53000.55400.58900.61300.337700.2668800 | PLASTER APPLICATION | 15d | 2026-06-23 | 2026-07-07 | 3510 |  | RGA -FINISHING | 7857752 |
| 3236 | 40100.40200.40700.53000.55400.58900.61300.337700.2668900 | CONCEALED PLUMBING | 9d | 2026-07-08 | 2026-07-16 | 3235 |  | RGA -FINISHING | 7857762 |
| 3237 | 40100.40200.40700.53000.55400.58900.61300.337700.2669000 | WATERPROOFING WORK FOR TOILETS, KITCHEN SUNK & PLANTERS | 12d | 2026-07-17 | 2026-07-28 | 3236 |  | RGA -FINISHING | 7857772 |

| ID | WBS | Task | Duration | Start | Finish | Predecessors | Constraint | Calendar | Unique_Task_ID |
| --- | --- | --- | --- | --- | --- | --- | --- | --- | --- |
| 3238 | 40100.40200.40700.53000.55400.58900.61300.337600 | **15th FLOOR** | 80d | 2026-05-24 | 2026-08-11 |  | start no earlier than 2026-05-24 | RGA -FINISHING | 7807902 |
| 3239 | 40100.40200.40700.53000.55400.58900.61300.337600.2669100 | BALCONY RAILING FIXING | 9d | 2026-06-12 | 2026-06-20 | 3088FS-25.5d |  | RGA -FINISHING | 7857782 |
| 3240 | 40100.40200.40700.53000.55400.58900.61300.337600.2669200 | Block work | 8d | 2026-08-04 | 2026-08-11 | 3244 |  | RGA -FINISHING | 7857792 |
| 3241 | 40100.40200.40700.53000.55400.58900.61300.337600.2669300 | CONCEALED ELEC CONDUITING & ITS FINISHING | 5d | 2026-05-24 | 2026-05-28 | 3076FS-7d |  | RGA -FINISHING | 7857802 |
| 3242 | 40100.40200.40700.53000.55400.58900.61300.337600.2669400 | PLASTER APPLICATION | 15d | 2026-06-29 | 2026-07-13 | 3523 |  | RGA -FINISHING | 7857812 |
| 3243 | 40100.40200.40700.53000.55400.58900.61300.337600.2669500 | CONCEALED PLUMBING | 9d | 2026-07-14 | 2026-07-22 | 3242 |  | RGA -FINISHING | 7857822 |
| 3244 | 40100.40200.40700.53000.55400.58900.61300.337600.2669600 | WATERPROOFING WORK FOR TOILETS, KITCHEN SUNK & PLANTERS | 12d | 2026-07-23 | 2026-08-03 | 3243 |  | RGA -FINISHING | 7381065 |
| 3245 | 40100.40200.40700.53000.55400.58900.61300.337500 | **16th FLOOR** | 83d | 2026-06-02 | 2026-08-23 |  | start no earlier than 2026-06-02 | RGA -FINISHING | 7807912 |
| 3246 | 40100.40200.40700.53000.55400.58900.61300.337500.2669700 | BALCONY RAILING FIXING | 9d | 2026-06-24 | 2026-07-02 | 3092FS-26d |  | RGA -FINISHING | 7857832 |
| 3247 | 40100.40200.40700.53000.55400.58900.61300.337500.2669800 | Block work | 8d | 2026-08-16 | 2026-08-23 | 3251 |  | RGA -FINISHING | 7381085 |
| 3248 | 40100.40200.40700.53000.55400.58900.61300.337500.2669900 | CONCEALED ELEC CONDUITING & ITS FINISHING | 5d | 2026-06-02 | 2026-06-06 | 3080FS-7d |  | RGA -FINISHING | 7381095 |
| 3249 | 40100.40200.40700.53000.55400.58900.61300.337500.2670000 | PLASTER APPLICATION | 15d | 2026-07-11 | 2026-07-25 | 3536 |  | RGA -FINISHING | 7381105 |
| 3250 | 40100.40200.40700.53000.55400.58900.61300.337500.2670100 | CONCEALED PLUMBING | 9d | 2026-07-26 | 2026-08-03 | 3249 |  | RGA -FINISHING | 7381115 |
| 3251 | 40100.40200.40700.53000.55400.58900.61300.337500.2670200 | WATERPROOFING WORK FOR TOILETS, KITCHEN SUNK & PLANTERS | 12d | 2026-08-04 | 2026-08-15 | 3250 |  | RGA -FINISHING | 7381125 |
| 3252 | 40100.40200.40700.53000.55400.58900.61300.337400 | **17th FLOOR** | 97d | 2026-06-11 | 2026-09-15 |  | start no earlier than 2026-06-11 | RGA -FINISHING | 7807922 |
| 3253 | 40100.40200.40700.53000.55400.58900.61300.337400.2670300 | BALCONY RAILING FIXING | 9d | 2026-07-17 | 2026-07-25 | 3096FS-15d |  | RGA -FINISHING | 7381135 |
| 3254 | 40100.40200.40700.53000.55400.58900.61300.337400.2670400 | Block work | 8d | 2026-09-08 | 2026-09-15 | 3258 |  | RGA -FINISHING | 7381145 |
| 3255 | 40100.40200.40700.53000.55400.58900.61300.337400.2670500 | CONCEALED ELEC CONDUITING & ITS FINISHING | 5d | 2026-06-11 | 2026-06-15 | 3084FS-8.5d |  | RGA -FINISHING | 7381155 |
| 3256 | 40100.40200.40700.53000.55400.58900.61300.337400.2670600 | PLASTER APPLICATION | 15d | 2026-08-03 | 2026-08-17 | 3549 |  | RGA -FINISHING | 7381165 |
| 3257 | 40100.40200.40700.53000.55400.58900.61300.337400.2670700 | CONCEALED PLUMBING | 9d | 2026-08-18 | 2026-08-26 | 3256 |  | RGA -FINISHING | 7381175 |
| 3258 | 40100.40200.40700.53000.55400.58900.61300.337400.2670800 | WATERPROOFING WORK FOR TOILETS, KITCHEN SUNK & PLANTERS | 12d | 2026-08-27 | 2026-09-07 | 3257 |  | RGA -FINISHING | 7381185 |
| 3259 | 40100.40200.40700.53000.55400.58900.61300.337300 | **18th FLOOR** | 92d | 2026-06-24 | 2026-09-23 |  | start no earlier than 2026-06-24 | RGA -FINISHING | 7807932 |
| 3260 | 40100.40200.40700.53000.55400.58900.61300.337300.2670900 | BALCONY RAILING FIXING | 9d | 2026-07-25 | 2026-08-02 | 3100FS-15d |  | RGA -FINISHING | 7381195 |
| 3261 | 40100.40200.40700.53000.55400.58900.61300.337300.2671000 | Block work | 8d | 2026-09-16 | 2026-09-23 | 3265 |  | RGA -FINISHING | 7381205 |
| 3262 | 40100.40200.40700.53000.55400.58900.61300.337300.2671100 | CONCEALED ELEC CONDUITING & ITS FINISHING | 5d | 2026-06-24 | 2026-06-28 | 3088FS-13.5d |  | RGA -FINISHING | 7381215 |
| 3263 | 40100.40200.40700.53000.55400.58900.61300.337300.2671200 | PLASTER APPLICATION | 15d | 2026-08-11 | 2026-08-25 | 3562 |  | RGA -FINISHING | 7381225 |
| 3264 | 40100.40200.40700.53000.55400.58900.61300.337300.2671300 | CONCEALED PLUMBING | 9d | 2026-08-26 | 2026-09-03 | 3263 |  | RGA -FINISHING | 7381235 |
| 3265 | 40100.40200.40700.53000.55400.58900.61300.337300.2671400 | WATERPROOFING WORK FOR TOILETS, KITCHEN SUNK & PLANTERS | 12d | 2026-09-04 | 2026-09-15 | 3264 |  | RGA -FINISHING | 7381245 |

Notes:
- 3261: Last floor BW completion 2 months post Last RCC

| ID | WBS | Task | Duration | Start | Finish | Predecessors | Constraint | Calendar | Unique_Task_ID |
| --- | --- | --- | --- | --- | --- | --- | --- | --- | --- |
| 3266 | 40100.40200.40700.53000.55400.58900.61300.337200 | **19th FLOOR** | 84d | 2026-07-10 | 2026-10-01 |  | start no earlier than 2026-07-10 | RGA -FINISHING | 7807942 |
| 3267 | 40100.40200.40700.53000.55400.58900.61300.337200.2671500 | BALCONY RAILING FIXING | 9d | 2026-08-02 | 2026-08-10 | 3104FS-16d |  | RGA -FINISHING | 7381255 |
| 3268 | 40100.40200.40700.53000.55400.58900.61300.337200.2671600 | Block work | 8d | 2026-09-24 | 2026-10-01 | 3272 |  | RGA -FINISHING | 7381265 |
| 3269 | 40100.40200.40700.53000.55400.58900.61300.337200.2671700 | CONCEALED ELEC CONDUITING & ITS FINISHING | 5d | 2026-07-10 | 2026-07-14 | 3092FS-10d |  | RGA -FINISHING | 7381275 |
| 3270 | 40100.40200.40700.53000.55400.58900.61300.337200.2671800 | PLASTER APPLICATION | 15d | 2026-08-19 | 2026-09-02 | 3575 |  | RGA -FINISHING | 7381285 |
| 3271 | 40100.40200.40700.53000.55400.58900.61300.337200.2671900 | CONCEALED PLUMBING | 9d | 2026-09-03 | 2026-09-11 | 3270 |  | RGA -FINISHING | 7381295 |
| 3272 | 40100.40200.40700.53000.55400.58900.61300.337200.2672000 | WATERPROOFING WORK FOR TOILETS, KITCHEN SUNK & PLANTERS | 12d | 2026-09-12 | 2026-09-23 | 3271 |  | RGA -FINISHING | 7381305 |
| 3273 | 40100.40200.40700.53000.55400.58900.61300.337100 | **20th FLOOR** | 77d | 2026-07-25 | 2026-10-09 |  | start no earlier than 2026-07-25 | RGA -FINISHING | 7807952 |
| 3274 | 40100.40200.40700.53000.55400.58900.61300.337100.2672100 | BALCONY RAILING FIXING | 9d | 2026-08-10 | 2026-08-18 | 3108FS-16d |  | RGA -FINISHING | 7381315 |
| 3275 | 40100.40200.40700.53000.55400.58900.61300.337100.2672200 | Block work | 8d | 2026-10-02 | 2026-10-09 | 3279 |  | RGA -FINISHING | 7381325 |
| 3276 | 40100.40200.40700.53000.55400.58900.61300.337100.2672300 | CONCEALED ELEC CONDUITING & ITS FINISHING | 5d | 2026-07-25 | 2026-07-29 | 3096FS-7d |  | RGA -FINISHING | 7381335 |
| 3277 | 40100.40200.40700.53000.55400.58900.61300.337100.2672400 | PLASTER APPLICATION | 15d | 2026-08-27 | 2026-09-10 | 3588 |  | RGA -FINISHING | 7381345 |
| 3278 | 40100.40200.40700.53000.55400.58900.61300.337100.2672500 | CONCEALED PLUMBING | 9d | 2026-09-11 | 2026-09-19 | 3277 |  | RGA -FINISHING | 7381355 |
| 3279 | 40100.40200.40700.53000.55400.58900.61300.337100.2672600 | WATERPROOFING WORK FOR TOILETS, KITCHEN SUNK & PLANTERS | 12d | 2026-09-20 | 2026-10-01 | 3278 |  | RGA -FINISHING | 7381365 |
| 3280 | 40100.40200.40700.53000.55400.58900.61300.337000 | **21th FLOOR** | 78d | 2026-08-02 | 2026-10-18 |  | start no earlier than 2026-08-02 | RGA -FINISHING | 7807962 |
| 3281 | 40100.40200.40700.53000.55400.58900.61300.337000.2672700 | BALCONY RAILING FIXING | 9d | 2026-08-19 | 2026-08-27 | 3112FS-15d |  | RGA -FINISHING | 7381375 |
| 3282 | 40100.40200.40700.53000.55400.58900.61300.337000.2672800 | Block work | 8d | 2026-10-11 | 2026-10-18 | 3286 |  | RGA -FINISHING | 7381385 |
| 3283 | 40100.40200.40700.53000.55400.58900.61300.337000.2672900 | CONCEALED ELEC CONDUITING & ITS FINISHING | 5d | 2026-08-02 | 2026-08-06 | 3100FS-7d |  | RGA -FINISHING | 7381395 |
| 3284 | 40100.40200.40700.53000.55400.58900.61300.337000.2673000 | PLASTER APPLICATION | 15d | 2026-09-05 | 2026-09-19 | 3601 |  | RGA -FINISHING | 7381405 |
| 3285 | 40100.40200.40700.53000.55400.58900.61300.337000.2673100 | CONCEALED PLUMBING | 9d | 2026-09-20 | 2026-09-28 | 3284 |  | RGA -FINISHING | 7381415 |
| 3286 | 40100.40200.40700.53000.55400.58900.61300.337000.2673200 | WATERPROOFING WORK FOR TOILETS, KITCHEN SUNK & PLANTERS | 12d | 2026-09-29 | 2026-10-10 | 3285 |  | RGA -FINISHING | 7381425 |
| 3287 | 40100.40200.40700.53000.55400.58900.61300.336900 | **22th FLOOR** | 78d | 2026-08-10 | 2026-10-26 |  | start no earlier than 2026-08-10 | RGA -FINISHING | 7807972 |
| 3288 | 40100.40200.40700.53000.55400.58900.61300.336900.2673300 | BALCONY RAILING FIXING | 9d | 2026-08-27 | 2026-09-04 | 3116FS-15d |  | RGA -FINISHING | 7381435 |
| 3289 | 40100.40200.40700.53000.55400.58900.61300.336900.2673400 | Block work | 8d | 2026-10-19 | 2026-10-26 | 3293 |  | RGA -FINISHING | 7381445 |
| 3290 | 40100.40200.40700.53000.55400.58900.61300.336900.2673500 | CONCEALED ELEC CONDUITING & ITS FINISHING | 5d | 2026-08-10 | 2026-08-14 | 3104FS-8d |  | RGA -FINISHING | 7381455 |
| 3291 | 40100.40200.40700.53000.55400.58900.61300.336900.2673600 | PLASTER APPLICATION | 15d | 2026-09-13 | 2026-09-27 | 3614 |  | RGA -FINISHING | 7381465 |
| 3292 | 40100.40200.40700.53000.55400.58900.61300.336900.2673700 | CONCEALED PLUMBING | 9d | 2026-09-28 | 2026-10-06 | 3291 |  | RGA -FINISHING | 7381475 |
| 3293 | 40100.40200.40700.53000.55400.58900.61300.336900.2673800 | WATERPROOFING WORK FOR TOILETS, KITCHEN SUNK & PLANTERS | 12d | 2026-10-07 | 2026-10-18 | 3292 |  | RGA -FINISHING | 7381485 |

Notes:
- 3268: Last floor BW completion 2 months post Last RCC
- 3275: Last floor BW completion 2 months post Last RCC
- 3282: Last floor BW completion 2 months post Last RCC
- 3289: Last floor BW completion 2 months post Last RCC

| ID | WBS | Task | Duration | Start | Finish | Predecessors | Constraint | Calendar | Unique_Task_ID |
| --- | --- | --- | --- | --- | --- | --- | --- | --- | --- |
| 3294 | 40100.40200.40700.53000.55400.58900.61300.336800 | **23th FLOOR** | 108d | 2026-08-19 | 2026-12-04 |  | start no earlier than 2026-08-19 | RGA -FINISHING | 7807982 |
| 3295 | 40100.40200.40700.53000.55400.58900.61300.336800.2673900 | BALCONY RAILING FIXING | 9d | 2026-09-05 | 2026-09-13 | 3288 |  | RGA -FINISHING | 7381495 |
| 3296 | 40100.40200.40700.53000.55400.58900.61300.336800.2674000 | Block work | 8d | 2026-11-27 | 2026-12-04 | 3300 |  | RGA -FINISHING | 7381505 |
| 3297 | 40100.40200.40700.53000.55400.58900.61300.336800.2674100 | CONCEALED ELEC CONDUITING & ITS FINISHING | 5d | 2026-08-19 | 2026-08-23 | 3108FS-7d |  | RGA -FINISHING | 7381515 |
| 3298 | 40100.40200.40700.53000.55400.58900.61300.336800.2674200 | PLASTER APPLICATION | 15d | 2026-10-22 | 2026-11-05 | 3627FS+30d |  | RGA -FINISHING | 7381525 |
| 3299 | 40100.40200.40700.53000.55400.58900.61300.336800.2674300 | CONCEALED PLUMBING | 9d | 2026-11-06 | 2026-11-14 | 3298 |  | RGA -FINISHING | 7381535 |
| 3300 | 40100.40200.40700.53000.55400.58900.61300.336800.2674400 | WATERPROOFING WORK FOR TOILETS, KITCHEN SUNK & PLANTERS | 12d | 2026-11-15 | 2026-11-26 | 3299 |  | RGA -FINISHING | 7381545 |
| 3301 | 40100.40200.40700.53000.55400.58900.61300.336700 | **24th FLOOR** | 109d | 2026-08-27 | 2026-12-13 |  | start no earlier than 2026-08-27 | RGA -FINISHING | 7807992 |
| 3302 | 40100.40200.40700.53000.55400.58900.61300.336700.2674500 | BALCONY RAILING FIXING | 9d | 2026-09-14 | 2026-09-22 | 3295 |  | RGA -FINISHING | 7381555 |
| 3303 | 40100.40200.40700.53000.55400.58900.61300.336700.2674600 | Block work | 8d | 2026-12-06 | 2026-12-13 | 3307 |  | RGA -FINISHING | 7381565 |
| 3304 | 40100.40200.40700.53000.55400.58900.61300.336700.2674700 | CONCEALED ELEC CONDUITING & ITS FINISHING | 5d | 2026-08-27 | 2026-08-31 | 3112FS-7d |  | RGA -FINISHING | 7381575 |
| 3305 | 40100.40200.40700.53000.55400.58900.61300.336700.2674800 | PLASTER APPLICATION | 15d | 2026-10-31 | 2026-11-14 | 3640FS+30d |  | RGA -FINISHING | 7381585 |
| 3306 | 40100.40200.40700.53000.55400.58900.61300.336700.2674900 | CONCEALED PLUMBING | 9d | 2026-11-15 | 2026-11-23 | 3305 |  | RGA -FINISHING | 7381595 |
| 3307 | 40100.40200.40700.53000.55400.58900.61300.336700.2675000 | WATERPROOFING WORK FOR TOILETS, KITCHEN SUNK & PLANTERS | 12d | 2026-11-24 | 2026-12-05 | 3306 |  | RGA -FINISHING | 7381605 |
| 3308 | 40100.40200.40700.53000.55400.58900.61300.336600 | **25thFLOOR** | 110d | 2026-09-04 | 2026-12-22 |  | start no earlier than 2026-09-04 | RGA -FINISHING | 7808002 |
| 3309 | 40100.40200.40700.53000.55400.58900.61300.336600.2675100 | BALCONY RAILING FIXING | 9d | 2026-09-23 | 2026-10-01 | 3302 |  | RGA -FINISHING | 7381615 |
| 3310 | 40100.40200.40700.53000.55400.58900.61300.336600.2675200 | Block work | 8d | 2026-12-15 | 2026-12-22 | 3314 |  | RGA -FINISHING | 7381625 |
| 3311 | 40100.40200.40700.53000.55400.58900.61300.336600.2675300 | CONCEALED ELEC CONDUITING & ITS FINISHING | 5d | 2026-09-04 | 2026-09-08 | 3116FS-7d |  | RGA -FINISHING | 7381635 |
| 3312 | 40100.40200.40700.53000.55400.58900.61300.336600.2675400 | PLASTER APPLICATION | 15d | 2026-11-09 | 2026-11-23 | 3653FS+30d |  | RGA -FINISHING | 7381645 |
| 3313 | 40100.40200.40700.53000.55400.58900.61300.336600.2675500 | CONCEALED PLUMBING | 9d | 2026-11-24 | 2026-12-02 | 3312 |  | RGA -FINISHING | 7381655 |
| 3314 | 40100.40200.40700.53000.55400.58900.61300.336600.2675600 | WATERPROOFING WORK FOR TOILETS, KITCHEN SUNK & PLANTERS | 12d | 2026-12-03 | 2026-12-14 | 3313 |  | RGA -FINISHING | 7857842 |
| 3315 | 40100.40200.40700.53000.55400.58900.61300.370100 | **LMR (To Be Deleted)** | 15d | 2025-04-01 | 2025-04-15 |  | start no earlier than 2025-04-01 | RGA -FINISHING | 7808732 |
| 3316 | 40100.40200.40700.53000.55400.58900.61300.370100.2675700 | Block work | 8d | 2025-04-01 | 2025-04-08 |  | start no earlier than 2025-04-01 | RGA -FINISHING | 7858272 |
| 3317 | 40100.40200.40700.53000.55400.58900.61300.370100.2675800 | CONCEALED ELEC CONDUITING & ITS FINISHING | 7d | 2025-04-01 | 2025-04-07 |  | start no earlier than 2025-04-01 | RGA -FINISHING | 7858282 |
| 3318 | 40100.40200.40700.53000.55400.58900.61300.370100.2675900 | PLASTER APPLICATION | 15d | 2025-04-01 | 2025-04-15 |  | start no earlier than 2025-04-01 | RGA -FINISHING | 7858292 |
| 3319 | 40100.40200.40700.53000.55400.58900.61300.370100.2676000 | DOOR FRAME FIXING | 3d | 2025-04-01 | 2025-04-03 |  | start no earlier than 2025-04-01 | RGA -FINISHING | 7858302 |

Notes:
- 3296: Last floor BW completion 2 months post Last RCC
- 3303: Last floor BW completion 2 months post Last RCC

| ID | WBS | Task | Duration | Start | Finish | Predecessors | Constraint | Calendar | Unique_Task_ID |
| --- | --- | --- | --- | --- | --- | --- | --- | --- | --- |
| 3320 | 40100.40200.40700.53000.55400.58900.506000 | **Terrace Finishing works** | 30d | 2027-05-04 | 2027-06-02 |  | start no earlier than 2027-05-04 | RGA -FINISHING | 7432055 |
| 3321 | 40100.40200.40700.53000.55400.58900.506000.2247100 | Terrace Waterproofing work | 30d | 2027-05-04 | 2027-06-02 | 3323FS+7d |  | RGA -FINISHING | 7432075 |
| 3322 | 40100.40200.40700.53000.55400.58900.506100 | **EXTERNAL Painting** | 165d | 2026-11-13 | 2027-04-26 |  | start no earlier than 2026-11-13 | RGA -FINISHING | 7432065 |
| 3323 | 40100.40200.40700.53000.55400.58900.506100.2247200 | 2nd coat | 165d | 2026-11-13 | 2027-04-26 | 3120FS+51d |  | RGA -FINISHING | 7432085 |
| 3324 | 40100.40200.40700.53000.55400.57600 | **Flat internal finishing & services works** | 458d | 2026-01-02 | 2027-04-04 |  | start no earlier than 2026-01-02 | RGA -FINISHING | 7803402 |
| 3325 | 40100.40200.40700.53000.55400.57600.87000 | **GROUND FLOOR** | 387d | 2026-01-02 | 2027-01-23 |  | start no earlier than 2026-01-02 | RGA -FINISHING | 7805162 |
| 3326 | 40100.40200.40700.53000.55400.57600.87000.2247300 | TOILET DADO TILE FIXING | 10d | 2026-03-07 | 2026-03-16 | 3136FS+120d |  | RGA -FINISHING | 7837182 |
| 3327 | 40100.40200.40700.53000.55400.57600.87000.2247400 | TOILET FLOORING WORK | 7d | 2026-03-17 | 2026-03-23 | 3326 |  | RGA -FINISHING | 7861182 |
| 3328 | 40100.40200.40700.53000.55400.57600.87000.2247500 | FIRE FIGHTING | 15d | 2026-01-02 | 2026-01-16 | 3134 |  | RGA -FINISHING | 7837192 |
| 3329 | 40100.40200.40700.53000.55400.57600.87000.2247600 | INTERNAL PAINTING - PUTTY / PRIMER APPLICATION | 15d | 2026-04-16 | 2026-04-30 | 3331 |  | RGA -FINISHING | 7837202 |
| 3330 | 40100.40200.40700.53000.55400.57600.87000.2247700 | FLAT FLOORING | 11d | 2026-03-24 | 2026-04-03 | 3327 |  | RGA -FINISHING | 7837212 |
| 3331 | 40100.40200.40700.53000.55400.57600.87000.2247800 | WINDOW FIXING | 12d | 2026-04-04 | 2026-04-15 | 3330 |  | RGA -FINISHING | 7837222 |
| 3332 | 40100.40200.40700.53000.55400.57600.87000.2247900 | INTERNAL PAINTING - 1ST COAT | 12d | 2026-05-01 | 2026-05-12 | 3329 |  | RGA -FINISHING | 7837232 |
| 3333 | 40100.40200.40700.53000.55400.57600.87000.2248000 | INTERNAL DOOR FIXING | 15d | 2026-05-13 | 2026-05-27 | 3332 |  | RGA -FINISHING | 7837242 |
| 3334 | 40100.40200.40700.53000.55400.57600.87000.2248100 | WIRING & SWITCH PLATE FIXING | 8d | 2026-05-28 | 2026-06-04 | 3333 |  | RGA -FINISHING | 7837252 |
| 3335 | 40100.40200.40700.53000.55400.57600.87000.2248200 | TOILET FALSE CEILING | 7d | 2026-06-05 | 2026-06-11 | 3334 |  | RGA -FINISHING | 7837262 |
| 3336 | 40100.40200.40700.53000.55400.57600.87000.2248300 | MAIN DOOR FRAME SHUTTER FIXING | 6d | 2027-01-10 | 2027-01-15 | 3668 |  | RGA -FINISHING | 7837272 |
| 3337 | 40100.40200.40700.53000.55400.57600.87000.2248400 | FINAL COAT PAINT | 8d | 2027-01-16 | 2027-01-23 | 3336 |  | RGA -FINISHING | 7837282 |
| 3338 | 40100.40200.40700.53000.55400.57600.86900 | **1ST FLOOR** | 347d | 2026-01-23 | 2027-01-04 |  | start no earlier than 2026-01-23 | RGA -FINISHING | 7805152 |
| 3339 | 40100.40200.40700.53000.55400.57600.86900.2248500 | TOILET DADO TILE FIXING | 7d | 2026-03-30 | 2026-04-05 | 3142 |  | RGA -FINISHING | 7837292 |
| 3340 | 40100.40200.40700.53000.55400.57600.86900.2248600 | TOILET FLOORING WORK | 7d | 2026-04-06 | 2026-04-12 | 3339 |  | RGA -FINISHING | 7837302 |
| 3341 | 40100.40200.40700.53000.55400.57600.86900.2248700 | FIRE FIGHTING | 6d | 2026-01-23 | 2026-01-28 | 3141 |  | RGA -FINISHING | 7837312 |
| 3342 | 40100.40200.40700.53000.55400.57600.86900.2248800 | INTERNAL PAINTING - PUTTY / PRIMER APPLICATION | 6d | 2026-04-30 | 2026-05-05 | 3344 |  | RGA -FINISHING | 7837322 |
| 3343 | 40100.40200.40700.53000.55400.57600.86900.2248900 | FLAT FLOORING | 5d | 2026-04-13 | 2026-04-17 | 3340 |  | RGA -FINISHING | 7837332 |
| 3344 | 40100.40200.40700.53000.55400.57600.86900.2249000 | WINDOW FIXING | 12d | 2026-04-18 | 2026-04-29 | 3343 |  | RGA -FINISHING | 7837342 |
| 3345 | 40100.40200.40700.53000.55400.57600.86900.2249100 | INTERNAL PAINTING - 1ST COAT | 12d | 2026-05-06 | 2026-05-17 | 3342 |  | RGA -FINISHING | 7837352 |
| 3346 | 40100.40200.40700.53000.55400.57600.86900.2249200 | INTERNAL DOOR FIXING | 15d | 2026-05-18 | 2026-06-01 | 3345 |  | RGA -FINISHING | 7837362 |
| 3347 | 40100.40200.40700.53000.55400.57600.86900.2249300 | WIRING & SWITCH PLATE FIXING | 8d | 2026-06-02 | 2026-06-09 | 3346 |  | RGA -FINISHING | 7837372 |
| 3348 | 40100.40200.40700.53000.55400.57600.86900.2249400 | TOILET FALSE CEILING | 7d | 2026-06-10 | 2026-06-16 | 3347 |  | RGA -FINISHING | 7837382 |
| 3349 | 40100.40200.40700.53000.55400.57600.86900.2249500 | MAIN DOOR FRAME SHUTTER FIXING | 6d | 2026-12-22 | 2026-12-27 | 3676 |  | RGA -FINISHING | 7837392 |
| 3350 | 40100.40200.40700.53000.55400.57600.86900.2249600 | FINAL COAT PAINT | 8d | 2026-12-28 | 2027-01-04 | 3349 |  | RGA -FINISHING | 7837402 |

Notes:
- 3322: Ext Plaster (in 2 phases) completion 3.5 months post last BW
- 3324: Completion in 12 months post last RCC

| ID | WBS | Task | Duration | Start | Finish | Predecessors | Constraint | Calendar | Unique_Task_ID |
| --- | --- | --- | --- | --- | --- | --- | --- | --- | --- |
| 3351 | 40100.40200.40700.53000.55400.57600.86800 | **2ND FLOOR** | 331d | 2026-02-08 | 2027-01-04 |  | start no earlier than 2026-02-08 | RGA -FINISHING | 7805142 |
| 3352 | 40100.40200.40700.53000.55400.57600.86800.2249700 | TOILET DADO TILE FIXING | 7d | 2026-04-05 | 2026-04-11 | 3149 |  | RGA -FINISHING | 7837412 |
| 3353 | 40100.40200.40700.53000.55400.57600.86800.2249800 | TOILET FLOORING WORK | 7d | 2026-04-12 | 2026-04-18 | 3352 |  | RGA -FINISHING | 7837422 |
| 3354 | 40100.40200.40700.53000.55400.57600.86800.2249900 | FIRE FIGHTING | 6d | 2026-02-08 | 2026-02-13 | 3148 |  | RGA -FINISHING | 7837432 |
| 3355 | 40100.40200.40700.53000.55400.57600.86800.2250000 | INTERNAL PAINTING - PUTTY / PRIMER APPLICATION | 6d | 2026-05-06 | 2026-05-11 | 3357 |  | RGA -FINISHING | 7837442 |
| 3356 | 40100.40200.40700.53000.55400.57600.86800.2250100 | FLAT FLOORING | 5d | 2026-04-19 | 2026-04-23 | 3353 |  | RGA -FINISHING | 7837452 |
| 3357 | 40100.40200.40700.53000.55400.57600.86800.2250200 | WINDOW FIXING | 12d | 2026-04-24 | 2026-05-05 | 3356 |  | RGA -FINISHING | 7837462 |
| 3358 | 40100.40200.40700.53000.55400.57600.86800.2250300 | INTERNAL PAINTING - 1ST COAT | 12d | 2026-05-12 | 2026-05-23 | 3355 |  | RGA -FINISHING | 7837472 |
| 3359 | 40100.40200.40700.53000.55400.57600.86800.2250400 | INTERNAL DOOR FIXING | 15d | 2026-05-22 | 2026-06-05 | 3358FS-2d |  | RGA -FINISHING | 7837482 |
| 3360 | 40100.40200.40700.53000.55400.57600.86800.2250500 | WIRING & SWITCH PLATE FIXING | 8d | 2026-06-02 | 2026-06-09 | 3359FS-4d |  | RGA -FINISHING | 7837492 |
| 3361 | 40100.40200.40700.53000.55400.57600.86800.2250600 | TOILET FALSE CEILING | 7d | 2026-06-10 | 2026-06-16 | 3360 |  | RGA -FINISHING | 7837502 |
| 3362 | 40100.40200.40700.53000.55400.57600.86800.2250700 | MAIN DOOR FRAME SHUTTER FIXING | 6d | 2026-12-22 | 2026-12-27 | 3684 |  | RGA -FINISHING | 7837512 |
| 3363 | 40100.40200.40700.53000.55400.57600.86800.2250800 | FINAL COAT PAINT | 8d | 2026-12-28 | 2027-01-04 | 3362 |  | RGA -FINISHING | 7837522 |
| 3364 | 40100.40200.40700.53000.55400.57600.86700 | **3RD FLOOR** | 317d | 2026-03-04 | 2027-01-14 |  | start no earlier than 2026-03-04 | RGA -FINISHING | 7805132 |
| 3365 | 40100.40200.40700.53000.55400.57600.86700.2250900 | TOILET DADO TILE FIXING | 7d | 2026-04-12 | 2026-04-18 | 3156 |  | RGA -FINISHING | 7837532 |
| 3366 | 40100.40200.40700.53000.55400.57600.86700.2251000 | TOILET FLOORING WORK | 7d | 2026-04-19 | 2026-04-25 | 3365 |  | RGA -FINISHING | 7837542 |
| 3367 | 40100.40200.40700.53000.55400.57600.86700.2251100 | FIRE FIGHTING | 6d | 2026-03-04 | 2026-03-09 | 3155 |  | RGA -FINISHING | 7837552 |
| 3368 | 40100.40200.40700.53000.55400.57600.86700.2251200 | INTERNAL PAINTING - PUTTY / PRIMER APPLICATION | 6d | 2026-05-08 | 2026-05-13 | 3370 |  | RGA -FINISHING | 7837562 |
| 3369 | 40100.40200.40700.53000.55400.57600.86700.2251300 | FLAT FLOORING | 5d | 2026-04-26 | 2026-04-30 | 3366 |  | RGA -FINISHING | 7837572 |
| 3370 | 40100.40200.40700.53000.55400.57600.86700.2251400 | WINDOW FIXING | 7d | 2026-05-01 | 2026-05-07 | 3369 |  | RGA -FINISHING | 7837582 |
| 3371 | 40100.40200.40700.53000.55400.57600.86700.2251500 | INTERNAL PAINTING - 1ST COAT | 7d | 2026-05-14 | 2026-05-20 | 3368 |  | RGA -FINISHING | 7837592 |
| 3372 | 40100.40200.40700.53000.55400.57600.86700.2251600 | INTERNAL DOOR FIXING | 15d | 2026-05-19 | 2026-06-02 | 3371FS-2d |  | RGA -FINISHING | 7837602 |
| 3373 | 40100.40200.40700.53000.55400.57600.86700.2251700 | WIRING & SWITCH PLATE FIXING | 8d | 2026-05-30 | 2026-06-06 | 3372FS-4d |  | RGA -FINISHING | 7837612 |
| 3374 | 40100.40200.40700.53000.55400.57600.86700.2251800 | TOILET FALSE CEILING | 7d | 2026-06-07 | 2026-06-13 | 3373 |  | RGA -FINISHING | 7837622 |
| 3375 | 40100.40200.40700.53000.55400.57600.86700.2251900 | MAIN DOOR FRAME SHUTTER FIXING | 6d | 2027-01-01 | 2027-01-06 | 3692 |  | RGA -FINISHING | 7837632 |
| 3376 | 40100.40200.40700.53000.55400.57600.86700.2252000 | FINAL COAT PAINT | 8d | 2027-01-07 | 2027-01-14 | 3375 |  | RGA -FINISHING | 7837642 |

| ID | WBS | Task | Duration | Start | Finish | Predecessors | Constraint | Calendar | Unique_Task_ID |
| --- | --- | --- | --- | --- | --- | --- | --- | --- | --- |
| 3377 | 40100.40200.40700.53000.55400.57600.86600 | **4TH FLOOR** | 308d | 2026-03-13 | 2027-01-14 |  | start no earlier than 2026-03-13 | RGA -FINISHING | 7805122 |
| 3378 | 40100.40200.40700.53000.55400.57600.86600.2252100 | TOILET DADO TILE FIXING | 7d | 2026-04-18 | 2026-04-24 | 3163 |  | RGA -FINISHING | 7837652 |
| 3379 | 40100.40200.40700.53000.55400.57600.86600.2252200 | TOILET FLOORING WORK | 7d | 2026-04-25 | 2026-05-01 | 3378 |  | RGA -FINISHING | 7837662 |
| 3380 | 40100.40200.40700.53000.55400.57600.86600.2252300 | FIRE FIGHTING | 6d | 2026-03-13 | 2026-03-18 | 3162 |  | RGA -FINISHING | 7837672 |
| 3381 | 40100.40200.40700.53000.55400.57600.86600.2252400 | INTERNAL PAINTING - PUTTY / PRIMER APPLICATION | 6d | 2026-05-14 | 2026-05-19 | 3383 |  | RGA -FINISHING | 7837682 |
| 3382 | 40100.40200.40700.53000.55400.57600.86600.2252500 | FLAT FLOORING | 5d | 2026-05-02 | 2026-05-06 | 3379 |  | RGA -FINISHING | 7837692 |
| 3383 | 40100.40200.40700.53000.55400.57600.86600.2252600 | WINDOW FIXING | 7d | 2026-05-07 | 2026-05-13 | 3382 |  | RGA -FINISHING | 7837702 |
| 3384 | 40100.40200.40700.53000.55400.57600.86600.2252700 | INTERNAL PAINTING - 1ST COAT | 7d | 2026-05-20 | 2026-05-26 | 3381 |  | RGA -FINISHING | 7837712 |
| 3385 | 40100.40200.40700.53000.55400.57600.86600.2252800 | INTERNAL DOOR FIXING | 15d | 2026-05-25 | 2026-06-08 | 3384FS-2d |  | RGA -FINISHING | 7837722 |
| 3386 | 40100.40200.40700.53000.55400.57600.86600.2252900 | WIRING & SWITCH PLATE FIXING | 8d | 2026-06-05 | 2026-06-12 | 3385FS-4d |  | RGA -FINISHING | 7837732 |
| 3387 | 40100.40200.40700.53000.55400.57600.86600.2253000 | TOILET FALSE CEILING | 7d | 2026-06-13 | 2026-06-19 | 3386 |  | RGA -FINISHING | 7837742 |
| 3388 | 40100.40200.40700.53000.55400.57600.86600.2253100 | MAIN DOOR FRAME SHUTTER FIXING | 6d | 2027-01-01 | 2027-01-06 | 3700 |  | RGA -FINISHING | 7837752 |
| 3389 | 40100.40200.40700.53000.55400.57600.86600.2253200 | FINAL COAT PAINT | 8d | 2027-01-07 | 2027-01-14 | 3388 |  | RGA -FINISHING | 7837762 |
| 3390 | 40100.40200.40700.53000.55400.57600.86500 | **5TH FLOOR** | 299d | 2026-03-22 | 2027-01-14 |  | start no earlier than 2026-03-22 | RGA -FINISHING | 7805112 |
| 3391 | 40100.40200.40700.53000.55400.57600.86500.2253300 | TOILET DADO TILE FIXING | 7d | 2026-04-27 | 2026-05-03 | 3170 |  | RGA -FINISHING | 7837772 |
| 3392 | 40100.40200.40700.53000.55400.57600.86500.2253400 | TOILET FLOORING WORK | 7d | 2026-05-04 | 2026-05-10 | 3391 |  | RGA -FINISHING | 7837782 |
| 3393 | 40100.40200.40700.53000.55400.57600.86500.2253500 | FIRE FIGHTING | 6d | 2026-03-22 | 2026-03-27 | 3169 |  | RGA -FINISHING | 7837792 |
| 3394 | 40100.40200.40700.53000.55400.57600.86500.2253600 | INTERNAL PAINTING - PUTTY / PRIMER APPLICATION | 6d | 2026-05-23 | 2026-05-28 | 3396 |  | RGA -FINISHING | 7837802 |
| 3395 | 40100.40200.40700.53000.55400.57600.86500.2253700 | FLAT FLOORING | 5d | 2026-05-11 | 2026-05-15 | 3392 |  | RGA -FINISHING | 7837812 |
| 3396 | 40100.40200.40700.53000.55400.57600.86500.2253800 | WINDOW FIXING | 7d | 2026-05-16 | 2026-05-22 | 3395 |  | RGA -FINISHING | 7837822 |
| 3397 | 40100.40200.40700.53000.55400.57600.86500.2253900 | INTERNAL PAINTING - 1ST COAT | 7d | 2026-05-29 | 2026-06-04 | 3394 |  | RGA -FINISHING | 7837832 |
| 3398 | 40100.40200.40700.53000.55400.57600.86500.2254000 | INTERNAL DOOR FIXING | 15d | 2026-06-03 | 2026-06-17 | 3397FS-2d |  | RGA -FINISHING | 7837842 |
| 3399 | 40100.40200.40700.53000.55400.57600.86500.2254100 | WIRING & SWITCH PLATE FIXING | 8d | 2026-06-14 | 2026-06-21 | 3398FS-4d |  | RGA -FINISHING | 7837852 |
| 3400 | 40100.40200.40700.53000.55400.57600.86500.2254200 | TOILET FALSE CEILING | 7d | 2026-06-22 | 2026-06-28 | 3399 |  | RGA -FINISHING | 7837862 |
| 3401 | 40100.40200.40700.53000.55400.57600.86500.2254300 | MAIN DOOR FRAME SHUTTER FIXING | 6d | 2027-01-01 | 2027-01-06 | 3708 |  | RGA -FINISHING | 7837872 |
| 3402 | 40100.40200.40700.53000.55400.57600.86500.2254400 | FINAL COAT PAINT | 8d | 2027-01-07 | 2027-01-14 | 3401 |  | RGA -FINISHING | 7837882 |

| ID | WBS | Task | Duration | Start | Finish | Predecessors | Constraint | Calendar | Unique_Task_ID |
| --- | --- | --- | --- | --- | --- | --- | --- | --- | --- |
| 3403 | 40100.40200.40700.53000.55400.57600.86400 | **6TH FLOOR** | 300d | 2026-03-31 | 2027-01-24 |  | start no earlier than 2026-03-31 | RGA -FINISHING | 7805102 |
| 3404 | 40100.40200.40700.53000.55400.57600.86400.2254500 | TOILET DADO TILE FIXING | 7d | 2026-05-11 | 2026-05-17 | 3177 |  | RGA -FINISHING | 7837892 |
| 3405 | 40100.40200.40700.53000.55400.57600.86400.2254600 | TOILET FLOORING WORK | 7d | 2026-05-11 | 2026-05-17 | 3404FF |  | RGA -FINISHING | 7837902 |
| 3406 | 40100.40200.40700.53000.55400.57600.86400.2254700 | FIRE FIGHTING | 6d | 2026-03-31 | 2026-04-05 | 3176 |  | RGA -FINISHING | 7837912 |
| 3407 | 40100.40200.40700.53000.55400.57600.86400.2254800 | INTERNAL PAINTING - PUTTY / PRIMER APPLICATION | 6d | 2026-06-04 | 2026-06-09 | 3409 |  | RGA -FINISHING | 7837922 |
| 3408 | 40100.40200.40700.53000.55400.57600.86400.2254900 | FLAT FLOORING | 5d | 2026-05-18 | 2026-05-22 | 3405 |  | RGA -FINISHING | 7837932 |
| 3409 | 40100.40200.40700.53000.55400.57600.86400.2255000 | WINDOW FIXING | 12d | 2026-05-23 | 2026-06-03 | 3408 |  | RGA -FINISHING | 7837942 |
| 3410 | 40100.40200.40700.53000.55400.57600.86400.2255100 | INTERNAL PAINTING - 1ST COAT | 12d | 2026-06-10 | 2026-06-21 | 3407 |  | RGA -FINISHING | 7837952 |
| 3411 | 40100.40200.40700.53000.55400.57600.86400.2255200 | INTERNAL DOOR FIXING | 15d | 2026-06-20 | 2026-07-04 | 3410FS-2d |  | RGA -FINISHING | 7837962 |
| 3412 | 40100.40200.40700.53000.55400.57600.86400.2255300 | WIRING & SWITCH PLATE FIXING | 8d | 2026-07-01 | 2026-07-08 | 3411FS-4d |  | RGA -FINISHING | 7837972 |
| 3413 | 40100.40200.40700.53000.55400.57600.86400.2255400 | TOILET FALSE CEILING | 7d | 2026-07-09 | 2026-07-15 | 3412 |  | RGA -FINISHING | 7837982 |
| 3414 | 40100.40200.40700.53000.55400.57600.86400.2255500 | MAIN DOOR FRAME SHUTTER FIXING | 6d | 2027-01-11 | 2027-01-16 | 3716 |  | RGA -FINISHING | 7837992 |
| 3415 | 40100.40200.40700.53000.55400.57600.86400.2255600 | FINAL COAT PAINT | 8d | 2027-01-17 | 2027-01-24 | 3414 |  | RGA -FINISHING | 7838002 |
| 3416 | 40100.40200.40700.53000.55400.57600.86300 | **7TH FLOOR** | 291d | 2026-04-09 | 2027-01-24 |  | start no earlier than 2026-04-09 | RGA -FINISHING | 7805092 |
| 3417 | 40100.40200.40700.53000.55400.57600.86300.2255700 | TOILET DADO TILE FIXING | 7d | 2026-05-20 | 2026-05-26 | 3184 |  | RGA -FINISHING | 7838012 |
| 3418 | 40100.40200.40700.53000.55400.57600.86300.2255800 | TOILET FLOORING WORK | 7d | 2026-05-27 | 2026-06-02 | 3417 |  | RGA -FINISHING | 7838022 |
| 3419 | 40100.40200.40700.53000.55400.57600.86300.2255900 | FIRE FIGHTING | 6d | 2026-04-09 | 2026-04-14 | 3183 |  | RGA -FINISHING | 7838032 |
| 3420 | 40100.40200.40700.53000.55400.57600.86300.2256000 | INTERNAL PAINTING - PUTTY / PRIMER APPLICATION | 6d | 2026-06-20 | 2026-06-25 | 3422 |  | RGA -FINISHING | 7838042 |
| 3421 | 40100.40200.40700.53000.55400.57600.86300.2256100 | FLAT FLOORING | 5d | 2026-06-03 | 2026-06-07 | 3418 |  | RGA -FINISHING | 7838052 |
| 3422 | 40100.40200.40700.53000.55400.57600.86300.2256200 | WINDOW FIXING | 12d | 2026-06-08 | 2026-06-19 | 3421 |  | RGA -FINISHING | 7838062 |
| 3423 | 40100.40200.40700.53000.55400.57600.86300.2256300 | INTERNAL PAINTING - 1ST COAT | 5d | 2026-06-26 | 2026-06-30 | 3420 |  | RGA -FINISHING | 7838072 |
| 3424 | 40100.40200.40700.53000.55400.57600.86300.2256400 | INTERNAL DOOR FIXING | 15d | 2026-06-29 | 2026-07-13 | 3423FS-2d |  | RGA -FINISHING | 7838082 |
| 3425 | 40100.40200.40700.53000.55400.57600.86300.2256500 | WIRING & SWITCH PLATE FIXING | 8d | 2026-07-10 | 2026-07-17 | 3424FS-4d |  | RGA -FINISHING | 7838092 |
| 3426 | 40100.40200.40700.53000.55400.57600.86300.2256600 | TOILET FALSE CEILING | 7d | 2026-07-18 | 2026-07-24 | 3425 |  | RGA -FINISHING | 7838102 |
| 3427 | 40100.40200.40700.53000.55400.57600.86300.2256700 | MAIN DOOR FRAME SHUTTER FIXING | 6d | 2027-01-11 | 2027-01-16 | 3724 |  | RGA -FINISHING | 7838112 |
| 3428 | 40100.40200.40700.53000.55400.57600.86300.2256800 | FINAL COAT PAINT | 8d | 2027-01-17 | 2027-01-24 | 3427 |  | RGA -FINISHING | 7838122 |

| ID | WBS | Task | Duration | Start | Finish | Predecessors | Constraint | Calendar | Unique_Task_ID |
| --- | --- | --- | --- | --- | --- | --- | --- | --- | --- |
| 3429 | 40100.40200.40700.53000.55400.57600.86200 | **8TH FLOOR** | 282d | 2026-04-18 | 2027-01-24 |  | start no earlier than 2026-04-18 | RGA -FINISHING | 7805082 |
| 3430 | 40100.40200.40700.53000.55400.57600.86200.2256900 | TOILET DADO TILE FIXING | 7d | 2026-05-29 | 2026-06-04 | 3191 |  | RGA -FINISHING | 7838132 |
| 3431 | 40100.40200.40700.53000.55400.57600.86200.2257000 | TOILET FLOORING WORK | 7d | 2026-06-05 | 2026-06-11 | 3430 |  | RGA -FINISHING | 7838142 |
| 3432 | 40100.40200.40700.53000.55400.57600.86200.2257100 | FIRE FIGHTING | 6d | 2026-04-18 | 2026-04-23 | 3190 |  | RGA -FINISHING | 7838152 |
| 3433 | 40100.40200.40700.53000.55400.57600.86200.2257200 | INTERNAL PAINTING - PUTTY / PRIMER APPLICATION | 6d | 2026-06-29 | 2026-07-04 | 3435 |  | RGA -FINISHING | 7838162 |
| 3434 | 40100.40200.40700.53000.55400.57600.86200.2257300 | FLAT FLOORING | 5d | 2026-06-12 | 2026-06-16 | 3431 |  | RGA -FINISHING | 7838172 |
| 3435 | 40100.40200.40700.53000.55400.57600.86200.2257400 | WINDOW FIXING | 12d | 2026-06-17 | 2026-06-28 | 3434 |  | RGA -FINISHING | 7838182 |
| 3436 | 40100.40200.40700.53000.55400.57600.86200.2257500 | INTERNAL PAINTING - 1ST COAT | 10d | 2026-07-05 | 2026-07-14 | 3433 |  | RGA -FINISHING | 7838192 |
| 3437 | 40100.40200.40700.53000.55400.57600.86200.2257600 | INTERNAL DOOR FIXING | 15d | 2026-07-13 | 2026-07-27 | 3436FS-2d |  | RGA -FINISHING | 7838202 |
| 3438 | 40100.40200.40700.53000.55400.57600.86200.2257700 | WIRING & SWITCH PLATE FIXING | 8d | 2026-07-24 | 2026-07-31 | 3437FS-4d |  | RGA -FINISHING | 7374775 |
| 3439 | 40100.40200.40700.53000.55400.57600.86200.2257800 | TOILET FALSE CEILING | 7d | 2026-08-01 | 2026-08-07 | 3438 |  | RGA -FINISHING | 7838212 |
| 3440 | 40100.40200.40700.53000.55400.57600.86200.2257900 | MAIN DOOR FRAME SHUTTER FIXING | 6d | 2027-01-11 | 2027-01-16 | 3732 |  | RGA -FINISHING | 7838222 |
| 3441 | 40100.40200.40700.53000.55400.57600.86200.2258000 | FINAL COAT PAINT | 8d | 2027-01-17 | 2027-01-24 | 3440 |  | RGA -FINISHING | 7838232 |
| 3442 | 40100.40200.40700.53000.55400.57600.86100 | **9TH FLOOR** | 277d | 2026-04-27 | 2027-01-28 |  | start no earlier than 2026-04-27 | RGA -FINISHING | 7805072 |
| 3443 | 40100.40200.40700.53000.55400.57600.86100.2258100 | TOILET DADO TILE FIXING | 7d | 2026-06-02 | 2026-06-08 | 3198 |  | RGA -FINISHING | 7838242 |
| 3444 | 40100.40200.40700.53000.55400.57600.86100.2258200 | TOILET FLOORING WORK | 7d | 2026-06-09 | 2026-06-15 | 3443 |  | RGA -FINISHING | 7838252 |
| 3445 | 40100.40200.40700.53000.55400.57600.86100.2258300 | FIRE FIGHTING | 6d | 2026-04-27 | 2026-05-02 | 3197 |  | RGA -FINISHING | 7838262 |
| 3446 | 40100.40200.40700.53000.55400.57600.86100.2258400 | INTERNAL PAINTING - PUTTY / PRIMER APPLICATION | 6d | 2026-07-03 | 2026-07-08 | 3448 |  | RGA -FINISHING | 7838272 |
| 3447 | 40100.40200.40700.53000.55400.57600.86100.2258500 | FLAT FLOORING | 5d | 2026-06-16 | 2026-06-20 | 3444 |  | RGA -FINISHING | 7838282 |
| 3448 | 40100.40200.40700.53000.55400.57600.86100.2258600 | WINDOW FIXING | 12d | 2026-06-21 | 2026-07-02 | 3447 |  | RGA -FINISHING | 7838292 |
| 3449 | 40100.40200.40700.53000.55400.57600.86100.2258700 | INTERNAL PAINTING - 1ST COAT | 2d | 2026-07-09 | 2026-07-10 | 3446 |  | RGA -FINISHING | 7838302 |
| 3450 | 40100.40200.40700.53000.55400.57600.86100.2258800 | INTERNAL DOOR FIXING | 15d | 2026-07-09 | 2026-07-23 | 3449FS-2d |  | RGA -FINISHING | 7838312 |
| 3451 | 40100.40200.40700.53000.55400.57600.86100.2258900 | WIRING & SWITCH PLATE FIXING | 8d | 2026-07-20 | 2026-07-27 | 3450FS-4d |  | RGA -FINISHING | 7838322 |
| 3452 | 40100.40200.40700.53000.55400.57600.86100.2259000 | TOILET FALSE CEILING | 7d | 2026-07-28 | 2026-08-03 | 3451 |  | RGA -FINISHING | 7838332 |
| 3453 | 40100.40200.40700.53000.55400.57600.86100.2259100 | MAIN DOOR FRAME SHUTTER FIXING | 6d | 2027-01-11 | 2027-01-16 | 3740 |  | RGA -FINISHING | 7838342 |
| 3454 | 40100.40200.40700.53000.55400.57600.86100.2259200 | FINAL COAT PAINT | 8d | 2027-01-21 | 2027-01-28 | 3453FS+4d |  | RGA -FINISHING | 7838352 |

| ID | WBS | Task | Duration | Start | Finish | Predecessors | Constraint | Calendar | Unique_Task_ID |
| --- | --- | --- | --- | --- | --- | --- | --- | --- | --- |
| 3455 | 40100.40200.40700.53000.55400.57600.86000 | **10TH FLOOR** | 274d | 2026-05-06 | 2027-02-03 |  | start no earlier than 2026-05-06 | RGA -FINISHING | 7805062 |
| 3456 | 40100.40200.40700.53000.55400.57600.86000.2259300 | TOILET DADO TILE FIXING | 7d | 2026-06-11 | 2026-06-17 | 3205 |  | RGA -FINISHING | 7838362 |
| 3457 | 40100.40200.40700.53000.55400.57600.86000.2259400 | TOILET FLOORING WORK | 7d | 2026-06-18 | 2026-06-24 | 3456 |  | RGA -FINISHING | 7838372 |
| 3458 | 40100.40200.40700.53000.55400.57600.86000.2259500 | FIRE FIGHTING | 6d | 2026-05-06 | 2026-05-11 | 3204 |  | RGA -FINISHING | 7838382 |
| 3459 | 40100.40200.40700.53000.55400.57600.86000.2259600 | INTERNAL PAINTING - PUTTY / PRIMER APPLICATION | 6d | 2026-07-12 | 2026-07-17 | 3461 |  | RGA -FINISHING | 7838392 |
| 3460 | 40100.40200.40700.53000.55400.57600.86000.2259700 | FLAT FLOORING | 5d | 2026-06-25 | 2026-06-29 | 3457 |  | RGA -FINISHING | 7838402 |
| 3461 | 40100.40200.40700.53000.55400.57600.86000.2259800 | WINDOW FIXING | 12d | 2026-06-30 | 2026-07-11 | 3460 |  | RGA -FINISHING | 7838412 |
| 3462 | 40100.40200.40700.53000.55400.57600.86000.2259900 | INTERNAL PAINTING - 1ST COAT | 12d | 2026-07-18 | 2026-07-29 | 3459 |  | RGA -FINISHING | 7838422 |
| 3463 | 40100.40200.40700.53000.55400.57600.86000.2260000 | INTERNAL DOOR FIXING | 15d | 2026-07-28 | 2026-08-11 | 3462FS-2d |  | RGA -FINISHING | 7838432 |
| 3464 | 40100.40200.40700.53000.55400.57600.86000.2260100 | WIRING & SWITCH PLATE FIXING | 8d | 2026-08-08 | 2026-08-15 | 3463FS-4d |  | RGA -FINISHING | 7838442 |
| 3465 | 40100.40200.40700.53000.55400.57600.86000.2260200 | TOILET FALSE CEILING | 7d | 2026-08-16 | 2026-08-22 | 3464 |  | RGA -FINISHING | 7838452 |
| 3466 | 40100.40200.40700.53000.55400.57600.86000.2260300 | MAIN DOOR FRAME SHUTTER FIXING | 6d | 2027-01-21 | 2027-01-26 | 3748 |  | RGA -FINISHING | 7838462 |
| 3467 | 40100.40200.40700.53000.55400.57600.86000.2260400 | FINAL COAT PAINT | 8d | 2027-01-27 | 2027-02-03 | 3466 |  | RGA -FINISHING | 7838472 |
| 3468 | 40100.40200.40700.53000.55400.57600.85900 | **11TH FLOOR** | 264d | 2026-05-16 | 2027-02-03 |  | start no earlier than 2026-05-16 | RGA -FINISHING | 7805052 |
| 3469 | 40100.40200.40700.53000.55400.57600.85900.2260500 | TOILET DADO TILE FIXING | 7d | 2026-06-21 | 2026-06-27 | 3212 |  | RGA -FINISHING | 7838482 |
| 3470 | 40100.40200.40700.53000.55400.57600.85900.2260600 | TOILET FLOORING WORK | 7d | 2026-06-28 | 2026-07-04 | 3469 |  | RGA -FINISHING | 7838492 |
| 3471 | 40100.40200.40700.53000.55400.57600.85900.2260700 | FIRE FIGHTING | 6d | 2026-05-16 | 2026-05-21 | 3211 |  | RGA -FINISHING | 7838502 |
| 3472 | 40100.40200.40700.53000.55400.57600.85900.2260800 | INTERNAL PAINTING - PUTTY / PRIMER APPLICATION | 6d | 2026-07-22 | 2026-07-27 | 3474 |  | RGA -FINISHING | 7838512 |
| 3473 | 40100.40200.40700.53000.55400.57600.85900.2260900 | FLAT FLOORING | 5d | 2026-07-05 | 2026-07-09 | 3470 |  | RGA -FINISHING | 7838522 |
| 3474 | 40100.40200.40700.53000.55400.57600.85900.2261000 | WINDOW FIXING | 12d | 2026-07-10 | 2026-07-21 | 3473 |  | RGA -FINISHING | 7838532 |
| 3475 | 40100.40200.40700.53000.55400.57600.85900.2261100 | INTERNAL PAINTING - 1ST COAT | 12d | 2026-07-28 | 2026-08-08 | 3472 |  | RGA -FINISHING | 7838542 |
| 3476 | 40100.40200.40700.53000.55400.57600.85900.2261200 | INTERNAL DOOR FIXING | 15d | 2026-08-07 | 2026-08-21 | 3475FS-2d |  | RGA -FINISHING | 7838552 |
| 3477 | 40100.40200.40700.53000.55400.57600.85900.2261300 | WIRING & SWITCH PLATE FIXING | 8d | 2026-08-18 | 2026-08-25 | 3476FS-4d |  | RGA -FINISHING | 7838562 |
| 3478 | 40100.40200.40700.53000.55400.57600.85900.2261400 | TOILET FALSE CEILING | 7d | 2026-08-26 | 2026-09-01 | 3477 |  | RGA -FINISHING | 7838572 |
| 3479 | 40100.40200.40700.53000.55400.57600.85900.2261500 | MAIN DOOR FRAME SHUTTER FIXING | 6d | 2027-01-21 | 2027-01-26 | 3756 |  | RGA -FINISHING | 7838582 |
| 3480 | 40100.40200.40700.53000.55400.57600.85900.2261600 | FINAL COAT PAINT | 8d | 2027-01-27 | 2027-02-03 | 3479 |  | RGA -FINISHING | 7838592 |

| ID | WBS | Task | Duration | Start | Finish | Predecessors | Constraint | Calendar | Unique_Task_ID |
| --- | --- | --- | --- | --- | --- | --- | --- | --- | --- |
| 3481 | 40100.40200.40700.53000.55400.57600.85800 | **12TH FLOOR** | 252d | 2026-05-28 | 2027-02-03 |  | start no earlier than 2026-05-28 | RGA -FINISHING | 7805042 |
| 3482 | 40100.40200.40700.53000.55400.57600.85800.2261700 | TOILET DADO TILE FIXING | 7d | 2026-06-25 | 2026-07-01 | 3219 |  | RGA -FINISHING | 7838602 |
| 3483 | 40100.40200.40700.53000.55400.57600.85800.2261800 | TOILET FLOORING WORK | 7d | 2026-06-25 | 2026-07-01 | 3482FF |  | RGA -FINISHING | 7838612 |
| 3484 | 40100.40200.40700.53000.55400.57600.85800.2261900 | FIRE FIGHTING | 6d | 2026-05-28 | 2026-06-02 | 3218 |  | RGA -FINISHING | 7838622 |
| 3485 | 40100.40200.40700.53000.55400.57600.85800.2262000 | INTERNAL PAINTING - PUTTY / PRIMER APPLICATION | 6d | 2026-07-19 | 2026-07-24 | 3487 |  | RGA -FINISHING | 7838632 |
| 3486 | 40100.40200.40700.53000.55400.57600.85800.2262100 | FLAT FLOORING | 5d | 2026-07-02 | 2026-07-06 | 3483 |  | RGA -FINISHING | 7838642 |
| 3487 | 40100.40200.40700.53000.55400.57600.85800.2262200 | WINDOW FIXING | 12d | 2026-07-07 | 2026-07-18 | 3486 |  | RGA -FINISHING | 7838652 |
| 3488 | 40100.40200.40700.53000.55400.57600.85800.2262300 | INTERNAL PAINTING - 1ST COAT | 12d | 2026-07-25 | 2026-08-05 | 3485 |  | RGA -FINISHING | 7838662 |
| 3489 | 40100.40200.40700.53000.55400.57600.85800.2262400 | INTERNAL DOOR FIXING | 15d | 2026-08-04 | 2026-08-18 | 3488FS-2d |  | RGA -FINISHING | 7838672 |
| 3490 | 40100.40200.40700.53000.55400.57600.85800.2262500 | WIRING & SWITCH PLATE FIXING | 8d | 2026-08-15 | 2026-08-22 | 3489FS-4d |  | RGA -FINISHING | 7838682 |
| 3491 | 40100.40200.40700.53000.55400.57600.85800.2262600 | TOILET FALSE CEILING | 7d | 2026-08-23 | 2026-08-29 | 3490 |  | RGA -FINISHING | 7838692 |
| 3492 | 40100.40200.40700.53000.55400.57600.85800.2262700 | MAIN DOOR FRAME SHUTTER FIXING | 6d | 2027-01-21 | 2027-01-26 | 3764 |  | RGA -FINISHING | 7838702 |
| 3493 | 40100.40200.40700.53000.55400.57600.85800.2262800 | FINAL COAT PAINT | 8d | 2027-01-27 | 2027-02-03 | 3492 |  | RGA -FINISHING | 7838712 |
| 3494 | 40100.40200.40700.53000.55400.57600.85700 | **13TH FLOOR** | 239d | 2026-06-10 | 2027-02-03 |  | start no earlier than 2026-06-10 | RGA -FINISHING | 7805032 |
| 3495 | 40100.40200.40700.53000.55400.57600.85700.2262900 | TOILET DADO TILE FIXING | 10d | 2026-08-01 | 2026-08-10 | 3226 |  | RGA -FINISHING | 7838722 |
| 3496 | 40100.40200.40700.53000.55400.57600.85700.2263000 | TOILET FLOORING WORK | 7d | 2026-08-11 | 2026-08-17 | 3495 |  | RGA -FINISHING | 7838732 |
| 3497 | 40100.40200.40700.53000.55400.57600.85700.2263100 | FIRE FIGHTING | 8d | 2026-06-10 | 2026-06-17 | 3225 |  | RGA -FINISHING | 7838742 |
| 3498 | 40100.40200.40700.53000.55400.57600.85700.2263200 | INTERNAL PAINTING - PUTTY / PRIMER APPLICATION | 5d | 2026-08-30 | 2026-09-03 | 3500 |  | RGA -FINISHING | 7838752 |
| 3499 | 40100.40200.40700.53000.55400.57600.85700.2263300 | FLAT FLOORING | 7d | 2026-08-18 | 2026-08-24 | 3496 |  | RGA -FINISHING | 7838762 |
| 3500 | 40100.40200.40700.53000.55400.57600.85700.2263400 | WINDOW FIXING | 5d | 2026-08-25 | 2026-08-29 | 3499 |  | RGA -FINISHING | 7838772 |
| 3501 | 40100.40200.40700.53000.55400.57600.85700.2263500 | INTERNAL PAINTING - 1ST COAT | 4d | 2026-09-04 | 2026-09-07 | 3498 |  | RGA -FINISHING | 7838782 |
| 3502 | 40100.40200.40700.53000.55400.57600.85700.2263600 | INTERNAL DOOR FIXING | 15d | 2026-09-06 | 2026-09-20 | 3501FS-2d |  | RGA -FINISHING | 7838792 |
| 3503 | 40100.40200.40700.53000.55400.57600.85700.2263700 | WIRING & SWITCH PLATE FIXING | 8d | 2026-09-17 | 2026-09-24 | 3502FS-4d |  | RGA -FINISHING | 7838802 |
| 3504 | 40100.40200.40700.53000.55400.57600.85700.2263800 | TOILET FALSE CEILING | 7d | 2026-09-25 | 2026-10-01 | 3503 |  | RGA -FINISHING | 7838812 |
| 3505 | 40100.40200.40700.53000.55400.57600.85700.2263900 | MAIN DOOR FRAME SHUTTER FIXING | 6d | 2027-01-21 | 2027-01-26 | 3772 |  | RGA -FINISHING | 7838822 |
| 3506 | 40100.40200.40700.53000.55400.57600.85700.2264000 | FINAL COAT PAINT | 8d | 2027-01-27 | 2027-02-03 | 3505 |  | RGA -FINISHING | 7838832 |

| ID | WBS | Task | Duration | Start | Finish | Predecessors | Constraint | Calendar | Unique_Task_ID |
| --- | --- | --- | --- | --- | --- | --- | --- | --- | --- |
| 3507 | 40100.40200.40700.53000.55400.57600.85600 | **14TH FLOOR** | 244d | 2026-06-15 | 2027-02-13 |  | start no earlier than 2026-06-15 | RGA -FINISHING | 7805022 |
| 3508 | 40100.40200.40700.53000.55400.57600.85600.2264100 | TOILET DADO TILE FIXING | 10d | 2026-08-06 | 2026-08-15 | 3233 |  | RGA -FINISHING | 7838842 |
| 3509 | 40100.40200.40700.53000.55400.57600.85600.2264200 | TOILET FLOORING WORK | 7d | 2026-08-16 | 2026-08-22 | 3508 |  | RGA -FINISHING | 7838852 |
| 3510 | 40100.40200.40700.53000.55400.57600.85600.2264300 | FIRE FIGHTING | 8d | 2026-06-15 | 2026-06-22 | 3232 |  | RGA -FINISHING | 7838862 |
| 3511 | 40100.40200.40700.53000.55400.57600.85600.2264400 | INTERNAL PAINTING - PUTTY / PRIMER APPLICATION | 5d | 2026-09-04 | 2026-09-08 | 3513 |  | RGA -FINISHING | 7838872 |
| 3512 | 40100.40200.40700.53000.55400.57600.85600.2264500 | FLAT FLOORING | 7d | 2026-08-23 | 2026-08-29 | 3509 |  | RGA -FINISHING | 7838882 |
| 3513 | 40100.40200.40700.53000.55400.57600.85600.2264600 | WINDOW FIXING | 5d | 2026-08-30 | 2026-09-03 | 3512 |  | RGA -FINISHING | 7838892 |
| 3514 | 40100.40200.40700.53000.55400.57600.85600.2264700 | INTERNAL PAINTING - 1ST COAT | 4d | 2026-09-09 | 2026-09-12 | 3511 |  | RGA -FINISHING | 7838902 |
| 3515 | 40100.40200.40700.53000.55400.57600.85600.2264800 | INTERNAL DOOR FIXING | 15d | 2026-09-11 | 2026-09-25 | 3514FS-2d |  | RGA -FINISHING | 7838912 |
| 3516 | 40100.40200.40700.53000.55400.57600.85600.2264900 | WIRING & SWITCH PLATE FIXING | 8d | 2026-09-22 | 2026-09-29 | 3515FS-4d |  | RGA -FINISHING | 7838922 |
| 3517 | 40100.40200.40700.53000.55400.57600.85600.2265000 | TOILET FALSE CEILING | 7d | 2026-09-30 | 2026-10-06 | 3516 |  | RGA -FINISHING | 7838932 |
| 3518 | 40100.40200.40700.53000.55400.57600.85600.2265100 | MAIN DOOR FRAME SHUTTER FIXING | 6d | 2027-01-31 | 2027-02-05 | 3780 |  | RGA -FINISHING | 7838942 |
| 3519 | 40100.40200.40700.53000.55400.57600.85600.2265200 | FINAL COAT PAINT | 8d | 2027-02-06 | 2027-02-13 | 3518 |  | RGA -FINISHING | 7838952 |
| 3520 | 40100.40200.40700.53000.55400.57600.85500 | **15TH FLOOR** | 238d | 2026-06-21 | 2027-02-13 |  | start no earlier than 2026-06-21 | RGA -FINISHING | 7805012 |
| 3521 | 40100.40200.40700.53000.55400.57600.85500.2265300 | TOILET DADO TILE FIXING | 10d | 2026-08-12 | 2026-08-21 | 3240 |  | RGA -FINISHING | 7375535 |
| 3522 | 40100.40200.40700.53000.55400.57600.85500.2265400 | TOILET FLOORING WORK | 7d | 2026-08-22 | 2026-08-28 | 3521 |  | RGA -FINISHING | 7375545 |
| 3523 | 40100.40200.40700.53000.55400.57600.85500.2265500 | FIRE FIGHTING | 8d | 2026-06-21 | 2026-06-28 | 3239 |  | RGA -FINISHING | 7375555 |
| 3524 | 40100.40200.40700.53000.55400.57600.85500.2265600 | INTERNAL PAINTING - PUTTY / PRIMER APPLICATION | 5d | 2026-09-10 | 2026-09-14 | 3526 |  | RGA -FINISHING | 7838962 |
| 3525 | 40100.40200.40700.53000.55400.57600.85500.2265700 | FLAT FLOORING | 7d | 2026-08-29 | 2026-09-04 | 3522 |  | RGA -FINISHING | 7838972 |
| 3526 | 40100.40200.40700.53000.55400.57600.85500.2265800 | WINDOW FIXING | 5d | 2026-09-05 | 2026-09-09 | 3525 |  | RGA -FINISHING | 7838982 |
| 3527 | 40100.40200.40700.53000.55400.57600.85500.2265900 | INTERNAL PAINTING - 1ST COAT | 4d | 2026-09-15 | 2026-09-18 | 3524 |  | RGA -FINISHING | 7838992 |
| 3528 | 40100.40200.40700.53000.55400.57600.85500.2266000 | INTERNAL DOOR FIXING | 15d | 2026-09-17 | 2026-10-01 | 3527FS-2d |  | RGA -FINISHING | 7839002 |
| 3529 | 40100.40200.40700.53000.55400.57600.85500.2266100 | WIRING & SWITCH PLATE FIXING | 8d | 2026-09-28 | 2026-10-05 | 3528FS-4d |  | RGA -FINISHING | 7839012 |
| 3530 | 40100.40200.40700.53000.55400.57600.85500.2266200 | TOILET FALSE CEILING | 7d | 2026-10-06 | 2026-10-12 | 3529 |  | RGA -FINISHING | 7839022 |
| 3531 | 40100.40200.40700.53000.55400.57600.85500.2266300 | MAIN DOOR FRAME SHUTTER FIXING | 6d | 2027-01-31 | 2027-02-05 | 3788 |  | RGA -FINISHING | 7839032 |
| 3532 | 40100.40200.40700.53000.55400.57600.85500.2266400 | FINAL COAT PAINT | 8d | 2027-02-06 | 2027-02-13 | 3531 |  | RGA -FINISHING | 7839042 |

| ID | WBS | Task | Duration | Start | Finish | Predecessors | Constraint | Calendar | Unique_Task_ID |
| --- | --- | --- | --- | --- | --- | --- | --- | --- | --- |
| 3533 | 40100.40200.40700.53000.55400.57600.85400 | **16TH FLOOR** | 226d | 2026-07-03 | 2027-02-13 |  | start no earlier than 2026-07-03 | RGA -FINISHING | 7805002 |
| 3534 | 40100.40200.40700.53000.55400.57600.85400.2266500 | TOILET DADO TILE FIXING | 10d | 2026-08-24 | 2026-09-02 | 3247 |  | RGA -FINISHING | 7839052 |
| 3535 | 40100.40200.40700.53000.55400.57600.85400.2266600 | TOILET FLOORING WORK | 7d | 2026-09-03 | 2026-09-09 | 3534 |  | RGA -FINISHING | 7839062 |
| 3536 | 40100.40200.40700.53000.55400.57600.85400.2266700 | FIRE FIGHTING | 8d | 2026-07-03 | 2026-07-10 | 3246 |  | RGA -FINISHING | 7839072 |
| 3537 | 40100.40200.40700.53000.55400.57600.85400.2266800 | INTERNAL PAINTING - PUTTY / PRIMER APPLICATION | 5d | 2026-09-22 | 2026-09-26 | 3539 |  | RGA -FINISHING | 7839082 |
| 3538 | 40100.40200.40700.53000.55400.57600.85400.2266900 | FLAT FLOORING | 7d | 2026-09-10 | 2026-09-16 | 3535 |  | RGA -FINISHING | 7839092 |
| 3539 | 40100.40200.40700.53000.55400.57600.85400.2267000 | WINDOW FIXING | 5d | 2026-09-17 | 2026-09-21 | 3538 |  | RGA -FINISHING | 7839102 |
| 3540 | 40100.40200.40700.53000.55400.57600.85400.2267100 | INTERNAL PAINTING - 1ST COAT | 4d | 2026-09-27 | 2026-09-30 | 3537 |  | RGA -FINISHING | 7839112 |
| 3541 | 40100.40200.40700.53000.55400.57600.85400.2267200 | INTERNAL DOOR FIXING | 15d | 2026-09-29 | 2026-10-13 | 3540FS-2d |  | RGA -FINISHING | 7839122 |
| 3542 | 40100.40200.40700.53000.55400.57600.85400.2267300 | WIRING & SWITCH PLATE FIXING | 8d | 2026-10-10 | 2026-10-17 | 3541FS-4d |  | RGA -FINISHING | 7839132 |
| 3543 | 40100.40200.40700.53000.55400.57600.85400.2267400 | TOILET FALSE CEILING | 7d | 2026-10-18 | 2026-10-24 | 3542 |  | RGA -FINISHING | 7839142 |
| 3544 | 40100.40200.40700.53000.55400.57600.85400.2267500 | MAIN DOOR FRAME SHUTTER FIXING | 6d | 2027-01-31 | 2027-02-05 | 3796 |  | RGA -FINISHING | 7839152 |
| 3545 | 40100.40200.40700.53000.55400.57600.85400.2267600 | FINAL COAT PAINT | 8d | 2027-02-06 | 2027-02-13 | 3544 |  | RGA -FINISHING | 7839162 |
| 3546 | 40100.40200.40700.53000.55400.57600.85300 | **17TH FLOOR** | 203d | 2026-07-26 | 2027-02-13 |  | start no earlier than 2026-07-26 | RGA -FINISHING | 7804992 |
| 3547 | 40100.40200.40700.53000.55400.57600.85300.2267700 | TOILET DADO TILE FIXING | 10d | 2026-09-16 | 2026-09-25 | 3254 |  | RGA -FINISHING | 7839172 |
| 3548 | 40100.40200.40700.53000.55400.57600.85300.2267800 | TOILET FLOORING WORK | 7d | 2026-09-26 | 2026-10-02 | 3547 |  | RGA -FINISHING | 7375785 |
| 3549 | 40100.40200.40700.53000.55400.57600.85300.2267900 | FIRE FIGHTING | 8d | 2026-07-26 | 2026-08-02 | 3253 |  | RGA -FINISHING | 7375795 |
| 3550 | 40100.40200.40700.53000.55400.57600.85300.2268000 | INTERNAL PAINTING - PUTTY / PRIMER APPLICATION | 5d | 2026-10-15 | 2026-10-19 | 3552 |  | RGA -FINISHING | 7375805 |
| 3551 | 40100.40200.40700.53000.55400.57600.85300.2268100 | FLAT FLOORING | 7d | 2026-10-03 | 2026-10-09 | 3548 |  | RGA -FINISHING | 7375815 |
| 3552 | 40100.40200.40700.53000.55400.57600.85300.2268200 | WINDOW FIXING | 5d | 2026-10-10 | 2026-10-14 | 3551 |  | RGA -FINISHING | 7375825 |
| 3553 | 40100.40200.40700.53000.55400.57600.85300.2268300 | INTERNAL PAINTING - 1ST COAT | 4d | 2026-10-20 | 2026-10-23 | 3550 |  | RGA -FINISHING | 7375835 |
| 3554 | 40100.40200.40700.53000.55400.57600.85300.2268400 | INTERNAL DOOR FIXING | 15d | 2026-10-22 | 2026-11-05 | 3553FS-2d |  | RGA -FINISHING | 7375845 |
| 3555 | 40100.40200.40700.53000.55400.57600.85300.2268500 | WIRING & SWITCH PLATE FIXING | 8d | 2026-11-02 | 2026-11-09 | 3554FS-4d |  | RGA -FINISHING | 7375855 |
| 3556 | 40100.40200.40700.53000.55400.57600.85300.2268600 | TOILET FALSE CEILING | 7d | 2026-11-10 | 2026-11-16 | 3555 |  | RGA -FINISHING | 7375865 |
| 3557 | 40100.40200.40700.53000.55400.57600.85300.2268700 | MAIN DOOR FRAME SHUTTER FIXING | 6d | 2027-01-31 | 2027-02-05 | 3804 |  | RGA -FINISHING | 7375875 |
| 3558 | 40100.40200.40700.53000.55400.57600.85300.2268800 | FINAL COAT PAINT | 8d | 2027-02-06 | 2027-02-13 | 3557 |  | RGA -FINISHING | 7375885 |

| ID | WBS | Task | Duration | Start | Finish | Predecessors | Constraint | Calendar | Unique_Task_ID |
| --- | --- | --- | --- | --- | --- | --- | --- | --- | --- |
| 3559 | 40100.40200.40700.53000.55400.57600.85200 | **18TH FLOOR** | 205d | 2026-08-03 | 2027-02-23 |  | start no earlier than 2026-08-03 | RGA -FINISHING | 7804982 |
| 3560 | 40100.40200.40700.53000.55400.57600.85200.2268900 | TOILET DADO TILE FIXING | 10d | 2026-09-24 | 2026-10-03 | 3261 |  | RGA -FINISHING | 7375895 |
| 3561 | 40100.40200.40700.53000.55400.57600.85200.2269000 | TOILET FLOORING WORK | 7d | 2026-10-04 | 2026-10-10 | 3560 |  | RGA -FINISHING | 7375905 |
| 3562 | 40100.40200.40700.53000.55400.57600.85200.2269100 | FIRE FIGHTING | 8d | 2026-08-03 | 2026-08-10 | 3260 |  | RGA -FINISHING | 7375915 |
| 3563 | 40100.40200.40700.53000.55400.57600.85200.2269200 | INTERNAL PAINTING - PUTTY / PRIMER APPLICATION | 5d | 2026-10-23 | 2026-10-27 | 3565 |  | RGA -FINISHING | 7375925 |
| 3564 | 40100.40200.40700.53000.55400.57600.85200.2269300 | FLAT FLOORING | 7d | 2026-10-11 | 2026-10-17 | 3561 |  | RGA -FINISHING | 7375935 |
| 3565 | 40100.40200.40700.53000.55400.57600.85200.2269400 | WINDOW FIXING | 5d | 2026-10-18 | 2026-10-22 | 3564 |  | RGA -FINISHING | 7375945 |
| 3566 | 40100.40200.40700.53000.55400.57600.85200.2269500 | INTERNAL PAINTING - 1ST COAT | 4d | 2026-10-28 | 2026-10-31 | 3563 |  | RGA -FINISHING | 7375955 |
| 3567 | 40100.40200.40700.53000.55400.57600.85200.2269600 | INTERNAL DOOR FIXING | 15d | 2026-10-30 | 2026-11-13 | 3566FS-2d |  | RGA -FINISHING | 7375965 |
| 3568 | 40100.40200.40700.53000.55400.57600.85200.2269700 | WIRING & SWITCH PLATE FIXING | 8d | 2026-11-10 | 2026-11-17 | 3567FS-4d |  | RGA -FINISHING | 7375975 |
| 3569 | 40100.40200.40700.53000.55400.57600.85200.2269800 | TOILET FALSE CEILING | 7d | 2026-11-18 | 2026-11-24 | 3568 |  | RGA -FINISHING | 7375985 |
| 3570 | 40100.40200.40700.53000.55400.57600.85200.2269900 | MAIN DOOR FRAME SHUTTER FIXING | 6d | 2027-02-10 | 2027-02-15 | 3812 |  | RGA -FINISHING | 7375995 |
| 3571 | 40100.40200.40700.53000.55400.57600.85200.2270000 | FINAL COAT PAINT | 8d | 2027-02-16 | 2027-02-23 | 3570 |  | RGA -FINISHING | 7839182 |
| 3572 | 40100.40200.40700.53000.55400.57600.85100 | **19TH FLOOR** | 197d | 2026-08-11 | 2027-02-23 |  | start no earlier than 2026-08-11 | RGA -FINISHING | 7804972 |
| 3573 | 40100.40200.40700.53000.55400.57600.85100.2270100 | TOILET DADO TILE FIXING | 10d | 2026-10-02 | 2026-10-11 | 3268 |  | RGA -FINISHING | 7839192 |
| 3574 | 40100.40200.40700.53000.55400.57600.85100.2270200 | TOILET FLOORING WORK | 7d | 2026-10-12 | 2026-10-18 | 3573 |  | RGA -FINISHING | 7839202 |
| 3575 | 40100.40200.40700.53000.55400.57600.85100.2270300 | FIRE FIGHTING | 8d | 2026-08-11 | 2026-08-18 | 3267 |  | RGA -FINISHING | 7839212 |
| 3576 | 40100.40200.40700.53000.55400.57600.85100.2270400 | INTERNAL PAINTING - PUTTY / PRIMER APPLICATION | 5d | 2026-10-31 | 2026-11-04 | 3578 |  | RGA -FINISHING | 7839222 |
| 3577 | 40100.40200.40700.53000.55400.57600.85100.2270500 | FLAT FLOORING | 7d | 2026-10-19 | 2026-10-25 | 3574 |  | RGA -FINISHING | 7839232 |
| 3578 | 40100.40200.40700.53000.55400.57600.85100.2270600 | WINDOW FIXING | 5d | 2026-10-26 | 2026-10-30 | 3577 |  | RGA -FINISHING | 7839242 |
| 3579 | 40100.40200.40700.53000.55400.57600.85100.2270700 | INTERNAL PAINTING - 1ST COAT | 4d | 2026-11-05 | 2026-11-08 | 3576 |  | RGA -FINISHING | 7839252 |
| 3580 | 40100.40200.40700.53000.55400.57600.85100.2270800 | INTERNAL DOOR FIXING | 15d | 2026-11-07 | 2026-11-21 | 3579FS-2d |  | RGA -FINISHING | 7839262 |
| 3581 | 40100.40200.40700.53000.55400.57600.85100.2270900 | WIRING & SWITCH PLATE FIXING | 8d | 2026-11-18 | 2026-11-25 | 3580FS-4d |  | RGA -FINISHING | 7839272 |
| 3582 | 40100.40200.40700.53000.55400.57600.85100.2271000 | TOILET FALSE CEILING | 7d | 2026-11-26 | 2026-12-02 | 3581 |  | RGA -FINISHING | 7839282 |
| 3583 | 40100.40200.40700.53000.55400.57600.85100.2271100 | MAIN DOOR FRAME SHUTTER FIXING | 6d | 2027-02-10 | 2027-02-15 | 3820 |  | RGA -FINISHING | 7839292 |
| 3584 | 40100.40200.40700.53000.55400.57600.85100.2271200 | FINAL COAT PAINT | 8d | 2027-02-16 | 2027-02-23 | 3583 |  | RGA -FINISHING | 7839302 |

| ID | WBS | Task | Duration | Start | Finish | Predecessors | Constraint | Calendar | Unique_Task_ID |
| --- | --- | --- | --- | --- | --- | --- | --- | --- | --- |
| 3585 | 40100.40200.40700.53000.55400.57600.85000 | **20TH FLOOR** | 189d | 2026-08-19 | 2027-02-23 |  | start no earlier than 2026-08-19 | RGA -FINISHING | 7804962 |
| 3586 | 40100.40200.40700.53000.55400.57600.85000.2271300 | TOILET DADO TILE FIXING | 10d | 2026-10-10 | 2026-10-19 | 3275 |  | RGA -FINISHING | 7839312 |
| 3587 | 40100.40200.40700.53000.55400.57600.85000.2271400 | TOILET FLOORING WORK | 7d | 2026-10-20 | 2026-10-26 | 3586 |  | RGA -FINISHING | 7839322 |
| 3588 | 40100.40200.40700.53000.55400.57600.85000.2271500 | FIRE FIGHTING | 8d | 2026-08-19 | 2026-08-26 | 3274 |  | RGA -FINISHING | 7839332 |
| 3589 | 40100.40200.40700.53000.55400.57600.85000.2271600 | INTERNAL PAINTING - PUTTY / PRIMER APPLICATION | 5d | 2026-11-08 | 2026-11-12 | 3591 |  | RGA -FINISHING | 7839342 |
| 3590 | 40100.40200.40700.53000.55400.57600.85000.2271700 | FLAT FLOORING | 7d | 2026-10-27 | 2026-11-02 | 3587 |  | RGA -FINISHING | 7839352 |
| 3591 | 40100.40200.40700.53000.55400.57600.85000.2271800 | WINDOW FIXING | 5d | 2026-11-03 | 2026-11-07 | 3590 |  | RGA -FINISHING | 7839362 |
| 3592 | 40100.40200.40700.53000.55400.57600.85000.2271900 | INTERNAL PAINTING - 1ST COAT | 4d | 2026-11-13 | 2026-11-16 | 3589 |  | RGA -FINISHING | 7839372 |
| 3593 | 40100.40200.40700.53000.55400.57600.85000.2272000 | INTERNAL DOOR FIXING | 15d | 2026-11-15 | 2026-11-29 | 3592FS-2d |  | RGA -FINISHING | 7839382 |
| 3594 | 40100.40200.40700.53000.55400.57600.85000.2272100 | WIRING & SWITCH PLATE FIXING | 8d | 2026-11-26 | 2026-12-03 | 3593FS-4d |  | RGA -FINISHING | 7839392 |
| 3595 | 40100.40200.40700.53000.55400.57600.85000.2272200 | TOILET FALSE CEILING | 7d | 2026-12-04 | 2026-12-10 | 3594 |  | RGA -FINISHING | 7839402 |
| 3596 | 40100.40200.40700.53000.55400.57600.85000.2272300 | MAIN DOOR FRAME SHUTTER FIXING | 6d | 2027-02-10 | 2027-02-15 | 3828 |  | RGA -FINISHING | 7839412 |
| 3597 | 40100.40200.40700.53000.55400.57600.85000.2272400 | FINAL COAT PAINT | 8d | 2027-02-16 | 2027-02-23 | 3596 |  | RGA -FINISHING | 7839422 |
| 3598 | 40100.40200.40700.53000.55400.57600.84900 | **21st FLOOR** | 180d | 2026-08-28 | 2027-02-23 |  | start no earlier than 2026-08-28 | RGA -FINISHING | 7804952 |
| 3599 | 40100.40200.40700.53000.55400.57600.84900.2272500 | TOILET DADO TILE FIXING | 10d | 2026-10-19 | 2026-10-28 | 3282 |  | RGA -FINISHING | 7839432 |
| 3600 | 40100.40200.40700.53000.55400.57600.84900.2272600 | TOILET FLOORING WORK | 7d | 2026-10-29 | 2026-11-04 | 3599 |  | RGA -FINISHING | 7839442 |
| 3601 | 40100.40200.40700.53000.55400.57600.84900.2272700 | FIRE FIGHTING | 8d | 2026-08-28 | 2026-09-04 | 3281 |  | RGA -FINISHING | 7839452 |
| 3602 | 40100.40200.40700.53000.55400.57600.84900.2272800 | INTERNAL PAINTING - PUTTY / PRIMER APPLICATION | 15d | 2026-11-17 | 2026-12-01 | 3604 |  | RGA -FINISHING | 7839462 |
| 3603 | 40100.40200.40700.53000.55400.57600.84900.2272900 | FLAT FLOORING | 5d | 2026-11-05 | 2026-11-09 | 3600 |  | RGA -FINISHING | 7839472 |
| 3604 | 40100.40200.40700.53000.55400.57600.84900.2273000 | WINDOW FIXING | 7d | 2026-11-10 | 2026-11-16 | 3603 |  | RGA -FINISHING | 7839482 |
| 3605 | 40100.40200.40700.53000.55400.57600.84900.2273100 | INTERNAL PAINTING - 1ST COAT | 5d | 2026-12-02 | 2026-12-06 | 3602 |  | RGA -FINISHING | 7839492 |
| 3606 | 40100.40200.40700.53000.55400.57600.84900.2273200 | INTERNAL DOOR FIXING | 4d | 2026-12-05 | 2026-12-08 | 3605FS-2d |  | RGA -FINISHING | 7839502 |
| 3607 | 40100.40200.40700.53000.55400.57600.84900.2273300 | WIRING & SWITCH PLATE FIXING | 8d | 2026-12-05 | 2026-12-12 | 3606FS-4d |  | RGA -FINISHING | 7839512 |
| 3608 | 40100.40200.40700.53000.55400.57600.84900.2273400 | TOILET FALSE CEILING | 7d | 2026-12-13 | 2026-12-19 | 3607 |  | RGA -FINISHING | 7839522 |
| 3609 | 40100.40200.40700.53000.55400.57600.84900.2273500 | MAIN DOOR FRAME SHUTTER FIXING | 6d | 2027-02-10 | 2027-02-15 | 3836 |  | RGA -FINISHING | 7839532 |
| 3610 | 40100.40200.40700.53000.55400.57600.84900.2273600 | FINAL COAT PAINT | 8d | 2027-02-16 | 2027-02-23 | 3609 |  | RGA -FINISHING | 7839542 |

| ID | WBS | Task | Duration | Start | Finish | Predecessors | Constraint | Calendar | Unique_Task_ID |
| --- | --- | --- | --- | --- | --- | --- | --- | --- | --- |
| 3611 | 40100.40200.40700.53000.55400.57600.84800 | **22nd FLOOR** | 182d | 2026-09-05 | 2027-03-05 |  | start no earlier than 2026-09-05 | RGA -FINISHING | 7804942 |
| 3612 | 40100.40200.40700.53000.55400.57600.84800.2273700 | TOILET DADO TILE FIXING | 10d | 2026-10-27 | 2026-11-05 | 3289 |  | RGA -FINISHING | 7839552 |
| 3613 | 40100.40200.40700.53000.55400.57600.84800.2273800 | TOILET FLOORING WORK | 7d | 2026-11-06 | 2026-11-12 | 3612 |  | RGA -FINISHING | 7839562 |
| 3614 | 40100.40200.40700.53000.55400.57600.84800.2273900 | FIRE FIGHTING | 8d | 2026-09-05 | 2026-09-12 | 3288 |  | RGA -FINISHING | 7839572 |
| 3615 | 40100.40200.40700.53000.55400.57600.84800.2274000 | INTERNAL PAINTING - PUTTY / PRIMER APPLICATION | 5d | 2026-11-22 | 2026-11-26 | 3617 |  | RGA -FINISHING | 7839582 |
| 3616 | 40100.40200.40700.53000.55400.57600.84800.2274100 | FLAT FLOORING | 7d | 2026-11-13 | 2026-11-19 | 3613 |  | RGA -FINISHING | 7839592 |
| 3617 | 40100.40200.40700.53000.55400.57600.84800.2274200 | WINDOW FIXING | 5d | 2026-11-17 | 2026-11-21 | 3604 |  | RGA -FINISHING | 7839602 |
| 3618 | 40100.40200.40700.53000.55400.57600.84800.2274300 | INTERNAL PAINTING - 1ST COAT | 4d | 2026-11-27 | 2026-11-30 | 3615 |  | RGA -FINISHING | 7839612 |
| 3619 | 40100.40200.40700.53000.55400.57600.84800.2274400 | INTERNAL DOOR FIXING | 15d | 2026-11-29 | 2026-12-13 | 3618FS-2d |  | RGA -FINISHING | 7839622 |
| 3620 | 40100.40200.40700.53000.55400.57600.84800.2274500 | WIRING & SWITCH PLATE FIXING | 8d | 2026-12-10 | 2026-12-17 | 3619FS-4d |  | RGA -FINISHING | 7839632 |
| 3621 | 40100.40200.40700.53000.55400.57600.84800.2274600 | TOILET FALSE CEILING | 7d | 2026-12-18 | 2026-12-24 | 3620 |  | RGA -FINISHING | 7839642 |
| 3622 | 40100.40200.40700.53000.55400.57600.84800.2274700 | MAIN DOOR FRAME SHUTTER FIXING | 6d | 2027-02-20 | 2027-02-25 | 3844 |  | RGA -FINISHING | 7839652 |
| 3623 | 40100.40200.40700.53000.55400.57600.84800.2274800 | FINAL COAT PAINT | 8d | 2027-02-26 | 2027-03-05 | 3622 |  | RGA -FINISHING | 7839662 |
| 3624 | 40100.40200.40700.53000.55400.57600.84700 | **23TH FLOOR** | 173d | 2026-09-14 | 2027-03-05 |  | start no earlier than 2026-09-14 | RGA -FINISHING | 7804932 |
| 3625 | 40100.40200.40700.53000.55400.57600.84700.2274900 | TOILET DADO TILE FIXING | 10d | 2026-12-05 | 2026-12-14 | 3296 |  | RGA -FINISHING | 7839672 |
| 3626 | 40100.40200.40700.53000.55400.57600.84700.2275000 | TOILET FLOORING WORK | 7d | 2026-12-15 | 2026-12-21 | 3625 |  | RGA -FINISHING | 7839682 |
| 3627 | 40100.40200.40700.53000.55400.57600.84700.2275100 | FIRE FIGHTING | 8d | 2026-09-14 | 2026-09-21 | 3295 |  | RGA -FINISHING | 7839692 |
| 3628 | 40100.40200.40700.53000.55400.57600.84700.2275200 | INTERNAL PAINTING - PUTTY / PRIMER APPLICATION | 5d | 2027-01-03 | 2027-01-07 | 3630 |  | RGA -FINISHING | 7839702 |
| 3629 | 40100.40200.40700.53000.55400.57600.84700.2275300 | FLAT FLOORING | 7d | 2026-12-22 | 2026-12-28 | 3626 |  | RGA -FINISHING | 7839712 |
| 3630 | 40100.40200.40700.53000.55400.57600.84700.2275400 | WINDOW FIXING | 5d | 2026-12-29 | 2027-01-02 | 3629 |  | RGA -FINISHING | 7839722 |
| 3631 | 40100.40200.40700.53000.55400.57600.84700.2275500 | INTERNAL PAINTING - 1ST COAT | 4d | 2027-01-08 | 2027-01-11 | 3628 |  | RGA -FINISHING | 7376555 |
| 3632 | 40100.40200.40700.53000.55400.57600.84700.2275600 | INTERNAL DOOR FIXING | 15d | 2027-01-10 | 2027-01-24 | 3631FS-2d |  | RGA -FINISHING | 7376565 |
| 3633 | 40100.40200.40700.53000.55400.57600.84700.2275700 | WIRING & SWITCH PLATE FIXING | 8d | 2027-01-21 | 2027-01-28 | 3632FS-4d |  | RGA -FINISHING | 7376575 |
| 3634 | 40100.40200.40700.53000.55400.57600.84700.2275800 | TOILET FALSE CEILING | 7d | 2027-01-29 | 2027-02-04 | 3633 |  | RGA -FINISHING | 7376585 |
| 3635 | 40100.40200.40700.53000.55400.57600.84700.2275900 | MAIN DOOR FRAME SHUTTER FIXING | 6d | 2027-02-20 | 2027-02-25 | 3852 |  | RGA -FINISHING | 7376595 |
| 3636 | 40100.40200.40700.53000.55400.57600.84700.2276000 | FINAL COAT PAINT | 8d | 2027-02-26 | 2027-03-05 | 3635 |  | RGA -FINISHING | 7376605 |

| ID | WBS | Task | Duration | Start | Finish | Predecessors | Constraint | Calendar | Unique_Task_ID |
| --- | --- | --- | --- | --- | --- | --- | --- | --- | --- |
| 3637 | 40100.40200.40700.53000.55400.57600.84600 | **24TH FLOOR** | 164d | 2026-09-23 | 2027-03-05 |  | start no earlier than 2026-09-23 | RGA -FINISHING | 7804922 |
| 3638 | 40100.40200.40700.53000.55400.57600.84600.2276100 | TOILET DADO TILE FIXING | 10d | 2026-12-14 | 2026-12-23 | 3303 |  | RGA -FINISHING | 7376615 |
| 3639 | 40100.40200.40700.53000.55400.57600.84600.2276200 | TOILET FLOORING WORK | 7d | 2026-12-24 | 2026-12-30 | 3638 |  | RGA -FINISHING | 7376625 |
| 3640 | 40100.40200.40700.53000.55400.57600.84600.2276300 | FIRE FIGHTING | 8d | 2026-09-23 | 2026-09-30 | 3302 |  | RGA -FINISHING | 7376635 |
| 3641 | 40100.40200.40700.53000.55400.57600.84600.2276400 | INTERNAL PAINTING - PUTTY / PRIMER APPLICATION | 5d | 2027-01-12 | 2027-01-16 | 3643 |  | RGA -FINISHING | 7376645 |
| 3642 | 40100.40200.40700.53000.55400.57600.84600.2276500 | FLAT FLOORING | 7d | 2026-12-31 | 2027-01-06 | 3639 |  | RGA -FINISHING | 7376655 |
| 3643 | 40100.40200.40700.53000.55400.57600.84600.2276600 | WINDOW FIXING | 5d | 2027-01-07 | 2027-01-11 | 3642 |  | RGA -FINISHING | 7376665 |
| 3644 | 40100.40200.40700.53000.55400.57600.84600.2276700 | INTERNAL PAINTING - 1ST COAT | 4d | 2027-01-17 | 2027-01-20 | 3641 |  | RGA -FINISHING | 7376675 |
| 3645 | 40100.40200.40700.53000.55400.57600.84600.2276800 | INTERNAL DOOR FIXING | 15d | 2027-01-19 | 2027-02-02 | 3644FS-2d |  | RGA -FINISHING | 7376685 |
| 3646 | 40100.40200.40700.53000.55400.57600.84600.2276900 | WIRING & SWITCH PLATE FIXING | 8d | 2027-01-30 | 2027-02-06 | 3645FS-4d |  | RGA -FINISHING | 7376695 |
| 3647 | 40100.40200.40700.53000.55400.57600.84600.2277000 | TOILET FALSE CEILING | 7d | 2027-02-07 | 2027-02-13 | 3646 |  | RGA -FINISHING | 7376705 |
| 3648 | 40100.40200.40700.53000.55400.57600.84600.2277100 | MAIN DOOR FRAME SHUTTER FIXING | 6d | 2027-02-20 | 2027-02-25 | 3860 |  | RGA -FINISHING | 7376715 |
| 3649 | 40100.40200.40700.53000.55400.57600.84600.2277200 | FINAL COAT PAINT | 8d | 2027-02-26 | 2027-03-05 | 3648 |  | RGA -FINISHING | 7376725 |
| 3650 | 40100.40200.40700.53000.55400.57600.84500 | **25TH FLOOR** | 185d | 2026-10-02 | 2027-04-04 |  | start no earlier than 2026-10-02 | RGA -FINISHING | 7804912 |
| 3651 | 40100.40200.40700.53000.55400.57600.84500.2277300 | TOILET DADO TILE FIXING | 10d | 2026-12-23 | 2027-01-01 | 3310 |  | RGA -FINISHING | 7376735 |
| 3652 | 40100.40200.40700.53000.55400.57600.84500.2277400 | TOILET FLOORING WORK | 7d | 2027-01-02 | 2027-01-08 | 3651 |  | RGA -FINISHING | 7376745 |
| 3653 | 40100.40200.40700.53000.55400.57600.84500.2277500 | FIRE FIGHTING | 8d | 2026-10-02 | 2026-10-09 | 3309 |  | RGA -FINISHING | 7376755 |
| 3654 | 40100.40200.40700.53000.55400.57600.84500.2277600 | INTERNAL PAINTING - PUTTY / PRIMER APPLICATION | 5d | 2027-02-05 | 2027-02-09 | 3656 |  | RGA -FINISHING | 7839732 |
| 3655 | 40100.40200.40700.53000.55400.57600.84500.2277700 | FLAT FLOORING | 7d | 2027-01-24 | 2027-01-30 | 3652FS+15d |  | RGA -FINISHING | 7839742 |
| 3656 | 40100.40200.40700.53000.55400.57600.84500.2277800 | WINDOW FIXING | 5d | 2027-01-31 | 2027-02-04 | 3655 |  | RGA -FINISHING | 7839752 |
| 3657 | 40100.40200.40700.53000.55400.57600.84500.2277900 | INTERNAL PAINTING - 1ST COAT | 4d | 2027-02-10 | 2027-02-13 | 3654 |  | RGA -FINISHING | 7839762 |
| 3658 | 40100.40200.40700.53000.55400.57600.84500.2278000 | INTERNAL DOOR FIXING | 15d | 2027-02-12 | 2027-02-26 | 3657FS-2d |  | RGA -FINISHING | 7839772 |
| 3659 | 40100.40200.40700.53000.55400.57600.84500.2278100 | WIRING & SWITCH PLATE FIXING | 8d | 2027-02-23 | 2027-03-02 | 3658FS-4d |  | RGA -FINISHING | 7839782 |
| 3660 | 40100.40200.40700.53000.55400.57600.84500.2278200 | TOILET FALSE CEILING | 7d | 2027-03-03 | 2027-03-09 | 3659 |  | RGA -FINISHING | 7376825 |
| 3661 | 40100.40200.40700.53000.55400.57600.84500.2278300 | MAIN DOOR FRAME SHUTTER FIXING | 6d | 2027-03-22 | 2027-03-27 | 3868 |  | RGA -FINISHING | 7376835 |
| 3662 | 40100.40200.40700.53000.55400.57600.84500.2278400 | FINAL COAT PAINT | 8d | 2027-03-28 | 2027-04-04 | 3661 |  | RGA -FINISHING | 7376845 |

| ID | WBS | Task | Duration | Start | Finish | Predecessors | Constraint | Calendar | Unique_Task_ID |
| --- | --- | --- | --- | --- | --- | --- | --- | --- | --- |
| 3663 | 40100.40200.40700.53000.55400.59700 | **LIFT LOBBY & STAIRCASE FINISHING WORK** | 448d | 2026-01-22 | 2027-04-14 |  | start no earlier than 2026-01-22 | RGA -FINISHING | 7803502 |
| 3664 | 40100.40200.40700.53000.55400.59700.236900 | **GROUND FLOOR** | 372d | 2026-01-22 | 2027-01-28 |  | start no earlier than 2026-01-22 | RGA -FINISHING | 7806202 |
| 3665 | 40100.40200.40700.53000.55400.59700.236900.2278500 | FIRE FIGHTING | 5d | 2026-01-22 | 2026-01-26 | 3328FS+5d |  | RGA -FINISHING | 7840092 |
| 3666 | 40100.40200.40700.53000.55400.59700.236900.2278600 | LIFT BLOCK WORK | 6d | 2026-09-23 | 2026-09-28 | 3120 |  | RGA -FINISHING | 7840102 |
| 3667 | 40100.40200.40700.53000.55400.59700.236900.2278700 | LIFT DADO WORK | 6d | 2026-12-27 | 2027-01-01 | 3875FS-60d |  | RGA -FINISHING | 7840112 |
| 3668 | 40100.40200.40700.53000.55400.59700.236900.2278800 | LOBBY FLOORING WORK | 8d | 2027-01-02 | 2027-01-09 | 3667 |  | RGA -FINISHING | 7840122 |
| 3669 | 40100.40200.40700.53000.55400.59700.236900.2278900 | ELECTRICAL WIRING & SWITCH PLATE FIXING WORK | 6d | 2027-01-10 | 2027-01-15 | 3668 |  | RGA -FINISHING | 7840132 |
| 3670 | 40100.40200.40700.53000.55400.59700.236900.2279000 | False ceiling & 1ST COAT PAINTING | 10d | 2027-01-16 | 2027-01-25 | 3669 |  | RGA -FINISHING | 7840142 |
| 3671 | 40100.40200.40700.53000.55400.59700.236900.2279100 | CLEANING | 3d | 2027-01-26 | 2027-01-28 | 3670 |  | RGA -FINISHING | 7840152 |
| 3672 | 40100.40200.40700.53000.55400.59700.237000 | **1ST FLOOR** | 356d | 2026-01-24 | 2027-01-14 |  | start no earlier than 2026-01-24 | RGA -FINISHING | 7806212 |
| 3673 | 40100.40200.40700.53000.55400.59700.237000.2279200 | FIRE FIGHTING | 10d | 2026-01-24 | 2026-02-02 | 3341FS-5d |  | RGA -FINISHING | 7840162 |
| 3674 | 40100.40200.40700.53000.55400.59700.237000.2279300 | LIFT BLOCK WORK | 3d | 2026-09-23 | 2026-09-25 | 3120 |  | RGA -FINISHING | 7840172 |
| 3675 | 40100.40200.40700.53000.55400.59700.237000.2279400 | LIFT DADO WORK | 10d | 2026-12-02 | 2026-12-11 | 3875FS-85d |  | RGA -FINISHING | 7840182 |
| 3676 | 40100.40200.40700.53000.55400.59700.237000.2279500 | LOBBY FLOORING WORK | 10d | 2026-12-12 | 2026-12-21 | 3675 |  | RGA -FINISHING | 7840192 |
| 3677 | 40100.40200.40700.53000.55400.59700.237000.2279600 | ELECTRICAL WIRING & SWITCH PLATE FIXING WORK | 6d | 2026-12-22 | 2026-12-27 | 3676 |  | RGA -FINISHING | 7840202 |
| 3678 | 40100.40200.40700.53000.55400.59700.237000.2279700 | False ceiling & 1ST COAT PAINTING | 15d | 2026-12-28 | 2027-01-11 | 3677 |  | RGA -FINISHING | 7840212 |
| 3679 | 40100.40200.40700.53000.55400.59700.237000.2279800 | CLEANING | 3d | 2027-01-12 | 2027-01-14 | 3678 |  | RGA -FINISHING | 7840222 |
| 3680 | 40100.40200.40700.53000.55400.59700.237100 | **2nd FLOOR** | 340d | 2026-02-09 | 2027-01-14 |  | start no earlier than 2026-02-09 | RGA -FINISHING | 7806222 |
| 3681 | 40100.40200.40700.53000.55400.59700.237100.2279900 | FIRE FIGHTING | 10d | 2026-02-09 | 2026-02-18 | 3354FS-5d |  | RGA -FINISHING | 7840232 |
| 3682 | 40100.40200.40700.53000.55400.59700.237100.2280000 | LIFT BLOCK WORK | 3d | 2026-09-23 | 2026-09-25 | 3674SS |  | RGA -FINISHING | 7840242 |
| 3683 | 40100.40200.40700.53000.55400.59700.237100.2280100 | LIFT DADO WORK | 10d | 2026-12-02 | 2026-12-11 | 3675SS |  | RGA -FINISHING | 7840252 |
| 3684 | 40100.40200.40700.53000.55400.59700.237100.2280200 | LOBBY FLOORING WORK | 10d | 2026-12-12 | 2026-12-21 | 3683 |  | RGA -FINISHING | 7840262 |
| 3685 | 40100.40200.40700.53000.55400.59700.237100.2280300 | ELECTRICAL WIRING & SWITCH PLATE FIXING WORK | 6d | 2026-12-22 | 2026-12-27 | 3684 |  | RGA -FINISHING | 7840272 |
| 3686 | 40100.40200.40700.53000.55400.59700.237100.2280400 | False ceiling & 1ST COAT PAINTING | 15d | 2026-12-28 | 2027-01-11 | 3685 |  | RGA -FINISHING | 7377885 |
| 3687 | 40100.40200.40700.53000.55400.59700.237100.2280500 | CLEANING | 3d | 2027-01-12 | 2027-01-14 | 3686 |  | RGA -FINISHING | 7377895 |

Notes:
- 3663: Completion in 12 months post last RCC
- 3665: Assumed
- 3673: Assumed
- 3681: Assumed

| ID | WBS | Task | Duration | Start | Finish | Predecessors | Constraint | Calendar | Unique_Task_ID |
| --- | --- | --- | --- | --- | --- | --- | --- | --- | --- |
| 3688 | 40100.40200.40700.53000.55400.59700.237200 | **3rd FLOOR** | 326d | 2026-03-05 | 2027-01-24 |  | start no earlier than 2026-03-05 | RGA -FINISHING | 7806232 |
| 3689 | 40100.40200.40700.53000.55400.59700.237200.2280600 | FIRE FIGHTING | 10d | 2026-03-05 | 2026-03-14 | 3367FS-5d |  | RGA -FINISHING | 7840282 |
| 3690 | 40100.40200.40700.53000.55400.59700.237200.2280700 | LIFT BLOCK WORK | 3d | 2026-09-26 | 2026-09-28 | 3682 |  | RGA -FINISHING | 7840292 |
| 3691 | 40100.40200.40700.53000.55400.59700.237200.2280800 | LIFT DADO WORK | 10d | 2026-12-12 | 2026-12-21 | 3683 |  | RGA -FINISHING | 7840302 |
| 3692 | 40100.40200.40700.53000.55400.59700.237200.2280900 | LOBBY FLOORING WORK | 10d | 2026-12-22 | 2026-12-31 | 3691 |  | RGA -FINISHING | 7840312 |
| 3693 | 40100.40200.40700.53000.55400.59700.237200.2281000 | ELECTRICAL WIRING & SWITCH PLATE FIXING WORK | 6d | 2027-01-01 | 2027-01-06 | 3692 |  | RGA -FINISHING | 7840322 |
| 3694 | 40100.40200.40700.53000.55400.59700.237200.2281100 | False ceiling & 1ST COAT PAINTING | 15d | 2027-01-07 | 2027-01-21 | 3693 |  | RGA -FINISHING | 7840332 |
| 3695 | 40100.40200.40700.53000.55400.59700.237200.2281200 | CLEANING | 3d | 2027-01-22 | 2027-01-24 | 3694 |  | RGA -FINISHING | 7840342 |
| 3696 | 40100.40200.40700.53000.55400.59700.237300 | **4th FLOOR** | 317d | 2026-03-14 | 2027-01-24 |  | start no earlier than 2026-03-14 | RGA -FINISHING | 7806242 |
| 3697 | 40100.40200.40700.53000.55400.59700.237300.2281300 | FIRE FIGHTING | 10d | 2026-03-14 | 2026-03-23 | 3380FS-5d |  | RGA -FINISHING | 7840352 |
| 3698 | 40100.40200.40700.53000.55400.59700.237300.2281400 | LIFT BLOCK WORK | 3d | 2026-09-26 | 2026-09-28 | 3690SS |  | RGA -FINISHING | 7840362 |
| 3699 | 40100.40200.40700.53000.55400.59700.237300.2281500 | LIFT DADO WORK | 10d | 2026-12-12 | 2026-12-21 | 3691SS |  | RGA -FINISHING | 7840372 |
| 3700 | 40100.40200.40700.53000.55400.59700.237300.2281600 | LOBBY FLOORING WORK | 10d | 2026-12-22 | 2026-12-31 | 3699 |  | RGA -FINISHING | 7840382 |
| 3701 | 40100.40200.40700.53000.55400.59700.237300.2281700 | ELECTRICAL WIRING & SWITCH PLATE FIXING WORK | 6d | 2027-01-01 | 2027-01-06 | 3700 |  | RGA -FINISHING | 7840392 |
| 3702 | 40100.40200.40700.53000.55400.59700.237300.2281800 | False ceiling & 1ST COAT PAINTING | 15d | 2027-01-07 | 2027-01-21 | 3701 |  | RGA -FINISHING | 7840402 |
| 3703 | 40100.40200.40700.53000.55400.59700.237300.2281900 | CLEANING | 3d | 2027-01-22 | 2027-01-24 | 3702 |  | RGA -FINISHING | 7840412 |
| 3704 | 40100.40200.40700.53000.55400.59700.237400 | **5th FLOOR** | 308d | 2026-03-23 | 2027-01-24 |  | start no earlier than 2026-03-23 | RGA -FINISHING | 7806252 |
| 3705 | 40100.40200.40700.53000.55400.59700.237400.2282000 | FIRE FIGHTING | 10d | 2026-03-23 | 2026-04-01 | 3393FS-5d |  | RGA -FINISHING | 7840422 |
| 3706 | 40100.40200.40700.53000.55400.59700.237400.2282100 | LIFT BLOCK WORK | 3d | 2026-09-26 | 2026-09-28 | 3698SS |  | RGA -FINISHING | 7840432 |
| 3707 | 40100.40200.40700.53000.55400.59700.237400.2282200 | LIFT DADO WORK | 10d | 2026-12-12 | 2026-12-21 | 3699SS |  | RGA -FINISHING | 7840442 |
| 3708 | 40100.40200.40700.53000.55400.59700.237400.2282300 | LOBBY FLOORING WORK | 10d | 2026-12-22 | 2026-12-31 | 3707 |  | RGA -FINISHING | 7840452 |
| 3709 | 40100.40200.40700.53000.55400.59700.237400.2282400 | ELECTRICAL WIRING & SWITCH PLATE FIXING WORK | 6d | 2027-01-01 | 2027-01-06 | 3708 |  | RGA -FINISHING | 7840462 |
| 3710 | 40100.40200.40700.53000.55400.59700.237400.2282500 | False ceiling & 1ST COAT PAINTING | 15d | 2027-01-07 | 2027-01-21 | 3709 |  | RGA -FINISHING | 7840472 |
| 3711 | 40100.40200.40700.53000.55400.59700.237400.2282600 | CLEANING | 3d | 2027-01-22 | 2027-01-24 | 3710 |  | RGA -FINISHING | 7840482 |

Notes:
- 3689: Assumed
- 3697: Assumed
- 3705: Assumed

| ID | WBS | Task | Duration | Start | Finish | Predecessors | Constraint | Calendar | Unique_Task_ID |
| --- | --- | --- | --- | --- | --- | --- | --- | --- | --- |
| 3712 | 40100.40200.40700.53000.55400.59700.237500 | **6th FLOOR** | 309d | 2026-04-01 | 2027-02-03 |  | start no earlier than 2026-04-01 | RGA -FINISHING | 7806262 |
| 3713 | 40100.40200.40700.53000.55400.59700.237500.2282700 | FIRE FIGHTING | 10d | 2026-04-01 | 2026-04-10 | 3406FS-5d |  | RGA -FINISHING | 7840492 |
| 3714 | 40100.40200.40700.53000.55400.59700.237500.2282800 | LIFT BLOCK WORK | 3d | 2026-09-29 | 2026-10-01 | 3706 |  | RGA -FINISHING | 7840502 |
| 3715 | 40100.40200.40700.53000.55400.59700.237500.2282900 | LIFT DADO WORK | 10d | 2026-12-22 | 2026-12-31 | 3707 |  | RGA -FINISHING | 7840512 |
| 3716 | 40100.40200.40700.53000.55400.59700.237500.2283000 | LOBBY FLOORING WORK | 10d | 2027-01-01 | 2027-01-10 | 3715 |  | RGA -FINISHING | 7840522 |
| 3717 | 40100.40200.40700.53000.55400.59700.237500.2283100 | ELECTRICAL WIRING & SWITCH PLATE FIXING WORK | 6d | 2027-01-11 | 2027-01-16 | 3716 |  | RGA -FINISHING | 7840532 |
| 3718 | 40100.40200.40700.53000.55400.59700.237500.2283200 | False ceiling & 1ST COAT PAINTING | 15d | 2027-01-17 | 2027-01-31 | 3717 |  | RGA -FINISHING | 7840542 |
| 3719 | 40100.40200.40700.53000.55400.59700.237500.2283300 | CLEANING | 3d | 2027-02-01 | 2027-02-03 | 3718 |  | RGA -FINISHING | 7840552 |
| 3720 | 40100.40200.40700.53000.55400.59700.237600 | **7th FLOOR** | 300d | 2026-04-10 | 2027-02-03 |  | start no earlier than 2026-04-10 | RGA -FINISHING | 7806272 |
| 3721 | 40100.40200.40700.53000.55400.59700.237600.2283400 | FIRE FIGHTING | 10d | 2026-04-10 | 2026-04-19 | 3419FS-5d |  | RGA -FINISHING | 7840562 |
| 3722 | 40100.40200.40700.53000.55400.59700.237600.2283500 | LIFT BLOCK WORK | 3d | 2026-09-29 | 2026-10-01 | 3714SS |  | RGA -FINISHING | 7840572 |
| 3723 | 40100.40200.40700.53000.55400.59700.237600.2283600 | LIFT DADO WORK | 10d | 2026-12-22 | 2026-12-31 | 3715SS |  | RGA -FINISHING | 7840582 |
| 3724 | 40100.40200.40700.53000.55400.59700.237600.2283700 | LOBBY FLOORING WORK | 10d | 2027-01-01 | 2027-01-10 | 3723 |  | RGA -FINISHING | 7840592 |
| 3725 | 40100.40200.40700.53000.55400.59700.237600.2283800 | ELECTRICAL WIRING & SWITCH PLATE FIXING WORK | 6d | 2027-01-11 | 2027-01-16 | 3724 |  | RGA -FINISHING | 7840602 |
| 3726 | 40100.40200.40700.53000.55400.59700.237600.2283900 | False ceiling & 1ST COAT PAINTING | 15d | 2027-01-17 | 2027-01-31 | 3725 |  | RGA -FINISHING | 7840612 |
| 3727 | 40100.40200.40700.53000.55400.59700.237600.2284000 | CLEANING | 3d | 2027-02-01 | 2027-02-03 | 3726 |  | RGA -FINISHING | 7840622 |
| 3728 | 40100.40200.40700.53000.55400.59700.237700 | **8th FLOOR** | 291d | 2026-04-19 | 2027-02-03 |  | start no earlier than 2026-04-19 | RGA -FINISHING | 7806282 |
| 3729 | 40100.40200.40700.53000.55400.59700.237700.2284100 | FIRE FIGHTING | 10d | 2026-04-19 | 2026-04-28 | 3432FS-5d |  | RGA -FINISHING | 7840632 |
| 3730 | 40100.40200.40700.53000.55400.59700.237700.2284200 | LIFT BLOCK WORK | 3d | 2026-09-29 | 2026-10-01 | 3722SS |  | RGA -FINISHING | 7840642 |
| 3731 | 40100.40200.40700.53000.55400.59700.237700.2284300 | LIFT DADO WORK | 10d | 2026-12-22 | 2026-12-31 | 3723SS |  | RGA -FINISHING | 7840652 |
| 3732 | 40100.40200.40700.53000.55400.59700.237700.2284400 | LOBBY FLOORING WORK | 10d | 2027-01-01 | 2027-01-10 | 3731 |  | RGA -FINISHING | 7840662 |
| 3733 | 40100.40200.40700.53000.55400.59700.237700.2284500 | ELECTRICAL WIRING & SWITCH PLATE FIXING WORK | 6d | 2027-01-11 | 2027-01-16 | 3732 |  | RGA -FINISHING | 7840672 |
| 3734 | 40100.40200.40700.53000.55400.59700.237700.2284600 | False ceiling & 1ST COAT PAINTING | 15d | 2027-01-17 | 2027-01-31 | 3733 |  | RGA -FINISHING | 7840682 |
| 3735 | 40100.40200.40700.53000.55400.59700.237700.2284700 | CLEANING | 3d | 2027-02-01 | 2027-02-03 | 3734 |  | RGA -FINISHING | 7840692 |

Notes:
- 3713: Assumed
- 3721: Assumed
- 3729: Assumed

| ID | WBS | Task | Duration | Start | Finish | Predecessors | Constraint | Calendar | Unique_Task_ID |
| --- | --- | --- | --- | --- | --- | --- | --- | --- | --- |
| 3736 | 40100.40200.40700.53000.55400.59700.237800 | **9th FLOOR** | 282d | 2026-04-28 | 2027-02-03 |  | start no earlier than 2026-04-28 | RGA -FINISHING | 7806292 |
| 3737 | 40100.40200.40700.53000.55400.59700.237800.2284800 | FIRE FIGHTING | 10d | 2026-04-28 | 2026-05-07 | 3445FS-5d |  | RGA -FINISHING | 7840702 |
| 3738 | 40100.40200.40700.53000.55400.59700.237800.2284900 | LIFT BLOCK WORK | 3d | 2026-09-29 | 2026-10-01 | 3730SS |  | RGA -FINISHING | 7840712 |
| 3739 | 40100.40200.40700.53000.55400.59700.237800.2285000 | LIFT DADO WORK | 10d | 2026-12-22 | 2026-12-31 | 3731SS |  | RGA -FINISHING | 7840722 |
| 3740 | 40100.40200.40700.53000.55400.59700.237800.2285100 | LOBBY FLOORING WORK | 10d | 2027-01-01 | 2027-01-10 | 3739 |  | RGA -FINISHING | 7840732 |
| 3741 | 40100.40200.40700.53000.55400.59700.237800.2285200 | ELECTRICAL WIRING & SWITCH PLATE FIXING WORK | 6d | 2027-01-11 | 2027-01-16 | 3740 |  | RGA -FINISHING | 7840742 |
| 3742 | 40100.40200.40700.53000.55400.59700.237800.2285300 | False ceiling & 1ST COAT PAINTING | 15d | 2027-01-17 | 2027-01-31 | 3741 |  | RGA -FINISHING | 7840752 |
| 3743 | 40100.40200.40700.53000.55400.59700.237800.2285400 | CLEANING | 3d | 2027-02-01 | 2027-02-03 | 3742 |  | RGA -FINISHING | 7840762 |
| 3744 | 40100.40200.40700.53000.55400.59700.237900 | **10th FLOOR** | 283d | 2026-05-07 | 2027-02-13 |  | start no earlier than 2026-05-07 | RGA -FINISHING | 7806302 |
| 3745 | 40100.40200.40700.53000.55400.59700.237900.2285500 | FIRE FIGHTING | 10d | 2026-05-07 | 2026-05-16 | 3458FS-5d |  | RGA -FINISHING | 7840772 |
| 3746 | 40100.40200.40700.53000.55400.59700.237900.2285600 | LIFT BLOCK WORK | 3d | 2026-10-02 | 2026-10-04 | 3738 |  | RGA -FINISHING | 7840782 |
| 3747 | 40100.40200.40700.53000.55400.59700.237900.2285700 | LIFT DADO WORK | 10d | 2027-01-01 | 2027-01-10 | 3739 |  | RGA -FINISHING | 7840792 |
| 3748 | 40100.40200.40700.53000.55400.59700.237900.2285800 | LOBBY FLOORING WORK | 10d | 2027-01-11 | 2027-01-20 | 3747 |  | RGA -FINISHING | 7840802 |
| 3749 | 40100.40200.40700.53000.55400.59700.237900.2285900 | ELECTRICAL WIRING & SWITCH PLATE FIXING WORK | 6d | 2027-01-21 | 2027-01-26 | 3748 |  | RGA -FINISHING | 7840812 |
| 3750 | 40100.40200.40700.53000.55400.59700.237900.2286000 | False ceiling & 1ST COAT PAINTING | 15d | 2027-01-27 | 2027-02-10 | 3749 |  | RGA -FINISHING | 7840822 |
| 3751 | 40100.40200.40700.53000.55400.59700.237900.2286100 | CLEANING | 3d | 2027-02-11 | 2027-02-13 | 3750 |  | RGA -FINISHING | 7840832 |
| 3752 | 40100.40200.40700.53000.55400.59700.238000 | **11th FLOOR** | 273d | 2026-05-17 | 2027-02-13 |  | start no earlier than 2026-05-17 | RGA -FINISHING | 7806312 |
| 3753 | 40100.40200.40700.53000.55400.59700.238000.2286200 | FIRE FIGHTING | 10d | 2026-05-17 | 2026-05-26 | 3471FS-5d |  | RGA -FINISHING | 7840842 |
| 3754 | 40100.40200.40700.53000.55400.59700.238000.2286300 | LIFT BLOCK WORK | 3d | 2026-10-02 | 2026-10-04 | 3746SS |  | RGA -FINISHING | 7840852 |
| 3755 | 40100.40200.40700.53000.55400.59700.238000.2286400 | LIFT DADO WORK | 10d | 2027-01-01 | 2027-01-10 | 3747SS |  | RGA -FINISHING | 7840862 |
| 3756 | 40100.40200.40700.53000.55400.59700.238000.2286500 | LOBBY FLOORING WORK | 10d | 2027-01-11 | 2027-01-20 | 3755 |  | RGA -FINISHING | 7840872 |
| 3757 | 40100.40200.40700.53000.55400.59700.238000.2286600 | ELECTRICAL WIRING & SWITCH PLATE FIXING WORK | 6d | 2027-01-21 | 2027-01-26 | 3756 |  | RGA -FINISHING | 7840882 |
| 3758 | 40100.40200.40700.53000.55400.59700.238000.2286700 | False ceiling & 1ST COAT PAINTING | 15d | 2027-01-27 | 2027-02-10 | 3757 |  | RGA -FINISHING | 7840892 |
| 3759 | 40100.40200.40700.53000.55400.59700.238000.2286800 | CLEANING | 3d | 2027-02-11 | 2027-02-13 | 3758 |  | RGA -FINISHING | 7840902 |

Notes:
- 3737: Assumed
- 3745: Assumed
- 3753: Assumed

| ID | WBS | Task | Duration | Start | Finish | Predecessors | Constraint | Calendar | Unique_Task_ID |
| --- | --- | --- | --- | --- | --- | --- | --- | --- | --- |
| 3760 | 40100.40200.40700.53000.55400.59700.238100 | **12th FLOOR** | 261d | 2026-05-29 | 2027-02-13 |  | start no earlier than 2026-05-29 | RGA -FINISHING | 7806322 |
| 3761 | 40100.40200.40700.53000.55400.59700.238100.2286900 | FIRE FIGHTING | 10d | 2026-05-29 | 2026-06-07 | 3484FS-5d |  | RGA -FINISHING | 7840912 |
| 3762 | 40100.40200.40700.53000.55400.59700.238100.2287000 | LIFT BLOCK WORK | 3d | 2026-10-02 | 2026-10-04 | 3754SS |  | RGA -FINISHING | 7840922 |
| 3763 | 40100.40200.40700.53000.55400.59700.238100.2287100 | LIFT DADO WORK | 10d | 2027-01-01 | 2027-01-10 | 3755SS |  | RGA -FINISHING | 7840932 |
| 3764 | 40100.40200.40700.53000.55400.59700.238100.2287200 | LOBBY FLOORING WORK | 10d | 2027-01-11 | 2027-01-20 | 3763 |  | RGA -FINISHING | 7840942 |
| 3765 | 40100.40200.40700.53000.55400.59700.238100.2287300 | ELECTRICAL WIRING & SWITCH PLATE FIXING WORK | 6d | 2027-01-21 | 2027-01-26 | 3764 |  | RGA -FINISHING | 7840952 |
| 3766 | 40100.40200.40700.53000.55400.59700.238100.2287400 | False ceiling & 1ST COAT PAINTING | 15d | 2027-01-27 | 2027-02-10 | 3765 |  | RGA -FINISHING | 7840962 |
| 3767 | 40100.40200.40700.53000.55400.59700.238100.2287500 | CLEANING | 3d | 2027-02-11 | 2027-02-13 | 3766 |  | RGA -FINISHING | 7840972 |
| 3768 | 40100.40200.40700.53000.55400.59700.238200 | **13th FLOOR** | 246d | 2026-06-13 | 2027-02-13 |  | start no earlier than 2026-06-13 | RGA -FINISHING | 7806332 |
| 3769 | 40100.40200.40700.53000.55400.59700.238200.2287600 | FIRE FIGHTING | 10d | 2026-06-13 | 2026-06-22 | 3497FS-5d |  | RGA -FINISHING | 7840982 |
| 3770 | 40100.40200.40700.53000.55400.59700.238200.2287700 | LIFT BLOCK WORK | 3d | 2026-10-02 | 2026-10-04 | 3762SS |  | RGA -FINISHING | 7840992 |
| 3771 | 40100.40200.40700.53000.55400.59700.238200.2287800 | LIFT DADO WORK | 10d | 2027-01-01 | 2027-01-10 | 3763SS |  | RGA -FINISHING | 7841002 |
| 3772 | 40100.40200.40700.53000.55400.59700.238200.2287900 | LOBBY FLOORING WORK | 10d | 2027-01-11 | 2027-01-20 | 3771 |  | RGA -FINISHING | 7841012 |
| 3773 | 40100.40200.40700.53000.55400.59700.238200.2288000 | ELECTRICAL WIRING & SWITCH PLATE FIXING WORK | 6d | 2027-01-21 | 2027-01-26 | 3772 |  | RGA -FINISHING | 7841022 |
| 3774 | 40100.40200.40700.53000.55400.59700.238200.2288100 | False ceiling & 1ST COAT PAINTING | 15d | 2027-01-27 | 2027-02-10 | 3773 |  | RGA -FINISHING | 7841032 |
| 3775 | 40100.40200.40700.53000.55400.59700.238200.2288200 | CLEANING | 3d | 2027-02-11 | 2027-02-13 | 3774 |  | RGA -FINISHING | 7841042 |
| 3776 | 40100.40200.40700.53000.55400.59700.238300 | **14th FLOOR** | 251d | 2026-06-18 | 2027-02-23 |  | start no earlier than 2026-06-18 | RGA -FINISHING | 7806342 |
| 3777 | 40100.40200.40700.53000.55400.59700.238300.2288300 | FIRE FIGHTING | 10d | 2026-06-18 | 2026-06-27 | 3510FS-5d |  | RGA -FINISHING | 7841052 |
| 3778 | 40100.40200.40700.53000.55400.59700.238300.2288400 | LIFT BLOCK WORK | 3d | 2026-10-05 | 2026-10-07 | 3770 |  | RGA -FINISHING | 7841062 |
| 3779 | 40100.40200.40700.53000.55400.59700.238300.2288500 | LIFT DADO WORK | 10d | 2027-01-11 | 2027-01-20 | 3771 |  | RGA -FINISHING | 7841072 |
| 3780 | 40100.40200.40700.53000.55400.59700.238300.2288600 | LOBBY FLOORING WORK | 10d | 2027-01-21 | 2027-01-30 | 3779 |  | RGA -FINISHING | 7841082 |
| 3781 | 40100.40200.40700.53000.55400.59700.238300.2288700 | ELECTRICAL WIRING & SWITCH PLATE FIXING WORK | 6d | 2027-01-31 | 2027-02-05 | 3780 |  | RGA -FINISHING | 7841092 |
| 3782 | 40100.40200.40700.53000.55400.59700.238300.2288800 | False ceiling & 1ST COAT PAINTING | 15d | 2027-02-06 | 2027-02-20 | 3781 |  | RGA -FINISHING | 7841102 |
| 3783 | 40100.40200.40700.53000.55400.59700.238300.2288900 | CLEANING | 3d | 2027-02-21 | 2027-02-23 | 3782 |  | RGA -FINISHING | 7841112 |

Notes:
- 3761: Assumed
- 3769: Assumed
- 3777: Assumed

| ID | WBS | Task | Duration | Start | Finish | Predecessors | Constraint | Calendar | Unique_Task_ID |
| --- | --- | --- | --- | --- | --- | --- | --- | --- | --- |
| 3784 | 40100.40200.40700.53000.55400.59700.238400 | **15th FLOOR** | 245d | 2026-06-24 | 2027-02-23 |  | start no earlier than 2026-06-24 | RGA -FINISHING | 7806352 |
| 3785 | 40100.40200.40700.53000.55400.59700.238400.2289000 | FIRE FIGHTING | 10d | 2026-06-24 | 2026-07-03 | 3523FS-5d |  | RGA -FINISHING | 7841122 |
| 3786 | 40100.40200.40700.53000.55400.59700.238400.2289100 | LIFT BLOCK WORK | 3d | 2026-10-05 | 2026-10-07 | 3778SS |  | RGA -FINISHING | 7841132 |
| 3787 | 40100.40200.40700.53000.55400.59700.238400.2289200 | LIFT DADO WORK | 10d | 2027-01-11 | 2027-01-20 | 3779SS |  | RGA -FINISHING | 7841142 |
| 3788 | 40100.40200.40700.53000.55400.59700.238400.2289300 | LOBBY FLOORING WORK | 10d | 2027-01-21 | 2027-01-30 | 3787 |  | RGA -FINISHING | 7841152 |
| 3789 | 40100.40200.40700.53000.55400.59700.238400.2289400 | ELECTRICAL WIRING & SWITCH PLATE FIXING WORK | 6d | 2027-01-31 | 2027-02-05 | 3788 |  | RGA -FINISHING | 7841162 |
| 3790 | 40100.40200.40700.53000.55400.59700.238400.2289500 | False ceiling & 1ST COAT PAINTING | 15d | 2027-02-06 | 2027-02-20 | 3789 |  | RGA -FINISHING | 7841172 |
| 3791 | 40100.40200.40700.53000.55400.59700.238400.2289600 | CLEANING | 3d | 2027-02-21 | 2027-02-23 | 3790 |  | RGA -FINISHING | 7841182 |
| 3792 | 40100.40200.40700.53000.55400.59700.238500 | **16th FLOOR** | 233d | 2026-07-06 | 2027-02-23 |  | start no earlier than 2026-07-06 | RGA -FINISHING | 7806362 |
| 3793 | 40100.40200.40700.53000.55400.59700.238500.2289700 | FIRE FIGHTING | 10d | 2026-07-06 | 2026-07-15 | 3536FS-5d |  | RGA -FINISHING | 7841192 |
| 3794 | 40100.40200.40700.53000.55400.59700.238500.2289800 | LIFT BLOCK WORK | 3d | 2026-10-05 | 2026-10-07 | 3786SS |  | RGA -FINISHING | 7841202 |
| 3795 | 40100.40200.40700.53000.55400.59700.238500.2289900 | LIFT DADO WORK | 10d | 2027-01-11 | 2027-01-20 | 3787SS |  | RGA -FINISHING | 7841212 |
| 3796 | 40100.40200.40700.53000.55400.59700.238500.2290000 | LOBBY FLOORING WORK | 10d | 2027-01-21 | 2027-01-30 | 3795 |  | RGA -FINISHING | 7841222 |
| 3797 | 40100.40200.40700.53000.55400.59700.238500.2290100 | ELECTRICAL WIRING & SWITCH PLATE FIXING WORK | 6d | 2027-01-31 | 2027-02-05 | 3796 |  | RGA -FINISHING | 7841232 |
| 3798 | 40100.40200.40700.53000.55400.59700.238500.2290200 | False ceiling & 1ST COAT PAINTING | 15d | 2027-02-06 | 2027-02-20 | 3797 |  | RGA -FINISHING | 7841242 |
| 3799 | 40100.40200.40700.53000.55400.59700.238500.2290300 | CLEANING | 3d | 2027-02-21 | 2027-02-23 | 3798 |  | RGA -FINISHING | 7841252 |
| 3800 | 40100.40200.40700.53000.55400.59700.238600 | **17th FLOOR** | 210d | 2026-07-29 | 2027-02-23 |  | start no earlier than 2026-07-29 | RGA -FINISHING | 7806372 |
| 3801 | 40100.40200.40700.53000.55400.59700.238600.2290400 | FIRE FIGHTING | 10d | 2026-07-29 | 2026-08-07 | 3549FS-5d |  | RGA -FINISHING | 7841262 |
| 3802 | 40100.40200.40700.53000.55400.59700.238600.2290500 | LIFT BLOCK WORK | 3d | 2026-10-05 | 2026-10-07 | 3794SS |  | RGA -FINISHING | 7841272 |
| 3803 | 40100.40200.40700.53000.55400.59700.238600.2290600 | LIFT DADO WORK | 10d | 2027-01-11 | 2027-01-20 | 3795SS |  | RGA -FINISHING | 7841282 |
| 3804 | 40100.40200.40700.53000.55400.59700.238600.2290700 | LOBBY FLOORING WORK | 10d | 2027-01-21 | 2027-01-30 | 3803 |  | RGA -FINISHING | 7841292 |
| 3805 | 40100.40200.40700.53000.55400.59700.238600.2290800 | ELECTRICAL WIRING & SWITCH PLATE FIXING WORK | 6d | 2027-01-31 | 2027-02-05 | 3804 |  | RGA -FINISHING | 7841302 |
| 3806 | 40100.40200.40700.53000.55400.59700.238600.2290900 | False ceiling & 1ST COAT PAINTING | 15d | 2027-02-06 | 2027-02-20 | 3805 |  | RGA -FINISHING | 7841312 |
| 3807 | 40100.40200.40700.53000.55400.59700.238600.2291000 | CLEANING | 3d | 2027-02-21 | 2027-02-23 | 3806 |  | RGA -FINISHING | 7841322 |

Notes:
- 3785: Assumed
- 3793: Assumed
- 3801: Assumed

| ID | WBS | Task | Duration | Start | Finish | Predecessors | Constraint | Calendar | Unique_Task_ID |
| --- | --- | --- | --- | --- | --- | --- | --- | --- | --- |
| 3808 | 40100.40200.40700.53000.55400.59700.238700 | **18th FLOOR** | 212d | 2026-08-06 | 2027-03-05 |  | start no earlier than 2026-08-06 | RGA -FINISHING | 7806382 |
| 3809 | 40100.40200.40700.53000.55400.59700.238700.2291100 | FIRE FIGHTING | 10d | 2026-08-06 | 2026-08-15 | 3562FS-5d |  | RGA -FINISHING | 7841332 |
| 3810 | 40100.40200.40700.53000.55400.59700.238700.2291200 | LIFT BLOCK WORK | 3d | 2026-10-08 | 2026-10-10 | 3802 |  | RGA -FINISHING | 7841342 |
| 3811 | 40100.40200.40700.53000.55400.59700.238700.2291300 | LIFT DADO WORK | 10d | 2027-01-21 | 2027-01-30 | 3803 |  | RGA -FINISHING | 7841352 |
| 3812 | 40100.40200.40700.53000.55400.59700.238700.2291400 | LOBBY FLOORING WORK | 10d | 2027-01-31 | 2027-02-09 | 3811 |  | RGA -FINISHING | 7841362 |
| 3813 | 40100.40200.40700.53000.55400.59700.238700.2291500 | ELECTRICAL WIRING & SWITCH PLATE FIXING WORK | 6d | 2027-02-10 | 2027-02-15 | 3812 |  | RGA -FINISHING | 7841372 |
| 3814 | 40100.40200.40700.53000.55400.59700.238700.2291600 | False ceiling & 1ST COAT PAINTING | 15d | 2027-02-16 | 2027-03-02 | 3813 |  | RGA -FINISHING | 7841382 |
| 3815 | 40100.40200.40700.53000.55400.59700.238700.2291700 | CLEANING | 3d | 2027-03-03 | 2027-03-05 | 3814 |  | RGA -FINISHING | 7841392 |
| 3816 | 40100.40200.40700.53000.55400.59700.238800 | **19th FLOOR** | 204d | 2026-08-14 | 2027-03-05 |  | start no earlier than 2026-08-14 | RGA -FINISHING | 7806392 |
| 3817 | 40100.40200.40700.53000.55400.59700.238800.2291800 | FIRE FIGHTING | 10d | 2026-08-14 | 2026-08-23 | 3575FS-5d |  | RGA -FINISHING | 7841402 |
| 3818 | 40100.40200.40700.53000.55400.59700.238800.2291900 | LIFT BLOCK WORK | 3d | 2026-10-08 | 2026-10-10 | 3810SS |  | RGA -FINISHING | 7841412 |
| 3819 | 40100.40200.40700.53000.55400.59700.238800.2292000 | LIFT DADO WORK | 10d | 2027-01-21 | 2027-01-30 | 3811SS |  | RGA -FINISHING | 7841422 |
| 3820 | 40100.40200.40700.53000.55400.59700.238800.2292100 | LOBBY FLOORING WORK | 10d | 2027-01-31 | 2027-02-09 | 3819 |  | RGA -FINISHING | 7841432 |
| 3821 | 40100.40200.40700.53000.55400.59700.238800.2292200 | ELECTRICAL WIRING & SWITCH PLATE FIXING WORK | 6d | 2027-02-10 | 2027-02-15 | 3820 |  | RGA -FINISHING | 7841442 |
| 3822 | 40100.40200.40700.53000.55400.59700.238800.2292300 | False ceiling & 1ST COAT PAINTING | 15d | 2027-02-16 | 2027-03-02 | 3821 |  | RGA -FINISHING | 7841452 |
| 3823 | 40100.40200.40700.53000.55400.59700.238800.2292400 | CLEANING | 3d | 2027-03-03 | 2027-03-05 | 3822 |  | RGA -FINISHING | 7841462 |
| 3824 | 40100.40200.40700.53000.55400.59700.238900 | **20th FLOOR** | 196d | 2026-08-22 | 2027-03-05 |  | start no earlier than 2026-08-22 | RGA -FINISHING | 7806402 |
| 3825 | 40100.40200.40700.53000.55400.59700.238900.2292500 | FIRE FIGHTING | 10d | 2026-08-22 | 2026-08-31 | 3588FS-5d |  | RGA -FINISHING | 7841472 |
| 3826 | 40100.40200.40700.53000.55400.59700.238900.2292600 | LIFT BLOCK WORK | 3d | 2026-10-08 | 2026-10-10 | 3818SS |  | RGA -FINISHING | 7841482 |
| 3827 | 40100.40200.40700.53000.55400.59700.238900.2292700 | LIFT DADO WORK | 10d | 2027-01-21 | 2027-01-30 | 3819SS |  | RGA -FINISHING | 7841492 |
| 3828 | 40100.40200.40700.53000.55400.59700.238900.2292800 | LOBBY FLOORING WORK | 10d | 2027-01-31 | 2027-02-09 | 3827 |  | RGA -FINISHING | 7841502 |
| 3829 | 40100.40200.40700.53000.55400.59700.238900.2292900 | ELECTRICAL WIRING & SWITCH PLATE FIXING WORK | 6d | 2027-02-10 | 2027-02-15 | 3828 |  | RGA -FINISHING | 7841512 |
| 3830 | 40100.40200.40700.53000.55400.59700.238900.2293000 | False ceiling & 1ST COAT PAINTING | 15d | 2027-02-16 | 2027-03-02 | 3829 |  | RGA -FINISHING | 7841522 |
| 3831 | 40100.40200.40700.53000.55400.59700.238900.2293100 | CLEANING | 3d | 2027-03-03 | 2027-03-05 | 3830 |  | RGA -FINISHING | 7841532 |

Notes:
- 3809: Assumed
- 3817: Assumed
- 3825: Assumed

| ID | WBS | Task | Duration | Start | Finish | Predecessors | Constraint | Calendar | Unique_Task_ID |
| --- | --- | --- | --- | --- | --- | --- | --- | --- | --- |
| 3832 | 40100.40200.40700.53000.55400.59700.239000 | **21th FLOOR** | 187d | 2026-08-31 | 2027-03-05 |  | start no earlier than 2026-08-31 | RGA -FINISHING | 7806412 |
| 3833 | 40100.40200.40700.53000.55400.59700.239000.2293200 | FIRE FIGHTING | 10d | 2026-08-31 | 2026-09-09 | 3601FS-5d |  | RGA -FINISHING | 7841542 |
| 3834 | 40100.40200.40700.53000.55400.59700.239000.2293300 | LIFT BLOCK WORK | 3d | 2026-10-08 | 2026-10-10 | 3826SS |  | RGA -FINISHING | 7841552 |
| 3835 | 40100.40200.40700.53000.55400.59700.239000.2293400 | LIFT DADO WORK | 10d | 2027-01-21 | 2027-01-30 | 3827SS |  | RGA -FINISHING | 7841562 |
| 3836 | 40100.40200.40700.53000.55400.59700.239000.2293500 | LOBBY FLOORING WORK | 10d | 2027-01-31 | 2027-02-09 | 3835 |  | RGA -FINISHING | 7841572 |
| 3837 | 40100.40200.40700.53000.55400.59700.239000.2293600 | ELECTRICAL WIRING & SWITCH PLATE FIXING WORK | 6d | 2027-02-10 | 2027-02-15 | 3836 |  | RGA -FINISHING | 7841582 |
| 3838 | 40100.40200.40700.53000.55400.59700.239000.2293700 | False ceiling & 1ST COAT PAINTING | 15d | 2027-02-16 | 2027-03-02 | 3837 |  | RGA -FINISHING | 7841592 |
| 3839 | 40100.40200.40700.53000.55400.59700.239000.2293800 | CLEANING | 3d | 2027-03-03 | 2027-03-05 | 3838 |  | RGA -FINISHING | 7841602 |
| 3840 | 40100.40200.40700.53000.55400.59700.239100 | **22th FLOOR** | 189d | 2026-09-08 | 2027-03-15 |  | start no earlier than 2026-09-08 | RGA -FINISHING | 7806422 |
| 3841 | 40100.40200.40700.53000.55400.59700.239100.2293900 | FIRE FIGHTING | 10d | 2026-09-08 | 2026-09-17 | 3614FS-5d |  | RGA -FINISHING | 7841612 |
| 3842 | 40100.40200.40700.53000.55400.59700.239100.2294000 | LIFT BLOCK WORK | 3d | 2026-10-11 | 2026-10-13 | 3834 |  | RGA -FINISHING | 7841622 |
| 3843 | 40100.40200.40700.53000.55400.59700.239100.2294100 | LIFT DADO WORK | 10d | 2027-01-31 | 2027-02-09 | 3835 |  | RGA -FINISHING | 7841632 |
| 3844 | 40100.40200.40700.53000.55400.59700.239100.2294200 | LOBBY FLOORING WORK | 10d | 2027-02-10 | 2027-02-19 | 3843 |  | RGA -FINISHING | 7841642 |
| 3845 | 40100.40200.40700.53000.55400.59700.239100.2294300 | ELECTRICAL WIRING & SWITCH PLATE FIXING WORK | 6d | 2027-02-20 | 2027-02-25 | 3844 |  | RGA -FINISHING | 7841652 |
| 3846 | 40100.40200.40700.53000.55400.59700.239100.2294400 | False ceiling & 1ST COAT PAINTING | 15d | 2027-02-26 | 2027-03-12 | 3845 |  | RGA -FINISHING | 7841662 |
| 3847 | 40100.40200.40700.53000.55400.59700.239100.2294500 | CLEANING | 3d | 2027-03-13 | 2027-03-15 | 3846 |  | RGA -FINISHING | 7841672 |
| 3848 | 40100.40200.40700.53000.55400.59700.239200 | **23th FLOOR** | 180d | 2026-09-17 | 2027-03-15 |  | start no earlier than 2026-09-17 | RGA -FINISHING | 7806432 |
| 3849 | 40100.40200.40700.53000.55400.59700.239200.2294600 | FIRE FIGHTING | 10d | 2026-09-17 | 2026-09-26 | 3627FS-5d |  | RGA -FINISHING | 7841682 |
| 3850 | 40100.40200.40700.53000.55400.59700.239200.2294700 | LIFT BLOCK WORK | 3d | 2026-10-11 | 2026-10-13 | 3842SS |  | RGA -FINISHING | 7841692 |
| 3851 | 40100.40200.40700.53000.55400.59700.239200.2294800 | LIFT DADO WORK | 10d | 2027-01-31 | 2027-02-09 | 3843SS |  | RGA -FINISHING | 7841702 |
| 3852 | 40100.40200.40700.53000.55400.59700.239200.2294900 | LOBBY FLOORING WORK | 10d | 2027-02-10 | 2027-02-19 | 3851 |  | RGA -FINISHING | 7841712 |
| 3853 | 40100.40200.40700.53000.55400.59700.239200.2295000 | ELECTRICAL WIRING & SWITCH PLATE FIXING WORK | 6d | 2027-02-20 | 2027-02-25 | 3852 |  | RGA -FINISHING | 7841722 |
| 3854 | 40100.40200.40700.53000.55400.59700.239200.2295100 | False ceiling & 1ST COAT PAINTING | 15d | 2027-02-26 | 2027-03-12 | 3853 |  | RGA -FINISHING | 7841732 |
| 3855 | 40100.40200.40700.53000.55400.59700.239200.2295200 | CLEANING | 3d | 2027-03-13 | 2027-03-15 | 3854 |  | RGA -FINISHING | 7841742 |

Notes:
- 3833: Assumed
- 3841: Assumed
- 3849: Assumed

| ID | WBS | Task | Duration | Start | Finish | Predecessors | Constraint | Calendar | Unique_Task_ID |
| --- | --- | --- | --- | --- | --- | --- | --- | --- | --- |
| 3856 | 40100.40200.40700.53000.55400.59700.239300 | **24th FLOOR** | 171d | 2026-09-26 | 2027-03-15 |  | start no earlier than 2026-09-26 | RGA -FINISHING | 7806442 |
| 3857 | 40100.40200.40700.53000.55400.59700.239300.2295300 | FIRE FIGHTING | 10d | 2026-09-26 | 2026-10-05 | 3640FS-5d |  | RGA -FINISHING | 7841752 |
| 3858 | 40100.40200.40700.53000.55400.59700.239300.2295400 | LIFT BLOCK WORK | 3d | 2026-10-11 | 2026-10-13 | 3850SS |  | RGA -FINISHING | 7841762 |
| 3859 | 40100.40200.40700.53000.55400.59700.239300.2295500 | LIFT DADO WORK | 10d | 2027-01-31 | 2027-02-09 | 3851SS |  | RGA -FINISHING | 7841772 |
| 3860 | 40100.40200.40700.53000.55400.59700.239300.2295600 | LOBBY FLOORING WORK | 10d | 2027-02-10 | 2027-02-19 | 3859 |  | RGA -FINISHING | 7841782 |
| 3861 | 40100.40200.40700.53000.55400.59700.239300.2295700 | ELECTRICAL WIRING & SWITCH PLATE FIXING WORK | 6d | 2027-02-20 | 2027-02-25 | 3860 |  | RGA -FINISHING | 7841792 |
| 3862 | 40100.40200.40700.53000.55400.59700.239300.2295800 | False ceiling & 1ST COAT PAINTING | 15d | 2027-02-26 | 2027-03-12 | 3861 |  | RGA -FINISHING | 7841802 |
| 3863 | 40100.40200.40700.53000.55400.59700.239300.2295900 | CLEANING | 3d | 2027-03-13 | 2027-03-15 | 3862 |  | RGA -FINISHING | 7841812 |
| 3864 | 40100.40200.40700.53000.55400.59700.239400 | **25th FLOOR** | 192d | 2026-10-05 | 2027-04-14 |  | start no earlier than 2026-10-05 | RGA -FINISHING | 7806452 |
| 3865 | 40100.40200.40700.53000.55400.59700.239400.2296000 | FIRE FIGHTING | 10d | 2026-10-05 | 2026-10-14 | 3653FS-5d |  | RGA -FINISHING | 7841822 |
| 3866 | 40100.40200.40700.53000.55400.59700.239400.2296100 | LIFT BLOCK WORK | 3d | 2026-10-11 | 2026-10-13 | 3858SS |  | RGA -FINISHING | 7841832 |
| 3867 | 40100.40200.40700.53000.55400.59700.239400.2296200 | LIFT DADO WORK | 10d | 2027-01-31 | 2027-02-09 | 3859SS |  | RGA -FINISHING | 7841842 |
| 3868 | 40100.40200.40700.53000.55400.59700.239400.2296300 | LOBBY FLOORING WORK | 10d | 2027-03-12 | 2027-03-21 | 3867FS+30d |  | RGA -FINISHING | 7841852 |
| 3869 | 40100.40200.40700.53000.55400.59700.239400.2296400 | ELECTRICAL WIRING & SWITCH PLATE FIXING WORK | 6d | 2027-03-22 | 2027-03-27 | 3868 |  | RGA -FINISHING | 7841862 |
| 3870 | 40100.40200.40700.53000.55400.59700.239400.2296500 | False ceiling & 1ST COAT PAINTING | 15d | 2027-03-28 | 2027-04-11 | 3869 |  | RGA -FINISHING | 7841872 |
| 3871 | 40100.40200.40700.53000.55400.59700.239400.2296600 | CLEANING | 3d | 2027-04-12 | 2027-04-14 | 3870 |  | RGA -FINISHING | 7841882 |
| 3872 | 40100.40200.40700.53000.55400.162800 | **Common MEP Works** | 319d | 2026-10-25 | 2027-09-08 |  | start no earlier than 2026-10-25 | RGA -FINISHING | 7805262 |
| 3873 | 40100.40200.40700.53000.55400.162800.488200 | **Lift Works** | 111d | 2026-11-06 | 2027-02-24 |  | start no earlier than 2026-11-06 | RGA -FINISHING | 7811342 |
| 3874 | 40100.40200.40700.53000.55400.162800.488200.2296700 | Lift Shaft Handover | 30d | 2026-11-06 | 2026-12-05 | 3130 |  | RGA -FINISHING | 7842372 |
| 3875 | 40100.40200.40700.53000.55400.162800.488200.2296800 | Lift installation work | 80d | 2026-12-07 | 2027-02-24 | 3874FS+1d |  | RGA -FINISHING | 7842382 |
| 3876 | 40100.40200.40700.53000.55400.162800.488300 | **Plumbing works** | 98d | 2027-06-03 | 2027-09-08 |  | start no earlier than 2027-06-03 | RGA -FINISHING | 7811332 |
| 3877 | 40100.40200.40700.53000.55400.162800.488300.2296900 | Shaft Plumbing | 90d | 2027-06-11 | 2027-09-08 | 3323FS+45d |  | RGA -FINISHING | 7842392 |
| 3878 | 40100.40200.40700.53000.55400.162800.488300.2297000 | Terrace Looping | 90d | 2027-06-03 | 2027-08-31 | 3321 |  | RGA -FINISHING | 7842402 |
| 3879 | 40100.40200.40700.53000.55400.162800.488400 | **Fire Fighting works** | 75d | 2026-10-25 | 2027-01-07 |  | start no earlier than 2026-10-25 | RGA -FINISHING | 7811322 |
| 3880 | 40100.40200.40700.53000.55400.162800.488400.2297100 | Shaft Downtake works | 60d | 2026-10-25 | 2026-12-23 | 3125FS+21d |  | RGA -FINISHING | 7842412 |
| 3881 | 40100.40200.40700.53000.55400.162800.488400.2297200 | Connection to pump room | 15d | 2026-12-24 | 2027-01-07 | 3880 |  | RGA -FINISHING | 7842422 |

Notes:
- 3857: Assumed
- 3865: Assumed
- 3872: Completion in 12 months post last RCC

| ID | WBS | Task | Duration | Start | Finish | Predecessors | Constraint | Calendar | Unique_Task_ID |
| --- | --- | --- | --- | --- | --- | --- | --- | --- | --- |
| 3882 | 40100.40200.40700.53000.55400.162800.339800 | **Electrical works** | 220.5d | 2026-11-19 | 2027-06-27 |  | start no earlier than 2026-11-19 | RGA -FINISHING | 7808252 |
| 3883 | 40100.40200.40700.53000.55400.162800.339800.2297300 | Shaft cabling | 45d | 2026-11-19 | 2027-01-03 | 3120FS+57.5d |  | RGA -FINISHING | 7842432 |
| 3884 | 40100.40200.40700.53000.55400.162800.339800.2297400 | Meter room erection | 15d | 2027-05-29 | 2027-06-12 | 2983FS+210d |  | RGA -FINISHING | 7842442 |
| 3885 | 40100.40200.40700.53000.55400.162800.339800.2297500 | Panel erection | 15d | 2027-06-13 | 2027-06-27 | 3884 |  | RGA -FINISHING | 7842452 |
| 3886 | 40100.40200.40700.53000.55400.162800.339800.2297600 | DG Installtion | 10d | 2027-03-15 | 2027-03-24 | 3884FS-90d |  | RGA -FINISHING | 7842462 |
| 3887 | 40100.40200.40700.53000.55400.162800.339800.2297700 | Transformer erection | 15d | 2027-03-15 | 2027-03-29 | 3886SS |  | RGA -FINISHING | 7842472 |
| 3888 | 40100.40200.40700.352200 | **Capex Item Procurment** | 294d | 2026-06-24 | 2027-04-13 |  | start no earlier than 2026-06-24 | RGA -FINISHING | 7808722 |
| 3889 | 40100.40200.40700.352200.546100 | Lift Procurement & delivery | 30d | 2026-06-24 | 2026-07-23 | 3874SS-135d |  | RGA -FINISHING | 7814542 |
| 3890 | 40100.40200.40700.352200.546200 | Panels | 30d | 2027-03-15 | 2027-04-13 | 3885SS-90d |  | RGA -FINISHING | 7814552 |
| 3891 | 40100.40200.40700.352200.546300 | DG procurement | 30d | 2026-12-15 | 2027-01-13 | 3886SS-90d |  | RGA -FINISHING | 7814562 |
| 3892 | 40100.40200.40700.352200.546400 | Transformer | 30d | 2026-12-15 | 2027-01-13 | 3887SS-90d |  | RGA -FINISHING | 7814572 |
| 3893 | 40100.40200.40700.43300 | **Handing Over Activities** | 56d | 2027-07-24 | 2027-09-17 |  | start no earlier than 2027-07-24 | RGA -FINISHING | 7803232 |
| 3894 | 40100.40200.40700.43300.546500 | SOAP WASHING GROUND FLOOR | 1d | 2027-07-24 | 2027-07-24 | 3871FS+100d |  | RGA -FINISHING | 7814582 |
| 3895 | 40100.40200.40700.43300.546600 | SOAP WASHING L1 | 1d | 2027-07-25 | 2027-07-25 | 3894 |  | RGA -FINISHING | 7814592 |
| 3896 | 40100.40200.40700.43300.546700 | SOAP WASHING L2 | 1d | 2027-07-26 | 2027-07-26 | 3895 |  | RGA -FINISHING | 7814602 |
| 3897 | 40100.40200.40700.43300.546800 | SOAP WASHING L3 | 1d | 2027-07-27 | 2027-07-27 | 3896 |  | RGA -FINISHING | 7814612 |
| 3898 | 40100.40200.40700.43300.546900 | SOAP WASHING L4 | 1d | 2027-07-28 | 2027-07-28 | 3897 |  | RGA -FINISHING | 7814622 |
| 3899 | 40100.40200.40700.43300.547000 | SOAP WASHING L5 | 1d | 2027-07-29 | 2027-07-29 | 3898 |  | RGA -FINISHING | 7814632 |
| 3900 | 40100.40200.40700.43300.547100 | SOAP WASHING L6 | 1d | 2027-07-30 | 2027-07-30 | 3899 |  | RGA -FINISHING | 7814642 |
| 3901 | 40100.40200.40700.43300.547200 | SOAP WASHING L7 | 1d | 2027-07-31 | 2027-07-31 | 3900 |  | RGA -FINISHING | 7814652 |
| 3902 | 40100.40200.40700.43300.547300 | SOAP WASHING L8 | 1d | 2027-08-01 | 2027-08-01 | 3901 |  | RGA -FINISHING | 7814662 |
| 3903 | 40100.40200.40700.43300.547400 | SOAP WASHING L9 | 1d | 2027-08-02 | 2027-08-02 | 3902 |  | RGA -FINISHING | 7814672 |
| 3904 | 40100.40200.40700.43300.547500 | SOAP WASHING L10 | 1d | 2027-08-03 | 2027-08-03 | 3903 |  | RGA -FINISHING | 7814682 |
| 3905 | 40100.40200.40700.43300.547600 | SOAP WASHING L11 | 1d | 2027-08-04 | 2027-08-04 | 3904 |  | RGA -FINISHING | 7814692 |
| 3906 | 40100.40200.40700.43300.547700 | SOAP WASHING L12 | 1d | 2027-08-05 | 2027-08-05 | 3905 |  | RGA -FINISHING | 7814702 |
| 3907 | 40100.40200.40700.43300.547800 | SOAP WASHING L13 | 1d | 2027-08-06 | 2027-08-06 | 3906 |  | RGA -FINISHING | 7814712 |
| 3908 | 40100.40200.40700.43300.547900 | SOAP WASHING L14 | 1d | 2027-08-07 | 2027-08-07 | 3907 |  | RGA -FINISHING | 7814722 |
| 3909 | 40100.40200.40700.43300.548000 | SOAP WASHING L15 | 1d | 2027-08-08 | 2027-08-08 | 3908 |  | RGA -FINISHING | 7814732 |
| 3910 | 40100.40200.40700.43300.548100 | SOAP WASHING L16 | 1d | 2027-08-09 | 2027-08-09 | 3909 |  | RGA -FINISHING | 7814742 |
| 3911 | 40100.40200.40700.43300.548200 | SOAP WASHING L17 | 1d | 2027-08-10 | 2027-08-10 | 3910 |  | RGA -FINISHING | 7814752 |
| 3912 | 40100.40200.40700.43300.548300 | SOAP WASHING L18 | 1d | 2027-08-11 | 2027-08-11 | 3911 |  | RGA -FINISHING | 7814762 |
| 3913 | 40100.40200.40700.43300.548400 | SOAP WASHING L19 | 1d | 2027-08-12 | 2027-08-12 | 3912 |  | RGA -FINISHING | 7814772 |
| 3914 | 40100.40200.40700.43300.548500 | SOAP WASHING L20 | 1d | 2027-08-13 | 2027-08-13 | 3913 |  | RGA -FINISHING | 7814782 |
| 3915 | 40100.40200.40700.43300.548600 | SOAP WASHING L21 | 1d | 2027-08-14 | 2027-08-14 | 3914 |  | RGA -FINISHING | 7814792 |
| 3916 | 40100.40200.40700.43300.548700 | SOAP WASHING L22 | 1d | 2027-08-15 | 2027-08-15 | 3915 |  | RGA -FINISHING | 7814802 |
| 3917 | 40100.40200.40700.43300.548800 | SOAP WASHING L23 | 1d | 2027-08-16 | 2027-08-16 | 3916 |  | RGA -FINISHING | 7814812 |
| 3918 | 40100.40200.40700.43300.548900 | SOAP WASHING L24 | 1d | 2027-08-17 | 2027-08-17 | 3917 |  | RGA -FINISHING | 7814822 |
| 3919 | 40100.40200.40700.43300.549000 | SOAP WASHING L25 | 1d | 2027-08-18 | 2027-08-18 | 3918 |  | RGA -FINISHING | 7814832 |
| 3920 | 40100.40200.40700.43300.549100 | CP & SANITARYWARE FIXING Ground | 2d | 2027-07-26 | 2027-07-27 | 3895 |  | RGA -FINISHING | 7814862 |
| 3921 | 40100.40200.40700.43300.549200 | CP & SANITARYWARE FIXING L1 | 2d | 2027-07-28 | 2027-07-29 | 3920 |  | RGA -FINISHING | 7814872 |
| 3922 | 40100.40200.40700.43300.549300 | CP & SANITARYWARE FIXING L2 | 2d | 2027-07-30 | 2027-07-31 | 3921 |  | RGA -FINISHING | 7814882 |
| 3923 | 40100.40200.40700.43300.549400 | CP & SANITARYWARE FIXING L3 | 2d | 2027-08-01 | 2027-08-02 | 3922 |  | RGA -FINISHING | 7814892 |
| 3924 | 40100.40200.40700.43300.549500 | CP & SANITARYWARE FIXING L4 | 2d | 2027-08-03 | 2027-08-04 | 3923 |  | RGA -FINISHING | 7814902 |
| 3925 | 40100.40200.40700.43300.549600 | CP & SANITARYWARE FIXING L5 | 2d | 2027-08-05 | 2027-08-06 | 3924 |  | RGA -FINISHING | 7814912 |
| 3926 | 40100.40200.40700.43300.549700 | CP & SANITARYWARE FIXING L6 | 2d | 2027-08-07 | 2027-08-08 | 3925 |  | RGA -FINISHING | 7814922 |
| 3927 | 40100.40200.40700.43300.549800 | CP & SANITARYWARE FIXING L7 | 2d | 2027-08-09 | 2027-08-10 | 3926 |  | RGA -FINISHING | 7814932 |
| 3928 | 40100.40200.40700.43300.549900 | CP & SANITARYWARE FIXING L8 | 2d | 2027-08-11 | 2027-08-12 | 3927 |  | RGA -FINISHING | 7814942 |
| 3929 | 40100.40200.40700.43300.550000 | CP & SANITARYWARE FIXING L9 | 2d | 2027-08-13 | 2027-08-14 | 3928 |  | RGA -FINISHING | 7814952 |
| 3930 | 40100.40200.40700.43300.550100 | CP & SANITARYWARE FIXING L10 | 2d | 2027-08-15 | 2027-08-16 | 3929 |  | RGA -FINISHING | 7814962 |
| 3931 | 40100.40200.40700.43300.550200 | CP & SANITARYWARE FIXING L11 | 2d | 2027-08-17 | 2027-08-18 | 3930 |  | RGA -FINISHING | 7814972 |
| 3932 | 40100.40200.40700.43300.550300 | CP & SANITARYWARE FIXING L12 | 2d | 2027-08-19 | 2027-08-20 | 3931 |  | RGA -FINISHING | 7814982 |
| 3933 | 40100.40200.40700.43300.550400 | CP & SANITARYWARE FIXING L13 | 2d | 2027-08-21 | 2027-08-22 | 3932 |  | RGA -FINISHING | 7814992 |
| 3934 | 40100.40200.40700.43300.550500 | CP & SANITARYWARE FIXING L14 | 2d | 2027-08-23 | 2027-08-24 | 3933 |  | RGA -FINISHING | 7815002 |
| 3935 | 40100.40200.40700.43300.550600 | CP & SANITARYWARE FIXING L15 | 2d | 2027-08-25 | 2027-08-26 | 3934 |  | RGA -FINISHING | 7815012 |
| 3936 | 40100.40200.40700.43300.550700 | CP & SANITARYWARE FIXING L16 | 2d | 2027-08-27 | 2027-08-28 | 3935 |  | RGA -FINISHING | 7815022 |
| 3937 | 40100.40200.40700.43300.550800 | CP & SANITARYWARE FIXING L17 | 2d | 2027-08-29 | 2027-08-30 | 3936 |  | RGA -FINISHING | 7815032 |
| 3938 | 40100.40200.40700.43300.550900 | CP & SANITARYWARE FIXING L18 | 2d | 2027-08-31 | 2027-09-01 | 3937 |  | RGA -FINISHING | 7815042 |
| 3939 | 40100.40200.40700.43300.551000 | CP & SANITARYWARE FIXING L18 | 2d | 2027-09-02 | 2027-09-03 | 3938 |  | RGA -FINISHING | 7815052 |
| 3940 | 40100.40200.40700.43300.551100 | CP & SANITARYWARE FIXING L19 | 2d | 2027-09-04 | 2027-09-05 | 3939 |  | RGA -FINISHING | 7815062 |
| 3941 | 40100.40200.40700.43300.551200 | CP & SANITARYWARE FIXING L20 | 2d | 2027-09-06 | 2027-09-07 | 3940 |  | RGA -FINISHING | 7815072 |
| 3942 | 40100.40200.40700.43300.551300 | CP & SANITARYWARE FIXING L21 | 2d | 2027-09-08 | 2027-09-09 | 3941 |  | RGA -FINISHING | 7815082 |
| 3943 | 40100.40200.40700.43300.551400 | CP & SANITARYWARE FIXING L22 | 2d | 2027-09-10 | 2027-09-11 | 3942 |  | RGA -FINISHING | 7815092 |
| 3944 | 40100.40200.40700.43300.551500 | CP & SANITARYWARE FIXING L23 | 2d | 2027-09-12 | 2027-09-13 | 3943 |  | RGA -FINISHING | 7815102 |
| 3945 | 40100.40200.40700.43300.551600 | CP & SANITARYWARE FIXING L24 | 2d | 2027-09-14 | 2027-09-15 | 3944 |  | RGA -FINISHING | 7815112 |
| 3946 | 40100.40200.40700.43300.551700 | CP & SANITARYWARE FIXING L25 | 2d | 2027-09-16 | 2027-09-17 | 3945 |  | RGA -FINISHING | 7815122 |
| 3947 | 40100.40200.40700.521100 | MIscellaneous (Aluform Supply) | 90d | 2025-09-27 | 2025-12-25 | 3020FS-53d |  | RGA -FINISHING | 7812572 |
| 3948 | 40100.40200.40700.521200 | Miscellaneous | 180d | 2027-06-29 | 2028-01-24 | 3947FS+471d |  | Indian Calendar | 7812582 |

| ID | WBS | Task | Type | Duration | Start | Finish | Predecessors | Complete | Constraint | Calendar | Unique_Task_ID |
| --- | --- | --- | --- | --- | --- | --- | --- | --- | --- | --- | --- |
| 3949 | 40100.40200.40800 | **TOWER 3 - (2B+G+25 Floors+Terrace)** |  | 1084d | 2025-02-12 | 2028-03-10 |  |  | start no earlier than 2025-02-12 | RGA - STRUCTURE | 7803182 |
| 3950 | 40100.40200.40800.2746900 | Start date for Tower 3 | milestone | 0d | 2025-04-22 | 2025-04-22 | 4937FS+7d |  |  | RGA - STRUCTURE | 7847642 |
| 3951 | 40100.40200.40800.374600 | **Earth work** |  | 347d | 2025-02-12 | 2026-01-30 |  | 42% | start no earlier than 2025-02-12 | RGA - STRUCTURE | 7811772 |
| 3952 | 40100.40200.40800.374600.518200 | EXCAVATION - Tower Area |  | 98d | 2025-02-12 | 2025-08-05 | 3950SS-87d | 12% |  | RGA - STRUCTURE | 7815152 |
| 3953 | 40100.40200.40800.374600.518100 | Excavation - Non Tower Area |  | 55d | 2025-02-24 | 2026-01-30 | 3952FS-228d | 96% |  | 5 day week, Bank Hols Xmas | 7433495 |
| 3954 | 40100.40200.40800.69200 | **Substructure works (Works up to plinth)** |  | 935d | 2025-04-01 | 2027-11-29 |  |  | start no earlier than 2025-04-01 | RGA - STRUCTURE | 7803892 |
| 3955 | 40100.40200.40800.69200.168000 | **Civil works (Shell & Core basement)** |  | 208d | 2025-04-01 | 2025-10-29 |  |  | start no earlier than 2025-04-01 | RGA - STRUCTURE | 7806872 |
| 3956 | 40100.40200.40800.69200.168000.350800 | **RCC Works - Tower area- 1st Basement** |  | 51d | 2025-08-06 | 2025-09-26 |  |  | start no earlier than 2025-08-06 | RGA - STRUCTURE | 7808262 |
| 3957 | 40100.40200.40800.69200.168000.350800.383400 | **Foundation** |  | 26d | 2025-08-06 | 2025-09-01 |  |  | start no earlier than 2025-08-06 | RGA - STRUCTURE | 7809332 |
| 3958 | 40100.40200.40800.69200.168000.350800.383400.2297800 | Pocket Excavation |  | 1d | 2025-08-06 | 2025-08-06 | 3952FS+19d |  |  | RGA - STRUCTURE | 7842482 |
| 3959 | 40100.40200.40800.69200.168000.350800.383400.2297900 | Footing PCC |  | 4d | 2025-08-07 | 2025-08-10 | 3958 |  |  | RGA - STRUCTURE | 7842492 |
| 3960 | 40100.40200.40800.69200.168000.350800.383400.2298000 | Footing / Raft works |  | 21d | 2025-08-11 | 2025-09-01 | 3959 |  |  | RGA - STRUCTURE | 7842502 |
| 3961 | 40100.40200.40800.69200.168000.350800.488500 | **UB Slab** |  | 25d | 2025-09-02 | 2025-09-26 |  |  | start no earlier than 2025-09-02 | RGA - STRUCTURE | 7811312 |
| 3962 | 40100.40200.40800.69200.168000.350800.488500.2298100 | Columns in Upper basement |  | 15d | 2025-09-02 | 2025-09-16 | 3960 |  |  | RGA - STRUCTURE | 7842512 |
| 3963 | 40100.40200.40800.69200.168000.350800.488500.2298200 | Upper Basement slab |  | 10d | 2025-09-17 | 2025-09-26 | 3962 |  |  | RGA - STRUCTURE | 7842522 |
| 3964 | 40100.40200.40800.69200.168000.499400 | **Ground Floor Slab** |  | 31d | 2025-09-27 | 2025-10-29 |  |  | start no earlier than 2025-09-27 | RGA - STRUCTURE | 8865664 |
| 3965 | 40100.40200.40800.69200.168000.499400.967500 | Columns in Upper basement |  | 14d | 2025-09-27 | 2025-10-11 | 3963 |  |  | RGA - STRUCTURE | 8865674 |
| 3966 | 40100.40200.40800.69200.168000.499400.967600 | Upper Basement slab |  | 17d | 2025-10-12 | 2025-10-29 | 3965 |  |  | RGA - STRUCTURE | 8865684 |
| 3967 | 40100.40200.40800.69200.168000.829900 | Backfilling |  | 10d | 2025-04-01 | 2025-04-10 |  |  | start no earlier than 2025-04-01 | RGA - STRUCTURE | 7820172 |
| 3968 | 40100.40200.40800.69200.475800 | **Basement Block work and Plaster finishing** |  | 89d | 2026-07-22 | 2026-10-20 |  |  | start no earlier than 2026-07-22 | RGA - STRUCTURE | 7812042 |
| 3969 | 40100.40200.40800.69200.475800.830000 | Upper basement |  | 45d | 2026-07-22 | 2026-09-05 | 4083 |  |  | RGA - STRUCTURE | 7820182 |
| 3970 | 40100.40200.40800.69200.475800.830100 | Upper Basement Plumbing |  | 45d | 2026-09-06 | 2026-10-20 | 3969 |  |  | RGA -FINISHING | 8865694 |
| 3971 | 40100.40200.40800.69200.160800 | **Services** |  | 450d | 2026-09-06 | 2027-11-29 |  |  | start no earlier than 2026-09-06 | RGA -FINISHING | 7805362 |
| 3972 | 40100.40200.40800.69200.160800.366300 | **Plumbing** |  | 180d | 2026-09-06 | 2027-03-04 |  |  | start no earlier than 2026-09-06 | RGA -FINISHING | 7809142 |
| 3973 | 40100.40200.40800.69200.160800.366300.488600 | **Upper Basement Plumbing** |  | 180d | 2026-09-06 | 2027-03-04 |  |  | start no earlier than 2026-09-06 | RGA -FINISHING | 7812032 |
| 3974 | 40100.40200.40800.69200.160800.366300.488600.2298300 | Upper Basement Plumbing |  | 90d | 2026-09-06 | 2026-12-04 | 3969 |  |  | RGA -FINISHING | 7842532 |
| 3975 | 40100.40200.40800.69200.160800.366300.488600.2298400 | Upper Basement Plumbing |  | 90d | 2026-12-05 | 2027-03-04 | 3974 |  |  | RGA -FINISHING | 8865704 |

Notes:
- 3951: 2 Months for Excavation

| ID | WBS | Task | Duration | Start | Finish | Predecessors | Constraint | Calendar | Unique_Task_ID |
| --- | --- | --- | --- | --- | --- | --- | --- | --- | --- |
| 3976 | 40100.40200.40800.69200.160800.366400 | **Fire fighting** | 180d | 2026-12-05 | 2027-06-02 |  | start no earlier than 2026-12-05 | RGA -FINISHING | 7809152 |
| 3977 | 40100.40200.40800.69200.160800.366400.488700 | **Upper Basement Fire fighting** | 180d | 2026-12-05 | 2027-06-02 |  | start no earlier than 2026-12-05 | RGA -FINISHING | 7812022 |
| 3978 | 40100.40200.40800.69200.160800.366400.488700.2298500 | Upper Basement Fire fighting | 90d | 2026-12-05 | 2027-03-04 | 3974 |  | RGA -FINISHING | 7842542 |
| 3979 | 40100.40200.40800.69200.160800.366400.488700.2298600 | Upper Basement Plumbing | 90d | 2027-03-05 | 2027-06-02 | 3978 |  | RGA -FINISHING | 8865714 |
| 3980 | 40100.40200.40800.69200.160800.366500 | **Ventilation** | 180d | 2027-03-05 | 2027-08-31 |  | start no earlier than 2027-03-05 | RGA -FINISHING | 7809162 |
| 3981 | 40100.40200.40800.69200.160800.366500.488800 | **Upper Basement ventilation** | 180d | 2027-03-05 | 2027-08-31 |  | start no earlier than 2027-03-05 | RGA -FINISHING | 7812012 |
| 3982 | 40100.40200.40800.69200.160800.366500.488800.2298700 | Upper Basement ventilation | 90d | 2027-03-05 | 2027-06-02 | 3978 |  | RGA -FINISHING | 7842552 |
| 3983 | 40100.40200.40800.69200.160800.366500.488800.2298800 | Upper Basement Plumbing | 90d | 2027-06-03 | 2027-08-31 | 3982 |  | RGA -FINISHING | 8865724 |
| 3984 | 40100.40200.40800.69200.160800.366600 | **Electrification** | 180d | 2027-06-03 | 2027-11-29 |  | start no earlier than 2027-06-03 | RGA -FINISHING | 7809172 |
| 3985 | 40100.40200.40800.69200.160800.366600.488900 | **Upper Basement Electrification** | 180d | 2027-06-03 | 2027-11-29 |  | start no earlier than 2027-06-03 | RGA -FINISHING | 7812002 |
| 3986 | 40100.40200.40800.69200.160800.366600.488900.2298900 | Upper Basement Electrification | 90d | 2027-06-03 | 2027-08-31 | 3982 |  | RGA -FINISHING | 7842562 |
| 3987 | 40100.40200.40800.69200.160800.366600.488900.2299000 | Upper Basement Plumbing | 90d | 2027-09-01 | 2027-11-29 | 3986 |  | RGA -FINISHING | 8865734 |
| 3988 | 40100.40200.40800.69200.160800.366700 | **Security installations** | 90d | 2027-09-01 | 2027-11-29 |  | start no earlier than 2027-09-01 | RGA -FINISHING | 7809182 |
| 3989 | 40100.40200.40800.69200.160800.366700.489000 | **Upper Basement Security installations** | 90d | 2027-09-01 | 2027-11-29 |  | start no earlier than 2027-09-01 | RGA -FINISHING | 7811992 |
| 3990 | 40100.40200.40800.69200.160800.366700.489000.2299100 | Upper Basement Security installations | 45d | 2027-09-01 | 2027-10-15 | 3986 |  | RGA -FINISHING | 7842572 |
| 3991 | 40100.40200.40800.69200.160800.366700.489000.2299200 | Upper Basement Plumbing | 45d | 2027-10-16 | 2027-11-29 | 3990 |  | RGA -FINISHING | 8865744 |
| 3992 | 40100.40200.40800.69200.341900 | **Finishing work** | 270d | 2026-09-06 | 2027-06-02 |  | start no earlier than 2026-09-06 | RGA -FINISHING | 7808652 |
| 3993 | 40100.40200.40800.69200.341900.498900 | **Basement Flooring** | 180d | 2026-09-06 | 2027-03-04 |  | start no earlier than 2026-09-06 | RGA -FINISHING | 7812422 |
| 3994 | 40100.40200.40800.69200.341900.498900.967700 | 1st Basement ventilation | 90d | 2026-09-06 | 2026-12-04 | 3969 |  | RGA -FINISHING | 7832002 |
| 3995 | 40100.40200.40800.69200.341900.498900.967800 | Upper Basement Plumbing | 90d | 2026-12-05 | 2027-03-04 | 3994 |  | RGA -FINISHING | 8865754 |
| 3996 | 40100.40200.40800.69200.341900.498600 | **Basement Painting (1st Coat)** | 180d | 2026-12-05 | 2027-06-02 |  | start no earlier than 2026-12-05 | RGA -FINISHING | 7812432 |
| 3997 | 40100.40200.40800.69200.341900.498600.967900 | 2nd Basement ventilation | 90d | 2026-12-05 | 2027-03-04 | 3994 |  | RGA -FINISHING | 7832012 |
| 3998 | 40100.40200.40800.69200.341900.498600.968000 | Upper Basement Plumbing | 90d | 2027-03-05 | 2027-06-02 | 3997 |  | RGA -FINISHING | 8865764 |
| 3999 | 40100.40200.40800.69200.475900 | **Water Proofing work** | 90d | 2026-09-06 | 2026-12-04 |  | start no earlier than 2026-09-06 | RGA -FINISHING | 7812052 |
| 4000 | 40100.40200.40800.69200.475900.830200 | 1st Basement | 45d | 2026-09-06 | 2026-10-20 | 3969 |  | RGA -FINISHING | 7820192 |
| 4001 | 40100.40200.40800.69200.475900.830300 | Upper Basement Plumbing | 45d | 2026-10-21 | 2026-12-04 | 4000 |  | RGA -FINISHING | 8865774 |

| ID | WBS | Task | Duration | Start | Finish | Predecessors | Constraint | Calendar | Unique_Task_ID |
| --- | --- | --- | --- | --- | --- | --- | --- | --- | --- |
| 4002 | 40100.40200.40800.53100 | **Superstructure works** | 770d | 2025-04-01 | 2027-06-17 |  | start no earlier than 2025-04-01 | RGA - STRUCTURE | 7803312 |
| 4003 | 40100.40200.40800.53100.55200 | **Civil works** | 770d | 2025-04-01 | 2027-06-17 |  | start no earlier than 2025-04-01 | RGA - STRUCTURE | 7803342 |
| 4004 | 40100.40200.40800.53100.55200.61600 | **Superstructure RCC Work** | 349d | 2025-10-30 | 2026-11-01 |  | start no earlier than 2025-10-30 | RGA - STRUCTURE | 7803612 |
| 4005 | 40100.40200.40800.53100.55200.61600.63100 | **Slab RCC works** | 300d | 2025-10-30 | 2026-09-12 |  | start no earlier than 2025-10-30 | RGA - STRUCTURE | 7803682 |
| 4006 | 40100.40200.40800.53100.55200.61600.63100.475500 | **1st Floor slab (Height More)** | 25d | 2025-10-30 | 2025-11-23 |  | start no earlier than 2025-10-30 | RGA - STRUCTURE | 7811412 |
| 4007 | 40100.40200.40800.53100.55200.61600.63100.475500.2676100 | Columns | 10d | 2025-10-30 | 2025-11-08 | 3966 |  | RGA - STRUCTURE | 7858312 |
| 4008 | 40100.40200.40800.53100.55200.61600.63100.475500.2676200 | Slab Work | 15d | 2025-11-09 | 2025-11-23 | 4007 |  | RGA - STRUCTURE | 7858322 |
| 4009 | 40100.40200.40800.53100.55200.61600.63100.475400 | **2nd Floor slab (Height More)** | 25d | 2025-11-24 | 2025-12-18 |  | start no earlier than 2025-11-24 | RGA - STRUCTURE | 7811402 |
| 4010 | 40100.40200.40800.53100.55200.61600.63100.475400.2676300 | Columns | 10d | 2025-11-24 | 2025-12-03 | 4008 |  | RGA - STRUCTURE | 7858332 |
| 4011 | 40100.40200.40800.53100.55200.61600.63100.475400.2676400 | Slab Work | 15d | 2025-12-04 | 2025-12-18 | 4010 |  | RGA - STRUCTURE | 7858342 |
| 4012 | 40100.40200.40800.53100.55200.61600.63100.401500 | **3rd Floor slab (Combo)** | 25d | 2025-12-19 | 2026-01-12 |  | start no earlier than 2025-12-19 | RGA - STRUCTURE | 7810442 |
| 4013 | 40100.40200.40800.53100.55200.61600.63100.401500.2676500 | Wall Rebar & Form work | 10d | 2025-12-19 | 2025-12-28 | 4011 |  | RGA - STRUCTURE | 7858352 |
| 4014 | 40100.40200.40800.53100.55200.61600.63100.401500.2676600 | Slab Form work & Rebar | 14d | 2025-12-29 | 2026-01-11 | 4013 |  | RGA - STRUCTURE | 7858362 |
| 4015 | 40100.40200.40800.53100.55200.61600.63100.401500.2676700 | Concreting | 1d | 2026-01-12 | 2026-01-12 | 4014 |  | RGA - STRUCTURE | 7858372 |
| 4016 | 40100.40200.40800.53100.55200.61600.63100.401600 | **4th Floor slab (1st Setup)** | 21d | 2026-01-13 | 2026-02-03 |  | start no earlier than 2026-01-13 | RGA - STRUCTURE | 7810452 |
| 4017 | 40100.40200.40800.53100.55200.61600.63100.401600.2676800 | Wall Rebar & Form work | 10d | 2026-01-13 | 2026-01-22 | 4015 |  | RGA - STRUCTURE | 7858382 |
| 4018 | 40100.40200.40800.53100.55200.61600.63100.401600.2676900 | Slab Form work & Rebar | 10d | 2026-01-23 | 2026-02-02 | 4017 |  | RGA - STRUCTURE | 7858392 |
| 4019 | 40100.40200.40800.53100.55200.61600.63100.401600.2677000 | Concreting | 1d | 2026-02-03 | 2026-02-03 | 4018 |  | RGA - STRUCTURE | 7858402 |
| 4020 | 40100.40200.40800.53100.55200.61600.63100.401700 | **5th Floor slab (2nd Set Up)** | 15d | 2026-02-04 | 2026-02-18 |  | start no earlier than 2026-02-04 | RGA - STRUCTURE | 7810462 |
| 4021 | 40100.40200.40800.53100.55200.61600.63100.401700.2677100 | Wall Rebar & Form work | 7d | 2026-02-04 | 2026-02-10 | 4019 |  | RGA - STRUCTURE | 7858412 |
| 4022 | 40100.40200.40800.53100.55200.61600.63100.401700.2677200 | Slab Form work & Rebar | 7d | 2026-02-11 | 2026-02-17 | 4021 |  | RGA - STRUCTURE | 7858422 |
| 4023 | 40100.40200.40800.53100.55200.61600.63100.401700.2677300 | Concreting | 1d | 2026-02-18 | 2026-02-18 | 4022 |  | RGA - STRUCTURE | 7858432 |
| 4024 | 40100.40200.40800.53100.55200.61600.63100.401800 | **6th Floor slab** | 9d | 2026-02-19 | 2026-02-27 |  | start no earlier than 2026-02-19 | RGA - STRUCTURE | 7810472 |
| 4025 | 40100.40200.40800.53100.55200.61600.63100.401800.2677400 | Wall Rebar & Form work | 4d | 2026-02-19 | 2026-02-22 | 4023 |  | RGA - STRUCTURE | 7858442 |
| 4026 | 40100.40200.40800.53100.55200.61600.63100.401800.2677500 | Slab Form work & Rebar | 4d | 2026-02-23 | 2026-02-26 | 4025 |  | RGA - STRUCTURE | 7858452 |
| 4027 | 40100.40200.40800.53100.55200.61600.63100.401800.2677600 | Concreting | 1d | 2026-02-27 | 2026-02-27 | 4026 |  | RGA - STRUCTURE | 7858462 |

Notes:
- 4009: AVg Slab Cycle of 21 days
- 4012: AVg Slab Cycle of 21 days
- 4016: AVg Slab Cycle of 21 days

| ID | WBS | Task | Duration | Start | Finish | Predecessors | Constraint | Calendar | Unique_Task_ID |
| --- | --- | --- | --- | --- | --- | --- | --- | --- | --- |
| 4028 | 40100.40200.40800.53100.55200.61600.63100.401900 | **7th Floor slab** | 9d | 2026-02-28 | 2026-03-08 |  | start no earlier than 2026-02-28 | RGA - STRUCTURE | 7810482 |
| 4029 | 40100.40200.40800.53100.55200.61600.63100.401900.2677700 | Wall Rebar & Form work | 4d | 2026-02-28 | 2026-03-03 | 4027 |  | RGA - STRUCTURE | 7858472 |
| 4030 | 40100.40200.40800.53100.55200.61600.63100.401900.2677800 | Slab Form work & Rebar | 4d | 2026-03-04 | 2026-03-07 | 4029 |  | RGA - STRUCTURE | 7858482 |
| 4031 | 40100.40200.40800.53100.55200.61600.63100.401900.2677900 | Concreting | 1d | 2026-03-08 | 2026-03-08 | 4030 |  | RGA - STRUCTURE | 7858492 |
| 4032 | 40100.40200.40800.53100.55200.61600.63100.402000 | **8th Floor slab** | 9d | 2026-03-09 | 2026-03-17 |  | start no earlier than 2026-03-09 | RGA - STRUCTURE | 7810492 |
| 4033 | 40100.40200.40800.53100.55200.61600.63100.402000.2678000 | Wall Rebar & Form work | 4d | 2026-03-09 | 2026-03-12 | 4031 |  | RGA - STRUCTURE | 7858502 |
| 4034 | 40100.40200.40800.53100.55200.61600.63100.402000.2678100 | Slab Form work & Rebar | 4d | 2026-03-13 | 2026-03-16 | 4033 |  | RGA - STRUCTURE | 7858512 |
| 4035 | 40100.40200.40800.53100.55200.61600.63100.402000.2678200 | Concreting | 1d | 2026-03-17 | 2026-03-17 | 4034 |  | RGA - STRUCTURE | 7858522 |
| 4036 | 40100.40200.40800.53100.55200.61600.63100.402100 | **9th Floor slab** | 9d | 2026-03-18 | 2026-03-26 |  | start no earlier than 2026-03-18 | RGA - STRUCTURE | 7810502 |
| 4037 | 40100.40200.40800.53100.55200.61600.63100.402100.2678300 | Wall Rebar & Form work | 4d | 2026-03-18 | 2026-03-21 | 4035 |  | RGA - STRUCTURE | 7858532 |
| 4038 | 40100.40200.40800.53100.55200.61600.63100.402100.2678400 | Slab Form work & Rebar | 4d | 2026-03-22 | 2026-03-25 | 4037 |  | RGA - STRUCTURE | 7858542 |
| 4039 | 40100.40200.40800.53100.55200.61600.63100.402100.2678500 | Concreting | 1d | 2026-03-26 | 2026-03-26 | 4038 |  | RGA - STRUCTURE | 7858552 |
| 4040 | 40100.40200.40800.53100.55200.61600.63100.402200 | **10th Floor slab** | 9d | 2026-03-27 | 2026-04-04 |  | start no earlier than 2026-03-27 | RGA - STRUCTURE | 7810512 |
| 4041 | 40100.40200.40800.53100.55200.61600.63100.402200.2678600 | Wall Rebar & Form work | 4d | 2026-03-27 | 2026-03-30 | 4039 |  | RGA - STRUCTURE | 7858562 |
| 4042 | 40100.40200.40800.53100.55200.61600.63100.402200.2678700 | Slab Form work & Rebar | 4d | 2026-03-31 | 2026-04-03 | 4041 |  | RGA - STRUCTURE | 7858572 |
| 4043 | 40100.40200.40800.53100.55200.61600.63100.402200.2678800 | Concreting | 1d | 2026-04-04 | 2026-04-04 | 4042 |  | RGA - STRUCTURE | 7858582 |
| 4044 | 40100.40200.40800.53100.55200.61600.63100.402300 | **11th Floor slab** | 9d | 2026-04-05 | 2026-04-13 |  | start no earlier than 2026-04-05 | RGA - STRUCTURE | 7810522 |
| 4045 | 40100.40200.40800.53100.55200.61600.63100.402300.2678900 | Wall Rebar & Form work | 4d | 2026-04-05 | 2026-04-08 | 4043 |  | RGA - STRUCTURE | 7858592 |
| 4046 | 40100.40200.40800.53100.55200.61600.63100.402300.2679000 | Slab Form work & Rebar | 4d | 2026-04-09 | 2026-04-12 | 4045 |  | RGA - STRUCTURE | 7858602 |
| 4047 | 40100.40200.40800.53100.55200.61600.63100.402300.2679100 | Concreting | 1d | 2026-04-13 | 2026-04-13 | 4046 |  | RGA - STRUCTURE | 7858612 |
| 4048 | 40100.40200.40800.53100.55200.61600.63100.402400 | **12th Floor slab** | 9d | 2026-04-14 | 2026-04-22 |  | start no earlier than 2026-04-14 | RGA - STRUCTURE | 7810532 |
| 4049 | 40100.40200.40800.53100.55200.61600.63100.402400.2679200 | Wall Rebar & Form work | 4d | 2026-04-14 | 2026-04-17 | 4047 |  | RGA - STRUCTURE | 7858622 |
| 4050 | 40100.40200.40800.53100.55200.61600.63100.402400.2679300 | Slab Form work & Rebar | 4d | 2026-04-18 | 2026-04-21 | 4049 |  | RGA - STRUCTURE | 7858632 |
| 4051 | 40100.40200.40800.53100.55200.61600.63100.402400.2679400 | Concreting | 1d | 2026-04-22 | 2026-04-22 | 4050 |  | RGA - STRUCTURE | 7858642 |

Notes:
- 4048: AVg Slab Cycle of 21 days

| ID | WBS | Task | Duration | Start | Finish | Predecessors | Constraint | Calendar | Unique_Task_ID |
| --- | --- | --- | --- | --- | --- | --- | --- | --- | --- |
| 4052 | 40100.40200.40800.53100.55200.61600.63100.402500 | **13th Floor slab** | 9d | 2026-04-23 | 2026-05-02 |  | start no earlier than 2026-04-23 | RGA - STRUCTURE | 7810542 |
| 4053 | 40100.40200.40800.53100.55200.61600.63100.402500.2679500 | Wall Rebar & Form work | 4d | 2026-04-23 | 2026-04-26 | 4051 |  | RGA - STRUCTURE | 7858652 |
| 4054 | 40100.40200.40800.53100.55200.61600.63100.402500.2679600 | Slab Form work & Rebar | 4d | 2026-04-27 | 2026-04-30 | 4053 |  | RGA - STRUCTURE | 7858662 |
| 4055 | 40100.40200.40800.53100.55200.61600.63100.402500.2679700 | Concreting | 1d | 2026-05-02 | 2026-05-02 | 4054 |  | RGA - STRUCTURE | 7858672 |
| 4056 | 40100.40200.40800.53100.55200.61600.63100.402600 | **14th Floor slab** | 9d | 2026-05-03 | 2026-05-11 |  | start no earlier than 2026-05-03 | RGA - STRUCTURE | 7810552 |
| 4057 | 40100.40200.40800.53100.55200.61600.63100.402600.2679800 | Wall Rebar & Form work | 4d | 2026-05-03 | 2026-05-06 | 4055 |  | RGA - STRUCTURE | 7858682 |
| 4058 | 40100.40200.40800.53100.55200.61600.63100.402600.2679900 | Slab Form work & Rebar | 4d | 2026-05-07 | 2026-05-10 | 4057 |  | RGA - STRUCTURE | 7858692 |
| 4059 | 40100.40200.40800.53100.55200.61600.63100.402600.2680000 | Concreting | 1d | 2026-05-11 | 2026-05-11 | 4058 |  | RGA - STRUCTURE | 7858702 |
| 4060 | 40100.40200.40800.53100.55200.61600.63100.402700 | **15th Floor slab** | 9d | 2026-05-12 | 2026-05-20 |  | start no earlier than 2026-05-12 | RGA - STRUCTURE | 7810562 |
| 4061 | 40100.40200.40800.53100.55200.61600.63100.402700.2680100 | Wall Rebar & Form work | 4d | 2026-05-12 | 2026-05-15 | 4059 |  | RGA - STRUCTURE | 7858712 |
| 4062 | 40100.40200.40800.53100.55200.61600.63100.402700.2680200 | Slab Form work & Rebar | 4d | 2026-05-16 | 2026-05-19 | 4061 |  | RGA - STRUCTURE | 7858722 |
| 4063 | 40100.40200.40800.53100.55200.61600.63100.402700.2680300 | Concreting | 1d | 2026-05-20 | 2026-05-20 | 4062 |  | RGA - STRUCTURE | 7858732 |
| 4064 | 40100.40200.40800.53100.55200.61600.63100.402800 | **16th Floor slab** | 9d | 2026-05-21 | 2026-05-29 |  | start no earlier than 2026-05-21 | RGA - STRUCTURE | 7810572 |
| 4065 | 40100.40200.40800.53100.55200.61600.63100.402800.2680400 | Wall Rebar & Form work | 4d | 2026-05-21 | 2026-05-24 | 4063 |  | RGA - STRUCTURE | 7858742 |
| 4066 | 40100.40200.40800.53100.55200.61600.63100.402800.2680500 | Slab Form work & Rebar | 4d | 2026-05-25 | 2026-05-28 | 4065 |  | RGA - STRUCTURE | 7858752 |
| 4067 | 40100.40200.40800.53100.55200.61600.63100.402800.2680600 | Concreting | 1d | 2026-05-29 | 2026-05-29 | 4066 |  | RGA - STRUCTURE | 7858762 |
| 4068 | 40100.40200.40800.53100.55200.61600.63100.402900 | **17th Floor slab** | 9d | 2026-05-30 | 2026-06-07 |  | start no earlier than 2026-05-30 | RGA - STRUCTURE | 7810582 |
| 4069 | 40100.40200.40800.53100.55200.61600.63100.402900.2680700 | Wall Rebar & Form work | 4d | 2026-05-30 | 2026-06-02 | 4067 |  | RGA - STRUCTURE | 7858772 |
| 4070 | 40100.40200.40800.53100.55200.61600.63100.402900.2680800 | Slab Form work & Rebar | 4d | 2026-06-03 | 2026-06-06 | 4069 |  | RGA - STRUCTURE | 7858782 |
| 4071 | 40100.40200.40800.53100.55200.61600.63100.402900.2680900 | Concreting | 1d | 2026-06-07 | 2026-06-07 | 4070 |  | RGA - STRUCTURE | 7858792 |
| 4072 | 40100.40200.40800.53100.55200.61600.63100.403000 | **18th Floor slab** | 9d | 2026-06-08 | 2026-06-17 |  | start no earlier than 2026-06-08 | RGA - STRUCTURE | 7810592 |
| 4073 | 40100.40200.40800.53100.55200.61600.63100.403000.2681000 | Wall Rebar & Form work | 4d | 2026-06-08 | 2026-06-11 | 4071 |  | RGA - STRUCTURE | 7858802 |
| 4074 | 40100.40200.40800.53100.55200.61600.63100.403000.2681100 | Slab Form work & Rebar | 4d | 2026-06-12 | 2026-06-15 | 4073 |  | RGA - STRUCTURE | 7858812 |
| 4075 | 40100.40200.40800.53100.55200.61600.63100.403000.2681200 | Concreting | 1d | 2026-06-16 | 2026-06-17 | 4074 |  | RGA - STRUCTURE | 7858822 |

Notes:
- 4052: AVg Slab Cycle of 21 days
- 4056: AVg Slab Cycle of 21 days

| ID | WBS | Task | Duration | Start | Finish | Predecessors | Constraint | Calendar | Unique_Task_ID |
| --- | --- | --- | --- | --- | --- | --- | --- | --- | --- |
| 4076 | 40100.40200.40800.53100.55200.61600.63100.403100 | **19th Floor slab** | 8d | 2026-06-18 | 2026-07-03 |  | start no earlier than 2026-06-18 | RGA - STRUCTURE | 7810602 |
| 4077 | 40100.40200.40800.53100.55200.61600.63100.403100.2681300 | Wall Rebar & Form work | 4d | 2026-06-18 | 2026-06-25 | 4075 |  | RGA - STRUCTURE | 7858832 |
| 4078 | 40100.40200.40800.53100.55200.61600.63100.403100.2681400 | Slab Form work & Rebar | 3d | 2026-06-26 | 2026-07-01 | 4077 |  | RGA - STRUCTURE | 7858842 |
| 4079 | 40100.40200.40800.53100.55200.61600.63100.403100.2681500 | Concreting | 1d | 2026-07-02 | 2026-07-03 | 4078 |  | RGA - STRUCTURE | 7858852 |
| 4080 | 40100.40200.40800.53100.55200.61600.63100.403200 | **20th Floor slab (Refuge floor )** | 12d | 2026-07-04 | 2026-07-21 |  | start no earlier than 2026-07-04 | RGA - STRUCTURE | 7810612 |
| 4081 | 40100.40200.40800.53100.55200.61600.63100.403200.2681600 | Wall Rebar & Form work | 6d | 2026-07-04 | 2026-07-15 | 4079 |  | RGA - STRUCTURE | 7858862 |
| 4082 | 40100.40200.40800.53100.55200.61600.63100.403200.2681700 | Slab Form work & Rebar | 5d | 2026-07-16 | 2026-07-20 | 4081 |  | RGA - STRUCTURE | 7858872 |
| 4083 | 40100.40200.40800.53100.55200.61600.63100.403200.2681800 | Concreting | 1d | 2026-07-21 | 2026-07-21 | 4082 |  | RGA - STRUCTURE | 7858882 |
| 4084 | 40100.40200.40800.53100.55200.61600.63100.403300 | **21st Floor slab** | 8d | 2026-07-22 | 2026-07-29 |  | start no earlier than 2026-07-22 | RGA - STRUCTURE | 7810622 |
| 4085 | 40100.40200.40800.53100.55200.61600.63100.403300.2681900 | Wall Rebar & Form work | 4d | 2026-07-22 | 2026-07-25 | 4083 |  | RGA - STRUCTURE | 7858892 |
| 4086 | 40100.40200.40800.53100.55200.61600.63100.403300.2682000 | Slab Form work & Rebar | 3d | 2026-07-26 | 2026-07-28 | 4085 |  | RGA - STRUCTURE | 7858902 |
| 4087 | 40100.40200.40800.53100.55200.61600.63100.403300.2682100 | Concreting | 1d | 2026-07-29 | 2026-07-29 | 4086 |  | RGA - STRUCTURE | 7858912 |
| 4088 | 40100.40200.40800.53100.55200.61600.63100.403400 | **22nd Floor slab** | 8d | 2026-07-30 | 2026-08-06 |  | start no earlier than 2026-07-30 | RGA - STRUCTURE | 7810632 |
| 4089 | 40100.40200.40800.53100.55200.61600.63100.403400.2682200 | Wall Rebar & Form work | 4d | 2026-07-30 | 2026-08-02 | 4087 |  | RGA - STRUCTURE | 7858922 |
| 4090 | 40100.40200.40800.53100.55200.61600.63100.403400.2682300 | Slab Form work & Rebar | 3d | 2026-08-03 | 2026-08-05 | 4089 |  | RGA - STRUCTURE | 7858932 |
| 4091 | 40100.40200.40800.53100.55200.61600.63100.403400.2682400 | Concreting | 1d | 2026-08-06 | 2026-08-06 | 4090 |  | RGA - STRUCTURE | 7858942 |
| 4092 | 40100.40200.40800.53100.55200.61600.63100.403500 | **23rd Floor slab** | 8d | 2026-08-07 | 2026-08-14 |  | start no earlier than 2026-08-07 | RGA - STRUCTURE | 7810642 |
| 4093 | 40100.40200.40800.53100.55200.61600.63100.403500.2682500 | Wall Rebar & Form work | 4d | 2026-08-07 | 2026-08-10 | 4091 |  | RGA - STRUCTURE | 7858952 |
| 4094 | 40100.40200.40800.53100.55200.61600.63100.403500.2682600 | Slab Form work & Rebar | 3d | 2026-08-11 | 2026-08-13 | 4093 |  | RGA - STRUCTURE | 7858962 |
| 4095 | 40100.40200.40800.53100.55200.61600.63100.403500.2682700 | Concreting | 1d | 2026-08-14 | 2026-08-14 | 4094 |  | RGA - STRUCTURE | 7858972 |
| 4096 | 40100.40200.40800.53100.55200.61600.63100.403600 | **24th Floor slab** | 8d | 2026-08-16 | 2026-08-23 |  | start no earlier than 2026-08-16 | RGA - STRUCTURE | 7810652 |
| 4097 | 40100.40200.40800.53100.55200.61600.63100.403600.2682800 | Wall Rebar & Form work | 4d | 2026-08-16 | 2026-08-19 | 4095 |  | RGA - STRUCTURE | 7858982 |
| 4098 | 40100.40200.40800.53100.55200.61600.63100.403600.2682900 | Slab Form work & Rebar | 3d | 2026-08-20 | 2026-08-22 | 4097 |  | RGA - STRUCTURE | 7858992 |
| 4099 | 40100.40200.40800.53100.55200.61600.63100.403600.2683000 | Concreting | 1d | 2026-08-23 | 2026-08-23 | 4098 |  | RGA - STRUCTURE | 7859002 |

| ID | WBS | Task | Duration | Start | Finish | Predecessors | Constraint | Calendar | Unique_Task_ID |
| --- | --- | --- | --- | --- | --- | --- | --- | --- | --- |
| 4100 | 40100.40200.40800.53100.55200.61600.63100.403700 | **25th Floor slab** | 8d | 2026-08-24 | 2026-08-31 |  | start no earlier than 2026-08-24 | RGA - STRUCTURE | 7810662 |
| 4101 | 40100.40200.40800.53100.55200.61600.63100.403700.2683100 | Wall Rebar & Form work | 4d | 2026-08-24 | 2026-08-27 | 4099 |  | RGA - STRUCTURE | 7859012 |
| 4102 | 40100.40200.40800.53100.55200.61600.63100.403700.2683200 | Slab Form work & Rebar | 3d | 2026-08-28 | 2026-08-30 | 4101 |  | RGA - STRUCTURE | 7859022 |
| 4103 | 40100.40200.40800.53100.55200.61600.63100.403700.2683300 | Concreting | 1d | 2026-08-31 | 2026-08-31 | 4102 |  | RGA - STRUCTURE | 7859032 |
| 4104 | 40100.40200.40800.53100.55200.61600.63100.403800 | **Terrace Floor slab work** | 12d | 2026-09-01 | 2026-09-12 |  | start no earlier than 2026-09-01 | RGA - STRUCTURE | 7810692 |
| 4105 | 40100.40200.40800.53100.55200.61600.63100.403800.2683400 | Wall & Slab Form work | 6d | 2026-09-01 | 2026-09-06 | 4103 |  | RGA - STRUCTURE | 7859102 |
| 4106 | 40100.40200.40800.53100.55200.61600.63100.403800.2683500 | Slab & Beam Reinf. | 5d | 2026-09-07 | 2026-09-11 | 4105 |  | RGA - STRUCTURE | 7859112 |
| 4107 | 40100.40200.40800.53100.55200.61600.63100.403800.2683600 | Concreting | 1d | 2026-09-12 | 2026-09-12 | 4106 |  | RGA - STRUCTURE | 7859122 |
| 4108 | 40100.40200.40800.53100.55200.61600.253700 | **RCC work above Terrace** | 49d | 2026-09-13 | 2026-11-01 |  | start no earlier than 2026-09-13 | RGA - STRUCTURE | 7806982 |
| 4109 | 40100.40200.40800.53100.55200.61600.253700.370200 | **STAIRCASE & OHT CORE** | 49d | 2026-09-13 | 2026-11-01 |  | start no earlier than 2026-09-13 | RGA - STRUCTURE | 7808392 |
| 4110 | 40100.40200.40800.53100.55200.61600.253700.370200.2683700 | STAIRCASE HEAD ROOM | 10d | 2026-09-13 | 2026-09-22 | 4107 |  | RGA - STRUCTURE | 7859132 |
| 4111 | 40100.40200.40800.53100.55200.61600.253700.370200.2683800 | OHT | 25d | 2026-09-23 | 2026-10-18 | 4110 |  | RGA - STRUCTURE | 7859142 |
| 4112 | 40100.40200.40800.53100.55200.61600.253700.370200.2683900 | SHAFT COVERING SLAB | 10d | 2026-09-13 | 2026-09-22 | 4107 |  | RGA - STRUCTURE | 7859152 |
| 4113 | 40100.40200.40800.53100.55200.61600.253700.370200.2684000 | DESHUTTERING OF OHT TOP SLAB | 7d | 2026-10-26 | 2026-11-01 | 4111FS+7d |  | RGA - STRUCTURE | 7859162 |
| 4114 | 40100.40200.40800.53100.55200.61600.253700.403900 | **LMR BOTTOM & TOP SLAB** | 43d | 2026-09-13 | 2026-10-26 |  | start no earlier than 2026-09-13 | RGA - STRUCTURE | 7810702 |
| 4115 | 40100.40200.40800.53100.55200.61600.253700.403900.2684100 | LMR COLUMNS / WALLS | 15d | 2026-09-13 | 2026-09-27 | 4107 |  | RGA - STRUCTURE | 7859172 |
| 4116 | 40100.40200.40800.53100.55200.61600.253700.403900.2684200 | LMR TOP SLAB | 20d | 2026-09-28 | 2026-10-18 | 4115 |  | RGA - STRUCTURE | 7859182 |
| 4117 | 40100.40200.40800.53100.55200.61600.253700.403900.2684300 | DESHUTTERING | 8d | 2026-10-19 | 2026-10-26 | 4116 |  | RGA - STRUCTURE | 7859192 |
| 4118 | 40100.40200.40800.53100.55200.59200 | **Civil Finishing works (Brick work, Plaster,conduiting, concled plumbing, waterproofing)** | 792d | 2025-04-01 | 2027-06-01 |  | start no earlier than 2025-04-01 | RGA -FINISHING | 7803462 |
| 4119 | 40100.40200.40800.53100.55200.59200.61100 | **Flat finishing works** | 631d | 2025-04-01 | 2026-12-22 |  | start no earlier than 2025-04-01 | RGA -FINISHING | 7803562 |
| 4120 | 40100.40200.40800.53100.55200.59200.61100.336400 | **Ground FLOOR** | 130d | 2025-10-22 | 2026-02-28 |  | start no earlier than 2025-10-22 | RGA -FINISHING | 7808092 |
| 4121 | 40100.40200.40800.53100.55200.59200.61100.336400.2684400 | BALCONY RAILING FIXING | 9d | 2025-12-14 | 2025-12-22 | 4015FS-30d |  | RGA -FINISHING | 7389775 |
| 4122 | 40100.40200.40800.53100.55200.59200.61100.336400.2684500 | Block work | 8d | 2026-02-21 | 2026-02-28 | 4126 |  | RGA -FINISHING | 7859202 |
| 4123 | 40100.40200.40800.53100.55200.59200.61100.336400.2684600 | CONCEALED ELEC CONDUITING & ITS FINISHING | 5d | 2025-10-22 | 2025-10-26 | 3966FS-8d |  | RGA -FINISHING | 7389795 |
| 4124 | 40100.40200.40800.53100.55200.59200.61100.336400.2684700 | PLASTER APPLICATION | 6d | 2026-01-30 | 2026-02-04 | 4315FS+23d |  | RGA -FINISHING | 7389805 |
| 4125 | 40100.40200.40800.53100.55200.59200.61100.336400.2684800 | CONCEALED PLUMBING | 8d | 2026-02-05 | 2026-02-12 | 4124 |  | RGA -FINISHING | 7389815 |
| 4126 | 40100.40200.40800.53100.55200.59200.61100.336400.2684900 | WATERPROOFING WORK FOR TOILETS, KITCHEN SUNK & PLANTERS | 8d | 2026-02-13 | 2026-02-20 | 4125 |  | RGA -FINISHING | 7389825 |

Notes:
- 4104: AVg Slab Cycle of 21 days

| ID | WBS | Task | Duration | Start | Finish | Predecessors | Constraint | Calendar | Unique_Task_ID |
| --- | --- | --- | --- | --- | --- | --- | --- | --- | --- |
| 4127 | 40100.40200.40800.53100.55200.59200.61100.336300 | **1ST FLOOR** | 138d | 2025-11-02 | 2026-03-19 |  | start no earlier than 2025-11-02 | RGA -FINISHING | 7808102 |
| 4128 | 40100.40200.40800.53100.55200.59200.61100.336300.2685000 | BALCONY RAILING FIXING | 9d | 2026-01-04 | 2026-01-12 | 4019FS-31d |  | RGA -FINISHING | 7389835 |
| 4129 | 40100.40200.40800.53100.55200.59200.61100.336300.2685100 | Block work | 8d | 2026-03-12 | 2026-03-19 | 4133 |  | RGA -FINISHING | 7389845 |
| 4130 | 40100.40200.40800.53100.55200.59200.61100.336300.2685200 | CONCEALED ELEC CONDUITING & ITS FINISHING | 5d | 2025-11-02 | 2025-11-06 | 4007FS-7d |  | RGA -FINISHING | 7389855 |
| 4131 | 40100.40200.40800.53100.55200.59200.61100.336300.2685300 | PLASTER APPLICATION | 6d | 2026-02-18 | 2026-02-23 | 4328FS+30d |  | RGA -FINISHING | 7389865 |
| 4132 | 40100.40200.40800.53100.55200.59200.61100.336300.2685400 | CONCEALED PLUMBING | 8d | 2026-02-24 | 2026-03-03 | 4131 |  | RGA -FINISHING | 7389875 |
| 4133 | 40100.40200.40800.53100.55200.59200.61100.336300.2685500 | WATERPROOFING WORK FOR TOILETS, KITCHEN SUNK & PLANTERS | 8d | 2026-03-04 | 2026-03-11 | 4132 |  | RGA -FINISHING | 7389885 |
| 4134 | 40100.40200.40800.53100.55200.59200.61100.336200 | **2nd FLOOR** | 103d | 2025-12-12 | 2026-03-24 |  | start no earlier than 2025-12-12 | RGA -FINISHING | 7808112 |
| 4135 | 40100.40200.40800.53100.55200.59200.61100.336200.2685600 | BALCONY RAILING FIXING | 9d | 2026-01-19 | 2026-01-27 | 4023FS-31d |  | RGA -FINISHING | 7389895 |
| 4136 | 40100.40200.40800.53100.55200.59200.61100.336200.2685700 | Block work | 8d | 2026-03-17 | 2026-03-24 | 4140 |  | RGA -FINISHING | 7389905 |
| 4137 | 40100.40200.40800.53100.55200.59200.61100.336200.2685800 | CONCEALED ELEC CONDUITING & ITS FINISHING | 5d | 2025-12-12 | 2025-12-16 | 4011FS-7d |  | RGA -FINISHING | 7389915 |
| 4138 | 40100.40200.40800.53100.55200.59200.61100.336200.2685900 | PLASTER APPLICATION | 6d | 2026-02-23 | 2026-02-28 | 4341FS+20d |  | RGA -FINISHING | 7389925 |
| 4139 | 40100.40200.40800.53100.55200.59200.61100.336200.2686000 | CONCEALED PLUMBING | 8d | 2026-03-01 | 2026-03-08 | 4138 |  | RGA -FINISHING | 7389935 |
| 4140 | 40100.40200.40800.53100.55200.59200.61100.336200.2686100 | WATERPROOFING WORK FOR TOILETS, KITCHEN SUNK & PLANTERS | 8d | 2026-03-09 | 2026-03-16 | 4139 |  | RGA -FINISHING | 7389945 |
| 4141 | 40100.40200.40800.53100.55200.59200.61100.336100 | **3rd FLOOR** | 87d | 2026-01-06 | 2026-04-02 |  | start no earlier than 2026-01-06 | RGA -FINISHING | 7808122 |
| 4142 | 40100.40200.40800.53100.55200.59200.61100.336100.2686200 | BALCONY RAILING FIXING | 9d | 2026-02-13 | 2026-02-21 | 4027FS-15d |  | RGA -FINISHING | 7389955 |
| 4143 | 40100.40200.40800.53100.55200.59200.61100.336100.2686300 | Block work | 8d | 2026-03-26 | 2026-04-02 | 4147 |  | RGA -FINISHING | 7389965 |
| 4144 | 40100.40200.40800.53100.55200.59200.61100.336100.2686400 | CONCEALED ELEC CONDUITING & ITS FINISHING | 5d | 2026-01-06 | 2026-01-10 | 4015FS-7d |  | RGA -FINISHING | 7389975 |
| 4145 | 40100.40200.40800.53100.55200.59200.61100.336100.2686500 | PLASTER APPLICATION | 6d | 2026-03-04 | 2026-03-09 | 4354FS+4d |  | RGA -FINISHING | 7389985 |
| 4146 | 40100.40200.40800.53100.55200.59200.61100.336100.2686600 | CONCEALED PLUMBING | 8d | 2026-03-10 | 2026-03-17 | 4145 |  | RGA -FINISHING | 7389995 |
| 4147 | 40100.40200.40800.53100.55200.59200.61100.336100.2686700 | WATERPROOFING WORK FOR TOILETS, KITCHEN SUNK & PLANTERS | 8d | 2026-03-18 | 2026-03-25 | 4146 |  | RGA -FINISHING | 7390005 |
| 4148 | 40100.40200.40800.53100.55200.59200.61100.336000 | **4th FLOOR** | 70d | 2026-01-28 | 2026-04-07 |  | start no earlier than 2026-01-28 | RGA -FINISHING | 7808132 |
| 4149 | 40100.40200.40800.53100.55200.59200.61100.336000.2686800 | BALCONY RAILING FIXING | 9d | 2026-02-22 | 2026-03-02 | 4031FS-15d |  | RGA -FINISHING | 7390015 |
| 4150 | 40100.40200.40800.53100.55200.59200.61100.336000.2686900 | Block work | 8d | 2026-03-31 | 2026-04-07 | 4154 |  | RGA -FINISHING | 7390025 |
| 4151 | 40100.40200.40800.53100.55200.59200.61100.336000.2687000 | CONCEALED ELEC CONDUITING & ITS FINISHING | 5d | 2026-01-28 | 2026-02-01 | 4019FS-7d |  | RGA -FINISHING | 7390035 |
| 4152 | 40100.40200.40800.53100.55200.59200.61100.336000.2687100 | PLASTER APPLICATION | 6d | 2026-03-09 | 2026-03-14 | 4367 |  | RGA -FINISHING | 7390045 |
| 4153 | 40100.40200.40800.53100.55200.59200.61100.336000.2687200 | CONCEALED PLUMBING | 8d | 2026-03-15 | 2026-03-22 | 4152 |  | RGA -FINISHING | 7390055 |
| 4154 | 40100.40200.40800.53100.55200.59200.61100.336000.2687300 | WATERPROOFING WORK FOR TOILETS, KITCHEN SUNK & PLANTERS | 8d | 2026-03-23 | 2026-03-30 | 4153 |  | RGA -FINISHING | 7390065 |

| ID | WBS | Task | Duration | Start | Finish | Predecessors | Constraint | Calendar | Unique_Task_ID |
| --- | --- | --- | --- | --- | --- | --- | --- | --- | --- |
| 4155 | 40100.40200.40800.53100.55200.59200.61100.335900 | **5th FLOOR** | 64d | 2026-02-12 | 2026-04-16 |  | start no earlier than 2026-02-12 | RGA -FINISHING | 7808142 |
| 4156 | 40100.40200.40800.53100.55200.59200.61100.335900.2687400 | BALCONY RAILING FIXING | 9d | 2026-03-03 | 2026-03-11 | 4035FS-15d |  | RGA -FINISHING | 7390075 |
| 4157 | 40100.40200.40800.53100.55200.59200.61100.335900.2687500 | Block work | 8d | 2026-04-09 | 2026-04-16 | 4161 |  | RGA -FINISHING | 7390085 |
| 4158 | 40100.40200.40800.53100.55200.59200.61100.335900.2687600 | CONCEALED ELEC CONDUITING & ITS FINISHING | 5d | 2026-02-12 | 2026-02-16 | 4023FS-7d |  | RGA -FINISHING | 7390095 |
| 4159 | 40100.40200.40800.53100.55200.59200.61100.335900.2687700 | PLASTER APPLICATION | 6d | 2026-03-18 | 2026-03-23 | 4380 |  | RGA -FINISHING | 7390105 |
| 4160 | 40100.40200.40800.53100.55200.59200.61100.335900.2687800 | CONCEALED PLUMBING | 8d | 2026-03-24 | 2026-03-31 | 4159 |  | RGA -FINISHING | 7390115 |
| 4161 | 40100.40200.40800.53100.55200.59200.61100.335900.2687900 | WATERPROOFING WORK FOR TOILETS, KITCHEN SUNK & PLANTERS | 8d | 2026-04-01 | 2026-04-08 | 4160 |  | RGA -FINISHING | 7390125 |
| 4162 | 40100.40200.40800.53100.55200.59200.61100.335800 | **6th FLOOR** | 64d | 2026-02-21 | 2026-04-25 |  | start no earlier than 2026-02-21 | RGA -FINISHING | 7383105 |
| 4163 | 40100.40200.40800.53100.55200.59200.61100.335800.2688000 | BALCONY RAILING FIXING | 9d | 2026-03-12 | 2026-03-20 | 4039FS-15d |  | RGA -FINISHING | 7390135 |
| 4164 | 40100.40200.40800.53100.55200.59200.61100.335800.2688100 | Block work | 8d | 2026-04-18 | 2026-04-25 | 4168 |  | RGA -FINISHING | 7390145 |
| 4165 | 40100.40200.40800.53100.55200.59200.61100.335800.2688200 | CONCEALED ELEC CONDUITING & ITS FINISHING | 5d | 2026-02-21 | 2026-02-25 | 4027FS-7d |  | RGA -FINISHING | 7390155 |
| 4166 | 40100.40200.40800.53100.55200.59200.61100.335800.2688300 | PLASTER APPLICATION | 6d | 2026-03-27 | 2026-04-01 | 4393 |  | RGA -FINISHING | 7390165 |
| 4167 | 40100.40200.40800.53100.55200.59200.61100.335800.2688400 | CONCEALED PLUMBING | 8d | 2026-04-02 | 2026-04-09 | 4166 |  | RGA -FINISHING | 7390175 |
| 4168 | 40100.40200.40800.53100.55200.59200.61100.335800.2688500 | WATERPROOFING WORK FOR TOILETS, KITCHEN SUNK & PLANTERS | 8d | 2026-04-10 | 2026-04-17 | 4167 |  | RGA -FINISHING | 7390185 |
| 4169 | 40100.40200.40800.53100.55200.59200.61100.335700 | **7th FLOOR** | 64d | 2026-03-02 | 2026-05-04 |  | start no earlier than 2026-03-02 | RGA -FINISHING | 7382935 |
| 4170 | 40100.40200.40800.53100.55200.59200.61100.335700.2688600 | BALCONY RAILING FIXING | 9d | 2026-03-21 | 2026-03-29 | 4043FS-15d |  | RGA -FINISHING | 7390195 |
| 4171 | 40100.40200.40800.53100.55200.59200.61100.335700.2688700 | Block work | 8d | 2026-04-27 | 2026-05-04 | 4175 |  | RGA -FINISHING | 7390205 |
| 4172 | 40100.40200.40800.53100.55200.59200.61100.335700.2688800 | CONCEALED ELEC CONDUITING & ITS FINISHING | 5d | 2026-03-02 | 2026-03-06 | 4031FS-7d |  | RGA -FINISHING | 7390215 |
| 4173 | 40100.40200.40800.53100.55200.59200.61100.335700.2688900 | PLASTER APPLICATION | 6d | 2026-04-05 | 2026-04-10 | 4406 |  | RGA -FINISHING | 7390225 |
| 4174 | 40100.40200.40800.53100.55200.59200.61100.335700.2689000 | CONCEALED PLUMBING | 8d | 2026-04-11 | 2026-04-18 | 4173 |  | RGA -FINISHING | 7390235 |
| 4175 | 40100.40200.40800.53100.55200.59200.61100.335700.2689100 | WATERPROOFING WORK FOR TOILETS, KITCHEN SUNK & PLANTERS | 8d | 2026-04-19 | 2026-04-26 | 4174 |  | RGA -FINISHING | 7390245 |
| 4176 | 40100.40200.40800.53100.55200.59200.61100.335600 | **8th FLOOR** | 64d | 2026-03-11 | 2026-05-13 |  | start no earlier than 2026-03-11 | RGA -FINISHING | 7383095 |
| 4177 | 40100.40200.40800.53100.55200.59200.61100.335600.2689200 | BALCONY RAILING FIXING | 9d | 2026-03-30 | 2026-04-07 | 4047FS-15d |  | RGA -FINISHING | 7390255 |
| 4178 | 40100.40200.40800.53100.55200.59200.61100.335600.2689300 | Block work | 8d | 2026-05-06 | 2026-05-13 | 4182 |  | RGA -FINISHING | 7390265 |
| 4179 | 40100.40200.40800.53100.55200.59200.61100.335600.2689400 | CONCEALED ELEC CONDUITING & ITS FINISHING | 5d | 2026-03-11 | 2026-03-15 | 4035FS-7d |  | RGA -FINISHING | 7390275 |
| 4180 | 40100.40200.40800.53100.55200.59200.61100.335600.2689500 | PLASTER APPLICATION | 6d | 2026-04-14 | 2026-04-19 | 4419 |  | RGA -FINISHING | 7390285 |
| 4181 | 40100.40200.40800.53100.55200.59200.61100.335600.2689600 | CONCEALED PLUMBING | 8d | 2026-04-20 | 2026-04-27 | 4180 |  | RGA -FINISHING | 7390295 |
| 4182 | 40100.40200.40800.53100.55200.59200.61100.335600.2689700 | WATERPROOFING WORK FOR TOILETS, KITCHEN SUNK & PLANTERS | 8d | 2026-04-28 | 2026-05-05 | 4181 |  | RGA -FINISHING | 7390305 |

| ID | WBS | Task | Duration | Start | Finish | Predecessors | Constraint | Calendar | Unique_Task_ID |
| --- | --- | --- | --- | --- | --- | --- | --- | --- | --- |
| 4183 | 40100.40200.40800.53100.55200.59200.61100.335500 | **9th FLOOR** | 64d | 2026-03-20 | 2026-05-22 |  | start no earlier than 2026-03-20 | RGA -FINISHING | 7383085 |
| 4184 | 40100.40200.40800.53100.55200.59200.61100.335500.2689800 | BALCONY RAILING FIXING | 9d | 2026-04-08 | 2026-04-16 | 4051FS-15d |  | RGA -FINISHING | 7390315 |
| 4185 | 40100.40200.40800.53100.55200.59200.61100.335500.2689900 | Block work | 8d | 2026-05-15 | 2026-05-22 | 4189 |  | RGA -FINISHING | 7390325 |
| 4186 | 40100.40200.40800.53100.55200.59200.61100.335500.2690000 | CONCEALED ELEC CONDUITING & ITS FINISHING | 5d | 2026-03-20 | 2026-03-24 | 4039FS-7d |  | RGA -FINISHING | 7390335 |
| 4187 | 40100.40200.40800.53100.55200.59200.61100.335500.2690100 | PLASTER APPLICATION | 6d | 2026-04-23 | 2026-04-28 | 4432 |  | RGA -FINISHING | 7390345 |
| 4188 | 40100.40200.40800.53100.55200.59200.61100.335500.2690200 | CONCEALED PLUMBING | 8d | 2026-04-29 | 2026-05-06 | 4187 |  | RGA -FINISHING | 7390355 |
| 4189 | 40100.40200.40800.53100.55200.59200.61100.335500.2690300 | WATERPROOFING WORK FOR TOILETS, KITCHEN SUNK & PLANTERS | 8d | 2026-05-07 | 2026-05-14 | 4188 |  | RGA -FINISHING | 7390365 |
| 4190 | 40100.40200.40800.53100.55200.59200.61100.335400 | **10th FLOOR** | 64d | 2026-03-29 | 2026-05-31 |  | start no earlier than 2026-03-29 | RGA -FINISHING | 7383075 |
| 4191 | 40100.40200.40800.53100.55200.59200.61100.335400.2690400 | BALCONY RAILING FIXING | 9d | 2026-04-17 | 2026-04-25 | 4055FS-16d |  | RGA -FINISHING | 7390375 |
| 4192 | 40100.40200.40800.53100.55200.59200.61100.335400.2690500 | Block work | 8d | 2026-05-24 | 2026-05-31 | 4196 |  | RGA -FINISHING | 7390385 |
| 4193 | 40100.40200.40800.53100.55200.59200.61100.335400.2690600 | CONCEALED ELEC CONDUITING & ITS FINISHING | 5d | 2026-03-29 | 2026-04-02 | 4043FS-7d |  | RGA -FINISHING | 7390395 |
| 4194 | 40100.40200.40800.53100.55200.59200.61100.335400.2690700 | PLASTER APPLICATION | 6d | 2026-05-02 | 2026-05-07 | 4445 |  | RGA -FINISHING | 7390405 |
| 4195 | 40100.40200.40800.53100.55200.59200.61100.335400.2690800 | CONCEALED PLUMBING | 8d | 2026-05-08 | 2026-05-15 | 4194 |  | RGA -FINISHING | 7390415 |
| 4196 | 40100.40200.40800.53100.55200.59200.61100.335400.2690900 | WATERPROOFING WORK FOR TOILETS, KITCHEN SUNK & PLANTERS | 8d | 2026-05-16 | 2026-05-23 | 4195 |  | RGA -FINISHING | 7390425 |
| 4197 | 40100.40200.40800.53100.55200.59200.61100.335300 | **11th FLOOR** | 64d | 2026-04-07 | 2026-06-09 |  | start no earlier than 2026-04-07 | RGA -FINISHING | 7382845 |
| 4198 | 40100.40200.40800.53100.55200.59200.61100.335300.2691000 | BALCONY RAILING FIXING | 9d | 2026-04-26 | 2026-05-04 | 4059FS-16d |  | RGA -FINISHING | 7390435 |
| 4199 | 40100.40200.40800.53100.55200.59200.61100.335300.2691100 | Block work | 8d | 2026-06-02 | 2026-06-09 | 4203 |  | RGA -FINISHING | 7390445 |
| 4200 | 40100.40200.40800.53100.55200.59200.61100.335300.2691200 | CONCEALED ELEC CONDUITING & ITS FINISHING | 5d | 2026-04-07 | 2026-04-11 | 4047FS-7d |  | RGA -FINISHING | 7390455 |
| 4201 | 40100.40200.40800.53100.55200.59200.61100.335300.2691300 | PLASTER APPLICATION | 6d | 2026-05-11 | 2026-05-16 | 4458 |  | RGA -FINISHING | 7390465 |
| 4202 | 40100.40200.40800.53100.55200.59200.61100.335300.2691400 | CONCEALED PLUMBING | 8d | 2026-05-17 | 2026-05-24 | 4201 |  | RGA -FINISHING | 7390475 |
| 4203 | 40100.40200.40800.53100.55200.59200.61100.335300.2691500 | WATERPROOFING WORK FOR TOILETS, KITCHEN SUNK & PLANTERS | 8d | 2026-05-25 | 2026-06-01 | 4202 |  | RGA -FINISHING | 7390485 |
| 4204 | 40100.40200.40800.53100.55200.59200.61100.335200 | **12th FLOOR** | 57d | 2026-04-16 | 2026-06-11 |  | start no earlier than 2026-04-16 | RGA -FINISHING | 7382855 |
| 4205 | 40100.40200.40800.53100.55200.59200.61100.335200.2691600 | BALCONY RAILING FIXING | 9d | 2026-05-06 | 2026-05-14 | 4063FS-15d |  | RGA -FINISHING | 7390495 |
| 4206 | 40100.40200.40800.53100.55200.59200.61100.335200.2691700 | Block work | 8d | 2026-06-04 | 2026-06-11 | 4209 |  | RGA -FINISHING | 7390505 |
| 4207 | 40100.40200.40800.53100.55200.59200.61100.335200.2691800 | CONCEALED ELEC CONDUITING & ITS FINISHING | 5d | 2026-04-16 | 2026-04-20 | 4051FS-7d |  | RGA -FINISHING | 7390515 |
| 4208 | 40100.40200.40800.53100.55200.59200.61100.335200.2691900 | PLASTER APPLICATION | 6d | 2026-05-21 | 2026-05-26 | 4471 |  | RGA -FINISHING | 7390525 |
| 4209 | 40100.40200.40800.53100.55200.59200.61100.335200.2692000 | CONCEALED PLUMBING | 8d | 2026-05-27 | 2026-06-03 | 4208 |  | RGA -FINISHING | 7390535 |
| 4210 | 40100.40200.40800.53100.55200.59200.61100.335200.2692100 | WATERPROOFING WORK FOR TOILETS, KITCHEN SUNK & PLANTERS | 8d | 2026-06-04 | 2026-06-11 | 4209 |  | RGA -FINISHING | 7390545 |

| ID | WBS | Task | Duration | Start | Finish | Predecessors | Constraint | Calendar | Unique_Task_ID |
| --- | --- | --- | --- | --- | --- | --- | --- | --- | --- |
| 4211 | 40100.40200.40800.53100.55200.59200.61100.335100 | **13th FLOOR** | 81d | 2026-04-25 | 2026-07-14 |  | start no earlier than 2026-04-25 | RGA -FINISHING | 7382865 |
| 4212 | 40100.40200.40800.53100.55200.59200.61100.335100.2692200 | BALCONY RAILING FIXING | 9d | 2026-05-15 | 2026-05-23 | 4067FS-15d |  | RGA -FINISHING | 7390555 |
| 4213 | 40100.40200.40800.53100.55200.59200.61100.335100.2692300 | Block work | 8d | 2026-07-07 | 2026-07-14 | 4217 |  | RGA -FINISHING | 7390565 |
| 4214 | 40100.40200.40800.53100.55200.59200.61100.335100.2692400 | CONCEALED ELEC CONDUITING & ITS FINISHING | 5d | 2026-04-25 | 2026-04-29 | 4055FS-8d |  | RGA -FINISHING | 7390575 |
| 4215 | 40100.40200.40800.53100.55200.59200.61100.335100.2692500 | PLASTER APPLICATION | 15d | 2026-06-01 | 2026-06-15 | 4484 |  | RGA -FINISHING | 7390585 |
| 4216 | 40100.40200.40800.53100.55200.59200.61100.335100.2692600 | CONCEALED PLUMBING | 9d | 2026-06-16 | 2026-06-24 | 4215 |  | RGA -FINISHING | 7390595 |
| 4217 | 40100.40200.40800.53100.55200.59200.61100.335100.2692700 | WATERPROOFING WORK FOR TOILETS, KITCHEN SUNK & PLANTERS | 12d | 2026-06-25 | 2026-07-06 | 4216 |  | RGA -FINISHING | 7390605 |
| 4218 | 40100.40200.40800.53100.55200.59200.61100.335000 | **14th FLOOR** | 88d | 2026-05-05 | 2026-07-31 |  | start no earlier than 2026-05-05 | RGA -FINISHING | 7382875 |
| 4219 | 40100.40200.40800.53100.55200.59200.61100.335000.2692800 | BALCONY RAILING FIXING | 9d | 2026-06-01 | 2026-06-09 | 4071FS-7d |  | RGA -FINISHING | 7390615 |
| 4220 | 40100.40200.40800.53100.55200.59200.61100.335000.2692900 | Block work | 8d | 2026-07-24 | 2026-07-31 | 4224 |  | RGA -FINISHING | 7390625 |
| 4221 | 40100.40200.40800.53100.55200.59200.61100.335000.2693000 | CONCEALED ELEC CONDUITING & ITS FINISHING | 5d | 2026-05-05 | 2026-05-09 | 4059FS-7d |  | RGA -FINISHING | 7390635 |
| 4222 | 40100.40200.40800.53100.55200.59200.61100.335000.2693100 | PLASTER APPLICATION | 15d | 2026-06-18 | 2026-07-02 | 4497 |  | RGA -FINISHING | 7390645 |
| 4223 | 40100.40200.40800.53100.55200.59200.61100.335000.2693200 | CONCEALED PLUMBING | 9d | 2026-07-03 | 2026-07-11 | 4222 |  | RGA -FINISHING | 7390655 |
| 4224 | 40100.40200.40800.53100.55200.59200.61100.335000.2693300 | WATERPROOFING WORK FOR TOILETS, KITCHEN SUNK & PLANTERS | 12d | 2026-07-12 | 2026-07-23 | 4223 |  | RGA -FINISHING | 7390665 |
| 4225 | 40100.40200.40800.53100.55200.59200.61100.334900 | **15th FLOOR** | 86d | 2026-05-14 | 2026-08-07 |  | start no earlier than 2026-05-14 | RGA -FINISHING | 7382885 |
| 4226 | 40100.40200.40800.53100.55200.59200.61100.334900.2693400 | BALCONY RAILING FIXING | 9d | 2026-06-08 | 2026-06-16 | 4075FS-9.5d |  | RGA -FINISHING | 7390675 |
| 4227 | 40100.40200.40800.53100.55200.59200.61100.334900.2693500 | Block work | 8d | 2026-07-31 | 2026-08-07 | 4231 |  | RGA -FINISHING | 7390685 |
| 4228 | 40100.40200.40800.53100.55200.59200.61100.334900.2693600 | CONCEALED ELEC CONDUITING & ITS FINISHING | 5d | 2026-05-14 | 2026-05-18 | 4063FS-7d |  | RGA -FINISHING | 7390695 |
| 4229 | 40100.40200.40800.53100.55200.59200.61100.334900.2693700 | PLASTER APPLICATION | 15d | 2026-06-25 | 2026-07-09 | 4510 |  | RGA -FINISHING | 7390705 |
| 4230 | 40100.40200.40800.53100.55200.59200.61100.334900.2693800 | CONCEALED PLUMBING | 9d | 2026-07-10 | 2026-07-18 | 4229 |  | RGA -FINISHING | 7390715 |
| 4231 | 40100.40200.40800.53100.55200.59200.61100.334900.2693900 | WATERPROOFING WORK FOR TOILETS, KITCHEN SUNK & PLANTERS | 12d | 2026-07-19 | 2026-07-30 | 4230 |  | RGA -FINISHING | 7390725 |
| 4232 | 40100.40200.40800.53100.55200.59200.61100.334800 | **16th FLOOR** | 79d | 2026-05-23 | 2026-08-09 |  | start no earlier than 2026-05-23 | RGA -FINISHING | 7382895 |
| 4233 | 40100.40200.40800.53100.55200.59200.61100.334800.2694000 | BALCONY RAILING FIXING | 9d | 2026-06-10 | 2026-06-18 | 4079FS-23.5d |  | RGA -FINISHING | 7390735 |
| 4234 | 40100.40200.40800.53100.55200.59200.61100.334800.2694100 | Block work | 8d | 2026-08-02 | 2026-08-09 | 4238 |  | RGA -FINISHING | 7390745 |
| 4235 | 40100.40200.40800.53100.55200.59200.61100.334800.2694200 | CONCEALED ELEC CONDUITING & ITS FINISHING | 5d | 2026-05-23 | 2026-05-27 | 4067FS-7d |  | RGA -FINISHING | 7390755 |
| 4236 | 40100.40200.40800.53100.55200.59200.61100.334800.2694300 | PLASTER APPLICATION | 15d | 2026-06-27 | 2026-07-11 | 4523 |  | RGA -FINISHING | 7390765 |
| 4237 | 40100.40200.40800.53100.55200.59200.61100.334800.2694400 | CONCEALED PLUMBING | 9d | 2026-07-12 | 2026-07-20 | 4236 |  | RGA -FINISHING | 7390775 |
| 4238 | 40100.40200.40800.53100.55200.59200.61100.334800.2694500 | WATERPROOFING WORK FOR TOILETS, KITCHEN SUNK & PLANTERS | 12d | 2026-07-21 | 2026-08-01 | 4237 |  | RGA -FINISHING | 7390785 |

| ID | WBS | Task | Duration | Start | Finish | Predecessors | Constraint | Calendar | Unique_Task_ID |
| --- | --- | --- | --- | --- | --- | --- | --- | --- | --- |
| 4239 | 40100.40200.40800.53100.55200.59200.61100.334700 | **17th FLOOR** | 88d | 2026-06-01 | 2026-08-27 |  | start no earlier than 2026-06-01 | RGA -FINISHING | 7382905 |
| 4240 | 40100.40200.40800.53100.55200.59200.61100.334700.2694600 | BALCONY RAILING FIXING | 9d | 2026-06-28 | 2026-07-06 | 4083FS-24d |  | RGA -FINISHING | 7390795 |
| 4241 | 40100.40200.40800.53100.55200.59200.61100.334700.2694700 | Block work | 8d | 2026-08-20 | 2026-08-27 | 4245 |  | RGA -FINISHING | 7390805 |
| 4242 | 40100.40200.40800.53100.55200.59200.61100.334700.2694800 | CONCEALED ELEC CONDUITING & ITS FINISHING | 5d | 2026-06-01 | 2026-06-05 | 4071FS-7d |  | RGA -FINISHING | 7390815 |
| 4243 | 40100.40200.40800.53100.55200.59200.61100.334700.2694900 | PLASTER APPLICATION | 15d | 2026-07-15 | 2026-07-29 | 4536 |  | RGA -FINISHING | 7390825 |
| 4244 | 40100.40200.40800.53100.55200.59200.61100.334700.2695000 | CONCEALED PLUMBING | 9d | 2026-07-30 | 2026-08-07 | 4243 |  | RGA -FINISHING | 7390835 |
| 4245 | 40100.40200.40800.53100.55200.59200.61100.334700.2695100 | WATERPROOFING WORK FOR TOILETS, KITCHEN SUNK & PLANTERS | 12d | 2026-08-08 | 2026-08-19 | 4244 |  | RGA -FINISHING | 7390845 |
| 4246 | 40100.40200.40800.53100.55200.59200.61100.334600 | **18th FLOOR** | 95d | 2026-06-10 | 2026-09-12 |  | start no earlier than 2026-06-10 | RGA -FINISHING | 7382915 |
| 4247 | 40100.40200.40800.53100.55200.59200.61100.334600.2695200 | BALCONY RAILING FIXING | 9d | 2026-07-14 | 2026-07-22 | 4087FS-16d |  | RGA -FINISHING | 7390855 |
| 4248 | 40100.40200.40800.53100.55200.59200.61100.334600.2695300 | Block work | 8d | 2026-09-05 | 2026-09-12 | 4252 |  | RGA -FINISHING | 7390865 |
| 4249 | 40100.40200.40800.53100.55200.59200.61100.334600.2695400 | CONCEALED ELEC CONDUITING & ITS FINISHING | 5d | 2026-06-10 | 2026-06-14 | 4075FS-7.5d |  | RGA -FINISHING | 7390875 |
| 4250 | 40100.40200.40800.53100.55200.59200.61100.334600.2695500 | PLASTER APPLICATION | 15d | 2026-07-31 | 2026-08-14 | 4549 |  | RGA -FINISHING | 7390885 |
| 4251 | 40100.40200.40800.53100.55200.59200.61100.334600.2695600 | CONCEALED PLUMBING | 9d | 2026-08-15 | 2026-08-23 | 4250 |  | RGA -FINISHING | 7390895 |
| 4252 | 40100.40200.40800.53100.55200.59200.61100.334600.2695700 | WATERPROOFING WORK FOR TOILETS, KITCHEN SUNK & PLANTERS | 12d | 2026-08-24 | 2026-09-04 | 4251 |  | RGA -FINISHING | 7390905 |
| 4253 | 40100.40200.40800.53100.55200.59200.61100.334500 | **19th FLOOR** | 57d | 2026-06-20 | 2026-08-15 |  | start no earlier than 2026-06-20 | RGA -FINISHING | 7382925 |
| 4254 | 40100.40200.40800.53100.55200.59200.61100.334500.2695800 | BALCONY RAILING FIXING | 9d | 2026-07-23 | 2026-07-31 | 4091FS-15d |  | RGA -FINISHING | 7390915 |
| 4255 | 40100.40200.40800.53100.55200.59200.61100.334500.2695900 | Block work | 8d | 2026-08-08 | 2026-08-15 | 4259 |  | RGA -FINISHING | 7390925 |
| 4256 | 40100.40200.40800.53100.55200.59200.61100.334500.2696000 | CONCEALED ELEC CONDUITING & ITS FINISHING | 5d | 2026-06-20 | 2026-06-24 | 4079FS-13.5d |  | RGA -FINISHING | 7390935 |
| 4257 | 40100.40200.40800.53100.55200.59200.61100.334500.2696100 | PLASTER APPLICATION | 15d | 2026-07-03 | 2026-07-17 | 4562 |  | RGA -FINISHING | 7390945 |
| 4258 | 40100.40200.40800.53100.55200.59200.61100.334500.2696200 | CONCEALED PLUMBING | 9d | 2026-07-18 | 2026-07-26 | 4257 |  | RGA -FINISHING | 7390955 |
| 4259 | 40100.40200.40800.53100.55200.59200.61100.334500.2696300 | WATERPROOFING WORK FOR TOILETS, KITCHEN SUNK & PLANTERS | 12d | 2026-07-27 | 2026-08-07 | 4258 |  | RGA -FINISHING | 7390965 |
| 4260 | 40100.40200.40800.53100.55200.59200.61100.334400 | **20th FLOOR** | 78d | 2026-07-14 | 2026-09-29 |  | start no earlier than 2026-07-14 | RGA -FINISHING | 7382955 |
| 4261 | 40100.40200.40800.53100.55200.59200.61100.334400.2696400 | BALCONY RAILING FIXING | 9d | 2026-07-31 | 2026-08-08 | 4095FS-15d |  | RGA -FINISHING | 7390975 |
| 4262 | 40100.40200.40800.53100.55200.59200.61100.334400.2696500 | Block work | 8d | 2026-09-22 | 2026-09-29 | 4266 |  | RGA -FINISHING | 7390985 |
| 4263 | 40100.40200.40800.53100.55200.59200.61100.334400.2696600 | CONCEALED ELEC CONDUITING & ITS FINISHING | 5d | 2026-07-14 | 2026-07-18 | 4083FS-8d |  | RGA -FINISHING | 7390995 |
| 4264 | 40100.40200.40800.53100.55200.59200.61100.334400.2696700 | PLASTER APPLICATION | 15d | 2026-08-17 | 2026-08-31 | 4575 |  | RGA -FINISHING | 7391005 |
| 4265 | 40100.40200.40800.53100.55200.59200.61100.334400.2696800 | CONCEALED PLUMBING | 9d | 2026-09-01 | 2026-09-09 | 4264 |  | RGA -FINISHING | 7391015 |
| 4266 | 40100.40200.40800.53100.55200.59200.61100.334400.2696900 | WATERPROOFING WORK FOR TOILETS, KITCHEN SUNK & PLANTERS | 12d | 2026-09-10 | 2026-09-21 | 4265 |  | RGA -FINISHING | 7391025 |

Notes:
- 4248: Last floor BW completion 2 months post Last RCC
- 4255: Last floor BW completion 2 months post Last RCC
- 4262: Last floor BW completion 2 months post Last RCC

| ID | WBS | Task | Duration | Start | Finish | Predecessors | Constraint | Calendar | Unique_Task_ID |
| --- | --- | --- | --- | --- | --- | --- | --- | --- | --- |
| 4267 | 40100.40200.40800.53100.55200.59200.61100.334300 | **21th FLOOR** | 77d | 2026-07-23 | 2026-10-07 |  | start no earlier than 2026-07-23 | RGA -FINISHING | 7382965 |
| 4268 | 40100.40200.40800.53100.55200.59200.61100.334300.2697000 | BALCONY RAILING FIXING | 9d | 2026-08-08 | 2026-08-16 | 4099FS-16d |  | RGA -FINISHING | 7391035 |
| 4269 | 40100.40200.40800.53100.55200.59200.61100.334300.2697100 | Block work | 8d | 2026-09-30 | 2026-10-07 | 4273 |  | RGA -FINISHING | 7391045 |
| 4270 | 40100.40200.40800.53100.55200.59200.61100.334300.2697200 | CONCEALED ELEC CONDUITING & ITS FINISHING | 5d | 2026-07-23 | 2026-07-27 | 4087FS-7d |  | RGA -FINISHING | 7391055 |
| 4271 | 40100.40200.40800.53100.55200.59200.61100.334300.2697300 | PLASTER APPLICATION | 15d | 2026-08-25 | 2026-09-08 | 4588 |  | RGA -FINISHING | 7391065 |
| 4272 | 40100.40200.40800.53100.55200.59200.61100.334300.2697400 | CONCEALED PLUMBING | 9d | 2026-09-09 | 2026-09-17 | 4271 |  | RGA -FINISHING | 7391075 |
| 4273 | 40100.40200.40800.53100.55200.59200.61100.334300.2697500 | WATERPROOFING WORK FOR TOILETS, KITCHEN SUNK & PLANTERS | 12d | 2026-09-18 | 2026-09-29 | 4272 |  | RGA -FINISHING | 7391085 |
| 4274 | 40100.40200.40800.53100.55200.59200.61100.334200 | **22th FLOOR** | 78d | 2026-07-31 | 2026-10-16 |  | start no earlier than 2026-07-31 | RGA -FINISHING | 7382985 |
| 4275 | 40100.40200.40800.53100.55200.59200.61100.334200.2697600 | BALCONY RAILING FIXING | 9d | 2026-08-17 | 2026-08-25 | 4103FS-15d |  | RGA -FINISHING | 7391095 |
| 4276 | 40100.40200.40800.53100.55200.59200.61100.334200.2697700 | Block work | 8d | 2026-10-09 | 2026-10-16 | 4280 |  | RGA -FINISHING | 7391105 |
| 4277 | 40100.40200.40800.53100.55200.59200.61100.334200.2697800 | CONCEALED ELEC CONDUITING & ITS FINISHING | 5d | 2026-07-31 | 2026-08-04 | 4091FS-7d |  | RGA -FINISHING | 7391115 |
| 4278 | 40100.40200.40800.53100.55200.59200.61100.334200.2697900 | PLASTER APPLICATION | 15d | 2026-09-03 | 2026-09-17 | 4601 |  | RGA -FINISHING | 7391125 |
| 4279 | 40100.40200.40800.53100.55200.59200.61100.334200.2698000 | CONCEALED PLUMBING | 9d | 2026-09-18 | 2026-09-26 | 4278 |  | RGA -FINISHING | 7391135 |
| 4280 | 40100.40200.40800.53100.55200.59200.61100.334200.2698100 | WATERPROOFING WORK FOR TOILETS, KITCHEN SUNK & PLANTERS | 12d | 2026-09-27 | 2026-10-08 | 4279 |  | RGA -FINISHING | 7391145 |
| 4281 | 40100.40200.40800.53100.55200.59200.61100.334100 | **23th FLOOR** | 109d | 2026-08-08 | 2026-11-24 |  | start no earlier than 2026-08-08 | RGA -FINISHING | 7383005 |
| 4282 | 40100.40200.40800.53100.55200.59200.61100.334100.2698200 | BALCONY RAILING FIXING | 9d | 2026-08-26 | 2026-09-03 | 4275 |  | RGA -FINISHING | 7391155 |
| 4283 | 40100.40200.40800.53100.55200.59200.61100.334100.2698300 | Block work | 8d | 2026-11-17 | 2026-11-24 | 4287 |  | RGA -FINISHING | 7391165 |
| 4284 | 40100.40200.40800.53100.55200.59200.61100.334100.2698400 | CONCEALED ELEC CONDUITING & ITS FINISHING | 5d | 2026-08-08 | 2026-08-12 | 4095FS-7d |  | RGA -FINISHING | 7391175 |
| 4285 | 40100.40200.40800.53100.55200.59200.61100.334100.2698500 | PLASTER APPLICATION | 15d | 2026-10-12 | 2026-10-26 | 4614FS+30d |  | RGA -FINISHING | 7391185 |
| 4286 | 40100.40200.40800.53100.55200.59200.61100.334100.2698600 | CONCEALED PLUMBING | 9d | 2026-10-27 | 2026-11-04 | 4285 |  | RGA -FINISHING | 7391195 |
| 4287 | 40100.40200.40800.53100.55200.59200.61100.334100.2698700 | WATERPROOFING WORK FOR TOILETS, KITCHEN SUNK & PLANTERS | 12d | 2026-11-05 | 2026-11-16 | 4286 |  | RGA -FINISHING | 7391205 |
| 4288 | 40100.40200.40800.53100.55200.59200.61100.334000 | **24th FLOOR** | 109d | 2026-08-17 | 2026-12-03 |  | start no earlier than 2026-08-17 | RGA -FINISHING | 7383015 |
| 4289 | 40100.40200.40800.53100.55200.59200.61100.334000.2698800 | BALCONY RAILING FIXING | 9d | 2026-09-04 | 2026-09-12 | 4282 |  | RGA -FINISHING | 7391215 |
| 4290 | 40100.40200.40800.53100.55200.59200.61100.334000.2698900 | Block work | 8d | 2026-11-26 | 2026-12-03 | 4294 |  | RGA -FINISHING | 7391225 |
| 4291 | 40100.40200.40800.53100.55200.59200.61100.334000.2699000 | CONCEALED ELEC CONDUITING & ITS FINISHING | 5d | 2026-08-17 | 2026-08-21 | 4099FS-7d |  | RGA -FINISHING | 7391235 |
| 4292 | 40100.40200.40800.53100.55200.59200.61100.334000.2699100 | PLASTER APPLICATION | 15d | 2026-10-21 | 2026-11-04 | 4627FS+30d |  | RGA -FINISHING | 7391245 |
| 4293 | 40100.40200.40800.53100.55200.59200.61100.334000.2699200 | CONCEALED PLUMBING | 9d | 2026-11-05 | 2026-11-13 | 4292 |  | RGA -FINISHING | 7391255 |
| 4294 | 40100.40200.40800.53100.55200.59200.61100.334000.2699300 | WATERPROOFING WORK FOR TOILETS, KITCHEN SUNK & PLANTERS | 12d | 2026-11-14 | 2026-11-25 | 4293 |  | RGA -FINISHING | 7391265 |

Notes:
- 4269: Last floor BW completion 2 months post Last RCC
- 4276: Last floor BW completion 2 months post Last RCC
- 4283: Last floor BW completion 2 months post Last RCC
- 4290: Last floor BW completion 2 months post Last RCC

| ID | WBS | Task | Duration | Start | Finish | Predecessors | Constraint | Calendar | Unique_Task_ID |
| --- | --- | --- | --- | --- | --- | --- | --- | --- | --- |
| 4295 | 40100.40200.40800.53100.55200.59200.61100.333900 | **25thFLOOR** | 120d | 2026-08-25 | 2026-12-22 |  | start no earlier than 2026-08-25 | RGA -FINISHING | 7383035 |
| 4296 | 40100.40200.40800.53100.55200.59200.61100.333900.2699400 | BALCONY RAILING FIXING | 9d | 2026-09-13 | 2026-09-21 | 4289 |  | RGA -FINISHING | 7391275 |
| 4297 | 40100.40200.40800.53100.55200.59200.61100.333900.2699500 | Block work | 8d | 2026-12-15 | 2026-12-22 | 4301 |  | RGA -FINISHING | 7391285 |
| 4298 | 40100.40200.40800.53100.55200.59200.61100.333900.2699600 | CONCEALED ELEC CONDUITING & ITS FINISHING | 5d | 2026-08-25 | 2026-08-29 | 4103FS-7d |  | RGA -FINISHING | 7391295 |
| 4299 | 40100.40200.40800.53100.55200.59200.61100.333900.2699700 | PLASTER APPLICATION | 15d | 2026-11-09 | 2026-11-23 | 4640FS+40d |  | RGA -FINISHING | 7391305 |
| 4300 | 40100.40200.40800.53100.55200.59200.61100.333900.2699800 | CONCEALED PLUMBING | 9d | 2026-11-24 | 2026-12-02 | 4299 |  | RGA -FINISHING | 7391315 |
| 4301 | 40100.40200.40800.53100.55200.59200.61100.333900.2699900 | WATERPROOFING WORK FOR TOILETS, KITCHEN SUNK & PLANTERS | 12d | 2026-12-03 | 2026-12-14 | 4300 |  | RGA -FINISHING | 7391325 |
| 4302 | 40100.40200.40800.53100.55200.59200.61100.370300 | **LMR(To be Deleted)** | 15d | 2025-04-01 | 2025-04-15 |  | start no earlier than 2025-04-01 | RGA -FINISHING | 7808502 |
| 4303 | 40100.40200.40800.53100.55200.59200.61100.370300.2700000 | Block work | 8d | 2025-04-01 | 2025-04-08 |  | start no earlier than 2025-04-01 | RGA -FINISHING | 7391755 |
| 4304 | 40100.40200.40800.53100.55200.59200.61100.370300.2700100 | CONCEALED ELEC CONDUITING & ITS FINISHING | 7d | 2025-04-01 | 2025-04-07 |  | start no earlier than 2025-04-01 | RGA -FINISHING | 7391765 |
| 4305 | 40100.40200.40800.53100.55200.59200.61100.370300.2700200 | PLASTER APPLICATION | 15d | 2025-04-01 | 2025-04-15 |  | start no earlier than 2025-04-01 | RGA -FINISHING | 7391775 |
| 4306 | 40100.40200.40800.53100.55200.59200.61100.370300.2700300 | DOOR FRAME FIXING | 3d | 2025-04-01 | 2025-04-03 |  | start no earlier than 2025-04-01 | RGA -FINISHING | 7391785 |
| 4307 | 40100.40200.40800.53100.55200.59200.506200 | **Terrace Finishing works** | 30d | 2027-05-03 | 2027-06-01 |  | start no earlier than 2027-05-03 | RGA -FINISHING | 7811982 |
| 4308 | 40100.40200.40800.53100.55200.59200.506200.2299300 | Terrace Waterproofing work | 30d | 2027-05-03 | 2027-06-01 | 4310FS+7d |  | RGA -FINISHING | 7842582 |
| 4309 | 40100.40200.40800.53100.55200.59200.506300 | **EXTERNAL Painting** | 165d | 2026-11-12 | 2027-04-25 |  | start no earlier than 2026-11-12 | RGA -FINISHING | 7811972 |
| 4310 | 40100.40200.40800.53100.55200.59200.506300.2299400 | 2nd coat | 165d | 2026-11-12 | 2027-04-25 | 4107FS+60d |  | RGA -FINISHING | 7842592 |
| 4311 | 40100.40200.40800.53100.55200.57700 | **Flat internal finishing & services works** | 483d | 2025-12-23 | 2027-04-19 |  | start no earlier than 2025-12-23 | RGA -FINISHING | 7803392 |
| 4312 | 40100.40200.40800.53100.55200.57700.82800 | **GROUND FLOOR** | 457d | 2025-12-23 | 2027-03-24 |  | start no earlier than 2025-12-23 | RGA -FINISHING | 7804832 |
| 4313 | 40100.40200.40800.53100.55200.57700.82800.2299500 | TOILET DADO TILE FIXING | 10d | 2026-03-01 | 2026-03-10 | 4122 |  | RGA -FINISHING | 7842602 |
| 4314 | 40100.40200.40800.53100.55200.57700.82800.2299600 | TOILET FLOORING WORK | 7d | 2026-03-11 | 2026-03-17 | 4313 |  | RGA -FINISHING | 7842612 |
| 4315 | 40100.40200.40800.53100.55200.57700.82800.2299700 | FIRE FIGHTING | 15d | 2025-12-23 | 2026-01-06 | 4121 |  | RGA -FINISHING | 7842622 |
| 4316 | 40100.40200.40800.53100.55200.57700.82800.2299800 | INTERNAL PAINTING - PUTTY / PRIMER APPLICATION | 15d | 2026-04-10 | 2026-04-24 | 4318 |  | RGA -FINISHING | 7842632 |
| 4317 | 40100.40200.40800.53100.55200.57700.82800.2299900 | FLAT FLOORING | 11d | 2026-03-18 | 2026-03-28 | 4314 |  | RGA -FINISHING | 7842642 |
| 4318 | 40100.40200.40800.53100.55200.57700.82800.2300000 | WINDOW FIXING | 12d | 2026-03-29 | 2026-04-09 | 4317 |  | RGA -FINISHING | 7842652 |
| 4319 | 40100.40200.40800.53100.55200.57700.82800.2300100 | INTERNAL PAINTING - 1ST COAT | 12d | 2026-04-25 | 2026-05-06 | 4316 |  | RGA -FINISHING | 7842662 |
| 4320 | 40100.40200.40800.53100.55200.57700.82800.2300200 | INTERNAL DOOR FIXING | 15d | 2026-05-07 | 2026-05-21 | 4319 |  | RGA -FINISHING | 7842672 |
| 4321 | 40100.40200.40800.53100.55200.57700.82800.2300300 | WIRING & SWITCH PLATE FIXING | 8d | 2026-05-22 | 2026-05-29 | 4320 |  | RGA -FINISHING | 7842682 |
| 4322 | 40100.40200.40800.53100.55200.57700.82800.2300400 | TOILET FALSE CEILING | 7d | 2026-05-30 | 2026-06-05 | 4321 |  | RGA -FINISHING | 7842692 |
| 4323 | 40100.40200.40800.53100.55200.57700.82800.2300500 | MAIN DOOR FRAME SHUTTER FIXING | 6d | 2027-03-11 | 2027-03-16 | 4655 |  | RGA -FINISHING | 7842702 |
| 4324 | 40100.40200.40800.53100.55200.57700.82800.2300600 | FINAL COAT PAINT | 8d | 2027-03-17 | 2027-03-24 | 4323 |  | RGA -FINISHING | 7842712 |

Notes:
- 4309: Ext Plaster (in 2 phases) completion 3.5 months post last BW
- 4311: Completion in 12 months post last RCC

| ID | WBS | Task | Duration | Start | Finish | Predecessors | Constraint | Calendar | Unique_Task_ID |
| --- | --- | --- | --- | --- | --- | --- | --- | --- | --- |
| 4325 | 40100.40200.40800.53100.55200.57700.82600 | **1ST FLOOR** | 402d | 2026-01-13 | 2027-02-18 |  | start no earlier than 2026-01-13 | RGA -FINISHING | 7804822 |
| 4326 | 40100.40200.40800.53100.55200.57700.82600.2300700 | TOILET DADO TILE FIXING | 7d | 2026-03-20 | 2026-03-26 | 4129 |  | RGA -FINISHING | 7842722 |
| 4327 | 40100.40200.40800.53100.55200.57700.82600.2300800 | TOILET FLOORING WORK | 7d | 2026-03-27 | 2026-04-02 | 4326 |  | RGA -FINISHING | 7842732 |
| 4328 | 40100.40200.40800.53100.55200.57700.82600.2300900 | FIRE FIGHTING | 6d | 2026-01-13 | 2026-01-18 | 4128 |  | RGA -FINISHING | 7842742 |
| 4329 | 40100.40200.40800.53100.55200.57700.82600.2301000 | INTERNAL PAINTING - PUTTY / PRIMER APPLICATION | 6d | 2026-04-20 | 2026-04-25 | 4331 |  | RGA -FINISHING | 7842752 |
| 4330 | 40100.40200.40800.53100.55200.57700.82600.2301100 | FLAT FLOORING | 5d | 2026-04-03 | 2026-04-07 | 4327 |  | RGA -FINISHING | 7842762 |
| 4331 | 40100.40200.40800.53100.55200.57700.82600.2301200 | WINDOW FIXING | 12d | 2026-04-08 | 2026-04-19 | 4330 |  | RGA -FINISHING | 7842772 |
| 4332 | 40100.40200.40800.53100.55200.57700.82600.2301300 | INTERNAL PAINTING - 1ST COAT | 12d | 2026-04-26 | 2026-05-07 | 4329 |  | RGA -FINISHING | 7842782 |
| 4333 | 40100.40200.40800.53100.55200.57700.82600.2301400 | INTERNAL DOOR FIXING | 15d | 2026-05-08 | 2026-05-22 | 4332 |  | RGA -FINISHING | 7842792 |
| 4334 | 40100.40200.40800.53100.55200.57700.82600.2301500 | WIRING & SWITCH PLATE FIXING | 8d | 2026-05-23 | 2026-05-30 | 4333 |  | RGA -FINISHING | 7842802 |
| 4335 | 40100.40200.40800.53100.55200.57700.82600.2301600 | TOILET FALSE CEILING | 7d | 2026-05-31 | 2026-06-06 | 4334 |  | RGA -FINISHING | 7842812 |
| 4336 | 40100.40200.40800.53100.55200.57700.82600.2301700 | MAIN DOOR FRAME SHUTTER FIXING | 6d | 2027-02-05 | 2027-02-10 | 4663 |  | RGA -FINISHING | 7842822 |
| 4337 | 40100.40200.40800.53100.55200.57700.82600.2301800 | FINAL COAT PAINT | 8d | 2027-02-11 | 2027-02-18 | 4336 |  | RGA -FINISHING | 7842832 |
| 4338 | 40100.40200.40800.53100.55200.57700.82500 | **2ND FLOOR** | 387d | 2026-01-28 | 2027-02-18 |  | start no earlier than 2026-01-28 | RGA -FINISHING | 7804812 |
| 4339 | 40100.40200.40800.53100.55200.57700.82500.2301900 | TOILET DADO TILE FIXING | 7d | 2026-03-25 | 2026-03-31 | 4136 |  | RGA -FINISHING | 7842842 |
| 4340 | 40100.40200.40800.53100.55200.57700.82500.2302000 | TOILET FLOORING WORK | 7d | 2026-04-01 | 2026-04-07 | 4339 |  | RGA -FINISHING | 7842852 |
| 4341 | 40100.40200.40800.53100.55200.57700.82500.2302100 | FIRE FIGHTING | 6d | 2026-01-28 | 2026-02-02 | 4135 |  | RGA -FINISHING | 7842862 |
| 4342 | 40100.40200.40800.53100.55200.57700.82500.2302200 | INTERNAL PAINTING - PUTTY / PRIMER APPLICATION | 6d | 2026-04-25 | 2026-04-30 | 4344 |  | RGA -FINISHING | 7842872 |
| 4343 | 40100.40200.40800.53100.55200.57700.82500.2302300 | FLAT FLOORING | 5d | 2026-04-08 | 2026-04-12 | 4340 |  | RGA -FINISHING | 7842882 |
| 4344 | 40100.40200.40800.53100.55200.57700.82500.2302400 | WINDOW FIXING | 12d | 2026-04-13 | 2026-04-24 | 4343 |  | RGA -FINISHING | 7842892 |
| 4345 | 40100.40200.40800.53100.55200.57700.82500.2302500 | INTERNAL PAINTING - 1ST COAT | 12d | 2026-05-01 | 2026-05-12 | 4342 |  | RGA -FINISHING | 7842902 |
| 4346 | 40100.40200.40800.53100.55200.57700.82500.2302600 | INTERNAL DOOR FIXING | 15d | 2026-05-11 | 2026-05-25 | 4345FS-2d |  | RGA -FINISHING | 7842912 |
| 4347 | 40100.40200.40800.53100.55200.57700.82500.2302700 | WIRING & SWITCH PLATE FIXING | 8d | 2026-05-22 | 2026-05-29 | 4346FS-4d |  | RGA -FINISHING | 7842922 |
| 4348 | 40100.40200.40800.53100.55200.57700.82500.2302800 | TOILET FALSE CEILING | 7d | 2026-05-30 | 2026-06-05 | 4347 |  | RGA -FINISHING | 7842932 |
| 4349 | 40100.40200.40800.53100.55200.57700.82500.2302900 | MAIN DOOR FRAME SHUTTER FIXING | 6d | 2027-02-05 | 2027-02-10 | 4671 |  | RGA -FINISHING | 7842942 |
| 4350 | 40100.40200.40800.53100.55200.57700.82500.2303000 | FINAL COAT PAINT | 8d | 2027-02-11 | 2027-02-18 | 4349 |  | RGA -FINISHING | 7842952 |

| ID | WBS | Task | Duration | Start | Finish | Predecessors | Constraint | Calendar | Unique_Task_ID |
| --- | --- | --- | --- | --- | --- | --- | --- | --- | --- |
| 4351 | 40100.40200.40800.53100.55200.57700.82200 | **3RD FLOOR** | 362d | 2026-02-22 | 2027-02-18 |  | start no earlier than 2026-02-22 | RGA -FINISHING | 7804802 |
| 4352 | 40100.40200.40800.53100.55200.57700.82200.2303100 | TOILET DADO TILE FIXING | 7d | 2026-04-03 | 2026-04-09 | 4143 |  | RGA -FINISHING | 7842962 |
| 4353 | 40100.40200.40800.53100.55200.57700.82200.2303200 | TOILET FLOORING WORK | 7d | 2026-04-10 | 2026-04-16 | 4352 |  | RGA -FINISHING | 7842972 |
| 4354 | 40100.40200.40800.53100.55200.57700.82200.2303300 | FIRE FIGHTING | 6d | 2026-02-22 | 2026-02-27 | 4142 |  | RGA -FINISHING | 7842982 |
| 4355 | 40100.40200.40800.53100.55200.57700.82200.2303400 | INTERNAL PAINTING - PUTTY / PRIMER APPLICATION | 6d | 2026-04-29 | 2026-05-04 | 4357 |  | RGA -FINISHING | 7842992 |
| 4356 | 40100.40200.40800.53100.55200.57700.82200.2303500 | FLAT FLOORING | 5d | 2026-04-17 | 2026-04-21 | 4353 |  | RGA -FINISHING | 7843002 |
| 4357 | 40100.40200.40800.53100.55200.57700.82200.2303600 | WINDOW FIXING | 7d | 2026-04-22 | 2026-04-28 | 4356 |  | RGA -FINISHING | 7843012 |
| 4358 | 40100.40200.40800.53100.55200.57700.82200.2303700 | INTERNAL PAINTING - 1ST COAT | 7d | 2026-05-05 | 2026-05-11 | 4355 |  | RGA -FINISHING | 7843022 |
| 4359 | 40100.40200.40800.53100.55200.57700.82200.2303800 | INTERNAL DOOR FIXING | 15d | 2026-05-10 | 2026-05-24 | 4358FS-2d |  | RGA -FINISHING | 7843032 |
| 4360 | 40100.40200.40800.53100.55200.57700.82200.2303900 | WIRING & SWITCH PLATE FIXING | 8d | 2026-05-21 | 2026-05-28 | 4359FS-4d |  | RGA -FINISHING | 7843042 |
| 4361 | 40100.40200.40800.53100.55200.57700.82200.2304000 | TOILET FALSE CEILING | 7d | 2026-05-29 | 2026-06-04 | 4360 |  | RGA -FINISHING | 7843052 |
| 4362 | 40100.40200.40800.53100.55200.57700.82200.2304100 | MAIN DOOR FRAME SHUTTER FIXING | 6d | 2027-02-05 | 2027-02-10 | 4679 |  | RGA -FINISHING | 7843062 |
| 4363 | 40100.40200.40800.53100.55200.57700.82200.2304200 | FINAL COAT PAINT | 8d | 2027-02-11 | 2027-02-18 | 4362 |  | RGA -FINISHING | 7843072 |
| 4364 | 40100.40200.40800.53100.55200.57700.82100 | **4TH FLOOR** | 363d | 2026-03-03 | 2027-02-28 |  | start no earlier than 2026-03-03 | RGA -FINISHING | 7804792 |
| 4365 | 40100.40200.40800.53100.55200.57700.82100.2304300 | TOILET DADO TILE FIXING | 7d | 2026-04-08 | 2026-04-14 | 4150 |  | RGA -FINISHING | 7843082 |
| 4366 | 40100.40200.40800.53100.55200.57700.82100.2304400 | TOILET FLOORING WORK | 7d | 2026-04-15 | 2026-04-21 | 4365 |  | RGA -FINISHING | 7843092 |
| 4367 | 40100.40200.40800.53100.55200.57700.82100.2304500 | FIRE FIGHTING | 6d | 2026-03-03 | 2026-03-08 | 4149 |  | RGA -FINISHING | 7843102 |
| 4368 | 40100.40200.40800.53100.55200.57700.82100.2304600 | INTERNAL PAINTING - PUTTY / PRIMER APPLICATION | 6d | 2026-05-04 | 2026-05-09 | 4370 |  | RGA -FINISHING | 7843112 |
| 4369 | 40100.40200.40800.53100.55200.57700.82100.2304700 | FLAT FLOORING | 5d | 2026-04-22 | 2026-04-26 | 4366 |  | RGA -FINISHING | 7843122 |
| 4370 | 40100.40200.40800.53100.55200.57700.82100.2304800 | WINDOW FIXING | 7d | 2026-04-27 | 2026-05-03 | 4369 |  | RGA -FINISHING | 7843132 |
| 4371 | 40100.40200.40800.53100.55200.57700.82100.2304900 | INTERNAL PAINTING - 1ST COAT | 7d | 2026-05-10 | 2026-05-16 | 4368 |  | RGA -FINISHING | 7843142 |
| 4372 | 40100.40200.40800.53100.55200.57700.82100.2305000 | INTERNAL DOOR FIXING | 15d | 2026-05-15 | 2026-05-29 | 4371FS-2d |  | RGA -FINISHING | 7843152 |
| 4373 | 40100.40200.40800.53100.55200.57700.82100.2305100 | WIRING & SWITCH PLATE FIXING | 8d | 2026-05-26 | 2026-06-02 | 4372FS-4d |  | RGA -FINISHING | 7843162 |
| 4374 | 40100.40200.40800.53100.55200.57700.82100.2305200 | TOILET FALSE CEILING | 7d | 2026-06-03 | 2026-06-09 | 4373 |  | RGA -FINISHING | 7843172 |
| 4375 | 40100.40200.40800.53100.55200.57700.82100.2305300 | MAIN DOOR FRAME SHUTTER FIXING | 6d | 2027-02-15 | 2027-02-20 | 4687 |  | RGA -FINISHING | 7843182 |
| 4376 | 40100.40200.40800.53100.55200.57700.82100.2305400 | FINAL COAT PAINT | 8d | 2027-02-21 | 2027-02-28 | 4375 |  | RGA -FINISHING | 7843192 |

| ID | WBS | Task | Duration | Start | Finish | Predecessors | Constraint | Calendar | Unique_Task_ID |
| --- | --- | --- | --- | --- | --- | --- | --- | --- | --- |
| 4377 | 40100.40200.40800.53100.55200.57700.82000 | **5TH FLOOR** | 364d | 2026-03-12 | 2027-03-10 |  | start no earlier than 2026-03-12 | RGA -FINISHING | 7804782 |
| 4378 | 40100.40200.40800.53100.55200.57700.82000.2305500 | TOILET DADO TILE FIXING | 7d | 2026-04-17 | 2026-04-23 | 4157 |  | RGA -FINISHING | 7843202 |
| 4379 | 40100.40200.40800.53100.55200.57700.82000.2305600 | TOILET FLOORING WORK | 7d | 2026-04-24 | 2026-04-30 | 4378 |  | RGA -FINISHING | 7843212 |
| 4380 | 40100.40200.40800.53100.55200.57700.82000.2305700 | FIRE FIGHTING | 6d | 2026-03-12 | 2026-03-17 | 4156 |  | RGA -FINISHING | 7843222 |
| 4381 | 40100.40200.40800.53100.55200.57700.82000.2305800 | INTERNAL PAINTING - PUTTY / PRIMER APPLICATION | 6d | 2026-05-13 | 2026-05-18 | 4383 |  | RGA -FINISHING | 7843232 |
| 4382 | 40100.40200.40800.53100.55200.57700.82000.2305900 | FLAT FLOORING | 5d | 2026-05-01 | 2026-05-05 | 4379 |  | RGA -FINISHING | 7843242 |
| 4383 | 40100.40200.40800.53100.55200.57700.82000.2306000 | WINDOW FIXING | 7d | 2026-05-06 | 2026-05-12 | 4382 |  | RGA -FINISHING | 7843252 |
| 4384 | 40100.40200.40800.53100.55200.57700.82000.2306100 | INTERNAL PAINTING - 1ST COAT | 7d | 2026-05-19 | 2026-05-25 | 4381 |  | RGA -FINISHING | 7843262 |
| 4385 | 40100.40200.40800.53100.55200.57700.82000.2306200 | INTERNAL DOOR FIXING | 15d | 2026-05-24 | 2026-06-07 | 4384FS-2d |  | RGA -FINISHING | 7843272 |
| 4386 | 40100.40200.40800.53100.55200.57700.82000.2306300 | WIRING & SWITCH PLATE FIXING | 8d | 2026-06-04 | 2026-06-11 | 4385FS-4d |  | RGA -FINISHING | 7843282 |
| 4387 | 40100.40200.40800.53100.55200.57700.82000.2306400 | TOILET FALSE CEILING | 7d | 2026-06-12 | 2026-06-18 | 4386 |  | RGA -FINISHING | 7843292 |
| 4388 | 40100.40200.40800.53100.55200.57700.82000.2306500 | MAIN DOOR FRAME SHUTTER FIXING | 6d | 2027-02-25 | 2027-03-02 | 4695 |  | RGA -FINISHING | 7843302 |
| 4389 | 40100.40200.40800.53100.55200.57700.82000.2306600 | FINAL COAT PAINT | 8d | 2027-03-03 | 2027-03-10 | 4388 |  | RGA -FINISHING | 7843312 |
| 4390 | 40100.40200.40800.53100.55200.57700.81900 | **6TH FLOOR** | 355d | 2026-03-21 | 2027-03-10 |  | start no earlier than 2026-03-21 | RGA -FINISHING | 7804772 |
| 4391 | 40100.40200.40800.53100.55200.57700.81900.2306700 | TOILET DADO TILE FIXING | 7d | 2026-04-26 | 2026-05-02 | 4164 |  | RGA -FINISHING | 7843322 |
| 4392 | 40100.40200.40800.53100.55200.57700.81900.2306800 | TOILET FLOORING WORK | 7d | 2026-04-26 | 2026-05-02 | 4391FF |  | RGA -FINISHING | 7843332 |
| 4393 | 40100.40200.40800.53100.55200.57700.81900.2306900 | FIRE FIGHTING | 6d | 2026-03-21 | 2026-03-26 | 4163 |  | RGA -FINISHING | 7843342 |
| 4394 | 40100.40200.40800.53100.55200.57700.81900.2307000 | INTERNAL PAINTING - PUTTY / PRIMER APPLICATION | 6d | 2026-05-20 | 2026-05-25 | 4396 |  | RGA -FINISHING | 7843352 |
| 4395 | 40100.40200.40800.53100.55200.57700.81900.2307100 | FLAT FLOORING | 5d | 2026-05-03 | 2026-05-07 | 4392 |  | RGA -FINISHING | 7843362 |
| 4396 | 40100.40200.40800.53100.55200.57700.81900.2307200 | WINDOW FIXING | 12d | 2026-05-08 | 2026-05-19 | 4395 |  | RGA -FINISHING | 7843372 |
| 4397 | 40100.40200.40800.53100.55200.57700.81900.2307300 | INTERNAL PAINTING - 1ST COAT | 12d | 2026-05-26 | 2026-06-06 | 4394 |  | RGA -FINISHING | 7843382 |
| 4398 | 40100.40200.40800.53100.55200.57700.81900.2307400 | INTERNAL DOOR FIXING | 15d | 2026-06-05 | 2026-06-19 | 4397FS-2d |  | RGA -FINISHING | 7843392 |
| 4399 | 40100.40200.40800.53100.55200.57700.81900.2307500 | WIRING & SWITCH PLATE FIXING | 8d | 2026-06-16 | 2026-06-23 | 4398FS-4d |  | RGA -FINISHING | 7843402 |
| 4400 | 40100.40200.40800.53100.55200.57700.81900.2307600 | TOILET FALSE CEILING | 7d | 2026-06-24 | 2026-06-30 | 4399 |  | RGA -FINISHING | 7843412 |
| 4401 | 40100.40200.40800.53100.55200.57700.81900.2307700 | MAIN DOOR FRAME SHUTTER FIXING | 6d | 2027-02-25 | 2027-03-02 | 4703 |  | RGA -FINISHING | 7843422 |
| 4402 | 40100.40200.40800.53100.55200.57700.81900.2307800 | FINAL COAT PAINT | 8d | 2027-03-03 | 2027-03-10 | 4401 |  | RGA -FINISHING | 7843432 |

| ID | WBS | Task | Duration | Start | Finish | Predecessors | Constraint | Calendar | Unique_Task_ID |
| --- | --- | --- | --- | --- | --- | --- | --- | --- | --- |
| 4403 | 40100.40200.40800.53100.55200.57700.81800 | **7TH FLOOR** | 346d | 2026-03-30 | 2027-03-10 |  | start no earlier than 2026-03-30 | RGA -FINISHING | 7804762 |
| 4404 | 40100.40200.40800.53100.55200.57700.81800.2307900 | TOILET DADO TILE FIXING | 7d | 2026-05-05 | 2026-05-11 | 4171 |  | RGA -FINISHING | 7843442 |
| 4405 | 40100.40200.40800.53100.55200.57700.81800.2308000 | TOILET FLOORING WORK | 7d | 2026-05-12 | 2026-05-18 | 4404 |  | RGA -FINISHING | 7843452 |
| 4406 | 40100.40200.40800.53100.55200.57700.81800.2308100 | FIRE FIGHTING | 6d | 2026-03-30 | 2026-04-04 | 4170 |  | RGA -FINISHING | 7843462 |
| 4407 | 40100.40200.40800.53100.55200.57700.81800.2308200 | INTERNAL PAINTING - PUTTY / PRIMER APPLICATION | 6d | 2026-06-05 | 2026-06-10 | 4409 |  | RGA -FINISHING | 7843472 |
| 4408 | 40100.40200.40800.53100.55200.57700.81800.2308300 | FLAT FLOORING | 5d | 2026-05-19 | 2026-05-23 | 4405 |  | RGA -FINISHING | 7843482 |
| 4409 | 40100.40200.40800.53100.55200.57700.81800.2308400 | WINDOW FIXING | 12d | 2026-05-24 | 2026-06-04 | 4408 |  | RGA -FINISHING | 7843492 |
| 4410 | 40100.40200.40800.53100.55200.57700.81800.2308500 | INTERNAL PAINTING - 1ST COAT | 5d | 2026-06-11 | 2026-06-15 | 4407 |  | RGA -FINISHING | 7843502 |
| 4411 | 40100.40200.40800.53100.55200.57700.81800.2308600 | INTERNAL DOOR FIXING | 15d | 2026-06-14 | 2026-06-28 | 4410FS-2d |  | RGA -FINISHING | 7843512 |
| 4412 | 40100.40200.40800.53100.55200.57700.81800.2308700 | WIRING & SWITCH PLATE FIXING | 8d | 2026-06-25 | 2026-07-02 | 4411FS-4d |  | RGA -FINISHING | 7843522 |
| 4413 | 40100.40200.40800.53100.55200.57700.81800.2308800 | TOILET FALSE CEILING | 7d | 2026-07-03 | 2026-07-09 | 4412 |  | RGA -FINISHING | 7843532 |
| 4414 | 40100.40200.40800.53100.55200.57700.81800.2308900 | MAIN DOOR FRAME SHUTTER FIXING | 6d | 2027-02-25 | 2027-03-02 | 4711 |  | RGA -FINISHING | 7843542 |
| 4415 | 40100.40200.40800.53100.55200.57700.81800.2309000 | FINAL COAT PAINT | 8d | 2027-03-03 | 2027-03-10 | 4414 |  | RGA -FINISHING | 7843552 |
| 4416 | 40100.40200.40800.53100.55200.57700.81700 | **8TH FLOOR** | 337d | 2026-04-08 | 2027-03-10 |  | start no earlier than 2026-04-08 | RGA -FINISHING | 7804752 |
| 4417 | 40100.40200.40800.53100.55200.57700.81700.2309100 | TOILET DADO TILE FIXING | 7d | 2026-05-14 | 2026-05-20 | 4178 |  | RGA -FINISHING | 7843562 |
| 4418 | 40100.40200.40800.53100.55200.57700.81700.2309200 | TOILET FLOORING WORK | 7d | 2026-05-21 | 2026-05-27 | 4417 |  | RGA -FINISHING | 7843572 |
| 4419 | 40100.40200.40800.53100.55200.57700.81700.2309300 | FIRE FIGHTING | 6d | 2026-04-08 | 2026-04-13 | 4177 |  | RGA -FINISHING | 7843582 |
| 4420 | 40100.40200.40800.53100.55200.57700.81700.2309400 | INTERNAL PAINTING - PUTTY / PRIMER APPLICATION | 6d | 2026-06-14 | 2026-06-19 | 4422 |  | RGA -FINISHING | 7843592 |
| 4421 | 40100.40200.40800.53100.55200.57700.81700.2309500 | FLAT FLOORING | 5d | 2026-05-28 | 2026-06-01 | 4418 |  | RGA -FINISHING | 7843602 |
| 4422 | 40100.40200.40800.53100.55200.57700.81700.2309600 | WINDOW FIXING | 12d | 2026-06-02 | 2026-06-13 | 4421 |  | RGA -FINISHING | 7843612 |
| 4423 | 40100.40200.40800.53100.55200.57700.81700.2309700 | INTERNAL PAINTING - 1ST COAT | 10d | 2026-06-20 | 2026-06-29 | 4420 |  | RGA -FINISHING | 7843622 |
| 4424 | 40100.40200.40800.53100.55200.57700.81700.2309800 | INTERNAL DOOR FIXING | 15d | 2026-06-28 | 2026-07-12 | 4423FS-2d |  | RGA -FINISHING | 7843632 |
| 4425 | 40100.40200.40800.53100.55200.57700.81700.2309900 | WIRING & SWITCH PLATE FIXING | 8d | 2026-07-09 | 2026-07-16 | 4424FS-4d |  | RGA -FINISHING | 7843642 |
| 4426 | 40100.40200.40800.53100.55200.57700.81700.2310000 | TOILET FALSE CEILING | 7d | 2026-07-17 | 2026-07-23 | 4425 |  | RGA -FINISHING | 7843652 |
| 4427 | 40100.40200.40800.53100.55200.57700.81700.2310100 | MAIN DOOR FRAME SHUTTER FIXING | 6d | 2027-02-25 | 2027-03-02 | 4719 |  | RGA -FINISHING | 7843662 |
| 4428 | 40100.40200.40800.53100.55200.57700.81700.2310200 | FINAL COAT PAINT | 8d | 2027-03-03 | 2027-03-10 | 4427 |  | RGA -FINISHING | 7843672 |

| ID | WBS | Task | Duration | Start | Finish | Predecessors | Constraint | Calendar | Unique_Task_ID |
| --- | --- | --- | --- | --- | --- | --- | --- | --- | --- |
| 4429 | 40100.40200.40800.53100.55200.57700.79500 | **9TH FLOOR** | 342d | 2026-04-17 | 2027-03-24 |  | start no earlier than 2026-04-17 | RGA -FINISHING | 7804742 |
| 4430 | 40100.40200.40800.53100.55200.57700.79500.2310300 | TOILET DADO TILE FIXING | 7d | 2026-05-23 | 2026-05-29 | 4185 |  | RGA -FINISHING | 7843682 |
| 4431 | 40100.40200.40800.53100.55200.57700.79500.2310400 | TOILET FLOORING WORK | 7d | 2026-05-30 | 2026-06-05 | 4430 |  | RGA -FINISHING | 7843692 |
| 4432 | 40100.40200.40800.53100.55200.57700.79500.2310500 | FIRE FIGHTING | 6d | 2026-04-17 | 2026-04-22 | 4184 |  | RGA -FINISHING | 7843702 |
| 4433 | 40100.40200.40800.53100.55200.57700.79500.2310600 | INTERNAL PAINTING - PUTTY / PRIMER APPLICATION | 6d | 2026-06-23 | 2026-06-28 | 4435 |  | RGA -FINISHING | 7843712 |
| 4434 | 40100.40200.40800.53100.55200.57700.79500.2310700 | FLAT FLOORING | 5d | 2026-06-06 | 2026-06-10 | 4431 |  | RGA -FINISHING | 7843722 |
| 4435 | 40100.40200.40800.53100.55200.57700.79500.2310800 | WINDOW FIXING | 12d | 2026-06-11 | 2026-06-22 | 4434 |  | RGA -FINISHING | 7843732 |
| 4436 | 40100.40200.40800.53100.55200.57700.79500.2310900 | INTERNAL PAINTING - 1ST COAT | 2d | 2026-06-29 | 2026-06-30 | 4433 |  | RGA -FINISHING | 7843742 |
| 4437 | 40100.40200.40800.53100.55200.57700.79500.2311000 | INTERNAL DOOR FIXING | 15d | 2026-06-29 | 2026-07-13 | 4436FS-2d |  | RGA -FINISHING | 7843752 |
| 4438 | 40100.40200.40800.53100.55200.57700.79500.2311100 | WIRING & SWITCH PLATE FIXING | 8d | 2026-07-10 | 2026-07-17 | 4437FS-4d |  | RGA -FINISHING | 7843762 |
| 4439 | 40100.40200.40800.53100.55200.57700.79500.2311200 | TOILET FALSE CEILING | 7d | 2026-07-18 | 2026-07-24 | 4438 |  | RGA -FINISHING | 7843772 |
| 4440 | 40100.40200.40800.53100.55200.57700.79500.2311300 | MAIN DOOR FRAME SHUTTER FIXING | 6d | 2027-03-07 | 2027-03-12 | 4727 |  | RGA -FINISHING | 7843782 |
| 4441 | 40100.40200.40800.53100.55200.57700.79500.2311400 | FINAL COAT PAINT | 8d | 2027-03-17 | 2027-03-24 | 4440FS+4d |  | RGA -FINISHING | 7843792 |
| 4442 | 40100.40200.40800.53100.55200.57700.78900 | **10TH FLOOR** | 329d | 2026-04-26 | 2027-03-20 |  | start no earlier than 2026-04-26 | RGA -FINISHING | 7804732 |
| 4443 | 40100.40200.40800.53100.55200.57700.78900.2311500 | TOILET DADO TILE FIXING | 7d | 2026-06-01 | 2026-06-07 | 4192 |  | RGA -FINISHING | 7843802 |
| 4444 | 40100.40200.40800.53100.55200.57700.78900.2311600 | TOILET FLOORING WORK | 7d | 2026-06-08 | 2026-06-14 | 4443 |  | RGA -FINISHING | 7843812 |
| 4445 | 40100.40200.40800.53100.55200.57700.78900.2311700 | FIRE FIGHTING | 6d | 2026-04-26 | 2026-05-01 | 4191 |  | RGA -FINISHING | 7843822 |
| 4446 | 40100.40200.40800.53100.55200.57700.78900.2311800 | INTERNAL PAINTING - PUTTY / PRIMER APPLICATION | 6d | 2026-07-02 | 2026-07-07 | 4448 |  | RGA -FINISHING | 7843832 |
| 4447 | 40100.40200.40800.53100.55200.57700.78900.2311900 | FLAT FLOORING | 5d | 2026-06-15 | 2026-06-19 | 4444 |  | RGA -FINISHING | 7843842 |
| 4448 | 40100.40200.40800.53100.55200.57700.78900.2312000 | WINDOW FIXING | 12d | 2026-06-20 | 2026-07-01 | 4447 |  | RGA -FINISHING | 7843852 |
| 4449 | 40100.40200.40800.53100.55200.57700.78900.2312100 | INTERNAL PAINTING - 1ST COAT | 12d | 2026-07-08 | 2026-07-19 | 4446 |  | RGA -FINISHING | 7843862 |
| 4450 | 40100.40200.40800.53100.55200.57700.78900.2312200 | INTERNAL DOOR FIXING | 15d | 2026-07-18 | 2026-08-01 | 4449FS-2d |  | RGA -FINISHING | 7843872 |
| 4451 | 40100.40200.40800.53100.55200.57700.78900.2312300 | WIRING & SWITCH PLATE FIXING | 8d | 2026-07-29 | 2026-08-05 | 4450FS-4d |  | RGA -FINISHING | 7843882 |
| 4452 | 40100.40200.40800.53100.55200.57700.78900.2312400 | TOILET FALSE CEILING | 7d | 2026-08-06 | 2026-08-12 | 4451 |  | RGA -FINISHING | 7843892 |
| 4453 | 40100.40200.40800.53100.55200.57700.78900.2312500 | MAIN DOOR FRAME SHUTTER FIXING | 6d | 2027-03-07 | 2027-03-12 | 4735 |  | RGA -FINISHING | 7843902 |
| 4454 | 40100.40200.40800.53100.55200.57700.78900.2312600 | FINAL COAT PAINT | 8d | 2027-03-13 | 2027-03-20 | 4453 |  | RGA -FINISHING | 7843912 |

| ID | WBS | Task | Duration | Start | Finish | Predecessors | Constraint | Calendar | Unique_Task_ID |
| --- | --- | --- | --- | --- | --- | --- | --- | --- | --- |
| 4455 | 40100.40200.40800.53100.55200.57700.78700 | **11TH FLOOR** | 320d | 2026-05-05 | 2027-03-20 |  | start no earlier than 2026-05-05 | RGA -FINISHING | 7804722 |
| 4456 | 40100.40200.40800.53100.55200.57700.78700.2312700 | TOILET DADO TILE FIXING | 7d | 2026-06-10 | 2026-06-16 | 4199 |  | RGA -FINISHING | 7843922 |
| 4457 | 40100.40200.40800.53100.55200.57700.78700.2312800 | TOILET FLOORING WORK | 7d | 2026-06-17 | 2026-06-23 | 4456 |  | RGA -FINISHING | 7843932 |
| 4458 | 40100.40200.40800.53100.55200.57700.78700.2312900 | FIRE FIGHTING | 6d | 2026-05-05 | 2026-05-10 | 4198 |  | RGA -FINISHING | 7843942 |
| 4459 | 40100.40200.40800.53100.55200.57700.78700.2313000 | INTERNAL PAINTING - PUTTY / PRIMER APPLICATION | 6d | 2026-07-11 | 2026-07-16 | 4461 |  | RGA -FINISHING | 7843952 |
| 4460 | 40100.40200.40800.53100.55200.57700.78700.2313100 | FLAT FLOORING | 5d | 2026-06-24 | 2026-06-28 | 4457 |  | RGA -FINISHING | 7843962 |
| 4461 | 40100.40200.40800.53100.55200.57700.78700.2313200 | WINDOW FIXING | 12d | 2026-06-29 | 2026-07-10 | 4460 |  | RGA -FINISHING | 7843972 |
| 4462 | 40100.40200.40800.53100.55200.57700.78700.2313300 | INTERNAL PAINTING - 1ST COAT | 12d | 2026-07-17 | 2026-07-28 | 4459 |  | RGA -FINISHING | 7843982 |
| 4463 | 40100.40200.40800.53100.55200.57700.78700.2313400 | INTERNAL DOOR FIXING | 15d | 2026-07-27 | 2026-08-10 | 4462FS-2d |  | RGA -FINISHING | 7843992 |
| 4464 | 40100.40200.40800.53100.55200.57700.78700.2313500 | WIRING & SWITCH PLATE FIXING | 8d | 2026-08-07 | 2026-08-14 | 4463FS-4d |  | RGA -FINISHING | 7844002 |
| 4465 | 40100.40200.40800.53100.55200.57700.78700.2313600 | TOILET FALSE CEILING | 7d | 2026-08-15 | 2026-08-21 | 4464 |  | RGA -FINISHING | 7844012 |
| 4466 | 40100.40200.40800.53100.55200.57700.78700.2313700 | MAIN DOOR FRAME SHUTTER FIXING | 6d | 2027-03-07 | 2027-03-12 | 4743 |  | RGA -FINISHING | 7844022 |
| 4467 | 40100.40200.40800.53100.55200.57700.78700.2313800 | FINAL COAT PAINT | 8d | 2027-03-13 | 2027-03-20 | 4466 |  | RGA -FINISHING | 7844032 |
| 4468 | 40100.40200.40800.53100.55200.57700.78600 | **12TH FLOOR** | 310d | 2026-05-15 | 2027-03-20 |  | start no earlier than 2026-05-15 | RGA -FINISHING | 7804712 |
| 4469 | 40100.40200.40800.53100.55200.57700.78600.2313900 | TOILET DADO TILE FIXING | 7d | 2026-06-12 | 2026-06-18 | 4206 |  | RGA -FINISHING | 7844042 |
| 4470 | 40100.40200.40800.53100.55200.57700.78600.2314000 | TOILET FLOORING WORK | 7d | 2026-06-12 | 2026-06-18 | 4469FF |  | RGA -FINISHING | 7844052 |
| 4471 | 40100.40200.40800.53100.55200.57700.78600.2314100 | FIRE FIGHTING | 6d | 2026-05-15 | 2026-05-20 | 4205 |  | RGA -FINISHING | 7844062 |
| 4472 | 40100.40200.40800.53100.55200.57700.78600.2314200 | INTERNAL PAINTING - PUTTY / PRIMER APPLICATION | 6d | 2026-07-06 | 2026-07-11 | 4474 |  | RGA -FINISHING | 7844072 |
| 4473 | 40100.40200.40800.53100.55200.57700.78600.2314300 | FLAT FLOORING | 5d | 2026-06-19 | 2026-06-23 | 4470 |  | RGA -FINISHING | 7844082 |
| 4474 | 40100.40200.40800.53100.55200.57700.78600.2314400 | WINDOW FIXING | 12d | 2026-06-24 | 2026-07-05 | 4473 |  | RGA -FINISHING | 7844092 |
| 4475 | 40100.40200.40800.53100.55200.57700.78600.2314500 | INTERNAL PAINTING - 1ST COAT | 12d | 2026-07-12 | 2026-07-23 | 4472 |  | RGA -FINISHING | 7844102 |
| 4476 | 40100.40200.40800.53100.55200.57700.78600.2314600 | INTERNAL DOOR FIXING | 15d | 2026-07-22 | 2026-08-05 | 4475FS-2d |  | RGA -FINISHING | 7844112 |
| 4477 | 40100.40200.40800.53100.55200.57700.78600.2314700 | WIRING & SWITCH PLATE FIXING | 8d | 2026-08-02 | 2026-08-09 | 4476FS-4d |  | RGA -FINISHING | 7844122 |
| 4478 | 40100.40200.40800.53100.55200.57700.78600.2314800 | TOILET FALSE CEILING | 7d | 2026-08-10 | 2026-08-16 | 4477 |  | RGA -FINISHING | 7844132 |
| 4479 | 40100.40200.40800.53100.55200.57700.78600.2314900 | MAIN DOOR FRAME SHUTTER FIXING | 6d | 2027-03-07 | 2027-03-12 | 4751 |  | RGA -FINISHING | 7844142 |
| 4480 | 40100.40200.40800.53100.55200.57700.78600.2315000 | FINAL COAT PAINT | 8d | 2027-03-13 | 2027-03-20 | 4479 |  | RGA -FINISHING | 7844152 |

| ID | WBS | Task | Duration | Start | Finish | Predecessors | Constraint | Calendar | Unique_Task_ID |
| --- | --- | --- | --- | --- | --- | --- | --- | --- | --- |
| 4481 | 40100.40200.40800.53100.55200.57700.78500 | **13TH FLOOR** | 301d | 2026-05-24 | 2027-03-20 |  | start no earlier than 2026-05-24 | RGA -FINISHING | 7804702 |
| 4482 | 40100.40200.40800.53100.55200.57700.78500.2315100 | TOILET DADO TILE FIXING | 10d | 2026-07-15 | 2026-07-24 | 4213 |  | RGA -FINISHING | 7844162 |
| 4483 | 40100.40200.40800.53100.55200.57700.78500.2315200 | TOILET FLOORING WORK | 7d | 2026-07-25 | 2026-07-31 | 4482 |  | RGA -FINISHING | 7844172 |
| 4484 | 40100.40200.40800.53100.55200.57700.78500.2315300 | FIRE FIGHTING | 8d | 2026-05-24 | 2026-05-31 | 4212 |  | RGA -FINISHING | 7844182 |
| 4485 | 40100.40200.40800.53100.55200.57700.78500.2315400 | INTERNAL PAINTING - PUTTY / PRIMER APPLICATION | 5d | 2026-08-13 | 2026-08-17 | 4487 |  | RGA -FINISHING | 7844192 |
| 4486 | 40100.40200.40800.53100.55200.57700.78500.2315500 | FLAT FLOORING | 7d | 2026-08-01 | 2026-08-07 | 4483 |  | RGA -FINISHING | 7844202 |
| 4487 | 40100.40200.40800.53100.55200.57700.78500.2315600 | WINDOW FIXING | 5d | 2026-08-08 | 2026-08-12 | 4486 |  | RGA -FINISHING | 7844212 |
| 4488 | 40100.40200.40800.53100.55200.57700.78500.2315700 | INTERNAL PAINTING - 1ST COAT | 4d | 2026-08-18 | 2026-08-21 | 4485 |  | RGA -FINISHING | 7844222 |
| 4489 | 40100.40200.40800.53100.55200.57700.78500.2315800 | INTERNAL DOOR FIXING | 15d | 2026-08-20 | 2026-09-03 | 4488FS-2d |  | RGA -FINISHING | 7844232 |
| 4490 | 40100.40200.40800.53100.55200.57700.78500.2315900 | WIRING & SWITCH PLATE FIXING | 8d | 2026-08-31 | 2026-09-07 | 4489FS-4d |  | RGA -FINISHING | 7844242 |
| 4491 | 40100.40200.40800.53100.55200.57700.78500.2316000 | TOILET FALSE CEILING | 7d | 2026-09-08 | 2026-09-14 | 4490 |  | RGA -FINISHING | 7844252 |
| 4492 | 40100.40200.40800.53100.55200.57700.78500.2316100 | MAIN DOOR FRAME SHUTTER FIXING | 6d | 2027-03-07 | 2027-03-12 | 4759 |  | RGA -FINISHING | 7844262 |
| 4493 | 40100.40200.40800.53100.55200.57700.78500.2316200 | FINAL COAT PAINT | 8d | 2027-03-13 | 2027-03-20 | 4492 |  | RGA -FINISHING | 7844272 |
| 4494 | 40100.40200.40800.53100.55200.57700.78300 | **14TH FLOOR** | 294d | 2026-06-10 | 2027-03-30 |  | start no earlier than 2026-06-10 | RGA -FINISHING | 7804692 |
| 4495 | 40100.40200.40800.53100.55200.57700.78300.2316300 | TOILET DADO TILE FIXING | 10d | 2026-08-01 | 2026-08-10 | 4220 |  | RGA -FINISHING | 7844282 |
| 4496 | 40100.40200.40800.53100.55200.57700.78300.2316400 | TOILET FLOORING WORK | 7d | 2026-08-11 | 2026-08-17 | 4495 |  | RGA -FINISHING | 7844292 |
| 4497 | 40100.40200.40800.53100.55200.57700.78300.2316500 | FIRE FIGHTING | 8d | 2026-06-10 | 2026-06-17 | 4219 |  | RGA -FINISHING | 7844302 |
| 4498 | 40100.40200.40800.53100.55200.57700.78300.2316600 | INTERNAL PAINTING - PUTTY / PRIMER APPLICATION | 5d | 2026-08-30 | 2026-09-03 | 4500 |  | RGA -FINISHING | 7844312 |
| 4499 | 40100.40200.40800.53100.55200.57700.78300.2316700 | FLAT FLOORING | 7d | 2026-08-18 | 2026-08-24 | 4496 |  | RGA -FINISHING | 7844322 |
| 4500 | 40100.40200.40800.53100.55200.57700.78300.2316800 | WINDOW FIXING | 5d | 2026-08-25 | 2026-08-29 | 4499 |  | RGA -FINISHING | 7844332 |
| 4501 | 40100.40200.40800.53100.55200.57700.78300.2316900 | INTERNAL PAINTING - 1ST COAT | 4d | 2026-09-04 | 2026-09-07 | 4498 |  | RGA -FINISHING | 7844342 |
| 4502 | 40100.40200.40800.53100.55200.57700.78300.2317000 | INTERNAL DOOR FIXING | 15d | 2026-09-06 | 2026-09-20 | 4501FS-2d |  | RGA -FINISHING | 7844352 |
| 4503 | 40100.40200.40800.53100.55200.57700.78300.2317100 | WIRING & SWITCH PLATE FIXING | 8d | 2026-09-17 | 2026-09-24 | 4502FS-4d |  | RGA -FINISHING | 7844362 |
| 4504 | 40100.40200.40800.53100.55200.57700.78300.2317200 | TOILET FALSE CEILING | 7d | 2026-09-25 | 2026-10-01 | 4503 |  | RGA -FINISHING | 7844372 |
| 4505 | 40100.40200.40800.53100.55200.57700.78300.2317300 | MAIN DOOR FRAME SHUTTER FIXING | 6d | 2027-03-17 | 2027-03-22 | 4767 |  | RGA -FINISHING | 7844382 |
| 4506 | 40100.40200.40800.53100.55200.57700.78300.2317400 | FINAL COAT PAINT | 8d | 2027-03-23 | 2027-03-30 | 4505 |  | RGA -FINISHING | 7844392 |

| ID | WBS | Task | Duration | Start | Finish | Predecessors | Constraint | Calendar | Unique_Task_ID |
| --- | --- | --- | --- | --- | --- | --- | --- | --- | --- |
| 4507 | 40100.40200.40800.53100.55200.57700.77500 | **15TH FLOOR** | 287d | 2026-06-17 | 2027-03-30 |  | start no earlier than 2026-06-17 | RGA -FINISHING | 7804682 |
| 4508 | 40100.40200.40800.53100.55200.57700.77500.2317500 | TOILET DADO TILE FIXING | 10d | 2026-08-08 | 2026-08-17 | 4227 |  | RGA -FINISHING | 7385195 |
| 4509 | 40100.40200.40800.53100.55200.57700.77500.2317600 | TOILET FLOORING WORK | 7d | 2026-08-18 | 2026-08-24 | 4508 |  | RGA -FINISHING | 7385205 |
| 4510 | 40100.40200.40800.53100.55200.57700.77500.2317700 | FIRE FIGHTING | 8d | 2026-06-17 | 2026-06-24 | 4226 |  | RGA -FINISHING | 7385215 |
| 4511 | 40100.40200.40800.53100.55200.57700.77500.2317800 | INTERNAL PAINTING - PUTTY / PRIMER APPLICATION | 5d | 2026-09-06 | 2026-09-10 | 4513 |  | RGA -FINISHING | 7385225 |
| 4512 | 40100.40200.40800.53100.55200.57700.77500.2317900 | FLAT FLOORING | 7d | 2026-08-25 | 2026-08-31 | 4509 |  | RGA -FINISHING | 7385235 |
| 4513 | 40100.40200.40800.53100.55200.57700.77500.2318000 | WINDOW FIXING | 5d | 2026-09-01 | 2026-09-05 | 4512 |  | RGA -FINISHING | 7385245 |
| 4514 | 40100.40200.40800.53100.55200.57700.77500.2318100 | INTERNAL PAINTING - 1ST COAT | 4d | 2026-09-11 | 2026-09-14 | 4511 |  | RGA -FINISHING | 7385255 |
| 4515 | 40100.40200.40800.53100.55200.57700.77500.2318200 | INTERNAL DOOR FIXING | 15d | 2026-09-13 | 2026-09-27 | 4514FS-2d |  | RGA -FINISHING | 7385265 |
| 4516 | 40100.40200.40800.53100.55200.57700.77500.2318300 | WIRING & SWITCH PLATE FIXING | 8d | 2026-09-24 | 2026-10-01 | 4515FS-4d |  | RGA -FINISHING | 7385275 |
| 4517 | 40100.40200.40800.53100.55200.57700.77500.2318400 | TOILET FALSE CEILING | 7d | 2026-10-02 | 2026-10-08 | 4516 |  | RGA -FINISHING | 7385285 |
| 4518 | 40100.40200.40800.53100.55200.57700.77500.2318500 | MAIN DOOR FRAME SHUTTER FIXING | 6d | 2027-03-17 | 2027-03-22 | 4775 |  | RGA -FINISHING | 7385295 |
| 4519 | 40100.40200.40800.53100.55200.57700.77500.2318600 | FINAL COAT PAINT | 8d | 2027-03-23 | 2027-03-30 | 4518 |  | RGA -FINISHING | 7385305 |
| 4520 | 40100.40200.40800.53100.55200.57700.77400 | **16TH FLOOR** | 285d | 2026-06-19 | 2027-03-30 |  | start no earlier than 2026-06-19 | RGA -FINISHING | 7804672 |
| 4521 | 40100.40200.40800.53100.55200.57700.77400.2318700 | TOILET DADO TILE FIXING | 10d | 2026-08-10 | 2026-08-19 | 4234 |  | RGA -FINISHING | 7385315 |
| 4522 | 40100.40200.40800.53100.55200.57700.77400.2318800 | TOILET FLOORING WORK | 7d | 2026-08-20 | 2026-08-26 | 4521 |  | RGA -FINISHING | 7385325 |
| 4523 | 40100.40200.40800.53100.55200.57700.77400.2318900 | FIRE FIGHTING | 8d | 2026-06-19 | 2026-06-26 | 4233 |  | RGA -FINISHING | 7385335 |
| 4524 | 40100.40200.40800.53100.55200.57700.77400.2319000 | INTERNAL PAINTING - PUTTY / PRIMER APPLICATION | 5d | 2026-09-08 | 2026-09-12 | 4526 |  | RGA -FINISHING | 7385345 |
| 4525 | 40100.40200.40800.53100.55200.57700.77400.2319100 | FLAT FLOORING | 7d | 2026-08-27 | 2026-09-02 | 4522 |  | RGA -FINISHING | 7385355 |
| 4526 | 40100.40200.40800.53100.55200.57700.77400.2319200 | WINDOW FIXING | 5d | 2026-09-03 | 2026-09-07 | 4525 |  | RGA -FINISHING | 7385365 |
| 4527 | 40100.40200.40800.53100.55200.57700.77400.2319300 | INTERNAL PAINTING - 1ST COAT | 4d | 2026-09-13 | 2026-09-16 | 4524 |  | RGA -FINISHING | 7385375 |
| 4528 | 40100.40200.40800.53100.55200.57700.77400.2319400 | INTERNAL DOOR FIXING | 15d | 2026-09-15 | 2026-09-29 | 4527FS-2d |  | RGA -FINISHING | 7385385 |
| 4529 | 40100.40200.40800.53100.55200.57700.77400.2319500 | WIRING & SWITCH PLATE FIXING | 8d | 2026-09-26 | 2026-10-03 | 4528FS-4d |  | RGA -FINISHING | 7385395 |
| 4530 | 40100.40200.40800.53100.55200.57700.77400.2319600 | TOILET FALSE CEILING | 7d | 2026-10-04 | 2026-10-10 | 4529 |  | RGA -FINISHING | 7385405 |
| 4531 | 40100.40200.40800.53100.55200.57700.77400.2319700 | MAIN DOOR FRAME SHUTTER FIXING | 6d | 2027-03-17 | 2027-03-22 | 4783 |  | RGA -FINISHING | 7385415 |
| 4532 | 40100.40200.40800.53100.55200.57700.77400.2319800 | FINAL COAT PAINT | 8d | 2027-03-23 | 2027-03-30 | 4531 |  | RGA -FINISHING | 7385425 |

| ID | WBS | Task | Duration | Start | Finish | Predecessors | Constraint | Calendar | Unique_Task_ID |
| --- | --- | --- | --- | --- | --- | --- | --- | --- | --- |
| 4533 | 40100.40200.40800.53100.55200.57700.76400 | **17TH FLOOR** | 267d | 2026-07-07 | 2027-03-30 |  | start no earlier than 2026-07-07 | RGA -FINISHING | 7804662 |
| 4534 | 40100.40200.40800.53100.55200.57700.76400.2319900 | TOILET DADO TILE FIXING | 10d | 2026-08-28 | 2026-09-06 | 4241 |  | RGA -FINISHING | 7385435 |
| 4535 | 40100.40200.40800.53100.55200.57700.76400.2320000 | TOILET FLOORING WORK | 7d | 2026-09-07 | 2026-09-13 | 4534 |  | RGA -FINISHING | 7385445 |
| 4536 | 40100.40200.40800.53100.55200.57700.76400.2320100 | FIRE FIGHTING | 8d | 2026-07-07 | 2026-07-14 | 4240 |  | RGA -FINISHING | 7385455 |
| 4537 | 40100.40200.40800.53100.55200.57700.76400.2320200 | INTERNAL PAINTING - PUTTY / PRIMER APPLICATION | 5d | 2026-09-26 | 2026-09-30 | 4539 |  | RGA -FINISHING | 7385465 |
| 4538 | 40100.40200.40800.53100.55200.57700.76400.2320300 | FLAT FLOORING | 7d | 2026-09-14 | 2026-09-20 | 4535 |  | RGA -FINISHING | 7385475 |
| 4539 | 40100.40200.40800.53100.55200.57700.76400.2320400 | WINDOW FIXING | 5d | 2026-09-21 | 2026-09-25 | 4538 |  | RGA -FINISHING | 7385485 |
| 4540 | 40100.40200.40800.53100.55200.57700.76400.2320500 | INTERNAL PAINTING - 1ST COAT | 4d | 2026-10-01 | 2026-10-04 | 4537 |  | RGA -FINISHING | 7385495 |
| 4541 | 40100.40200.40800.53100.55200.57700.76400.2320600 | INTERNAL DOOR FIXING | 15d | 2026-10-03 | 2026-10-17 | 4540FS-2d |  | RGA -FINISHING | 7844402 |
| 4542 | 40100.40200.40800.53100.55200.57700.76400.2320700 | WIRING & SWITCH PLATE FIXING | 8d | 2026-10-14 | 2026-10-21 | 4541FS-4d |  | RGA -FINISHING | 7844412 |
| 4543 | 40100.40200.40800.53100.55200.57700.76400.2320800 | TOILET FALSE CEILING | 7d | 2026-10-22 | 2026-10-28 | 4542 |  | RGA -FINISHING | 7844422 |
| 4544 | 40100.40200.40800.53100.55200.57700.76400.2320900 | MAIN DOOR FRAME SHUTTER FIXING | 6d | 2027-03-17 | 2027-03-22 | 4791 |  | RGA -FINISHING | 7844432 |
| 4545 | 40100.40200.40800.53100.55200.57700.76400.2321000 | FINAL COAT PAINT | 8d | 2027-03-23 | 2027-03-30 | 4544 |  | RGA -FINISHING | 7844442 |
| 4546 | 40100.40200.40800.53100.55200.57700.75600 | **18TH FLOOR** | 261d | 2026-07-23 | 2027-04-09 |  | start no earlier than 2026-07-23 | RGA -FINISHING | 7382355 |
| 4547 | 40100.40200.40800.53100.55200.57700.75600.2321100 | TOILET DADO TILE FIXING | 10d | 2026-09-13 | 2026-09-22 | 4248 |  | RGA -FINISHING | 7844452 |
| 4548 | 40100.40200.40800.53100.55200.57700.75600.2321200 | TOILET FLOORING WORK | 7d | 2026-09-23 | 2026-09-29 | 4547 |  | RGA -FINISHING | 7844462 |
| 4549 | 40100.40200.40800.53100.55200.57700.75600.2321300 | FIRE FIGHTING | 8d | 2026-07-23 | 2026-07-30 | 4247 |  | RGA -FINISHING | 7844472 |
| 4550 | 40100.40200.40800.53100.55200.57700.75600.2321400 | INTERNAL PAINTING - PUTTY / PRIMER APPLICATION | 5d | 2026-10-12 | 2026-10-16 | 4552 |  | RGA -FINISHING | 7844482 |
| 4551 | 40100.40200.40800.53100.55200.57700.75600.2321500 | FLAT FLOORING | 7d | 2026-09-30 | 2026-10-06 | 4548 |  | RGA -FINISHING | 7844492 |
| 4552 | 40100.40200.40800.53100.55200.57700.75600.2321600 | WINDOW FIXING | 5d | 2026-10-07 | 2026-10-11 | 4551 |  | RGA -FINISHING | 7844502 |
| 4553 | 40100.40200.40800.53100.55200.57700.75600.2321700 | INTERNAL PAINTING - 1ST COAT | 4d | 2026-10-17 | 2026-10-20 | 4550 |  | RGA -FINISHING | 7844512 |
| 4554 | 40100.40200.40800.53100.55200.57700.75600.2321800 | INTERNAL DOOR FIXING | 15d | 2026-10-19 | 2026-11-02 | 4553FS-2d |  | RGA -FINISHING | 7844522 |
| 4555 | 40100.40200.40800.53100.55200.57700.75600.2321900 | WIRING & SWITCH PLATE FIXING | 8d | 2026-10-30 | 2026-11-06 | 4554FS-4d |  | RGA -FINISHING | 7844532 |
| 4556 | 40100.40200.40800.53100.55200.57700.75600.2322000 | TOILET FALSE CEILING | 7d | 2026-11-07 | 2026-11-13 | 4555 |  | RGA -FINISHING | 7844542 |
| 4557 | 40100.40200.40800.53100.55200.57700.75600.2322100 | MAIN DOOR FRAME SHUTTER FIXING | 6d | 2027-03-27 | 2027-04-01 | 4799 |  | RGA -FINISHING | 7844552 |
| 4558 | 40100.40200.40800.53100.55200.57700.75600.2322200 | FINAL COAT PAINT | 8d | 2027-04-02 | 2027-04-09 | 4557 |  | RGA -FINISHING | 7844562 |

| ID | WBS | Task | Duration | Start | Finish | Predecessors | Constraint | Calendar | Unique_Task_ID |
| --- | --- | --- | --- | --- | --- | --- | --- | --- | --- |
| 4559 | 40100.40200.40800.53100.55200.57700.75000 | **19TH FLOOR** | 289d | 2026-06-25 | 2027-04-09 |  | start no earlier than 2026-06-25 | RGA -FINISHING | 7382365 |
| 4560 | 40100.40200.40800.53100.55200.57700.75000.2322300 | TOILET DADO TILE FIXING | 10d | 2026-08-16 | 2026-08-25 | 4255 |  | RGA -FINISHING | 7844572 |
| 4561 | 40100.40200.40800.53100.55200.57700.75000.2322400 | TOILET FLOORING WORK | 7d | 2026-08-26 | 2026-09-01 | 4560 |  | RGA -FINISHING | 7844582 |
| 4562 | 40100.40200.40800.53100.55200.57700.75000.2322500 | FIRE FIGHTING | 8d | 2026-06-25 | 2026-07-02 | 4256 |  | RGA -FINISHING | 7844592 |
| 4563 | 40100.40200.40800.53100.55200.57700.75000.2322600 | INTERNAL PAINTING - PUTTY / PRIMER APPLICATION | 5d | 2026-09-14 | 2026-09-18 | 4565 |  | RGA -FINISHING | 7844602 |
| 4564 | 40100.40200.40800.53100.55200.57700.75000.2322700 | FLAT FLOORING | 7d | 2026-09-02 | 2026-09-08 | 4561 |  | RGA -FINISHING | 7844612 |
| 4565 | 40100.40200.40800.53100.55200.57700.75000.2322800 | WINDOW FIXING | 5d | 2026-09-09 | 2026-09-13 | 4564 |  | RGA -FINISHING | 7844622 |
| 4566 | 40100.40200.40800.53100.55200.57700.75000.2322900 | INTERNAL PAINTING - 1ST COAT | 4d | 2026-09-19 | 2026-09-22 | 4563 |  | RGA -FINISHING | 7844632 |
| 4567 | 40100.40200.40800.53100.55200.57700.75000.2323000 | INTERNAL DOOR FIXING | 15d | 2026-09-21 | 2026-10-05 | 4566FS-2d |  | RGA -FINISHING | 7844642 |
| 4568 | 40100.40200.40800.53100.55200.57700.75000.2323100 | WIRING & SWITCH PLATE FIXING | 8d | 2026-10-02 | 2026-10-09 | 4567FS-4d |  | RGA -FINISHING | 7844652 |
| 4569 | 40100.40200.40800.53100.55200.57700.75000.2323200 | TOILET FALSE CEILING | 7d | 2026-10-10 | 2026-10-16 | 4568 |  | RGA -FINISHING | 7844662 |
| 4570 | 40100.40200.40800.53100.55200.57700.75000.2323300 | MAIN DOOR FRAME SHUTTER FIXING | 6d | 2027-03-27 | 2027-04-01 | 4807 |  | RGA -FINISHING | 7844672 |
| 4571 | 40100.40200.40800.53100.55200.57700.75000.2323400 | FINAL COAT PAINT | 8d | 2027-04-02 | 2027-04-09 | 4570 |  | RGA -FINISHING | 7844682 |
| 4572 | 40100.40200.40800.53100.55200.57700.74900 | **20TH FLOOR** | 244d | 2026-08-09 | 2027-04-09 |  | start no earlier than 2026-08-09 | RGA -FINISHING | 7804652 |
| 4573 | 40100.40200.40800.53100.55200.57700.74900.2323500 | TOILET DADO TILE FIXING | 10d | 2026-09-30 | 2026-10-09 | 4262 |  | RGA -FINISHING | 7844692 |
| 4574 | 40100.40200.40800.53100.55200.57700.74900.2323600 | TOILET FLOORING WORK | 7d | 2026-10-10 | 2026-10-16 | 4573 |  | RGA -FINISHING | 7844702 |
| 4575 | 40100.40200.40800.53100.55200.57700.74900.2323700 | FIRE FIGHTING | 8d | 2026-08-09 | 2026-08-16 | 4261 |  | RGA -FINISHING | 7844712 |
| 4576 | 40100.40200.40800.53100.55200.57700.74900.2323800 | INTERNAL PAINTING - PUTTY / PRIMER APPLICATION | 5d | 2026-10-29 | 2026-11-02 | 4578 |  | RGA -FINISHING | 7844722 |
| 4577 | 40100.40200.40800.53100.55200.57700.74900.2323900 | FLAT FLOORING | 7d | 2026-10-17 | 2026-10-23 | 4574 |  | RGA -FINISHING | 7844732 |
| 4578 | 40100.40200.40800.53100.55200.57700.74900.2324000 | WINDOW FIXING | 5d | 2026-10-24 | 2026-10-28 | 4577 |  | RGA -FINISHING | 7844742 |
| 4579 | 40100.40200.40800.53100.55200.57700.74900.2324100 | INTERNAL PAINTING - 1ST COAT | 4d | 2026-11-03 | 2026-11-06 | 4576 |  | RGA -FINISHING | 7385855 |
| 4580 | 40100.40200.40800.53100.55200.57700.74900.2324200 | INTERNAL DOOR FIXING | 15d | 2026-11-05 | 2026-11-19 | 4579FS-2d |  | RGA -FINISHING | 7385865 |
| 4581 | 40100.40200.40800.53100.55200.57700.74900.2324300 | WIRING & SWITCH PLATE FIXING | 8d | 2026-11-16 | 2026-11-23 | 4580FS-4d |  | RGA -FINISHING | 7385875 |
| 4582 | 40100.40200.40800.53100.55200.57700.74900.2324400 | TOILET FALSE CEILING | 7d | 2026-11-24 | 2026-11-30 | 4581 |  | RGA -FINISHING | 7844752 |
| 4583 | 40100.40200.40800.53100.55200.57700.74900.2324500 | MAIN DOOR FRAME SHUTTER FIXING | 6d | 2027-03-27 | 2027-04-01 | 4815 |  | RGA -FINISHING | 7844762 |
| 4584 | 40100.40200.40800.53100.55200.57700.74900.2324600 | FINAL COAT PAINT | 8d | 2027-04-02 | 2027-04-09 | 4583 |  | RGA -FINISHING | 7844772 |

| ID | WBS | Task | Duration | Start | Finish | Predecessors | Constraint | Calendar | Unique_Task_ID |
| --- | --- | --- | --- | --- | --- | --- | --- | --- | --- |
| 4585 | 40100.40200.40800.53100.55200.57700.74800 | **21st FLOOR** | 236d | 2026-08-17 | 2027-04-09 |  | start no earlier than 2026-08-17 | RGA -FINISHING | 7804642 |
| 4586 | 40100.40200.40800.53100.55200.57700.74800.2324700 | TOILET DADO TILE FIXING | 10d | 2026-10-08 | 2026-10-17 | 4269 |  | RGA -FINISHING | 7844782 |
| 4587 | 40100.40200.40800.53100.55200.57700.74800.2324800 | TOILET FLOORING WORK | 7d | 2026-10-18 | 2026-10-24 | 4586 |  | RGA -FINISHING | 7844792 |
| 4588 | 40100.40200.40800.53100.55200.57700.74800.2324900 | FIRE FIGHTING | 8d | 2026-08-17 | 2026-08-24 | 4268 |  | RGA -FINISHING | 7844802 |
| 4589 | 40100.40200.40800.53100.55200.57700.74800.2325000 | INTERNAL PAINTING - PUTTY / PRIMER APPLICATION | 15d | 2026-11-06 | 2026-11-20 | 4591 |  | RGA -FINISHING | 7844812 |
| 4590 | 40100.40200.40800.53100.55200.57700.74800.2325100 | FLAT FLOORING | 5d | 2026-10-25 | 2026-10-29 | 4587 |  | RGA -FINISHING | 7844822 |
| 4591 | 40100.40200.40800.53100.55200.57700.74800.2325200 | WINDOW FIXING | 7d | 2026-10-30 | 2026-11-05 | 4590 |  | RGA -FINISHING | 7844832 |
| 4592 | 40100.40200.40800.53100.55200.57700.74800.2325300 | INTERNAL PAINTING - 1ST COAT | 5d | 2026-11-21 | 2026-11-25 | 4589 |  | RGA -FINISHING | 7844842 |
| 4593 | 40100.40200.40800.53100.55200.57700.74800.2325400 | INTERNAL DOOR FIXING | 4d | 2026-11-24 | 2026-11-27 | 4592FS-2d |  | RGA -FINISHING | 7844852 |
| 4594 | 40100.40200.40800.53100.55200.57700.74800.2325500 | WIRING & SWITCH PLATE FIXING | 8d | 2026-11-24 | 2026-12-01 | 4593FS-4d |  | RGA -FINISHING | 7844862 |
| 4595 | 40100.40200.40800.53100.55200.57700.74800.2325600 | TOILET FALSE CEILING | 7d | 2026-12-02 | 2026-12-08 | 4594 |  | RGA -FINISHING | 7844872 |
| 4596 | 40100.40200.40800.53100.55200.57700.74800.2325700 | MAIN DOOR FRAME SHUTTER FIXING | 6d | 2027-03-27 | 2027-04-01 | 4823 |  | RGA -FINISHING | 7844882 |
| 4597 | 40100.40200.40800.53100.55200.57700.74800.2325800 | FINAL COAT PAINT | 8d | 2027-04-02 | 2027-04-09 | 4596 |  | RGA -FINISHING | 7844892 |
| 4598 | 40100.40200.40800.53100.55200.57700.74700 | **22nd FLOOR** | 237d | 2026-08-26 | 2027-04-19 |  | start no earlier than 2026-08-26 | RGA -FINISHING | 7804632 |
| 4599 | 40100.40200.40800.53100.55200.57700.74700.2325900 | TOILET DADO TILE FIXING | 10d | 2026-10-17 | 2026-10-26 | 4276 |  | RGA -FINISHING | 7844902 |
| 4600 | 40100.40200.40800.53100.55200.57700.74700.2326000 | TOILET FLOORING WORK | 7d | 2026-10-27 | 2026-11-02 | 4599 |  | RGA -FINISHING | 7844912 |
| 4601 | 40100.40200.40800.53100.55200.57700.74700.2326100 | FIRE FIGHTING | 8d | 2026-08-26 | 2026-09-02 | 4275 |  | RGA -FINISHING | 7844922 |
| 4602 | 40100.40200.40800.53100.55200.57700.74700.2326200 | INTERNAL PAINTING - PUTTY / PRIMER APPLICATION | 5d | 2026-11-11 | 2026-11-15 | 4604 |  | RGA -FINISHING | 7844932 |
| 4603 | 40100.40200.40800.53100.55200.57700.74700.2326300 | FLAT FLOORING | 7d | 2026-11-03 | 2026-11-09 | 4600 |  | RGA -FINISHING | 7844942 |
| 4604 | 40100.40200.40800.53100.55200.57700.74700.2326400 | WINDOW FIXING | 5d | 2026-11-06 | 2026-11-10 | 4591 |  | RGA -FINISHING | 7844952 |
| 4605 | 40100.40200.40800.53100.55200.57700.74700.2326500 | INTERNAL PAINTING - 1ST COAT | 4d | 2026-11-16 | 2026-11-19 | 4602 |  | RGA -FINISHING | 7844962 |
| 4606 | 40100.40200.40800.53100.55200.57700.74700.2326600 | INTERNAL DOOR FIXING | 15d | 2026-11-18 | 2026-12-02 | 4605FS-2d |  | RGA -FINISHING | 7844972 |
| 4607 | 40100.40200.40800.53100.55200.57700.74700.2326700 | WIRING & SWITCH PLATE FIXING | 8d | 2026-11-29 | 2026-12-06 | 4606FS-4d |  | RGA -FINISHING | 7844982 |
| 4608 | 40100.40200.40800.53100.55200.57700.74700.2326800 | TOILET FALSE CEILING | 7d | 2026-12-07 | 2026-12-13 | 4607 |  | RGA -FINISHING | 7844992 |
| 4609 | 40100.40200.40800.53100.55200.57700.74700.2326900 | MAIN DOOR FRAME SHUTTER FIXING | 6d | 2027-04-06 | 2027-04-11 | 4831 |  | RGA -FINISHING | 7845002 |
| 4610 | 40100.40200.40800.53100.55200.57700.74700.2327000 | FINAL COAT PAINT | 8d | 2027-04-12 | 2027-04-19 | 4609 |  | RGA -FINISHING | 7845012 |

| ID | WBS | Task | Duration | Start | Finish | Predecessors | Constraint | Calendar | Unique_Task_ID |
| --- | --- | --- | --- | --- | --- | --- | --- | --- | --- |
| 4611 | 40100.40200.40800.53100.55200.57700.74600 | **23TH FLOOR** | 228d | 2026-09-04 | 2027-04-19 |  | start no earlier than 2026-09-04 | RGA -FINISHING | 7382405 |
| 4612 | 40100.40200.40800.53100.55200.57700.74600.2327100 | TOILET DADO TILE FIXING | 10d | 2026-11-25 | 2026-12-04 | 4283 |  | RGA -FINISHING | 7386155 |
| 4613 | 40100.40200.40800.53100.55200.57700.74600.2327200 | TOILET FLOORING WORK | 7d | 2026-12-05 | 2026-12-11 | 4612 |  | RGA -FINISHING | 7386165 |
| 4614 | 40100.40200.40800.53100.55200.57700.74600.2327300 | FIRE FIGHTING | 8d | 2026-09-04 | 2026-09-11 | 4282 |  | RGA -FINISHING | 7386175 |
| 4615 | 40100.40200.40800.53100.55200.57700.74600.2327400 | INTERNAL PAINTING - PUTTY / PRIMER APPLICATION | 5d | 2026-12-24 | 2026-12-28 | 4617 |  | RGA -FINISHING | 7386185 |
| 4616 | 40100.40200.40800.53100.55200.57700.74600.2327500 | FLAT FLOORING | 7d | 2026-12-12 | 2026-12-18 | 4613 |  | RGA -FINISHING | 7386195 |
| 4617 | 40100.40200.40800.53100.55200.57700.74600.2327600 | WINDOW FIXING | 5d | 2026-12-19 | 2026-12-23 | 4616 |  | RGA -FINISHING | 7386205 |
| 4618 | 40100.40200.40800.53100.55200.57700.74600.2327700 | INTERNAL PAINTING - 1ST COAT | 4d | 2026-12-29 | 2027-01-01 | 4615 |  | RGA -FINISHING | 7386215 |
| 4619 | 40100.40200.40800.53100.55200.57700.74600.2327800 | INTERNAL DOOR FIXING | 15d | 2026-12-31 | 2027-01-14 | 4618FS-2d |  | RGA -FINISHING | 7386225 |
| 4620 | 40100.40200.40800.53100.55200.57700.74600.2327900 | WIRING & SWITCH PLATE FIXING | 8d | 2027-01-11 | 2027-01-18 | 4619FS-4d |  | RGA -FINISHING | 7386235 |
| 4621 | 40100.40200.40800.53100.55200.57700.74600.2328000 | TOILET FALSE CEILING | 7d | 2027-01-19 | 2027-01-25 | 4620 |  | RGA -FINISHING | 7386245 |
| 4622 | 40100.40200.40800.53100.55200.57700.74600.2328100 | MAIN DOOR FRAME SHUTTER FIXING | 6d | 2027-04-06 | 2027-04-11 | 4839 |  | RGA -FINISHING | 7386255 |
| 4623 | 40100.40200.40800.53100.55200.57700.74600.2328200 | FINAL COAT PAINT | 8d | 2027-04-12 | 2027-04-19 | 4622 |  | RGA -FINISHING | 7386265 |
| 4624 | 40100.40200.40800.53100.55200.57700.74500 | **24TH FLOOR** | 219d | 2026-09-13 | 2027-04-19 |  | start no earlier than 2026-09-13 | RGA -FINISHING | 7804622 |
| 4625 | 40100.40200.40800.53100.55200.57700.74500.2328300 | TOILET DADO TILE FIXING | 10d | 2026-12-04 | 2026-12-13 | 4290 |  | RGA -FINISHING | 7386275 |
| 4626 | 40100.40200.40800.53100.55200.57700.74500.2328400 | TOILET FLOORING WORK | 7d | 2026-12-14 | 2026-12-20 | 4625 |  | RGA -FINISHING | 7386285 |
| 4627 | 40100.40200.40800.53100.55200.57700.74500.2328500 | FIRE FIGHTING | 8d | 2026-09-13 | 2026-09-20 | 4289 |  | RGA -FINISHING | 7386295 |
| 4628 | 40100.40200.40800.53100.55200.57700.74500.2328600 | INTERNAL PAINTING - PUTTY / PRIMER APPLICATION | 5d | 2026-12-28 | 2027-01-01 | 4629 |  | RGA -FINISHING | 7386305 |
| 4629 | 40100.40200.40800.53100.55200.57700.74500.2328700 | FLAT FLOORING | 7d | 2026-12-21 | 2026-12-27 | 4626 |  | RGA -FINISHING | 7386315 |
| 4630 | 40100.40200.40800.53100.55200.57700.74500.2328800 | WINDOW FIXING | 5d | 2026-12-28 | 2027-01-01 | 4629 |  | RGA -FINISHING | 7386325 |
| 4631 | 40100.40200.40800.53100.55200.57700.74500.2328900 | INTERNAL PAINTING - 1ST COAT | 4d | 2027-01-02 | 2027-01-05 | 4628 |  | RGA -FINISHING | 7386335 |
| 4632 | 40100.40200.40800.53100.55200.57700.74500.2329000 | INTERNAL DOOR FIXING | 15d | 2027-01-04 | 2027-01-18 | 4631FS-2d |  | RGA -FINISHING | 7845022 |
| 4633 | 40100.40200.40800.53100.55200.57700.74500.2329100 | WIRING & SWITCH PLATE FIXING | 8d | 2027-01-15 | 2027-01-22 | 4632FS-4d |  | RGA -FINISHING | 7845032 |
| 4634 | 40100.40200.40800.53100.55200.57700.74500.2329200 | TOILET FALSE CEILING | 7d | 2027-01-23 | 2027-01-29 | 4633 |  | RGA -FINISHING | 7845042 |
| 4635 | 40100.40200.40800.53100.55200.57700.74500.2329300 | MAIN DOOR FRAME SHUTTER FIXING | 6d | 2027-04-06 | 2027-04-11 | 4847 |  | RGA -FINISHING | 7845052 |
| 4636 | 40100.40200.40800.53100.55200.57700.74500.2329400 | FINAL COAT PAINT | 8d | 2027-04-12 | 2027-04-19 | 4635 |  | RGA -FINISHING | 7845062 |

| ID | WBS | Task | Duration | Start | Finish | Predecessors | Constraint | Calendar | Unique_Task_ID |
| --- | --- | --- | --- | --- | --- | --- | --- | --- | --- |
| 4637 | 40100.40200.40800.53100.55200.57700.71600 | **25TH FLOOR** | 210d | 2026-09-22 | 2027-04-19 |  | start no earlier than 2026-09-22 | RGA -FINISHING | 7804612 |
| 4638 | 40100.40200.40800.53100.55200.57700.71600.2329500 | TOILET DADO TILE FIXING | 10d | 2026-12-23 | 2027-01-01 | 4297 |  | RGA -FINISHING | 7845072 |
| 4639 | 40100.40200.40800.53100.55200.57700.71600.2329600 | TOILET FLOORING WORK | 7d | 2027-01-02 | 2027-01-08 | 4638 |  | RGA -FINISHING | 7845082 |
| 4640 | 40100.40200.40800.53100.55200.57700.71600.2329700 | FIRE FIGHTING | 8d | 2026-09-22 | 2026-09-29 | 4296 |  | RGA -FINISHING | 7845092 |
| 4641 | 40100.40200.40800.53100.55200.57700.71600.2329800 | INTERNAL PAINTING - PUTTY / PRIMER APPLICATION | 5d | 2027-01-31 | 2027-02-04 | 4643 |  | RGA -FINISHING | 7845102 |
| 4642 | 40100.40200.40800.53100.55200.57700.71600.2329900 | FLAT FLOORING | 7d | 2027-01-19 | 2027-01-25 | 4639FS+10d |  | RGA -FINISHING | 7845112 |
| 4643 | 40100.40200.40800.53100.55200.57700.71600.2330000 | WINDOW FIXING | 5d | 2027-01-26 | 2027-01-30 | 4642 |  | RGA -FINISHING | 7845122 |
| 4644 | 40100.40200.40800.53100.55200.57700.71600.2330100 | INTERNAL PAINTING - 1ST COAT | 4d | 2027-02-05 | 2027-02-08 | 4641 |  | RGA -FINISHING | 7845132 |
| 4645 | 40100.40200.40800.53100.55200.57700.71600.2330200 | INTERNAL DOOR FIXING | 15d | 2027-02-07 | 2027-02-21 | 4644FS-2d |  | RGA -FINISHING | 7845142 |
| 4646 | 40100.40200.40800.53100.55200.57700.71600.2330300 | WIRING & SWITCH PLATE FIXING | 8d | 2027-02-18 | 2027-02-25 | 4645FS-4d |  | RGA -FINISHING | 7845152 |
| 4647 | 40100.40200.40800.53100.55200.57700.71600.2330400 | TOILET FALSE CEILING | 7d | 2027-02-26 | 2027-03-04 | 4646 |  | RGA -FINISHING | 7845162 |
| 4648 | 40100.40200.40800.53100.55200.57700.71600.2330500 | MAIN DOOR FRAME SHUTTER FIXING | 6d | 2027-04-06 | 2027-04-11 | 4855 |  | RGA -FINISHING | 7845172 |
| 4649 | 40100.40200.40800.53100.55200.57700.71600.2330600 | FINAL COAT PAINT | 8d | 2027-04-12 | 2027-04-19 | 4648 |  | RGA -FINISHING | 7845182 |
| 4650 | 40100.40200.40800.53100.55200.60500 | **LIFT LOBBY & STAIRCASE FINISHING WORK** | 478d | 2026-01-07 | 2027-04-29 |  | start no earlier than 2026-01-07 | RGA -FINISHING | 7803532 |
| 4651 | 40100.40200.40800.53100.55200.60500.239500 | **GROUND FLOOR** | 447d | 2026-01-07 | 2027-03-29 |  | start no earlier than 2026-01-07 | RGA -FINISHING | 7806532 |
| 4652 | 40100.40200.40800.53100.55200.60500.239500.2330700 | FIRE FIGHTING | 5d | 2026-01-07 | 2026-01-11 | 4315 |  | RGA -FINISHING | 7846022 |
| 4653 | 40100.40200.40800.53100.55200.60500.239500.2330800 | LIFT BLOCK WORK | 6d | 2026-09-13 | 2026-09-18 | 4107 |  | RGA -FINISHING | 7846032 |
| 4654 | 40100.40200.40800.53100.55200.60500.239500.2330900 | LIFT DADO WORK | 6d | 2027-02-25 | 2027-03-02 | 4309FS-60d |  | RGA -FINISHING | 7846042 |
| 4655 | 40100.40200.40800.53100.55200.60500.239500.2331000 | LOBBY FLOORING WORK | 8d | 2027-03-03 | 2027-03-10 | 4654 |  | RGA -FINISHING | 7846052 |
| 4656 | 40100.40200.40800.53100.55200.60500.239500.2331100 | ELECTRICAL WIRING & SWITCH PLATE FIXING WORK | 6d | 2027-03-11 | 2027-03-16 | 4655 |  | RGA -FINISHING | 7846062 |
| 4657 | 40100.40200.40800.53100.55200.60500.239500.2331200 | False ceiling & 1ST COAT PAINTING | 10d | 2027-03-17 | 2027-03-26 | 4656 |  | RGA -FINISHING | 7846072 |
| 4658 | 40100.40200.40800.53100.55200.60500.239500.2331300 | CLEANING | 3d | 2027-03-27 | 2027-03-29 | 4657 |  | RGA -FINISHING | 7846082 |
| 4659 | 40100.40200.40800.53100.55200.60500.239600 | **1ST FLOOR** | 411d | 2026-01-14 | 2027-02-28 |  | start no earlier than 2026-01-14 | RGA -FINISHING | 7806542 |
| 4660 | 40100.40200.40800.53100.55200.60500.239600.2331400 | FIRE FIGHTING | 10d | 2026-01-14 | 2026-01-23 | 4328FS-5d |  | RGA -FINISHING | 7846092 |
| 4661 | 40100.40200.40800.53100.55200.60500.239600.2331500 | LIFT BLOCK WORK | 3d | 2026-09-13 | 2026-09-15 | 4107 |  | RGA -FINISHING | 7846102 |
| 4662 | 40100.40200.40800.53100.55200.60500.239600.2331600 | LIFT DADO WORK | 10d | 2027-01-16 | 2027-01-25 | 4309FS-100d |  | RGA -FINISHING | 7846112 |
| 4663 | 40100.40200.40800.53100.55200.60500.239600.2331700 | LOBBY FLOORING WORK | 10d | 2027-01-26 | 2027-02-04 | 4662 |  | RGA -FINISHING | 7846122 |
| 4664 | 40100.40200.40800.53100.55200.60500.239600.2331800 | ELECTRICAL WIRING & SWITCH PLATE FIXING WORK | 6d | 2027-02-05 | 2027-02-10 | 4663 |  | RGA -FINISHING | 7846132 |
| 4665 | 40100.40200.40800.53100.55200.60500.239600.2331900 | False ceiling & 1ST COAT PAINTING | 15d | 2027-02-11 | 2027-02-25 | 4664 |  | RGA -FINISHING | 7846142 |
| 4666 | 40100.40200.40800.53100.55200.60500.239600.2332000 | CLEANING | 3d | 2027-02-26 | 2027-02-28 | 4665 |  | RGA -FINISHING | 7846152 |

Notes:
- 4650: Completion in 12 months post last RCC
- 4652: Assumed
- 4660: Assumed

| ID | WBS | Task | Duration | Start | Finish | Predecessors | Constraint | Calendar | Unique_Task_ID |
| --- | --- | --- | --- | --- | --- | --- | --- | --- | --- |
| 4667 | 40100.40200.40800.53100.55200.60500.239700 | **2nd FLOOR** | 396d | 2026-01-29 | 2027-02-28 |  | start no earlier than 2026-01-29 | RGA -FINISHING | 7806552 |
| 4668 | 40100.40200.40800.53100.55200.60500.239700.2332100 | FIRE FIGHTING | 10d | 2026-01-29 | 2026-02-07 | 4341FS-5d |  | RGA -FINISHING | 7846162 |
| 4669 | 40100.40200.40800.53100.55200.60500.239700.2332200 | LIFT BLOCK WORK | 3d | 2026-09-13 | 2026-09-15 | 4661SS |  | RGA -FINISHING | 7846172 |
| 4670 | 40100.40200.40800.53100.55200.60500.239700.2332300 | LIFT DADO WORK | 10d | 2027-01-16 | 2027-01-25 | 4662SS |  | RGA -FINISHING | 7846182 |
| 4671 | 40100.40200.40800.53100.55200.60500.239700.2332400 | LOBBY FLOORING WORK | 10d | 2027-01-26 | 2027-02-04 | 4670 |  | RGA -FINISHING | 7846192 |
| 4672 | 40100.40200.40800.53100.55200.60500.239700.2332500 | ELECTRICAL WIRING & SWITCH PLATE FIXING WORK | 6d | 2027-02-05 | 2027-02-10 | 4671 |  | RGA -FINISHING | 7846202 |
| 4673 | 40100.40200.40800.53100.55200.60500.239700.2332600 | False ceiling & 1ST COAT PAINTING | 15d | 2027-02-11 | 2027-02-25 | 4672 |  | RGA -FINISHING | 7846212 |
| 4674 | 40100.40200.40800.53100.55200.60500.239700.2332700 | CLEANING | 3d | 2027-02-26 | 2027-02-28 | 4673 |  | RGA -FINISHING | 7846222 |
| 4675 | 40100.40200.40800.53100.55200.60500.239800 | **3rd FLOOR** | 371d | 2026-02-23 | 2027-02-28 |  | start no earlier than 2026-02-23 | RGA -FINISHING | 7806562 |
| 4676 | 40100.40200.40800.53100.55200.60500.239800.2332800 | FIRE FIGHTING | 10d | 2026-02-23 | 2026-03-04 | 4354FS-5d |  | RGA -FINISHING | 7846232 |
| 4677 | 40100.40200.40800.53100.55200.60500.239800.2332900 | LIFT BLOCK WORK | 3d | 2026-09-13 | 2026-09-15 | 4669SS |  | RGA -FINISHING | 7846242 |
| 4678 | 40100.40200.40800.53100.55200.60500.239800.2333000 | LIFT DADO WORK | 10d | 2027-01-16 | 2027-01-25 | 4670SS |  | RGA -FINISHING | 7846252 |
| 4679 | 40100.40200.40800.53100.55200.60500.239800.2333100 | LOBBY FLOORING WORK | 10d | 2027-01-26 | 2027-02-04 | 4678 |  | RGA -FINISHING | 7846262 |
| 4680 | 40100.40200.40800.53100.55200.60500.239800.2333200 | ELECTRICAL WIRING & SWITCH PLATE FIXING WORK | 6d | 2027-02-05 | 2027-02-10 | 4679 |  | RGA -FINISHING | 7846272 |
| 4681 | 40100.40200.40800.53100.55200.60500.239800.2333300 | False ceiling & 1ST COAT PAINTING | 15d | 2027-02-11 | 2027-02-25 | 4680 |  | RGA -FINISHING | 7846282 |
| 4682 | 40100.40200.40800.53100.55200.60500.239800.2333400 | CLEANING | 3d | 2027-02-26 | 2027-02-28 | 4681 |  | RGA -FINISHING | 7846292 |
| 4683 | 40100.40200.40800.53100.55200.60500.239900 | **4th FLOOR** | 372d | 2026-03-04 | 2027-03-10 |  | start no earlier than 2026-03-04 | RGA -FINISHING | 7806572 |
| 4684 | 40100.40200.40800.53100.55200.60500.239900.2333500 | FIRE FIGHTING | 10d | 2026-03-04 | 2026-03-13 | 4367FS-5d |  | RGA -FINISHING | 7846302 |
| 4685 | 40100.40200.40800.53100.55200.60500.239900.2333600 | LIFT BLOCK WORK | 3d | 2026-09-16 | 2026-09-18 | 4677 |  | RGA -FINISHING | 7846312 |
| 4686 | 40100.40200.40800.53100.55200.60500.239900.2333700 | LIFT DADO WORK | 10d | 2027-01-26 | 2027-02-04 | 4678 |  | RGA -FINISHING | 7846322 |
| 4687 | 40100.40200.40800.53100.55200.60500.239900.2333800 | LOBBY FLOORING WORK | 10d | 2027-02-05 | 2027-02-14 | 4686 |  | RGA -FINISHING | 7846332 |
| 4688 | 40100.40200.40800.53100.55200.60500.239900.2333900 | ELECTRICAL WIRING & SWITCH PLATE FIXING WORK | 6d | 2027-02-15 | 2027-02-20 | 4687 |  | RGA -FINISHING | 7846342 |
| 4689 | 40100.40200.40800.53100.55200.60500.239900.2334000 | False ceiling & 1ST COAT PAINTING | 15d | 2027-02-21 | 2027-03-07 | 4688 |  | RGA -FINISHING | 7846352 |
| 4690 | 40100.40200.40800.53100.55200.60500.239900.2334100 | CLEANING | 3d | 2027-03-08 | 2027-03-10 | 4689 |  | RGA -FINISHING | 7846362 |

Notes:
- 4668: Assumed
- 4676: Assumed
- 4684: Assumed

| ID | WBS | Task | Duration | Start | Finish | Predecessors | Constraint | Calendar | Unique_Task_ID |
| --- | --- | --- | --- | --- | --- | --- | --- | --- | --- |
| 4691 | 40100.40200.40800.53100.55200.60500.240000 | **5th FLOOR** | 373d | 2026-03-13 | 2027-03-20 |  | start no earlier than 2026-03-13 | RGA -FINISHING | 7806582 |
| 4692 | 40100.40200.40800.53100.55200.60500.240000.2334200 | FIRE FIGHTING | 10d | 2026-03-13 | 2026-03-22 | 4380FS-5d |  | RGA -FINISHING | 7846372 |
| 4693 | 40100.40200.40800.53100.55200.60500.240000.2334300 | LIFT BLOCK WORK | 3d | 2026-09-19 | 2026-09-21 | 4685 |  | RGA -FINISHING | 7846382 |
| 4694 | 40100.40200.40800.53100.55200.60500.240000.2334400 | LIFT DADO WORK | 10d | 2027-02-05 | 2027-02-14 | 4686 |  | RGA -FINISHING | 7846392 |
| 4695 | 40100.40200.40800.53100.55200.60500.240000.2334500 | LOBBY FLOORING WORK | 10d | 2027-02-15 | 2027-02-24 | 4694 |  | RGA -FINISHING | 7846402 |
| 4696 | 40100.40200.40800.53100.55200.60500.240000.2334600 | ELECTRICAL WIRING & SWITCH PLATE FIXING WORK | 6d | 2027-02-25 | 2027-03-02 | 4695 |  | RGA -FINISHING | 7846412 |
| 4697 | 40100.40200.40800.53100.55200.60500.240000.2334700 | False ceiling & 1ST COAT PAINTING | 15d | 2027-03-03 | 2027-03-17 | 4696 |  | RGA -FINISHING | 7846422 |
| 4698 | 40100.40200.40800.53100.55200.60500.240000.2334800 | CLEANING | 3d | 2027-03-18 | 2027-03-20 | 4697 |  | RGA -FINISHING | 7846432 |
| 4699 | 40100.40200.40800.53100.55200.60500.240100 | **6th FLOOR** | 364d | 2026-03-22 | 2027-03-20 |  | start no earlier than 2026-03-22 | RGA -FINISHING | 7806592 |
| 4700 | 40100.40200.40800.53100.55200.60500.240100.2334900 | FIRE FIGHTING | 10d | 2026-03-22 | 2026-03-31 | 4393FS-5d |  | RGA -FINISHING | 7846442 |
| 4701 | 40100.40200.40800.53100.55200.60500.240100.2335000 | LIFT BLOCK WORK | 3d | 2026-09-19 | 2026-09-21 | 4693SS |  | RGA -FINISHING | 7846452 |
| 4702 | 40100.40200.40800.53100.55200.60500.240100.2335100 | LIFT DADO WORK | 10d | 2027-02-05 | 2027-02-14 | 4694SS |  | RGA -FINISHING | 7846462 |
| 4703 | 40100.40200.40800.53100.55200.60500.240100.2335200 | LOBBY FLOORING WORK | 10d | 2027-02-15 | 2027-02-24 | 4702 |  | RGA -FINISHING | 7387805 |
| 4704 | 40100.40200.40800.53100.55200.60500.240100.2335300 | ELECTRICAL WIRING & SWITCH PLATE FIXING WORK | 6d | 2027-02-25 | 2027-03-02 | 4703 |  | RGA -FINISHING | 7387815 |
| 4705 | 40100.40200.40800.53100.55200.60500.240100.2335400 | False ceiling & 1ST COAT PAINTING | 15d | 2027-03-03 | 2027-03-17 | 4704 |  | RGA -FINISHING | 7387825 |
| 4706 | 40100.40200.40800.53100.55200.60500.240100.2335500 | CLEANING | 3d | 2027-03-18 | 2027-03-20 | 4705 |  | RGA -FINISHING | 7387835 |
| 4707 | 40100.40200.40800.53100.55200.60500.240200 | **7th FLOOR** | 355d | 2026-03-31 | 2027-03-20 |  | start no earlier than 2026-03-31 | RGA -FINISHING | 7806602 |
| 4708 | 40100.40200.40800.53100.55200.60500.240200.2335600 | FIRE FIGHTING | 10d | 2026-03-31 | 2026-04-09 | 4406FS-5d |  | RGA -FINISHING | 7387845 |
| 4709 | 40100.40200.40800.53100.55200.60500.240200.2335700 | LIFT BLOCK WORK | 3d | 2026-09-19 | 2026-09-21 | 4701SS |  | RGA -FINISHING | 7387855 |
| 4710 | 40100.40200.40800.53100.55200.60500.240200.2335800 | LIFT DADO WORK | 10d | 2027-02-05 | 2027-02-14 | 4702SS |  | RGA -FINISHING | 7387865 |
| 4711 | 40100.40200.40800.53100.55200.60500.240200.2335900 | LOBBY FLOORING WORK | 10d | 2027-02-15 | 2027-02-24 | 4710 |  | RGA -FINISHING | 7387875 |
| 4712 | 40100.40200.40800.53100.55200.60500.240200.2336000 | ELECTRICAL WIRING & SWITCH PLATE FIXING WORK | 6d | 2027-02-25 | 2027-03-02 | 4711 |  | RGA -FINISHING | 7387885 |
| 4713 | 40100.40200.40800.53100.55200.60500.240200.2336100 | False ceiling & 1ST COAT PAINTING | 15d | 2027-03-03 | 2027-03-17 | 4712 |  | RGA -FINISHING | 7387895 |
| 4714 | 40100.40200.40800.53100.55200.60500.240200.2336200 | CLEANING | 3d | 2027-03-18 | 2027-03-20 | 4713 |  | RGA -FINISHING | 7387905 |

Notes:
- 4692: Assumed
- 4700: Assumed
- 4708: Assumed

| ID | WBS | Task | Duration | Start | Finish | Predecessors | Constraint | Calendar | Unique_Task_ID |
| --- | --- | --- | --- | --- | --- | --- | --- | --- | --- |
| 4715 | 40100.40200.40800.53100.55200.60500.240300 | **8th FLOOR** | 346d | 2026-04-09 | 2027-03-20 |  | start no earlier than 2026-04-09 | RGA -FINISHING | 7806612 |
| 4716 | 40100.40200.40800.53100.55200.60500.240300.2336300 | FIRE FIGHTING | 10d | 2026-04-09 | 2026-04-18 | 4419FS-5d |  | RGA -FINISHING | 7387915 |
| 4717 | 40100.40200.40800.53100.55200.60500.240300.2336400 | LIFT BLOCK WORK | 3d | 2026-09-19 | 2026-09-21 | 4709SS |  | RGA -FINISHING | 7387925 |
| 4718 | 40100.40200.40800.53100.55200.60500.240300.2336500 | LIFT DADO WORK | 10d | 2027-02-05 | 2027-02-14 | 4710SS |  | RGA -FINISHING | 7387935 |
| 4719 | 40100.40200.40800.53100.55200.60500.240300.2336600 | LOBBY FLOORING WORK | 10d | 2027-02-15 | 2027-02-24 | 4718 |  | RGA -FINISHING | 7387945 |
| 4720 | 40100.40200.40800.53100.55200.60500.240300.2336700 | ELECTRICAL WIRING & SWITCH PLATE FIXING WORK | 6d | 2027-02-25 | 2027-03-02 | 4719 |  | RGA -FINISHING | 7846472 |
| 4721 | 40100.40200.40800.53100.55200.60500.240300.2336800 | False ceiling & 1ST COAT PAINTING | 15d | 2027-03-03 | 2027-03-17 | 4720 |  | RGA -FINISHING | 7846482 |
| 4722 | 40100.40200.40800.53100.55200.60500.240300.2336900 | CLEANING | 3d | 2027-03-18 | 2027-03-20 | 4721 |  | RGA -FINISHING | 7846492 |
| 4723 | 40100.40200.40800.53100.55200.60500.240400 | **9th FLOOR** | 347d | 2026-04-18 | 2027-03-30 |  | start no earlier than 2026-04-18 | RGA -FINISHING | 7806622 |
| 4724 | 40100.40200.40800.53100.55200.60500.240400.2337000 | FIRE FIGHTING | 10d | 2026-04-18 | 2026-04-27 | 4432FS-5d |  | RGA -FINISHING | 7846502 |
| 4725 | 40100.40200.40800.53100.55200.60500.240400.2337100 | LIFT BLOCK WORK | 3d | 2026-09-22 | 2026-09-24 | 4717 |  | RGA -FINISHING | 7846512 |
| 4726 | 40100.40200.40800.53100.55200.60500.240400.2337200 | LIFT DADO WORK | 10d | 2027-02-15 | 2027-02-24 | 4718 |  | RGA -FINISHING | 7846522 |
| 4727 | 40100.40200.40800.53100.55200.60500.240400.2337300 | LOBBY FLOORING WORK | 10d | 2027-02-25 | 2027-03-06 | 4726 |  | RGA -FINISHING | 7846532 |
| 4728 | 40100.40200.40800.53100.55200.60500.240400.2337400 | ELECTRICAL WIRING & SWITCH PLATE FIXING WORK | 6d | 2027-03-07 | 2027-03-12 | 4727 |  | RGA -FINISHING | 7846542 |
| 4729 | 40100.40200.40800.53100.55200.60500.240400.2337500 | False ceiling & 1ST COAT PAINTING | 15d | 2027-03-13 | 2027-03-27 | 4728 |  | RGA -FINISHING | 7846552 |
| 4730 | 40100.40200.40800.53100.55200.60500.240400.2337600 | CLEANING | 3d | 2027-03-28 | 2027-03-30 | 4729 |  | RGA -FINISHING | 7846562 |
| 4731 | 40100.40200.40800.53100.55200.60500.240500 | **10th FLOOR** | 338d | 2026-04-27 | 2027-03-30 |  | start no earlier than 2026-04-27 | RGA -FINISHING | 7806632 |
| 4732 | 40100.40200.40800.53100.55200.60500.240500.2337700 | FIRE FIGHTING | 10d | 2026-04-27 | 2026-05-06 | 4445FS-5d |  | RGA -FINISHING | 7846572 |
| 4733 | 40100.40200.40800.53100.55200.60500.240500.2337800 | LIFT BLOCK WORK | 3d | 2026-09-22 | 2026-09-24 | 4725SS |  | RGA -FINISHING | 7846582 |
| 4734 | 40100.40200.40800.53100.55200.60500.240500.2337900 | LIFT DADO WORK | 10d | 2027-02-15 | 2027-02-24 | 4726SS |  | RGA -FINISHING | 7846592 |
| 4735 | 40100.40200.40800.53100.55200.60500.240500.2338000 | LOBBY FLOORING WORK | 10d | 2027-02-25 | 2027-03-06 | 4734 |  | RGA -FINISHING | 7846602 |
| 4736 | 40100.40200.40800.53100.55200.60500.240500.2338100 | ELECTRICAL WIRING & SWITCH PLATE FIXING WORK | 6d | 2027-03-07 | 2027-03-12 | 4735 |  | RGA -FINISHING | 7846612 |
| 4737 | 40100.40200.40800.53100.55200.60500.240500.2338200 | False ceiling & 1ST COAT PAINTING | 15d | 2027-03-13 | 2027-03-27 | 4736 |  | RGA -FINISHING | 7846622 |
| 4738 | 40100.40200.40800.53100.55200.60500.240500.2338300 | CLEANING | 3d | 2027-03-28 | 2027-03-30 | 4737 |  | RGA -FINISHING | 7846632 |

Notes:
- 4716: Assumed
- 4724: Assumed
- 4732: Assumed

| ID | WBS | Task | Duration | Start | Finish | Predecessors | Constraint | Calendar | Unique_Task_ID |
| --- | --- | --- | --- | --- | --- | --- | --- | --- | --- |
| 4739 | 40100.40200.40800.53100.55200.60500.240600 | **11th FLOOR** | 329d | 2026-05-06 | 2027-03-30 |  | start no earlier than 2026-05-06 | RGA -FINISHING | 7806642 |
| 4740 | 40100.40200.40800.53100.55200.60500.240600.2338400 | FIRE FIGHTING | 10d | 2026-05-06 | 2026-05-15 | 4458FS-5d |  | RGA -FINISHING | 7846642 |
| 4741 | 40100.40200.40800.53100.55200.60500.240600.2338500 | LIFT BLOCK WORK | 3d | 2026-09-22 | 2026-09-24 | 4733SS |  | RGA -FINISHING | 7846652 |
| 4742 | 40100.40200.40800.53100.55200.60500.240600.2338600 | LIFT DADO WORK | 10d | 2027-02-15 | 2027-02-24 | 4734SS |  | RGA -FINISHING | 7846662 |
| 4743 | 40100.40200.40800.53100.55200.60500.240600.2338700 | LOBBY FLOORING WORK | 10d | 2027-02-25 | 2027-03-06 | 4742 |  | RGA -FINISHING | 7846672 |
| 4744 | 40100.40200.40800.53100.55200.60500.240600.2338800 | ELECTRICAL WIRING & SWITCH PLATE FIXING WORK | 6d | 2027-03-07 | 2027-03-12 | 4743 |  | RGA -FINISHING | 7846682 |
| 4745 | 40100.40200.40800.53100.55200.60500.240600.2338900 | False ceiling & 1ST COAT PAINTING | 15d | 2027-03-13 | 2027-03-27 | 4744 |  | RGA -FINISHING | 7846692 |
| 4746 | 40100.40200.40800.53100.55200.60500.240600.2339000 | CLEANING | 3d | 2027-03-28 | 2027-03-30 | 4745 |  | RGA -FINISHING | 7846702 |
| 4747 | 40100.40200.40800.53100.55200.60500.240700 | **12th FLOOR** | 319d | 2026-05-16 | 2027-03-30 |  | start no earlier than 2026-05-16 | RGA -FINISHING | 7806652 |
| 4748 | 40100.40200.40800.53100.55200.60500.240700.2339100 | FIRE FIGHTING | 10d | 2026-05-16 | 2026-05-25 | 4471FS-5d |  | RGA -FINISHING | 7846712 |
| 4749 | 40100.40200.40800.53100.55200.60500.240700.2339200 | LIFT BLOCK WORK | 3d | 2026-09-22 | 2026-09-24 | 4741SS |  | RGA -FINISHING | 7846722 |
| 4750 | 40100.40200.40800.53100.55200.60500.240700.2339300 | LIFT DADO WORK | 10d | 2027-02-15 | 2027-02-24 | 4742SS |  | RGA -FINISHING | 7846732 |
| 4751 | 40100.40200.40800.53100.55200.60500.240700.2339400 | LOBBY FLOORING WORK | 10d | 2027-02-25 | 2027-03-06 | 4750 |  | RGA -FINISHING | 7846742 |
| 4752 | 40100.40200.40800.53100.55200.60500.240700.2339500 | ELECTRICAL WIRING & SWITCH PLATE FIXING WORK | 6d | 2027-03-07 | 2027-03-12 | 4751 |  | RGA -FINISHING | 7846752 |
| 4753 | 40100.40200.40800.53100.55200.60500.240700.2339600 | False ceiling & 1ST COAT PAINTING | 15d | 2027-03-13 | 2027-03-27 | 4752 |  | RGA -FINISHING | 7846762 |
| 4754 | 40100.40200.40800.53100.55200.60500.240700.2339700 | CLEANING | 3d | 2027-03-28 | 2027-03-30 | 4753 |  | RGA -FINISHING | 7846772 |
| 4755 | 40100.40200.40800.53100.55200.60500.240800 | **13th FLOOR** | 308d | 2026-05-27 | 2027-03-30 |  | start no earlier than 2026-05-27 | RGA -FINISHING | 7806662 |
| 4756 | 40100.40200.40800.53100.55200.60500.240800.2339800 | FIRE FIGHTING | 10d | 2026-05-27 | 2026-06-05 | 4484FS-5d |  | RGA -FINISHING | 7846782 |
| 4757 | 40100.40200.40800.53100.55200.60500.240800.2339900 | LIFT BLOCK WORK | 3d | 2026-09-22 | 2026-09-24 | 4749SS |  | RGA -FINISHING | 7846792 |
| 4758 | 40100.40200.40800.53100.55200.60500.240800.2340000 | LIFT DADO WORK | 10d | 2027-02-15 | 2027-02-24 | 4750SS |  | RGA -FINISHING | 7846802 |
| 4759 | 40100.40200.40800.53100.55200.60500.240800.2340100 | LOBBY FLOORING WORK | 10d | 2027-02-25 | 2027-03-06 | 4758 |  | RGA -FINISHING | 7846812 |
| 4760 | 40100.40200.40800.53100.55200.60500.240800.2340200 | ELECTRICAL WIRING & SWITCH PLATE FIXING WORK | 6d | 2027-03-07 | 2027-03-12 | 4759 |  | RGA -FINISHING | 7846822 |
| 4761 | 40100.40200.40800.53100.55200.60500.240800.2340300 | False ceiling & 1ST COAT PAINTING | 15d | 2027-03-13 | 2027-03-27 | 4760 |  | RGA -FINISHING | 7846832 |
| 4762 | 40100.40200.40800.53100.55200.60500.240800.2340400 | CLEANING | 3d | 2027-03-28 | 2027-03-30 | 4761 |  | RGA -FINISHING | 7846842 |

Notes:
- 4740: Assumed
- 4748: Assumed
- 4756: Assumed

| ID | WBS | Task | Duration | Start | Finish | Predecessors | Constraint | Calendar | Unique_Task_ID |
| --- | --- | --- | --- | --- | --- | --- | --- | --- | --- |
| 4763 | 40100.40200.40800.53100.55200.60500.240900 | **14th FLOOR** | 301d | 2026-06-13 | 2027-04-09 |  | start no earlier than 2026-06-13 | RGA -FINISHING | 7806672 |
| 4764 | 40100.40200.40800.53100.55200.60500.240900.2340500 | FIRE FIGHTING | 10d | 2026-06-13 | 2026-06-22 | 4497FS-5d |  | RGA -FINISHING | 7846852 |
| 4765 | 40100.40200.40800.53100.55200.60500.240900.2340600 | LIFT BLOCK WORK | 3d | 2026-09-25 | 2026-09-27 | 4757 |  | RGA -FINISHING | 7846862 |
| 4766 | 40100.40200.40800.53100.55200.60500.240900.2340700 | LIFT DADO WORK | 10d | 2027-02-25 | 2027-03-06 | 4758 |  | RGA -FINISHING | 7846872 |
| 4767 | 40100.40200.40800.53100.55200.60500.240900.2340800 | LOBBY FLOORING WORK | 10d | 2027-03-07 | 2027-03-16 | 4766 |  | RGA -FINISHING | 7846882 |
| 4768 | 40100.40200.40800.53100.55200.60500.240900.2340900 | ELECTRICAL WIRING & SWITCH PLATE FIXING WORK | 6d | 2027-03-17 | 2027-03-22 | 4767 |  | RGA -FINISHING | 7846892 |
| 4769 | 40100.40200.40800.53100.55200.60500.240900.2341000 | False ceiling & 1ST COAT PAINTING | 15d | 2027-03-23 | 2027-04-06 | 4768 |  | RGA -FINISHING | 7846902 |
| 4770 | 40100.40200.40800.53100.55200.60500.240900.2341100 | CLEANING | 3d | 2027-04-07 | 2027-04-09 | 4769 |  | RGA -FINISHING | 7846912 |
| 4771 | 40100.40200.40800.53100.55200.60500.241000 | **15th FLOOR** | 294d | 2026-06-20 | 2027-04-09 |  | start no earlier than 2026-06-20 | RGA -FINISHING | 7806682 |
| 4772 | 40100.40200.40800.53100.55200.60500.241000.2341200 | FIRE FIGHTING | 10d | 2026-06-20 | 2026-06-29 | 4510FS-5d |  | RGA -FINISHING | 7846922 |
| 4773 | 40100.40200.40800.53100.55200.60500.241000.2341300 | LIFT BLOCK WORK | 3d | 2026-09-25 | 2026-09-27 | 4765SS |  | RGA -FINISHING | 7846932 |
| 4774 | 40100.40200.40800.53100.55200.60500.241000.2341400 | LIFT DADO WORK | 10d | 2027-02-25 | 2027-03-06 | 4766SS |  | RGA -FINISHING | 7846942 |
| 4775 | 40100.40200.40800.53100.55200.60500.241000.2341500 | LOBBY FLOORING WORK | 10d | 2027-03-07 | 2027-03-16 | 4774 |  | RGA -FINISHING | 7846952 |
| 4776 | 40100.40200.40800.53100.55200.60500.241000.2341600 | ELECTRICAL WIRING & SWITCH PLATE FIXING WORK | 6d | 2027-03-17 | 2027-03-22 | 4775 |  | RGA -FINISHING | 7846962 |
| 4777 | 40100.40200.40800.53100.55200.60500.241000.2341700 | False ceiling & 1ST COAT PAINTING | 15d | 2027-03-23 | 2027-04-06 | 4776 |  | RGA -FINISHING | 7846972 |
| 4778 | 40100.40200.40800.53100.55200.60500.241000.2341800 | CLEANING | 3d | 2027-04-07 | 2027-04-09 | 4777 |  | RGA -FINISHING | 7846982 |
| 4779 | 40100.40200.40800.53100.55200.60500.241100 | **16th FLOOR** | 292d | 2026-06-22 | 2027-04-09 |  | start no earlier than 2026-06-22 | RGA -FINISHING | 7806692 |
| 4780 | 40100.40200.40800.53100.55200.60500.241100.2341900 | FIRE FIGHTING | 10d | 2026-06-22 | 2026-07-01 | 4523FS-5d |  | RGA -FINISHING | 7846992 |
| 4781 | 40100.40200.40800.53100.55200.60500.241100.2342000 | LIFT BLOCK WORK | 3d | 2026-09-25 | 2026-09-27 | 4773SS |  | RGA -FINISHING | 7847002 |
| 4782 | 40100.40200.40800.53100.55200.60500.241100.2342100 | LIFT DADO WORK | 10d | 2027-02-25 | 2027-03-06 | 4774SS |  | RGA -FINISHING | 7847012 |
| 4783 | 40100.40200.40800.53100.55200.60500.241100.2342200 | LOBBY FLOORING WORK | 10d | 2027-03-07 | 2027-03-16 | 4782 |  | RGA -FINISHING | 7847022 |
| 4784 | 40100.40200.40800.53100.55200.60500.241100.2342300 | ELECTRICAL WIRING & SWITCH PLATE FIXING WORK | 6d | 2027-03-17 | 2027-03-22 | 4783 |  | RGA -FINISHING | 7847032 |
| 4785 | 40100.40200.40800.53100.55200.60500.241100.2342400 | False ceiling & 1ST COAT PAINTING | 15d | 2027-03-23 | 2027-04-06 | 4784 |  | RGA -FINISHING | 7847042 |
| 4786 | 40100.40200.40800.53100.55200.60500.241100.2342500 | CLEANING | 3d | 2027-04-07 | 2027-04-09 | 4785 |  | RGA -FINISHING | 7847052 |

Notes:
- 4764: Assumed
- 4772: Assumed
- 4780: Assumed

| ID | WBS | Task | Duration | Start | Finish | Predecessors | Constraint | Calendar | Unique_Task_ID |
| --- | --- | --- | --- | --- | --- | --- | --- | --- | --- |
| 4787 | 40100.40200.40800.53100.55200.60500.241200 | **17th FLOOR** | 274d | 2026-07-10 | 2027-04-09 |  | start no earlier than 2026-07-10 | RGA -FINISHING | 7806702 |
| 4788 | 40100.40200.40800.53100.55200.60500.241200.2342600 | FIRE FIGHTING | 10d | 2026-07-10 | 2026-07-19 | 4536FS-5d |  | RGA -FINISHING | 7847062 |
| 4789 | 40100.40200.40800.53100.55200.60500.241200.2342700 | LIFT BLOCK WORK | 3d | 2026-09-25 | 2026-09-27 | 4781SS |  | RGA -FINISHING | 7847072 |
| 4790 | 40100.40200.40800.53100.55200.60500.241200.2342800 | LIFT DADO WORK | 10d | 2027-02-25 | 2027-03-06 | 4782SS |  | RGA -FINISHING | 7847082 |
| 4791 | 40100.40200.40800.53100.55200.60500.241200.2342900 | LOBBY FLOORING WORK | 10d | 2027-03-07 | 2027-03-16 | 4790 |  | RGA -FINISHING | 7847092 |
| 4792 | 40100.40200.40800.53100.55200.60500.241200.2343000 | ELECTRICAL WIRING & SWITCH PLATE FIXING WORK | 6d | 2027-03-17 | 2027-03-22 | 4791 |  | RGA -FINISHING | 7847102 |
| 4793 | 40100.40200.40800.53100.55200.60500.241200.2343100 | False ceiling & 1ST COAT PAINTING | 15d | 2027-03-23 | 2027-04-06 | 4792 |  | RGA -FINISHING | 7847112 |
| 4794 | 40100.40200.40800.53100.55200.60500.241200.2343200 | CLEANING | 3d | 2027-04-07 | 2027-04-09 | 4793 |  | RGA -FINISHING | 7847122 |
| 4795 | 40100.40200.40800.53100.55200.60500.241300 | **18th FLOOR** | 268d | 2026-07-26 | 2027-04-19 |  | start no earlier than 2026-07-26 | RGA -FINISHING | 7806712 |
| 4796 | 40100.40200.40800.53100.55200.60500.241300.2343300 | FIRE FIGHTING | 10d | 2026-07-26 | 2026-08-04 | 4549FS-5d |  | RGA -FINISHING | 7847132 |
| 4797 | 40100.40200.40800.53100.55200.60500.241300.2343400 | LIFT BLOCK WORK | 3d | 2026-09-28 | 2026-09-30 | 4789 |  | RGA -FINISHING | 7847142 |
| 4798 | 40100.40200.40800.53100.55200.60500.241300.2343500 | LIFT DADO WORK | 10d | 2027-03-07 | 2027-03-16 | 4790 |  | RGA -FINISHING | 7847152 |
| 4799 | 40100.40200.40800.53100.55200.60500.241300.2343600 | LOBBY FLOORING WORK | 10d | 2027-03-17 | 2027-03-26 | 4798 |  | RGA -FINISHING | 7847162 |
| 4800 | 40100.40200.40800.53100.55200.60500.241300.2343700 | ELECTRICAL WIRING & SWITCH PLATE FIXING WORK | 6d | 2027-03-27 | 2027-04-01 | 4799 |  | RGA -FINISHING | 7847172 |
| 4801 | 40100.40200.40800.53100.55200.60500.241300.2343800 | False ceiling & 1ST COAT PAINTING | 15d | 2027-04-02 | 2027-04-16 | 4800 |  | RGA -FINISHING | 7847182 |
| 4802 | 40100.40200.40800.53100.55200.60500.241300.2343900 | CLEANING | 3d | 2027-04-17 | 2027-04-19 | 4801 |  | RGA -FINISHING | 7847192 |
| 4803 | 40100.40200.40800.53100.55200.60500.241400 | **19th FLOOR** | 296d | 2026-06-28 | 2027-04-19 |  | start no earlier than 2026-06-28 | RGA -FINISHING | 7806722 |
| 4804 | 40100.40200.40800.53100.55200.60500.241400.2344000 | FIRE FIGHTING | 10d | 2026-06-28 | 2026-07-07 | 4562FS-5d |  | RGA -FINISHING | 7847202 |
| 4805 | 40100.40200.40800.53100.55200.60500.241400.2344100 | LIFT BLOCK WORK | 3d | 2026-09-28 | 2026-09-30 | 4797SS |  | RGA -FINISHING | 7847212 |
| 4806 | 40100.40200.40800.53100.55200.60500.241400.2344200 | LIFT DADO WORK | 10d | 2027-03-07 | 2027-03-16 | 4798SS |  | RGA -FINISHING | 7847222 |
| 4807 | 40100.40200.40800.53100.55200.60500.241400.2344300 | LOBBY FLOORING WORK | 10d | 2027-03-17 | 2027-03-26 | 4806 |  | RGA -FINISHING | 7847232 |
| 4808 | 40100.40200.40800.53100.55200.60500.241400.2344400 | ELECTRICAL WIRING & SWITCH PLATE FIXING WORK | 6d | 2027-03-27 | 2027-04-01 | 4807 |  | RGA -FINISHING | 7847242 |
| 4809 | 40100.40200.40800.53100.55200.60500.241400.2344500 | False ceiling & 1ST COAT PAINTING | 15d | 2027-04-02 | 2027-04-16 | 4808 |  | RGA -FINISHING | 7847252 |
| 4810 | 40100.40200.40800.53100.55200.60500.241400.2344600 | CLEANING | 3d | 2027-04-17 | 2027-04-19 | 4809 |  | RGA -FINISHING | 7388745 |

Notes:
- 4788: Assumed
- 4796: Assumed
- 4804: Assumed

| ID | WBS | Task | Duration | Start | Finish | Predecessors | Constraint | Calendar | Unique_Task_ID |
| --- | --- | --- | --- | --- | --- | --- | --- | --- | --- |
| 4811 | 40100.40200.40800.53100.55200.60500.241500 | **20th FLOOR** | 251d | 2026-08-12 | 2027-04-19 |  | start no earlier than 2026-08-12 | RGA -FINISHING | 7806732 |
| 4812 | 40100.40200.40800.53100.55200.60500.241500.2344700 | FIRE FIGHTING | 10d | 2026-08-12 | 2026-08-21 | 4575FS-5d |  | RGA -FINISHING | 7847262 |
| 4813 | 40100.40200.40800.53100.55200.60500.241500.2344800 | LIFT BLOCK WORK | 3d | 2026-09-28 | 2026-09-30 | 4805SS |  | RGA -FINISHING | 7847272 |
| 4814 | 40100.40200.40800.53100.55200.60500.241500.2344900 | LIFT DADO WORK | 10d | 2027-03-07 | 2027-03-16 | 4806SS |  | RGA -FINISHING | 7847282 |
| 4815 | 40100.40200.40800.53100.55200.60500.241500.2345000 | LOBBY FLOORING WORK | 10d | 2027-03-17 | 2027-03-26 | 4814 |  | RGA -FINISHING | 7847292 |
| 4816 | 40100.40200.40800.53100.55200.60500.241500.2345100 | ELECTRICAL WIRING & SWITCH PLATE FIXING WORK | 6d | 2027-03-27 | 2027-04-01 | 4815 |  | RGA -FINISHING | 7847302 |
| 4817 | 40100.40200.40800.53100.55200.60500.241500.2345200 | False ceiling & 1ST COAT PAINTING | 15d | 2027-04-02 | 2027-04-16 | 4816 |  | RGA -FINISHING | 7847312 |
| 4818 | 40100.40200.40800.53100.55200.60500.241500.2345300 | CLEANING | 3d | 2027-04-17 | 2027-04-19 | 4817 |  | RGA -FINISHING | 7847322 |
| 4819 | 40100.40200.40800.53100.55200.60500.241600 | **21th FLOOR** | 243d | 2026-08-20 | 2027-04-19 |  | start no earlier than 2026-08-20 | RGA -FINISHING | 7806742 |
| 4820 | 40100.40200.40800.53100.55200.60500.241600.2345400 | FIRE FIGHTING | 10d | 2026-08-20 | 2026-08-29 | 4588FS-5d |  | RGA -FINISHING | 7847332 |
| 4821 | 40100.40200.40800.53100.55200.60500.241600.2345500 | LIFT BLOCK WORK | 3d | 2026-09-28 | 2026-09-30 | 4813SS |  | RGA -FINISHING | 7847342 |
| 4822 | 40100.40200.40800.53100.55200.60500.241600.2345600 | LIFT DADO WORK | 10d | 2027-03-07 | 2027-03-16 | 4814SS |  | RGA -FINISHING | 7847352 |
| 4823 | 40100.40200.40800.53100.55200.60500.241600.2345700 | LOBBY FLOORING WORK | 10d | 2027-03-17 | 2027-03-26 | 4822 |  | RGA -FINISHING | 7847362 |
| 4824 | 40100.40200.40800.53100.55200.60500.241600.2345800 | ELECTRICAL WIRING & SWITCH PLATE FIXING WORK | 6d | 2027-03-27 | 2027-04-01 | 4823 |  | RGA -FINISHING | 7847372 |
| 4825 | 40100.40200.40800.53100.55200.60500.241600.2345900 | False ceiling & 1ST COAT PAINTING | 15d | 2027-04-02 | 2027-04-16 | 4824 |  | RGA -FINISHING | 7847382 |
| 4826 | 40100.40200.40800.53100.55200.60500.241600.2346000 | CLEANING | 3d | 2027-04-17 | 2027-04-19 | 4825 |  | RGA -FINISHING | 7847392 |
| 4827 | 40100.40200.40800.53100.55200.60500.241700 | **22th FLOOR** | 244d | 2026-08-29 | 2027-04-29 |  | start no earlier than 2026-08-29 | RGA -FINISHING | 7806752 |
| 4828 | 40100.40200.40800.53100.55200.60500.241700.2346100 | FIRE FIGHTING | 10d | 2026-08-29 | 2026-09-07 | 4601FS-5d |  | RGA -FINISHING | 7847402 |
| 4829 | 40100.40200.40800.53100.55200.60500.241700.2346200 | LIFT BLOCK WORK | 3d | 2026-10-01 | 2026-10-03 | 4821 |  | RGA -FINISHING | 7847412 |
| 4830 | 40100.40200.40800.53100.55200.60500.241700.2346300 | LIFT DADO WORK | 10d | 2027-03-17 | 2027-03-26 | 4822 |  | RGA -FINISHING | 7847422 |
| 4831 | 40100.40200.40800.53100.55200.60500.241700.2346400 | LOBBY FLOORING WORK | 10d | 2027-03-27 | 2027-04-05 | 4830 |  | RGA -FINISHING | 7847432 |
| 4832 | 40100.40200.40800.53100.55200.60500.241700.2346500 | ELECTRICAL WIRING & SWITCH PLATE FIXING WORK | 6d | 2027-04-06 | 2027-04-11 | 4831 |  | RGA -FINISHING | 7847442 |
| 4833 | 40100.40200.40800.53100.55200.60500.241700.2346600 | False ceiling & 1ST COAT PAINTING | 15d | 2027-04-12 | 2027-04-26 | 4832 |  | RGA -FINISHING | 7847452 |
| 4834 | 40100.40200.40800.53100.55200.60500.241700.2346700 | CLEANING | 3d | 2027-04-27 | 2027-04-29 | 4833 |  | RGA -FINISHING | 7847462 |

Notes:
- 4812: Assumed
- 4820: Assumed
- 4828: Assumed

| ID | WBS | Task | Duration | Start | Finish | Predecessors | Constraint | Calendar | Unique_Task_ID |
| --- | --- | --- | --- | --- | --- | --- | --- | --- | --- |
| 4835 | 40100.40200.40800.53100.55200.60500.241800 | **23th FLOOR** | 235d | 2026-09-07 | 2027-04-29 |  | start no earlier than 2026-09-07 | RGA -FINISHING | 7806762 |
| 4836 | 40100.40200.40800.53100.55200.60500.241800.2346800 | FIRE FIGHTING | 10d | 2026-09-07 | 2026-09-16 | 4614FS-5d |  | RGA -FINISHING | 7847472 |
| 4837 | 40100.40200.40800.53100.55200.60500.241800.2346900 | LIFT BLOCK WORK | 3d | 2026-10-01 | 2026-10-03 | 4829SS |  | RGA -FINISHING | 7847482 |
| 4838 | 40100.40200.40800.53100.55200.60500.241800.2347000 | LIFT DADO WORK | 10d | 2027-03-17 | 2027-03-26 | 4830SS |  | RGA -FINISHING | 7847492 |
| 4839 | 40100.40200.40800.53100.55200.60500.241800.2347100 | LOBBY FLOORING WORK | 10d | 2027-03-27 | 2027-04-05 | 4838 |  | RGA -FINISHING | 7847502 |
| 4840 | 40100.40200.40800.53100.55200.60500.241800.2347200 | ELECTRICAL WIRING & SWITCH PLATE FIXING WORK | 6d | 2027-04-06 | 2027-04-11 | 4839 |  | RGA -FINISHING | 7847512 |
| 4841 | 40100.40200.40800.53100.55200.60500.241800.2347300 | False ceiling & 1ST COAT PAINTING | 15d | 2027-04-12 | 2027-04-26 | 4840 |  | RGA -FINISHING | 7847522 |
| 4842 | 40100.40200.40800.53100.55200.60500.241800.2347400 | CLEANING | 3d | 2027-04-27 | 2027-04-29 | 4841 |  | RGA -FINISHING | 7847532 |
| 4843 | 40100.40200.40800.53100.55200.60500.241900 | **24th FLOOR** | 226d | 2026-09-16 | 2027-04-29 |  | start no earlier than 2026-09-16 | RGA -FINISHING | 7806772 |
| 4844 | 40100.40200.40800.53100.55200.60500.241900.2347500 | FIRE FIGHTING | 10d | 2026-09-16 | 2026-09-25 | 4627FS-5d |  | RGA -FINISHING | 7847542 |
| 4845 | 40100.40200.40800.53100.55200.60500.241900.2347600 | LIFT BLOCK WORK | 3d | 2026-10-01 | 2026-10-03 | 4837SS |  | RGA -FINISHING | 7847552 |
| 4846 | 40100.40200.40800.53100.55200.60500.241900.2347700 | LIFT DADO WORK | 10d | 2027-03-17 | 2027-03-26 | 4838SS |  | RGA -FINISHING | 7847562 |
| 4847 | 40100.40200.40800.53100.55200.60500.241900.2347800 | LOBBY FLOORING WORK | 10d | 2027-03-27 | 2027-04-05 | 4846 |  | RGA -FINISHING | 7847572 |
| 4848 | 40100.40200.40800.53100.55200.60500.241900.2347900 | ELECTRICAL WIRING & SWITCH PLATE FIXING WORK | 6d | 2027-04-06 | 2027-04-11 | 4847 |  | RGA -FINISHING | 7847582 |
| 4849 | 40100.40200.40800.53100.55200.60500.241900.2348000 | False ceiling & 1ST COAT PAINTING | 15d | 2027-04-12 | 2027-04-26 | 4848 |  | RGA -FINISHING | 7847592 |
| 4850 | 40100.40200.40800.53100.55200.60500.241900.2348100 | CLEANING | 3d | 2027-04-27 | 2027-04-29 | 4849 |  | RGA -FINISHING | 7847602 |
| 4851 | 40100.40200.40800.53100.55200.60500.242000 | **25th FLOOR** | 217d | 2026-09-25 | 2027-04-29 |  | start no earlier than 2026-09-25 | RGA -FINISHING | 7806782 |
| 4852 | 40100.40200.40800.53100.55200.60500.242000.2348200 | FIRE FIGHTING | 10d | 2026-09-25 | 2026-10-04 | 4640FS-5d |  | RGA -FINISHING | 7847612 |
| 4853 | 40100.40200.40800.53100.55200.60500.242000.2348300 | LIFT BLOCK WORK | 3d | 2026-10-01 | 2026-10-03 | 4845SS |  | RGA -FINISHING | 7847702 |
| 4854 | 40100.40200.40800.53100.55200.60500.242000.2348400 | LIFT DADO WORK | 10d | 2027-03-17 | 2027-03-26 | 4846SS |  | RGA -FINISHING | 7847712 |
| 4855 | 40100.40200.40800.53100.55200.60500.242000.2348500 | LOBBY FLOORING WORK | 10d | 2027-03-27 | 2027-04-05 | 4854 |  | RGA -FINISHING | 7847722 |
| 4856 | 40100.40200.40800.53100.55200.60500.242000.2348600 | ELECTRICAL WIRING & SWITCH PLATE FIXING WORK | 6d | 2027-04-06 | 2027-04-11 | 4855 |  | RGA -FINISHING | 7847732 |
| 4857 | 40100.40200.40800.53100.55200.60500.242000.2348700 | False ceiling & 1ST COAT PAINTING | 15d | 2027-04-12 | 2027-04-26 | 4856 |  | RGA -FINISHING | 7847742 |
| 4858 | 40100.40200.40800.53100.55200.60500.242000.2348800 | CLEANING | 3d | 2027-04-27 | 2027-04-29 | 4857 |  | RGA -FINISHING | 7847752 |

Notes:
- 4836: Assumed
- 4844: Assumed
- 4852: Assumed

| ID | WBS | Task | Duration | Start | Finish | Predecessors | Constraint | Calendar | Unique_Task_ID |
| --- | --- | --- | --- | --- | --- | --- | --- | --- | --- |
| 4859 | 40100.40200.40800.53100.55200.161700 | **Common MEP Works** | 246d | 2026-10-15 | 2027-06-17 |  | start no earlier than 2026-10-15 | RGA -FINISHING | 7805282 |
| 4860 | 40100.40200.40800.53100.55200.161700.489100 | **Lift Works** | 111d | 2026-10-27 | 2027-02-14 |  | start no earlier than 2026-10-27 | RGA -FINISHING | 7811282 |
| 4861 | 40100.40200.40800.53100.55200.161700.489100.2348900 | Lift Shaft Handover | 30d | 2026-10-27 | 2026-11-25 | 4117 |  | RGA -FINISHING | 7389665 |
| 4862 | 40100.40200.40800.53100.55200.161700.489100.2349000 | Lift installation work | 80d | 2026-11-27 | 2027-02-14 | 4861FS+1d |  | RGA -FINISHING | 7389675 |
| 4863 | 40100.40200.40800.53100.55200.161700.489200 | **Plumbing works** | 127d | 2027-01-26 | 2027-06-01 |  | start no earlier than 2027-01-26 | RGA -FINISHING | 7811292 |
| 4864 | 40100.40200.40800.53100.55200.161700.489200.2349100 | Shaft Plumbing | 90d | 2027-01-26 | 2027-04-25 | 4310FF |  | RGA -FINISHING | 7389685 |
| 4865 | 40100.40200.40800.53100.55200.161700.489200.2349200 | Terrace Looping | 90d | 2027-03-04 | 2027-06-01 | 4308FF |  | RGA -FINISHING | 7389695 |
| 4866 | 40100.40200.40800.53100.55200.161700.489300 | **Fire Fighting works** | 75d | 2026-10-15 | 2026-12-28 |  | start no earlier than 2026-10-15 | RGA -FINISHING | 7811302 |
| 4867 | 40100.40200.40800.53100.55200.161700.489300.2349300 | Shaft Downtake works | 60d | 2026-10-15 | 2026-12-13 | 4112FS+22d |  | RGA -FINISHING | 7389705 |
| 4868 | 40100.40200.40800.53100.55200.161700.489300.2349400 | Connection to pump room | 15d | 2026-12-14 | 2026-12-28 | 4867 |  | RGA -FINISHING | 7389715 |
| 4869 | 40100.40200.40800.53100.55200.161700.339700 | **Electrical works** | 200.5d | 2026-11-29 | 2027-06-17 |  | start no earlier than 2026-11-29 | RGA -FINISHING | 7808242 |
| 4870 | 40100.40200.40800.53100.55200.161700.339700.2349500 | Shaft cabling | 45d | 2026-11-29 | 2027-01-13 | 4112FS+67.5d |  | RGA -FINISHING | 7389725 |
| 4871 | 40100.40200.40800.53100.55200.161700.339700.2349600 | Meter room erection | 15d | 2027-05-19 | 2027-06-02 | 3970FS+210d |  | RGA -FINISHING | 7389735 |
| 4872 | 40100.40200.40800.53100.55200.161700.339700.2349700 | Panel erection | 15d | 2027-06-03 | 2027-06-17 | 4871 |  | RGA -FINISHING | 7389745 |
| 4873 | 40100.40200.40800.53100.55200.161700.339700.2349800 | DG Installtion | 10d | 2027-02-18 | 2027-02-27 | 4871SS-90d |  | RGA -FINISHING | 7389755 |
| 4874 | 40100.40200.40800.53100.55200.161700.339700.2349900 | Transformer erection | 15d | 2027-02-18 | 2027-03-04 | 4873SS |  | RGA -FINISHING | 7389765 |
| 4875 | 40100.40200.40800.352300 | **Capex Item Procurment** | 294d | 2026-06-14 | 2027-04-03 |  | start no earlier than 2026-06-14 | RGA -FINISHING | 7808712 |
| 4876 | 40100.40200.40800.352300.551800 | Lift Procurement & delivery | 30d | 2026-06-14 | 2026-07-13 | 4861SS-135d |  | RGA -FINISHING | 7815162 |
| 4877 | 40100.40200.40800.352300.551900 | Panels | 30d | 2027-03-05 | 2027-04-03 | 4872SS-90d |  | RGA -FINISHING | 7815172 |
| 4878 | 40100.40200.40800.352300.552000 | DG procurement | 30d | 2026-11-20 | 2026-12-19 | 4873SS-90d |  | RGA -FINISHING | 7815182 |
| 4879 | 40100.40200.40800.352300.552100 | Transformer | 30d | 2026-11-20 | 2026-12-19 | 4874SS-90d |  | RGA -FINISHING | 7815192 |
| 4880 | 40100.40200.40800.43200 | **Handing Over Activities** | 56d | 2027-08-08 | 2027-10-02 |  | start no earlier than 2027-08-08 | RGA -FINISHING | 7803242 |
| 4881 | 40100.40200.40800.43200.552200 | SOAP WASHING GROUND FLOOR | 1d | 2027-08-08 | 2027-08-08 | 4858FS+100d |  | RGA -FINISHING | 7815202 |
| 4882 | 40100.40200.40800.43200.552300 | SOAP WASHING L1 | 1d | 2027-08-09 | 2027-08-09 | 4881 |  | RGA -FINISHING | 7815212 |
| 4883 | 40100.40200.40800.43200.552400 | SOAP WASHING L2 | 1d | 2027-08-10 | 2027-08-10 | 4882 |  | RGA -FINISHING | 7815222 |
| 4884 | 40100.40200.40800.43200.552500 | SOAP WASHING L3 | 1d | 2027-08-11 | 2027-08-11 | 4883 |  | RGA -FINISHING | 7815232 |
| 4885 | 40100.40200.40800.43200.552600 | SOAP WASHING L4 | 1d | 2027-08-12 | 2027-08-12 | 4884 |  | RGA -FINISHING | 7815242 |
| 4886 | 40100.40200.40800.43200.552700 | SOAP WASHING L5 | 1d | 2027-08-13 | 2027-08-13 | 4885 |  | RGA -FINISHING | 7815252 |
| 4887 | 40100.40200.40800.43200.552800 | SOAP WASHING L6 | 1d | 2027-08-14 | 2027-08-14 | 4886 |  | RGA -FINISHING | 7815262 |
| 4888 | 40100.40200.40800.43200.552900 | SOAP WASHING L7 | 1d | 2027-08-15 | 2027-08-15 | 4887 |  | RGA -FINISHING | 7815272 |
| 4889 | 40100.40200.40800.43200.553000 | SOAP WASHING L8 | 1d | 2027-08-16 | 2027-08-16 | 4888 |  | RGA -FINISHING | 7815282 |
| 4890 | 40100.40200.40800.43200.553100 | SOAP WASHING L9 | 1d | 2027-08-17 | 2027-08-17 | 4889 |  | RGA -FINISHING | 7815292 |
| 4891 | 40100.40200.40800.43200.553200 | SOAP WASHING L10 | 1d | 2027-08-18 | 2027-08-18 | 4890 |  | RGA -FINISHING | 7815302 |
| 4892 | 40100.40200.40800.43200.553300 | SOAP WASHING L11 | 1d | 2027-08-19 | 2027-08-19 | 4891 |  | RGA -FINISHING | 7815312 |
| 4893 | 40100.40200.40800.43200.553400 | SOAP WASHING L12 | 1d | 2027-08-20 | 2027-08-20 | 4892 |  | RGA -FINISHING | 7815322 |
| 4894 | 40100.40200.40800.43200.553500 | SOAP WASHING L13 | 1d | 2027-08-21 | 2027-08-21 | 4893 |  | RGA -FINISHING | 7815332 |
| 4895 | 40100.40200.40800.43200.553600 | SOAP WASHING L14 | 1d | 2027-08-22 | 2027-08-22 | 4894 |  | RGA -FINISHING | 7815342 |
| 4896 | 40100.40200.40800.43200.553700 | SOAP WASHING L15 | 1d | 2027-08-23 | 2027-08-23 | 4895 |  | RGA -FINISHING | 7815352 |
| 4897 | 40100.40200.40800.43200.553800 | SOAP WASHING L16 | 1d | 2027-08-24 | 2027-08-24 | 4896 |  | RGA -FINISHING | 7815362 |
| 4898 | 40100.40200.40800.43200.553900 | SOAP WASHING L17 | 1d | 2027-08-25 | 2027-08-25 | 4897 |  | RGA -FINISHING | 7815372 |
| 4899 | 40100.40200.40800.43200.554000 | SOAP WASHING L18 | 1d | 2027-08-26 | 2027-08-26 | 4898 |  | RGA -FINISHING | 7815382 |
| 4900 | 40100.40200.40800.43200.554100 | SOAP WASHING L19 | 1d | 2027-08-27 | 2027-08-27 | 4899 |  | RGA -FINISHING | 7815392 |
| 4901 | 40100.40200.40800.43200.554200 | SOAP WASHING L20 | 1d | 2027-08-28 | 2027-08-28 | 4900 |  | RGA -FINISHING | 7815402 |
| 4902 | 40100.40200.40800.43200.554300 | SOAP WASHING L21 | 1d | 2027-08-29 | 2027-08-29 | 4901 |  | RGA -FINISHING | 7815412 |
| 4903 | 40100.40200.40800.43200.554400 | SOAP WASHING L22 | 1d | 2027-08-30 | 2027-08-30 | 4902 |  | RGA -FINISHING | 7815422 |
| 4904 | 40100.40200.40800.43200.554500 | SOAP WASHING L23 | 1d | 2027-08-31 | 2027-08-31 | 4903 |  | RGA -FINISHING | 7815432 |
| 4905 | 40100.40200.40800.43200.554600 | SOAP WASHING L24 | 1d | 2027-09-01 | 2027-09-01 | 4904 |  | RGA -FINISHING | 7815442 |
| 4906 | 40100.40200.40800.43200.554700 | SOAP WASHING L25 | 1d | 2027-09-02 | 2027-09-02 | 4905 |  | RGA -FINISHING | 7815452 |
| 4907 | 40100.40200.40800.43200.554800 | CP & SANITARYWARE FIXING Ground | 2d | 2027-08-10 | 2027-08-11 | 4882 |  | RGA -FINISHING | 7815482 |
| 4908 | 40100.40200.40800.43200.554900 | CP & SANITARYWARE FIXING L1 | 2d | 2027-08-12 | 2027-08-13 | 4907 |  | RGA -FINISHING | 7815492 |
| 4909 | 40100.40200.40800.43200.555000 | CP & SANITARYWARE FIXING L2 | 2d | 2027-08-14 | 2027-08-15 | 4908 |  | RGA -FINISHING | 7815502 |
| 4910 | 40100.40200.40800.43200.555100 | CP & SANITARYWARE FIXING L3 | 2d | 2027-08-16 | 2027-08-17 | 4909 |  | RGA -FINISHING | 7815512 |
| 4911 | 40100.40200.40800.43200.555200 | CP & SANITARYWARE FIXING L4 | 2d | 2027-08-18 | 2027-08-19 | 4910 |  | RGA -FINISHING | 7815522 |
| 4912 | 40100.40200.40800.43200.555300 | CP & SANITARYWARE FIXING L5 | 2d | 2027-08-20 | 2027-08-21 | 4911 |  | RGA -FINISHING | 7815532 |
| 4913 | 40100.40200.40800.43200.555400 | CP & SANITARYWARE FIXING L6 | 2d | 2027-08-22 | 2027-08-23 | 4912 |  | RGA -FINISHING | 7815542 |
| 4914 | 40100.40200.40800.43200.555500 | CP & SANITARYWARE FIXING L7 | 2d | 2027-08-24 | 2027-08-25 | 4913 |  | RGA -FINISHING | 7815552 |
| 4915 | 40100.40200.40800.43200.555600 | CP & SANITARYWARE FIXING L8 | 2d | 2027-08-26 | 2027-08-27 | 4914 |  | RGA -FINISHING | 7815562 |
| 4916 | 40100.40200.40800.43200.555700 | CP & SANITARYWARE FIXING L9 | 2d | 2027-08-28 | 2027-08-29 | 4915 |  | RGA -FINISHING | 7815572 |
| 4917 | 40100.40200.40800.43200.555800 | CP & SANITARYWARE FIXING L10 | 2d | 2027-08-30 | 2027-08-31 | 4916 |  | RGA -FINISHING | 7815582 |
| 4918 | 40100.40200.40800.43200.555900 | CP & SANITARYWARE FIXING L11 | 2d | 2027-09-01 | 2027-09-02 | 4917 |  | RGA -FINISHING | 7815592 |
| 4919 | 40100.40200.40800.43200.556000 | CP & SANITARYWARE FIXING L12 | 2d | 2027-09-03 | 2027-09-04 | 4918 |  | RGA -FINISHING | 7815602 |
| 4920 | 40100.40200.40800.43200.556100 | CP & SANITARYWARE FIXING L13 | 2d | 2027-09-05 | 2027-09-06 | 4919 |  | RGA -FINISHING | 7815612 |
| 4921 | 40100.40200.40800.43200.556200 | CP & SANITARYWARE FIXING L14 | 2d | 2027-09-07 | 2027-09-08 | 4920 |  | RGA -FINISHING | 7815622 |
| 4922 | 40100.40200.40800.43200.556300 | CP & SANITARYWARE FIXING L15 | 2d | 2027-09-09 | 2027-09-10 | 4921 |  | RGA -FINISHING | 7815632 |
| 4923 | 40100.40200.40800.43200.556400 | CP & SANITARYWARE FIXING L16 | 2d | 2027-09-11 | 2027-09-12 | 4922 |  | RGA -FINISHING | 7815642 |
| 4924 | 40100.40200.40800.43200.556500 | CP & SANITARYWARE FIXING L17 | 2d | 2027-09-13 | 2027-09-14 | 4923 |  | RGA -FINISHING | 7815652 |
| 4925 | 40100.40200.40800.43200.556600 | CP & SANITARYWARE FIXING L18 | 2d | 2027-09-15 | 2027-09-16 | 4924 |  | RGA -FINISHING | 7815662 |
| 4926 | 40100.40200.40800.43200.556700 | CP & SANITARYWARE FIXING L18 | 2d | 2027-09-17 | 2027-09-18 | 4925 |  | RGA -FINISHING | 7815672 |
| 4927 | 40100.40200.40800.43200.556800 | CP & SANITARYWARE FIXING L19 | 2d | 2027-09-19 | 2027-09-20 | 4926 |  | RGA -FINISHING | 7815682 |
| 4928 | 40100.40200.40800.43200.556900 | CP & SANITARYWARE FIXING L20 | 2d | 2027-09-21 | 2027-09-22 | 4927 |  | RGA -FINISHING | 7815692 |

Notes:
- 4859: Completion in 12 months post last RCC

| ID | WBS | Task | Type | Duration | Start | Finish | Predecessors | Complete | Constraint | Calendar | Unique_Task_ID |
| --- | --- | --- | --- | --- | --- | --- | --- | --- | --- | --- | --- |
| 4929 | 40100.40200.40800.43200.557000 | CP & SANITARYWARE FIXING L21 |  | 2d | 2027-09-23 | 2027-09-24 | 4928 |  |  | RGA -FINISHING | 7815702 |
| 4930 | 40100.40200.40800.43200.557100 | CP & SANITARYWARE FIXING L22 |  | 2d | 2027-09-25 | 2027-09-26 | 4929 |  |  | RGA -FINISHING | 7815712 |
| 4931 | 40100.40200.40800.43200.557200 | CP & SANITARYWARE FIXING L23 |  | 2d | 2027-09-27 | 2027-09-28 | 4930 |  |  | RGA -FINISHING | 7815722 |
| 4932 | 40100.40200.40800.43200.557300 | CP & SANITARYWARE FIXING L24 |  | 2d | 2027-09-29 | 2027-09-30 | 4931 |  |  | RGA -FINISHING | 7815732 |
| 4933 | 40100.40200.40800.43200.557400 | CP & SANITARYWARE FIXING L25 |  | 2d | 2027-10-01 | 2027-10-02 | 4932 |  |  | RGA -FINISHING | 7815742 |
| 4934 | 40100.40200.40800.521300 | MIscellaneous (Aluform Supply) |  | 90d | 2025-09-18 | 2025-12-16 | 4007FS-52d |  |  | RGA -FINISHING | 7812592 |
| 4935 | 40100.40200.40800.521400 | Miscellaneous |  | 270d | 2027-05-01 | 2028-03-10 | 4934FS+429d |  |  | Indian Calendar | 7812602 |
| 4936 | 40100.40200.40900 | **TOWER 2A - (B+G+25 Floors+Terrace)** |  | 1031d | 2025-03-25 | 2028-02-26 |  | 1% | start no earlier than 2025-03-25 | RGA - STRUCTURE | 7803132 |
| 4937 | 40100.40200.40900.2747000 | Start date for Tower 2A | milestone | 0d | 2025-04-15 | 2025-04-15 | 5913SS+7d |  |  | RGA - STRUCTURE | 7847632 |
| 4938 | 40100.40200.40900.473600 | **Earth work** |  | 140d | 2025-03-25 | 2025-08-12 |  | 50% | start no earlier than 2025-03-25 | RGA - STRUCTURE | 7811782 |
| 4939 | 40100.40200.40900.473600.518000 | EXCAVATION - Tower Area |  | 101d | 2025-03-25 | 2025-07-04 | 4937SS-88d | 87% |  | RGA - STRUCTURE | 7815772 |
| 4940 | 40100.40200.40900.473600.557500 | Excavation - Non Tower Area |  | 75d | 2025-04-28 | 2025-08-12 | 4939 |  |  | 5 day week, Bank Hols Xmas | 7433505 |
| 4941 | 40100.40200.40900.70800 | **Substructure works (Works up to plinth)** |  | 466d | 2025-07-05 | 2026-11-04 |  |  | start no earlier than 2025-07-05 | RGA - STRUCTURE | 7803942 |
| 4942 | 40100.40200.40900.70800.164400 | **Civil works (Shell & Core basement)** |  | 286d | 2025-07-05 | 2026-04-20 |  |  | start no earlier than 2025-07-05 | RGA - STRUCTURE | 7805352 |
| 4943 | 40100.40200.40900.70800.164400.174000 | **1st Basement** |  | 286d | 2025-07-05 | 2026-04-20 |  |  | start no earlier than 2025-07-05 | RGA - STRUCTURE | 7805412 |
| 4944 | 40100.40200.40900.70800.164400.174000.339600 | **RCC Works - Tower area** |  | 57d | 2025-07-05 | 2025-08-31 |  |  | start no earlier than 2025-07-05 | RGA - STRUCTURE | 7808232 |
| 4945 | 40100.40200.40900.70800.164400.174000.339600.404000 | **Foundation** |  | 26d | 2025-07-05 | 2025-07-30 |  |  | start no earlier than 2025-07-05 | RGA - STRUCTURE | 7810712 |
| 4946 | 40100.40200.40900.70800.164400.174000.339600.404000.2700400 | Pocket Excavation |  | 1d | 2025-07-05 | 2025-07-05 | 4939FS+67d |  |  | RGA - STRUCTURE | 7859212 |
| 4947 | 40100.40200.40900.70800.164400.174000.339600.404000.2700500 | Footing PCC (Construction start for Tower 2A) |  | 4d | 2025-07-06 | 2025-07-09 | 4946 |  |  | RGA - STRUCTURE | 7859222 |
| 4948 | 40100.40200.40900.70800.164400.174000.339600.404000.2700600 | Footing / Raft works |  | 21d | 2025-07-10 | 2025-07-30 | 4947 |  |  | RGA - STRUCTURE | 7859232 |
| 4949 | 40100.40200.40900.70800.164400.174000.339600.475200 | **GF Slab** |  | 31d | 2025-07-31 | 2025-08-31 |  |  | start no earlier than 2025-07-31 | RGA - STRUCTURE | 7811422 |
| 4950 | 40100.40200.40900.70800.164400.174000.339600.475200.2700700 | Columns in Upper basement |  | 14d | 2025-07-31 | 2025-08-13 | 4948 |  |  | RGA - STRUCTURE | 7859242 |
| 4951 | 40100.40200.40900.70800.164400.174000.339600.475200.2700800 | Upper Basement slab |  | 17d | 2025-08-14 | 2025-08-31 | 4950 |  |  | RGA - STRUCTURE | 7859252 |
| 4952 | 40100.40200.40900.70800.164400.174000.968100 | Backfilling |  | 10d | 2026-04-11 | 2026-04-20 | 7889 |  |  | RGA - STRUCTURE | 7832022 |

Notes:
- 4938: 2 Months for Excavation

| ID | WBS | Task | Duration | Start | Finish | Predecessors | Constraint | Calendar | Unique_Task_ID |
| --- | --- | --- | --- | --- | --- | --- | --- | --- | --- |
| 4953 | 40100.40200.40900.70800.509600 | **Basement Block work and Plaster finishing** | 30d | 2026-05-09 | 2026-06-07 |  | start no earlier than 2026-05-09 | RGA - STRUCTURE | 7812202 |
| 4954 | 40100.40200.40900.70800.509600.830400 | Upper basement | 30d | 2026-05-09 | 2026-06-07 | 5059 |  | RGA - STRUCTURE | 7820202 |
| 4955 | 40100.40200.40900.70800.164500 | **Services** | 150d | 2026-06-08 | 2026-11-04 |  | start no earlier than 2026-06-08 | RGA -FINISHING | 7805342 |
| 4956 | 40100.40200.40900.70800.164500.377800 | **Plumbing** | 30d | 2026-06-08 | 2026-07-07 |  | start no earlier than 2026-06-08 | RGA -FINISHING | 7809192 |
| 4957 | 40100.40200.40900.70800.164500.377800.506400 | **Upper Basement Plumbing** | 30d | 2026-06-08 | 2026-07-07 |  | start no earlier than 2026-06-08 | RGA -FINISHING | 7811962 |
| 4958 | 40100.40200.40900.70800.164500.377800.506400.2350000 | Upper Basement Plumbing | 30d | 2026-06-08 | 2026-07-07 | 4954 |  | RGA -FINISHING | 7848102 |
| 4959 | 40100.40200.40900.70800.164500.377900 | **Fire fighting** | 30d | 2026-07-08 | 2026-08-06 |  | start no earlier than 2026-07-08 | RGA -FINISHING | 7809202 |
| 4960 | 40100.40200.40900.70800.164500.377900.506500 | **Upper Basement Fire fighting** | 30d | 2026-07-08 | 2026-08-06 |  | start no earlier than 2026-07-08 | RGA -FINISHING | 7811952 |
| 4961 | 40100.40200.40900.70800.164500.377900.506500.2350100 | Upper Basement Fire fighting | 30d | 2026-07-08 | 2026-08-06 | 4958 |  | RGA -FINISHING | 7848112 |
| 4962 | 40100.40200.40900.70800.164500.378000 | **Ventilation** | 30d | 2026-08-07 | 2026-09-05 |  | start no earlier than 2026-08-07 | RGA -FINISHING | 7809212 |
| 4963 | 40100.40200.40900.70800.164500.378000.506600 | **Upper Basement ventilation** | 30d | 2026-08-07 | 2026-09-05 |  | start no earlier than 2026-08-07 | RGA -FINISHING | 7811942 |
| 4964 | 40100.40200.40900.70800.164500.378000.506600.2350200 | Upper Basement ventilation | 30d | 2026-08-07 | 2026-09-05 | 4961 |  | RGA -FINISHING | 7848122 |
| 4965 | 40100.40200.40900.70800.164500.378100 | **Electrification** | 30d | 2026-09-06 | 2026-10-05 |  | start no earlier than 2026-09-06 | RGA -FINISHING | 7809222 |
| 4966 | 40100.40200.40900.70800.164500.378100.506700 | **Upper Basement Electrification** | 30d | 2026-09-06 | 2026-10-05 |  | start no earlier than 2026-09-06 | RGA -FINISHING | 7811932 |
| 4967 | 40100.40200.40900.70800.164500.378100.506700.2350300 | Upper Basement Electrification | 30d | 2026-09-06 | 2026-10-05 | 4964 |  | RGA -FINISHING | 7848132 |
| 4968 | 40100.40200.40900.70800.164500.378200 | **Security installations** | 30d | 2026-10-06 | 2026-11-04 |  | start no earlier than 2026-10-06 | RGA -FINISHING | 7809232 |
| 4969 | 40100.40200.40900.70800.164500.378200.506800 | **Upper Basement Security installations** | 30d | 2026-10-06 | 2026-11-04 |  | start no earlier than 2026-10-06 | RGA -FINISHING | 7811922 |
| 4970 | 40100.40200.40900.70800.164500.378200.506800.2350400 | Upper Basement Security installations | 30d | 2026-10-06 | 2026-11-04 | 4967 |  | RGA -FINISHING | 7848142 |
| 4971 | 40100.40200.40900.70800.363800 | **Finishing work** | 60d | 2026-06-08 | 2026-08-06 |  | start no earlier than 2026-06-08 | RGA -FINISHING | 7808872 |
| 4972 | 40100.40200.40900.70800.363800.516900 | **Basement Flooring** | 30d | 2026-06-08 | 2026-07-07 |  | start no earlier than 2026-06-08 | RGA -FINISHING | 7812442 |
| 4973 | 40100.40200.40900.70800.363800.516900.968200 | 1st Basement ventilation | 30d | 2026-06-08 | 2026-07-07 | 4954 |  | RGA -FINISHING | 7832032 |
| 4974 | 40100.40200.40900.70800.363800.516800 | **Basement Painting (1st Coat)** | 30d | 2026-07-08 | 2026-08-06 |  | start no earlier than 2026-07-08 | RGA -FINISHING | 7812452 |
| 4975 | 40100.40200.40900.70800.363800.516800.968300 | 2nd Basement ventilation | 30d | 2026-07-08 | 2026-08-06 | 4973 |  | RGA -FINISHING | 7832042 |
| 4976 | 40100.40200.40900.70800.509500 | **Water Proofing work** | 45d | 2026-06-08 | 2026-07-22 |  | start no earlier than 2026-06-08 | RGA -FINISHING | 7812212 |
| 4977 | 40100.40200.40900.70800.509500.830500 | GF/Stilt Floor | 45d | 2026-06-08 | 2026-07-22 | 4954 |  | RGA -FINISHING | 7820212 |

| ID | WBS | Task | Duration | Start | Finish | Predecessors | Constraint | Calendar | Unique_Task_ID |
| --- | --- | --- | --- | --- | --- | --- | --- | --- | --- |
| 4978 | 40100.40200.40900.52500 | **Superstructure works** | 785d | 2025-04-01 | 2027-07-02 |  | start no earlier than 2025-04-01 | RGA - STRUCTURE | 7803272 |
| 4979 | 40100.40200.40900.52500.55600 | **Civil works** | 785d | 2025-04-01 | 2027-07-02 |  | start no earlier than 2025-04-01 | RGA - STRUCTURE | 7803292 |
| 4980 | 40100.40200.40900.52500.55600.62100 | **Superstructure RCC Work** | 332d | 2025-09-15 | 2026-09-01 |  | start no earlier than 2025-09-15 | RGA - STRUCTURE | 7803552 |
| 4981 | 40100.40200.40900.52500.55600.62100.62800 | **Slab RCC works** | 284d | 2025-09-15 | 2026-07-13 |  | start no earlier than 2025-09-15 | RGA - STRUCTURE | 7803642 |
| 4982 | 40100.40200.40900.52500.55600.62100.62800.475000 | **1st Floor slab (Height More)** | 25d | 2025-09-15 | 2025-10-10 |  | start no earlier than 2025-09-15 | RGA - STRUCTURE | 7811432 |
| 4983 | 40100.40200.40900.52500.55600.62100.62800.475000.2700900 | Columns | 10d | 2025-09-15 | 2025-09-24 | 4951FS+14d |  | RGA - STRUCTURE | 7859262 |
| 4984 | 40100.40200.40900.52500.55600.62100.62800.475000.2701000 | Slab Work | 15d | 2025-09-25 | 2025-10-10 | 4983 |  | RGA - STRUCTURE | 7859272 |
| 4985 | 40100.40200.40900.52500.55600.62100.62800.474900 | **2nd Floor slab (Combo Height More)** | 25d | 2025-10-11 | 2025-11-05 |  | start no earlier than 2025-10-11 | RGA - STRUCTURE | 7811442 |
| 4986 | 40100.40200.40900.52500.55600.62100.62800.474900.2701100 | Columns | 10d | 2025-10-11 | 2025-10-20 | 4984 |  | RGA - STRUCTURE | 7859282 |
| 4987 | 40100.40200.40900.52500.55600.62100.62800.474900.2701200 | Slab Work | 15d | 2025-10-21 | 2025-11-05 | 4986 |  | RGA - STRUCTURE | 7859292 |
| 4988 | 40100.40200.40900.52500.55600.62100.62800.404100 | **3rd Floor slab (1st Set Up)** | 21d | 2025-11-06 | 2025-11-26 |  | start no earlier than 2025-11-06 | RGA - STRUCTURE | 7810722 |
| 4989 | 40100.40200.40900.52500.55600.62100.62800.404100.2701300 | Wall Reinforcement & Form work | 10d | 2025-11-06 | 2025-11-15 | 4987 |  | RGA - STRUCTURE | 7859302 |
| 4990 | 40100.40200.40900.52500.55600.62100.62800.404100.2701400 | Slab shuttering & Rebar. | 10d | 2025-11-16 | 2025-11-25 | 4989 |  | RGA - STRUCTURE | 7859312 |
| 4991 | 40100.40200.40900.52500.55600.62100.62800.404100.2701500 | Concreting | 1d | 2025-11-26 | 2025-11-26 | 4990 |  | RGA - STRUCTURE | 7859322 |
| 4992 | 40100.40200.40900.52500.55600.62100.62800.404200 | **4th Floor slab (2nd Set Up)** | 15d | 2025-11-27 | 2025-12-11 |  | start no earlier than 2025-11-27 | RGA - STRUCTURE | 7810732 |
| 4993 | 40100.40200.40900.52500.55600.62100.62800.404200.2701600 | Wall Reinforcement & Form work | 7d | 2025-11-27 | 2025-12-03 | 4991 |  | RGA - STRUCTURE | 7859332 |
| 4994 | 40100.40200.40900.52500.55600.62100.62800.404200.2701700 | Slab shuttering & Rebar. | 7d | 2025-12-04 | 2025-12-10 | 4993 |  | RGA - STRUCTURE | 7859342 |
| 4995 | 40100.40200.40900.52500.55600.62100.62800.404200.2701800 | Concreting | 1d | 2025-12-11 | 2025-12-11 | 4994 |  | RGA - STRUCTURE | 7859352 |
| 4996 | 40100.40200.40900.52500.55600.62100.62800.404300 | **5th Floor slab** | 9d | 2025-12-12 | 2025-12-20 |  | start no earlier than 2025-12-12 | RGA - STRUCTURE | 7810742 |
| 4997 | 40100.40200.40900.52500.55600.62100.62800.404300.2701900 | Wall Reinforcement & Form work | 4d | 2025-12-12 | 2025-12-15 | 4995 |  | RGA - STRUCTURE | 7859362 |
| 4998 | 40100.40200.40900.52500.55600.62100.62800.404300.2702000 | Slab shuttering & Rebar. | 4d | 2025-12-16 | 2025-12-19 | 4997 |  | RGA - STRUCTURE | 7859372 |
| 4999 | 40100.40200.40900.52500.55600.62100.62800.404300.2702100 | Concreting | 1d | 2025-12-20 | 2025-12-20 | 4998 |  | RGA - STRUCTURE | 7859382 |
| 5000 | 40100.40200.40900.52500.55600.62100.62800.404400 | **6th Floor slab** | 9d | 2025-12-21 | 2025-12-29 |  | start no earlier than 2025-12-21 | RGA - STRUCTURE | 7810752 |
| 5001 | 40100.40200.40900.52500.55600.62100.62800.404400.2702200 | Wall Reinforcement & Form work | 4d | 2025-12-21 | 2025-12-24 | 4999 |  | RGA - STRUCTURE | 7859392 |
| 5002 | 40100.40200.40900.52500.55600.62100.62800.404400.2702300 | Slab shuttering & Rebar. | 4d | 2025-12-25 | 2025-12-28 | 5001 |  | RGA - STRUCTURE | 7859402 |
| 5003 | 40100.40200.40900.52500.55600.62100.62800.404400.2702400 | Concreting | 1d | 2025-12-29 | 2025-12-29 | 5002 |  | RGA - STRUCTURE | 7859412 |

Notes:
- 4985: AVg Slab Cycle of 21 days
- 4988: AVg Slab Cycle of 21 days
- 4992: AVg Slab Cycle of 21 days

| ID | WBS | Task | Duration | Start | Finish | Predecessors | Constraint | Calendar | Unique_Task_ID |
| --- | --- | --- | --- | --- | --- | --- | --- | --- | --- |
| 5004 | 40100.40200.40900.52500.55600.62100.62800.404500 | **7th Floor slab** | 9d | 2025-12-30 | 2026-01-07 |  | start no earlier than 2025-12-30 | RGA - STRUCTURE | 7810762 |
| 5005 | 40100.40200.40900.52500.55600.62100.62800.404500.2702500 | Wall Reinforcement & Form work | 4d | 2025-12-30 | 2026-01-02 | 5003 |  | RGA - STRUCTURE | 7859422 |
| 5006 | 40100.40200.40900.52500.55600.62100.62800.404500.2702600 | Slab shuttering & Rebar. | 4d | 2026-01-03 | 2026-01-06 | 5005 |  | RGA - STRUCTURE | 7859432 |
| 5007 | 40100.40200.40900.52500.55600.62100.62800.404500.2702700 | Concreting | 1d | 2026-01-07 | 2026-01-07 | 5006 |  | RGA - STRUCTURE | 7859442 |
| 5008 | 40100.40200.40900.52500.55600.62100.62800.404600 | **8th Floor slab** | 9d | 2026-01-08 | 2026-01-16 |  | start no earlier than 2026-01-08 | RGA - STRUCTURE | 7810772 |
| 5009 | 40100.40200.40900.52500.55600.62100.62800.404600.2702800 | Wall Reinforcement & Form work | 4d | 2026-01-08 | 2026-01-11 | 5007 |  | RGA - STRUCTURE | 7859452 |
| 5010 | 40100.40200.40900.52500.55600.62100.62800.404600.2702900 | Slab shuttering & Rebar. | 4d | 2026-01-12 | 2026-01-15 | 5009 |  | RGA - STRUCTURE | 7859462 |
| 5011 | 40100.40200.40900.52500.55600.62100.62800.404600.2703000 | Concreting | 1d | 2026-01-16 | 2026-01-16 | 5010 |  | RGA - STRUCTURE | 7859472 |
| 5012 | 40100.40200.40900.52500.55600.62100.62800.404700 | **9th Floor slab** | 9d | 2026-01-17 | 2026-01-25 |  | start no earlier than 2026-01-17 | RGA - STRUCTURE | 7810782 |
| 5013 | 40100.40200.40900.52500.55600.62100.62800.404700.2703100 | Wall Reinforcement & Form work | 4d | 2026-01-17 | 2026-01-20 | 5011 |  | RGA - STRUCTURE | 7859482 |
| 5014 | 40100.40200.40900.52500.55600.62100.62800.404700.2703200 | Slab shuttering & Rebar. | 4d | 2026-01-21 | 2026-01-24 | 5013 |  | RGA - STRUCTURE | 7859492 |
| 5015 | 40100.40200.40900.52500.55600.62100.62800.404700.2703300 | Concreting | 1d | 2026-01-25 | 2026-01-25 | 5014 |  | RGA - STRUCTURE | 7859502 |
| 5016 | 40100.40200.40900.52500.55600.62100.62800.404800 | **10th Floor slab** | 9d | 2026-01-27 | 2026-02-04 |  | start no earlier than 2026-01-27 | RGA - STRUCTURE | 7810792 |
| 5017 | 40100.40200.40900.52500.55600.62100.62800.404800.2703400 | Wall Reinforcement & Form work | 4d | 2026-01-27 | 2026-01-30 | 5015 |  | RGA - STRUCTURE | 7859512 |
| 5018 | 40100.40200.40900.52500.55600.62100.62800.404800.2703500 | Slab shuttering & Rebar. | 4d | 2026-01-31 | 2026-02-03 | 5017 |  | RGA - STRUCTURE | 7859522 |
| 5019 | 40100.40200.40900.52500.55600.62100.62800.404800.2703600 | Concreting | 1d | 2026-02-04 | 2026-02-04 | 5018 |  | RGA - STRUCTURE | 7859532 |
| 5020 | 40100.40200.40900.52500.55600.62100.62800.404900 | **11th Floor slab** | 9d | 2026-02-05 | 2026-02-13 |  | start no earlier than 2026-02-05 | RGA - STRUCTURE | 7810802 |
| 5021 | 40100.40200.40900.52500.55600.62100.62800.404900.2703700 | Wall Reinforcement & Form work | 4d | 2026-02-05 | 2026-02-08 | 5019 |  | RGA - STRUCTURE | 7859542 |
| 5022 | 40100.40200.40900.52500.55600.62100.62800.404900.2703800 | Slab shuttering & Rebar. | 4d | 2026-02-09 | 2026-02-12 | 5021 |  | RGA - STRUCTURE | 7859552 |
| 5023 | 40100.40200.40900.52500.55600.62100.62800.404900.2703900 | Concreting | 1d | 2026-02-13 | 2026-02-13 | 5022 |  | RGA - STRUCTURE | 7859562 |
| 5024 | 40100.40200.40900.52500.55600.62100.62800.405000 | **12th Floor slab** | 9d | 2026-02-14 | 2026-02-22 |  | start no earlier than 2026-02-14 | RGA - STRUCTURE | 7810812 |
| 5025 | 40100.40200.40900.52500.55600.62100.62800.405000.2704000 | Wall Reinforcement & Form work | 4d | 2026-02-14 | 2026-02-17 | 5023 |  | RGA - STRUCTURE | 7859572 |
| 5026 | 40100.40200.40900.52500.55600.62100.62800.405000.2704100 | Slab shuttering & Rebar. | 4d | 2026-02-18 | 2026-02-21 | 5025 |  | RGA - STRUCTURE | 7859582 |
| 5027 | 40100.40200.40900.52500.55600.62100.62800.405000.2704200 | Concreting | 1d | 2026-02-22 | 2026-02-22 | 5026 |  | RGA - STRUCTURE | 7859592 |

Notes:
- 5024: AVg Slab Cycle of 21 days

| ID | WBS | Task | Duration | Start | Finish | Predecessors | Constraint | Calendar | Unique_Task_ID |
| --- | --- | --- | --- | --- | --- | --- | --- | --- | --- |
| 5028 | 40100.40200.40900.52500.55600.62100.62800.405100 | **13th Floor slab** | 9d | 2026-02-23 | 2026-03-03 |  | start no earlier than 2026-02-23 | RGA - STRUCTURE | 7810822 |
| 5029 | 40100.40200.40900.52500.55600.62100.62800.405100.2704300 | Wall Reinforcement & Form work | 4d | 2026-02-23 | 2026-02-26 | 5027 |  | RGA - STRUCTURE | 7859602 |
| 5030 | 40100.40200.40900.52500.55600.62100.62800.405100.2704400 | Slab shuttering & Rebar. | 4d | 2026-02-27 | 2026-03-02 | 5029 |  | RGA - STRUCTURE | 7859612 |
| 5031 | 40100.40200.40900.52500.55600.62100.62800.405100.2704500 | Concreting | 1d | 2026-03-03 | 2026-03-03 | 5030 |  | RGA - STRUCTURE | 7859622 |
| 5032 | 40100.40200.40900.52500.55600.62100.62800.405200 | **14th Floor slab** | 9d | 2026-03-04 | 2026-03-12 |  | start no earlier than 2026-03-04 | RGA - STRUCTURE | 7810832 |
| 5033 | 40100.40200.40900.52500.55600.62100.62800.405200.2704600 | Wall Reinforcement & Form work | 4d | 2026-03-04 | 2026-03-07 | 5031 |  | RGA - STRUCTURE | 7859632 |
| 5034 | 40100.40200.40900.52500.55600.62100.62800.405200.2704700 | Slab shuttering & Rebar. | 4d | 2026-03-08 | 2026-03-11 | 5033 |  | RGA - STRUCTURE | 7859642 |
| 5035 | 40100.40200.40900.52500.55600.62100.62800.405200.2704800 | Concreting | 1d | 2026-03-12 | 2026-03-12 | 5034 |  | RGA - STRUCTURE | 7859652 |
| 5036 | 40100.40200.40900.52500.55600.62100.62800.405300 | **15th Floor slab** | 9d | 2026-03-13 | 2026-03-21 |  | start no earlier than 2026-03-13 | RGA - STRUCTURE | 7810842 |
| 5037 | 40100.40200.40900.52500.55600.62100.62800.405300.2704900 | Wall Reinforcement & Form work | 4d | 2026-03-13 | 2026-03-16 | 5035 |  | RGA - STRUCTURE | 7859662 |
| 5038 | 40100.40200.40900.52500.55600.62100.62800.405300.2705000 | Slab shuttering & Rebar. | 4d | 2026-03-17 | 2026-03-20 | 5037 |  | RGA - STRUCTURE | 7859672 |
| 5039 | 40100.40200.40900.52500.55600.62100.62800.405300.2705100 | Concreting | 1d | 2026-03-21 | 2026-03-21 | 5038 |  | RGA - STRUCTURE | 7859682 |
| 5040 | 40100.40200.40900.52500.55600.62100.62800.405400 | **16th Floor slab** | 9d | 2026-03-22 | 2026-03-30 |  | start no earlier than 2026-03-22 | RGA - STRUCTURE | 7810852 |
| 5041 | 40100.40200.40900.52500.55600.62100.62800.405400.2705200 | Wall Reinforcement & Form work | 4d | 2026-03-22 | 2026-03-25 | 5039 |  | RGA - STRUCTURE | 7859692 |
| 5042 | 40100.40200.40900.52500.55600.62100.62800.405400.2705300 | Slab shuttering & Rebar. | 4d | 2026-03-26 | 2026-03-29 | 5041 |  | RGA - STRUCTURE | 7859702 |
| 5043 | 40100.40200.40900.52500.55600.62100.62800.405400.2705400 | Concreting | 1d | 2026-03-30 | 2026-03-30 | 5042 |  | RGA - STRUCTURE | 7859712 |
| 5044 | 40100.40200.40900.52500.55600.62100.62800.405500 | **17th Floor slab** | 9d | 2026-03-31 | 2026-04-08 |  | start no earlier than 2026-03-31 | RGA - STRUCTURE | 7810862 |
| 5045 | 40100.40200.40900.52500.55600.62100.62800.405500.2705500 | Wall Reinforcement & Form work | 4d | 2026-03-31 | 2026-04-03 | 5043 |  | RGA - STRUCTURE | 7859722 |
| 5046 | 40100.40200.40900.52500.55600.62100.62800.405500.2705600 | Slab shuttering & Rebar. | 4d | 2026-04-04 | 2026-04-07 | 5045 |  | RGA - STRUCTURE | 7859732 |
| 5047 | 40100.40200.40900.52500.55600.62100.62800.405500.2705700 | Concreting | 1d | 2026-04-08 | 2026-04-08 | 5046 |  | RGA - STRUCTURE | 7859742 |
| 5048 | 40100.40200.40900.52500.55600.62100.62800.405600 | **18th Floor slab** | 9d | 2026-04-09 | 2026-04-17 |  | start no earlier than 2026-04-09 | RGA - STRUCTURE | 7810872 |
| 5049 | 40100.40200.40900.52500.55600.62100.62800.405600.2705800 | Wall Reinforcement & Form work | 4d | 2026-04-09 | 2026-04-12 | 5047 |  | RGA - STRUCTURE | 7859752 |
| 5050 | 40100.40200.40900.52500.55600.62100.62800.405600.2705900 | Slab shuttering & Rebar. | 4d | 2026-04-13 | 2026-04-16 | 5049 |  | RGA - STRUCTURE | 7859762 |
| 5051 | 40100.40200.40900.52500.55600.62100.62800.405600.2706000 | Concreting | 1d | 2026-04-17 | 2026-04-17 | 5050 |  | RGA - STRUCTURE | 7859772 |

Notes:
- 5028: AVg Slab Cycle of 21 days
- 5032: AVg Slab Cycle of 21 days

| ID | WBS | Task | Duration | Start | Finish | Predecessors | Constraint | Calendar | Unique_Task_ID |
| --- | --- | --- | --- | --- | --- | --- | --- | --- | --- |
| 5052 | 40100.40200.40900.52500.55600.62100.62800.405700 | **19th Floor slab** | 8d | 2026-04-18 | 2026-04-25 |  | start no earlier than 2026-04-18 | RGA - STRUCTURE | 7810882 |
| 5053 | 40100.40200.40900.52500.55600.62100.62800.405700.2706100 | Wall Reinforcement & Form work | 4d | 2026-04-18 | 2026-04-21 | 5051 |  | RGA - STRUCTURE | 7859782 |
| 5054 | 40100.40200.40900.52500.55600.62100.62800.405700.2706200 | Slab shuttering & Rebar. | 3d | 2026-04-22 | 2026-04-24 | 5053 |  | RGA - STRUCTURE | 7859792 |
| 5055 | 40100.40200.40900.52500.55600.62100.62800.405700.2706300 | Concreting | 1d | 2026-04-25 | 2026-04-25 | 5054 |  | RGA - STRUCTURE | 7859802 |
| 5056 | 40100.40200.40900.52500.55600.62100.62800.405800 | **20th Floor slab (Refuge floor)** | 12d | 2026-04-26 | 2026-05-08 |  | start no earlier than 2026-04-26 | RGA - STRUCTURE | 7810892 |
| 5057 | 40100.40200.40900.52500.55600.62100.62800.405800.2706400 | Wall Reinforcement & Form work | 6d | 2026-04-26 | 2026-05-02 | 5055 |  | RGA - STRUCTURE | 7859812 |
| 5058 | 40100.40200.40900.52500.55600.62100.62800.405800.2706500 | Slab shuttering & Rebar. | 5d | 2026-05-03 | 2026-05-07 | 5057 |  | RGA - STRUCTURE | 7859822 |
| 5059 | 40100.40200.40900.52500.55600.62100.62800.405800.2706600 | Concreting | 1d | 2026-05-08 | 2026-05-08 | 5058 |  | RGA - STRUCTURE | 7859832 |
| 5060 | 40100.40200.40900.52500.55600.62100.62800.405900 | **21th Floor slab** | 8d | 2026-05-09 | 2026-05-16 |  | start no earlier than 2026-05-09 | RGA - STRUCTURE | 7810902 |
| 5061 | 40100.40200.40900.52500.55600.62100.62800.405900.2706700 | Wall Reinforcement & Form work | 4d | 2026-05-09 | 2026-05-12 | 5059 |  | RGA - STRUCTURE | 7859842 |
| 5062 | 40100.40200.40900.52500.55600.62100.62800.405900.2706800 | Slab shuttering & Rebar. | 3d | 2026-05-13 | 2026-05-15 | 5061 |  | RGA - STRUCTURE | 7859852 |
| 5063 | 40100.40200.40900.52500.55600.62100.62800.405900.2706900 | Concreting | 1d | 2026-05-16 | 2026-05-16 | 5062 |  | RGA - STRUCTURE | 7859862 |
| 5064 | 40100.40200.40900.52500.55600.62100.62800.406000 | **22th Floor slab** | 8d | 2026-05-17 | 2026-05-24 |  | start no earlier than 2026-05-17 | RGA - STRUCTURE | 7810912 |
| 5065 | 40100.40200.40900.52500.55600.62100.62800.406000.2707000 | Wall Reinforcement & Form work | 4d | 2026-05-17 | 2026-05-20 | 5063 |  | RGA - STRUCTURE | 7859872 |
| 5066 | 40100.40200.40900.52500.55600.62100.62800.406000.2707100 | Slab shuttering & Rebar. | 3d | 2026-05-21 | 2026-05-23 | 5065 |  | RGA - STRUCTURE | 7859882 |
| 5067 | 40100.40200.40900.52500.55600.62100.62800.406000.2707200 | Concreting | 1d | 2026-05-24 | 2026-05-24 | 5066 |  | RGA - STRUCTURE | 7859892 |
| 5068 | 40100.40200.40900.52500.55600.62100.62800.406100 | **23th Floor slab** | 8d | 2026-05-25 | 2026-06-01 |  | start no earlier than 2026-05-25 | RGA - STRUCTURE | 7810922 |
| 5069 | 40100.40200.40900.52500.55600.62100.62800.406100.2707300 | Wall Reinforcement & Form work | 4d | 2026-05-25 | 2026-05-28 | 5067 |  | RGA - STRUCTURE | 7859902 |
| 5070 | 40100.40200.40900.52500.55600.62100.62800.406100.2707400 | Slab shuttering & Rebar. | 3d | 2026-05-29 | 2026-05-31 | 5069 |  | RGA - STRUCTURE | 7859912 |
| 5071 | 40100.40200.40900.52500.55600.62100.62800.406100.2707500 | Concreting | 1d | 2026-06-01 | 2026-06-01 | 5070 |  | RGA - STRUCTURE | 7859922 |
| 5072 | 40100.40200.40900.52500.55600.62100.62800.406200 | **24th Floor slab** | 8d | 2026-06-02 | 2026-06-09 |  | start no earlier than 2026-06-02 | RGA - STRUCTURE | 7810932 |
| 5073 | 40100.40200.40900.52500.55600.62100.62800.406200.2707600 | Wall Reinforcement & Form work | 4d | 2026-06-02 | 2026-06-05 | 5071 |  | RGA - STRUCTURE | 7859932 |
| 5074 | 40100.40200.40900.52500.55600.62100.62800.406200.2707700 | Slab shuttering & Rebar. | 3d | 2026-06-06 | 2026-06-08 | 5073 |  | RGA - STRUCTURE | 7859942 |
| 5075 | 40100.40200.40900.52500.55600.62100.62800.406200.2707800 | Concreting | 1d | 2026-06-09 | 2026-06-09 | 5074 |  | RGA - STRUCTURE | 7859952 |

| ID | WBS | Task | Duration | Start | Finish | Predecessors | Constraint | Calendar | Unique_Task_ID |
| --- | --- | --- | --- | --- | --- | --- | --- | --- | --- |
| 5076 | 40100.40200.40900.52500.55600.62100.62800.406300 | **25th Floor slab** | 8d | 2026-06-10 | 2026-06-19 |  | start no earlier than 2026-06-10 | RGA - STRUCTURE | 7810942 |
| 5077 | 40100.40200.40900.52500.55600.62100.62800.406300.2707900 | Wall Reinforcement & Form work | 4d | 2026-06-10 | 2026-06-13 | 5075 |  | RGA - STRUCTURE | 7859962 |
| 5078 | 40100.40200.40900.52500.55600.62100.62800.406300.2708000 | Slab shuttering & Rebar. | 3d | 2026-06-14 | 2026-06-17 | 5077 |  | RGA - STRUCTURE | 7859972 |
| 5079 | 40100.40200.40900.52500.55600.62100.62800.406300.2708100 | Concreting | 1d | 2026-06-18 | 2026-06-19 | 5078 |  | RGA - STRUCTURE | 7859982 |
| 5080 | 40100.40200.40900.52500.55600.62100.62800.406400 | **Terrace Floor slab** | 12d | 2026-06-20 | 2026-07-13 |  | start no earlier than 2026-06-20 | RGA - STRUCTURE | 7810972 |
| 5081 | 40100.40200.40900.52500.55600.62100.62800.406400.2708200 | Wall Reinforcement & Form work | 6d | 2026-06-20 | 2026-07-01 | 5079 |  | RGA - STRUCTURE | 7860052 |
| 5082 | 40100.40200.40900.52500.55600.62100.62800.406400.2708300 | Slab shuttering & Rebar. | 5d | 2026-07-02 | 2026-07-11 | 5081 |  | RGA - STRUCTURE | 7860062 |
| 5083 | 40100.40200.40900.52500.55600.62100.62800.406400.2708400 | Concreting | 1d | 2026-07-12 | 2026-07-13 | 5082 |  | RGA - STRUCTURE | 7860072 |
| 5084 | 40100.40200.40900.52500.55600.62100.254000 | **RCC work above Terrace** | 49d | 2026-07-12 | 2026-09-01 |  | start no earlier than 2026-07-12 | RGA - STRUCTURE | 7806992 |
| 5085 | 40100.40200.40900.52500.55600.62100.254000.370400 | **STAIRCASE & OHT CORE** | 49d | 2026-07-12 | 2026-09-01 |  | start no earlier than 2026-07-12 | RGA - STRUCTURE | 7808692 |
| 5086 | 40100.40200.40900.52500.55600.62100.254000.370400.2708500 | STAIRCASE HEAD ROOM | 10d | 2026-07-12 | 2026-07-23 | 5082 |  | RGA - STRUCTURE | 7860082 |
| 5087 | 40100.40200.40900.52500.55600.62100.254000.370400.2708600 | OHT | 25d | 2026-07-24 | 2026-08-18 | 5086 |  | RGA - STRUCTURE | 7860092 |
| 5088 | 40100.40200.40900.52500.55600.62100.254000.370400.2708700 | SHAFT COVERING SLAB | 20d | 2026-07-14 | 2026-08-03 | 5083 |  | RGA - STRUCTURE | 7860102 |
| 5089 | 40100.40200.40900.52500.55600.62100.254000.370400.2708800 | DESHUTTERING OF OHT TOP SLAB | 7d | 2026-08-26 | 2026-09-01 | 5087FS+7d |  | RGA - STRUCTURE | 7860112 |
| 5090 | 40100.40200.40900.52500.55600.62100.254000.406500 | **LMR BOTTOM & TOP SLAB** | 43d | 2026-07-14 | 2026-08-27 |  | start no earlier than 2026-07-14 | RGA - STRUCTURE | 7810982 |
| 5091 | 40100.40200.40900.52500.55600.62100.254000.406500.2708900 | LMR COLUMNS / WALLS | 15d | 2026-07-14 | 2026-07-29 | 5083 |  | RGA - STRUCTURE | 7860122 |
| 5092 | 40100.40200.40900.52500.55600.62100.254000.406500.2709000 | LMR TOP SLAB | 20d | 2026-07-30 | 2026-08-19 | 5091 |  | RGA - STRUCTURE | 7860132 |
| 5093 | 40100.40200.40900.52500.55600.62100.254000.406500.2709100 | DESHUTTERING | 8d | 2026-08-20 | 2026-08-27 | 5092 |  | RGA - STRUCTURE | 7860142 |
| 5094 | 40100.40200.40900.52500.55600.59400 | **Civil Finishing works (Brick work, Plaster,conduiting, concled plumbing, waterproofing)** | 733d | 2025-04-01 | 2027-04-03 |  | start no earlier than 2025-04-01 | RGA -FINISHING | 7391795 |
| 5095 | 40100.40200.40900.52500.55600.59400.60600 | **Flat finishing works** | 604.5d | 2025-04-01 | 2026-11-26 |  | start no earlier than 2025-04-01 | RGA -FINISHING | 7391815 |
| 5096 | 40100.40200.40900.52500.55600.59400.60600.333300 | **Ground FLOOR** | 445d | 2025-04-16 | 2026-07-04 |  | start no earlier than 2025-04-16 | RGA -FINISHING | 7392515 |
| 5097 | 40100.40200.40900.52500.55600.59400.60600.333300.2709200 | BALCONY RAILING FIXING | 9d | 2025-10-27 | 2025-11-04 | 4991FS-31d |  | RGA -FINISHING | 7399435 |
| 5098 | 40100.40200.40900.52500.55600.59400.60600.333300.2709300 | Block work | 8d | 2025-05-08 | 2025-05-15 | 5102 |  | RGA -FINISHING | 7399445 |
| 5099 | 40100.40200.40900.52500.55600.59400.60600.333300.2709400 | CONCEALED ELEC CONDUITING & ITS FINISHING | 5d | 2026-06-30 | 2026-07-04 | 4981FS-13.5d |  | RGA -FINISHING | 7399455 |
| 5100 | 40100.40200.40900.52500.55600.59400.60600.333300.2709500 | PLASTER APPLICATION | 6d | 2025-04-16 | 2025-04-21 | 5278 |  | RGA -FINISHING | 7399465 |
| 5101 | 40100.40200.40900.52500.55600.59400.60600.333300.2709600 | CONCEALED PLUMBING | 8d | 2025-04-22 | 2025-04-29 | 5100 |  | RGA -FINISHING | 7399475 |
| 5102 | 40100.40200.40900.52500.55600.59400.60600.333300.2709700 | WATERPROOFING WORK FOR TOILETS, KITCHEN SUNK & PLANTERS | 8d | 2025-04-30 | 2025-05-07 | 5101 |  | RGA -FINISHING | 7399485 |

Notes:
- 5080: AVg Slab Cycle of 21 days

| ID | WBS | Task | Duration | Start | Finish | Predecessors | Constraint | Calendar | Unique_Task_ID |
| --- | --- | --- | --- | --- | --- | --- | --- | --- | --- |
| 5103 | 40100.40200.40900.52500.55600.59400.60600.333200 | **1ST FLOOR** | 77d | 2025-10-04 | 2025-12-19 |  | start no earlier than 2025-10-04 | RGA -FINISHING | 7392525 |
| 5104 | 40100.40200.40900.52500.55600.59400.60600.333200.2709800 | BALCONY RAILING FIXING | 9d | 2025-11-12 | 2025-11-20 | 4995FS-30d |  | RGA -FINISHING | 7399495 |
| 5105 | 40100.40200.40900.52500.55600.59400.60600.333200.2709900 | Block work | 8d | 2025-12-12 | 2025-12-19 | 5109 |  | RGA -FINISHING | 7399505 |
| 5106 | 40100.40200.40900.52500.55600.59400.60600.333200.2710000 | CONCEALED ELEC CONDUITING & ITS FINISHING | 5d | 2025-10-04 | 2025-10-08 | 4984FS-7d |  | RGA -FINISHING | 7399515 |
| 5107 | 40100.40200.40900.52500.55600.59400.60600.333200.2710100 | PLASTER APPLICATION | 6d | 2025-11-20 | 2025-11-25 | 5291 |  | RGA -FINISHING | 7399525 |
| 5108 | 40100.40200.40900.52500.55600.59400.60600.333200.2710200 | CONCEALED PLUMBING | 8d | 2025-11-26 | 2025-12-03 | 5107 |  | RGA -FINISHING | 7399535 |
| 5109 | 40100.40200.40900.52500.55600.59400.60600.333200.2710300 | WATERPROOFING WORK FOR TOILETS, KITCHEN SUNK & PLANTERS | 8d | 2025-12-04 | 2025-12-11 | 5108 |  | RGA -FINISHING | 7399545 |
| 5110 | 40100.40200.40900.52500.55600.59400.60600.333100 | **2nd FLOOR** | 66d | 2025-11-01 | 2026-01-05 |  | start no earlier than 2025-11-01 | RGA -FINISHING | 7392735 |
| 5111 | 40100.40200.40900.52500.55600.59400.60600.333100.2710400 | BALCONY RAILING FIXING | 9d | 2025-11-21 | 2025-11-29 | 4999FS-30d |  | RGA -FINISHING | 7399555 |
| 5112 | 40100.40200.40900.52500.55600.59400.60600.333100.2710500 | Block work | 8d | 2025-12-29 | 2026-01-05 | 5116 |  | RGA -FINISHING | 7399565 |
| 5113 | 40100.40200.40900.52500.55600.59400.60600.333100.2710600 | CONCEALED ELEC CONDUITING & ITS FINISHING | 5d | 2025-11-01 | 2025-11-05 | 4987FS-5d |  | RGA -FINISHING | 7399575 |
| 5114 | 40100.40200.40900.52500.55600.59400.60600.333100.2710700 | PLASTER APPLICATION | 6d | 2025-12-07 | 2025-12-12 | 5304FS+10d |  | RGA -FINISHING | 7399585 |
| 5115 | 40100.40200.40900.52500.55600.59400.60600.333100.2710800 | CONCEALED PLUMBING | 8d | 2025-12-13 | 2025-12-20 | 5114 |  | RGA -FINISHING | 7399595 |
| 5116 | 40100.40200.40900.52500.55600.59400.60600.333100.2710900 | WATERPROOFING WORK FOR TOILETS, KITCHEN SUNK & PLANTERS | 8d | 2025-12-21 | 2025-12-28 | 5115 |  | RGA -FINISHING | 7399605 |
| 5117 | 40100.40200.40900.52500.55600.59400.60600.333000 | **3rd FLOOR** | 56d | 2025-11-20 | 2026-01-14 |  | start no earlier than 2025-11-20 | RGA -FINISHING | 7392505 |
| 5118 | 40100.40200.40900.52500.55600.59400.60600.333000.2711000 | BALCONY RAILING FIXING | 9d | 2025-12-15 | 2025-12-23 | 5003FS-15d |  | RGA -FINISHING | 7399615 |
| 5119 | 40100.40200.40900.52500.55600.59400.60600.333000.2711100 | Block work | 8d | 2026-01-07 | 2026-01-14 | 5123 |  | RGA -FINISHING | 7399625 |
| 5120 | 40100.40200.40900.52500.55600.59400.60600.333000.2711200 | CONCEALED ELEC CONDUITING & ITS FINISHING | 5d | 2025-11-20 | 2025-11-24 | 4991FS-7d |  | RGA -FINISHING | 7399635 |
| 5121 | 40100.40200.40900.52500.55600.59400.60600.333000.2711300 | PLASTER APPLICATION | 6d | 2025-12-16 | 2025-12-21 | 5317FS+10d |  | RGA -FINISHING | 7399645 |
| 5122 | 40100.40200.40900.52500.55600.59400.60600.333000.2711400 | CONCEALED PLUMBING | 8d | 2025-12-22 | 2025-12-29 | 5121 |  | RGA -FINISHING | 7399655 |
| 5123 | 40100.40200.40900.52500.55600.59400.60600.333000.2711500 | WATERPROOFING WORK FOR TOILETS, KITCHEN SUNK & PLANTERS | 8d | 2025-12-30 | 2026-01-06 | 5122 |  | RGA -FINISHING | 7399665 |
| 5124 | 40100.40200.40900.52500.55600.59400.60600.332900 | **4th FLOOR** | 65d | 2025-12-05 | 2026-02-07 |  | start no earlier than 2025-12-05 | RGA -FINISHING | 7392535 |
| 5125 | 40100.40200.40900.52500.55600.59400.60600.332900.2711600 | BALCONY RAILING FIXING | 9d | 2025-12-24 | 2026-01-01 | 5007FS-15d |  | RGA -FINISHING | 7399675 |
| 5126 | 40100.40200.40900.52500.55600.59400.60600.332900.2711700 | Block work | 8d | 2026-01-31 | 2026-02-07 | 5130 |  | RGA -FINISHING | 7399685 |
| 5127 | 40100.40200.40900.52500.55600.59400.60600.332900.2711800 | CONCEALED ELEC CONDUITING & ITS FINISHING | 5d | 2025-12-05 | 2025-12-09 | 4995FS-7d |  | RGA -FINISHING | 7399695 |
| 5128 | 40100.40200.40900.52500.55600.59400.60600.332900.2711900 | PLASTER APPLICATION | 6d | 2026-01-09 | 2026-01-14 | 5330FS+10d |  | RGA -FINISHING | 7399705 |
| 5129 | 40100.40200.40900.52500.55600.59400.60600.332900.2712000 | CONCEALED PLUMBING | 8d | 2026-01-15 | 2026-01-22 | 5128 |  | RGA -FINISHING | 7399715 |
| 5130 | 40100.40200.40900.52500.55600.59400.60600.332900.2712100 | WATERPROOFING WORK FOR TOILETS, KITCHEN SUNK & PLANTERS | 8d | 2026-01-23 | 2026-01-30 | 5129 |  | RGA -FINISHING | 7399725 |

| ID | WBS | Task | Duration | Start | Finish | Predecessors | Constraint | Calendar | Unique_Task_ID |
| --- | --- | --- | --- | --- | --- | --- | --- | --- | --- |
| 5131 | 40100.40200.40900.52500.55600.59400.60600.332800 | **5th FLOOR** | 65d | 2025-12-14 | 2026-02-16 |  | start no earlier than 2025-12-14 | RGA -FINISHING | 7392825 |
| 5132 | 40100.40200.40900.52500.55600.59400.60600.332800.2712200 | BALCONY RAILING FIXING | 9d | 2026-01-02 | 2026-01-10 | 5011FS-15d |  | RGA -FINISHING | 7399735 |
| 5133 | 40100.40200.40900.52500.55600.59400.60600.332800.2712300 | Block work | 8d | 2026-02-09 | 2026-02-16 | 5137 |  | RGA -FINISHING | 7399745 |
| 5134 | 40100.40200.40900.52500.55600.59400.60600.332800.2712400 | CONCEALED ELEC CONDUITING & ITS FINISHING | 5d | 2025-12-14 | 2025-12-18 | 4999FS-7d |  | RGA -FINISHING | 7399755 |
| 5135 | 40100.40200.40900.52500.55600.59400.60600.332800.2712500 | PLASTER APPLICATION | 6d | 2026-01-18 | 2026-01-23 | 5343FS+10d |  | RGA -FINISHING | 7399765 |
| 5136 | 40100.40200.40900.52500.55600.59400.60600.332800.2712600 | CONCEALED PLUMBING | 8d | 2026-01-24 | 2026-01-31 | 5135 |  | RGA -FINISHING | 7399775 |
| 5137 | 40100.40200.40900.52500.55600.59400.60600.332800.2712700 | WATERPROOFING WORK FOR TOILETS, KITCHEN SUNK & PLANTERS | 8d | 2026-02-01 | 2026-02-08 | 5136 |  | RGA -FINISHING | 7399785 |
| 5138 | 40100.40200.40900.52500.55600.59400.60600.332700 | **6th FLOOR** | 65d | 2025-12-23 | 2026-02-25 |  | start no earlier than 2025-12-23 | RGA -FINISHING | 7392815 |
| 5139 | 40100.40200.40900.52500.55600.59400.60600.332700.2712800 | BALCONY RAILING FIXING | 9d | 2026-01-11 | 2026-01-19 | 5015FS-15d |  | RGA -FINISHING | 7399795 |
| 5140 | 40100.40200.40900.52500.55600.59400.60600.332700.2712900 | Block work | 8d | 2026-02-18 | 2026-02-25 | 5144 |  | RGA -FINISHING | 7399805 |
| 5141 | 40100.40200.40900.52500.55600.59400.60600.332700.2713000 | CONCEALED ELEC CONDUITING & ITS FINISHING | 5d | 2025-12-23 | 2025-12-27 | 5003FS-7d |  | RGA -FINISHING | 7399815 |
| 5142 | 40100.40200.40900.52500.55600.59400.60600.332700.2713100 | PLASTER APPLICATION | 6d | 2026-01-27 | 2026-02-01 | 5356FS+10d |  | RGA -FINISHING | 7399825 |
| 5143 | 40100.40200.40900.52500.55600.59400.60600.332700.2713200 | CONCEALED PLUMBING | 8d | 2026-02-02 | 2026-02-09 | 5142 |  | RGA -FINISHING | 7399835 |
| 5144 | 40100.40200.40900.52500.55600.59400.60600.332700.2713300 | WATERPROOFING WORK FOR TOILETS, KITCHEN SUNK & PLANTERS | 8d | 2026-02-10 | 2026-02-17 | 5143 |  | RGA -FINISHING | 7399845 |
| 5145 | 40100.40200.40900.52500.55600.59400.60600.332600 | **7th FLOOR** | 65d | 2026-01-01 | 2026-03-06 |  | start no earlier than 2026-01-01 | RGA -FINISHING | 7392805 |
| 5146 | 40100.40200.40900.52500.55600.59400.60600.332600.2713400 | BALCONY RAILING FIXING | 9d | 2026-01-20 | 2026-01-28 | 5019FS-16d |  | RGA -FINISHING | 7399855 |
| 5147 | 40100.40200.40900.52500.55600.59400.60600.332600.2713500 | Block work | 8d | 2026-02-27 | 2026-03-06 | 5151 |  | RGA -FINISHING | 7399865 |
| 5148 | 40100.40200.40900.52500.55600.59400.60600.332600.2713600 | CONCEALED ELEC CONDUITING & ITS FINISHING | 5d | 2026-01-01 | 2026-01-05 | 5007FS-7d |  | RGA -FINISHING | 7399875 |
| 5149 | 40100.40200.40900.52500.55600.59400.60600.332600.2713700 | PLASTER APPLICATION | 6d | 2026-02-05 | 2026-02-10 | 5369FS+10d |  | RGA -FINISHING | 7399885 |
| 5150 | 40100.40200.40900.52500.55600.59400.60600.332600.2713800 | CONCEALED PLUMBING | 8d | 2026-02-11 | 2026-02-18 | 5149 |  | RGA -FINISHING | 7399895 |
| 5151 | 40100.40200.40900.52500.55600.59400.60600.332600.2713900 | WATERPROOFING WORK FOR TOILETS, KITCHEN SUNK & PLANTERS | 8d | 2026-02-19 | 2026-02-26 | 5150 |  | RGA -FINISHING | 7399905 |
| 5152 | 40100.40200.40900.52500.55600.59400.60600.332500 | **8th FLOOR** | 318.5d | 2026-01-12 | 2026-11-26 |  | start no earlier than 2026-01-12 | RGA -FINISHING | 7392795 |
| 5153 | 40100.40200.40900.52500.55600.59400.60600.332500.2714000 | BALCONY RAILING FIXING | 9d | 2026-01-30 | 2026-02-07 | 5023FS-15d |  | RGA -FINISHING | 7399915 |
| 5154 | 40100.40200.40900.52500.55600.59400.60600.332500.2714100 | Block work | 8d | 2026-11-18 | 2026-11-26 | 5158 |  | RGA -FINISHING | 7399925 |
| 5155 | 40100.40200.40900.52500.55600.59400.60600.332500.2714200 | CONCEALED ELEC CONDUITING & ITS FINISHING | 5d | 2026-01-12 | 2026-01-16 | 5011FS-5d |  | RGA -FINISHING | 7399935 |
| 5156 | 40100.40200.40900.52500.55600.59400.60600.332500.2714300 | PLASTER APPLICATION | 6d | 2026-10-27 | 2026-11-02 | 5379FS+10d |  | RGA -FINISHING | 7399945 |
| 5157 | 40100.40200.40900.52500.55600.59400.60600.332500.2714400 | CONCEALED PLUMBING | 8d | 2026-11-02 | 2026-11-10 | 5156 |  | RGA -FINISHING | 7399955 |
| 5158 | 40100.40200.40900.52500.55600.59400.60600.332500.2714500 | WATERPROOFING WORK FOR TOILETS, KITCHEN SUNK & PLANTERS | 8d | 2026-11-10 | 2026-11-18 | 5157 |  | RGA -FINISHING | 7399965 |

| ID | WBS | Task | Duration | Start | Finish | Predecessors | Constraint | Calendar | Unique_Task_ID |
| --- | --- | --- | --- | --- | --- | --- | --- | --- | --- |
| 5159 | 40100.40200.40900.52500.55600.59400.60600.332400 | **9th FLOOR** | 48d | 2026-01-21 | 2026-03-09 |  | start no earlier than 2026-01-21 | RGA -FINISHING | 7392785 |
| 5160 | 40100.40200.40900.52500.55600.59400.60600.332400.2714600 | BALCONY RAILING FIXING | 9d | 2026-02-08 | 2026-02-16 | 5027FS-15d |  | RGA -FINISHING | 7399975 |
| 5161 | 40100.40200.40900.52500.55600.59400.60600.332400.2714700 | Block work | 8d | 2026-03-02 | 2026-03-09 | 5165 |  | RGA -FINISHING | 7399985 |
| 5162 | 40100.40200.40900.52500.55600.59400.60600.332400.2714800 | CONCEALED ELEC CONDUITING & ITS FINISHING | 5d | 2026-01-21 | 2026-01-25 | 5015FS-5d |  | RGA -FINISHING | 7399995 |
| 5163 | 40100.40200.40900.52500.55600.59400.60600.332400.2714900 | PLASTER APPLICATION | 6d | 2026-03-01 | 2026-03-06 | 5692FS+10d |  | RGA -FINISHING | 7400005 |
| 5164 | 40100.40200.40900.52500.55600.59400.60600.332400.2715000 | CONCEALED PLUMBING | 8d | 2026-02-14 | 2026-02-21 | 5395 |  | RGA -FINISHING | 7400015 |
| 5165 | 40100.40200.40900.52500.55600.59400.60600.332400.2715100 | WATERPROOFING WORK FOR TOILETS, KITCHEN SUNK & PLANTERS | 8d | 2026-02-22 | 2026-03-01 | 5164 |  | RGA -FINISHING | 7400025 |
| 5166 | 40100.40200.40900.52500.55600.59400.60600.332300 | **10th FLOOR** | 65d | 2026-01-29 | 2026-04-03 |  | start no earlier than 2026-01-29 | RGA -FINISHING | 7392775 |
| 5167 | 40100.40200.40900.52500.55600.59400.60600.332300.2715200 | BALCONY RAILING FIXING | 9d | 2026-02-17 | 2026-02-25 | 5031FS-15d |  | RGA -FINISHING | 7400035 |
| 5168 | 40100.40200.40900.52500.55600.59400.60600.332300.2715300 | Block work | 8d | 2026-03-27 | 2026-04-03 | 5172 |  | RGA -FINISHING | 7400045 |
| 5169 | 40100.40200.40900.52500.55600.59400.60600.332300.2715400 | CONCEALED ELEC CONDUITING & ITS FINISHING | 5d | 2026-01-29 | 2026-02-02 | 5019FS-7d |  | RGA -FINISHING | 7400055 |
| 5170 | 40100.40200.40900.52500.55600.59400.60600.332300.2715500 | PLASTER APPLICATION | 6d | 2026-03-05 | 2026-03-10 | 5408FS+10d |  | RGA -FINISHING | 7400065 |
| 5171 | 40100.40200.40900.52500.55600.59400.60600.332300.2715600 | CONCEALED PLUMBING | 8d | 2026-03-11 | 2026-03-18 | 5170 |  | RGA -FINISHING | 7400075 |
| 5172 | 40100.40200.40900.52500.55600.59400.60600.332300.2715700 | WATERPROOFING WORK FOR TOILETS, KITCHEN SUNK & PLANTERS | 8d | 2026-03-19 | 2026-03-26 | 5171 |  | RGA -FINISHING | 7400085 |
| 5173 | 40100.40200.40900.52500.55600.59400.60600.332200 | **11th FLOOR** | 65d | 2026-02-07 | 2026-04-12 |  | start no earlier than 2026-02-07 | RGA -FINISHING | 7392765 |
| 5174 | 40100.40200.40900.52500.55600.59400.60600.332200.2715800 | BALCONY RAILING FIXING | 9d | 2026-02-26 | 2026-03-06 | 5035FS-15d |  | RGA -FINISHING | 7400095 |
| 5175 | 40100.40200.40900.52500.55600.59400.60600.332200.2715900 | Block work | 8d | 2026-04-05 | 2026-04-12 | 5179 |  | RGA -FINISHING | 7400105 |
| 5176 | 40100.40200.40900.52500.55600.59400.60600.332200.2716000 | CONCEALED ELEC CONDUITING & ITS FINISHING | 5d | 2026-02-07 | 2026-02-11 | 5023FS-7d |  | RGA -FINISHING | 7400115 |
| 5177 | 40100.40200.40900.52500.55600.59400.60600.332200.2716100 | PLASTER APPLICATION | 6d | 2026-03-14 | 2026-03-19 | 5421FS+10d |  | RGA -FINISHING | 7400125 |
| 5178 | 40100.40200.40900.52500.55600.59400.60600.332200.2716200 | CONCEALED PLUMBING | 8d | 2026-03-20 | 2026-03-27 | 5177 |  | RGA -FINISHING | 7400135 |
| 5179 | 40100.40200.40900.52500.55600.59400.60600.332200.2716300 | WATERPROOFING WORK FOR TOILETS, KITCHEN SUNK & PLANTERS | 8d | 2026-03-28 | 2026-04-04 | 5178 |  | RGA -FINISHING | 7400145 |
| 5180 | 40100.40200.40900.52500.55600.59400.60600.332100 | **12th FLOOR** | 57d | 2026-02-16 | 2026-04-13 |  | start no earlier than 2026-02-16 | RGA -FINISHING | 7392755 |
| 5181 | 40100.40200.40900.52500.55600.59400.60600.332100.2716400 | BALCONY RAILING FIXING | 9d | 2026-03-07 | 2026-03-15 | 5039FS-15d |  | RGA -FINISHING | 7400155 |
| 5182 | 40100.40200.40900.52500.55600.59400.60600.332100.2716500 | Block work | 8d | 2026-04-06 | 2026-04-13 | 5185 |  | RGA -FINISHING | 7400165 |
| 5183 | 40100.40200.40900.52500.55600.59400.60600.332100.2716600 | CONCEALED ELEC CONDUITING & ITS FINISHING | 5d | 2026-02-16 | 2026-02-20 | 5027FS-7d |  | RGA -FINISHING | 7400175 |
| 5184 | 40100.40200.40900.52500.55600.59400.60600.332100.2716700 | PLASTER APPLICATION | 6d | 2026-03-23 | 2026-03-28 | 5434FS+10d |  | RGA -FINISHING | 7400185 |
| 5185 | 40100.40200.40900.52500.55600.59400.60600.332100.2716800 | CONCEALED PLUMBING | 8d | 2026-03-29 | 2026-04-05 | 5184 |  | RGA -FINISHING | 7400195 |
| 5186 | 40100.40200.40900.52500.55600.59400.60600.332100.2716900 | WATERPROOFING WORK FOR TOILETS, KITCHEN SUNK & PLANTERS | 8d | 2026-04-06 | 2026-04-13 | 5185 |  | RGA -FINISHING | 7400205 |

| ID | WBS | Task | Duration | Start | Finish | Predecessors | Constraint | Calendar | Unique_Task_ID |
| --- | --- | --- | --- | --- | --- | --- | --- | --- | --- |
| 5187 | 40100.40200.40900.52500.55600.59400.60600.332000 | **13th FLOOR** | 79d | 2026-02-25 | 2026-05-14 |  | start no earlier than 2026-02-25 | RGA -FINISHING | 7392745 |
| 5188 | 40100.40200.40900.52500.55600.59400.60600.332000.2717000 | BALCONY RAILING FIXING | 9d | 2026-03-16 | 2026-03-24 | 5043FS-15d |  | RGA -FINISHING | 7400215 |
| 5189 | 40100.40200.40900.52500.55600.59400.60600.332000.2717100 | Block work | 8d | 2026-05-07 | 2026-05-14 | 5193 |  | RGA -FINISHING | 7400225 |
| 5190 | 40100.40200.40900.52500.55600.59400.60600.332000.2717200 | CONCEALED ELEC CONDUITING & ITS FINISHING | 5d | 2026-02-25 | 2026-03-01 | 5031FS-7d |  | RGA -FINISHING | 7400235 |
| 5191 | 40100.40200.40900.52500.55600.59400.60600.332000.2717300 | PLASTER APPLICATION | 15d | 2026-04-01 | 2026-04-15 | 5447FS+10d |  | RGA -FINISHING | 7400245 |
| 5192 | 40100.40200.40900.52500.55600.59400.60600.332000.2717400 | CONCEALED PLUMBING | 9d | 2026-04-16 | 2026-04-24 | 5191 |  | RGA -FINISHING | 7400255 |
| 5193 | 40100.40200.40900.52500.55600.59400.60600.332000.2717500 | WATERPROOFING WORK FOR TOILETS, KITCHEN SUNK & PLANTERS | 12d | 2026-04-25 | 2026-05-06 | 5192 |  | RGA -FINISHING | 7400265 |
| 5194 | 40100.40200.40900.52500.55600.59400.60600.331900 | **14th FLOOR** | 81d | 2026-03-06 | 2026-05-25 |  | start no earlier than 2026-03-06 | RGA -FINISHING | 7392725 |
| 5195 | 40100.40200.40900.52500.55600.59400.60600.331900.2717600 | BALCONY RAILING FIXING | 9d | 2026-03-25 | 2026-04-02 | 5047FS-15d |  | RGA -FINISHING | 7400275 |
| 5196 | 40100.40200.40900.52500.55600.59400.60600.331900.2717700 | Block work | 8d | 2026-05-18 | 2026-05-25 | 5200 |  | RGA -FINISHING | 7400285 |
| 5197 | 40100.40200.40900.52500.55600.59400.60600.331900.2717800 | CONCEALED ELEC CONDUITING & ITS FINISHING | 5d | 2026-03-06 | 2026-03-10 | 5035FS-7d |  | RGA -FINISHING | 7400295 |
| 5198 | 40100.40200.40900.52500.55600.59400.60600.331900.2717900 | PLASTER APPLICATION | 15d | 2026-04-12 | 2026-04-26 | 5460FS+10d |  | RGA -FINISHING | 7400305 |
| 5199 | 40100.40200.40900.52500.55600.59400.60600.331900.2718000 | CONCEALED PLUMBING | 9d | 2026-04-27 | 2026-05-05 | 5198 |  | RGA -FINISHING | 7400315 |
| 5200 | 40100.40200.40900.52500.55600.59400.60600.331900.2718100 | WATERPROOFING WORK FOR TOILETS, KITCHEN SUNK & PLANTERS | 12d | 2026-05-06 | 2026-05-17 | 5199 |  | RGA -FINISHING | 7400325 |
| 5201 | 40100.40200.40900.52500.55600.59400.60600.331800 | **15th FLOOR** | 81d | 2026-03-15 | 2026-06-03 |  | start no earlier than 2026-03-15 | RGA -FINISHING | 7392715 |
| 5202 | 40100.40200.40900.52500.55600.59400.60600.331800.2718200 | BALCONY RAILING FIXING | 9d | 2026-04-03 | 2026-04-11 | 5051FS-15d |  | RGA -FINISHING | 7400335 |
| 5203 | 40100.40200.40900.52500.55600.59400.60600.331800.2718300 | Block work | 8d | 2026-05-27 | 2026-06-03 | 5207 |  | RGA -FINISHING | 7400345 |
| 5204 | 40100.40200.40900.52500.55600.59400.60600.331800.2718400 | CONCEALED ELEC CONDUITING & ITS FINISHING | 5d | 2026-03-15 | 2026-03-19 | 5039FS-7d |  | RGA -FINISHING | 7400355 |
| 5205 | 40100.40200.40900.52500.55600.59400.60600.331800.2718500 | PLASTER APPLICATION | 15d | 2026-04-21 | 2026-05-05 | 5473FS+10d |  | RGA -FINISHING | 7400365 |
| 5206 | 40100.40200.40900.52500.55600.59400.60600.331800.2718600 | CONCEALED PLUMBING | 9d | 2026-05-06 | 2026-05-14 | 5205 |  | RGA -FINISHING | 7400375 |
| 5207 | 40100.40200.40900.52500.55600.59400.60600.331800.2718700 | WATERPROOFING WORK FOR TOILETS, KITCHEN SUNK & PLANTERS | 12d | 2026-05-15 | 2026-05-26 | 5206 |  | RGA -FINISHING | 7400385 |
| 5208 | 40100.40200.40900.52500.55600.59400.60600.331700 | **16th FLOOR** | 81d | 2026-03-24 | 2026-06-12 |  | start no earlier than 2026-03-24 | RGA -FINISHING | 7392705 |
| 5209 | 40100.40200.40900.52500.55600.59400.60600.331700.2718800 | BALCONY RAILING FIXING | 9d | 2026-04-11 | 2026-04-19 | 5055FS-15d |  | RGA -FINISHING | 7400395 |
| 5210 | 40100.40200.40900.52500.55600.59400.60600.331700.2718900 | Block work | 8d | 2026-06-05 | 2026-06-12 | 5214 |  | RGA -FINISHING | 7400405 |
| 5211 | 40100.40200.40900.52500.55600.59400.60600.331700.2719000 | CONCEALED ELEC CONDUITING & ITS FINISHING | 5d | 2026-03-24 | 2026-03-28 | 5043FS-7d |  | RGA -FINISHING | 7400415 |
| 5212 | 40100.40200.40900.52500.55600.59400.60600.331700.2719100 | PLASTER APPLICATION | 15d | 2026-04-30 | 2026-05-14 | 5486FS+10d |  | RGA -FINISHING | 7400425 |
| 5213 | 40100.40200.40900.52500.55600.59400.60600.331700.2719200 | CONCEALED PLUMBING | 9d | 2026-05-15 | 2026-05-23 | 5212 |  | RGA -FINISHING | 7400435 |
| 5214 | 40100.40200.40900.52500.55600.59400.60600.331700.2719300 | WATERPROOFING WORK FOR TOILETS, KITCHEN SUNK & PLANTERS | 12d | 2026-05-24 | 2026-06-04 | 5213 |  | RGA -FINISHING | 7400445 |

| ID | WBS | Task | Duration | Start | Finish | Predecessors | Constraint | Calendar | Unique_Task_ID |
| --- | --- | --- | --- | --- | --- | --- | --- | --- | --- |
| 5215 | 40100.40200.40900.52500.55600.59400.60600.331600 | **17th FLOOR** | 80d | 2026-04-02 | 2026-06-20 |  | start no earlier than 2026-04-02 | RGA -FINISHING | 7392695 |
| 5216 | 40100.40200.40900.52500.55600.59400.60600.331600.2719400 | BALCONY RAILING FIXING | 9d | 2026-04-23 | 2026-05-01 | 5059FS-16d |  | RGA -FINISHING | 7400455 |
| 5217 | 40100.40200.40900.52500.55600.59400.60600.331600.2719500 | Block work | 8d | 2026-06-13 | 2026-06-20 | 5221 |  | RGA -FINISHING | 7400465 |
| 5218 | 40100.40200.40900.52500.55600.59400.60600.331600.2719600 | CONCEALED ELEC CONDUITING & ITS FINISHING | 5d | 2026-04-02 | 2026-04-06 | 5047FS-7d |  | RGA -FINISHING | 7400475 |
| 5219 | 40100.40200.40900.52500.55600.59400.60600.331600.2719700 | PLASTER APPLICATION | 15d | 2026-05-08 | 2026-05-22 | 5499FS+10d |  | RGA -FINISHING | 7400485 |
| 5220 | 40100.40200.40900.52500.55600.59400.60600.331600.2719800 | CONCEALED PLUMBING | 9d | 2026-05-23 | 2026-05-31 | 5219 |  | RGA -FINISHING | 7400495 |
| 5221 | 40100.40200.40900.52500.55600.59400.60600.331600.2719900 | WATERPROOFING WORK FOR TOILETS, KITCHEN SUNK & PLANTERS | 12d | 2026-06-01 | 2026-06-12 | 5220 |  | RGA -FINISHING | 7400505 |
| 5222 | 40100.40200.40900.52500.55600.59400.60600.331500 | **18th FLOOR** | 83d | 2026-04-11 | 2026-07-02 |  | start no earlier than 2026-04-11 | RGA -FINISHING | 7392685 |
| 5223 | 40100.40200.40900.52500.55600.59400.60600.331500.2720000 | BALCONY RAILING FIXING | 9d | 2026-05-02 | 2026-05-10 | 5063FS-15d |  | RGA -FINISHING | 7400515 |
| 5224 | 40100.40200.40900.52500.55600.59400.60600.331500.2720100 | Block work | 8d | 2026-06-25 | 2026-07-02 | 5228 |  | RGA -FINISHING | 7400525 |
| 5225 | 40100.40200.40900.52500.55600.59400.60600.331500.2720200 | CONCEALED ELEC CONDUITING & ITS FINISHING | 5d | 2026-04-11 | 2026-04-15 | 5051FS-7d |  | RGA -FINISHING | 7400535 |
| 5226 | 40100.40200.40900.52500.55600.59400.60600.331500.2720300 | PLASTER APPLICATION | 15d | 2026-05-20 | 2026-06-03 | 5512FS+10d |  | RGA -FINISHING | 7400545 |
| 5227 | 40100.40200.40900.52500.55600.59400.60600.331500.2720400 | CONCEALED PLUMBING | 9d | 2026-06-04 | 2026-06-12 | 5226 |  | RGA -FINISHING | 7400555 |
| 5228 | 40100.40200.40900.52500.55600.59400.60600.331500.2720500 | WATERPROOFING WORK FOR TOILETS, KITCHEN SUNK & PLANTERS | 12d | 2026-06-13 | 2026-06-24 | 5227 |  | RGA -FINISHING | 7400565 |
| 5229 | 40100.40200.40900.52500.55600.59400.60600.331400 | **19th FLOOR** | 84d | 2026-04-19 | 2026-07-11 |  | start no earlier than 2026-04-19 | RGA -FINISHING | 7392675 |
| 5230 | 40100.40200.40900.52500.55600.59400.60600.331400.2720600 | BALCONY RAILING FIXING | 9d | 2026-05-10 | 2026-05-18 | 5067FS-15d |  | RGA -FINISHING | 7400575 |
| 5231 | 40100.40200.40900.52500.55600.59400.60600.331400.2720700 | Block work | 8d | 2026-07-04 | 2026-07-11 | 5235 |  | RGA -FINISHING | 7400585 |
| 5232 | 40100.40200.40900.52500.55600.59400.60600.331400.2720800 | CONCEALED ELEC CONDUITING & ITS FINISHING | 5d | 2026-04-19 | 2026-04-23 | 5055FS-7d |  | RGA -FINISHING | 7400595 |
| 5233 | 40100.40200.40900.52500.55600.59400.60600.331400.2720900 | PLASTER APPLICATION | 15d | 2026-05-29 | 2026-06-12 | 5525FS+10d |  | RGA -FINISHING | 7400605 |
| 5234 | 40100.40200.40900.52500.55600.59400.60600.331400.2721000 | CONCEALED PLUMBING | 9d | 2026-06-13 | 2026-06-21 | 5233 |  | RGA -FINISHING | 7400615 |
| 5235 | 40100.40200.40900.52500.55600.59400.60600.331400.2721100 | WATERPROOFING WORK FOR TOILETS, KITCHEN SUNK & PLANTERS | 12d | 2026-06-22 | 2026-07-03 | 5234 |  | RGA -FINISHING | 7400625 |
| 5236 | 40100.40200.40900.52500.55600.59400.60600.331300 | **20th FLOOR** | 79d | 2026-05-02 | 2026-07-19 |  | start no earlier than 2026-05-02 | RGA -FINISHING | 7392665 |
| 5237 | 40100.40200.40900.52500.55600.59400.60600.331300.2721200 | BALCONY RAILING FIXING | 9d | 2026-05-18 | 2026-05-26 | 5071FS-15d |  | RGA -FINISHING | 7400635 |
| 5238 | 40100.40200.40900.52500.55600.59400.60600.331300.2721300 | Block work | 8d | 2026-07-12 | 2026-07-19 | 5242 |  | RGA -FINISHING | 7400645 |
| 5239 | 40100.40200.40900.52500.55600.59400.60600.331300.2721400 | CONCEALED ELEC CONDUITING & ITS FINISHING | 5d | 2026-05-02 | 2026-05-06 | 5059FS-7d |  | RGA -FINISHING | 7400655 |
| 5240 | 40100.40200.40900.52500.55600.59400.60600.331300.2721500 | PLASTER APPLICATION | 15d | 2026-06-06 | 2026-06-20 | 5538FS+10d |  | RGA -FINISHING | 7400665 |
| 5241 | 40100.40200.40900.52500.55600.59400.60600.331300.2721600 | CONCEALED PLUMBING | 9d | 2026-06-21 | 2026-06-29 | 5240 |  | RGA -FINISHING | 7400675 |
| 5242 | 40100.40200.40900.52500.55600.59400.60600.331300.2721700 | WATERPROOFING WORK FOR TOILETS, KITCHEN SUNK & PLANTERS | 12d | 2026-06-30 | 2026-07-11 | 5241 |  | RGA -FINISHING | 7400685 |

Notes:
- 5224: Last floor BW completion 2 months post Last RCC
- 5231: Last floor BW completion 2 months post Last RCC
- 5238: Last floor BW completion 2 months post Last RCC

| ID | WBS | Task | Duration | Start | Finish | Predecessors | Constraint | Calendar | Unique_Task_ID |
| --- | --- | --- | --- | --- | --- | --- | --- | --- | --- |
| 5243 | 40100.40200.40900.52500.55600.59400.60600.331200 | **21th FLOOR** | 79d | 2026-05-10 | 2026-07-27 |  | start no earlier than 2026-05-10 | RGA -FINISHING | 7392655 |
| 5244 | 40100.40200.40900.52500.55600.59400.60600.331200.2721800 | BALCONY RAILING FIXING | 9d | 2026-06-02 | 2026-06-10 | 5075FS-8d |  | RGA -FINISHING | 7400695 |
| 5245 | 40100.40200.40900.52500.55600.59400.60600.331200.2721900 | Block work | 8d | 2026-07-20 | 2026-07-27 | 5249 |  | RGA -FINISHING | 7400705 |
| 5246 | 40100.40200.40900.52500.55600.59400.60600.331200.2722000 | CONCEALED ELEC CONDUITING & ITS FINISHING | 5d | 2026-05-10 | 2026-05-14 | 5063FS-7d |  | RGA -FINISHING | 7400715 |
| 5247 | 40100.40200.40900.52500.55600.59400.60600.331200.2722100 | PLASTER APPLICATION | 15d | 2026-06-14 | 2026-06-28 | 5551FS+10d |  | RGA -FINISHING | 7400725 |
| 5248 | 40100.40200.40900.52500.55600.59400.60600.331200.2722200 | CONCEALED PLUMBING | 9d | 2026-06-29 | 2026-07-07 | 5247 |  | RGA -FINISHING | 7400735 |
| 5249 | 40100.40200.40900.52500.55600.59400.60600.331200.2722300 | WATERPROOFING WORK FOR TOILETS, KITCHEN SUNK & PLANTERS | 12d | 2026-07-08 | 2026-07-19 | 5248 |  | RGA -FINISHING | 7400745 |
| 5250 | 40100.40200.40900.52500.55600.59400.60600.331100 | **22th FLOOR** | 86d | 2026-05-18 | 2026-08-11 |  | start no earlier than 2026-05-18 | RGA -FINISHING | 7392645 |
| 5251 | 40100.40200.40900.52500.55600.59400.60600.331100.2722400 | BALCONY RAILING FIXING | 9d | 2026-06-08 | 2026-06-16 | 5079FS-11.5d |  | RGA -FINISHING | 7400755 |
| 5252 | 40100.40200.40900.52500.55600.59400.60600.331100.2722500 | Block work | 8d | 2026-08-04 | 2026-08-11 | 5256 |  | RGA -FINISHING | 7400765 |
| 5253 | 40100.40200.40900.52500.55600.59400.60600.331100.2722600 | CONCEALED ELEC CONDUITING & ITS FINISHING | 5d | 2026-05-18 | 2026-05-22 | 5067FS-7d |  | RGA -FINISHING | 7400775 |
| 5254 | 40100.40200.40900.52500.55600.59400.60600.331100.2722700 | PLASTER APPLICATION | 15d | 2026-06-29 | 2026-07-13 | 5564FS+10d |  | RGA -FINISHING | 7400785 |
| 5255 | 40100.40200.40900.52500.55600.59400.60600.331100.2722800 | CONCEALED PLUMBING | 9d | 2026-07-14 | 2026-07-22 | 5254 |  | RGA -FINISHING | 7400795 |
| 5256 | 40100.40200.40900.52500.55600.59400.60600.331100.2722900 | WATERPROOFING WORK FOR TOILETS, KITCHEN SUNK & PLANTERS | 12d | 2026-07-23 | 2026-08-03 | 5255 |  | RGA -FINISHING | 7400805 |
| 5257 | 40100.40200.40900.52500.55600.59400.60600.331000 | **23th FLOOR** | 134d | 2026-05-26 | 2026-10-06 |  | start no earlier than 2026-05-26 | RGA -FINISHING | 7392635 |
| 5258 | 40100.40200.40900.52500.55600.59400.60600.331000.2723000 | BALCONY RAILING FIXING | 9d | 2026-06-17 | 2026-06-25 | 5251 |  | RGA -FINISHING | 7400815 |
| 5259 | 40100.40200.40900.52500.55600.59400.60600.331000.2723100 | Block work | 8d | 2026-09-29 | 2026-10-06 | 5263 |  | RGA -FINISHING | 7400825 |
| 5260 | 40100.40200.40900.52500.55600.59400.60600.331000.2723200 | CONCEALED ELEC CONDUITING & ITS FINISHING | 5d | 2026-05-26 | 2026-05-30 | 5071FS-7d |  | RGA -FINISHING | 7400835 |
| 5261 | 40100.40200.40900.52500.55600.59400.60600.331000.2723300 | PLASTER APPLICATION | 15d | 2026-08-24 | 2026-09-07 | 5577FS+60d |  | RGA -FINISHING | 7400845 |
| 5262 | 40100.40200.40900.52500.55600.59400.60600.331000.2723400 | CONCEALED PLUMBING | 9d | 2026-09-08 | 2026-09-16 | 5261 |  | RGA -FINISHING | 7400855 |
| 5263 | 40100.40200.40900.52500.55600.59400.60600.331000.2723500 | WATERPROOFING WORK FOR TOILETS, KITCHEN SUNK & PLANTERS | 12d | 2026-09-17 | 2026-09-28 | 5262 |  | RGA -FINISHING | 7400865 |
| 5264 | 40100.40200.40900.52500.55600.59400.60600.330900 | **24th FLOOR** | 135d | 2026-06-03 | 2026-10-15 |  | start no earlier than 2026-06-03 | RGA -FINISHING | 7392625 |
| 5265 | 40100.40200.40900.52500.55600.59400.60600.330900.2723600 | BALCONY RAILING FIXING | 9d | 2026-06-26 | 2026-07-04 | 5258 |  | RGA -FINISHING | 7400875 |
| 5266 | 40100.40200.40900.52500.55600.59400.60600.330900.2723700 | Block work | 8d | 2026-10-08 | 2026-10-15 | 5270 |  | RGA -FINISHING | 7400885 |
| 5267 | 40100.40200.40900.52500.55600.59400.60600.330900.2723800 | CONCEALED ELEC CONDUITING & ITS FINISHING | 5d | 2026-06-03 | 2026-06-07 | 5075FS-7d |  | RGA -FINISHING | 7400895 |
| 5268 | 40100.40200.40900.52500.55600.59400.60600.330900.2723900 | PLASTER APPLICATION | 15d | 2026-09-02 | 2026-09-16 | 5590FS+60d |  | RGA -FINISHING | 7400905 |
| 5269 | 40100.40200.40900.52500.55600.59400.60600.330900.2724000 | CONCEALED PLUMBING | 9d | 2026-09-17 | 2026-09-25 | 5268 |  | RGA -FINISHING | 7400915 |
| 5270 | 40100.40200.40900.52500.55600.59400.60600.330900.2724100 | WATERPROOFING WORK FOR TOILETS, KITCHEN SUNK & PLANTERS | 12d | 2026-09-26 | 2026-10-07 | 5269 |  | RGA -FINISHING | 7400925 |

Notes:
- 5245: Last floor BW completion 2 months post Last RCC
- 5252: Last floor BW completion 2 months post Last RCC
- 5259: Last floor BW completion 2 months post Last RCC
- 5266: Last floor BW completion 2 months post Last RCC

| ID | WBS | Task | Duration | Start | Finish | Predecessors | Constraint | Calendar | Unique_Task_ID |
| --- | --- | --- | --- | --- | --- | --- | --- | --- | --- |
| 5271 | 40100.40200.40900.52500.55600.59400.60600.330800 | **25thFLOOR** | 127d | 2026-06-11 | 2026-10-15 |  | start no earlier than 2026-06-11 | RGA -FINISHING | 7392615 |
| 5272 | 40100.40200.40900.52500.55600.59400.60600.330800.2724200 | BALCONY RAILING FIXING | 9d | 2026-07-05 | 2026-07-13 | 5265 |  | RGA -FINISHING | 7400935 |
| 5273 | 40100.40200.40900.52500.55600.59400.60600.330800.2724300 | Block work | 8d | 2026-10-08 | 2026-10-15 | 5277 |  | RGA -FINISHING | 7400945 |
| 5274 | 40100.40200.40900.52500.55600.59400.60600.330800.2724400 | CONCEALED ELEC CONDUITING & ITS FINISHING | 5d | 2026-06-11 | 2026-06-15 | 5079FS-8.5d |  | RGA -FINISHING | 7400955 |
| 5275 | 40100.40200.40900.52500.55600.59400.60600.330800.2724500 | PLASTER APPLICATION | 15d | 2026-09-02 | 2026-09-16 | 5603FS+51d |  | RGA -FINISHING | 7400965 |
| 5276 | 40100.40200.40900.52500.55600.59400.60600.330800.2724600 | CONCEALED PLUMBING | 9d | 2026-09-17 | 2026-09-25 | 5275 |  | RGA -FINISHING | 7400975 |
| 5277 | 40100.40200.40900.52500.55600.59400.60600.330800.2724700 | WATERPROOFING WORK FOR TOILETS, KITCHEN SUNK & PLANTERS | 12d | 2026-09-26 | 2026-10-07 | 5276 |  | RGA -FINISHING | 7400985 |
| 5278 | 40100.40200.40900.52500.55600.59400.60600.370500 | **LMR(To be deleted)** | 15d | 2025-04-01 | 2025-04-15 |  | start no earlier than 2025-04-01 | RGA -FINISHING | 7392845 |
| 5279 | 40100.40200.40900.52500.55600.59400.60600.370500.2724800 | Block work | 8d | 2025-04-01 | 2025-04-08 |  | start no earlier than 2025-04-01 | RGA -FINISHING | 7401415 |
| 5280 | 40100.40200.40900.52500.55600.59400.60600.370500.2724900 | CONCEALED ELEC CONDUITING & ITS FINISHING | 7d | 2025-04-01 | 2025-04-07 |  | start no earlier than 2025-04-01 | RGA -FINISHING | 7401425 |
| 5281 | 40100.40200.40900.52500.55600.59400.60600.370500.2725000 | PLASTER APPLICATION | 15d | 2025-04-01 | 2025-04-15 |  | start no earlier than 2025-04-01 | RGA -FINISHING | 7401435 |
| 5282 | 40100.40200.40900.52500.55600.59400.60600.370500.2725100 | DOOR FRAME FIXING | 3d | 2025-04-01 | 2025-04-03 |  | start no earlier than 2025-04-01 | RGA -FINISHING | 7401445 |
| 5283 | 40100.40200.40900.52500.55600.59400.506900 | **Terrace Finishing works** | 30d | 2027-03-05 | 2027-04-03 |  | start no earlier than 2027-03-05 | RGA -FINISHING | 7392895 |
| 5284 | 40100.40200.40900.52500.55600.59400.506900.2350500 | Terrace Waterproofing work | 30d | 2027-03-05 | 2027-04-03 | 5286FS+7d |  | RGA -FINISHING | 7392915 |
| 5285 | 40100.40200.40900.52500.55600.59400.507000 | **EXTERNAL Painting** | 165d | 2026-09-14 | 2027-02-25 |  | start no earlier than 2026-09-14 | RGA -FINISHING | 7392885 |
| 5286 | 40100.40200.40900.52500.55600.59400.507000.2350600 | 2nd coat | 165d | 2026-09-14 | 2027-02-25 | 5083FS+62.5d |  | RGA -FINISHING | 7392925 |
| 5287 | 40100.40200.40900.52500.55600.58300 | **Flat internal finishing & services works** | 630.5d | 2025-05-16 | 2027-02-05 |  | start no earlier than 2025-05-16 | RGA -FINISHING | 7803372 |
| 5288 | 40100.40200.40900.52500.55600.58300.71700 | **GROUND FLOOR** | 497.5d | 2025-05-16 | 2026-09-25 |  | start no earlier than 2025-05-16 | RGA -FINISHING | 7391835 |
| 5289 | 40100.40200.40900.52500.55600.58300.71700.2350700 | TOILET DADO TILE FIXING | 10d | 2025-05-16 | 2025-05-25 | 5098 |  | RGA -FINISHING | 7393055 |
| 5290 | 40100.40200.40900.52500.55600.58300.71700.2350800 | TOILET FLOORING WORK | 7d | 2025-05-26 | 2025-06-01 | 5289 |  | RGA -FINISHING | 7393065 |
| 5291 | 40100.40200.40900.52500.55600.58300.71700.2350900 | FIRE FIGHTING | 15d | 2025-11-05 | 2025-11-19 | 5097 |  | RGA -FINISHING | 7393075 |
| 5292 | 40100.40200.40900.52500.55600.58300.71700.2351000 | INTERNAL PAINTING - PUTTY / PRIMER APPLICATION | 15d | 2025-06-25 | 2025-07-09 | 5294 |  | RGA -FINISHING | 7393085 |
| 5293 | 40100.40200.40900.52500.55600.58300.71700.2351100 | FLAT FLOORING | 11d | 2025-06-02 | 2025-06-12 | 5290 |  | RGA -FINISHING | 7393095 |
| 5294 | 40100.40200.40900.52500.55600.58300.71700.2351200 | WINDOW FIXING | 12d | 2025-06-13 | 2025-06-24 | 5293 |  | RGA -FINISHING | 7393105 |
| 5295 | 40100.40200.40900.52500.55600.58300.71700.2351300 | INTERNAL PAINTING - 1ST COAT | 12d | 2025-07-10 | 2025-07-21 | 5292 |  | RGA -FINISHING | 7393115 |
| 5296 | 40100.40200.40900.52500.55600.58300.71700.2351400 | INTERNAL DOOR FIXING | 15d | 2025-07-22 | 2025-08-05 | 5295 |  | RGA -FINISHING | 7393125 |
| 5297 | 40100.40200.40900.52500.55600.58300.71700.2351500 | WIRING & SWITCH PLATE FIXING | 8d | 2025-08-06 | 2025-08-13 | 5296 |  | RGA -FINISHING | 7393135 |
| 5298 | 40100.40200.40900.52500.55600.58300.71700.2351600 | TOILET FALSE CEILING | 7d | 2025-08-14 | 2025-08-20 | 5297 |  | RGA -FINISHING | 7393145 |
| 5299 | 40100.40200.40900.52500.55600.58300.71700.2351700 | MAIN DOOR FRAME SHUTTER FIXING | 6d | 2026-09-11 | 2026-09-17 | 5631 |  | RGA -FINISHING | 7393155 |
| 5300 | 40100.40200.40900.52500.55600.58300.71700.2351800 | FINAL COAT PAINT | 8d | 2026-09-17 | 2026-09-25 | 5299 |  | RGA -FINISHING | 7393165 |

Notes:
- 5285: Ext Plaster (in 2 phases) completion 3.5 months post last BW
- 5287: Completion in 12 months post last RCC

| ID | WBS | Task | Duration | Start | Finish | Predecessors | Constraint | Calendar | Unique_Task_ID |
| --- | --- | --- | --- | --- | --- | --- | --- | --- | --- |
| 5301 | 40100.40200.40900.52500.55600.58300.71800 | **1ST FLOOR** | 320.5d | 2025-11-21 | 2026-10-07 |  | start no earlier than 2025-11-21 | RGA -FINISHING | 7391845 |
| 5302 | 40100.40200.40900.52500.55600.58300.71800.2351900 | TOILET DADO TILE FIXING | 7d | 2025-12-20 | 2025-12-26 | 5105 |  | RGA -FINISHING | 7393175 |
| 5303 | 40100.40200.40900.52500.55600.58300.71800.2352000 | TOILET FLOORING WORK | 7d | 2025-12-20 | 2025-12-26 | 5302FF |  | RGA -FINISHING | 7393185 |
| 5304 | 40100.40200.40900.52500.55600.58300.71800.2352100 | FIRE FIGHTING | 6d | 2025-11-21 | 2025-11-26 | 5104 |  | RGA -FINISHING | 7393195 |
| 5305 | 40100.40200.40900.52500.55600.58300.71800.2352200 | INTERNAL PAINTING - PUTTY / PRIMER APPLICATION | 6d | 2026-01-13 | 2026-01-18 | 5307 |  | RGA -FINISHING | 7393205 |
| 5306 | 40100.40200.40900.52500.55600.58300.71800.2352300 | FLAT FLOORING | 5d | 2025-12-27 | 2025-12-31 | 5303 |  | RGA -FINISHING | 7393215 |
| 5307 | 40100.40200.40900.52500.55600.58300.71800.2352400 | WINDOW FIXING | 12d | 2026-01-01 | 2026-01-12 | 5306 |  | RGA -FINISHING | 7393225 |
| 5308 | 40100.40200.40900.52500.55600.58300.71800.2352500 | INTERNAL PAINTING - 1ST COAT | 12d | 2026-01-19 | 2026-01-30 | 5305 |  | RGA -FINISHING | 7393235 |
| 5309 | 40100.40200.40900.52500.55600.58300.71800.2352600 | INTERNAL DOOR FIXING | 15d | 2026-01-29 | 2026-02-12 | 5308FS-2d |  | RGA -FINISHING | 7393245 |
| 5310 | 40100.40200.40900.52500.55600.58300.71800.2352700 | WIRING & SWITCH PLATE FIXING | 8d | 2026-02-09 | 2026-02-16 | 5309FS-4d |  | RGA -FINISHING | 7393255 |
| 5311 | 40100.40200.40900.52500.55600.58300.71800.2352800 | TOILET FALSE CEILING | 7d | 2026-02-17 | 2026-02-23 | 5310 |  | RGA -FINISHING | 7393265 |
| 5312 | 40100.40200.40900.52500.55600.58300.71800.2352900 | MAIN DOOR FRAME SHUTTER FIXING | 6d | 2026-09-23 | 2026-09-29 | 5639 |  | RGA -FINISHING | 7393275 |
| 5313 | 40100.40200.40900.52500.55600.58300.71800.2353000 | FINAL COAT PAINT | 8d | 2026-09-29 | 2026-10-07 | 5312 |  | RGA -FINISHING | 7393285 |
| 5314 | 40100.40200.40900.52500.55600.58300.71900 | **2ND FLOOR** | 311.5d | 2025-11-30 | 2026-10-07 |  | start no earlier than 2025-11-30 | RGA -FINISHING | 7391855 |
| 5315 | 40100.40200.40900.52500.55600.58300.71900.2353100 | TOILET DADO TILE FIXING | 7d | 2026-01-06 | 2026-01-12 | 5112 |  | RGA -FINISHING | 7393295 |
| 5316 | 40100.40200.40900.52500.55600.58300.71900.2353200 | TOILET FLOORING WORK | 7d | 2026-01-13 | 2026-01-19 | 5315 |  | RGA -FINISHING | 7393305 |
| 5317 | 40100.40200.40900.52500.55600.58300.71900.2353300 | FIRE FIGHTING | 6d | 2025-11-30 | 2025-12-05 | 5111 |  | RGA -FINISHING | 7393315 |
| 5318 | 40100.40200.40900.52500.55600.58300.71900.2353400 | INTERNAL PAINTING - PUTTY / PRIMER APPLICATION | 6d | 2026-02-06 | 2026-02-11 | 5320 |  | RGA -FINISHING | 7393325 |
| 5319 | 40100.40200.40900.52500.55600.58300.71900.2353500 | FLAT FLOORING | 5d | 2026-01-20 | 2026-01-24 | 5316 |  | RGA -FINISHING | 7393335 |
| 5320 | 40100.40200.40900.52500.55600.58300.71900.2353600 | WINDOW FIXING | 12d | 2026-01-25 | 2026-02-05 | 5319 |  | RGA -FINISHING | 7393345 |
| 5321 | 40100.40200.40900.52500.55600.58300.71900.2353700 | INTERNAL PAINTING - 1ST COAT | 12d | 2026-02-12 | 2026-02-23 | 5318 |  | RGA -FINISHING | 7393355 |
| 5322 | 40100.40200.40900.52500.55600.58300.71900.2353800 | INTERNAL DOOR FIXING | 15d | 2026-02-22 | 2026-03-08 | 5321FS-2d |  | RGA -FINISHING | 7393365 |
| 5323 | 40100.40200.40900.52500.55600.58300.71900.2353900 | WIRING & SWITCH PLATE FIXING | 8d | 2026-03-05 | 2026-03-12 | 5322FS-4d |  | RGA -FINISHING | 7393375 |
| 5324 | 40100.40200.40900.52500.55600.58300.71900.2354000 | TOILET FALSE CEILING | 7d | 2026-03-13 | 2026-03-19 | 5323 |  | RGA -FINISHING | 7393385 |
| 5325 | 40100.40200.40900.52500.55600.58300.71900.2354100 | MAIN DOOR FRAME SHUTTER FIXING | 6d | 2026-09-23 | 2026-09-29 | 5647 |  | RGA -FINISHING | 7393395 |
| 5326 | 40100.40200.40900.52500.55600.58300.71900.2354200 | FINAL COAT PAINT | 8d | 2026-09-29 | 2026-10-07 | 5325 |  | RGA -FINISHING | 7393405 |

| ID | WBS | Task | Duration | Start | Finish | Predecessors | Constraint | Calendar | Unique_Task_ID |
| --- | --- | --- | --- | --- | --- | --- | --- | --- | --- |
| 5327 | 40100.40200.40900.52500.55600.58300.72000 | **3RD FLOOR** | 287.5d | 2025-12-24 | 2026-10-07 |  | start no earlier than 2025-12-24 | RGA -FINISHING | 7391865 |
| 5328 | 40100.40200.40900.52500.55600.58300.72000.2354300 | TOILET DADO TILE FIXING | 7d | 2026-01-15 | 2026-01-21 | 5119 |  | RGA -FINISHING | 7393415 |
| 5329 | 40100.40200.40900.52500.55600.58300.72000.2354400 | TOILET FLOORING WORK | 7d | 2026-01-22 | 2026-01-28 | 5328 |  | RGA -FINISHING | 7393425 |
| 5330 | 40100.40200.40900.52500.55600.58300.72000.2354500 | FIRE FIGHTING | 6d | 2025-12-24 | 2025-12-29 | 5118 |  | RGA -FINISHING | 7393435 |
| 5331 | 40100.40200.40900.52500.55600.58300.72000.2354600 | INTERNAL PAINTING - PUTTY / PRIMER APPLICATION | 6d | 2026-02-10 | 2026-02-15 | 5333 |  | RGA -FINISHING | 7393445 |
| 5332 | 40100.40200.40900.52500.55600.58300.72000.2354700 | FLAT FLOORING | 5d | 2026-01-29 | 2026-02-02 | 5329 |  | RGA -FINISHING | 7393455 |
| 5333 | 40100.40200.40900.52500.55600.58300.72000.2354800 | WINDOW FIXING | 7d | 2026-02-03 | 2026-02-09 | 5332 |  | RGA -FINISHING | 7393465 |
| 5334 | 40100.40200.40900.52500.55600.58300.72000.2354900 | INTERNAL PAINTING - 1ST COAT | 7d | 2026-02-16 | 2026-02-22 | 5331 |  | RGA -FINISHING | 7393475 |
| 5335 | 40100.40200.40900.52500.55600.58300.72000.2355000 | INTERNAL DOOR FIXING | 15d | 2026-02-21 | 2026-03-07 | 5334FS-2d |  | RGA -FINISHING | 7393485 |
| 5336 | 40100.40200.40900.52500.55600.58300.72000.2355100 | WIRING & SWITCH PLATE FIXING | 8d | 2026-03-04 | 2026-03-11 | 5335FS-4d |  | RGA -FINISHING | 7393495 |
| 5337 | 40100.40200.40900.52500.55600.58300.72000.2355200 | TOILET FALSE CEILING | 7d | 2026-03-12 | 2026-03-18 | 5336 |  | RGA -FINISHING | 7393505 |
| 5338 | 40100.40200.40900.52500.55600.58300.72000.2355300 | MAIN DOOR FRAME SHUTTER FIXING | 6d | 2026-09-23 | 2026-09-29 | 5655 |  | RGA -FINISHING | 7848152 |
| 5339 | 40100.40200.40900.52500.55600.58300.72000.2355400 | FINAL COAT PAINT | 8d | 2026-09-29 | 2026-10-07 | 5338 |  | RGA -FINISHING | 7393525 |
| 5340 | 40100.40200.40900.52500.55600.58300.72100 | **4TH FLOOR** | 288.5d | 2026-01-02 | 2026-10-17 |  | start no earlier than 2026-01-02 | RGA -FINISHING | 7391875 |
| 5341 | 40100.40200.40900.52500.55600.58300.72100.2355500 | TOILET DADO TILE FIXING | 7d | 2026-02-08 | 2026-02-14 | 5126 |  | RGA -FINISHING | 7393535 |
| 5342 | 40100.40200.40900.52500.55600.58300.72100.2355600 | TOILET FLOORING WORK | 7d | 2026-02-15 | 2026-02-21 | 5341 |  | RGA -FINISHING | 7393545 |
| 5343 | 40100.40200.40900.52500.55600.58300.72100.2355700 | FIRE FIGHTING | 6d | 2026-01-02 | 2026-01-07 | 5125 |  | RGA -FINISHING | 7393555 |
| 5344 | 40100.40200.40900.52500.55600.58300.72100.2355800 | INTERNAL PAINTING - PUTTY / PRIMER APPLICATION | 6d | 2026-03-06 | 2026-03-11 | 5346 |  | RGA -FINISHING | 7393565 |
| 5345 | 40100.40200.40900.52500.55600.58300.72100.2355900 | FLAT FLOORING | 5d | 2026-02-22 | 2026-02-26 | 5342 |  | RGA -FINISHING | 7393575 |
| 5346 | 40100.40200.40900.52500.55600.58300.72100.2356000 | WINDOW FIXING | 7d | 2026-02-27 | 2026-03-05 | 5345 |  | RGA -FINISHING | 7393585 |
| 5347 | 40100.40200.40900.52500.55600.58300.72100.2356100 | INTERNAL PAINTING - 1ST COAT | 7d | 2026-03-12 | 2026-03-18 | 5344 |  | RGA -FINISHING | 7393595 |
| 5348 | 40100.40200.40900.52500.55600.58300.72100.2356200 | INTERNAL DOOR FIXING | 15d | 2026-03-17 | 2026-03-31 | 5347FS-2d |  | RGA -FINISHING | 7393605 |
| 5349 | 40100.40200.40900.52500.55600.58300.72100.2356300 | WIRING & SWITCH PLATE FIXING | 8d | 2026-03-28 | 2026-04-04 | 5348FS-4d |  | RGA -FINISHING | 7393615 |
| 5350 | 40100.40200.40900.52500.55600.58300.72100.2356400 | TOILET FALSE CEILING | 7d | 2026-04-05 | 2026-04-11 | 5349 |  | RGA -FINISHING | 7393625 |
| 5351 | 40100.40200.40900.52500.55600.58300.72100.2356500 | MAIN DOOR FRAME SHUTTER FIXING | 6d | 2026-10-03 | 2026-10-09 | 5663 |  | RGA -FINISHING | 7393635 |
| 5352 | 40100.40200.40900.52500.55600.58300.72100.2356600 | FINAL COAT PAINT | 8d | 2026-10-09 | 2026-10-17 | 5351 |  | RGA -FINISHING | 7393645 |

| ID | WBS | Task | Duration | Start | Finish | Predecessors | Constraint | Calendar | Unique_Task_ID |
| --- | --- | --- | --- | --- | --- | --- | --- | --- | --- |
| 5353 | 40100.40200.40900.52500.55600.58300.72200 | **5TH FLOOR** | 279.5d | 2026-01-11 | 2026-10-17 |  | start no earlier than 2026-01-11 | RGA -FINISHING | 7391885 |
| 5354 | 40100.40200.40900.52500.55600.58300.72200.2356700 | TOILET DADO TILE FIXING | 7d | 2026-02-17 | 2026-02-23 | 5133 |  | RGA -FINISHING | 7393655 |
| 5355 | 40100.40200.40900.52500.55600.58300.72200.2356800 | TOILET FLOORING WORK | 7d | 2026-02-24 | 2026-03-02 | 5354 |  | RGA -FINISHING | 7393665 |
| 5356 | 40100.40200.40900.52500.55600.58300.72200.2356900 | FIRE FIGHTING | 6d | 2026-01-11 | 2026-01-16 | 5132 |  | RGA -FINISHING | 7393675 |
| 5357 | 40100.40200.40900.52500.55600.58300.72200.2357000 | INTERNAL PAINTING - PUTTY / PRIMER APPLICATION | 6d | 2026-03-15 | 2026-03-20 | 5359 |  | RGA -FINISHING | 7393685 |
| 5358 | 40100.40200.40900.52500.55600.58300.72200.2357100 | FLAT FLOORING | 5d | 2026-03-03 | 2026-03-07 | 5355 |  | RGA -FINISHING | 7393695 |
| 5359 | 40100.40200.40900.52500.55600.58300.72200.2357200 | WINDOW FIXING | 7d | 2026-03-08 | 2026-03-14 | 5358 |  | RGA -FINISHING | 7393705 |
| 5360 | 40100.40200.40900.52500.55600.58300.72200.2357300 | INTERNAL PAINTING - 1ST COAT | 7d | 2026-03-21 | 2026-03-27 | 5357 |  | RGA -FINISHING | 7393715 |
| 5361 | 40100.40200.40900.52500.55600.58300.72200.2357400 | INTERNAL DOOR FIXING | 15d | 2026-03-26 | 2026-04-09 | 5360FS-2d |  | RGA -FINISHING | 7393725 |
| 5362 | 40100.40200.40900.52500.55600.58300.72200.2357500 | WIRING & SWITCH PLATE FIXING | 8d | 2026-04-06 | 2026-04-13 | 5361FS-4d |  | RGA -FINISHING | 7393735 |
| 5363 | 40100.40200.40900.52500.55600.58300.72200.2357600 | TOILET FALSE CEILING | 7d | 2026-04-14 | 2026-04-20 | 5362 |  | RGA -FINISHING | 7393745 |
| 5364 | 40100.40200.40900.52500.55600.58300.72200.2357700 | MAIN DOOR FRAME SHUTTER FIXING | 6d | 2026-10-03 | 2026-10-09 | 5671 |  | RGA -FINISHING | 7393755 |
| 5365 | 40100.40200.40900.52500.55600.58300.72200.2357800 | FINAL COAT PAINT | 8d | 2026-10-09 | 2026-10-17 | 5364 |  | RGA -FINISHING | 7393765 |
| 5366 | 40100.40200.40900.52500.55600.58300.72300 | **6TH FLOOR** | 270.5d | 2026-01-20 | 2026-10-17 |  | start no earlier than 2026-01-20 | RGA -FINISHING | 7391895 |
| 5367 | 40100.40200.40900.52500.55600.58300.72300.2357900 | TOILET DADO TILE FIXING | 7d | 2026-02-26 | 2026-03-04 | 5140 |  | RGA -FINISHING | 7393775 |
| 5368 | 40100.40200.40900.52500.55600.58300.72300.2358000 | TOILET FLOORING WORK | 7d | 2026-02-26 | 2026-03-04 | 5367FF |  | RGA -FINISHING | 7393785 |
| 5369 | 40100.40200.40900.52500.55600.58300.72300.2358100 | FIRE FIGHTING | 6d | 2026-01-20 | 2026-01-25 | 5139 |  | RGA -FINISHING | 7393795 |
| 5370 | 40100.40200.40900.52500.55600.58300.72300.2358200 | INTERNAL PAINTING - PUTTY / PRIMER APPLICATION | 6d | 2026-03-22 | 2026-03-27 | 5372 |  | RGA -FINISHING | 7393805 |
| 5371 | 40100.40200.40900.52500.55600.58300.72300.2358300 | FLAT FLOORING | 5d | 2026-03-05 | 2026-03-09 | 5368 |  | RGA -FINISHING | 7393815 |
| 5372 | 40100.40200.40900.52500.55600.58300.72300.2358400 | WINDOW FIXING | 12d | 2026-03-10 | 2026-03-21 | 5371 |  | RGA -FINISHING | 7393825 |
| 5373 | 40100.40200.40900.52500.55600.58300.72300.2358500 | INTERNAL PAINTING - 1ST COAT | 12d | 2026-03-28 | 2026-04-08 | 5370 |  | RGA -FINISHING | 7393835 |
| 5374 | 40100.40200.40900.52500.55600.58300.72300.2358600 | INTERNAL DOOR FIXING | 15d | 2026-04-07 | 2026-04-21 | 5373FS-2d |  | RGA -FINISHING | 7393845 |
| 5375 | 40100.40200.40900.52500.55600.58300.72300.2358700 | WIRING & SWITCH PLATE FIXING | 8d | 2026-04-18 | 2026-04-25 | 5374FS-4d |  | RGA -FINISHING | 7393855 |
| 5376 | 40100.40200.40900.52500.55600.58300.72300.2358800 | TOILET FALSE CEILING | 7d | 2026-04-26 | 2026-05-02 | 5375 |  | RGA -FINISHING | 7393865 |
| 5377 | 40100.40200.40900.52500.55600.58300.72300.2358900 | MAIN DOOR FRAME SHUTTER FIXING | 6d | 2026-10-03 | 2026-10-09 | 5679 |  | RGA -FINISHING | 7393875 |
| 5378 | 40100.40200.40900.52500.55600.58300.72300.2359000 | FINAL COAT PAINT | 8d | 2026-10-09 | 2026-10-17 | 5377 |  | RGA -FINISHING | 7393885 |

| ID | WBS | Task | Duration | Start | Finish | Predecessors | Constraint | Calendar | Unique_Task_ID |
| --- | --- | --- | --- | --- | --- | --- | --- | --- | --- |
| 5379 | 40100.40200.40900.52500.55600.58300.72400 | **7TH FLOOR** | 284.5d | 2026-01-06 | 2026-10-17 |  | start no earlier than 2026-01-06 | RGA -FINISHING | 7391905 |
| 5380 | 40100.40200.40900.52500.55600.58300.72400.2359100 | TOILET DADO TILE FIXING | 7d | 2026-01-06 | 2026-01-12 | 5148 |  | RGA -FINISHING | 7393895 |
| 5381 | 40100.40200.40900.52500.55600.58300.72400.2359200 | TOILET FLOORING WORK | 7d | 2026-01-13 | 2026-01-19 | 5380 |  | RGA -FINISHING | 7393905 |
| 5382 | 40100.40200.40900.52500.55600.58300.72400.2359300 | FIRE FIGHTING | 6d | 2026-03-07 | 2026-03-12 | 5147 |  | RGA -FINISHING | 7393915 |
| 5383 | 40100.40200.40900.52500.55600.58300.72400.2359400 | INTERNAL PAINTING - PUTTY / PRIMER APPLICATION | 6d | 2026-02-06 | 2026-02-11 | 5385 |  | RGA -FINISHING | 7393925 |
| 5384 | 40100.40200.40900.52500.55600.58300.72400.2359500 | FLAT FLOORING | 5d | 2026-01-20 | 2026-01-24 | 5381 |  | RGA -FINISHING | 7393935 |
| 5385 | 40100.40200.40900.52500.55600.58300.72400.2359600 | WINDOW FIXING | 12d | 2026-01-25 | 2026-02-05 | 5384 |  | RGA -FINISHING | 7393945 |
| 5386 | 40100.40200.40900.52500.55600.58300.72400.2359700 | INTERNAL PAINTING - 1ST COAT | 5d | 2026-02-12 | 2026-02-16 | 5383 |  | RGA -FINISHING | 7393955 |
| 5387 | 40100.40200.40900.52500.55600.58300.72400.2359800 | INTERNAL DOOR FIXING | 15d | 2026-02-15 | 2026-03-01 | 5386FS-2d |  | RGA -FINISHING | 7393965 |
| 5388 | 40100.40200.40900.52500.55600.58300.72400.2359900 | WIRING & SWITCH PLATE FIXING | 8d | 2026-02-26 | 2026-03-05 | 5387FS-4d |  | RGA -FINISHING | 7393975 |
| 5389 | 40100.40200.40900.52500.55600.58300.72400.2360000 | TOILET FALSE CEILING | 7d | 2026-03-06 | 2026-03-12 | 5388 |  | RGA -FINISHING | 7393985 |
| 5390 | 40100.40200.40900.52500.55600.58300.72400.2360100 | MAIN DOOR FRAME SHUTTER FIXING | 6d | 2026-10-03 | 2026-10-09 | 5687 |  | RGA -FINISHING | 7393995 |
| 5391 | 40100.40200.40900.52500.55600.58300.72400.2360200 | FINAL COAT PAINT | 8d | 2026-10-09 | 2026-10-17 | 5390 |  | RGA -FINISHING | 7394005 |
| 5392 | 40100.40200.40900.52500.55600.58300.72500 | **8TH FLOOR** | 362.5d | 2026-02-08 | 2027-02-05 |  | start no earlier than 2026-02-08 | RGA -FINISHING | 7391915 |
| 5393 | 40100.40200.40900.52500.55600.58300.72500.2360300 | TOILET DADO TILE FIXING | 7d | 2026-11-26 | 2026-12-03 | 5154 |  | RGA -FINISHING | 7394015 |
| 5394 | 40100.40200.40900.52500.55600.58300.72500.2360400 | TOILET FLOORING WORK | 7d | 2026-12-03 | 2026-12-10 | 5393 |  | RGA -FINISHING | 7394025 |
| 5395 | 40100.40200.40900.52500.55600.58300.72500.2360500 | FIRE FIGHTING | 6d | 2026-02-08 | 2026-02-13 | 5153 |  | RGA -FINISHING | 7394035 |
| 5396 | 40100.40200.40900.52500.55600.58300.72500.2360600 | INTERNAL PAINTING - PUTTY / PRIMER APPLICATION | 6d | 2026-12-27 | 2027-01-02 | 5398 |  | RGA -FINISHING | 7394045 |
| 5397 | 40100.40200.40900.52500.55600.58300.72500.2360700 | FLAT FLOORING | 5d | 2026-12-10 | 2026-12-15 | 5394 |  | RGA -FINISHING | 7394055 |
| 5398 | 40100.40200.40900.52500.55600.58300.72500.2360800 | WINDOW FIXING | 12d | 2026-12-15 | 2026-12-27 | 5397 |  | RGA -FINISHING | 7394065 |
| 5399 | 40100.40200.40900.52500.55600.58300.72500.2360900 | INTERNAL PAINTING - 1ST COAT | 10d | 2027-01-02 | 2027-01-12 | 5396 |  | RGA -FINISHING | 7394075 |
| 5400 | 40100.40200.40900.52500.55600.58300.72500.2361000 | INTERNAL DOOR FIXING | 15d | 2027-01-10 | 2027-01-25 | 5399FS-2d |  | RGA -FINISHING | 7394085 |
| 5401 | 40100.40200.40900.52500.55600.58300.72500.2361100 | WIRING & SWITCH PLATE FIXING | 8d | 2027-01-21 | 2027-01-29 | 5400FS-4d |  | RGA -FINISHING | 7394095 |
| 5402 | 40100.40200.40900.52500.55600.58300.72500.2361200 | TOILET FALSE CEILING | 7d | 2027-01-29 | 2027-02-05 | 5401 |  | RGA -FINISHING | 7394105 |
| 5403 | 40100.40200.40900.52500.55600.58300.72500.2361300 | MAIN DOOR FRAME SHUTTER FIXING | 6d | 2026-10-13 | 2026-10-19 | 5695 |  | RGA -FINISHING | 7394115 |
| 5404 | 40100.40200.40900.52500.55600.58300.72500.2361400 | FINAL COAT PAINT | 8d | 2026-10-19 | 2026-10-27 | 5403 |  | RGA -FINISHING | 7394125 |

| ID | WBS | Task | Duration | Start | Finish | Predecessors | Constraint | Calendar | Unique_Task_ID |
| --- | --- | --- | --- | --- | --- | --- | --- | --- | --- |
| 5405 | 40100.40200.40900.52500.55600.58300.72600 | **9TH FLOOR** | 256.5d | 2026-02-17 | 2026-10-31 |  | start no earlier than 2026-02-17 | RGA -FINISHING | 7391925 |
| 5406 | 40100.40200.40900.52500.55600.58300.72600.2361500 | TOILET DADO TILE FIXING | 7d | 2026-03-10 | 2026-03-16 | 5161 |  | RGA -FINISHING | 7394135 |
| 5407 | 40100.40200.40900.52500.55600.58300.72600.2361600 | TOILET FLOORING WORK | 7d | 2026-03-17 | 2026-03-23 | 5406 |  | RGA -FINISHING | 7394145 |
| 5408 | 40100.40200.40900.52500.55600.58300.72600.2361700 | FIRE FIGHTING | 6d | 2026-02-17 | 2026-02-22 | 5160 |  | RGA -FINISHING | 7394155 |
| 5409 | 40100.40200.40900.52500.55600.58300.72600.2361800 | INTERNAL PAINTING - PUTTY / PRIMER APPLICATION | 6d | 2026-04-10 | 2026-04-15 | 5411 |  | RGA -FINISHING | 7394165 |
| 5410 | 40100.40200.40900.52500.55600.58300.72600.2361900 | FLAT FLOORING | 5d | 2026-03-24 | 2026-03-28 | 5407 |  | RGA -FINISHING | 7394175 |
| 5411 | 40100.40200.40900.52500.55600.58300.72600.2362000 | WINDOW FIXING | 12d | 2026-03-29 | 2026-04-09 | 5410 |  | RGA -FINISHING | 7394185 |
| 5412 | 40100.40200.40900.52500.55600.58300.72600.2362100 | INTERNAL PAINTING - 1ST COAT | 2d | 2026-04-16 | 2026-04-17 | 5409 |  | RGA -FINISHING | 7394195 |
| 5413 | 40100.40200.40900.52500.55600.58300.72600.2362200 | INTERNAL DOOR FIXING | 15d | 2026-04-16 | 2026-04-30 | 5412FS-2d |  | RGA -FINISHING | 7394205 |
| 5414 | 40100.40200.40900.52500.55600.58300.72600.2362300 | WIRING & SWITCH PLATE FIXING | 8d | 2026-04-27 | 2026-05-04 | 5413FS-4d |  | RGA -FINISHING | 7394215 |
| 5415 | 40100.40200.40900.52500.55600.58300.72600.2362400 | TOILET FALSE CEILING | 7d | 2026-05-05 | 2026-05-11 | 5414 |  | RGA -FINISHING | 7394225 |
| 5416 | 40100.40200.40900.52500.55600.58300.72600.2362500 | MAIN DOOR FRAME SHUTTER FIXING | 6d | 2026-10-13 | 2026-10-19 | 5703 |  | RGA -FINISHING | 7394235 |
| 5417 | 40100.40200.40900.52500.55600.58300.72600.2362600 | FINAL COAT PAINT | 8d | 2026-10-23 | 2026-10-31 | 5416FS+4d |  | RGA -FINISHING | 7394245 |
| 5418 | 40100.40200.40900.52500.55600.58300.72700 | **10TH FLOOR** | 243.5d | 2026-02-26 | 2026-10-27 |  | start no earlier than 2026-02-26 | RGA -FINISHING | 7391935 |
| 5419 | 40100.40200.40900.52500.55600.58300.72700.2362700 | TOILET DADO TILE FIXING | 7d | 2026-04-04 | 2026-04-10 | 5168 |  | RGA -FINISHING | 7394255 |
| 5420 | 40100.40200.40900.52500.55600.58300.72700.2362800 | TOILET FLOORING WORK | 7d | 2026-04-11 | 2026-04-17 | 5419 |  | RGA -FINISHING | 7394265 |
| 5421 | 40100.40200.40900.52500.55600.58300.72700.2362900 | FIRE FIGHTING | 6d | 2026-02-26 | 2026-03-03 | 5167 |  | RGA -FINISHING | 7394275 |
| 5422 | 40100.40200.40900.52500.55600.58300.72700.2363000 | INTERNAL PAINTING - PUTTY / PRIMER APPLICATION | 6d | 2026-05-05 | 2026-05-10 | 5424 |  | RGA -FINISHING | 7394285 |
| 5423 | 40100.40200.40900.52500.55600.58300.72700.2363100 | FLAT FLOORING | 5d | 2026-04-18 | 2026-04-22 | 5420 |  | RGA -FINISHING | 7394295 |
| 5424 | 40100.40200.40900.52500.55600.58300.72700.2363200 | WINDOW FIXING | 12d | 2026-04-23 | 2026-05-04 | 5423 |  | RGA -FINISHING | 7394305 |
| 5425 | 40100.40200.40900.52500.55600.58300.72700.2363300 | INTERNAL PAINTING - 1ST COAT | 12d | 2026-05-11 | 2026-05-22 | 5422 |  | RGA -FINISHING | 7394315 |
| 5426 | 40100.40200.40900.52500.55600.58300.72700.2363400 | INTERNAL DOOR FIXING | 15d | 2026-05-21 | 2026-06-04 | 5425FS-2d |  | RGA -FINISHING | 7394325 |
| 5427 | 40100.40200.40900.52500.55600.58300.72700.2363500 | WIRING & SWITCH PLATE FIXING | 8d | 2026-06-01 | 2026-06-08 | 5426FS-4d |  | RGA -FINISHING | 7394335 |
| 5428 | 40100.40200.40900.52500.55600.58300.72700.2363600 | TOILET FALSE CEILING | 7d | 2026-06-09 | 2026-06-15 | 5427 |  | RGA -FINISHING | 7394345 |
| 5429 | 40100.40200.40900.52500.55600.58300.72700.2363700 | MAIN DOOR FRAME SHUTTER FIXING | 6d | 2026-10-13 | 2026-10-19 | 5711 |  | RGA -FINISHING | 7394355 |
| 5430 | 40100.40200.40900.52500.55600.58300.72700.2363800 | FINAL COAT PAINT | 8d | 2026-10-19 | 2026-10-27 | 5429 |  | RGA -FINISHING | 7394365 |

| ID | WBS | Task | Duration | Start | Finish | Predecessors | Constraint | Calendar | Unique_Task_ID |
| --- | --- | --- | --- | --- | --- | --- | --- | --- | --- |
| 5431 | 40100.40200.40900.52500.55600.58300.72800 | **11TH FLOOR** | 234.5d | 2026-03-07 | 2026-10-27 |  | start no earlier than 2026-03-07 | RGA -FINISHING | 7391945 |
| 5432 | 40100.40200.40900.52500.55600.58300.72800.2363900 | TOILET DADO TILE FIXING | 7d | 2026-04-13 | 2026-04-19 | 5175 |  | RGA -FINISHING | 7394375 |
| 5433 | 40100.40200.40900.52500.55600.58300.72800.2364000 | TOILET FLOORING WORK | 7d | 2026-04-20 | 2026-04-26 | 5432 |  | RGA -FINISHING | 7394385 |
| 5434 | 40100.40200.40900.52500.55600.58300.72800.2364100 | FIRE FIGHTING | 6d | 2026-03-07 | 2026-03-12 | 5174 |  | RGA -FINISHING | 7394395 |
| 5435 | 40100.40200.40900.52500.55600.58300.72800.2364200 | INTERNAL PAINTING - PUTTY / PRIMER APPLICATION | 6d | 2026-05-14 | 2026-05-19 | 5437 |  | RGA -FINISHING | 7394405 |
| 5436 | 40100.40200.40900.52500.55600.58300.72800.2364300 | FLAT FLOORING | 5d | 2026-04-27 | 2026-05-01 | 5433 |  | RGA -FINISHING | 7394415 |
| 5437 | 40100.40200.40900.52500.55600.58300.72800.2364400 | WINDOW FIXING | 12d | 2026-05-02 | 2026-05-13 | 5436 |  | RGA -FINISHING | 7394425 |
| 5438 | 40100.40200.40900.52500.55600.58300.72800.2364500 | INTERNAL PAINTING - 1ST COAT | 12d | 2026-05-20 | 2026-05-31 | 5435 |  | RGA -FINISHING | 7394435 |
| 5439 | 40100.40200.40900.52500.55600.58300.72800.2364600 | INTERNAL DOOR FIXING | 15d | 2026-05-30 | 2026-06-13 | 5438FS-2d |  | RGA -FINISHING | 7394445 |
| 5440 | 40100.40200.40900.52500.55600.58300.72800.2364700 | WIRING & SWITCH PLATE FIXING | 8d | 2026-06-10 | 2026-06-17 | 5439FS-4d |  | RGA -FINISHING | 7394455 |
| 5441 | 40100.40200.40900.52500.55600.58300.72800.2364800 | TOILET FALSE CEILING | 7d | 2026-06-18 | 2026-06-24 | 5440 |  | RGA -FINISHING | 7394465 |
| 5442 | 40100.40200.40900.52500.55600.58300.72800.2364900 | MAIN DOOR FRAME SHUTTER FIXING | 6d | 2026-10-13 | 2026-10-19 | 5719 |  | RGA -FINISHING | 7394475 |
| 5443 | 40100.40200.40900.52500.55600.58300.72800.2365000 | FINAL COAT PAINT | 8d | 2026-10-19 | 2026-10-27 | 5442 |  | RGA -FINISHING | 7394485 |
| 5444 | 40100.40200.40900.52500.55600.58300.73000 | **12TH FLOOR** | 235.5d | 2026-03-16 | 2026-11-06 |  | start no earlier than 2026-03-16 | RGA -FINISHING | 7391955 |
| 5445 | 40100.40200.40900.52500.55600.58300.73000.2365100 | TOILET DADO TILE FIXING | 7d | 2026-04-14 | 2026-04-20 | 5182 |  | RGA -FINISHING | 7394495 |
| 5446 | 40100.40200.40900.52500.55600.58300.73000.2365200 | TOILET FLOORING WORK | 7d | 2026-04-14 | 2026-04-20 | 5445FF |  | RGA -FINISHING | 7394505 |
| 5447 | 40100.40200.40900.52500.55600.58300.73000.2365300 | FIRE FIGHTING | 6d | 2026-03-16 | 2026-03-21 | 5181 |  | RGA -FINISHING | 7394515 |
| 5448 | 40100.40200.40900.52500.55600.58300.73000.2365400 | INTERNAL PAINTING - PUTTY / PRIMER APPLICATION | 6d | 2026-05-08 | 2026-05-13 | 5450 |  | RGA -FINISHING | 7394525 |
| 5449 | 40100.40200.40900.52500.55600.58300.73000.2365500 | FLAT FLOORING | 5d | 2026-04-21 | 2026-04-25 | 5446 |  | RGA -FINISHING | 7394535 |
| 5450 | 40100.40200.40900.52500.55600.58300.73000.2365600 | WINDOW FIXING | 12d | 2026-04-26 | 2026-05-07 | 5449 |  | RGA -FINISHING | 7394545 |
| 5451 | 40100.40200.40900.52500.55600.58300.73000.2365700 | INTERNAL PAINTING - 1ST COAT | 12d | 2026-05-14 | 2026-05-25 | 5448 |  | RGA -FINISHING | 7394555 |
| 5452 | 40100.40200.40900.52500.55600.58300.73000.2365800 | INTERNAL DOOR FIXING | 15d | 2026-05-24 | 2026-06-07 | 5451FS-2d |  | RGA -FINISHING | 7394565 |
| 5453 | 40100.40200.40900.52500.55600.58300.73000.2365900 | WIRING & SWITCH PLATE FIXING | 8d | 2026-06-04 | 2026-06-11 | 5452FS-4d |  | RGA -FINISHING | 7394575 |
| 5454 | 40100.40200.40900.52500.55600.58300.73000.2366000 | TOILET FALSE CEILING | 7d | 2026-06-12 | 2026-06-18 | 5453 |  | RGA -FINISHING | 7394585 |
| 5455 | 40100.40200.40900.52500.55600.58300.73000.2366100 | MAIN DOOR FRAME SHUTTER FIXING | 6d | 2026-10-23 | 2026-10-29 | 5727 |  | RGA -FINISHING | 7394595 |
| 5456 | 40100.40200.40900.52500.55600.58300.73000.2366200 | FINAL COAT PAINT | 8d | 2026-10-29 | 2026-11-06 | 5455 |  | RGA -FINISHING | 7394605 |

| ID | WBS | Task | Duration | Start | Finish | Predecessors | Constraint | Calendar | Unique_Task_ID |
| --- | --- | --- | --- | --- | --- | --- | --- | --- | --- |
| 5457 | 40100.40200.40900.52500.55600.58300.73100 | **13TH FLOOR** | 226.5d | 2026-03-25 | 2026-11-06 |  | start no earlier than 2026-03-25 | RGA -FINISHING | 7391965 |
| 5458 | 40100.40200.40900.52500.55600.58300.73100.2366300 | TOILET DADO TILE FIXING | 10d | 2026-05-15 | 2026-05-24 | 5189 |  | RGA -FINISHING | 7394615 |
| 5459 | 40100.40200.40900.52500.55600.58300.73100.2366400 | TOILET FLOORING WORK | 7d | 2026-05-25 | 2026-05-31 | 5458 |  | RGA -FINISHING | 7394625 |
| 5460 | 40100.40200.40900.52500.55600.58300.73100.2366500 | FIRE FIGHTING | 8d | 2026-03-25 | 2026-04-01 | 5188 |  | RGA -FINISHING | 7394635 |
| 5461 | 40100.40200.40900.52500.55600.58300.73100.2366600 | INTERNAL PAINTING - PUTTY / PRIMER APPLICATION | 5d | 2026-06-13 | 2026-06-17 | 5463 |  | RGA -FINISHING | 7394645 |
| 5462 | 40100.40200.40900.52500.55600.58300.73100.2366700 | FLAT FLOORING | 7d | 2026-06-01 | 2026-06-07 | 5459 |  | RGA -FINISHING | 7394655 |
| 5463 | 40100.40200.40900.52500.55600.58300.73100.2366800 | WINDOW FIXING | 5d | 2026-06-08 | 2026-06-12 | 5462 |  | RGA -FINISHING | 7394665 |
| 5464 | 40100.40200.40900.52500.55600.58300.73100.2366900 | INTERNAL PAINTING - 1ST COAT | 4d | 2026-06-18 | 2026-06-21 | 5461 |  | RGA -FINISHING | 7394675 |
| 5465 | 40100.40200.40900.52500.55600.58300.73100.2367000 | INTERNAL DOOR FIXING | 15d | 2026-06-20 | 2026-07-04 | 5464FS-2d |  | RGA -FINISHING | 7394685 |
| 5466 | 40100.40200.40900.52500.55600.58300.73100.2367100 | WIRING & SWITCH PLATE FIXING | 8d | 2026-07-01 | 2026-07-08 | 5465FS-4d |  | RGA -FINISHING | 7394695 |
| 5467 | 40100.40200.40900.52500.55600.58300.73100.2367200 | TOILET FALSE CEILING | 7d | 2026-07-09 | 2026-07-15 | 5466 |  | RGA -FINISHING | 7394705 |
| 5468 | 40100.40200.40900.52500.55600.58300.73100.2367300 | MAIN DOOR FRAME SHUTTER FIXING | 6d | 2026-10-23 | 2026-10-29 | 5735 |  | RGA -FINISHING | 7394715 |
| 5469 | 40100.40200.40900.52500.55600.58300.73100.2367400 | FINAL COAT PAINT | 8d | 2026-10-29 | 2026-11-06 | 5468 |  | RGA -FINISHING | 7394725 |
| 5470 | 40100.40200.40900.52500.55600.58300.73200 | **14TH FLOOR** | 217.5d | 2026-04-03 | 2026-11-06 |  | start no earlier than 2026-04-03 | RGA -FINISHING | 7391975 |
| 5471 | 40100.40200.40900.52500.55600.58300.73200.2367500 | TOILET DADO TILE FIXING | 10d | 2026-05-26 | 2026-06-04 | 5196 |  | RGA -FINISHING | 7394735 |
| 5472 | 40100.40200.40900.52500.55600.58300.73200.2367600 | TOILET FLOORING WORK | 7d | 2026-06-05 | 2026-06-11 | 5471 |  | RGA -FINISHING | 7394745 |
| 5473 | 40100.40200.40900.52500.55600.58300.73200.2367700 | FIRE FIGHTING | 8d | 2026-04-03 | 2026-04-10 | 5195 |  | RGA -FINISHING | 7394755 |
| 5474 | 40100.40200.40900.52500.55600.58300.73200.2367800 | INTERNAL PAINTING - PUTTY / PRIMER APPLICATION | 5d | 2026-06-24 | 2026-06-28 | 5476 |  | RGA -FINISHING | 7394765 |
| 5475 | 40100.40200.40900.52500.55600.58300.73200.2367900 | FLAT FLOORING | 7d | 2026-06-12 | 2026-06-18 | 5472 |  | RGA -FINISHING | 7394775 |
| 5476 | 40100.40200.40900.52500.55600.58300.73200.2368000 | WINDOW FIXING | 5d | 2026-06-19 | 2026-06-23 | 5475 |  | RGA -FINISHING | 7394785 |
| 5477 | 40100.40200.40900.52500.55600.58300.73200.2368100 | INTERNAL PAINTING - 1ST COAT | 4d | 2026-06-29 | 2026-07-02 | 5474 |  | RGA -FINISHING | 7394795 |
| 5478 | 40100.40200.40900.52500.55600.58300.73200.2368200 | INTERNAL DOOR FIXING | 15d | 2026-07-01 | 2026-07-15 | 5477FS-2d |  | RGA -FINISHING | 7394805 |
| 5479 | 40100.40200.40900.52500.55600.58300.73200.2368300 | WIRING & SWITCH PLATE FIXING | 8d | 2026-07-12 | 2026-07-19 | 5478FS-4d |  | RGA -FINISHING | 7394815 |
| 5480 | 40100.40200.40900.52500.55600.58300.73200.2368400 | TOILET FALSE CEILING | 7d | 2026-07-20 | 2026-07-26 | 5479 |  | RGA -FINISHING | 7394825 |
| 5481 | 40100.40200.40900.52500.55600.58300.73200.2368500 | MAIN DOOR FRAME SHUTTER FIXING | 6d | 2026-10-23 | 2026-10-29 | 5743 |  | RGA -FINISHING | 7394835 |
| 5482 | 40100.40200.40900.52500.55600.58300.73200.2368600 | FINAL COAT PAINT | 8d | 2026-10-29 | 2026-11-06 | 5481 |  | RGA -FINISHING | 7394845 |

| ID | WBS | Task | Duration | Start | Finish | Predecessors | Constraint | Calendar | Unique_Task_ID |
| --- | --- | --- | --- | --- | --- | --- | --- | --- | --- |
| 5483 | 40100.40200.40900.52500.55600.58300.73300 | **15TH FLOOR** | 208.5d | 2026-04-12 | 2026-11-06 |  | start no earlier than 2026-04-12 | RGA -FINISHING | 7391985 |
| 5484 | 40100.40200.40900.52500.55600.58300.73300.2368700 | TOILET DADO TILE FIXING | 10d | 2026-06-04 | 2026-06-13 | 5203 |  | RGA -FINISHING | 7394855 |
| 5485 | 40100.40200.40900.52500.55600.58300.73300.2368800 | TOILET FLOORING WORK | 7d | 2026-06-14 | 2026-06-20 | 5484 |  | RGA -FINISHING | 7394865 |
| 5486 | 40100.40200.40900.52500.55600.58300.73300.2368900 | FIRE FIGHTING | 8d | 2026-04-12 | 2026-04-19 | 5202 |  | RGA -FINISHING | 7394875 |
| 5487 | 40100.40200.40900.52500.55600.58300.73300.2369000 | INTERNAL PAINTING - PUTTY / PRIMER APPLICATION | 5d | 2026-07-03 | 2026-07-07 | 5489 |  | RGA -FINISHING | 7394885 |
| 5488 | 40100.40200.40900.52500.55600.58300.73300.2369100 | FLAT FLOORING | 7d | 2026-06-21 | 2026-06-27 | 5485 |  | RGA -FINISHING | 7394895 |
| 5489 | 40100.40200.40900.52500.55600.58300.73300.2369200 | WINDOW FIXING | 5d | 2026-06-28 | 2026-07-02 | 5488 |  | RGA -FINISHING | 7394905 |
| 5490 | 40100.40200.40900.52500.55600.58300.73300.2369300 | INTERNAL PAINTING - 1ST COAT | 4d | 2026-07-08 | 2026-07-11 | 5487 |  | RGA -FINISHING | 7394915 |
| 5491 | 40100.40200.40900.52500.55600.58300.73300.2369400 | INTERNAL DOOR FIXING | 15d | 2026-07-10 | 2026-07-24 | 5490FS-2d |  | RGA -FINISHING | 7394925 |
| 5492 | 40100.40200.40900.52500.55600.58300.73300.2369500 | WIRING & SWITCH PLATE FIXING | 8d | 2026-07-21 | 2026-07-28 | 5491FS-4d |  | RGA -FINISHING | 7394935 |
| 5493 | 40100.40200.40900.52500.55600.58300.73300.2369600 | TOILET FALSE CEILING | 7d | 2026-07-29 | 2026-08-04 | 5492 |  | RGA -FINISHING | 7394945 |
| 5494 | 40100.40200.40900.52500.55600.58300.73300.2369700 | MAIN DOOR FRAME SHUTTER FIXING | 6d | 2026-10-23 | 2026-10-29 | 5751 |  | RGA -FINISHING | 7394955 |
| 5495 | 40100.40200.40900.52500.55600.58300.73300.2369800 | FINAL COAT PAINT | 8d | 2026-10-29 | 2026-11-06 | 5494 |  | RGA -FINISHING | 7394965 |
| 5496 | 40100.40200.40900.52500.55600.58300.73400 | **16TH FLOOR** | 210.5d | 2026-04-20 | 2026-11-16 |  | start no earlier than 2026-04-20 | RGA -FINISHING | 7391995 |
| 5497 | 40100.40200.40900.52500.55600.58300.73400.2369900 | TOILET DADO TILE FIXING | 10d | 2026-06-13 | 2026-06-22 | 5210 |  | RGA -FINISHING | 7394975 |
| 5498 | 40100.40200.40900.52500.55600.58300.73400.2370000 | TOILET FLOORING WORK | 7d | 2026-06-23 | 2026-06-29 | 5497 |  | RGA -FINISHING | 7394985 |
| 5499 | 40100.40200.40900.52500.55600.58300.73400.2370100 | FIRE FIGHTING | 8d | 2026-04-20 | 2026-04-27 | 5209 |  | RGA -FINISHING | 7394995 |
| 5500 | 40100.40200.40900.52500.55600.58300.73400.2370200 | INTERNAL PAINTING - PUTTY / PRIMER APPLICATION | 5d | 2026-07-12 | 2026-07-16 | 5502 |  | RGA -FINISHING | 7395005 |
| 5501 | 40100.40200.40900.52500.55600.58300.73400.2370300 | FLAT FLOORING | 7d | 2026-06-30 | 2026-07-06 | 5498 |  | RGA -FINISHING | 7395015 |
| 5502 | 40100.40200.40900.52500.55600.58300.73400.2370400 | WINDOW FIXING | 5d | 2026-07-07 | 2026-07-11 | 5501 |  | RGA -FINISHING | 7395025 |
| 5503 | 40100.40200.40900.52500.55600.58300.73400.2370500 | INTERNAL PAINTING - 1ST COAT | 4d | 2026-07-17 | 2026-07-20 | 5500 |  | RGA -FINISHING | 7395035 |
| 5504 | 40100.40200.40900.52500.55600.58300.73400.2370600 | INTERNAL DOOR FIXING | 15d | 2026-07-19 | 2026-08-02 | 5503FS-2d |  | RGA -FINISHING | 7395045 |
| 5505 | 40100.40200.40900.52500.55600.58300.73400.2370700 | WIRING & SWITCH PLATE FIXING | 8d | 2026-07-30 | 2026-08-06 | 5504FS-4d |  | RGA -FINISHING | 7395055 |
| 5506 | 40100.40200.40900.52500.55600.58300.73400.2370800 | TOILET FALSE CEILING | 7d | 2026-08-07 | 2026-08-13 | 5505 |  | RGA -FINISHING | 7395065 |
| 5507 | 40100.40200.40900.52500.55600.58300.73400.2370900 | MAIN DOOR FRAME SHUTTER FIXING | 6d | 2026-11-02 | 2026-11-08 | 5759 |  | RGA -FINISHING | 7395075 |
| 5508 | 40100.40200.40900.52500.55600.58300.73400.2371000 | FINAL COAT PAINT | 8d | 2026-11-08 | 2026-11-16 | 5507 |  | RGA -FINISHING | 7395085 |

| ID | WBS | Task | Duration | Start | Finish | Predecessors | Constraint | Calendar | Unique_Task_ID |
| --- | --- | --- | --- | --- | --- | --- | --- | --- | --- |
| 5509 | 40100.40200.40900.52500.55600.58300.73500 | **17TH FLOOR** | 198.5d | 2026-05-02 | 2026-11-16 |  | start no earlier than 2026-05-02 | RGA -FINISHING | 7392005 |
| 5510 | 40100.40200.40900.52500.55600.58300.73500.2371100 | TOILET DADO TILE FIXING | 10d | 2026-06-21 | 2026-06-30 | 5217 |  | RGA -FINISHING | 7395095 |
| 5511 | 40100.40200.40900.52500.55600.58300.73500.2371200 | TOILET FLOORING WORK | 7d | 2026-07-01 | 2026-07-07 | 5510 |  | RGA -FINISHING | 7395105 |
| 5512 | 40100.40200.40900.52500.55600.58300.73500.2371300 | FIRE FIGHTING | 8d | 2026-05-02 | 2026-05-09 | 5216 |  | RGA -FINISHING | 7395115 |
| 5513 | 40100.40200.40900.52500.55600.58300.73500.2371400 | INTERNAL PAINTING - PUTTY / PRIMER APPLICATION | 5d | 2026-07-20 | 2026-07-24 | 5515 |  | RGA -FINISHING | 7395125 |
| 5514 | 40100.40200.40900.52500.55600.58300.73500.2371500 | FLAT FLOORING | 7d | 2026-07-08 | 2026-07-14 | 5511 |  | RGA -FINISHING | 7395135 |
| 5515 | 40100.40200.40900.52500.55600.58300.73500.2371600 | WINDOW FIXING | 5d | 2026-07-15 | 2026-07-19 | 5514 |  | RGA -FINISHING | 7395145 |
| 5516 | 40100.40200.40900.52500.55600.58300.73500.2371700 | INTERNAL PAINTING - 1ST COAT | 4d | 2026-07-25 | 2026-07-28 | 5513 |  | RGA -FINISHING | 7395155 |
| 5517 | 40100.40200.40900.52500.55600.58300.73500.2371800 | INTERNAL DOOR FIXING | 15d | 2026-07-27 | 2026-08-10 | 5516FS-2d |  | RGA -FINISHING | 7395165 |
| 5518 | 40100.40200.40900.52500.55600.58300.73500.2371900 | WIRING & SWITCH PLATE FIXING | 8d | 2026-08-07 | 2026-08-14 | 5517FS-4d |  | RGA -FINISHING | 7395175 |
| 5519 | 40100.40200.40900.52500.55600.58300.73500.2372000 | TOILET FALSE CEILING | 7d | 2026-08-15 | 2026-08-21 | 5518 |  | RGA -FINISHING | 7395185 |
| 5520 | 40100.40200.40900.52500.55600.58300.73500.2372100 | MAIN DOOR FRAME SHUTTER FIXING | 6d | 2026-11-02 | 2026-11-08 | 5767 |  | RGA -FINISHING | 7395195 |
| 5521 | 40100.40200.40900.52500.55600.58300.73500.2372200 | FINAL COAT PAINT | 8d | 2026-11-08 | 2026-11-16 | 5520 |  | RGA -FINISHING | 7395205 |
| 5522 | 40100.40200.40900.52500.55600.58300.73600 | **18TH FLOOR** | 189.5d | 2026-05-11 | 2026-11-16 |  | start no earlier than 2026-05-11 | RGA -FINISHING | 7392015 |
| 5523 | 40100.40200.40900.52500.55600.58300.73600.2372300 | TOILET DADO TILE FIXING | 10d | 2026-07-03 | 2026-07-12 | 5224 |  | RGA -FINISHING | 7395215 |
| 5524 | 40100.40200.40900.52500.55600.58300.73600.2372400 | TOILET FLOORING WORK | 7d | 2026-07-13 | 2026-07-19 | 5523 |  | RGA -FINISHING | 7395225 |
| 5525 | 40100.40200.40900.52500.55600.58300.73600.2372500 | FIRE FIGHTING | 8d | 2026-05-11 | 2026-05-18 | 5223 |  | RGA -FINISHING | 7395235 |
| 5526 | 40100.40200.40900.52500.55600.58300.73600.2372600 | INTERNAL PAINTING - PUTTY / PRIMER APPLICATION | 5d | 2026-08-01 | 2026-08-05 | 5528 |  | RGA -FINISHING | 7395245 |
| 5527 | 40100.40200.40900.52500.55600.58300.73600.2372700 | FLAT FLOORING | 7d | 2026-07-20 | 2026-07-26 | 5524 |  | RGA -FINISHING | 7395255 |
| 5528 | 40100.40200.40900.52500.55600.58300.73600.2372800 | WINDOW FIXING | 5d | 2026-07-27 | 2026-07-31 | 5527 |  | RGA -FINISHING | 7395265 |
| 5529 | 40100.40200.40900.52500.55600.58300.73600.2372900 | INTERNAL PAINTING - 1ST COAT | 4d | 2026-08-06 | 2026-08-09 | 5526 |  | RGA -FINISHING | 7395275 |
| 5530 | 40100.40200.40900.52500.55600.58300.73600.2373000 | INTERNAL DOOR FIXING | 15d | 2026-08-08 | 2026-08-22 | 5529FS-2d |  | RGA -FINISHING | 7395285 |
| 5531 | 40100.40200.40900.52500.55600.58300.73600.2373100 | WIRING & SWITCH PLATE FIXING | 8d | 2026-08-19 | 2026-08-26 | 5530FS-4d |  | RGA -FINISHING | 7395295 |
| 5532 | 40100.40200.40900.52500.55600.58300.73600.2373200 | TOILET FALSE CEILING | 7d | 2026-08-27 | 2026-09-02 | 5531 |  | RGA -FINISHING | 7395305 |
| 5533 | 40100.40200.40900.52500.55600.58300.73600.2373300 | MAIN DOOR FRAME SHUTTER FIXING | 6d | 2026-11-02 | 2026-11-08 | 5775 |  | RGA -FINISHING | 7395315 |
| 5534 | 40100.40200.40900.52500.55600.58300.73600.2373400 | FINAL COAT PAINT | 8d | 2026-11-08 | 2026-11-16 | 5533 |  | RGA -FINISHING | 7395325 |

| ID | WBS | Task | Duration | Start | Finish | Predecessors | Constraint | Calendar | Unique_Task_ID |
| --- | --- | --- | --- | --- | --- | --- | --- | --- | --- |
| 5535 | 40100.40200.40900.52500.55600.58300.73700 | **19TH FLOOR** | 191.5d | 2026-05-19 | 2026-11-26 |  | start no earlier than 2026-05-19 | RGA -FINISHING | 7392025 |
| 5536 | 40100.40200.40900.52500.55600.58300.73700.2373500 | TOILET DADO TILE FIXING | 10d | 2026-07-12 | 2026-07-21 | 5231 |  | RGA -FINISHING | 7395335 |
| 5537 | 40100.40200.40900.52500.55600.58300.73700.2373600 | TOILET FLOORING WORK | 7d | 2026-07-22 | 2026-07-28 | 5536 |  | RGA -FINISHING | 7395345 |
| 5538 | 40100.40200.40900.52500.55600.58300.73700.2373700 | FIRE FIGHTING | 8d | 2026-05-19 | 2026-05-26 | 5230 |  | RGA -FINISHING | 7395355 |
| 5539 | 40100.40200.40900.52500.55600.58300.73700.2373800 | INTERNAL PAINTING - PUTTY / PRIMER APPLICATION | 5d | 2026-08-10 | 2026-08-14 | 5541 |  | RGA -FINISHING | 7395365 |
| 5540 | 40100.40200.40900.52500.55600.58300.73700.2373900 | FLAT FLOORING | 7d | 2026-07-29 | 2026-08-04 | 5537 |  | RGA -FINISHING | 7395375 |
| 5541 | 40100.40200.40900.52500.55600.58300.73700.2374000 | WINDOW FIXING | 5d | 2026-08-05 | 2026-08-09 | 5540 |  | RGA -FINISHING | 7395385 |
| 5542 | 40100.40200.40900.52500.55600.58300.73700.2374100 | INTERNAL PAINTING - 1ST COAT | 4d | 2026-08-15 | 2026-08-18 | 5539 |  | RGA -FINISHING | 7395395 |
| 5543 | 40100.40200.40900.52500.55600.58300.73700.2374200 | INTERNAL DOOR FIXING | 15d | 2026-08-17 | 2026-08-31 | 5542FS-2d |  | RGA -FINISHING | 7395405 |
| 5544 | 40100.40200.40900.52500.55600.58300.73700.2374300 | WIRING & SWITCH PLATE FIXING | 8d | 2026-08-28 | 2026-09-04 | 5543FS-4d |  | RGA -FINISHING | 7395415 |
| 5545 | 40100.40200.40900.52500.55600.58300.73700.2374400 | TOILET FALSE CEILING | 7d | 2026-09-05 | 2026-09-11 | 5544 |  | RGA -FINISHING | 7395425 |
| 5546 | 40100.40200.40900.52500.55600.58300.73700.2374500 | MAIN DOOR FRAME SHUTTER FIXING | 6d | 2026-11-12 | 2026-11-18 | 5783 |  | RGA -FINISHING | 7395435 |
| 5547 | 40100.40200.40900.52500.55600.58300.73700.2374600 | FINAL COAT PAINT | 8d | 2026-11-18 | 2026-11-26 | 5546 |  | RGA -FINISHING | 7395445 |
| 5548 | 40100.40200.40900.52500.55600.58300.73800 | **20TH FLOOR** | 183.5d | 2026-05-27 | 2026-11-26 |  | start no earlier than 2026-05-27 | RGA -FINISHING | 7392035 |
| 5549 | 40100.40200.40900.52500.55600.58300.73800.2374700 | TOILET DADO TILE FIXING | 10d | 2026-07-20 | 2026-07-29 | 5238 |  | RGA -FINISHING | 7395455 |
| 5550 | 40100.40200.40900.52500.55600.58300.73800.2374800 | TOILET FLOORING WORK | 7d | 2026-07-30 | 2026-08-05 | 5549 |  | RGA -FINISHING | 7395465 |
| 5551 | 40100.40200.40900.52500.55600.58300.73800.2374900 | FIRE FIGHTING | 8d | 2026-05-27 | 2026-06-03 | 5237 |  | RGA -FINISHING | 7395475 |
| 5552 | 40100.40200.40900.52500.55600.58300.73800.2375000 | INTERNAL PAINTING - PUTTY / PRIMER APPLICATION | 5d | 2026-08-18 | 2026-08-22 | 5554 |  | RGA -FINISHING | 7395485 |
| 5553 | 40100.40200.40900.52500.55600.58300.73800.2375100 | FLAT FLOORING | 7d | 2026-08-06 | 2026-08-12 | 5550 |  | RGA -FINISHING | 7395495 |
| 5554 | 40100.40200.40900.52500.55600.58300.73800.2375200 | WINDOW FIXING | 5d | 2026-08-13 | 2026-08-17 | 5553 |  | RGA -FINISHING | 7395505 |
| 5555 | 40100.40200.40900.52500.55600.58300.73800.2375300 | INTERNAL PAINTING - 1ST COAT | 4d | 2026-08-23 | 2026-08-26 | 5552 |  | RGA -FINISHING | 7395515 |
| 5556 | 40100.40200.40900.52500.55600.58300.73800.2375400 | INTERNAL DOOR FIXING | 15d | 2026-08-25 | 2026-09-08 | 5555FS-2d |  | RGA -FINISHING | 7395525 |
| 5557 | 40100.40200.40900.52500.55600.58300.73800.2375500 | WIRING & SWITCH PLATE FIXING | 8d | 2026-09-05 | 2026-09-12 | 5556FS-4d |  | RGA -FINISHING | 7395535 |
| 5558 | 40100.40200.40900.52500.55600.58300.73800.2375600 | TOILET FALSE CEILING | 7d | 2026-09-13 | 2026-09-19 | 5557 |  | RGA -FINISHING | 7395545 |
| 5559 | 40100.40200.40900.52500.55600.58300.73800.2375700 | MAIN DOOR FRAME SHUTTER FIXING | 6d | 2026-11-12 | 2026-11-18 | 5791 |  | RGA -FINISHING | 7395555 |
| 5560 | 40100.40200.40900.52500.55600.58300.73800.2375800 | FINAL COAT PAINT | 8d | 2026-11-18 | 2026-11-26 | 5559 |  | RGA -FINISHING | 7395565 |

| ID | WBS | Task | Duration | Start | Finish | Predecessors | Constraint | Calendar | Unique_Task_ID |
| --- | --- | --- | --- | --- | --- | --- | --- | --- | --- |
| 5561 | 40100.40200.40900.52500.55600.58300.73900 | **21st FLOOR** | 178.5d | 2026-06-11 | 2026-12-06 |  | start no earlier than 2026-06-11 | RGA -FINISHING | 7392045 |
| 5562 | 40100.40200.40900.52500.55600.58300.73900.2375900 | TOILET DADO TILE FIXING | 10d | 2026-07-28 | 2026-08-06 | 5245 |  | RGA -FINISHING | 7395575 |
| 5563 | 40100.40200.40900.52500.55600.58300.73900.2376000 | TOILET FLOORING WORK | 7d | 2026-08-07 | 2026-08-13 | 5562 |  | RGA -FINISHING | 7395585 |
| 5564 | 40100.40200.40900.52500.55600.58300.73900.2376100 | FIRE FIGHTING | 8d | 2026-06-11 | 2026-06-18 | 5244 |  | RGA -FINISHING | 7395595 |
| 5565 | 40100.40200.40900.52500.55600.58300.73900.2376200 | INTERNAL PAINTING - PUTTY / PRIMER APPLICATION | 15d | 2026-08-26 | 2026-09-09 | 5567 |  | RGA -FINISHING | 7395605 |
| 5566 | 40100.40200.40900.52500.55600.58300.73900.2376300 | FLAT FLOORING | 5d | 2026-08-14 | 2026-08-18 | 5563 |  | RGA -FINISHING | 7395615 |
| 5567 | 40100.40200.40900.52500.55600.58300.73900.2376400 | WINDOW FIXING | 7d | 2026-08-19 | 2026-08-25 | 5566 |  | RGA -FINISHING | 7395625 |
| 5568 | 40100.40200.40900.52500.55600.58300.73900.2376500 | INTERNAL PAINTING - 1ST COAT | 5d | 2026-09-10 | 2026-09-14 | 5565 |  | RGA -FINISHING | 7395635 |
| 5569 | 40100.40200.40900.52500.55600.58300.73900.2376600 | INTERNAL DOOR FIXING | 4d | 2026-09-13 | 2026-09-16 | 5568FS-2d |  | RGA -FINISHING | 7395645 |
| 5570 | 40100.40200.40900.52500.55600.58300.73900.2376700 | WIRING & SWITCH PLATE FIXING | 8d | 2026-09-13 | 2026-09-20 | 5569FS-4d |  | RGA -FINISHING | 7395655 |
| 5571 | 40100.40200.40900.52500.55600.58300.73900.2376800 | TOILET FALSE CEILING | 7d | 2026-09-21 | 2026-09-27 | 5570 |  | RGA -FINISHING | 7395665 |
| 5572 | 40100.40200.40900.52500.55600.58300.73900.2376900 | MAIN DOOR FRAME SHUTTER FIXING | 6d | 2026-11-22 | 2026-11-28 | 5799 |  | RGA -FINISHING | 7395675 |
| 5573 | 40100.40200.40900.52500.55600.58300.73900.2377000 | FINAL COAT PAINT | 8d | 2026-11-28 | 2026-12-06 | 5572 |  | RGA -FINISHING | 7395685 |
| 5574 | 40100.40200.40900.52500.55600.58300.74000 | **22nd FLOOR** | 172.5d | 2026-06-17 | 2026-12-06 |  | start no earlier than 2026-06-17 | RGA -FINISHING | 7392055 |
| 5575 | 40100.40200.40900.52500.55600.58300.74000.2377100 | TOILET DADO TILE FIXING | 10d | 2026-08-12 | 2026-08-21 | 5252 |  | RGA -FINISHING | 7395695 |
| 5576 | 40100.40200.40900.52500.55600.58300.74000.2377200 | TOILET FLOORING WORK | 7d | 2026-08-22 | 2026-08-28 | 5575 |  | RGA -FINISHING | 7395705 |
| 5577 | 40100.40200.40900.52500.55600.58300.74000.2377300 | FIRE FIGHTING | 8d | 2026-06-17 | 2026-06-24 | 5251 |  | RGA -FINISHING | 7395715 |
| 5578 | 40100.40200.40900.52500.55600.58300.74000.2377400 | INTERNAL PAINTING - PUTTY / PRIMER APPLICATION | 5d | 2026-08-31 | 2026-09-04 | 5580 |  | RGA -FINISHING | 7395725 |
| 5579 | 40100.40200.40900.52500.55600.58300.74000.2377500 | FLAT FLOORING | 7d | 2026-08-29 | 2026-09-04 | 5576 |  | RGA -FINISHING | 7395735 |
| 5580 | 40100.40200.40900.52500.55600.58300.74000.2377600 | WINDOW FIXING | 5d | 2026-08-26 | 2026-08-30 | 5567 |  | RGA -FINISHING | 7395745 |
| 5581 | 40100.40200.40900.52500.55600.58300.74000.2377700 | INTERNAL PAINTING - 1ST COAT | 4d | 2026-09-05 | 2026-09-08 | 5578 |  | RGA -FINISHING | 7395755 |
| 5582 | 40100.40200.40900.52500.55600.58300.74000.2377800 | INTERNAL DOOR FIXING | 15d | 2026-09-07 | 2026-09-21 | 5581FS-2d |  | RGA -FINISHING | 7395765 |
| 5583 | 40100.40200.40900.52500.55600.58300.74000.2377900 | WIRING & SWITCH PLATE FIXING | 8d | 2026-09-18 | 2026-09-25 | 5582FS-4d |  | RGA -FINISHING | 7395775 |
| 5584 | 40100.40200.40900.52500.55600.58300.74000.2378000 | TOILET FALSE CEILING | 7d | 2026-09-26 | 2026-10-02 | 5583 |  | RGA -FINISHING | 7395785 |
| 5585 | 40100.40200.40900.52500.55600.58300.74000.2378100 | MAIN DOOR FRAME SHUTTER FIXING | 6d | 2026-11-22 | 2026-11-28 | 5807 |  | RGA -FINISHING | 7395795 |
| 5586 | 40100.40200.40900.52500.55600.58300.74000.2378200 | FINAL COAT PAINT | 8d | 2026-11-28 | 2026-12-06 | 5585 |  | RGA -FINISHING | 7395805 |

| ID | WBS | Task | Duration | Start | Finish | Predecessors | Constraint | Calendar | Unique_Task_ID |
| --- | --- | --- | --- | --- | --- | --- | --- | --- | --- |
| 5587 | 40100.40200.40900.52500.55600.58300.74100 | **23TH FLOOR** | 165d | 2026-06-26 | 2026-12-07 |  | start no earlier than 2026-06-26 | RGA -FINISHING | 7392065 |
| 5588 | 40100.40200.40900.52500.55600.58300.74100.2378300 | TOILET DADO TILE FIXING | 10d | 2026-10-07 | 2026-10-16 | 5259 |  | RGA -FINISHING | 7395815 |
| 5589 | 40100.40200.40900.52500.55600.58300.74100.2378400 | TOILET FLOORING WORK | 7d | 2026-10-17 | 2026-10-23 | 5588 |  | RGA -FINISHING | 7395825 |
| 5590 | 40100.40200.40900.52500.55600.58300.74100.2378500 | FIRE FIGHTING | 8d | 2026-06-26 | 2026-07-03 | 5258 |  | RGA -FINISHING | 7395835 |
| 5591 | 40100.40200.40900.52500.55600.58300.74100.2378600 | INTERNAL PAINTING - PUTTY / PRIMER APPLICATION | 5d | 2026-11-05 | 2026-11-09 | 5593 |  | RGA -FINISHING | 7395845 |
| 5592 | 40100.40200.40900.52500.55600.58300.74100.2378700 | FLAT FLOORING | 7d | 2026-10-24 | 2026-10-30 | 5589 |  | RGA -FINISHING | 7395855 |
| 5593 | 40100.40200.40900.52500.55600.58300.74100.2378800 | WINDOW FIXING | 5d | 2026-10-31 | 2026-11-04 | 5592 |  | RGA -FINISHING | 7395865 |
| 5594 | 40100.40200.40900.52500.55600.58300.74100.2378900 | INTERNAL PAINTING - 1ST COAT | 4d | 2026-11-10 | 2026-11-13 | 5591 |  | RGA -FINISHING | 7395875 |
| 5595 | 40100.40200.40900.52500.55600.58300.74100.2379000 | INTERNAL DOOR FIXING | 15d | 2026-11-12 | 2026-11-26 | 5594FS-2d |  | RGA -FINISHING | 7395885 |
| 5596 | 40100.40200.40900.52500.55600.58300.74100.2379100 | WIRING & SWITCH PLATE FIXING | 8d | 2026-11-23 | 2026-11-30 | 5595FS-4d |  | RGA -FINISHING | 7395895 |
| 5597 | 40100.40200.40900.52500.55600.58300.74100.2379200 | TOILET FALSE CEILING | 7d | 2026-12-01 | 2026-12-07 | 5596 |  | RGA -FINISHING | 7395905 |
| 5598 | 40100.40200.40900.52500.55600.58300.74100.2379300 | MAIN DOOR FRAME SHUTTER FIXING | 6d | 2026-11-22 | 2026-11-28 | 5815 |  | RGA -FINISHING | 7395915 |
| 5599 | 40100.40200.40900.52500.55600.58300.74100.2379400 | FINAL COAT PAINT | 8d | 2026-11-28 | 2026-12-06 | 5598 |  | RGA -FINISHING | 7395925 |
| 5600 | 40100.40200.40900.52500.55600.58300.74200 | **24TH FLOOR** | 165d | 2026-07-05 | 2026-12-16 |  | start no earlier than 2026-07-05 | RGA -FINISHING | 7392075 |
| 5601 | 40100.40200.40900.52500.55600.58300.74200.2379500 | TOILET DADO TILE FIXING | 10d | 2026-10-16 | 2026-10-25 | 5266 |  | RGA -FINISHING | 7395935 |
| 5602 | 40100.40200.40900.52500.55600.58300.74200.2379600 | TOILET FLOORING WORK | 7d | 2026-10-26 | 2026-11-01 | 5601 |  | RGA -FINISHING | 7395945 |
| 5603 | 40100.40200.40900.52500.55600.58300.74200.2379700 | FIRE FIGHTING | 8d | 2026-07-05 | 2026-07-12 | 5265 |  | RGA -FINISHING | 7395955 |
| 5604 | 40100.40200.40900.52500.55600.58300.74200.2379800 | INTERNAL PAINTING - PUTTY / PRIMER APPLICATION | 5d | 2026-11-14 | 2026-11-18 | 5606 |  | RGA -FINISHING | 7395965 |
| 5605 | 40100.40200.40900.52500.55600.58300.74200.2379900 | FLAT FLOORING | 7d | 2026-11-02 | 2026-11-08 | 5602 |  | RGA -FINISHING | 7395975 |
| 5606 | 40100.40200.40900.52500.55600.58300.74200.2380000 | WINDOW FIXING | 5d | 2026-11-09 | 2026-11-13 | 5605 |  | RGA -FINISHING | 7395985 |
| 5607 | 40100.40200.40900.52500.55600.58300.74200.2380100 | INTERNAL PAINTING - 1ST COAT | 4d | 2026-11-19 | 2026-11-22 | 5604 |  | RGA -FINISHING | 7395995 |
| 5608 | 40100.40200.40900.52500.55600.58300.74200.2380200 | INTERNAL DOOR FIXING | 15d | 2026-11-21 | 2026-12-05 | 5607FS-2d |  | RGA -FINISHING | 7396005 |
| 5609 | 40100.40200.40900.52500.55600.58300.74200.2380300 | WIRING & SWITCH PLATE FIXING | 8d | 2026-12-02 | 2026-12-09 | 5608FS-4d |  | RGA -FINISHING | 7396015 |
| 5610 | 40100.40200.40900.52500.55600.58300.74200.2380400 | TOILET FALSE CEILING | 7d | 2026-12-10 | 2026-12-16 | 5609 |  | RGA -FINISHING | 7396025 |
| 5611 | 40100.40200.40900.52500.55600.58300.74200.2380500 | MAIN DOOR FRAME SHUTTER FIXING | 6d | 2026-11-22 | 2026-11-28 | 5823 |  | RGA -FINISHING | 7396035 |
| 5612 | 40100.40200.40900.52500.55600.58300.74200.2380600 | FINAL COAT PAINT | 8d | 2026-11-28 | 2026-12-06 | 5611 |  | RGA -FINISHING | 7396045 |

| ID | WBS | Task | Duration | Start | Finish | Predecessors | Constraint | Calendar | Unique_Task_ID |
| --- | --- | --- | --- | --- | --- | --- | --- | --- | --- |
| 5613 | 40100.40200.40900.52500.55600.58300.74300 | **25TH FLOOR** | 156d | 2026-07-14 | 2026-12-16 |  | start no earlier than 2026-07-14 | RGA -FINISHING | 7392085 |
| 5614 | 40100.40200.40900.52500.55600.58300.74300.2380700 | TOILET DADO TILE FIXING | 10d | 2026-10-16 | 2026-10-25 | 5273 |  | RGA -FINISHING | 7396055 |
| 5615 | 40100.40200.40900.52500.55600.58300.74300.2380800 | TOILET FLOORING WORK | 7d | 2026-10-26 | 2026-11-01 | 5614 |  | RGA -FINISHING | 7396065 |
| 5616 | 40100.40200.40900.52500.55600.58300.74300.2380900 | FIRE FIGHTING | 8d | 2026-07-14 | 2026-07-21 | 5272 |  | RGA -FINISHING | 7396075 |
| 5617 | 40100.40200.40900.52500.55600.58300.74300.2381000 | INTERNAL PAINTING - PUTTY / PRIMER APPLICATION | 5d | 2026-11-14 | 2026-11-18 | 5619 |  | RGA -FINISHING | 7396085 |
| 5618 | 40100.40200.40900.52500.55600.58300.74300.2381100 | FLAT FLOORING | 7d | 2026-11-02 | 2026-11-08 | 5615 |  | RGA -FINISHING | 7396095 |
| 5619 | 40100.40200.40900.52500.55600.58300.74300.2381200 | WINDOW FIXING | 5d | 2026-11-09 | 2026-11-13 | 5618 |  | RGA -FINISHING | 7396105 |
| 5620 | 40100.40200.40900.52500.55600.58300.74300.2381300 | INTERNAL PAINTING - 1ST COAT | 4d | 2026-11-19 | 2026-11-22 | 5617 |  | RGA -FINISHING | 7396115 |
| 5621 | 40100.40200.40900.52500.55600.58300.74300.2381400 | INTERNAL DOOR FIXING | 15d | 2026-11-21 | 2026-12-05 | 5620FS-2d |  | RGA -FINISHING | 7396125 |
| 5622 | 40100.40200.40900.52500.55600.58300.74300.2381500 | WIRING & SWITCH PLATE FIXING | 8d | 2026-12-02 | 2026-12-09 | 5621FS-4d |  | RGA -FINISHING | 7396135 |
| 5623 | 40100.40200.40900.52500.55600.58300.74300.2381600 | TOILET FALSE CEILING | 7d | 2026-12-10 | 2026-12-16 | 5622 |  | RGA -FINISHING | 7396145 |
| 5624 | 40100.40200.40900.52500.55600.58300.74300.2381700 | MAIN DOOR FRAME SHUTTER FIXING | 6d | 2026-12-02 | 2026-12-08 | 5831 |  | RGA -FINISHING | 7396155 |
| 5625 | 40100.40200.40900.52500.55600.58300.74300.2381800 | FINAL COAT PAINT | 8d | 2026-12-08 | 2026-12-16 | 5624 |  | RGA -FINISHING | 7396165 |
| 5626 | 40100.40200.40900.52500.55600.60400 | **LIFT LOBBY & STAIRCASE FINISHING WORK** | 399.5d | 2025-11-22 | 2026-12-26 |  | start no earlier than 2025-11-22 | RGA -FINISHING | 7391805 |
| 5627 | 40100.40200.40900.52500.55600.60400.242100 | **GROUND FLOOR** | 312.5d | 2025-11-22 | 2026-09-30 |  | start no earlier than 2025-11-22 | RGA -FINISHING | 7392215 |
| 5628 | 40100.40200.40900.52500.55600.60400.242100.2381900 | FIRE FIGHTING | 5d | 2025-11-22 | 2025-11-26 | 5304FS-5d |  | RGA -FINISHING | 7397015 |
| 5629 | 40100.40200.40900.52500.55600.60400.242100.2382000 | LIFT BLOCK WORK | 3d | 2026-07-13 | 2026-07-16 | 5083 |  | RGA -FINISHING | 7397025 |
| 5630 | 40100.40200.40900.52500.55600.60400.242100.2382100 | LIFT DADO WORK | 6d | 2026-08-28 | 2026-09-03 | 5838FS-95d |  | RGA -FINISHING | 7397035 |
| 5631 | 40100.40200.40900.52500.55600.60400.242100.2382200 | LOBBY FLOORING WORK | 8d | 2026-09-03 | 2026-09-11 | 5630 |  | RGA -FINISHING | 7397045 |
| 5632 | 40100.40200.40900.52500.55600.60400.242100.2382300 | ELECTRICAL WIRING & SWITCH PLATE FIXING WORK | 6d | 2026-09-11 | 2026-09-17 | 5631 |  | RGA -FINISHING | 7397055 |
| 5633 | 40100.40200.40900.52500.55600.60400.242100.2382400 | False ceiling & 1ST COAT PAINTING | 10d | 2026-09-17 | 2026-09-27 | 5632 |  | RGA -FINISHING | 7397065 |
| 5634 | 40100.40200.40900.52500.55600.60400.242100.2382500 | CLEANING | 3d | 2026-09-27 | 2026-09-30 | 5633 |  | RGA -FINISHING | 7397075 |
| 5635 | 40100.40200.40900.52500.55600.60400.242200 | **1ST FLOOR** | 329.5d | 2025-11-22 | 2026-10-17 |  | start no earlier than 2025-11-22 | RGA -FINISHING | 7392225 |
| 5636 | 40100.40200.40900.52500.55600.60400.242200.2382600 | FIRE FIGHTING | 10d | 2025-11-22 | 2025-12-01 | 5304FS-5d |  | RGA -FINISHING | 7397085 |
| 5637 | 40100.40200.40900.52500.55600.60400.242200.2382700 | LIFT BLOCK WORK | 3d | 2026-07-16 | 2026-07-19 | 5629 |  | RGA -FINISHING | 7397095 |
| 5638 | 40100.40200.40900.52500.55600.60400.242200.2382800 | LIFT DADO WORK | 10d | 2026-09-03 | 2026-09-13 | 5630 |  | RGA -FINISHING | 7397105 |
| 5639 | 40100.40200.40900.52500.55600.60400.242200.2382900 | LOBBY FLOORING WORK | 10d | 2026-09-13 | 2026-09-23 | 5638 |  | RGA -FINISHING | 7397115 |
| 5640 | 40100.40200.40900.52500.55600.60400.242200.2383000 | ELECTRICAL WIRING & SWITCH PLATE FIXING WORK | 6d | 2026-09-23 | 2026-09-29 | 5639 |  | RGA -FINISHING | 7397125 |
| 5641 | 40100.40200.40900.52500.55600.60400.242200.2383100 | False ceiling & 1ST COAT PAINTING | 15d | 2026-09-29 | 2026-10-14 | 5640 |  | RGA -FINISHING | 7397135 |
| 5642 | 40100.40200.40900.52500.55600.60400.242200.2383200 | CLEANING | 3d | 2026-10-14 | 2026-10-17 | 5641 |  | RGA -FINISHING | 7397145 |

Notes:
- 5626: Completion in 12 months post last RCC
- 5628: Assumed
- 5636: Assumed

| ID | WBS | Task | Duration | Start | Finish | Predecessors | Constraint | Calendar | Unique_Task_ID |
| --- | --- | --- | --- | --- | --- | --- | --- | --- | --- |
| 5643 | 40100.40200.40900.52500.55600.60400.242300 | **2nd FLOOR** | 320.5d | 2025-12-01 | 2026-10-17 |  | start no earlier than 2025-12-01 | RGA -FINISHING | 7392235 |
| 5644 | 40100.40200.40900.52500.55600.60400.242300.2383300 | FIRE FIGHTING | 10d | 2025-12-01 | 2025-12-10 | 5317FS-5d |  | RGA -FINISHING | 7397155 |
| 5645 | 40100.40200.40900.52500.55600.60400.242300.2383400 | LIFT BLOCK WORK | 3d | 2026-07-16 | 2026-07-19 | 5637SS |  | RGA -FINISHING | 7397165 |
| 5646 | 40100.40200.40900.52500.55600.60400.242300.2383500 | LIFT DADO WORK | 10d | 2026-09-03 | 2026-09-13 | 5638SS |  | RGA -FINISHING | 7397175 |
| 5647 | 40100.40200.40900.52500.55600.60400.242300.2383600 | LOBBY FLOORING WORK | 10d | 2026-09-13 | 2026-09-23 | 5646 |  | RGA -FINISHING | 7397185 |
| 5648 | 40100.40200.40900.52500.55600.60400.242300.2383700 | ELECTRICAL WIRING & SWITCH PLATE FIXING WORK | 6d | 2026-09-23 | 2026-09-29 | 5647 |  | RGA -FINISHING | 7397195 |
| 5649 | 40100.40200.40900.52500.55600.60400.242300.2383800 | False ceiling & 1ST COAT PAINTING | 15d | 2026-09-29 | 2026-10-14 | 5648 |  | RGA -FINISHING | 7397205 |
| 5650 | 40100.40200.40900.52500.55600.60400.242300.2383900 | CLEANING | 3d | 2026-10-14 | 2026-10-17 | 5649 |  | RGA -FINISHING | 7397215 |
| 5651 | 40100.40200.40900.52500.55600.60400.242400 | **3rd FLOOR** | 296.5d | 2025-12-25 | 2026-10-17 |  | start no earlier than 2025-12-25 | RGA -FINISHING | 7392275 |
| 5652 | 40100.40200.40900.52500.55600.60400.242400.2384000 | FIRE FIGHTING | 10d | 2025-12-25 | 2026-01-03 | 5330FS-5d |  | RGA -FINISHING | 7397225 |
| 5653 | 40100.40200.40900.52500.55600.60400.242400.2384100 | LIFT BLOCK WORK | 3d | 2026-07-16 | 2026-07-19 | 5645SS |  | RGA -FINISHING | 7397235 |
| 5654 | 40100.40200.40900.52500.55600.60400.242400.2384200 | LIFT DADO WORK | 10d | 2026-09-03 | 2026-09-13 | 5646SS |  | RGA -FINISHING | 7397245 |
| 5655 | 40100.40200.40900.52500.55600.60400.242400.2384300 | LOBBY FLOORING WORK | 10d | 2026-09-13 | 2026-09-23 | 5654 |  | RGA -FINISHING | 7397255 |
| 5656 | 40100.40200.40900.52500.55600.60400.242400.2384400 | ELECTRICAL WIRING & SWITCH PLATE FIXING WORK | 6d | 2026-09-23 | 2026-09-29 | 5655 |  | RGA -FINISHING | 7397265 |
| 5657 | 40100.40200.40900.52500.55600.60400.242400.2384500 | False ceiling & 1ST COAT PAINTING | 15d | 2026-09-29 | 2026-10-14 | 5656 |  | RGA -FINISHING | 7397275 |
| 5658 | 40100.40200.40900.52500.55600.60400.242400.2384600 | CLEANING | 3d | 2026-10-14 | 2026-10-17 | 5657 |  | RGA -FINISHING | 7397285 |
| 5659 | 40100.40200.40900.52500.55600.60400.242500 | **4th FLOOR** | 297.5d | 2026-01-03 | 2026-10-27 |  | start no earlier than 2026-01-03 | RGA -FINISHING | 7392325 |
| 5660 | 40100.40200.40900.52500.55600.60400.242500.2384700 | FIRE FIGHTING | 10d | 2026-01-03 | 2026-01-12 | 5343FS-5d |  | RGA -FINISHING | 7397295 |
| 5661 | 40100.40200.40900.52500.55600.60400.242500.2384800 | LIFT BLOCK WORK | 3d | 2026-07-19 | 2026-07-22 | 5653 |  | RGA -FINISHING | 7397305 |
| 5662 | 40100.40200.40900.52500.55600.60400.242500.2384900 | LIFT DADO WORK | 10d | 2026-09-13 | 2026-09-23 | 5654 |  | RGA -FINISHING | 7397315 |
| 5663 | 40100.40200.40900.52500.55600.60400.242500.2385000 | LOBBY FLOORING WORK | 10d | 2026-09-23 | 2026-10-03 | 5662 |  | RGA -FINISHING | 7397325 |
| 5664 | 40100.40200.40900.52500.55600.60400.242500.2385100 | ELECTRICAL WIRING & SWITCH PLATE FIXING WORK | 6d | 2026-10-03 | 2026-10-09 | 5663 |  | RGA -FINISHING | 7397335 |
| 5665 | 40100.40200.40900.52500.55600.60400.242500.2385200 | False ceiling & 1ST COAT PAINTING | 15d | 2026-10-09 | 2026-10-24 | 5664 |  | RGA -FINISHING | 7397345 |
| 5666 | 40100.40200.40900.52500.55600.60400.242500.2385300 | CLEANING | 3d | 2026-10-24 | 2026-10-27 | 5665 |  | RGA -FINISHING | 7397355 |

Notes:
- 5644: Assumed
- 5652: Assumed
- 5660: Assumed

| ID | WBS | Task | Duration | Start | Finish | Predecessors | Constraint | Calendar | Unique_Task_ID |
| --- | --- | --- | --- | --- | --- | --- | --- | --- | --- |
| 5667 | 40100.40200.40900.52500.55600.60400.242600 | **5th FLOOR** | 288.5d | 2026-01-12 | 2026-10-27 |  | start no earlier than 2026-01-12 | RGA -FINISHING | 7392385 |
| 5668 | 40100.40200.40900.52500.55600.60400.242600.2385400 | FIRE FIGHTING | 10d | 2026-01-12 | 2026-01-21 | 5356FS-5d |  | RGA -FINISHING | 7397365 |
| 5669 | 40100.40200.40900.52500.55600.60400.242600.2385500 | LIFT BLOCK WORK | 3d | 2026-07-19 | 2026-07-22 | 5661SS |  | RGA -FINISHING | 7397375 |
| 5670 | 40100.40200.40900.52500.55600.60400.242600.2385600 | LIFT DADO WORK | 10d | 2026-09-13 | 2026-09-23 | 5662SS |  | RGA -FINISHING | 7397385 |
| 5671 | 40100.40200.40900.52500.55600.60400.242600.2385700 | LOBBY FLOORING WORK | 10d | 2026-09-23 | 2026-10-03 | 5670 |  | RGA -FINISHING | 7397395 |
| 5672 | 40100.40200.40900.52500.55600.60400.242600.2385800 | ELECTRICAL WIRING & SWITCH PLATE FIXING WORK | 6d | 2026-10-03 | 2026-10-09 | 5671 |  | RGA -FINISHING | 7397405 |
| 5673 | 40100.40200.40900.52500.55600.60400.242600.2385900 | False ceiling & 1ST COAT PAINTING | 15d | 2026-10-09 | 2026-10-24 | 5672 |  | RGA -FINISHING | 7397415 |
| 5674 | 40100.40200.40900.52500.55600.60400.242600.2386000 | CLEANING | 3d | 2026-10-24 | 2026-10-27 | 5673 |  | RGA -FINISHING | 7397425 |
| 5675 | 40100.40200.40900.52500.55600.60400.242700 | **6th FLOOR** | 279.5d | 2026-01-21 | 2026-10-27 |  | start no earlier than 2026-01-21 | RGA -FINISHING | 7392455 |
| 5676 | 40100.40200.40900.52500.55600.60400.242700.2386100 | FIRE FIGHTING | 10d | 2026-01-21 | 2026-01-30 | 5369FS-5d |  | RGA -FINISHING | 7397435 |
| 5677 | 40100.40200.40900.52500.55600.60400.242700.2386200 | LIFT BLOCK WORK | 3d | 2026-07-19 | 2026-07-22 | 5669SS |  | RGA -FINISHING | 7397445 |
| 5678 | 40100.40200.40900.52500.55600.60400.242700.2386300 | LIFT DADO WORK | 10d | 2026-09-13 | 2026-09-23 | 5670SS |  | RGA -FINISHING | 7397455 |
| 5679 | 40100.40200.40900.52500.55600.60400.242700.2386400 | LOBBY FLOORING WORK | 10d | 2026-09-23 | 2026-10-03 | 5678 |  | RGA -FINISHING | 7397465 |
| 5680 | 40100.40200.40900.52500.55600.60400.242700.2386500 | ELECTRICAL WIRING & SWITCH PLATE FIXING WORK | 6d | 2026-10-03 | 2026-10-09 | 5679 |  | RGA -FINISHING | 7397475 |
| 5681 | 40100.40200.40900.52500.55600.60400.242700.2386600 | False ceiling & 1ST COAT PAINTING | 15d | 2026-10-09 | 2026-10-24 | 5680 |  | RGA -FINISHING | 7397485 |
| 5682 | 40100.40200.40900.52500.55600.60400.242700.2386700 | CLEANING | 3d | 2026-10-24 | 2026-10-27 | 5681 |  | RGA -FINISHING | 7397495 |
| 5683 | 40100.40200.40900.52500.55600.60400.242800 | **7th FLOOR** | 233.5d | 2026-03-08 | 2026-10-27 |  | start no earlier than 2026-03-08 | RGA -FINISHING | 7392495 |
| 5684 | 40100.40200.40900.52500.55600.60400.242800.2386800 | FIRE FIGHTING | 10d | 2026-03-08 | 2026-03-17 | 5382FS-5d |  | RGA -FINISHING | 7397505 |
| 5685 | 40100.40200.40900.52500.55600.60400.242800.2386900 | LIFT BLOCK WORK | 3d | 2026-07-19 | 2026-07-22 | 5677SS |  | RGA -FINISHING | 7397515 |
| 5686 | 40100.40200.40900.52500.55600.60400.242800.2387000 | LIFT DADO WORK | 10d | 2026-09-13 | 2026-09-23 | 5678SS |  | RGA -FINISHING | 7397525 |
| 5687 | 40100.40200.40900.52500.55600.60400.242800.2387100 | LOBBY FLOORING WORK | 10d | 2026-09-23 | 2026-10-03 | 5686 |  | RGA -FINISHING | 7397535 |
| 5688 | 40100.40200.40900.52500.55600.60400.242800.2387200 | ELECTRICAL WIRING & SWITCH PLATE FIXING WORK | 6d | 2026-10-03 | 2026-10-09 | 5687 |  | RGA -FINISHING | 7397545 |
| 5689 | 40100.40200.40900.52500.55600.60400.242800.2387300 | False ceiling & 1ST COAT PAINTING | 15d | 2026-10-09 | 2026-10-24 | 5688 |  | RGA -FINISHING | 7397555 |
| 5690 | 40100.40200.40900.52500.55600.60400.242800.2387400 | CLEANING | 3d | 2026-10-24 | 2026-10-27 | 5689 |  | RGA -FINISHING | 7397565 |

Notes:
- 5668: Assumed
- 5676: Assumed
- 5684: Assumed

| ID | WBS | Task | Duration | Start | Finish | Predecessors | Constraint | Calendar | Unique_Task_ID |
| --- | --- | --- | --- | --- | --- | --- | --- | --- | --- |
| 5691 | 40100.40200.40900.52500.55600.60400.242900 | **8th FLOOR** | 270.5d | 2026-02-09 | 2026-11-06 |  | start no earlier than 2026-02-09 | RGA -FINISHING | 7392255 |
| 5692 | 40100.40200.40900.52500.55600.60400.242900.2387500 | FIRE FIGHTING | 10d | 2026-02-09 | 2026-02-18 | 5395FS-5d |  | RGA -FINISHING | 7397575 |
| 5693 | 40100.40200.40900.52500.55600.60400.242900.2387600 | LIFT BLOCK WORK | 3d | 2026-07-22 | 2026-07-25 | 5685 |  | RGA -FINISHING | 7397585 |
| 5694 | 40100.40200.40900.52500.55600.60400.242900.2387700 | LIFT DADO WORK | 10d | 2026-09-23 | 2026-10-03 | 5686 |  | RGA -FINISHING | 7397595 |
| 5695 | 40100.40200.40900.52500.55600.60400.242900.2387800 | LOBBY FLOORING WORK | 10d | 2026-10-03 | 2026-10-13 | 5694 |  | RGA -FINISHING | 7397605 |
| 5696 | 40100.40200.40900.52500.55600.60400.242900.2387900 | ELECTRICAL WIRING & SWITCH PLATE FIXING WORK | 6d | 2026-10-13 | 2026-10-19 | 5695 |  | RGA -FINISHING | 7397615 |
| 5697 | 40100.40200.40900.52500.55600.60400.242900.2388000 | False ceiling & 1ST COAT PAINTING | 15d | 2026-10-19 | 2026-11-03 | 5696 |  | RGA -FINISHING | 7397625 |
| 5698 | 40100.40200.40900.52500.55600.60400.242900.2388100 | CLEANING | 3d | 2026-11-03 | 2026-11-06 | 5697 |  | RGA -FINISHING | 7397635 |
| 5699 | 40100.40200.40900.52500.55600.60400.243000 | **9th FLOOR** | 261.5d | 2026-02-18 | 2026-11-06 |  | start no earlier than 2026-02-18 | RGA -FINISHING | 7392265 |
| 5700 | 40100.40200.40900.52500.55600.60400.243000.2388200 | FIRE FIGHTING | 10d | 2026-02-18 | 2026-02-27 | 5408FS-5d |  | RGA -FINISHING | 7397645 |
| 5701 | 40100.40200.40900.52500.55600.60400.243000.2388300 | LIFT BLOCK WORK | 3d | 2026-07-22 | 2026-07-25 | 5693SS |  | RGA -FINISHING | 7397655 |
| 5702 | 40100.40200.40900.52500.55600.60400.243000.2388400 | LIFT DADO WORK | 10d | 2026-09-23 | 2026-10-03 | 5694SS |  | RGA -FINISHING | 7397665 |
| 5703 | 40100.40200.40900.52500.55600.60400.243000.2388500 | LOBBY FLOORING WORK | 10d | 2026-10-03 | 2026-10-13 | 5702 |  | RGA -FINISHING | 7397675 |
| 5704 | 40100.40200.40900.52500.55600.60400.243000.2388600 | ELECTRICAL WIRING & SWITCH PLATE FIXING WORK | 6d | 2026-10-13 | 2026-10-19 | 5703 |  | RGA -FINISHING | 7397685 |
| 5705 | 40100.40200.40900.52500.55600.60400.243000.2388700 | False ceiling & 1ST COAT PAINTING | 15d | 2026-10-19 | 2026-11-03 | 5704 |  | RGA -FINISHING | 7397695 |
| 5706 | 40100.40200.40900.52500.55600.60400.243000.2388800 | CLEANING | 3d | 2026-11-03 | 2026-11-06 | 5705 |  | RGA -FINISHING | 7397705 |
| 5707 | 40100.40200.40900.52500.55600.60400.243100 | **10th FLOOR** | 252.5d | 2026-02-27 | 2026-11-06 |  | start no earlier than 2026-02-27 | RGA -FINISHING | 7392285 |
| 5708 | 40100.40200.40900.52500.55600.60400.243100.2388900 | FIRE FIGHTING | 10d | 2026-02-27 | 2026-03-08 | 5421FS-5d |  | RGA -FINISHING | 7397715 |
| 5709 | 40100.40200.40900.52500.55600.60400.243100.2389000 | LIFT BLOCK WORK | 3d | 2026-07-22 | 2026-07-25 | 5701SS |  | RGA -FINISHING | 7397725 |
| 5710 | 40100.40200.40900.52500.55600.60400.243100.2389100 | LIFT DADO WORK | 10d | 2026-09-23 | 2026-10-03 | 5702SS |  | RGA -FINISHING | 7397735 |
| 5711 | 40100.40200.40900.52500.55600.60400.243100.2389200 | LOBBY FLOORING WORK | 10d | 2026-10-03 | 2026-10-13 | 5710 |  | RGA -FINISHING | 7397745 |
| 5712 | 40100.40200.40900.52500.55600.60400.243100.2389300 | ELECTRICAL WIRING & SWITCH PLATE FIXING WORK | 6d | 2026-10-13 | 2026-10-19 | 5711 |  | RGA -FINISHING | 7397755 |
| 5713 | 40100.40200.40900.52500.55600.60400.243100.2389400 | False ceiling & 1ST COAT PAINTING | 15d | 2026-10-19 | 2026-11-03 | 5712 |  | RGA -FINISHING | 7397765 |
| 5714 | 40100.40200.40900.52500.55600.60400.243100.2389500 | CLEANING | 3d | 2026-11-03 | 2026-11-06 | 5713 |  | RGA -FINISHING | 7397775 |

Notes:
- 5692: Assumed
- 5700: Assumed
- 5708: Assumed

| ID | WBS | Task | Duration | Start | Finish | Predecessors | Constraint | Calendar | Unique_Task_ID |
| --- | --- | --- | --- | --- | --- | --- | --- | --- | --- |
| 5715 | 40100.40200.40900.52500.55600.60400.243200 | **11th FLOOR** | 243.5d | 2026-03-08 | 2026-11-06 |  | start no earlier than 2026-03-08 | RGA -FINISHING | 7392295 |
| 5716 | 40100.40200.40900.52500.55600.60400.243200.2389600 | FIRE FIGHTING | 10d | 2026-03-08 | 2026-03-17 | 5434FS-5d |  | RGA -FINISHING | 7397785 |
| 5717 | 40100.40200.40900.52500.55600.60400.243200.2389700 | LIFT BLOCK WORK | 3d | 2026-07-22 | 2026-07-25 | 5709SS |  | RGA -FINISHING | 7397795 |
| 5718 | 40100.40200.40900.52500.55600.60400.243200.2389800 | LIFT DADO WORK | 10d | 2026-09-23 | 2026-10-03 | 5710SS |  | RGA -FINISHING | 7397805 |
| 5719 | 40100.40200.40900.52500.55600.60400.243200.2389900 | LOBBY FLOORING WORK | 10d | 2026-10-03 | 2026-10-13 | 5718 |  | RGA -FINISHING | 7397815 |
| 5720 | 40100.40200.40900.52500.55600.60400.243200.2390000 | ELECTRICAL WIRING & SWITCH PLATE FIXING WORK | 6d | 2026-10-13 | 2026-10-19 | 5719 |  | RGA -FINISHING | 7397825 |
| 5721 | 40100.40200.40900.52500.55600.60400.243200.2390100 | False ceiling & 1ST COAT PAINTING | 15d | 2026-10-19 | 2026-11-03 | 5720 |  | RGA -FINISHING | 7397835 |
| 5722 | 40100.40200.40900.52500.55600.60400.243200.2390200 | CLEANING | 3d | 2026-11-03 | 2026-11-06 | 5721 |  | RGA -FINISHING | 7397845 |
| 5723 | 40100.40200.40900.52500.55600.60400.243300 | **12th FLOOR** | 244.5d | 2026-03-17 | 2026-11-16 |  | start no earlier than 2026-03-17 | RGA -FINISHING | 7392305 |
| 5724 | 40100.40200.40900.52500.55600.60400.243300.2390300 | FIRE FIGHTING | 10d | 2026-03-17 | 2026-03-26 | 5447FS-5d |  | RGA -FINISHING | 7397855 |
| 5725 | 40100.40200.40900.52500.55600.60400.243300.2390400 | LIFT BLOCK WORK | 3d | 2026-07-25 | 2026-07-28 | 5717 |  | RGA -FINISHING | 7397865 |
| 5726 | 40100.40200.40900.52500.55600.60400.243300.2390500 | LIFT DADO WORK | 10d | 2026-10-03 | 2026-10-13 | 5718 |  | RGA -FINISHING | 7397875 |
| 5727 | 40100.40200.40900.52500.55600.60400.243300.2390600 | LOBBY FLOORING WORK | 10d | 2026-10-13 | 2026-10-23 | 5726 |  | RGA -FINISHING | 7397885 |
| 5728 | 40100.40200.40900.52500.55600.60400.243300.2390700 | ELECTRICAL WIRING & SWITCH PLATE FIXING WORK | 6d | 2026-10-23 | 2026-10-29 | 5727 |  | RGA -FINISHING | 7397895 |
| 5729 | 40100.40200.40900.52500.55600.60400.243300.2390800 | False ceiling & 1ST COAT PAINTING | 15d | 2026-10-29 | 2026-11-13 | 5728 |  | RGA -FINISHING | 7397905 |
| 5730 | 40100.40200.40900.52500.55600.60400.243300.2390900 | CLEANING | 3d | 2026-11-13 | 2026-11-16 | 5729 |  | RGA -FINISHING | 7397915 |
| 5731 | 40100.40200.40900.52500.55600.60400.243400 | **13th FLOOR** | 233.5d | 2026-03-28 | 2026-11-16 |  | start no earlier than 2026-03-28 | RGA -FINISHING | 7392315 |
| 5732 | 40100.40200.40900.52500.55600.60400.243400.2391000 | FIRE FIGHTING | 10d | 2026-03-28 | 2026-04-06 | 5460FS-5d |  | RGA -FINISHING | 7397925 |
| 5733 | 40100.40200.40900.52500.55600.60400.243400.2391100 | LIFT BLOCK WORK | 3d | 2026-07-25 | 2026-07-28 | 5725SS |  | RGA -FINISHING | 7397935 |
| 5734 | 40100.40200.40900.52500.55600.60400.243400.2391200 | LIFT DADO WORK | 10d | 2026-10-03 | 2026-10-13 | 5726SS |  | RGA -FINISHING | 7397945 |
| 5735 | 40100.40200.40900.52500.55600.60400.243400.2391300 | LOBBY FLOORING WORK | 10d | 2026-10-13 | 2026-10-23 | 5734 |  | RGA -FINISHING | 7397955 |
| 5736 | 40100.40200.40900.52500.55600.60400.243400.2391400 | ELECTRICAL WIRING & SWITCH PLATE FIXING WORK | 6d | 2026-10-23 | 2026-10-29 | 5735 |  | RGA -FINISHING | 7397965 |
| 5737 | 40100.40200.40900.52500.55600.60400.243400.2391500 | False ceiling & 1ST COAT PAINTING | 15d | 2026-10-29 | 2026-11-13 | 5736 |  | RGA -FINISHING | 7397975 |
| 5738 | 40100.40200.40900.52500.55600.60400.243400.2391600 | CLEANING | 3d | 2026-11-13 | 2026-11-16 | 5737 |  | RGA -FINISHING | 7397985 |

Notes:
- 5716: Assumed
- 5724: Assumed
- 5732: Assumed

| ID | WBS | Task | Duration | Start | Finish | Predecessors | Constraint | Calendar | Unique_Task_ID |
| --- | --- | --- | --- | --- | --- | --- | --- | --- | --- |
| 5739 | 40100.40200.40900.52500.55600.60400.243500 | **14th FLOOR** | 224.5d | 2026-04-06 | 2026-11-16 |  | start no earlier than 2026-04-06 | RGA -FINISHING | 7392345 |
| 5740 | 40100.40200.40900.52500.55600.60400.243500.2391700 | FIRE FIGHTING | 10d | 2026-04-06 | 2026-04-15 | 5473FS-5d |  | RGA -FINISHING | 7397995 |
| 5741 | 40100.40200.40900.52500.55600.60400.243500.2391800 | LIFT BLOCK WORK | 3d | 2026-07-25 | 2026-07-28 | 5733SS |  | RGA -FINISHING | 7398005 |
| 5742 | 40100.40200.40900.52500.55600.60400.243500.2391900 | LIFT DADO WORK | 10d | 2026-10-03 | 2026-10-13 | 5734SS |  | RGA -FINISHING | 7398015 |
| 5743 | 40100.40200.40900.52500.55600.60400.243500.2392000 | LOBBY FLOORING WORK | 10d | 2026-10-13 | 2026-10-23 | 5742 |  | RGA -FINISHING | 7398025 |
| 5744 | 40100.40200.40900.52500.55600.60400.243500.2392100 | ELECTRICAL WIRING & SWITCH PLATE FIXING WORK | 6d | 2026-10-23 | 2026-10-29 | 5743 |  | RGA -FINISHING | 7398035 |
| 5745 | 40100.40200.40900.52500.55600.60400.243500.2392200 | False ceiling & 1ST COAT PAINTING | 15d | 2026-10-29 | 2026-11-13 | 5744 |  | RGA -FINISHING | 7398045 |
| 5746 | 40100.40200.40900.52500.55600.60400.243500.2392300 | CLEANING | 3d | 2026-11-13 | 2026-11-16 | 5745 |  | RGA -FINISHING | 7398055 |
| 5747 | 40100.40200.40900.52500.55600.60400.243600 | **15th FLOOR** | 215.5d | 2026-04-15 | 2026-11-16 |  | start no earlier than 2026-04-15 | RGA -FINISHING | 7392355 |
| 5748 | 40100.40200.40900.52500.55600.60400.243600.2392400 | FIRE FIGHTING | 10d | 2026-04-15 | 2026-04-24 | 5486FS-5d |  | RGA -FINISHING | 7398065 |
| 5749 | 40100.40200.40900.52500.55600.60400.243600.2392500 | LIFT BLOCK WORK | 3d | 2026-07-25 | 2026-07-28 | 5741SS |  | RGA -FINISHING | 7398075 |
| 5750 | 40100.40200.40900.52500.55600.60400.243600.2392600 | LIFT DADO WORK | 10d | 2026-10-03 | 2026-10-13 | 5742SS |  | RGA -FINISHING | 7398085 |
| 5751 | 40100.40200.40900.52500.55600.60400.243600.2392700 | LOBBY FLOORING WORK | 10d | 2026-10-13 | 2026-10-23 | 5750 |  | RGA -FINISHING | 7398095 |
| 5752 | 40100.40200.40900.52500.55600.60400.243600.2392800 | ELECTRICAL WIRING & SWITCH PLATE FIXING WORK | 6d | 2026-10-23 | 2026-10-29 | 5751 |  | RGA -FINISHING | 7398105 |
| 5753 | 40100.40200.40900.52500.55600.60400.243600.2392900 | False ceiling & 1ST COAT PAINTING | 15d | 2026-10-29 | 2026-11-13 | 5752 |  | RGA -FINISHING | 7398115 |
| 5754 | 40100.40200.40900.52500.55600.60400.243600.2393000 | CLEANING | 3d | 2026-11-13 | 2026-11-16 | 5753 |  | RGA -FINISHING | 7398125 |
| 5755 | 40100.40200.40900.52500.55600.60400.243700 | **16th FLOOR** | 217.5d | 2026-04-23 | 2026-11-26 |  | start no earlier than 2026-04-23 | RGA -FINISHING | 7392365 |
| 5756 | 40100.40200.40900.52500.55600.60400.243700.2393100 | FIRE FIGHTING | 10d | 2026-04-23 | 2026-05-02 | 5499FS-5d |  | RGA -FINISHING | 7398135 |
| 5757 | 40100.40200.40900.52500.55600.60400.243700.2393200 | LIFT BLOCK WORK | 3d | 2026-07-28 | 2026-07-31 | 5749 |  | RGA -FINISHING | 7398145 |
| 5758 | 40100.40200.40900.52500.55600.60400.243700.2393300 | LIFT DADO WORK | 10d | 2026-10-13 | 2026-10-23 | 5750 |  | RGA -FINISHING | 7398155 |
| 5759 | 40100.40200.40900.52500.55600.60400.243700.2393400 | LOBBY FLOORING WORK | 10d | 2026-10-23 | 2026-11-02 | 5758 |  | RGA -FINISHING | 7398165 |
| 5760 | 40100.40200.40900.52500.55600.60400.243700.2393500 | ELECTRICAL WIRING & SWITCH PLATE FIXING WORK | 6d | 2026-11-02 | 2026-11-08 | 5759 |  | RGA -FINISHING | 7398175 |
| 5761 | 40100.40200.40900.52500.55600.60400.243700.2393600 | False ceiling & 1ST COAT PAINTING | 15d | 2026-11-08 | 2026-11-23 | 5760 |  | RGA -FINISHING | 7398185 |
| 5762 | 40100.40200.40900.52500.55600.60400.243700.2393700 | CLEANING | 3d | 2026-11-23 | 2026-11-26 | 5761 |  | RGA -FINISHING | 7398195 |

Notes:
- 5740: Assumed
- 5748: Assumed
- 5756: Assumed

| ID | WBS | Task | Duration | Start | Finish | Predecessors | Constraint | Calendar | Unique_Task_ID |
| --- | --- | --- | --- | --- | --- | --- | --- | --- | --- |
| 5763 | 40100.40200.40900.52500.55600.60400.243800 | **17th FLOOR** | 205.5d | 2026-05-05 | 2026-11-26 |  | start no earlier than 2026-05-05 | RGA -FINISHING | 7392375 |
| 5764 | 40100.40200.40900.52500.55600.60400.243800.2393800 | FIRE FIGHTING | 10d | 2026-05-05 | 2026-05-14 | 5512FS-5d |  | RGA -FINISHING | 7398205 |
| 5765 | 40100.40200.40900.52500.55600.60400.243800.2393900 | LIFT BLOCK WORK | 3d | 2026-07-28 | 2026-07-31 | 5757SS |  | RGA -FINISHING | 7398215 |
| 5766 | 40100.40200.40900.52500.55600.60400.243800.2394000 | LIFT DADO WORK | 10d | 2026-10-13 | 2026-10-23 | 5758SS |  | RGA -FINISHING | 7398225 |
| 5767 | 40100.40200.40900.52500.55600.60400.243800.2394100 | LOBBY FLOORING WORK | 10d | 2026-10-23 | 2026-11-02 | 5766 |  | RGA -FINISHING | 7398235 |
| 5768 | 40100.40200.40900.52500.55600.60400.243800.2394200 | ELECTRICAL WIRING & SWITCH PLATE FIXING WORK | 6d | 2026-11-02 | 2026-11-08 | 5767 |  | RGA -FINISHING | 7398245 |
| 5769 | 40100.40200.40900.52500.55600.60400.243800.2394300 | False ceiling & 1ST COAT PAINTING | 15d | 2026-11-08 | 2026-11-23 | 5768 |  | RGA -FINISHING | 7398255 |
| 5770 | 40100.40200.40900.52500.55600.60400.243800.2394400 | CLEANING | 3d | 2026-11-23 | 2026-11-26 | 5769 |  | RGA -FINISHING | 7398265 |
| 5771 | 40100.40200.40900.52500.55600.60400.243900 | **18th FLOOR** | 196.5d | 2026-05-14 | 2026-11-26 |  | start no earlier than 2026-05-14 | RGA -FINISHING | 7392395 |
| 5772 | 40100.40200.40900.52500.55600.60400.243900.2394500 | FIRE FIGHTING | 10d | 2026-05-14 | 2026-05-23 | 5525FS-5d |  | RGA -FINISHING | 7398275 |
| 5773 | 40100.40200.40900.52500.55600.60400.243900.2394600 | LIFT BLOCK WORK | 3d | 2026-07-28 | 2026-07-31 | 5765SS |  | RGA -FINISHING | 7398285 |
| 5774 | 40100.40200.40900.52500.55600.60400.243900.2394700 | LIFT DADO WORK | 10d | 2026-10-13 | 2026-10-23 | 5766SS |  | RGA -FINISHING | 7398295 |
| 5775 | 40100.40200.40900.52500.55600.60400.243900.2394800 | LOBBY FLOORING WORK | 10d | 2026-10-23 | 2026-11-02 | 5774 |  | RGA -FINISHING | 7398305 |
| 5776 | 40100.40200.40900.52500.55600.60400.243900.2394900 | ELECTRICAL WIRING & SWITCH PLATE FIXING WORK | 6d | 2026-11-02 | 2026-11-08 | 5775 |  | RGA -FINISHING | 7398315 |
| 5777 | 40100.40200.40900.52500.55600.60400.243900.2395000 | False ceiling & 1ST COAT PAINTING | 15d | 2026-11-08 | 2026-11-23 | 5776 |  | RGA -FINISHING | 7398325 |
| 5778 | 40100.40200.40900.52500.55600.60400.243900.2395100 | CLEANING | 3d | 2026-11-23 | 2026-11-26 | 5777 |  | RGA -FINISHING | 7398335 |
| 5779 | 40100.40200.40900.52500.55600.60400.244000 | **19th FLOOR** | 198.5d | 2026-05-22 | 2026-12-06 |  | start no earlier than 2026-05-22 | RGA -FINISHING | 7392405 |
| 5780 | 40100.40200.40900.52500.55600.60400.244000.2395200 | FIRE FIGHTING | 10d | 2026-05-22 | 2026-05-31 | 5538FS-5d |  | RGA -FINISHING | 7398345 |
| 5781 | 40100.40200.40900.52500.55600.60400.244000.2395300 | LIFT BLOCK WORK | 3d | 2026-07-31 | 2026-08-03 | 5773 |  | RGA -FINISHING | 7398355 |
| 5782 | 40100.40200.40900.52500.55600.60400.244000.2395400 | LIFT DADO WORK | 10d | 2026-10-23 | 2026-11-02 | 5774 |  | RGA -FINISHING | 7398365 |
| 5783 | 40100.40200.40900.52500.55600.60400.244000.2395500 | LOBBY FLOORING WORK | 10d | 2026-11-02 | 2026-11-12 | 5782 |  | RGA -FINISHING | 7398375 |
| 5784 | 40100.40200.40900.52500.55600.60400.244000.2395600 | ELECTRICAL WIRING & SWITCH PLATE FIXING WORK | 6d | 2026-11-12 | 2026-11-18 | 5783 |  | RGA -FINISHING | 7398385 |
| 5785 | 40100.40200.40900.52500.55600.60400.244000.2395700 | False ceiling & 1ST COAT PAINTING | 15d | 2026-11-18 | 2026-12-03 | 5784 |  | RGA -FINISHING | 7398395 |
| 5786 | 40100.40200.40900.52500.55600.60400.244000.2395800 | CLEANING | 3d | 2026-12-03 | 2026-12-06 | 5785 |  | RGA -FINISHING | 7398405 |

Notes:
- 5764: Assumed
- 5772: Assumed
- 5780: Assumed

| ID | WBS | Task | Duration | Start | Finish | Predecessors | Constraint | Calendar | Unique_Task_ID |
| --- | --- | --- | --- | --- | --- | --- | --- | --- | --- |
| 5787 | 40100.40200.40900.52500.55600.60400.244100 | **20th FLOOR** | 190.5d | 2026-05-30 | 2026-12-06 |  | start no earlier than 2026-05-30 | RGA -FINISHING | 7392425 |
| 5788 | 40100.40200.40900.52500.55600.60400.244100.2395900 | FIRE FIGHTING | 10d | 2026-05-30 | 2026-06-08 | 5551FS-5d |  | RGA -FINISHING | 7398415 |
| 5789 | 40100.40200.40900.52500.55600.60400.244100.2396000 | LIFT BLOCK WORK | 3d | 2026-07-31 | 2026-08-03 | 5781SS |  | RGA -FINISHING | 7398425 |
| 5790 | 40100.40200.40900.52500.55600.60400.244100.2396100 | LIFT DADO WORK | 10d | 2026-10-23 | 2026-11-02 | 5782SS |  | RGA -FINISHING | 7398435 |
| 5791 | 40100.40200.40900.52500.55600.60400.244100.2396200 | LOBBY FLOORING WORK | 10d | 2026-11-02 | 2026-11-12 | 5790 |  | RGA -FINISHING | 7398445 |
| 5792 | 40100.40200.40900.52500.55600.60400.244100.2396300 | ELECTRICAL WIRING & SWITCH PLATE FIXING WORK | 6d | 2026-11-12 | 2026-11-18 | 5791 |  | RGA -FINISHING | 7398455 |
| 5793 | 40100.40200.40900.52500.55600.60400.244100.2396400 | False ceiling & 1ST COAT PAINTING | 15d | 2026-11-18 | 2026-12-03 | 5792 |  | RGA -FINISHING | 7398465 |
| 5794 | 40100.40200.40900.52500.55600.60400.244100.2396500 | CLEANING | 3d | 2026-12-03 | 2026-12-06 | 5793 |  | RGA -FINISHING | 7398475 |
| 5795 | 40100.40200.40900.52500.55600.60400.244200 | **21th FLOOR** | 185.5d | 2026-06-14 | 2026-12-16 |  | start no earlier than 2026-06-14 | RGA -FINISHING | 7392435 |
| 5796 | 40100.40200.40900.52500.55600.60400.244200.2396600 | FIRE FIGHTING | 10d | 2026-06-14 | 2026-06-23 | 5564FS-5d |  | RGA -FINISHING | 7398485 |
| 5797 | 40100.40200.40900.52500.55600.60400.244200.2396700 | LIFT BLOCK WORK | 3d | 2026-08-03 | 2026-08-06 | 5789 |  | RGA -FINISHING | 7398495 |
| 5798 | 40100.40200.40900.52500.55600.60400.244200.2396800 | LIFT DADO WORK | 10d | 2026-11-02 | 2026-11-12 | 5790 |  | RGA -FINISHING | 7398505 |
| 5799 | 40100.40200.40900.52500.55600.60400.244200.2396900 | LOBBY FLOORING WORK | 10d | 2026-11-12 | 2026-11-22 | 5798 |  | RGA -FINISHING | 7398515 |
| 5800 | 40100.40200.40900.52500.55600.60400.244200.2397000 | ELECTRICAL WIRING & SWITCH PLATE FIXING WORK | 6d | 2026-11-22 | 2026-11-28 | 5799 |  | RGA -FINISHING | 7398525 |
| 5801 | 40100.40200.40900.52500.55600.60400.244200.2397100 | False ceiling & 1ST COAT PAINTING | 15d | 2026-11-28 | 2026-12-13 | 5800 |  | RGA -FINISHING | 7398535 |
| 5802 | 40100.40200.40900.52500.55600.60400.244200.2397200 | CLEANING | 3d | 2026-12-13 | 2026-12-16 | 5801 |  | RGA -FINISHING | 7398545 |
| 5803 | 40100.40200.40900.52500.55600.60400.244300 | **22th FLOOR** | 179.5d | 2026-06-20 | 2026-12-16 |  | start no earlier than 2026-06-20 | RGA -FINISHING | 7392445 |
| 5804 | 40100.40200.40900.52500.55600.60400.244300.2397300 | FIRE FIGHTING | 10d | 2026-06-20 | 2026-06-29 | 5577FS-5d |  | RGA -FINISHING | 7398555 |
| 5805 | 40100.40200.40900.52500.55600.60400.244300.2397400 | LIFT BLOCK WORK | 3d | 2026-08-03 | 2026-08-06 | 5797SS |  | RGA -FINISHING | 7398565 |
| 5806 | 40100.40200.40900.52500.55600.60400.244300.2397500 | LIFT DADO WORK | 10d | 2026-11-02 | 2026-11-12 | 5798SS |  | RGA -FINISHING | 7398575 |
| 5807 | 40100.40200.40900.52500.55600.60400.244300.2397600 | LOBBY FLOORING WORK | 10d | 2026-11-12 | 2026-11-22 | 5806 |  | RGA -FINISHING | 7398585 |
| 5808 | 40100.40200.40900.52500.55600.60400.244300.2397700 | ELECTRICAL WIRING & SWITCH PLATE FIXING WORK | 6d | 2026-11-22 | 2026-11-28 | 5807 |  | RGA -FINISHING | 7398595 |
| 5809 | 40100.40200.40900.52500.55600.60400.244300.2397800 | False ceiling & 1ST COAT PAINTING | 15d | 2026-11-28 | 2026-12-13 | 5808 |  | RGA -FINISHING | 7398605 |
| 5810 | 40100.40200.40900.52500.55600.60400.244300.2397900 | CLEANING | 3d | 2026-12-13 | 2026-12-16 | 5809 |  | RGA -FINISHING | 7398615 |

Notes:
- 5788: Assumed
- 5796: Assumed
- 5804: Assumed

| ID | WBS | Task | Duration | Start | Finish | Predecessors | Constraint | Calendar | Unique_Task_ID |
| --- | --- | --- | --- | --- | --- | --- | --- | --- | --- |
| 5811 | 40100.40200.40900.52500.55600.60400.244400 | **23th FLOOR** | 170.5d | 2026-06-29 | 2026-12-16 |  | start no earlier than 2026-06-29 | RGA -FINISHING | 7392465 |
| 5812 | 40100.40200.40900.52500.55600.60400.244400.2398000 | FIRE FIGHTING | 10d | 2026-06-29 | 2026-07-08 | 5590FS-5d |  | RGA -FINISHING | 7398625 |
| 5813 | 40100.40200.40900.52500.55600.60400.244400.2398100 | LIFT BLOCK WORK | 3d | 2026-08-03 | 2026-08-06 | 5805SS |  | RGA -FINISHING | 7398635 |
| 5814 | 40100.40200.40900.52500.55600.60400.244400.2398200 | LIFT DADO WORK | 10d | 2026-11-02 | 2026-11-12 | 5806SS |  | RGA -FINISHING | 7398645 |
| 5815 | 40100.40200.40900.52500.55600.60400.244400.2398300 | LOBBY FLOORING WORK | 10d | 2026-11-12 | 2026-11-22 | 5814 |  | RGA -FINISHING | 7398655 |
| 5816 | 40100.40200.40900.52500.55600.60400.244400.2398400 | ELECTRICAL WIRING & SWITCH PLATE FIXING WORK | 6d | 2026-11-22 | 2026-11-28 | 5815 |  | RGA -FINISHING | 7398665 |
| 5817 | 40100.40200.40900.52500.55600.60400.244400.2398500 | False ceiling & 1ST COAT PAINTING | 15d | 2026-11-28 | 2026-12-13 | 5816 |  | RGA -FINISHING | 7398675 |
| 5818 | 40100.40200.40900.52500.55600.60400.244400.2398600 | CLEANING | 3d | 2026-12-13 | 2026-12-16 | 5817 |  | RGA -FINISHING | 7398685 |
| 5819 | 40100.40200.40900.52500.55600.60400.244500 | **24th FLOOR** | 161.5d | 2026-07-08 | 2026-12-16 |  | start no earlier than 2026-07-08 | RGA -FINISHING | 7392475 |
| 5820 | 40100.40200.40900.52500.55600.60400.244500.2398700 | FIRE FIGHTING | 10d | 2026-07-08 | 2026-07-17 | 5603FS-5d |  | RGA -FINISHING | 7398695 |
| 5821 | 40100.40200.40900.52500.55600.60400.244500.2398800 | LIFT BLOCK WORK | 3d | 2026-08-03 | 2026-08-06 | 5813SS |  | RGA -FINISHING | 7398705 |
| 5822 | 40100.40200.40900.52500.55600.60400.244500.2398900 | LIFT DADO WORK | 10d | 2026-11-02 | 2026-11-12 | 5814SS |  | RGA -FINISHING | 7398715 |
| 5823 | 40100.40200.40900.52500.55600.60400.244500.2399000 | LOBBY FLOORING WORK | 10d | 2026-11-12 | 2026-11-22 | 5822 |  | RGA -FINISHING | 7398725 |
| 5824 | 40100.40200.40900.52500.55600.60400.244500.2399100 | ELECTRICAL WIRING & SWITCH PLATE FIXING WORK | 6d | 2026-11-22 | 2026-11-28 | 5823 |  | RGA -FINISHING | 7398735 |
| 5825 | 40100.40200.40900.52500.55600.60400.244500.2399200 | False ceiling & 1ST COAT PAINTING | 15d | 2026-11-28 | 2026-12-13 | 5824 |  | RGA -FINISHING | 7398745 |
| 5826 | 40100.40200.40900.52500.55600.60400.244500.2399300 | CLEANING | 3d | 2026-12-13 | 2026-12-16 | 5825 |  | RGA -FINISHING | 7398755 |
| 5827 | 40100.40200.40900.52500.55600.60400.244600 | **25th FLOOR** | 162.5d | 2026-07-17 | 2026-12-26 |  | start no earlier than 2026-07-17 | RGA -FINISHING | 7392485 |
| 5828 | 40100.40200.40900.52500.55600.60400.244600.2399400 | FIRE FIGHTING | 10d | 2026-07-17 | 2026-07-26 | 5616FS-5d |  | RGA -FINISHING | 7398765 |
| 5829 | 40100.40200.40900.52500.55600.60400.244600.2399500 | LIFT BLOCK WORK | 3d | 2026-08-06 | 2026-08-09 | 5821 |  | RGA -FINISHING | 7398775 |
| 5830 | 40100.40200.40900.52500.55600.60400.244600.2399600 | LIFT DADO WORK | 10d | 2026-11-12 | 2026-11-22 | 5822 |  | RGA -FINISHING | 7398785 |
| 5831 | 40100.40200.40900.52500.55600.60400.244600.2399700 | LOBBY FLOORING WORK | 10d | 2026-11-22 | 2026-12-02 | 5830 |  | RGA -FINISHING | 7398795 |
| 5832 | 40100.40200.40900.52500.55600.60400.244600.2399800 | ELECTRICAL WIRING & SWITCH PLATE FIXING WORK | 6d | 2026-12-02 | 2026-12-08 | 5831 |  | RGA -FINISHING | 7398805 |
| 5833 | 40100.40200.40900.52500.55600.60400.244600.2399900 | False ceiling & 1ST COAT PAINTING | 15d | 2026-12-08 | 2026-12-23 | 5832 |  | RGA -FINISHING | 7398815 |
| 5834 | 40100.40200.40900.52500.55600.60400.244600.2400000 | CLEANING | 3d | 2026-12-23 | 2026-12-26 | 5833 |  | RGA -FINISHING | 7398825 |

Notes:
- 5812: Assumed
- 5820: Assumed
- 5828: Assumed

| ID | WBS | Task | Duration | Start | Finish | Predecessors | Constraint | Calendar | Unique_Task_ID |
| --- | --- | --- | --- | --- | --- | --- | --- | --- | --- |
| 5835 | 40100.40200.40900.52500.55600.161100 | **Common MEP Works** | 371d | 2026-06-27 | 2027-07-02 |  | start no earlier than 2026-06-27 | RGA -FINISHING | 7392165 |
| 5836 | 40100.40200.40900.52500.55600.161100.489400 | **Lift Works** | 141d | 2026-07-13 | 2026-12-01 |  | start no earlier than 2026-07-13 | RGA -FINISHING | 7392875 |
| 5837 | 40100.40200.40900.52500.55600.161100.489400.2400100 | Lift Shaft Handover | 30d | 2026-07-13 | 2026-08-12 | 5083 |  | RGA -FINISHING | 7399325 |
| 5838 | 40100.40200.40900.52500.55600.161100.489400.2400200 | Lift installation work | 110d | 2026-08-13 | 2026-12-01 | 5837FS+1d |  | RGA -FINISHING | 7399335 |
| 5839 | 40100.40200.40900.52500.55600.161100.489500 | **Plumbing works** | 127d | 2027-02-26 | 2027-07-02 |  | start no earlier than 2027-02-26 | RGA -FINISHING | 7392865 |
| 5840 | 40100.40200.40900.52500.55600.161100.489500.2400300 | Shaft Plumbing | 90d | 2027-02-26 | 2027-05-26 | 5286 |  | RGA -FINISHING | 7399345 |
| 5841 | 40100.40200.40900.52500.55600.161100.489500.2400400 | Terrace Looping | 90d | 2027-04-04 | 2027-07-02 | 5284 |  | RGA -FINISHING | 7399355 |
| 5842 | 40100.40200.40900.52500.55600.161100.489600 | **Fire Fighting works** | 76d | 2026-06-27 | 2026-09-10 |  | start no earlier than 2026-06-27 | RGA -FINISHING | 7392855 |
| 5843 | 40100.40200.40900.52500.55600.161100.489600.2400500 | Shaft Downtake works | 60d | 2026-06-27 | 2026-08-25 | 5088FF+22d |  | RGA -FINISHING | 7399365 |
| 5844 | 40100.40200.40900.52500.55600.161100.489600.2400600 | Connection to pump room | 15d | 2026-08-27 | 2026-09-10 | 5843FS+1d |  | RGA -FINISHING | 7399375 |
| 5845 | 40100.40200.40900.52500.55600.161100.339400 | **Electrical works** | 214d | 2026-08-05 | 2027-03-06 |  | start no earlier than 2026-08-05 | RGA -FINISHING | 7392835 |
| 5846 | 40100.40200.40900.52500.55600.161100.339400.2400700 | Shaft cabling | 45d | 2026-08-05 | 2026-09-18 | 5088FF+46d |  | RGA -FINISHING | 7399385 |
| 5847 | 40100.40200.40900.52500.55600.161100.339400.2400800 | Meter room erection | 15d | 2027-02-05 | 2027-02-19 | 4954FS+242d |  | RGA -FINISHING | 7399395 |
| 5848 | 40100.40200.40900.52500.55600.161100.339400.2400900 | Panel erection | 15d | 2027-02-20 | 2027-03-06 | 5847 |  | RGA -FINISHING | 7399405 |
| 5849 | 40100.40200.40900.52500.55600.161100.339400.2401000 | DG Installtion | 10d | 2026-11-07 | 2026-11-16 | 5847SS-90d |  | RGA -FINISHING | 7399415 |
| 5850 | 40100.40200.40900.52500.55600.161100.339400.2401100 | Transformer erection | 15d | 2026-11-07 | 2026-11-21 | 5849SS |  | RGA -FINISHING | 7399425 |
| 5851 | 40100.40200.40900.352400 | **Capex Item Procurment** | 261.5d | 2026-04-04 | 2026-12-21 |  | start no earlier than 2026-04-04 | RGA -FINISHING | 7808702 |
| 5852 | 40100.40200.40900.352400.557600 | Lift Procurement & delivery | 30d | 2026-04-04 | 2026-05-04 | 5837SS-100d |  | RGA -FINISHING | 7815782 |
| 5853 | 40100.40200.40900.352400.557700 | Panels | 30d | 2026-11-22 | 2026-12-21 | 5848SS-90d |  | RGA -FINISHING | 7815792 |
| 5854 | 40100.40200.40900.352400.557800 | DG procurement | 30d | 2026-08-09 | 2026-09-07 | 5849SS-90d |  | RGA -FINISHING | 7815802 |
| 5855 | 40100.40200.40900.352400.557900 | Transformer | 30d | 2026-08-09 | 2026-09-07 | 5850SS-90d |  | RGA -FINISHING | 7815812 |
| 5856 | 40100.40200.40900.43100 | **Handing Over Activities** | 56d | 2027-04-05 | 2027-05-31 |  | start no earlier than 2027-04-05 | RGA -FINISHING | 7803202 |
| 5857 | 40100.40200.40900.43100.558000 | SOAP WASHING GROUND FLOOR | 1d | 2027-04-05 | 2027-04-06 | 5834FS+100d |  | RGA -FINISHING | 7815822 |
| 5858 | 40100.40200.40900.43100.558100 | SOAP WASHING L1 | 1d | 2027-04-06 | 2027-04-07 | 5857 |  | RGA -FINISHING | 7815832 |
| 5859 | 40100.40200.40900.43100.558200 | SOAP WASHING L2 | 1d | 2027-04-07 | 2027-04-08 | 5858 |  | RGA -FINISHING | 7815842 |
| 5860 | 40100.40200.40900.43100.558300 | SOAP WASHING L3 | 1d | 2027-04-08 | 2027-04-09 | 5859 |  | RGA -FINISHING | 7815852 |
| 5861 | 40100.40200.40900.43100.558400 | SOAP WASHING L4 | 1d | 2027-04-09 | 2027-04-10 | 5860 |  | RGA -FINISHING | 7815862 |
| 5862 | 40100.40200.40900.43100.558500 | SOAP WASHING L5 | 1d | 2027-04-10 | 2027-04-11 | 5861 |  | RGA -FINISHING | 7815872 |
| 5863 | 40100.40200.40900.43100.558600 | SOAP WASHING L6 | 1d | 2027-04-11 | 2027-04-12 | 5862 |  | RGA -FINISHING | 7815882 |
| 5864 | 40100.40200.40900.43100.558700 | SOAP WASHING L7 | 1d | 2027-04-12 | 2027-04-13 | 5863 |  | RGA -FINISHING | 7815892 |
| 5865 | 40100.40200.40900.43100.558800 | SOAP WASHING L8 | 1d | 2027-04-13 | 2027-04-14 | 5864 |  | RGA -FINISHING | 7815902 |
| 5866 | 40100.40200.40900.43100.558900 | SOAP WASHING L9 | 1d | 2027-04-14 | 2027-04-15 | 5865 |  | RGA -FINISHING | 7815912 |
| 5867 | 40100.40200.40900.43100.559000 | SOAP WASHING L10 | 1d | 2027-04-15 | 2027-04-16 | 5866 |  | RGA -FINISHING | 7815922 |
| 5868 | 40100.40200.40900.43100.559100 | SOAP WASHING L11 | 1d | 2027-04-16 | 2027-04-17 | 5867 |  | RGA -FINISHING | 7815932 |
| 5869 | 40100.40200.40900.43100.559200 | SOAP WASHING L12 | 1d | 2027-04-17 | 2027-04-18 | 5868 |  | RGA -FINISHING | 7815942 |
| 5870 | 40100.40200.40900.43100.559300 | SOAP WASHING L13 | 1d | 2027-04-18 | 2027-04-19 | 5869 |  | RGA -FINISHING | 7815952 |
| 5871 | 40100.40200.40900.43100.559400 | SOAP WASHING L14 | 1d | 2027-04-19 | 2027-04-20 | 5870 |  | RGA -FINISHING | 7815962 |
| 5872 | 40100.40200.40900.43100.559500 | SOAP WASHING L15 | 1d | 2027-04-20 | 2027-04-21 | 5871 |  | RGA -FINISHING | 7815972 |
| 5873 | 40100.40200.40900.43100.559600 | SOAP WASHING L16 | 1d | 2027-04-21 | 2027-04-22 | 5872 |  | RGA -FINISHING | 7815982 |
| 5874 | 40100.40200.40900.43100.559700 | SOAP WASHING L17 | 1d | 2027-04-22 | 2027-04-23 | 5873 |  | RGA -FINISHING | 7815992 |
| 5875 | 40100.40200.40900.43100.559800 | SOAP WASHING L18 | 1d | 2027-04-23 | 2027-04-24 | 5874 |  | RGA -FINISHING | 7816002 |
| 5876 | 40100.40200.40900.43100.559900 | SOAP WASHING L19 | 1d | 2027-04-24 | 2027-04-25 | 5875 |  | RGA -FINISHING | 7816012 |
| 5877 | 40100.40200.40900.43100.560000 | SOAP WASHING L20 | 1d | 2027-04-25 | 2027-04-26 | 5876 |  | RGA -FINISHING | 7816022 |
| 5878 | 40100.40200.40900.43100.560100 | SOAP WASHING L21 | 1d | 2027-04-26 | 2027-04-27 | 5877 |  | RGA -FINISHING | 7816032 |
| 5879 | 40100.40200.40900.43100.560200 | SOAP WASHING L22 | 1d | 2027-04-27 | 2027-04-28 | 5878 |  | RGA -FINISHING | 7816042 |
| 5880 | 40100.40200.40900.43100.560300 | SOAP WASHING L23 | 1d | 2027-04-28 | 2027-04-29 | 5879 |  | RGA -FINISHING | 7816052 |
| 5881 | 40100.40200.40900.43100.560400 | SOAP WASHING L24 | 1d | 2027-04-29 | 2027-04-30 | 5880 |  | RGA -FINISHING | 7816062 |
| 5882 | 40100.40200.40900.43100.560500 | SOAP WASHING L25 | 1d | 2027-04-30 | 2027-05-01 | 5881 |  | RGA -FINISHING | 7816072 |
| 5883 | 40100.40200.40900.43100.560600 | CP & SANITARYWARE FIXING Ground | 2d | 2027-04-07 | 2027-04-09 | 5858 |  | RGA -FINISHING | 7816102 |
| 5884 | 40100.40200.40900.43100.560700 | CP & SANITARYWARE FIXING L1 | 2d | 2027-04-09 | 2027-04-11 | 5883 |  | RGA -FINISHING | 7816112 |
| 5885 | 40100.40200.40900.43100.560800 | CP & SANITARYWARE FIXING L2 | 2d | 2027-04-11 | 2027-04-13 | 5884 |  | RGA -FINISHING | 7816122 |
| 5886 | 40100.40200.40900.43100.560900 | CP & SANITARYWARE FIXING L3 | 2d | 2027-04-13 | 2027-04-15 | 5885 |  | RGA -FINISHING | 7816132 |
| 5887 | 40100.40200.40900.43100.561000 | CP & SANITARYWARE FIXING L4 | 2d | 2027-04-15 | 2027-04-17 | 5886 |  | RGA -FINISHING | 7816142 |
| 5888 | 40100.40200.40900.43100.561100 | CP & SANITARYWARE FIXING L5 | 2d | 2027-04-17 | 2027-04-19 | 5887 |  | RGA -FINISHING | 7816152 |
| 5889 | 40100.40200.40900.43100.561200 | CP & SANITARYWARE FIXING L6 | 2d | 2027-04-19 | 2027-04-21 | 5888 |  | RGA -FINISHING | 7816162 |
| 5890 | 40100.40200.40900.43100.561300 | CP & SANITARYWARE FIXING L7 | 2d | 2027-04-21 | 2027-04-23 | 5889 |  | RGA -FINISHING | 7816172 |
| 5891 | 40100.40200.40900.43100.561400 | CP & SANITARYWARE FIXING L8 | 2d | 2027-04-23 | 2027-04-25 | 5890 |  | RGA -FINISHING | 7816182 |
| 5892 | 40100.40200.40900.43100.561500 | CP & SANITARYWARE FIXING L9 | 2d | 2027-04-25 | 2027-04-27 | 5891 |  | RGA -FINISHING | 7816192 |
| 5893 | 40100.40200.40900.43100.561600 | CP & SANITARYWARE FIXING L10 | 2d | 2027-04-27 | 2027-04-29 | 5892 |  | RGA -FINISHING | 7816202 |
| 5894 | 40100.40200.40900.43100.561700 | CP & SANITARYWARE FIXING L11 | 2d | 2027-04-29 | 2027-05-01 | 5893 |  | RGA -FINISHING | 7816212 |
| 5895 | 40100.40200.40900.43100.561800 | CP & SANITARYWARE FIXING L12 | 2d | 2027-05-01 | 2027-05-03 | 5894 |  | RGA -FINISHING | 7816222 |
| 5896 | 40100.40200.40900.43100.561900 | CP & SANITARYWARE FIXING L13 | 2d | 2027-05-03 | 2027-05-05 | 5895 |  | RGA -FINISHING | 7816232 |
| 5897 | 40100.40200.40900.43100.562000 | CP & SANITARYWARE FIXING L14 | 2d | 2027-05-05 | 2027-05-07 | 5896 |  | RGA -FINISHING | 7816242 |
| 5898 | 40100.40200.40900.43100.562100 | CP & SANITARYWARE FIXING L15 | 2d | 2027-05-07 | 2027-05-09 | 5897 |  | RGA -FINISHING | 7816252 |
| 5899 | 40100.40200.40900.43100.562200 | CP & SANITARYWARE FIXING L16 | 2d | 2027-05-09 | 2027-05-11 | 5898 |  | RGA -FINISHING | 7816262 |
| 5900 | 40100.40200.40900.43100.562300 | CP & SANITARYWARE FIXING L17 | 2d | 2027-05-11 | 2027-05-13 | 5899 |  | RGA -FINISHING | 7816272 |
| 5901 | 40100.40200.40900.43100.562400 | CP & SANITARYWARE FIXING L18 | 2d | 2027-05-13 | 2027-05-15 | 5900 |  | RGA -FINISHING | 7816282 |
| 5902 | 40100.40200.40900.43100.562500 | CP & SANITARYWARE FIXING L18 | 2d | 2027-05-15 | 2027-05-17 | 5901 |  | RGA -FINISHING | 7816292 |
| 5903 | 40100.40200.40900.43100.562600 | CP & SANITARYWARE FIXING L19 | 2d | 2027-05-17 | 2027-05-19 | 5902 |  | RGA -FINISHING | 7816302 |
| 5904 | 40100.40200.40900.43100.562700 | CP & SANITARYWARE FIXING L20 | 2d | 2027-05-19 | 2027-05-21 | 5903 |  | RGA -FINISHING | 7816312 |

Notes:
- 5835: Completion in 12 months post last RCC

| ID | WBS | Task | Type | Duration | Start | Finish | Predecessors | Complete | Constraint | Calendar | Unique_Task_ID |
| --- | --- | --- | --- | --- | --- | --- | --- | --- | --- | --- | --- |
| 5905 | 40100.40200.40900.43100.562800 | CP & SANITARYWARE FIXING L21 |  | 2d | 2027-05-21 | 2027-05-23 | 5904 |  |  | RGA -FINISHING | 7816322 |
| 5906 | 40100.40200.40900.43100.562900 | CP & SANITARYWARE FIXING L22 |  | 2d | 2027-05-23 | 2027-05-25 | 5905 |  |  | RGA -FINISHING | 7816332 |
| 5907 | 40100.40200.40900.43100.563000 | CP & SANITARYWARE FIXING L23 |  | 2d | 2027-05-25 | 2027-05-27 | 5906 |  |  | RGA -FINISHING | 7816342 |
| 5908 | 40100.40200.40900.43100.563100 | CP & SANITARYWARE FIXING L24 |  | 2d | 2027-05-27 | 2027-05-29 | 5907 |  |  | RGA -FINISHING | 7816352 |
| 5909 | 40100.40200.40900.43100.563200 | CP & SANITARYWARE FIXING L25 |  | 2d | 2027-05-29 | 2027-05-31 | 5908 |  |  | RGA -FINISHING | 7816362 |
| 5910 | 40100.40200.40900.521500 | MIscellaneous (Aluform Supply) |  | 60d | 2025-09-20 | 2025-11-18 | 4983FS-5d |  |  | RGA -FINISHING | 7812612 |
| 5911 | 40100.40200.40900.521600 | Miscellaneous |  | 240d | 2027-05-24 | 2028-02-26 | 5910FS+472d |  |  | Indian Calendar | 7812622 |
| 5912 | 40100.40200.41000 | **TOWER 2 - (B+G+25 Floors+Terrace)** |  | 1057d | 2025-02-12 | 2028-02-12 |  |  | start no earlier than 2025-02-12 | RGA - STRUCTURE | 8865784 |
| 5913 | 40100.40200.41000.2747100 | Start date for Tower 2 | milestone | 0d | 2025-04-08 | 2025-04-08 | 6889SS+7d |  |  | RGA - STRUCTURE | 8874144 |
| 5914 | 40100.40200.41000.374700 | **Earth work** |  | 97d | 2025-02-12 | 2025-05-21 |  | 34% | start no earlier than 2025-02-12 | RGA - STRUCTURE | 8867094 |
| 5915 | 40100.40200.41000.374700.517900 | EXCAVATION - Tower Area |  | 12d | 2025-02-12 | 2025-03-10 | 5913SS-29d | 100% | start no earlier than 2025-02-12 | RGA - STRUCTURE | 8867294 |
| 5916 | 40100.40200.41000.374700.517800 | Excavation - Non Tower Area |  | 40d | 2025-03-03 | 2025-05-21 | 5915FS-20d | 15% |  | 5 day week, Bank Hols Xmas | 8867304 |
| 5917 | 40100.40200.41000.70500 | **Substructure works (Works up to plinth)** |  | 764d | 2025-04-01 | 2027-06-11 |  |  | start no earlier than 2025-04-01 | RGA - STRUCTURE | 8865884 |
| 5918 | 40100.40200.41000.70500.164600 | **Civil works (Shell & Core basement)** |  | 107d | 2025-04-01 | 2025-07-17 |  |  | start no earlier than 2025-04-01 | RGA - STRUCTURE | 8866174 |
| 5919 | 40100.40200.41000.70500.164600.174100 | **1st Basement** |  | 107d | 2025-04-01 | 2025-07-17 |  |  | start no earlier than 2025-04-01 | RGA - STRUCTURE | 8866184 |
| 5920 | 40100.40200.41000.70500.164600.174100.339300 | **RCC Works - Tower area** |  | 57d | 2025-05-22 | 2025-07-17 |  |  | start no earlier than 2025-05-22 | RGA - STRUCTURE | 8866724 |
| 5921 | 40100.40200.41000.70500.164600.174100.339300.406600 | **Foundation** |  | 26d | 2025-05-22 | 2025-06-16 |  |  | start no earlier than 2025-05-22 | RGA - STRUCTURE | 8867084 |
| 5922 | 40100.40200.41000.70500.164600.174100.339300.406600.2725200 | Pocket Excavation |  | 1d | 2025-05-22 | 2025-05-22 | 5915FS+70d |  |  | RGA - STRUCTURE | 8873054 |
| 5923 | 40100.40200.41000.70500.164600.174100.339300.406600.2725300 | Footing PCC (Construction start for Tower 2A) |  | 4d | 2025-05-23 | 2025-05-26 | 5922 |  |  | RGA - STRUCTURE | 8873064 |
| 5924 | 40100.40200.41000.70500.164600.174100.339300.406600.2725400 | Footing / Raft works |  | 21d | 2025-05-27 | 2025-06-16 | 5923 |  |  | RGA - STRUCTURE | 8873074 |
| 5925 | 40100.40200.41000.70500.164600.174100.339300.474100 | **GF Slab** |  | 31d | 2025-06-17 | 2025-07-17 |  |  | start no earlier than 2025-06-17 | RGA - STRUCTURE | 8867104 |
| 5926 | 40100.40200.41000.70500.164600.174100.339300.474100.2725500 | Columns in Upper basement |  | 14d | 2025-06-17 | 2025-06-30 | 5924 |  |  | RGA - STRUCTURE | 8873084 |
| 5927 | 40100.40200.41000.70500.164600.174100.339300.474100.2725600 | Upper Basement slab |  | 17d | 2025-07-01 | 2025-07-17 | 5926 |  |  | RGA - STRUCTURE | 8873094 |
| 5928 | 40100.40200.41000.70500.164600.174100.968400 | Backfilling |  | 10d | 2025-04-01 | 2025-04-10 |  |  | start no earlier than 2025-04-01 | RGA - STRUCTURE | 8867904 |

Notes:
- 5914: 2 Months for Excavation

| ID | WBS | Task | Duration | Start | Finish | Predecessors | Constraint | Calendar | Unique_Task_ID |
| --- | --- | --- | --- | --- | --- | --- | --- | --- | --- |
| 5929 | 40100.40200.41000.70500.509300 | **Basement Block work and Plaster finishing** | 45d | 2026-03-18 | 2026-05-02 |  | start no earlier than 2026-03-18 | RGA - STRUCTURE | 8867264 |
| 5930 | 40100.40200.41000.70500.509300.830600 | Upper basement | 45d | 2026-03-18 | 2026-05-02 | 6035 |  | RGA - STRUCTURE | 8867884 |
| 5931 | 40100.40200.41000.70500.164700 | **Services** | 405d | 2026-05-03 | 2027-06-11 |  | start no earlier than 2026-05-03 | RGA -FINISHING | 8866164 |
| 5932 | 40100.40200.41000.70500.164700.378300 | **Plumbing** | 90d | 2026-05-03 | 2026-07-31 |  | start no earlier than 2026-05-03 | RGA -FINISHING | 8867074 |
| 5933 | 40100.40200.41000.70500.164700.378300.507100 | **Upper Basement Plumbing** | 90d | 2026-05-03 | 2026-07-31 |  | start no earlier than 2026-05-03 | RGA -FINISHING | 8867164 |
| 5934 | 40100.40200.41000.70500.164700.378300.507100.2401200 | Upper Basement Plumbing | 90d | 2026-05-03 | 2026-07-31 | 5930 |  | RGA -FINISHING | 8867934 |
| 5935 | 40100.40200.41000.70500.164700.378400 | **Fire fighting** | 90d | 2026-08-01 | 2026-10-29 |  | start no earlier than 2026-08-01 | RGA -FINISHING | 8867064 |
| 5936 | 40100.40200.41000.70500.164700.378400.507200 | **Upper Basement Fire fighting** | 90d | 2026-08-01 | 2026-10-29 |  | start no earlier than 2026-08-01 | RGA -FINISHING | 8867174 |
| 5937 | 40100.40200.41000.70500.164700.378400.507200.2401300 | Upper Basement Fire fighting | 90d | 2026-08-01 | 2026-10-29 | 5934 |  | RGA -FINISHING | 8867944 |
| 5938 | 40100.40200.41000.70500.164700.378500 | **Ventilation** | 90d | 2026-10-30 | 2027-01-27 |  | start no earlier than 2026-10-30 | RGA -FINISHING | 8867044 |
| 5939 | 40100.40200.41000.70500.164700.378500.507300 | **Upper Basement ventilation** | 90d | 2026-10-30 | 2027-01-27 |  | start no earlier than 2026-10-30 | RGA -FINISHING | 8867184 |
| 5940 | 40100.40200.41000.70500.164700.378500.507300.2401400 | Upper Basement ventilation | 90d | 2026-10-30 | 2027-01-27 | 5937 |  | RGA -FINISHING | 8867954 |
| 5941 | 40100.40200.41000.70500.164700.378600 | **Electrification** | 90d | 2027-01-28 | 2027-04-27 |  | start no earlier than 2027-01-28 | RGA -FINISHING | 8866904 |
| 5942 | 40100.40200.41000.70500.164700.378600.507400 | **Upper Basement Electrification** | 90d | 2027-01-28 | 2027-04-27 |  | start no earlier than 2027-01-28 | RGA -FINISHING | 8867194 |
| 5943 | 40100.40200.41000.70500.164700.378600.507400.2401500 | Upper Basement Electrification | 90d | 2027-01-28 | 2027-04-27 | 5940 |  | RGA -FINISHING | 8867964 |
| 5944 | 40100.40200.41000.70500.164700.378700 | **Security installations** | 45d | 2027-04-28 | 2027-06-11 |  | start no earlier than 2027-04-28 | RGA -FINISHING | 8866784 |
| 5945 | 40100.40200.41000.70500.164700.378700.507500 | **Upper Basement Security installations** | 45d | 2027-04-28 | 2027-06-11 |  | start no earlier than 2027-04-28 | RGA -FINISHING | 8867204 |
| 5946 | 40100.40200.41000.70500.164700.378700.507500.2401600 | Upper Basement Security installations | 45d | 2027-04-28 | 2027-06-11 | 5943 |  | RGA -FINISHING | 8867974 |
| 5947 | 40100.40200.41000.70500.363900 | **Finishing work** | 180d | 2026-05-03 | 2026-10-29 |  | start no earlier than 2026-05-03 | RGA -FINISHING | 8866764 |
| 5948 | 40100.40200.41000.70500.363900.516600 | **Basement Flooring** | 90d | 2026-05-03 | 2026-07-31 |  | start no earlier than 2026-05-03 | RGA -FINISHING | 8867244 |
| 5949 | 40100.40200.41000.70500.363900.516600.968500 | 1st Basement ventilation | 90d | 2026-05-03 | 2026-07-31 | 5930 |  | RGA -FINISHING | 8867914 |
| 5950 | 40100.40200.41000.70500.363900.516400 | **Basement Painting (1st Coat)** | 90d | 2026-08-01 | 2026-10-29 |  | start no earlier than 2026-08-01 | RGA -FINISHING | 8867234 |
| 5951 | 40100.40200.41000.70500.363900.516400.968600 | 2nd Basement ventilation | 90d | 2026-08-01 | 2026-10-29 | 5949 |  | RGA -FINISHING | 8867924 |
| 5952 | 40100.40200.41000.70500.509200 | **Water Proofing work** | 45d | 2026-05-03 | 2026-06-16 |  | start no earlier than 2026-05-03 | RGA -FINISHING | 8867254 |
| 5953 | 40100.40200.41000.70500.509200.830700 | GF/Stilt Floor | 45d | 2026-05-03 | 2026-06-16 | 5930 |  | RGA -FINISHING | 8867894 |

| ID | WBS | Task | Duration | Start | Finish | Predecessors | Constraint | Calendar | Unique_Task_ID |
| --- | --- | --- | --- | --- | --- | --- | --- | --- | --- |
| 5954 | 40100.40200.41000.52600 | **Superstructure works** | 710.5d | 2025-04-01 | 2027-04-19 |  | start no earlier than 2025-04-01 | RGA - STRUCTURE | 8865804 |
| 5955 | 40100.40200.41000.52600.55700 | **Civil works** | 710.5d | 2025-04-01 | 2027-04-19 |  | start no earlier than 2025-04-01 | RGA - STRUCTURE | 8865814 |
| 5956 | 40100.40200.41000.52600.55700.62000 | **Superstructure RCC Work** | 327d | 2025-07-25 | 2026-06-27 |  | start no earlier than 2025-07-25 | RGA - STRUCTURE | 8865864 |
| 5957 | 40100.40200.41000.52600.55700.62000.62700 | **Slab RCC works** | 284d | 2025-07-25 | 2026-05-09 |  | start no earlier than 2025-07-25 | RGA - STRUCTURE | 8865874 |
| 5958 | 40100.40200.41000.52600.55700.62000.62700.474000 | **1st Floor slab (Height More)** | 25d | 2025-07-25 | 2025-08-19 |  | start no earlier than 2025-07-25 | RGA - STRUCTURE | 8867114 |
| 5959 | 40100.40200.41000.52600.55700.62000.62700.474000.2725700 | Columns | 10d | 2025-07-25 | 2025-08-03 | 5927FS+7d |  | RGA - STRUCTURE | 8873104 |
| 5960 | 40100.40200.41000.52600.55700.62000.62700.474000.2725800 | Slab Work | 15d | 2025-08-04 | 2025-08-19 | 5959 |  | RGA - STRUCTURE | 8873114 |
| 5961 | 40100.40200.41000.52600.55700.62000.62700.473900 | **2nd Floor slab (Combo Height More)** | 25d | 2025-08-20 | 2025-09-13 |  | start no earlier than 2025-08-20 | RGA - STRUCTURE | 8867124 |
| 5962 | 40100.40200.41000.52600.55700.62000.62700.473900.2725900 | Columns | 10d | 2025-08-20 | 2025-08-29 | 5960 |  | RGA - STRUCTURE | 8873124 |
| 5963 | 40100.40200.41000.52600.55700.62000.62700.473900.2726000 | Slab Work | 15d | 2025-08-30 | 2025-09-13 | 5962 |  | RGA - STRUCTURE | 8873134 |
| 5964 | 40100.40200.41000.52600.55700.62000.62700.406700 | **3rd Floor slab (1st Set Up)** | 21d | 2025-09-14 | 2025-10-05 |  | start no earlier than 2025-09-14 | RGA - STRUCTURE | 8867054 |
| 5965 | 40100.40200.41000.52600.55700.62000.62700.406700.2726100 | Wall Reinforcement & Form work | 10d | 2025-09-14 | 2025-09-23 | 5963 |  | RGA - STRUCTURE | 8873144 |
| 5966 | 40100.40200.41000.52600.55700.62000.62700.406700.2726200 | Slab shuttering & Rebar. | 10d | 2025-09-24 | 2025-10-04 | 5965 |  | RGA - STRUCTURE | 8873154 |
| 5967 | 40100.40200.41000.52600.55700.62000.62700.406700.2726300 | Concreting | 1d | 2025-10-05 | 2025-10-05 | 5966 |  | RGA - STRUCTURE | 8873164 |
| 5968 | 40100.40200.41000.52600.55700.62000.62700.406800 | **4th Floor slab (2nd Set Up)** | 15d | 2025-10-06 | 2025-10-20 |  | start no earlier than 2025-10-06 | RGA - STRUCTURE | 8867034 |
| 5969 | 40100.40200.41000.52600.55700.62000.62700.406800.2726400 | Wall Reinforcement & Form work | 7d | 2025-10-06 | 2025-10-12 | 5967 |  | RGA - STRUCTURE | 8873174 |
| 5970 | 40100.40200.41000.52600.55700.62000.62700.406800.2726500 | Slab shuttering & Rebar. | 7d | 2025-10-13 | 2025-10-19 | 5969 |  | RGA - STRUCTURE | 8873184 |
| 5971 | 40100.40200.41000.52600.55700.62000.62700.406800.2726600 | Concreting | 1d | 2025-10-20 | 2025-10-20 | 5970 |  | RGA - STRUCTURE | 8873194 |
| 5972 | 40100.40200.41000.52600.55700.62000.62700.406900 | **5th Floor slab** | 9d | 2025-10-21 | 2025-10-30 |  | start no earlier than 2025-10-21 | RGA - STRUCTURE | 8867024 |
| 5973 | 40100.40200.41000.52600.55700.62000.62700.406900.2726700 | Wall Reinforcement & Form work | 4d | 2025-10-21 | 2025-10-24 | 5971 |  | RGA - STRUCTURE | 8873204 |
| 5974 | 40100.40200.41000.52600.55700.62000.62700.406900.2726800 | Slab shuttering & Rebar. | 4d | 2025-10-25 | 2025-10-29 | 5973 |  | RGA - STRUCTURE | 8873214 |
| 5975 | 40100.40200.41000.52600.55700.62000.62700.406900.2726900 | Concreting | 1d | 2025-10-30 | 2025-10-30 | 5974 |  | RGA - STRUCTURE | 8873224 |
| 5976 | 40100.40200.41000.52600.55700.62000.62700.407000 | **6th Floor slab** | 9d | 2025-10-31 | 2025-11-08 |  | start no earlier than 2025-10-31 | RGA - STRUCTURE | 8866994 |
| 5977 | 40100.40200.41000.52600.55700.62000.62700.407000.2727000 | Wall Reinforcement & Form work | 4d | 2025-10-31 | 2025-11-03 | 5975 |  | RGA - STRUCTURE | 8873234 |
| 5978 | 40100.40200.41000.52600.55700.62000.62700.407000.2727100 | Slab shuttering & Rebar. | 4d | 2025-11-04 | 2025-11-07 | 5977 |  | RGA - STRUCTURE | 8873244 |
| 5979 | 40100.40200.41000.52600.55700.62000.62700.407000.2727200 | Concreting | 1d | 2025-11-08 | 2025-11-08 | 5978 |  | RGA - STRUCTURE | 8873254 |

Notes:
- 5961: AVg Slab Cycle of 21 days
- 5964: AVg Slab Cycle of 21 days
- 5968: AVg Slab Cycle of 21 days

| ID | WBS | Task | Duration | Start | Finish | Predecessors | Constraint | Calendar | Unique_Task_ID |
| --- | --- | --- | --- | --- | --- | --- | --- | --- | --- |
| 5980 | 40100.40200.41000.52600.55700.62000.62700.407100 | **7th Floor slab** | 9d | 2025-11-09 | 2025-11-17 |  | start no earlier than 2025-11-09 | RGA - STRUCTURE | 8866984 |
| 5981 | 40100.40200.41000.52600.55700.62000.62700.407100.2727300 | Wall Reinforcement & Form work | 4d | 2025-11-09 | 2025-11-12 | 5979 |  | RGA - STRUCTURE | 8873264 |
| 5982 | 40100.40200.41000.52600.55700.62000.62700.407100.2727400 | Slab shuttering & Rebar. | 4d | 2025-11-13 | 2025-11-16 | 5981 |  | RGA - STRUCTURE | 8873274 |
| 5983 | 40100.40200.41000.52600.55700.62000.62700.407100.2727500 | Concreting | 1d | 2025-11-17 | 2025-11-17 | 5982 |  | RGA - STRUCTURE | 8873284 |
| 5984 | 40100.40200.41000.52600.55700.62000.62700.407200 | **8th Floor slab** | 9d | 2025-11-18 | 2025-11-26 |  | start no earlier than 2025-11-18 | RGA - STRUCTURE | 8866954 |
| 5985 | 40100.40200.41000.52600.55700.62000.62700.407200.2727600 | Wall Reinforcement & Form work | 4d | 2025-11-18 | 2025-11-21 | 5983 |  | RGA - STRUCTURE | 8873294 |
| 5986 | 40100.40200.41000.52600.55700.62000.62700.407200.2727700 | Slab shuttering & Rebar. | 4d | 2025-11-22 | 2025-11-25 | 5985 |  | RGA - STRUCTURE | 8873304 |
| 5987 | 40100.40200.41000.52600.55700.62000.62700.407200.2727800 | Concreting | 1d | 2025-11-26 | 2025-11-26 | 5986 |  | RGA - STRUCTURE | 8873314 |
| 5988 | 40100.40200.41000.52600.55700.62000.62700.407300 | **9th Floor slab** | 9d | 2025-11-27 | 2025-12-05 |  | start no earlier than 2025-11-27 | RGA - STRUCTURE | 8866934 |
| 5989 | 40100.40200.41000.52600.55700.62000.62700.407300.2727900 | Wall Reinforcement & Form work | 4d | 2025-11-27 | 2025-11-30 | 5987 |  | RGA - STRUCTURE | 8873324 |
| 5990 | 40100.40200.41000.52600.55700.62000.62700.407300.2728000 | Slab shuttering & Rebar. | 4d | 2025-12-01 | 2025-12-04 | 5989 |  | RGA - STRUCTURE | 8873334 |
| 5991 | 40100.40200.41000.52600.55700.62000.62700.407300.2728100 | Concreting | 1d | 2025-12-05 | 2025-12-05 | 5990 |  | RGA - STRUCTURE | 8873344 |
| 5992 | 40100.40200.41000.52600.55700.62000.62700.407400 | **10th Floor slab** | 9d | 2025-12-06 | 2025-12-14 |  | start no earlier than 2025-12-06 | RGA - STRUCTURE | 8866924 |
| 5993 | 40100.40200.41000.52600.55700.62000.62700.407400.2728200 | Wall Reinforcement & Form work | 4d | 2025-12-06 | 2025-12-09 | 5991 |  | RGA - STRUCTURE | 8873354 |
| 5994 | 40100.40200.41000.52600.55700.62000.62700.407400.2728300 | Slab shuttering & Rebar. | 4d | 2025-12-10 | 2025-12-13 | 5993 |  | RGA - STRUCTURE | 8873364 |
| 5995 | 40100.40200.41000.52600.55700.62000.62700.407400.2728400 | Concreting | 1d | 2025-12-14 | 2025-12-14 | 5994 |  | RGA - STRUCTURE | 8873374 |
| 5996 | 40100.40200.41000.52600.55700.62000.62700.407500 | **11th Floor slab** | 9d | 2025-12-15 | 2025-12-23 |  | start no earlier than 2025-12-15 | RGA - STRUCTURE | 8866834 |
| 5997 | 40100.40200.41000.52600.55700.62000.62700.407500.2728500 | Wall Reinforcement & Form work | 4d | 2025-12-15 | 2025-12-18 | 5995 |  | RGA - STRUCTURE | 8873384 |
| 5998 | 40100.40200.41000.52600.55700.62000.62700.407500.2728600 | Slab shuttering & Rebar. | 4d | 2025-12-19 | 2025-12-22 | 5997 |  | RGA - STRUCTURE | 8873394 |
| 5999 | 40100.40200.41000.52600.55700.62000.62700.407500.2728700 | Concreting | 1d | 2025-12-23 | 2025-12-23 | 5998 |  | RGA - STRUCTURE | 8873404 |
| 6000 | 40100.40200.41000.52600.55700.62000.62700.407600 | **12th Floor slab** | 9d | 2025-12-24 | 2026-01-01 |  | start no earlier than 2025-12-24 | RGA - STRUCTURE | 8866794 |
| 6001 | 40100.40200.41000.52600.55700.62000.62700.407600.2728800 | Wall Reinforcement & Form work | 4d | 2025-12-24 | 2025-12-27 | 5999 |  | RGA - STRUCTURE | 8873414 |
| 6002 | 40100.40200.41000.52600.55700.62000.62700.407600.2728900 | Slab shuttering & Rebar. | 4d | 2025-12-28 | 2025-12-31 | 6001 |  | RGA - STRUCTURE | 8873424 |
| 6003 | 40100.40200.41000.52600.55700.62000.62700.407600.2729000 | Concreting | 1d | 2026-01-01 | 2026-01-01 | 6002 |  | RGA - STRUCTURE | 8873434 |

Notes:
- 6000: AVg Slab Cycle of 21 days

| ID | WBS | Task | Duration | Start | Finish | Predecessors | Constraint | Calendar | Unique_Task_ID |
| --- | --- | --- | --- | --- | --- | --- | --- | --- | --- |
| 6004 | 40100.40200.41000.52600.55700.62000.62700.407700 | **13th Floor slab** | 9d | 2026-01-02 | 2026-01-10 |  | start no earlier than 2026-01-02 | RGA - STRUCTURE | 8866804 |
| 6005 | 40100.40200.41000.52600.55700.62000.62700.407700.2729100 | Wall Reinforcement & Form work | 4d | 2026-01-02 | 2026-01-05 | 6003 |  | RGA - STRUCTURE | 8873444 |
| 6006 | 40100.40200.41000.52600.55700.62000.62700.407700.2729200 | Slab shuttering & Rebar. | 4d | 2026-01-06 | 2026-01-09 | 6005 |  | RGA - STRUCTURE | 8873454 |
| 6007 | 40100.40200.41000.52600.55700.62000.62700.407700.2729300 | Concreting | 1d | 2026-01-10 | 2026-01-10 | 6006 |  | RGA - STRUCTURE | 8873464 |
| 6008 | 40100.40200.41000.52600.55700.62000.62700.407800 | **14th Floor slab** | 9d | 2026-01-11 | 2026-01-19 |  | start no earlier than 2026-01-11 | RGA - STRUCTURE | 8866814 |
| 6009 | 40100.40200.41000.52600.55700.62000.62700.407800.2729400 | Wall Reinforcement & Form work | 4d | 2026-01-11 | 2026-01-14 | 6007 |  | RGA - STRUCTURE | 8873474 |
| 6010 | 40100.40200.41000.52600.55700.62000.62700.407800.2729500 | Slab shuttering & Rebar. | 4d | 2026-01-15 | 2026-01-18 | 6009 |  | RGA - STRUCTURE | 8873484 |
| 6011 | 40100.40200.41000.52600.55700.62000.62700.407800.2729600 | Concreting | 1d | 2026-01-19 | 2026-01-19 | 6010 |  | RGA - STRUCTURE | 8873494 |
| 6012 | 40100.40200.41000.52600.55700.62000.62700.407900 | **15th Floor slab** | 9d | 2026-01-20 | 2026-01-29 |  | start no earlier than 2026-01-20 | RGA - STRUCTURE | 8866824 |
| 6013 | 40100.40200.41000.52600.55700.62000.62700.407900.2729700 | Wall Reinforcement & Form work | 4d | 2026-01-20 | 2026-01-23 | 6011 |  | RGA - STRUCTURE | 8873504 |
| 6014 | 40100.40200.41000.52600.55700.62000.62700.407900.2729800 | Slab shuttering & Rebar. | 4d | 2026-01-24 | 2026-01-28 | 6013 |  | RGA - STRUCTURE | 8873514 |
| 6015 | 40100.40200.41000.52600.55700.62000.62700.407900.2729900 | Concreting | 1d | 2026-01-29 | 2026-01-29 | 6014 |  | RGA - STRUCTURE | 8873524 |
| 6016 | 40100.40200.41000.52600.55700.62000.62700.408000 | **16th Floor slab** | 9d | 2026-01-30 | 2026-02-07 |  | start no earlier than 2026-01-30 | RGA - STRUCTURE | 8866844 |
| 6017 | 40100.40200.41000.52600.55700.62000.62700.408000.2730000 | Wall Reinforcement & Form work | 4d | 2026-01-30 | 2026-02-02 | 6015 |  | RGA - STRUCTURE | 8873534 |
| 6018 | 40100.40200.41000.52600.55700.62000.62700.408000.2730100 | Slab shuttering & Rebar. | 4d | 2026-02-03 | 2026-02-06 | 6017 |  | RGA - STRUCTURE | 8873544 |
| 6019 | 40100.40200.41000.52600.55700.62000.62700.408000.2730200 | Concreting | 1d | 2026-02-07 | 2026-02-07 | 6018 |  | RGA - STRUCTURE | 8873554 |
| 6020 | 40100.40200.41000.52600.55700.62000.62700.408100 | **17th Floor slab** | 9d | 2026-02-08 | 2026-02-16 |  | start no earlier than 2026-02-08 | RGA - STRUCTURE | 8866854 |
| 6021 | 40100.40200.41000.52600.55700.62000.62700.408100.2730300 | Wall Reinforcement & Form work | 4d | 2026-02-08 | 2026-02-11 | 6019 |  | RGA - STRUCTURE | 8873564 |
| 6022 | 40100.40200.41000.52600.55700.62000.62700.408100.2730400 | Slab shuttering & Rebar. | 4d | 2026-02-12 | 2026-02-15 | 6021 |  | RGA - STRUCTURE | 8873574 |
| 6023 | 40100.40200.41000.52600.55700.62000.62700.408100.2730500 | Concreting | 1d | 2026-02-16 | 2026-02-16 | 6022 |  | RGA - STRUCTURE | 8873584 |
| 6024 | 40100.40200.41000.52600.55700.62000.62700.408200 | **18th Floor slab** | 9d | 2026-02-17 | 2026-02-25 |  | start no earlier than 2026-02-17 | RGA - STRUCTURE | 8866864 |
| 6025 | 40100.40200.41000.52600.55700.62000.62700.408200.2730600 | Wall Reinforcement & Form work | 4d | 2026-02-17 | 2026-02-20 | 6023 |  | RGA - STRUCTURE | 8873594 |
| 6026 | 40100.40200.41000.52600.55700.62000.62700.408200.2730700 | Slab shuttering & Rebar. | 4d | 2026-02-21 | 2026-02-24 | 6025 |  | RGA - STRUCTURE | 8873604 |
| 6027 | 40100.40200.41000.52600.55700.62000.62700.408200.2730800 | Concreting | 1d | 2026-02-25 | 2026-02-25 | 6026 |  | RGA - STRUCTURE | 8873614 |

Notes:
- 6004: AVg Slab Cycle of 21 days
- 6008: AVg Slab Cycle of 21 days

| ID | WBS | Task | Duration | Start | Finish | Predecessors | Constraint | Calendar | Unique_Task_ID |
| --- | --- | --- | --- | --- | --- | --- | --- | --- | --- |
| 6028 | 40100.40200.41000.52600.55700.62000.62700.408300 | **19th Floor slab** | 8d | 2026-02-26 | 2026-03-05 |  | start no earlier than 2026-02-26 | RGA - STRUCTURE | 8866874 |
| 6029 | 40100.40200.41000.52600.55700.62000.62700.408300.2730900 | Wall Reinforcement & Form work | 4d | 2026-02-26 | 2026-03-01 | 6027 |  | RGA - STRUCTURE | 8873624 |
| 6030 | 40100.40200.41000.52600.55700.62000.62700.408300.2731000 | Slab shuttering & Rebar. | 3d | 2026-03-02 | 2026-03-04 | 6029 |  | RGA - STRUCTURE | 8873634 |
| 6031 | 40100.40200.41000.52600.55700.62000.62700.408300.2731100 | Concreting | 1d | 2026-03-05 | 2026-03-05 | 6030 |  | RGA - STRUCTURE | 8873644 |
| 6032 | 40100.40200.41000.52600.55700.62000.62700.408400 | **20th Floor slab (Refuge floor)** | 12d | 2026-03-06 | 2026-03-17 |  | start no earlier than 2026-03-06 | RGA - STRUCTURE | 8866884 |
| 6033 | 40100.40200.41000.52600.55700.62000.62700.408400.2731200 | Wall Reinforcement & Form work | 6d | 2026-03-06 | 2026-03-11 | 6031 |  | RGA - STRUCTURE | 8873654 |
| 6034 | 40100.40200.41000.52600.55700.62000.62700.408400.2731300 | Slab shuttering & Rebar. | 5d | 2026-03-12 | 2026-03-16 | 6033 |  | RGA - STRUCTURE | 8873664 |
| 6035 | 40100.40200.41000.52600.55700.62000.62700.408400.2731400 | Concreting | 1d | 2026-03-17 | 2026-03-17 | 6034 |  | RGA - STRUCTURE | 8873674 |
| 6036 | 40100.40200.41000.52600.55700.62000.62700.408500 | **21th Floor slab** | 8d | 2026-03-18 | 2026-03-25 |  | start no earlier than 2026-03-18 | RGA - STRUCTURE | 8866894 |
| 6037 | 40100.40200.41000.52600.55700.62000.62700.408500.2731500 | Wall Reinforcement & Form work | 4d | 2026-03-18 | 2026-03-21 | 6035 |  | RGA - STRUCTURE | 8873684 |
| 6038 | 40100.40200.41000.52600.55700.62000.62700.408500.2731600 | Slab shuttering & Rebar. | 3d | 2026-03-22 | 2026-03-24 | 6037 |  | RGA - STRUCTURE | 8873694 |
| 6039 | 40100.40200.41000.52600.55700.62000.62700.408500.2731700 | Concreting | 1d | 2026-03-25 | 2026-03-25 | 6038 |  | RGA - STRUCTURE | 8873704 |
| 6040 | 40100.40200.41000.52600.55700.62000.62700.408600 | **22th Floor slab** | 8d | 2026-03-26 | 2026-04-02 |  | start no earlier than 2026-03-26 | RGA - STRUCTURE | 8866914 |
| 6041 | 40100.40200.41000.52600.55700.62000.62700.408600.2731800 | Wall Reinforcement & Form work | 4d | 2026-03-26 | 2026-03-29 | 6039 |  | RGA - STRUCTURE | 8873714 |
| 6042 | 40100.40200.41000.52600.55700.62000.62700.408600.2731900 | Slab shuttering & Rebar. | 3d | 2026-03-30 | 2026-04-01 | 6041 |  | RGA - STRUCTURE | 8873724 |
| 6043 | 40100.40200.41000.52600.55700.62000.62700.408600.2732000 | Concreting | 1d | 2026-04-02 | 2026-04-02 | 6042 |  | RGA - STRUCTURE | 8873734 |
| 6044 | 40100.40200.41000.52600.55700.62000.62700.408700 | **23th Floor slab** | 8d | 2026-04-03 | 2026-04-10 |  | start no earlier than 2026-04-03 | RGA - STRUCTURE | 8866944 |
| 6045 | 40100.40200.41000.52600.55700.62000.62700.408700.2732100 | Wall Reinforcement & Form work | 4d | 2026-04-03 | 2026-04-06 | 6043 |  | RGA - STRUCTURE | 8873744 |
| 6046 | 40100.40200.41000.52600.55700.62000.62700.408700.2732200 | Slab shuttering & Rebar. | 3d | 2026-04-07 | 2026-04-09 | 6045 |  | RGA - STRUCTURE | 8873754 |
| 6047 | 40100.40200.41000.52600.55700.62000.62700.408700.2732300 | Concreting | 1d | 2026-04-10 | 2026-04-10 | 6046 |  | RGA - STRUCTURE | 8873764 |
| 6048 | 40100.40200.41000.52600.55700.62000.62700.408800 | **24th Floor slab** | 8d | 2026-04-11 | 2026-04-18 |  | start no earlier than 2026-04-11 | RGA - STRUCTURE | 8866964 |
| 6049 | 40100.40200.41000.52600.55700.62000.62700.408800.2732400 | Wall Reinforcement & Form work | 4d | 2026-04-11 | 2026-04-14 | 6047 |  | RGA - STRUCTURE | 8873774 |
| 6050 | 40100.40200.41000.52600.55700.62000.62700.408800.2732500 | Slab shuttering & Rebar. | 3d | 2026-04-15 | 2026-04-17 | 6049 |  | RGA - STRUCTURE | 8873784 |
| 6051 | 40100.40200.41000.52600.55700.62000.62700.408800.2732600 | Concreting | 1d | 2026-04-18 | 2026-04-18 | 6050 |  | RGA - STRUCTURE | 8873794 |

| ID | WBS | Task | Duration | Start | Finish | Predecessors | Constraint | Calendar | Unique_Task_ID |
| --- | --- | --- | --- | --- | --- | --- | --- | --- | --- |
| 6052 | 40100.40200.41000.52600.55700.62000.62700.408900 | **25th Floor slab** | 8d | 2026-04-19 | 2026-04-26 |  | start no earlier than 2026-04-19 | RGA - STRUCTURE | 8866974 |
| 6053 | 40100.40200.41000.52600.55700.62000.62700.408900.2732700 | Wall Reinforcement & Form work | 4d | 2026-04-19 | 2026-04-22 | 6051 |  | RGA - STRUCTURE | 8873804 |
| 6054 | 40100.40200.41000.52600.55700.62000.62700.408900.2732800 | Slab shuttering & Rebar. | 3d | 2026-04-23 | 2026-04-25 | 6053 |  | RGA - STRUCTURE | 8873814 |
| 6055 | 40100.40200.41000.52600.55700.62000.62700.408900.2732900 | Concreting | 1d | 2026-04-26 | 2026-04-26 | 6054 |  | RGA - STRUCTURE | 8873824 |
| 6056 | 40100.40200.41000.52600.55700.62000.62700.409000 | **Terrace Floor slab** | 12d | 2026-04-27 | 2026-05-09 |  | start no earlier than 2026-04-27 | RGA - STRUCTURE | 8867004 |
| 6057 | 40100.40200.41000.52600.55700.62000.62700.409000.2733000 | Wall Reinforcement & Form work | 6d | 2026-04-27 | 2026-05-03 | 6055 |  | RGA - STRUCTURE | 8873834 |
| 6058 | 40100.40200.41000.52600.55700.62000.62700.409000.2733100 | Slab shuttering & Rebar. | 5d | 2026-05-04 | 2026-05-08 | 6057 |  | RGA - STRUCTURE | 8873844 |
| 6059 | 40100.40200.41000.52600.55700.62000.62700.409000.2733200 | Concreting | 1d | 2026-05-09 | 2026-05-09 | 6058 |  | RGA - STRUCTURE | 8873854 |
| 6060 | 40100.40200.41000.52600.55700.62000.254300 | **RCC work above Terrace** | 44d | 2026-05-09 | 2026-06-27 |  | start no earlier than 2026-05-09 | RGA - STRUCTURE | 8866694 |
| 6061 | 40100.40200.41000.52600.55700.62000.254300.370600 | **STAIRCASE & OHT CORE** | 39d | 2026-05-09 | 2026-06-17 |  | start no earlier than 2026-05-09 | RGA - STRUCTURE | 8866744 |
| 6062 | 40100.40200.41000.52600.55700.62000.254300.370600.2733300 | STAIRCASE HEAD ROOM | 10d | 2026-05-09 | 2026-05-18 | 6058 |  | RGA - STRUCTURE | 8873864 |
| 6063 | 40100.40200.41000.52600.55700.62000.254300.370600.2733400 | OHT | 15d | 2026-05-19 | 2026-06-02 | 6062 |  | RGA - STRUCTURE | 8873874 |
| 6064 | 40100.40200.41000.52600.55700.62000.254300.370600.2733500 | SHAFT COVERING SLAB | 10d | 2026-05-10 | 2026-05-19 | 6059 |  | RGA - STRUCTURE | 8873884 |
| 6065 | 40100.40200.41000.52600.55700.62000.254300.370600.2733600 | DESHUTTERING OF OHT TOP SLAB | 7d | 2026-06-10 | 2026-06-17 | 6063FS+7d |  | RGA - STRUCTURE | 8873894 |
| 6066 | 40100.40200.41000.52600.55700.62000.254300.409100 | **LMR BOTTOM & TOP SLAB** | 43d | 2026-05-10 | 2026-06-27 |  | start no earlier than 2026-05-10 | RGA - STRUCTURE | 8867014 |
| 6067 | 40100.40200.41000.52600.55700.62000.254300.409100.2733700 | LMR COLUMNS / WALLS | 15d | 2026-05-10 | 2026-05-24 | 6059 |  | RGA - STRUCTURE | 8873904 |
| 6068 | 40100.40200.41000.52600.55700.62000.254300.409100.2733800 | LMR TOP SLAB | 20d | 2026-05-25 | 2026-06-13 | 6067 |  | RGA - STRUCTURE | 8873914 |
| 6069 | 40100.40200.41000.52600.55700.62000.254300.409100.2733900 | DESHUTTERING | 8d | 2026-06-14 | 2026-06-27 | 6068 |  | RGA - STRUCTURE | 8873924 |
| 6070 | 40100.40200.41000.52600.55700.59500 | **Civil Finishing works (Brick work, Plaster,conduiting, concled plumbing, waterproofing)** | 658.5d | 2025-04-01 | 2027-01-19 |  | start no earlier than 2025-04-01 | RGA -FINISHING | 8865834 |
| 6071 | 40100.40200.41000.52600.55700.59500.60800 | **Flat finishing works** | 580d | 2025-04-01 | 2026-11-01 |  | start no earlier than 2025-04-01 | RGA -FINISHING | 8865854 |
| 6072 | 40100.40200.41000.52600.55700.59500.60800.322600 | **Ground FLOOR** | 357d | 2025-05-16 | 2026-05-07 |  | start no earlier than 2025-05-16 | RGA -FINISHING | 8866454 |
| 6073 | 40100.40200.41000.52600.55700.59500.60800.322600.2734000 | BALCONY RAILING FIXING | 9d | 2025-09-05 | 2025-09-13 | 5967FS-31d |  | RGA -FINISHING | 8873934 |
| 6074 | 40100.40200.41000.52600.55700.59500.60800.322600.2734100 | Block work | 8d | 2025-06-07 | 2025-06-14 | 6078 |  | RGA -FINISHING | 8873944 |
| 6075 | 40100.40200.41000.52600.55700.59500.60800.322600.2734200 | CONCEALED ELEC CONDUITING & ITS FINISHING | 5d | 2026-05-03 | 2026-05-07 | 5957FS-7d |  | RGA -FINISHING | 8873954 |
| 6076 | 40100.40200.41000.52600.55700.59500.60800.322600.2734300 | PLASTER APPLICATION | 6d | 2025-05-16 | 2025-05-21 | 6254FS+30d |  | RGA -FINISHING | 8873964 |
| 6077 | 40100.40200.41000.52600.55700.59500.60800.322600.2734400 | CONCEALED PLUMBING | 8d | 2025-05-22 | 2025-05-29 | 6076 |  | RGA -FINISHING | 8873974 |
| 6078 | 40100.40200.41000.52600.55700.59500.60800.322600.2734500 | WATERPROOFING WORK FOR TOILETS, KITCHEN SUNK & PLANTERS | 8d | 2025-05-30 | 2025-06-06 | 6077 |  | RGA -FINISHING | 8873984 |

Notes:
- 6056: AVg Slab Cycle of 21 days

| ID | WBS | Task | Duration | Start | Finish | Predecessors | Constraint | Calendar | Unique_Task_ID |
| --- | --- | --- | --- | --- | --- | --- | --- | --- | --- |
| 6079 | 40100.40200.41000.52600.55700.59500.60800.322500 | **1ST FLOOR** | 108d | 2025-08-12 | 2025-11-27 |  | start no earlier than 2025-08-12 | RGA -FINISHING | 8866464 |
| 6080 | 40100.40200.41000.52600.55700.59500.60800.322500.2734600 | BALCONY RAILING FIXING | 9d | 2025-09-20 | 2025-09-28 | 5971FS-31d |  | RGA -FINISHING | 8873994 |
| 6081 | 40100.40200.41000.52600.55700.59500.60800.322500.2734700 | Block work | 8d | 2025-11-20 | 2025-11-27 | 6085 |  | RGA -FINISHING | 8874004 |
| 6082 | 40100.40200.41000.52600.55700.59500.60800.322500.2734800 | CONCEALED ELEC CONDUITING & ITS FINISHING | 5d | 2025-08-12 | 2025-08-16 | 5960FS-8d |  | RGA -FINISHING | 8874014 |
| 6083 | 40100.40200.41000.52600.55700.59500.60800.322500.2734900 | PLASTER APPLICATION | 6d | 2025-10-29 | 2025-11-03 | 6267FS+30d |  | RGA -FINISHING | 8874024 |
| 6084 | 40100.40200.41000.52600.55700.59500.60800.322500.2735000 | CONCEALED PLUMBING | 8d | 2025-11-04 | 2025-11-11 | 6083 |  | RGA -FINISHING | 8874034 |
| 6085 | 40100.40200.41000.52600.55700.59500.60800.322500.2735100 | WATERPROOFING WORK FOR TOILETS, KITCHEN SUNK & PLANTERS | 8d | 2025-11-12 | 2025-11-19 | 6084 |  | RGA -FINISHING | 8874044 |
| 6086 | 40100.40200.41000.52600.55700.59500.60800.322400 | **2nd FLOOR** | 86d | 2025-09-09 | 2025-12-03 |  | start no earlier than 2025-09-09 | RGA -FINISHING | 8866474 |
| 6087 | 40100.40200.41000.52600.55700.59500.60800.322400.2735200 | BALCONY RAILING FIXING | 9d | 2025-09-29 | 2025-10-07 | 5975FS-32d |  | RGA -FINISHING | 8874054 |
| 6088 | 40100.40200.41000.52600.55700.59500.60800.322400.2735300 | Block work | 8d | 2025-11-26 | 2025-12-03 | 6092 |  | RGA -FINISHING | 8874064 |
| 6089 | 40100.40200.41000.52600.55700.59500.60800.322400.2735400 | CONCEALED ELEC CONDUITING & ITS FINISHING | 5d | 2025-09-09 | 2025-09-13 | 5963FS-5d |  | RGA -FINISHING | 8874074 |
| 6090 | 40100.40200.41000.52600.55700.59500.60800.322400.2735500 | PLASTER APPLICATION | 6d | 2025-11-04 | 2025-11-09 | 6280FS+30d |  | RGA -FINISHING | 8874084 |
| 6091 | 40100.40200.41000.52600.55700.59500.60800.322400.2735600 | CONCEALED PLUMBING | 8d | 2025-11-10 | 2025-11-17 | 6090 |  | RGA -FINISHING | 8874094 |
| 6092 | 40100.40200.41000.52600.55700.59500.60800.322400.2735700 | WATERPROOFING WORK FOR TOILETS, KITCHEN SUNK & PLANTERS | 8d | 2025-11-18 | 2025-11-25 | 6091 |  | RGA -FINISHING | 8874104 |
| 6093 | 40100.40200.41000.52600.55700.59500.60800.322300 | **3rd FLOOR** | 76d | 2025-09-28 | 2025-12-12 |  | start no earlier than 2025-09-28 | RGA -FINISHING | 8866484 |
| 6094 | 40100.40200.41000.52600.55700.59500.60800.322300.2735800 | BALCONY RAILING FIXING | 9d | 2025-10-24 | 2025-11-01 | 5979FS-16d |  | RGA -FINISHING | 8874114 |
| 6095 | 40100.40200.41000.52600.55700.59500.60800.322300.2735900 | Block work | 8d | 2025-12-05 | 2025-12-12 | 6099 |  | RGA -FINISHING | 8874124 |
| 6096 | 40100.40200.41000.52600.55700.59500.60800.322300.2736000 | CONCEALED ELEC CONDUITING & ITS FINISHING | 5d | 2025-09-28 | 2025-10-02 | 5967FS-8d |  | RGA -FINISHING | 8874134 |
| 6097 | 40100.40200.41000.52600.55700.59500.60800.322300.2736100 | PLASTER APPLICATION | 6d | 2025-11-13 | 2025-11-18 | 6293FS+30d |  | RGA -FINISHING | 8874154 |
| 6098 | 40100.40200.41000.52600.55700.59500.60800.322300.2736200 | CONCEALED PLUMBING | 8d | 2025-11-19 | 2025-11-26 | 6097 |  | RGA -FINISHING | 8874164 |
| 6099 | 40100.40200.41000.52600.55700.59500.60800.322300.2736300 | WATERPROOFING WORK FOR TOILETS, KITCHEN SUNK & PLANTERS | 8d | 2025-11-27 | 2025-12-04 | 6098 |  | RGA -FINISHING | 8874174 |
| 6100 | 40100.40200.41000.52600.55700.59500.60800.322200 | **4th FLOOR** | 85d | 2025-10-14 | 2026-01-06 |  | start no earlier than 2025-10-14 | RGA -FINISHING | 8866494 |
| 6101 | 40100.40200.41000.52600.55700.59500.60800.322200.2736400 | BALCONY RAILING FIXING | 9d | 2025-11-03 | 2025-11-11 | 5983FS-15d |  | RGA -FINISHING | 8874184 |
| 6102 | 40100.40200.41000.52600.55700.59500.60800.322200.2736500 | Block work | 8d | 2025-12-30 | 2026-01-06 | 6106 |  | RGA -FINISHING | 8874194 |
| 6103 | 40100.40200.41000.52600.55700.59500.60800.322200.2736600 | CONCEALED ELEC CONDUITING & ITS FINISHING | 5d | 2025-10-14 | 2025-10-18 | 5971FS-7d |  | RGA -FINISHING | 8874204 |
| 6104 | 40100.40200.41000.52600.55700.59500.60800.322200.2736700 | PLASTER APPLICATION | 6d | 2025-12-08 | 2025-12-13 | 6306FS+30d |  | RGA -FINISHING | 8874214 |
| 6105 | 40100.40200.41000.52600.55700.59500.60800.322200.2736800 | CONCEALED PLUMBING | 8d | 2025-12-14 | 2025-12-21 | 6104 |  | RGA -FINISHING | 8874224 |
| 6106 | 40100.40200.41000.52600.55700.59500.60800.322200.2736900 | WATERPROOFING WORK FOR TOILETS, KITCHEN SUNK & PLANTERS | 8d | 2025-12-22 | 2025-12-29 | 6105 |  | RGA -FINISHING | 8874234 |

| ID | WBS | Task | Duration | Start | Finish | Predecessors | Constraint | Calendar | Unique_Task_ID |
| --- | --- | --- | --- | --- | --- | --- | --- | --- | --- |
| 6107 | 40100.40200.41000.52600.55700.59500.60800.322100 | **5th FLOOR** | 71d | 2025-10-23 | 2026-01-01 |  | start no earlier than 2025-10-23 | RGA -FINISHING | 8866504 |
| 6108 | 40100.40200.41000.52600.55700.59500.60800.322100.2737000 | BALCONY RAILING FIXING | 9d | 2025-11-12 | 2025-11-20 | 5987FS-15d |  | RGA -FINISHING | 8874244 |
| 6109 | 40100.40200.41000.52600.55700.59500.60800.322100.2737100 | Block work | 8d | 2025-12-25 | 2026-01-01 | 6113 |  | RGA -FINISHING | 8874254 |
| 6110 | 40100.40200.41000.52600.55700.59500.60800.322100.2737200 | CONCEALED ELEC CONDUITING & ITS FINISHING | 5d | 2025-10-23 | 2025-10-27 | 5975FS-8d |  | RGA -FINISHING | 8874264 |
| 6111 | 40100.40200.41000.52600.55700.59500.60800.322100.2737300 | PLASTER APPLICATION | 6d | 2025-12-03 | 2025-12-08 | 6319FS+15d |  | RGA -FINISHING | 8874274 |
| 6112 | 40100.40200.41000.52600.55700.59500.60800.322100.2737400 | CONCEALED PLUMBING | 8d | 2025-12-09 | 2025-12-16 | 6111 |  | RGA -FINISHING | 8874284 |
| 6113 | 40100.40200.41000.52600.55700.59500.60800.322100.2737500 | WATERPROOFING WORK FOR TOILETS, KITCHEN SUNK & PLANTERS | 8d | 2025-12-17 | 2025-12-24 | 6112 |  | RGA -FINISHING | 8874294 |
| 6114 | 40100.40200.41000.52600.55700.59500.60800.322000 | **6th FLOOR** | 70d | 2025-11-02 | 2026-01-10 |  | start no earlier than 2025-11-02 | RGA -FINISHING | 8866514 |
| 6115 | 40100.40200.41000.52600.55700.59500.60800.322000.2737600 | BALCONY RAILING FIXING | 9d | 2025-11-21 | 2025-11-29 | 5991FS-15d |  | RGA -FINISHING | 8874304 |
| 6116 | 40100.40200.41000.52600.55700.59500.60800.322000.2737700 | Block work | 8d | 2026-01-03 | 2026-01-10 | 6120 |  | RGA -FINISHING | 8874314 |
| 6117 | 40100.40200.41000.52600.55700.59500.60800.322000.2737800 | CONCEALED ELEC CONDUITING & ITS FINISHING | 5d | 2025-11-02 | 2025-11-06 | 5979FS-7d |  | RGA -FINISHING | 8874324 |
| 6118 | 40100.40200.41000.52600.55700.59500.60800.322000.2737900 | PLASTER APPLICATION | 6d | 2025-12-12 | 2025-12-17 | 6332FS+15d |  | RGA -FINISHING | 8874334 |
| 6119 | 40100.40200.41000.52600.55700.59500.60800.322000.2738000 | CONCEALED PLUMBING | 8d | 2025-12-18 | 2025-12-25 | 6118 |  | RGA -FINISHING | 8874344 |
| 6120 | 40100.40200.41000.52600.55700.59500.60800.322000.2738100 | WATERPROOFING WORK FOR TOILETS, KITCHEN SUNK & PLANTERS | 8d | 2025-12-26 | 2026-01-02 | 6119 |  | RGA -FINISHING | 8874354 |
| 6121 | 40100.40200.41000.52600.55700.59500.60800.321900 | **7th FLOOR** | 70d | 2025-11-11 | 2026-01-19 |  | start no earlier than 2025-11-11 | RGA -FINISHING | 8866524 |
| 6122 | 40100.40200.41000.52600.55700.59500.60800.321900.2738200 | BALCONY RAILING FIXING | 9d | 2025-11-30 | 2025-12-08 | 5995FS-15d |  | RGA -FINISHING | 8874364 |
| 6123 | 40100.40200.41000.52600.55700.59500.60800.321900.2738300 | Block work | 8d | 2026-01-12 | 2026-01-19 | 6127 |  | RGA -FINISHING | 8874374 |
| 6124 | 40100.40200.41000.52600.55700.59500.60800.321900.2738400 | CONCEALED ELEC CONDUITING & ITS FINISHING | 5d | 2025-11-11 | 2025-11-15 | 5983FS-7d |  | RGA -FINISHING | 8874384 |
| 6125 | 40100.40200.41000.52600.55700.59500.60800.321900.2738500 | PLASTER APPLICATION | 6d | 2025-12-21 | 2025-12-26 | 6345FS+15d |  | RGA -FINISHING | 8874394 |
| 6126 | 40100.40200.41000.52600.55700.59500.60800.321900.2738600 | CONCEALED PLUMBING | 8d | 2025-12-27 | 2026-01-03 | 6125 |  | RGA -FINISHING | 8874404 |
| 6127 | 40100.40200.41000.52600.55700.59500.60800.321900.2738700 | WATERPROOFING WORK FOR TOILETS, KITCHEN SUNK & PLANTERS | 8d | 2026-01-04 | 2026-01-11 | 6126 |  | RGA -FINISHING | 8874414 |
| 6128 | 40100.40200.41000.52600.55700.59500.60800.321800 | **8th FLOOR** | 345d | 2025-11-22 | 2026-11-01 |  | start no earlier than 2025-11-22 | RGA -FINISHING | 8866534 |
| 6129 | 40100.40200.41000.52600.55700.59500.60800.321800.2738800 | BALCONY RAILING FIXING | 9d | 2025-12-09 | 2025-12-17 | 5999FS-15d |  | RGA -FINISHING | 8874424 |
| 6130 | 40100.40200.41000.52600.55700.59500.60800.321800.2738900 | Block work | 8d | 2026-10-25 | 2026-11-01 | 6134 |  | RGA -FINISHING | 8874434 |
| 6131 | 40100.40200.41000.52600.55700.59500.60800.321800.2739000 | CONCEALED ELEC CONDUITING & ITS FINISHING | 5d | 2025-11-22 | 2025-11-26 | 5987FS-5d |  | RGA -FINISHING | 8874444 |
| 6132 | 40100.40200.41000.52600.55700.59500.60800.321800.2739100 | PLASTER APPLICATION | 6d | 2026-10-03 | 2026-10-08 | 6355FS+15d |  | RGA -FINISHING | 8874454 |
| 6133 | 40100.40200.41000.52600.55700.59500.60800.321800.2739200 | CONCEALED PLUMBING | 8d | 2026-10-09 | 2026-10-16 | 6132 |  | RGA -FINISHING | 8874464 |
| 6134 | 40100.40200.41000.52600.55700.59500.60800.321800.2739300 | WATERPROOFING WORK FOR TOILETS, KITCHEN SUNK & PLANTERS | 8d | 2026-10-17 | 2026-10-24 | 6133 |  | RGA -FINISHING | 8874474 |

| ID | WBS | Task | Duration | Start | Finish | Predecessors | Constraint | Calendar | Unique_Task_ID |
| --- | --- | --- | --- | --- | --- | --- | --- | --- | --- |
| 6135 | 40100.40200.41000.52600.55700.59500.60800.321700 | **9th FLOOR** | 49d | 2025-12-01 | 2026-01-18 |  | start no earlier than 2025-12-01 | RGA -FINISHING | 8866544 |
| 6136 | 40100.40200.41000.52600.55700.59500.60800.321700.2739400 | BALCONY RAILING FIXING | 9d | 2025-12-18 | 2025-12-26 | 6003FS-15d |  | RGA -FINISHING | 8874484 |
| 6137 | 40100.40200.41000.52600.55700.59500.60800.321700.2739500 | Block work | 8d | 2026-01-09 | 2026-01-16 | 6141 |  | RGA -FINISHING | 8874494 |
| 6138 | 40100.40200.41000.52600.55700.59500.60800.321700.2739600 | CONCEALED ELEC CONDUITING & ITS FINISHING | 5d | 2025-12-01 | 2025-12-05 | 5991FS-5d |  | RGA -FINISHING | 8874504 |
| 6139 | 40100.40200.41000.52600.55700.59500.60800.321700.2739700 | PLASTER APPLICATION | 6d | 2026-01-13 | 2026-01-18 | 6668FS+15d |  | RGA -FINISHING | 8874514 |
| 6140 | 40100.40200.41000.52600.55700.59500.60800.321700.2739800 | CONCEALED PLUMBING | 8d | 2025-12-24 | 2025-12-31 | 6371 |  | RGA -FINISHING | 8874524 |
| 6141 | 40100.40200.41000.52600.55700.59500.60800.321700.2739900 | WATERPROOFING WORK FOR TOILETS, KITCHEN SUNK & PLANTERS | 8d | 2026-01-01 | 2026-01-08 | 6140 |  | RGA -FINISHING | 8874534 |
| 6142 | 40100.40200.41000.52600.55700.59500.60800.321600 | **10th FLOOR** | 70d | 2025-12-08 | 2026-02-15 |  | start no earlier than 2025-12-08 | RGA -FINISHING | 8866554 |
| 6143 | 40100.40200.41000.52600.55700.59500.60800.321600.2740000 | BALCONY RAILING FIXING | 9d | 2025-12-27 | 2026-01-04 | 6007FS-15d |  | RGA -FINISHING | 8874544 |
| 6144 | 40100.40200.41000.52600.55700.59500.60800.321600.2740100 | Block work | 8d | 2026-02-08 | 2026-02-15 | 6148 |  | RGA -FINISHING | 8874554 |
| 6145 | 40100.40200.41000.52600.55700.59500.60800.321600.2740200 | CONCEALED ELEC CONDUITING & ITS FINISHING | 5d | 2025-12-08 | 2025-12-12 | 5995FS-7d |  | RGA -FINISHING | 8874564 |
| 6146 | 40100.40200.41000.52600.55700.59500.60800.321600.2740300 | PLASTER APPLICATION | 6d | 2026-01-17 | 2026-01-22 | 6384FS+15d |  | RGA -FINISHING | 8874574 |
| 6147 | 40100.40200.41000.52600.55700.59500.60800.321600.2740400 | CONCEALED PLUMBING | 8d | 2026-01-23 | 2026-01-30 | 6146 |  | RGA -FINISHING | 8874584 |
| 6148 | 40100.40200.41000.52600.55700.59500.60800.321600.2740500 | WATERPROOFING WORK FOR TOILETS, KITCHEN SUNK & PLANTERS | 8d | 2026-01-31 | 2026-02-07 | 6147 |  | RGA -FINISHING | 8874594 |
| 6149 | 40100.40200.41000.52600.55700.59500.60800.321500 | **11th FLOOR** | 70d | 2025-12-17 | 2026-02-24 |  | start no earlier than 2025-12-17 | RGA -FINISHING | 8866564 |
| 6150 | 40100.40200.41000.52600.55700.59500.60800.321500.2740600 | BALCONY RAILING FIXING | 9d | 2026-01-05 | 2026-01-13 | 6011FS-15d |  | RGA -FINISHING | 8874604 |
| 6151 | 40100.40200.41000.52600.55700.59500.60800.321500.2740700 | Block work | 8d | 2026-02-17 | 2026-02-24 | 6155 |  | RGA -FINISHING | 8874614 |
| 6152 | 40100.40200.41000.52600.55700.59500.60800.321500.2740800 | CONCEALED ELEC CONDUITING & ITS FINISHING | 5d | 2025-12-17 | 2025-12-21 | 5999FS-7d |  | RGA -FINISHING | 8874624 |
| 6153 | 40100.40200.41000.52600.55700.59500.60800.321500.2740900 | PLASTER APPLICATION | 6d | 2026-01-26 | 2026-01-31 | 6397FS+15d |  | RGA -FINISHING | 8874634 |
| 6154 | 40100.40200.41000.52600.55700.59500.60800.321500.2741000 | CONCEALED PLUMBING | 8d | 2026-02-01 | 2026-02-08 | 6153 |  | RGA -FINISHING | 8874644 |
| 6155 | 40100.40200.41000.52600.55700.59500.60800.321500.2741100 | WATERPROOFING WORK FOR TOILETS, KITCHEN SUNK & PLANTERS | 8d | 2026-02-09 | 2026-02-16 | 6154 |  | RGA -FINISHING | 8874654 |
| 6156 | 40100.40200.41000.52600.55700.59500.60800.321400 | **12th FLOOR** | 47d | 2025-12-26 | 2026-02-10 |  | start no earlier than 2025-12-26 | RGA -FINISHING | 8866574 |
| 6157 | 40100.40200.41000.52600.55700.59500.60800.321400.2741200 | BALCONY RAILING FIXING | 9d | 2026-01-14 | 2026-01-22 | 6015FS-16d |  | RGA -FINISHING | 8874664 |
| 6158 | 40100.40200.41000.52600.55700.59500.60800.321400.2741300 | Block work | 8d | 2026-02-03 | 2026-02-10 | 6161 |  | RGA -FINISHING | 8874674 |
| 6159 | 40100.40200.41000.52600.55700.59500.60800.321400.2741400 | CONCEALED ELEC CONDUITING & ITS FINISHING | 5d | 2025-12-26 | 2025-12-30 | 6003FS-7d |  | RGA -FINISHING | 8874684 |
| 6160 | 40100.40200.41000.52600.55700.59500.60800.321400.2741500 | PLASTER APPLICATION | 6d | 2026-01-20 | 2026-01-25 | 6410 |  | RGA -FINISHING | 8874694 |
| 6161 | 40100.40200.41000.52600.55700.59500.60800.321400.2741600 | CONCEALED PLUMBING | 8d | 2026-01-26 | 2026-02-02 | 6160 |  | RGA -FINISHING | 8874704 |
| 6162 | 40100.40200.41000.52600.55700.59500.60800.321400.2741700 | WATERPROOFING WORK FOR TOILETS, KITCHEN SUNK & PLANTERS | 8d | 2026-02-03 | 2026-02-10 | 6161 |  | RGA -FINISHING | 8874714 |

| ID | WBS | Task | Duration | Start | Finish | Predecessors | Constraint | Calendar | Unique_Task_ID |
| --- | --- | --- | --- | --- | --- | --- | --- | --- | --- |
| 6163 | 40100.40200.41000.52600.55700.59500.60800.321300 | **13th FLOOR** | 69d | 2026-01-04 | 2026-03-13 |  | start no earlier than 2026-01-04 | RGA -FINISHING | 8866584 |
| 6164 | 40100.40200.41000.52600.55700.59500.60800.321300.2741800 | BALCONY RAILING FIXING | 9d | 2026-01-23 | 2026-01-31 | 6019FS-16d |  | RGA -FINISHING | 8874724 |
| 6165 | 40100.40200.41000.52600.55700.59500.60800.321300.2741900 | Block work | 8d | 2026-03-06 | 2026-03-13 | 6169 |  | RGA -FINISHING | 8874734 |
| 6166 | 40100.40200.41000.52600.55700.59500.60800.321300.2742000 | CONCEALED ELEC CONDUITING & ITS FINISHING | 5d | 2026-01-04 | 2026-01-08 | 6007FS-7d |  | RGA -FINISHING | 8874744 |
| 6167 | 40100.40200.41000.52600.55700.59500.60800.321300.2742100 | PLASTER APPLICATION | 15d | 2026-01-29 | 2026-02-12 | 6423 |  | RGA -FINISHING | 8874754 |
| 6168 | 40100.40200.41000.52600.55700.59500.60800.321300.2742200 | CONCEALED PLUMBING | 9d | 2026-02-13 | 2026-02-21 | 6167 |  | RGA -FINISHING | 8874764 |
| 6169 | 40100.40200.41000.52600.55700.59500.60800.321300.2742300 | WATERPROOFING WORK FOR TOILETS, KITCHEN SUNK & PLANTERS | 12d | 2026-02-22 | 2026-03-05 | 6168 |  | RGA -FINISHING | 8874774 |
| 6170 | 40100.40200.41000.52600.55700.59500.60800.321200 | **14th FLOOR** | 71d | 2026-01-13 | 2026-03-24 |  | start no earlier than 2026-01-13 | RGA -FINISHING | 8866594 |
| 6171 | 40100.40200.41000.52600.55700.59500.60800.321200.2742400 | BALCONY RAILING FIXING | 9d | 2026-02-02 | 2026-02-10 | 6023FS-15d |  | RGA -FINISHING | 8874784 |
| 6172 | 40100.40200.41000.52600.55700.59500.60800.321200.2742500 | Block work | 8d | 2026-03-17 | 2026-03-24 | 6176 |  | RGA -FINISHING | 8874794 |
| 6173 | 40100.40200.41000.52600.55700.59500.60800.321200.2742600 | CONCEALED ELEC CONDUITING & ITS FINISHING | 5d | 2026-01-13 | 2026-01-17 | 6011FS-7d |  | RGA -FINISHING | 8874804 |
| 6174 | 40100.40200.41000.52600.55700.59500.60800.321200.2742700 | PLASTER APPLICATION | 15d | 2026-02-09 | 2026-02-23 | 6436 |  | RGA -FINISHING | 8874814 |
| 6175 | 40100.40200.41000.52600.55700.59500.60800.321200.2742800 | CONCEALED PLUMBING | 9d | 2026-02-24 | 2026-03-04 | 6174 |  | RGA -FINISHING | 8874824 |
| 6176 | 40100.40200.41000.52600.55700.59500.60800.321200.2742900 | WATERPROOFING WORK FOR TOILETS, KITCHEN SUNK & PLANTERS | 12d | 2026-03-05 | 2026-03-16 | 6175 |  | RGA -FINISHING | 8874834 |
| 6177 | 40100.40200.41000.52600.55700.59500.60800.321100 | **15th FLOOR** | 72d | 2026-01-22 | 2026-04-03 |  | start no earlier than 2026-01-22 | RGA -FINISHING | 8866604 |
| 6178 | 40100.40200.41000.52600.55700.59500.60800.321100.2743000 | BALCONY RAILING FIXING | 9d | 2026-02-11 | 2026-02-19 | 6027FS-15d |  | RGA -FINISHING | 8874844 |
| 6179 | 40100.40200.41000.52600.55700.59500.60800.321100.2743100 | Block work | 8d | 2026-03-27 | 2026-04-03 | 6183 |  | RGA -FINISHING | 8874854 |
| 6180 | 40100.40200.41000.52600.55700.59500.60800.321100.2743200 | CONCEALED ELEC CONDUITING & ITS FINISHING | 5d | 2026-01-22 | 2026-01-26 | 6015FS-8d |  | RGA -FINISHING | 8874864 |
| 6181 | 40100.40200.41000.52600.55700.59500.60800.321100.2743300 | PLASTER APPLICATION | 15d | 2026-02-19 | 2026-03-05 | 6449 |  | RGA -FINISHING | 8874874 |
| 6182 | 40100.40200.41000.52600.55700.59500.60800.321100.2743400 | CONCEALED PLUMBING | 9d | 2026-03-06 | 2026-03-14 | 6181 |  | RGA -FINISHING | 8874884 |
| 6183 | 40100.40200.41000.52600.55700.59500.60800.321100.2743500 | WATERPROOFING WORK FOR TOILETS, KITCHEN SUNK & PLANTERS | 12d | 2026-03-15 | 2026-03-26 | 6182 |  | RGA -FINISHING | 8874894 |
| 6184 | 40100.40200.41000.52600.55700.59500.60800.321000 | **16th FLOOR** | 71d | 2026-02-01 | 2026-04-12 |  | start no earlier than 2026-02-01 | RGA -FINISHING | 8866614 |
| 6185 | 40100.40200.41000.52600.55700.59500.60800.321000.2743600 | BALCONY RAILING FIXING | 9d | 2026-02-19 | 2026-02-27 | 6031FS-15d |  | RGA -FINISHING | 8874904 |
| 6186 | 40100.40200.41000.52600.55700.59500.60800.321000.2743700 | Block work | 8d | 2026-04-05 | 2026-04-12 | 6190 |  | RGA -FINISHING | 8874914 |
| 6187 | 40100.40200.41000.52600.55700.59500.60800.321000.2743800 | CONCEALED ELEC CONDUITING & ITS FINISHING | 5d | 2026-02-01 | 2026-02-05 | 6019FS-7d |  | RGA -FINISHING | 8874924 |
| 6188 | 40100.40200.41000.52600.55700.59500.60800.321000.2743900 | PLASTER APPLICATION | 15d | 2026-02-28 | 2026-03-14 | 6462 |  | RGA -FINISHING | 8874934 |
| 6189 | 40100.40200.41000.52600.55700.59500.60800.321000.2744000 | CONCEALED PLUMBING | 9d | 2026-03-15 | 2026-03-23 | 6188 |  | RGA -FINISHING | 8874944 |
| 6190 | 40100.40200.41000.52600.55700.59500.60800.321000.2744100 | WATERPROOFING WORK FOR TOILETS, KITCHEN SUNK & PLANTERS | 12d | 2026-03-24 | 2026-04-04 | 6189 |  | RGA -FINISHING | 8874954 |

| ID | WBS | Task | Duration | Start | Finish | Predecessors | Constraint | Calendar | Unique_Task_ID |
| --- | --- | --- | --- | --- | --- | --- | --- | --- | --- |
| 6191 | 40100.40200.41000.52600.55700.59500.60800.320900 | **17th FLOOR** | 70d | 2026-02-10 | 2026-04-20 |  | start no earlier than 2026-02-10 | RGA -FINISHING | 8866624 |
| 6192 | 40100.40200.41000.52600.55700.59500.60800.320900.2744200 | BALCONY RAILING FIXING | 9d | 2026-03-03 | 2026-03-11 | 6035FS-15d |  | RGA -FINISHING | 8874964 |
| 6193 | 40100.40200.41000.52600.55700.59500.60800.320900.2744300 | Block work | 8d | 2026-04-13 | 2026-04-20 | 6197 |  | RGA -FINISHING | 8874974 |
| 6194 | 40100.40200.41000.52600.55700.59500.60800.320900.2744400 | CONCEALED ELEC CONDUITING & ITS FINISHING | 5d | 2026-02-10 | 2026-02-14 | 6023FS-7d |  | RGA -FINISHING | 8874984 |
| 6195 | 40100.40200.41000.52600.55700.59500.60800.320900.2744500 | PLASTER APPLICATION | 15d | 2026-03-08 | 2026-03-22 | 6475 |  | RGA -FINISHING | 8874994 |
| 6196 | 40100.40200.41000.52600.55700.59500.60800.320900.2744600 | CONCEALED PLUMBING | 9d | 2026-03-23 | 2026-03-31 | 6195 |  | RGA -FINISHING | 8875004 |
| 6197 | 40100.40200.41000.52600.55700.59500.60800.320900.2744700 | WATERPROOFING WORK FOR TOILETS, KITCHEN SUNK & PLANTERS | 12d | 2026-04-01 | 2026-04-12 | 6196 |  | RGA -FINISHING | 8875014 |
| 6198 | 40100.40200.41000.52600.55700.59500.60800.320800 | **18th FLOOR** | 73d | 2026-02-19 | 2026-05-02 |  | start no earlier than 2026-02-19 | RGA -FINISHING | 8866634 |
| 6199 | 40100.40200.41000.52600.55700.59500.60800.320800.2744800 | BALCONY RAILING FIXING | 9d | 2026-03-11 | 2026-03-19 | 6039FS-15d |  | RGA -FINISHING | 8875024 |
| 6200 | 40100.40200.41000.52600.55700.59500.60800.320800.2744900 | Block work | 8d | 2026-04-25 | 2026-05-02 | 6204 |  | RGA -FINISHING | 8875034 |
| 6201 | 40100.40200.41000.52600.55700.59500.60800.320800.2745000 | CONCEALED ELEC CONDUITING & ITS FINISHING | 5d | 2026-02-19 | 2026-02-23 | 6027FS-7d |  | RGA -FINISHING | 8875044 |
| 6202 | 40100.40200.41000.52600.55700.59500.60800.320800.2745100 | PLASTER APPLICATION | 15d | 2026-03-20 | 2026-04-03 | 6488 |  | RGA -FINISHING | 8875054 |
| 6203 | 40100.40200.41000.52600.55700.59500.60800.320800.2745200 | CONCEALED PLUMBING | 9d | 2026-04-04 | 2026-04-12 | 6202 |  | RGA -FINISHING | 8875064 |
| 6204 | 40100.40200.41000.52600.55700.59500.60800.320800.2745300 | WATERPROOFING WORK FOR TOILETS, KITCHEN SUNK & PLANTERS | 12d | 2026-04-13 | 2026-04-24 | 6203 |  | RGA -FINISHING | 8875074 |
| 6205 | 40100.40200.41000.52600.55700.59500.60800.320700 | **19th FLOOR** | 73d | 2026-02-27 | 2026-05-10 |  | start no earlier than 2026-02-27 | RGA -FINISHING | 8866644 |
| 6206 | 40100.40200.41000.52600.55700.59500.60800.320700.2745400 | BALCONY RAILING FIXING | 9d | 2026-03-19 | 2026-03-27 | 6043FS-15d |  | RGA -FINISHING | 8875084 |
| 6207 | 40100.40200.41000.52600.55700.59500.60800.320700.2745500 | Block work | 8d | 2026-05-03 | 2026-05-10 | 6211 |  | RGA -FINISHING | 8875094 |
| 6208 | 40100.40200.41000.52600.55700.59500.60800.320700.2745600 | CONCEALED ELEC CONDUITING & ITS FINISHING | 5d | 2026-02-27 | 2026-03-03 | 6031FS-7d |  | RGA -FINISHING | 8875104 |
| 6209 | 40100.40200.41000.52600.55700.59500.60800.320700.2745700 | PLASTER APPLICATION | 15d | 2026-03-28 | 2026-04-11 | 6501 |  | RGA -FINISHING | 8875114 |
| 6210 | 40100.40200.41000.52600.55700.59500.60800.320700.2745800 | CONCEALED PLUMBING | 9d | 2026-04-12 | 2026-04-20 | 6209 |  | RGA -FINISHING | 8875124 |
| 6211 | 40100.40200.41000.52600.55700.59500.60800.320700.2745900 | WATERPROOFING WORK FOR TOILETS, KITCHEN SUNK & PLANTERS | 12d | 2026-04-21 | 2026-05-02 | 6210 |  | RGA -FINISHING | 8875134 |
| 6212 | 40100.40200.41000.52600.55700.59500.60800.320600 | **20th FLOOR** | 69d | 2026-03-11 | 2026-05-18 |  | start no earlier than 2026-03-11 | RGA -FINISHING | 8866654 |
| 6213 | 40100.40200.41000.52600.55700.59500.60800.320600.2746000 | BALCONY RAILING FIXING | 9d | 2026-03-27 | 2026-04-04 | 6047FS-15d |  | RGA -FINISHING | 8875144 |
| 6214 | 40100.40200.41000.52600.55700.59500.60800.320600.2748600 | Block work | 8d | 2026-05-11 | 2026-05-18 | 6218 |  | RGA -FINISHING | 8875154 |
| 6215 | 40100.40200.41000.52600.55700.59500.60800.320600.2748700 | CONCEALED ELEC CONDUITING & ITS FINISHING | 5d | 2026-03-11 | 2026-03-15 | 6035FS-7d |  | RGA -FINISHING | 8875164 |
| 6216 | 40100.40200.41000.52600.55700.59500.60800.320600.2748800 | PLASTER APPLICATION | 15d | 2026-04-05 | 2026-04-19 | 6514 |  | RGA -FINISHING | 8875174 |
| 6217 | 40100.40200.41000.52600.55700.59500.60800.320600.2748900 | CONCEALED PLUMBING | 9d | 2026-04-20 | 2026-04-28 | 6216 |  | RGA -FINISHING | 8875184 |
| 6218 | 40100.40200.41000.52600.55700.59500.60800.320600.2749000 | WATERPROOFING WORK FOR TOILETS, KITCHEN SUNK & PLANTERS | 12d | 2026-04-29 | 2026-05-10 | 6217 |  | RGA -FINISHING | 8875194 |

Notes:
- 6200: Last floor BW completion 2 months post Last RCC
- 6207: Last floor BW completion 2 months post Last RCC
- 6214: Last floor BW completion 2 months post Last RCC

| ID | WBS | Task | Duration | Start | Finish | Predecessors | Constraint | Calendar | Unique_Task_ID |
| --- | --- | --- | --- | --- | --- | --- | --- | --- | --- |
| 6219 | 40100.40200.41000.52600.55700.59500.60800.320500 | **21th FLOOR** | 69d | 2026-03-19 | 2026-05-26 |  | start no earlier than 2026-03-19 | RGA -FINISHING | 8866664 |
| 6220 | 40100.40200.41000.52600.55700.59500.60800.320500.2749100 | BALCONY RAILING FIXING | 9d | 2026-04-04 | 2026-04-12 | 6051FS-15d |  | RGA -FINISHING | 8875204 |
| 6221 | 40100.40200.41000.52600.55700.59500.60800.320500.2749200 | Block work | 8d | 2026-05-19 | 2026-05-26 | 6225 |  | RGA -FINISHING | 8875214 |
| 6222 | 40100.40200.41000.52600.55700.59500.60800.320500.2749300 | CONCEALED ELEC CONDUITING & ITS FINISHING | 5d | 2026-03-19 | 2026-03-23 | 6039FS-7d |  | RGA -FINISHING | 8875224 |
| 6223 | 40100.40200.41000.52600.55700.59500.60800.320500.2749400 | PLASTER APPLICATION | 15d | 2026-04-13 | 2026-04-27 | 6527 |  | RGA -FINISHING | 8875234 |
| 6224 | 40100.40200.41000.52600.55700.59500.60800.320500.2749500 | CONCEALED PLUMBING | 9d | 2026-04-28 | 2026-05-06 | 6223 |  | RGA -FINISHING | 8875244 |
| 6225 | 40100.40200.41000.52600.55700.59500.60800.320500.2749600 | WATERPROOFING WORK FOR TOILETS, KITCHEN SUNK & PLANTERS | 12d | 2026-05-07 | 2026-05-18 | 6224 |  | RGA -FINISHING | 8875254 |
| 6226 | 40100.40200.41000.52600.55700.59500.60800.320400 | **22th FLOOR** | 69d | 2026-03-27 | 2026-06-03 |  | start no earlier than 2026-03-27 | RGA -FINISHING | 8866674 |
| 6227 | 40100.40200.41000.52600.55700.59500.60800.320400.2749700 | BALCONY RAILING FIXING | 9d | 2026-04-12 | 2026-04-20 | 6055FS-15d |  | RGA -FINISHING | 8875264 |
| 6228 | 40100.40200.41000.52600.55700.59500.60800.320400.2749800 | Block work | 8d | 2026-05-27 | 2026-06-03 | 6232 |  | RGA -FINISHING | 8875274 |
| 6229 | 40100.40200.41000.52600.55700.59500.60800.320400.2749900 | CONCEALED ELEC CONDUITING & ITS FINISHING | 5d | 2026-03-27 | 2026-03-31 | 6043FS-7d |  | RGA -FINISHING | 8875284 |
| 6230 | 40100.40200.41000.52600.55700.59500.60800.320400.2750000 | PLASTER APPLICATION | 15d | 2026-04-21 | 2026-05-05 | 6540 |  | RGA -FINISHING | 8875294 |
| 6231 | 40100.40200.41000.52600.55700.59500.60800.320400.2750100 | CONCEALED PLUMBING | 9d | 2026-05-06 | 2026-05-14 | 6230 |  | RGA -FINISHING | 8875304 |
| 6232 | 40100.40200.41000.52600.55700.59500.60800.320400.2750200 | WATERPROOFING WORK FOR TOILETS, KITCHEN SUNK & PLANTERS | 12d | 2026-05-15 | 2026-05-26 | 6231 |  | RGA -FINISHING | 8875314 |
| 6233 | 40100.40200.41000.52600.55700.59500.60800.320300 | **23th FLOOR** | 99d | 2026-04-04 | 2026-07-11 |  | start no earlier than 2026-04-04 | RGA -FINISHING | 8866684 |
| 6234 | 40100.40200.41000.52600.55700.59500.60800.320300.2750300 | BALCONY RAILING FIXING | 9d | 2026-04-21 | 2026-04-29 | 6227 |  | RGA -FINISHING | 8875324 |
| 6235 | 40100.40200.41000.52600.55700.59500.60800.320300.2750400 | Block work | 8d | 2026-07-04 | 2026-07-11 | 6239 |  | RGA -FINISHING | 8875334 |
| 6236 | 40100.40200.41000.52600.55700.59500.60800.320300.2750500 | CONCEALED ELEC CONDUITING & ITS FINISHING | 5d | 2026-04-04 | 2026-04-08 | 6047FS-7d |  | RGA -FINISHING | 8875344 |
| 6237 | 40100.40200.41000.52600.55700.59500.60800.320300.2750600 | PLASTER APPLICATION | 15d | 2026-05-29 | 2026-06-12 | 6553FS+30d |  | RGA -FINISHING | 8875354 |
| 6238 | 40100.40200.41000.52600.55700.59500.60800.320300.2750700 | CONCEALED PLUMBING | 9d | 2026-06-13 | 2026-06-21 | 6237 |  | RGA -FINISHING | 8875364 |
| 6239 | 40100.40200.41000.52600.55700.59500.60800.320300.2750800 | WATERPROOFING WORK FOR TOILETS, KITCHEN SUNK & PLANTERS | 12d | 2026-06-22 | 2026-07-03 | 6238 |  | RGA -FINISHING | 8875374 |
| 6240 | 40100.40200.41000.52600.55700.59500.60800.320100 | **24th FLOOR** | 100d | 2026-04-12 | 2026-07-20 |  | start no earlier than 2026-04-12 | RGA -FINISHING | 8866704 |
| 6241 | 40100.40200.41000.52600.55700.59500.60800.320100.2750900 | BALCONY RAILING FIXING | 9d | 2026-04-30 | 2026-05-08 | 6234 |  | RGA -FINISHING | 8875384 |
| 6242 | 40100.40200.41000.52600.55700.59500.60800.320100.2751000 | Block work | 8d | 2026-07-13 | 2026-07-20 | 6246 |  | RGA -FINISHING | 8875394 |
| 6243 | 40100.40200.41000.52600.55700.59500.60800.320100.2751100 | CONCEALED ELEC CONDUITING & ITS FINISHING | 5d | 2026-04-12 | 2026-04-16 | 6051FS-7d |  | RGA -FINISHING | 8875404 |
| 6244 | 40100.40200.41000.52600.55700.59500.60800.320100.2751200 | PLASTER APPLICATION | 15d | 2026-06-07 | 2026-06-21 | 6566FS+30d |  | RGA -FINISHING | 8875414 |
| 6245 | 40100.40200.41000.52600.55700.59500.60800.320100.2751300 | CONCEALED PLUMBING | 9d | 2026-06-22 | 2026-06-30 | 6244 |  | RGA -FINISHING | 8875424 |
| 6246 | 40100.40200.41000.52600.55700.59500.60800.320100.2751400 | WATERPROOFING WORK FOR TOILETS, KITCHEN SUNK & PLANTERS | 12d | 2026-07-01 | 2026-07-12 | 6245 |  | RGA -FINISHING | 8875434 |

Notes:
- 6221: Last floor BW completion 2 months post Last RCC
- 6228: Last floor BW completion 2 months post Last RCC
- 6235: Last floor BW completion 2 months post Last RCC
- 6242: Last floor BW completion 2 months post Last RCC

| ID | WBS | Task | Duration | Start | Finish | Predecessors | Constraint | Calendar | Unique_Task_ID |
| --- | --- | --- | --- | --- | --- | --- | --- | --- | --- |
| 6247 | 40100.40200.41000.52600.55700.59500.60800.320000 | **25thFLOOR** | 116d | 2026-04-20 | 2026-08-13 |  | start no earlier than 2026-04-20 | RGA -FINISHING | 8866714 |
| 6248 | 40100.40200.41000.52600.55700.59500.60800.320000.2751500 | BALCONY RAILING FIXING | 9d | 2026-05-09 | 2026-05-17 | 6241 |  | RGA -FINISHING | 8875444 |
| 6249 | 40100.40200.41000.52600.55700.59500.60800.320000.2751600 | Block work | 8d | 2026-08-06 | 2026-08-13 | 6253 |  | RGA -FINISHING | 8875454 |
| 6250 | 40100.40200.41000.52600.55700.59500.60800.320000.2751700 | CONCEALED ELEC CONDUITING & ITS FINISHING | 5d | 2026-04-20 | 2026-04-24 | 6055FS-7d |  | RGA -FINISHING | 8875464 |
| 6251 | 40100.40200.41000.52600.55700.59500.60800.320000.2751800 | PLASTER APPLICATION | 15d | 2026-07-01 | 2026-07-15 | 6579FS+45d |  | RGA -FINISHING | 8875474 |
| 6252 | 40100.40200.41000.52600.55700.59500.60800.320000.2751900 | CONCEALED PLUMBING | 9d | 2026-07-16 | 2026-07-24 | 6251 |  | RGA -FINISHING | 8875484 |
| 6253 | 40100.40200.41000.52600.55700.59500.60800.320000.2752000 | WATERPROOFING WORK FOR TOILETS, KITCHEN SUNK & PLANTERS | 12d | 2026-07-25 | 2026-08-05 | 6252 |  | RGA -FINISHING | 8875494 |
| 6254 | 40100.40200.41000.52600.55700.59500.60800.370700 | **LMR(To be deleted)** | 15d | 2025-04-01 | 2025-04-15 |  | start no earlier than 2025-04-01 | RGA -FINISHING | 8866754 |
| 6255 | 40100.40200.41000.52600.55700.59500.60800.370700.2752100 | Block work | 8d | 2025-04-01 | 2025-04-08 |  | start no earlier than 2025-04-01 | RGA -FINISHING | 8875504 |
| 6256 | 40100.40200.41000.52600.55700.59500.60800.370700.2752200 | CONCEALED ELEC CONDUITING & ITS FINISHING | 7d | 2025-04-01 | 2025-04-07 |  | start no earlier than 2025-04-01 | RGA -FINISHING | 8875514 |
| 6257 | 40100.40200.41000.52600.55700.59500.60800.370700.2752300 | PLASTER APPLICATION | 15d | 2025-04-01 | 2025-04-15 |  | start no earlier than 2025-04-01 | RGA -FINISHING | 8875524 |
| 6258 | 40100.40200.41000.52600.55700.59500.60800.370700.2752400 | DOOR FRAME FIXING | 3d | 2025-04-01 | 2025-04-03 |  | start no earlier than 2025-04-01 | RGA -FINISHING | 8875534 |
| 6259 | 40100.40200.41000.52600.55700.59500.507600 | **Terrace Finishing works** | 30d | 2026-12-20 | 2027-01-19 |  | start no earlier than 2026-12-20 | RGA -FINISHING | 8867214 |
| 6260 | 40100.40200.41000.52600.55700.59500.507600.2401700 | Terrace Waterproofing work | 30d | 2026-12-20 | 2027-01-19 | 6262FS+7d |  | RGA -FINISHING | 8867984 |
| 6261 | 40100.40200.41000.52600.55700.59500.507700 | **EXTERNAL Painting** | 165d | 2026-07-01 | 2026-12-13 |  | start no earlier than 2026-07-01 | RGA -FINISHING | 8867224 |
| 6262 | 40100.40200.41000.52600.55700.59500.507700.2401800 | 2nd coat | 165d | 2026-07-01 | 2026-12-13 | 6059FS+52.5d |  | RGA -FINISHING | 8867994 |
| 6263 | 40100.40200.41000.52600.55700.57900 | **Flat internal finishing & services works** | 576d | 2025-06-15 | 2027-01-11 |  | start no earlier than 2025-06-15 | RGA -FINISHING | 8865824 |
| 6264 | 40100.40200.41000.52600.55700.57900.75100 | **GROUND FLOOR** | 438d | 2025-06-15 | 2026-08-26 |  | start no earlier than 2025-06-15 | RGA -FINISHING | 8865894 |
| 6265 | 40100.40200.41000.52600.55700.57900.75100.2401900 | TOILET DADO TILE FIXING | 10d | 2025-06-15 | 2025-06-24 | 6074 |  | RGA -FINISHING | 8868004 |
| 6266 | 40100.40200.41000.52600.55700.57900.75100.2402000 | TOILET FLOORING WORK | 7d | 2025-06-25 | 2025-07-01 | 6265 |  | RGA -FINISHING | 8868014 |
| 6267 | 40100.40200.41000.52600.55700.57900.75100.2402100 | FIRE FIGHTING | 15d | 2025-09-14 | 2025-09-28 | 6073 |  | RGA -FINISHING | 8868024 |
| 6268 | 40100.40200.41000.52600.55700.57900.75100.2402200 | INTERNAL PAINTING - PUTTY / PRIMER APPLICATION | 15d | 2025-07-25 | 2025-08-08 | 6270 |  | RGA -FINISHING | 8868034 |
| 6269 | 40100.40200.41000.52600.55700.57900.75100.2402300 | FLAT FLOORING | 11d | 2025-07-02 | 2025-07-12 | 6266 |  | RGA -FINISHING | 8868044 |
| 6270 | 40100.40200.41000.52600.55700.57900.75100.2402400 | WINDOW FIXING | 12d | 2025-07-13 | 2025-07-24 | 6269 |  | RGA -FINISHING | 8868054 |
| 6271 | 40100.40200.41000.52600.55700.57900.75100.2402500 | INTERNAL PAINTING - 1ST COAT | 12d | 2025-08-09 | 2025-08-20 | 6268 |  | RGA -FINISHING | 8868064 |
| 6272 | 40100.40200.41000.52600.55700.57900.75100.2402600 | INTERNAL DOOR FIXING | 15d | 2025-08-21 | 2025-09-04 | 6271 |  | RGA -FINISHING | 8868074 |
| 6273 | 40100.40200.41000.52600.55700.57900.75100.2402700 | WIRING & SWITCH PLATE FIXING | 8d | 2025-09-05 | 2025-09-12 | 6272 |  | RGA -FINISHING | 8868084 |
| 6274 | 40100.40200.41000.52600.55700.57900.75100.2402800 | TOILET FALSE CEILING | 7d | 2025-09-13 | 2025-09-19 | 6273 |  | RGA -FINISHING | 8868094 |
| 6275 | 40100.40200.41000.52600.55700.57900.75100.2402900 | MAIN DOOR FRAME SHUTTER FIXING | 6d | 2026-08-13 | 2026-08-18 | 6607 |  | RGA -FINISHING | 8868104 |
| 6276 | 40100.40200.41000.52600.55700.57900.75100.2403000 | FINAL COAT PAINT | 8d | 2026-08-19 | 2026-08-26 | 6275 |  | RGA -FINISHING | 8868114 |

Notes:
- 6261: Ext Plaster (in 2 phases) completion 3.5 months post last BW
- 6263: Completion in 12 months post last RCC

| ID | WBS | Task | Duration | Start | Finish | Predecessors | Constraint | Calendar | Unique_Task_ID |
| --- | --- | --- | --- | --- | --- | --- | --- | --- | --- |
| 6277 | 40100.40200.41000.52600.55700.57900.75200 | **1ST FLOOR** | 344d | 2025-09-29 | 2026-09-07 |  | start no earlier than 2025-09-29 | RGA -FINISHING | 8865904 |
| 6278 | 40100.40200.41000.52600.55700.57900.75200.2403100 | TOILET DADO TILE FIXING | 7d | 2025-11-28 | 2025-12-04 | 6081 |  | RGA -FINISHING | 8868124 |
| 6279 | 40100.40200.41000.52600.55700.57900.75200.2403200 | TOILET FLOORING WORK | 7d | 2025-11-28 | 2025-12-04 | 6278FF |  | RGA -FINISHING | 8868134 |
| 6280 | 40100.40200.41000.52600.55700.57900.75200.2403300 | FIRE FIGHTING | 6d | 2025-09-29 | 2025-10-04 | 6080 |  | RGA -FINISHING | 8868144 |
| 6281 | 40100.40200.41000.52600.55700.57900.75200.2403400 | INTERNAL PAINTING - PUTTY / PRIMER APPLICATION | 6d | 2025-12-22 | 2025-12-27 | 6283 |  | RGA -FINISHING | 8868154 |
| 6282 | 40100.40200.41000.52600.55700.57900.75200.2403500 | FLAT FLOORING | 5d | 2025-12-05 | 2025-12-09 | 6279 |  | RGA -FINISHING | 8868164 |
| 6283 | 40100.40200.41000.52600.55700.57900.75200.2403600 | WINDOW FIXING | 12d | 2025-12-10 | 2025-12-21 | 6282 |  | RGA -FINISHING | 8868174 |
| 6284 | 40100.40200.41000.52600.55700.57900.75200.2403700 | INTERNAL PAINTING - 1ST COAT | 12d | 2025-12-28 | 2026-01-08 | 6281 |  | RGA -FINISHING | 8868184 |
| 6285 | 40100.40200.41000.52600.55700.57900.75200.2403800 | INTERNAL DOOR FIXING | 15d | 2026-01-07 | 2026-01-21 | 6284FS-2d |  | RGA -FINISHING | 8868194 |
| 6286 | 40100.40200.41000.52600.55700.57900.75200.2403900 | WIRING & SWITCH PLATE FIXING | 8d | 2026-01-18 | 2026-01-25 | 6285FS-4d |  | RGA -FINISHING | 8868204 |
| 6287 | 40100.40200.41000.52600.55700.57900.75200.2404000 | TOILET FALSE CEILING | 7d | 2026-01-26 | 2026-02-01 | 6286 |  | RGA -FINISHING | 8868214 |
| 6288 | 40100.40200.41000.52600.55700.57900.75200.2404100 | MAIN DOOR FRAME SHUTTER FIXING | 6d | 2026-08-25 | 2026-08-30 | 6615 |  | RGA -FINISHING | 8868224 |
| 6289 | 40100.40200.41000.52600.55700.57900.75200.2404200 | FINAL COAT PAINT | 8d | 2026-08-31 | 2026-09-07 | 6288 |  | RGA -FINISHING | 8868234 |
| 6290 | 40100.40200.41000.52600.55700.57900.75300 | **2ND FLOOR** | 335d | 2025-10-08 | 2026-09-07 |  | start no earlier than 2025-10-08 | RGA -FINISHING | 8865914 |
| 6291 | 40100.40200.41000.52600.55700.57900.75300.2404300 | TOILET DADO TILE FIXING | 7d | 2025-12-04 | 2025-12-10 | 6088 |  | RGA -FINISHING | 8868244 |
| 6292 | 40100.40200.41000.52600.55700.57900.75300.2404400 | TOILET FLOORING WORK | 7d | 2025-12-11 | 2025-12-17 | 6291 |  | RGA -FINISHING | 8868254 |
| 6293 | 40100.40200.41000.52600.55700.57900.75300.2404500 | FIRE FIGHTING | 6d | 2025-10-08 | 2025-10-13 | 6087 |  | RGA -FINISHING | 8868264 |
| 6294 | 40100.40200.41000.52600.55700.57900.75300.2404600 | INTERNAL PAINTING - PUTTY / PRIMER APPLICATION | 6d | 2026-01-04 | 2026-01-09 | 6296 |  | RGA -FINISHING | 8868274 |
| 6295 | 40100.40200.41000.52600.55700.57900.75300.2404700 | FLAT FLOORING | 5d | 2025-12-18 | 2025-12-22 | 6292 |  | RGA -FINISHING | 8868284 |
| 6296 | 40100.40200.41000.52600.55700.57900.75300.2404800 | WINDOW FIXING | 12d | 2025-12-23 | 2026-01-03 | 6295 |  | RGA -FINISHING | 8868294 |
| 6297 | 40100.40200.41000.52600.55700.57900.75300.2404900 | INTERNAL PAINTING - 1ST COAT | 12d | 2026-01-10 | 2026-01-21 | 6294 |  | RGA -FINISHING | 8868304 |
| 6298 | 40100.40200.41000.52600.55700.57900.75300.2405000 | INTERNAL DOOR FIXING | 15d | 2026-01-20 | 2026-02-03 | 6297FS-2d |  | RGA -FINISHING | 8868314 |
| 6299 | 40100.40200.41000.52600.55700.57900.75300.2405100 | WIRING & SWITCH PLATE FIXING | 8d | 2026-01-31 | 2026-02-07 | 6298FS-4d |  | RGA -FINISHING | 8868324 |
| 6300 | 40100.40200.41000.52600.55700.57900.75300.2405200 | TOILET FALSE CEILING | 7d | 2026-02-08 | 2026-02-14 | 6299 |  | RGA -FINISHING | 8868334 |
| 6301 | 40100.40200.41000.52600.55700.57900.75300.2405300 | MAIN DOOR FRAME SHUTTER FIXING | 6d | 2026-08-25 | 2026-08-30 | 6623 |  | RGA -FINISHING | 8868344 |
| 6302 | 40100.40200.41000.52600.55700.57900.75300.2405400 | FINAL COAT PAINT | 8d | 2026-08-31 | 2026-09-07 | 6301 |  | RGA -FINISHING | 8868354 |

| ID | WBS | Task | Duration | Start | Finish | Predecessors | Constraint | Calendar | Unique_Task_ID |
| --- | --- | --- | --- | --- | --- | --- | --- | --- | --- |
| 6303 | 40100.40200.41000.52600.55700.57900.75400 | **3RD FLOOR** | 310d | 2025-11-02 | 2026-09-07 |  | start no earlier than 2025-11-02 | RGA -FINISHING | 8865924 |
| 6304 | 40100.40200.41000.52600.55700.57900.75400.2405500 | TOILET DADO TILE FIXING | 7d | 2025-12-13 | 2025-12-19 | 6095 |  | RGA -FINISHING | 8868364 |
| 6305 | 40100.40200.41000.52600.55700.57900.75400.2405600 | TOILET FLOORING WORK | 7d | 2025-12-20 | 2025-12-26 | 6304 |  | RGA -FINISHING | 8868374 |
| 6306 | 40100.40200.41000.52600.55700.57900.75400.2405700 | FIRE FIGHTING | 6d | 2025-11-02 | 2025-11-07 | 6094 |  | RGA -FINISHING | 8868384 |
| 6307 | 40100.40200.41000.52600.55700.57900.75400.2405800 | INTERNAL PAINTING - PUTTY / PRIMER APPLICATION | 6d | 2026-01-08 | 2026-01-13 | 6309 |  | RGA -FINISHING | 8868394 |
| 6308 | 40100.40200.41000.52600.55700.57900.75400.2405900 | FLAT FLOORING | 5d | 2025-12-27 | 2025-12-31 | 6305 |  | RGA -FINISHING | 8868404 |
| 6309 | 40100.40200.41000.52600.55700.57900.75400.2406000 | WINDOW FIXING | 7d | 2026-01-01 | 2026-01-07 | 6308 |  | RGA -FINISHING | 8868414 |
| 6310 | 40100.40200.41000.52600.55700.57900.75400.2406100 | INTERNAL PAINTING - 1ST COAT | 7d | 2026-01-14 | 2026-01-20 | 6307 |  | RGA -FINISHING | 8868424 |
| 6311 | 40100.40200.41000.52600.55700.57900.75400.2406200 | INTERNAL DOOR FIXING | 15d | 2026-01-19 | 2026-02-02 | 6310FS-2d |  | RGA -FINISHING | 8868434 |
| 6312 | 40100.40200.41000.52600.55700.57900.75400.2406300 | WIRING & SWITCH PLATE FIXING | 8d | 2026-01-30 | 2026-02-06 | 6311FS-4d |  | RGA -FINISHING | 8868444 |
| 6313 | 40100.40200.41000.52600.55700.57900.75400.2406400 | TOILET FALSE CEILING | 7d | 2026-02-07 | 2026-02-13 | 6312 |  | RGA -FINISHING | 8868454 |
| 6314 | 40100.40200.41000.52600.55700.57900.75400.2406500 | MAIN DOOR FRAME SHUTTER FIXING | 6d | 2026-08-25 | 2026-08-30 | 6631 |  | RGA -FINISHING | 8868464 |
| 6315 | 40100.40200.41000.52600.55700.57900.75400.2406600 | FINAL COAT PAINT | 8d | 2026-08-31 | 2026-09-07 | 6314 |  | RGA -FINISHING | 8868474 |
| 6316 | 40100.40200.41000.52600.55700.57900.75500 | **4TH FLOOR** | 310d | 2025-11-12 | 2026-09-17 |  | start no earlier than 2025-11-12 | RGA -FINISHING | 8865934 |
| 6317 | 40100.40200.41000.52600.55700.57900.75500.2406700 | TOILET DADO TILE FIXING | 7d | 2026-01-07 | 2026-01-13 | 6102 |  | RGA -FINISHING | 8868484 |
| 6318 | 40100.40200.41000.52600.55700.57900.75500.2406800 | TOILET FLOORING WORK | 7d | 2026-01-14 | 2026-01-20 | 6317 |  | RGA -FINISHING | 8868494 |
| 6319 | 40100.40200.41000.52600.55700.57900.75500.2406900 | FIRE FIGHTING | 6d | 2025-11-12 | 2025-11-17 | 6101 |  | RGA -FINISHING | 8868504 |
| 6320 | 40100.40200.41000.52600.55700.57900.75500.2407000 | INTERNAL PAINTING - PUTTY / PRIMER APPLICATION | 6d | 2026-02-02 | 2026-02-07 | 6322 |  | RGA -FINISHING | 8868514 |
| 6321 | 40100.40200.41000.52600.55700.57900.75500.2407100 | FLAT FLOORING | 5d | 2026-01-21 | 2026-01-25 | 6318 |  | RGA -FINISHING | 8868524 |
| 6322 | 40100.40200.41000.52600.55700.57900.75500.2407200 | WINDOW FIXING | 7d | 2026-01-26 | 2026-02-01 | 6321 |  | RGA -FINISHING | 8868534 |
| 6323 | 40100.40200.41000.52600.55700.57900.75500.2407300 | INTERNAL PAINTING - 1ST COAT | 7d | 2026-02-08 | 2026-02-14 | 6320 |  | RGA -FINISHING | 8868544 |
| 6324 | 40100.40200.41000.52600.55700.57900.75500.2407400 | INTERNAL DOOR FIXING | 15d | 2026-02-13 | 2026-02-27 | 6323FS-2d |  | RGA -FINISHING | 8868554 |
| 6325 | 40100.40200.41000.52600.55700.57900.75500.2407500 | WIRING & SWITCH PLATE FIXING | 8d | 2026-02-24 | 2026-03-03 | 6324FS-4d |  | RGA -FINISHING | 8868564 |
| 6326 | 40100.40200.41000.52600.55700.57900.75500.2407600 | TOILET FALSE CEILING | 7d | 2026-03-04 | 2026-03-10 | 6325 |  | RGA -FINISHING | 8868574 |
| 6327 | 40100.40200.41000.52600.55700.57900.75500.2407700 | MAIN DOOR FRAME SHUTTER FIXING | 6d | 2026-09-04 | 2026-09-09 | 6639 |  | RGA -FINISHING | 8868584 |
| 6328 | 40100.40200.41000.52600.55700.57900.75500.2407800 | FINAL COAT PAINT | 8d | 2026-09-10 | 2026-09-17 | 6327 |  | RGA -FINISHING | 8868594 |

| ID | WBS | Task | Duration | Start | Finish | Predecessors | Constraint | Calendar | Unique_Task_ID |
| --- | --- | --- | --- | --- | --- | --- | --- | --- | --- |
| 6329 | 40100.40200.41000.52600.55700.57900.75700 | **5TH FLOOR** | 301d | 2025-11-21 | 2026-09-17 |  | start no earlier than 2025-11-21 | RGA -FINISHING | 8865944 |
| 6330 | 40100.40200.41000.52600.55700.57900.75700.2407900 | TOILET DADO TILE FIXING | 7d | 2026-01-02 | 2026-01-08 | 6109 |  | RGA -FINISHING | 8868604 |
| 6331 | 40100.40200.41000.52600.55700.57900.75700.2408000 | TOILET FLOORING WORK | 7d | 2026-01-09 | 2026-01-15 | 6330 |  | RGA -FINISHING | 8868614 |
| 6332 | 40100.40200.41000.52600.55700.57900.75700.2408100 | FIRE FIGHTING | 6d | 2025-11-21 | 2025-11-26 | 6108 |  | RGA -FINISHING | 8868624 |
| 6333 | 40100.40200.41000.52600.55700.57900.75700.2408200 | INTERNAL PAINTING - PUTTY / PRIMER APPLICATION | 6d | 2026-01-28 | 2026-02-02 | 6335 |  | RGA -FINISHING | 8868634 |
| 6334 | 40100.40200.41000.52600.55700.57900.75700.2408300 | FLAT FLOORING | 5d | 2026-01-16 | 2026-01-20 | 6331 |  | RGA -FINISHING | 8868644 |
| 6335 | 40100.40200.41000.52600.55700.57900.75700.2408400 | WINDOW FIXING | 7d | 2026-01-21 | 2026-01-27 | 6334 |  | RGA -FINISHING | 8868654 |
| 6336 | 40100.40200.41000.52600.55700.57900.75700.2408500 | INTERNAL PAINTING - 1ST COAT | 7d | 2026-02-03 | 2026-02-09 | 6333 |  | RGA -FINISHING | 8868664 |
| 6337 | 40100.40200.41000.52600.55700.57900.75700.2408600 | INTERNAL DOOR FIXING | 15d | 2026-02-08 | 2026-02-22 | 6336FS-2d |  | RGA -FINISHING | 8868674 |
| 6338 | 40100.40200.41000.52600.55700.57900.75700.2408700 | WIRING & SWITCH PLATE FIXING | 8d | 2026-02-19 | 2026-02-26 | 6337FS-4d |  | RGA -FINISHING | 8868684 |
| 6339 | 40100.40200.41000.52600.55700.57900.75700.2408800 | TOILET FALSE CEILING | 7d | 2026-02-27 | 2026-03-05 | 6338 |  | RGA -FINISHING | 8868694 |
| 6340 | 40100.40200.41000.52600.55700.57900.75700.2408900 | MAIN DOOR FRAME SHUTTER FIXING | 6d | 2026-09-04 | 2026-09-09 | 6647 |  | RGA -FINISHING | 8868704 |
| 6341 | 40100.40200.41000.52600.55700.57900.75700.2409000 | FINAL COAT PAINT | 8d | 2026-09-10 | 2026-09-17 | 6340 |  | RGA -FINISHING | 8868714 |
| 6342 | 40100.40200.41000.52600.55700.57900.75800 | **6TH FLOOR** | 292d | 2025-11-30 | 2026-09-17 |  | start no earlier than 2025-11-30 | RGA -FINISHING | 8865954 |
| 6343 | 40100.40200.41000.52600.55700.57900.75800.2409100 | TOILET DADO TILE FIXING | 7d | 2026-01-11 | 2026-01-17 | 6116 |  | RGA -FINISHING | 8868724 |
| 6344 | 40100.40200.41000.52600.55700.57900.75800.2409200 | TOILET FLOORING WORK | 7d | 2026-01-11 | 2026-01-17 | 6343FF |  | RGA -FINISHING | 8868734 |
| 6345 | 40100.40200.41000.52600.55700.57900.75800.2409300 | FIRE FIGHTING | 6d | 2025-11-30 | 2025-12-05 | 6115 |  | RGA -FINISHING | 8868744 |
| 6346 | 40100.40200.41000.52600.55700.57900.75800.2409400 | INTERNAL PAINTING - PUTTY / PRIMER APPLICATION | 6d | 2026-02-04 | 2026-02-09 | 6348 |  | RGA -FINISHING | 8868754 |
| 6347 | 40100.40200.41000.52600.55700.57900.75800.2409500 | FLAT FLOORING | 5d | 2026-01-18 | 2026-01-22 | 6344 |  | RGA -FINISHING | 8868764 |
| 6348 | 40100.40200.41000.52600.55700.57900.75800.2409600 | WINDOW FIXING | 12d | 2026-01-23 | 2026-02-03 | 6347 |  | RGA -FINISHING | 8868774 |
| 6349 | 40100.40200.41000.52600.55700.57900.75800.2409700 | INTERNAL PAINTING - 1ST COAT | 12d | 2026-02-10 | 2026-02-21 | 6346 |  | RGA -FINISHING | 8868784 |
| 6350 | 40100.40200.41000.52600.55700.57900.75800.2409800 | INTERNAL DOOR FIXING | 15d | 2026-02-20 | 2026-03-06 | 6349FS-2d |  | RGA -FINISHING | 8868794 |
| 6351 | 40100.40200.41000.52600.55700.57900.75800.2409900 | WIRING & SWITCH PLATE FIXING | 8d | 2026-03-03 | 2026-03-10 | 6350FS-4d |  | RGA -FINISHING | 8868804 |
| 6352 | 40100.40200.41000.52600.55700.57900.75800.2410000 | TOILET FALSE CEILING | 7d | 2026-03-11 | 2026-03-17 | 6351 |  | RGA -FINISHING | 8868814 |
| 6353 | 40100.40200.41000.52600.55700.57900.75800.2410100 | MAIN DOOR FRAME SHUTTER FIXING | 6d | 2026-09-04 | 2026-09-09 | 6655 |  | RGA -FINISHING | 8868824 |
| 6354 | 40100.40200.41000.52600.55700.57900.75800.2410200 | FINAL COAT PAINT | 8d | 2026-09-10 | 2026-09-17 | 6353 |  | RGA -FINISHING | 8868834 |

| ID | WBS | Task | Duration | Start | Finish | Predecessors | Constraint | Calendar | Unique_Task_ID |
| --- | --- | --- | --- | --- | --- | --- | --- | --- | --- |
| 6355 | 40100.40200.41000.52600.55700.57900.75900 | **7TH FLOOR** | 306d | 2025-11-16 | 2026-09-17 |  | start no earlier than 2025-11-16 | RGA -FINISHING | 8865964 |
| 6356 | 40100.40200.41000.52600.55700.57900.75900.2410300 | TOILET DADO TILE FIXING | 7d | 2025-11-16 | 2025-11-22 | 6124 |  | RGA -FINISHING | 8868844 |
| 6357 | 40100.40200.41000.52600.55700.57900.75900.2410400 | TOILET FLOORING WORK | 7d | 2025-11-23 | 2025-11-29 | 6356 |  | RGA -FINISHING | 8868854 |
| 6358 | 40100.40200.41000.52600.55700.57900.75900.2410500 | FIRE FIGHTING | 6d | 2026-01-20 | 2026-01-25 | 6123 |  | RGA -FINISHING | 8868864 |
| 6359 | 40100.40200.41000.52600.55700.57900.75900.2410600 | INTERNAL PAINTING - PUTTY / PRIMER APPLICATION | 6d | 2025-12-17 | 2025-12-22 | 6361 |  | RGA -FINISHING | 8868874 |
| 6360 | 40100.40200.41000.52600.55700.57900.75900.2410700 | FLAT FLOORING | 5d | 2025-11-30 | 2025-12-04 | 6357 |  | RGA -FINISHING | 8868884 |
| 6361 | 40100.40200.41000.52600.55700.57900.75900.2410800 | WINDOW FIXING | 12d | 2025-12-05 | 2025-12-16 | 6360 |  | RGA -FINISHING | 8868894 |
| 6362 | 40100.40200.41000.52600.55700.57900.75900.2410900 | INTERNAL PAINTING - 1ST COAT | 5d | 2025-12-23 | 2025-12-27 | 6359 |  | RGA -FINISHING | 8868904 |
| 6363 | 40100.40200.41000.52600.55700.57900.75900.2411000 | INTERNAL DOOR FIXING | 15d | 2025-12-26 | 2026-01-09 | 6362FS-2d |  | RGA -FINISHING | 8868914 |
| 6364 | 40100.40200.41000.52600.55700.57900.75900.2411100 | WIRING & SWITCH PLATE FIXING | 8d | 2026-01-06 | 2026-01-13 | 6363FS-4d |  | RGA -FINISHING | 8868924 |
| 6365 | 40100.40200.41000.52600.55700.57900.75900.2411200 | TOILET FALSE CEILING | 7d | 2026-01-14 | 2026-01-20 | 6364 |  | RGA -FINISHING | 8868934 |
| 6366 | 40100.40200.41000.52600.55700.57900.75900.2411300 | MAIN DOOR FRAME SHUTTER FIXING | 6d | 2026-09-04 | 2026-09-09 | 6663 |  | RGA -FINISHING | 8868944 |
| 6367 | 40100.40200.41000.52600.55700.57900.75900.2411400 | FINAL COAT PAINT | 8d | 2026-09-10 | 2026-09-17 | 6366 |  | RGA -FINISHING | 8868954 |
| 6368 | 40100.40200.41000.52600.55700.57900.76000 | **8TH FLOOR** | 390d | 2025-12-18 | 2027-01-11 |  | start no earlier than 2025-12-18 | RGA -FINISHING | 8865974 |
| 6369 | 40100.40200.41000.52600.55700.57900.76000.2411500 | TOILET DADO TILE FIXING | 7d | 2026-11-02 | 2026-11-08 | 6130 |  | RGA -FINISHING | 8868964 |
| 6370 | 40100.40200.41000.52600.55700.57900.76000.2411600 | TOILET FLOORING WORK | 7d | 2026-11-09 | 2026-11-15 | 6369 |  | RGA -FINISHING | 8868974 |
| 6371 | 40100.40200.41000.52600.55700.57900.76000.2411700 | FIRE FIGHTING | 6d | 2025-12-18 | 2025-12-23 | 6129 |  | RGA -FINISHING | 8868984 |
| 6372 | 40100.40200.41000.52600.55700.57900.76000.2411800 | INTERNAL PAINTING - PUTTY / PRIMER APPLICATION | 6d | 2026-12-03 | 2026-12-08 | 6374 |  | RGA -FINISHING | 8868994 |
| 6373 | 40100.40200.41000.52600.55700.57900.76000.2411900 | FLAT FLOORING | 5d | 2026-11-16 | 2026-11-20 | 6370 |  | RGA -FINISHING | 8869004 |
| 6374 | 40100.40200.41000.52600.55700.57900.76000.2412000 | WINDOW FIXING | 12d | 2026-11-21 | 2026-12-02 | 6373 |  | RGA -FINISHING | 8869014 |
| 6375 | 40100.40200.41000.52600.55700.57900.76000.2412100 | INTERNAL PAINTING - 1ST COAT | 10d | 2026-12-09 | 2026-12-18 | 6372 |  | RGA -FINISHING | 8869024 |
| 6376 | 40100.40200.41000.52600.55700.57900.76000.2412200 | INTERNAL DOOR FIXING | 15d | 2026-12-17 | 2026-12-31 | 6375FS-2d |  | RGA -FINISHING | 8869034 |
| 6377 | 40100.40200.41000.52600.55700.57900.76000.2412300 | WIRING & SWITCH PLATE FIXING | 8d | 2026-12-28 | 2027-01-04 | 6376FS-4d |  | RGA -FINISHING | 8869044 |
| 6378 | 40100.40200.41000.52600.55700.57900.76000.2412400 | TOILET FALSE CEILING | 7d | 2027-01-05 | 2027-01-11 | 6377 |  | RGA -FINISHING | 8869054 |
| 6379 | 40100.40200.41000.52600.55700.57900.76000.2412500 | MAIN DOOR FRAME SHUTTER FIXING | 6d | 2026-09-14 | 2026-09-19 | 6671 |  | RGA -FINISHING | 8869064 |
| 6380 | 40100.40200.41000.52600.55700.57900.76000.2412600 | FINAL COAT PAINT | 8d | 2026-09-20 | 2026-09-27 | 6379 |  | RGA -FINISHING | 8869074 |

| ID | WBS | Task | Duration | Start | Finish | Predecessors | Constraint | Calendar | Unique_Task_ID |
| --- | --- | --- | --- | --- | --- | --- | --- | --- | --- |
| 6381 | 40100.40200.41000.52600.55700.57900.76100 | **9TH FLOOR** | 279d | 2025-12-27 | 2026-10-01 |  | start no earlier than 2025-12-27 | RGA -FINISHING | 8865984 |
| 6382 | 40100.40200.41000.52600.55700.57900.76100.2412700 | TOILET DADO TILE FIXING | 7d | 2026-01-17 | 2026-01-23 | 6137 |  | RGA -FINISHING | 8869084 |
| 6383 | 40100.40200.41000.52600.55700.57900.76100.2412800 | TOILET FLOORING WORK | 7d | 2026-01-24 | 2026-01-30 | 6382 |  | RGA -FINISHING | 8869094 |
| 6384 | 40100.40200.41000.52600.55700.57900.76100.2412900 | FIRE FIGHTING | 6d | 2025-12-27 | 2026-01-01 | 6136 |  | RGA -FINISHING | 8869104 |
| 6385 | 40100.40200.41000.52600.55700.57900.76100.2413000 | INTERNAL PAINTING - PUTTY / PRIMER APPLICATION | 6d | 2026-02-17 | 2026-02-22 | 6387 |  | RGA -FINISHING | 8869114 |
| 6386 | 40100.40200.41000.52600.55700.57900.76100.2413100 | FLAT FLOORING | 5d | 2026-01-31 | 2026-02-04 | 6383 |  | RGA -FINISHING | 8869124 |
| 6387 | 40100.40200.41000.52600.55700.57900.76100.2413200 | WINDOW FIXING | 12d | 2026-02-05 | 2026-02-16 | 6386 |  | RGA -FINISHING | 8869134 |
| 6388 | 40100.40200.41000.52600.55700.57900.76100.2413300 | INTERNAL PAINTING - 1ST COAT | 2d | 2026-02-23 | 2026-02-24 | 6385 |  | RGA -FINISHING | 8869144 |
| 6389 | 40100.40200.41000.52600.55700.57900.76100.2413400 | INTERNAL DOOR FIXING | 15d | 2026-02-23 | 2026-03-09 | 6388FS-2d |  | RGA -FINISHING | 8869154 |
| 6390 | 40100.40200.41000.52600.55700.57900.76100.2413500 | WIRING & SWITCH PLATE FIXING | 8d | 2026-03-06 | 2026-03-13 | 6389FS-4d |  | RGA -FINISHING | 8869164 |
| 6391 | 40100.40200.41000.52600.55700.57900.76100.2413600 | TOILET FALSE CEILING | 7d | 2026-03-14 | 2026-03-20 | 6390 |  | RGA -FINISHING | 8869174 |
| 6392 | 40100.40200.41000.52600.55700.57900.76100.2413700 | MAIN DOOR FRAME SHUTTER FIXING | 6d | 2026-09-14 | 2026-09-19 | 6679 |  | RGA -FINISHING | 8869184 |
| 6393 | 40100.40200.41000.52600.55700.57900.76100.2413800 | FINAL COAT PAINT | 8d | 2026-09-24 | 2026-10-01 | 6392FS+4d |  | RGA -FINISHING | 8869194 |
| 6394 | 40100.40200.41000.52600.55700.57900.76200 | **10TH FLOOR** | 266d | 2026-01-05 | 2026-09-27 |  | start no earlier than 2026-01-05 | RGA -FINISHING | 8865994 |
| 6395 | 40100.40200.41000.52600.55700.57900.76200.2413900 | TOILET DADO TILE FIXING | 7d | 2026-02-16 | 2026-02-22 | 6144 |  | RGA -FINISHING | 8869204 |
| 6396 | 40100.40200.41000.52600.55700.57900.76200.2414000 | TOILET FLOORING WORK | 7d | 2026-02-23 | 2026-03-01 | 6395 |  | RGA -FINISHING | 8869214 |
| 6397 | 40100.40200.41000.52600.55700.57900.76200.2414100 | FIRE FIGHTING | 6d | 2026-01-05 | 2026-01-10 | 6143 |  | RGA -FINISHING | 8869224 |
| 6398 | 40100.40200.41000.52600.55700.57900.76200.2414200 | INTERNAL PAINTING - PUTTY / PRIMER APPLICATION | 6d | 2026-03-19 | 2026-03-24 | 6400 |  | RGA -FINISHING | 8869234 |
| 6399 | 40100.40200.41000.52600.55700.57900.76200.2414300 | FLAT FLOORING | 5d | 2026-03-02 | 2026-03-06 | 6396 |  | RGA -FINISHING | 8869244 |
| 6400 | 40100.40200.41000.52600.55700.57900.76200.2414400 | WINDOW FIXING | 12d | 2026-03-07 | 2026-03-18 | 6399 |  | RGA -FINISHING | 8869254 |
| 6401 | 40100.40200.41000.52600.55700.57900.76200.2414500 | INTERNAL PAINTING - 1ST COAT | 12d | 2026-03-25 | 2026-04-05 | 6398 |  | RGA -FINISHING | 8869264 |
| 6402 | 40100.40200.41000.52600.55700.57900.76200.2414600 | INTERNAL DOOR FIXING | 15d | 2026-04-04 | 2026-04-18 | 6401FS-2d |  | RGA -FINISHING | 8869274 |
| 6403 | 40100.40200.41000.52600.55700.57900.76200.2414700 | WIRING & SWITCH PLATE FIXING | 8d | 2026-04-15 | 2026-04-22 | 6402FS-4d |  | RGA -FINISHING | 8869284 |
| 6404 | 40100.40200.41000.52600.55700.57900.76200.2414800 | TOILET FALSE CEILING | 7d | 2026-04-23 | 2026-04-29 | 6403 |  | RGA -FINISHING | 8869294 |
| 6405 | 40100.40200.41000.52600.55700.57900.76200.2414900 | MAIN DOOR FRAME SHUTTER FIXING | 6d | 2026-09-14 | 2026-09-19 | 6687 |  | RGA -FINISHING | 8869304 |
| 6406 | 40100.40200.41000.52600.55700.57900.76200.2415000 | FINAL COAT PAINT | 8d | 2026-09-20 | 2026-09-27 | 6405 |  | RGA -FINISHING | 8869314 |

| ID | WBS | Task | Duration | Start | Finish | Predecessors | Constraint | Calendar | Unique_Task_ID |
| --- | --- | --- | --- | --- | --- | --- | --- | --- | --- |
| 6407 | 40100.40200.41000.52600.55700.57900.76500 | **11TH FLOOR** | 257d | 2026-01-14 | 2026-09-27 |  | start no earlier than 2026-01-14 | RGA -FINISHING | 8866004 |
| 6408 | 40100.40200.41000.52600.55700.57900.76500.2415100 | TOILET DADO TILE FIXING | 7d | 2026-02-25 | 2026-03-03 | 6151 |  | RGA -FINISHING | 8869324 |
| 6409 | 40100.40200.41000.52600.55700.57900.76500.2415200 | TOILET FLOORING WORK | 7d | 2026-03-04 | 2026-03-10 | 6408 |  | RGA -FINISHING | 8869334 |
| 6410 | 40100.40200.41000.52600.55700.57900.76500.2415300 | FIRE FIGHTING | 6d | 2026-01-14 | 2026-01-19 | 6150 |  | RGA -FINISHING | 8869344 |
| 6411 | 40100.40200.41000.52600.55700.57900.76500.2415400 | INTERNAL PAINTING - PUTTY / PRIMER APPLICATION | 6d | 2026-03-28 | 2026-04-02 | 6413 |  | RGA -FINISHING | 8869354 |
| 6412 | 40100.40200.41000.52600.55700.57900.76500.2415500 | FLAT FLOORING | 5d | 2026-03-11 | 2026-03-15 | 6409 |  | RGA -FINISHING | 8869364 |
| 6413 | 40100.40200.41000.52600.55700.57900.76500.2415600 | WINDOW FIXING | 12d | 2026-03-16 | 2026-03-27 | 6412 |  | RGA -FINISHING | 8869374 |
| 6414 | 40100.40200.41000.52600.55700.57900.76500.2415700 | INTERNAL PAINTING - 1ST COAT | 12d | 2026-04-03 | 2026-04-14 | 6411 |  | RGA -FINISHING | 8869384 |
| 6415 | 40100.40200.41000.52600.55700.57900.76500.2415800 | INTERNAL DOOR FIXING | 15d | 2026-04-13 | 2026-04-27 | 6414FS-2d |  | RGA -FINISHING | 8869394 |
| 6416 | 40100.40200.41000.52600.55700.57900.76500.2415900 | WIRING & SWITCH PLATE FIXING | 8d | 2026-04-24 | 2026-05-01 | 6415FS-4d |  | RGA -FINISHING | 8869404 |
| 6417 | 40100.40200.41000.52600.55700.57900.76500.2416000 | TOILET FALSE CEILING | 7d | 2026-05-02 | 2026-05-08 | 6416 |  | RGA -FINISHING | 8869414 |
| 6418 | 40100.40200.41000.52600.55700.57900.76500.2416100 | MAIN DOOR FRAME SHUTTER FIXING | 6d | 2026-09-14 | 2026-09-19 | 6695 |  | RGA -FINISHING | 8869424 |
| 6419 | 40100.40200.41000.52600.55700.57900.76500.2416200 | FINAL COAT PAINT | 8d | 2026-09-20 | 2026-09-27 | 6418 |  | RGA -FINISHING | 8869434 |
| 6420 | 40100.40200.41000.52600.55700.57900.76600 | **12TH FLOOR** | 258d | 2026-01-23 | 2026-10-07 |  | start no earlier than 2026-01-23 | RGA -FINISHING | 8866014 |
| 6421 | 40100.40200.41000.52600.55700.57900.76600.2416300 | TOILET DADO TILE FIXING | 7d | 2026-02-11 | 2026-02-17 | 6158 |  | RGA -FINISHING | 8869444 |
| 6422 | 40100.40200.41000.52600.55700.57900.76600.2416400 | TOILET FLOORING WORK | 7d | 2026-02-11 | 2026-02-17 | 6421FF |  | RGA -FINISHING | 8869454 |
| 6423 | 40100.40200.41000.52600.55700.57900.76600.2416500 | FIRE FIGHTING | 6d | 2026-01-23 | 2026-01-28 | 6157 |  | RGA -FINISHING | 8869464 |
| 6424 | 40100.40200.41000.52600.55700.57900.76600.2416600 | INTERNAL PAINTING - PUTTY / PRIMER APPLICATION | 6d | 2026-03-07 | 2026-03-12 | 6426 |  | RGA -FINISHING | 8869474 |
| 6425 | 40100.40200.41000.52600.55700.57900.76600.2416700 | FLAT FLOORING | 5d | 2026-02-18 | 2026-02-22 | 6422 |  | RGA -FINISHING | 8869484 |
| 6426 | 40100.40200.41000.52600.55700.57900.76600.2416800 | WINDOW FIXING | 12d | 2026-02-23 | 2026-03-06 | 6425 |  | RGA -FINISHING | 8869494 |
| 6427 | 40100.40200.41000.52600.55700.57900.76600.2416900 | INTERNAL PAINTING - 1ST COAT | 12d | 2026-03-13 | 2026-03-24 | 6424 |  | RGA -FINISHING | 8869504 |
| 6428 | 40100.40200.41000.52600.55700.57900.76600.2417000 | INTERNAL DOOR FIXING | 15d | 2026-03-23 | 2026-04-06 | 6427FS-2d |  | RGA -FINISHING | 8869514 |
| 6429 | 40100.40200.41000.52600.55700.57900.76600.2417100 | WIRING & SWITCH PLATE FIXING | 8d | 2026-04-03 | 2026-04-10 | 6428FS-4d |  | RGA -FINISHING | 8869524 |
| 6430 | 40100.40200.41000.52600.55700.57900.76600.2417200 | TOILET FALSE CEILING | 7d | 2026-04-11 | 2026-04-17 | 6429 |  | RGA -FINISHING | 8869534 |
| 6431 | 40100.40200.41000.52600.55700.57900.76600.2417300 | MAIN DOOR FRAME SHUTTER FIXING | 6d | 2026-09-24 | 2026-09-29 | 6703 |  | RGA -FINISHING | 8869544 |
| 6432 | 40100.40200.41000.52600.55700.57900.76600.2417400 | FINAL COAT PAINT | 8d | 2026-09-30 | 2026-10-07 | 6431 |  | RGA -FINISHING | 8869554 |

| ID | WBS | Task | Duration | Start | Finish | Predecessors | Constraint | Calendar | Unique_Task_ID |
| --- | --- | --- | --- | --- | --- | --- | --- | --- | --- |
| 6433 | 40100.40200.41000.52600.55700.57900.76700 | **13TH FLOOR** | 249d | 2026-02-01 | 2026-10-07 |  | start no earlier than 2026-02-01 | RGA -FINISHING | 8866024 |
| 6434 | 40100.40200.41000.52600.55700.57900.76700.2417500 | TOILET DADO TILE FIXING | 10d | 2026-03-14 | 2026-03-23 | 6165 |  | RGA -FINISHING | 8869564 |
| 6435 | 40100.40200.41000.52600.55700.57900.76700.2417600 | TOILET FLOORING WORK | 7d | 2026-03-24 | 2026-03-30 | 6434 |  | RGA -FINISHING | 8869574 |
| 6436 | 40100.40200.41000.52600.55700.57900.76700.2417700 | FIRE FIGHTING | 8d | 2026-02-01 | 2026-02-08 | 6164 |  | RGA -FINISHING | 8869584 |
| 6437 | 40100.40200.41000.52600.55700.57900.76700.2417800 | INTERNAL PAINTING - PUTTY / PRIMER APPLICATION | 5d | 2026-04-12 | 2026-04-16 | 6439 |  | RGA -FINISHING | 8869594 |
| 6438 | 40100.40200.41000.52600.55700.57900.76700.2417900 | FLAT FLOORING | 7d | 2026-03-31 | 2026-04-06 | 6435 |  | RGA -FINISHING | 8869604 |
| 6439 | 40100.40200.41000.52600.55700.57900.76700.2418000 | WINDOW FIXING | 5d | 2026-04-07 | 2026-04-11 | 6438 |  | RGA -FINISHING | 8869614 |
| 6440 | 40100.40200.41000.52600.55700.57900.76700.2418100 | INTERNAL PAINTING - 1ST COAT | 4d | 2026-04-17 | 2026-04-20 | 6437 |  | RGA -FINISHING | 8869624 |
| 6441 | 40100.40200.41000.52600.55700.57900.76700.2418200 | INTERNAL DOOR FIXING | 15d | 2026-04-19 | 2026-05-03 | 6440FS-2d |  | RGA -FINISHING | 8869634 |
| 6442 | 40100.40200.41000.52600.55700.57900.76700.2418300 | WIRING & SWITCH PLATE FIXING | 8d | 2026-04-30 | 2026-05-07 | 6441FS-4d |  | RGA -FINISHING | 8869644 |
| 6443 | 40100.40200.41000.52600.55700.57900.76700.2418400 | TOILET FALSE CEILING | 7d | 2026-05-08 | 2026-05-14 | 6442 |  | RGA -FINISHING | 8869654 |
| 6444 | 40100.40200.41000.52600.55700.57900.76700.2418500 | MAIN DOOR FRAME SHUTTER FIXING | 6d | 2026-09-24 | 2026-09-29 | 6711 |  | RGA -FINISHING | 8869664 |
| 6445 | 40100.40200.41000.52600.55700.57900.76700.2418600 | FINAL COAT PAINT | 8d | 2026-09-30 | 2026-10-07 | 6444 |  | RGA -FINISHING | 8869674 |
| 6446 | 40100.40200.41000.52600.55700.57900.76800 | **14TH FLOOR** | 239d | 2026-02-11 | 2026-10-07 |  | start no earlier than 2026-02-11 | RGA -FINISHING | 8866034 |
| 6447 | 40100.40200.41000.52600.55700.57900.76800.2418700 | TOILET DADO TILE FIXING | 10d | 2026-03-25 | 2026-04-03 | 6172 |  | RGA -FINISHING | 8869684 |
| 6448 | 40100.40200.41000.52600.55700.57900.76800.2418800 | TOILET FLOORING WORK | 7d | 2026-04-04 | 2026-04-10 | 6447 |  | RGA -FINISHING | 8869694 |
| 6449 | 40100.40200.41000.52600.55700.57900.76800.2418900 | FIRE FIGHTING | 8d | 2026-02-11 | 2026-02-18 | 6171 |  | RGA -FINISHING | 8869704 |
| 6450 | 40100.40200.41000.52600.55700.57900.76800.2419000 | INTERNAL PAINTING - PUTTY / PRIMER APPLICATION | 5d | 2026-04-23 | 2026-04-27 | 6452 |  | RGA -FINISHING | 8869714 |
| 6451 | 40100.40200.41000.52600.55700.57900.76800.2419100 | FLAT FLOORING | 7d | 2026-04-11 | 2026-04-17 | 6448 |  | RGA -FINISHING | 8869724 |
| 6452 | 40100.40200.41000.52600.55700.57900.76800.2419200 | WINDOW FIXING | 5d | 2026-04-18 | 2026-04-22 | 6451 |  | RGA -FINISHING | 8869734 |
| 6453 | 40100.40200.41000.52600.55700.57900.76800.2419300 | INTERNAL PAINTING - 1ST COAT | 4d | 2026-04-28 | 2026-05-01 | 6450 |  | RGA -FINISHING | 8869744 |
| 6454 | 40100.40200.41000.52600.55700.57900.76800.2419400 | INTERNAL DOOR FIXING | 15d | 2026-04-30 | 2026-05-14 | 6453FS-2d |  | RGA -FINISHING | 8869754 |
| 6455 | 40100.40200.41000.52600.55700.57900.76800.2419500 | WIRING & SWITCH PLATE FIXING | 8d | 2026-05-11 | 2026-05-18 | 6454FS-4d |  | RGA -FINISHING | 8869764 |
| 6456 | 40100.40200.41000.52600.55700.57900.76800.2419600 | TOILET FALSE CEILING | 7d | 2026-05-19 | 2026-05-25 | 6455 |  | RGA -FINISHING | 8869774 |
| 6457 | 40100.40200.41000.52600.55700.57900.76800.2419700 | MAIN DOOR FRAME SHUTTER FIXING | 6d | 2026-09-24 | 2026-09-29 | 6719 |  | RGA -FINISHING | 8869784 |
| 6458 | 40100.40200.41000.52600.55700.57900.76800.2419800 | FINAL COAT PAINT | 8d | 2026-09-30 | 2026-10-07 | 6457 |  | RGA -FINISHING | 8869794 |

| ID | WBS | Task | Duration | Start | Finish | Predecessors | Constraint | Calendar | Unique_Task_ID |
| --- | --- | --- | --- | --- | --- | --- | --- | --- | --- |
| 6459 | 40100.40200.41000.52600.55700.57900.76900 | **15TH FLOOR** | 230d | 2026-02-20 | 2026-10-07 |  | start no earlier than 2026-02-20 | RGA -FINISHING | 8866044 |
| 6460 | 40100.40200.41000.52600.55700.57900.76900.2419900 | TOILET DADO TILE FIXING | 10d | 2026-04-04 | 2026-04-13 | 6179 |  | RGA -FINISHING | 8869804 |
| 6461 | 40100.40200.41000.52600.55700.57900.76900.2420000 | TOILET FLOORING WORK | 7d | 2026-04-14 | 2026-04-20 | 6460 |  | RGA -FINISHING | 8869814 |
| 6462 | 40100.40200.41000.52600.55700.57900.76900.2420100 | FIRE FIGHTING | 8d | 2026-02-20 | 2026-02-27 | 6178 |  | RGA -FINISHING | 8869824 |
| 6463 | 40100.40200.41000.52600.55700.57900.76900.2420200 | INTERNAL PAINTING - PUTTY / PRIMER APPLICATION | 5d | 2026-05-03 | 2026-05-07 | 6465 |  | RGA -FINISHING | 8869834 |
| 6464 | 40100.40200.41000.52600.55700.57900.76900.2420300 | FLAT FLOORING | 7d | 2026-04-21 | 2026-04-27 | 6461 |  | RGA -FINISHING | 8869844 |
| 6465 | 40100.40200.41000.52600.55700.57900.76900.2420400 | WINDOW FIXING | 5d | 2026-04-28 | 2026-05-02 | 6464 |  | RGA -FINISHING | 8869854 |
| 6466 | 40100.40200.41000.52600.55700.57900.76900.2420500 | INTERNAL PAINTING - 1ST COAT | 4d | 2026-05-08 | 2026-05-11 | 6463 |  | RGA -FINISHING | 8869864 |
| 6467 | 40100.40200.41000.52600.55700.57900.76900.2420600 | INTERNAL DOOR FIXING | 15d | 2026-05-10 | 2026-05-24 | 6466FS-2d |  | RGA -FINISHING | 8869874 |
| 6468 | 40100.40200.41000.52600.55700.57900.76900.2420700 | WIRING & SWITCH PLATE FIXING | 8d | 2026-05-21 | 2026-05-28 | 6467FS-4d |  | RGA -FINISHING | 8869884 |
| 6469 | 40100.40200.41000.52600.55700.57900.76900.2420800 | TOILET FALSE CEILING | 7d | 2026-05-29 | 2026-06-04 | 6468 |  | RGA -FINISHING | 8869894 |
| 6470 | 40100.40200.41000.52600.55700.57900.76900.2420900 | MAIN DOOR FRAME SHUTTER FIXING | 6d | 2026-09-24 | 2026-09-29 | 6727 |  | RGA -FINISHING | 8869904 |
| 6471 | 40100.40200.41000.52600.55700.57900.76900.2421000 | FINAL COAT PAINT | 8d | 2026-09-30 | 2026-10-07 | 6470 |  | RGA -FINISHING | 8869914 |
| 6472 | 40100.40200.41000.52600.55700.57900.77000 | **16TH FLOOR** | 232d | 2026-02-28 | 2026-10-17 |  | start no earlier than 2026-02-28 | RGA -FINISHING | 8866054 |
| 6473 | 40100.40200.41000.52600.55700.57900.77000.2421100 | TOILET DADO TILE FIXING | 10d | 2026-04-13 | 2026-04-22 | 6186 |  | RGA -FINISHING | 8869924 |
| 6474 | 40100.40200.41000.52600.55700.57900.77000.2421200 | TOILET FLOORING WORK | 7d | 2026-04-23 | 2026-04-29 | 6473 |  | RGA -FINISHING | 8869934 |
| 6475 | 40100.40200.41000.52600.55700.57900.77000.2421300 | FIRE FIGHTING | 8d | 2026-02-28 | 2026-03-07 | 6185 |  | RGA -FINISHING | 8869944 |
| 6476 | 40100.40200.41000.52600.55700.57900.77000.2421400 | INTERNAL PAINTING - PUTTY / PRIMER APPLICATION | 5d | 2026-05-12 | 2026-05-16 | 6478 |  | RGA -FINISHING | 8869954 |
| 6477 | 40100.40200.41000.52600.55700.57900.77000.2421500 | FLAT FLOORING | 7d | 2026-04-30 | 2026-05-06 | 6474 |  | RGA -FINISHING | 8869964 |
| 6478 | 40100.40200.41000.52600.55700.57900.77000.2421600 | WINDOW FIXING | 5d | 2026-05-07 | 2026-05-11 | 6477 |  | RGA -FINISHING | 8869974 |
| 6479 | 40100.40200.41000.52600.55700.57900.77000.2421700 | INTERNAL PAINTING - 1ST COAT | 4d | 2026-05-17 | 2026-05-20 | 6476 |  | RGA -FINISHING | 8869984 |
| 6480 | 40100.40200.41000.52600.55700.57900.77000.2421800 | INTERNAL DOOR FIXING | 15d | 2026-05-19 | 2026-06-02 | 6479FS-2d |  | RGA -FINISHING | 8869994 |
| 6481 | 40100.40200.41000.52600.55700.57900.77000.2421900 | WIRING & SWITCH PLATE FIXING | 8d | 2026-05-30 | 2026-06-06 | 6480FS-4d |  | RGA -FINISHING | 8870004 |
| 6482 | 40100.40200.41000.52600.55700.57900.77000.2422000 | TOILET FALSE CEILING | 7d | 2026-06-07 | 2026-06-13 | 6481 |  | RGA -FINISHING | 8870014 |
| 6483 | 40100.40200.41000.52600.55700.57900.77000.2422100 | MAIN DOOR FRAME SHUTTER FIXING | 6d | 2026-10-04 | 2026-10-09 | 6735 |  | RGA -FINISHING | 8870024 |
| 6484 | 40100.40200.41000.52600.55700.57900.77000.2422200 | FINAL COAT PAINT | 8d | 2026-10-10 | 2026-10-17 | 6483 |  | RGA -FINISHING | 8870034 |

| ID | WBS | Task | Duration | Start | Finish | Predecessors | Constraint | Calendar | Unique_Task_ID |
| --- | --- | --- | --- | --- | --- | --- | --- | --- | --- |
| 6485 | 40100.40200.41000.52600.55700.57900.77100 | **17TH FLOOR** | 220d | 2026-03-12 | 2026-10-17 |  | start no earlier than 2026-03-12 | RGA -FINISHING | 8866064 |
| 6486 | 40100.40200.41000.52600.55700.57900.77100.2422300 | TOILET DADO TILE FIXING | 10d | 2026-04-21 | 2026-04-30 | 6193 |  | RGA -FINISHING | 8870044 |
| 6487 | 40100.40200.41000.52600.55700.57900.77100.2422400 | TOILET FLOORING WORK | 7d | 2026-05-01 | 2026-05-07 | 6486 |  | RGA -FINISHING | 8870054 |
| 6488 | 40100.40200.41000.52600.55700.57900.77100.2422500 | FIRE FIGHTING | 8d | 2026-03-12 | 2026-03-19 | 6192 |  | RGA -FINISHING | 8870064 |
| 6489 | 40100.40200.41000.52600.55700.57900.77100.2422600 | INTERNAL PAINTING - PUTTY / PRIMER APPLICATION | 5d | 2026-05-20 | 2026-05-24 | 6491 |  | RGA -FINISHING | 8870074 |
| 6490 | 40100.40200.41000.52600.55700.57900.77100.2422700 | FLAT FLOORING | 7d | 2026-05-08 | 2026-05-14 | 6487 |  | RGA -FINISHING | 8870084 |
| 6491 | 40100.40200.41000.52600.55700.57900.77100.2422800 | WINDOW FIXING | 5d | 2026-05-15 | 2026-05-19 | 6490 |  | RGA -FINISHING | 8870094 |
| 6492 | 40100.40200.41000.52600.55700.57900.77100.2422900 | INTERNAL PAINTING - 1ST COAT | 4d | 2026-05-25 | 2026-05-28 | 6489 |  | RGA -FINISHING | 8870104 |
| 6493 | 40100.40200.41000.52600.55700.57900.77100.2423000 | INTERNAL DOOR FIXING | 15d | 2026-05-27 | 2026-06-10 | 6492FS-2d |  | RGA -FINISHING | 8870114 |
| 6494 | 40100.40200.41000.52600.55700.57900.77100.2423100 | WIRING & SWITCH PLATE FIXING | 8d | 2026-06-07 | 2026-06-14 | 6493FS-4d |  | RGA -FINISHING | 8870124 |
| 6495 | 40100.40200.41000.52600.55700.57900.77100.2423200 | TOILET FALSE CEILING | 7d | 2026-06-15 | 2026-06-21 | 6494 |  | RGA -FINISHING | 8870134 |
| 6496 | 40100.40200.41000.52600.55700.57900.77100.2423300 | MAIN DOOR FRAME SHUTTER FIXING | 6d | 2026-10-04 | 2026-10-09 | 6743 |  | RGA -FINISHING | 8870144 |
| 6497 | 40100.40200.41000.52600.55700.57900.77100.2423400 | FINAL COAT PAINT | 8d | 2026-10-10 | 2026-10-17 | 6496 |  | RGA -FINISHING | 8870154 |
| 6498 | 40100.40200.41000.52600.55700.57900.77200 | **18TH FLOOR** | 212d | 2026-03-20 | 2026-10-17 |  | start no earlier than 2026-03-20 | RGA -FINISHING | 8866074 |
| 6499 | 40100.40200.41000.52600.55700.57900.77200.2423500 | TOILET DADO TILE FIXING | 10d | 2026-05-03 | 2026-05-12 | 6200 |  | RGA -FINISHING | 8870164 |
| 6500 | 40100.40200.41000.52600.55700.57900.77200.2423600 | TOILET FLOORING WORK | 7d | 2026-05-13 | 2026-05-19 | 6499 |  | RGA -FINISHING | 8870174 |
| 6501 | 40100.40200.41000.52600.55700.57900.77200.2423700 | FIRE FIGHTING | 8d | 2026-03-20 | 2026-03-27 | 6199 |  | RGA -FINISHING | 8870184 |
| 6502 | 40100.40200.41000.52600.55700.57900.77200.2423800 | INTERNAL PAINTING - PUTTY / PRIMER APPLICATION | 5d | 2026-06-01 | 2026-06-05 | 6504 |  | RGA -FINISHING | 8870194 |
| 6503 | 40100.40200.41000.52600.55700.57900.77200.2423900 | FLAT FLOORING | 7d | 2026-05-20 | 2026-05-26 | 6500 |  | RGA -FINISHING | 8870204 |
| 6504 | 40100.40200.41000.52600.55700.57900.77200.2424000 | WINDOW FIXING | 5d | 2026-05-27 | 2026-05-31 | 6503 |  | RGA -FINISHING | 8870214 |
| 6505 | 40100.40200.41000.52600.55700.57900.77200.2424100 | INTERNAL PAINTING - 1ST COAT | 4d | 2026-06-06 | 2026-06-09 | 6502 |  | RGA -FINISHING | 8870224 |
| 6506 | 40100.40200.41000.52600.55700.57900.77200.2424200 | INTERNAL DOOR FIXING | 15d | 2026-06-08 | 2026-06-22 | 6505FS-2d |  | RGA -FINISHING | 8870234 |
| 6507 | 40100.40200.41000.52600.55700.57900.77200.2424300 | WIRING & SWITCH PLATE FIXING | 8d | 2026-06-19 | 2026-06-26 | 6506FS-4d |  | RGA -FINISHING | 8870244 |
| 6508 | 40100.40200.41000.52600.55700.57900.77200.2424400 | TOILET FALSE CEILING | 7d | 2026-06-27 | 2026-07-03 | 6507 |  | RGA -FINISHING | 8870254 |
| 6509 | 40100.40200.41000.52600.55700.57900.77200.2424500 | MAIN DOOR FRAME SHUTTER FIXING | 6d | 2026-10-04 | 2026-10-09 | 6751 |  | RGA -FINISHING | 8870264 |
| 6510 | 40100.40200.41000.52600.55700.57900.77200.2424600 | FINAL COAT PAINT | 8d | 2026-10-10 | 2026-10-17 | 6509 |  | RGA -FINISHING | 8870274 |

| ID | WBS | Task | Duration | Start | Finish | Predecessors | Constraint | Calendar | Unique_Task_ID |
| --- | --- | --- | --- | --- | --- | --- | --- | --- | --- |
| 6511 | 40100.40200.41000.52600.55700.57900.77300 | **19TH FLOOR** | 214d | 2026-03-28 | 2026-10-27 |  | start no earlier than 2026-03-28 | RGA -FINISHING | 8866084 |
| 6512 | 40100.40200.41000.52600.55700.57900.77300.2424700 | TOILET DADO TILE FIXING | 10d | 2026-05-11 | 2026-05-20 | 6207 |  | RGA -FINISHING | 8870284 |
| 6513 | 40100.40200.41000.52600.55700.57900.77300.2424800 | TOILET FLOORING WORK | 7d | 2026-05-21 | 2026-05-27 | 6512 |  | RGA -FINISHING | 8870294 |
| 6514 | 40100.40200.41000.52600.55700.57900.77300.2424900 | FIRE FIGHTING | 8d | 2026-03-28 | 2026-04-04 | 6206 |  | RGA -FINISHING | 8870304 |
| 6515 | 40100.40200.41000.52600.55700.57900.77300.2425000 | INTERNAL PAINTING - PUTTY / PRIMER APPLICATION | 5d | 2026-06-09 | 2026-06-13 | 6517 |  | RGA -FINISHING | 8870314 |
| 6516 | 40100.40200.41000.52600.55700.57900.77300.2425100 | FLAT FLOORING | 7d | 2026-05-28 | 2026-06-03 | 6513 |  | RGA -FINISHING | 8870324 |
| 6517 | 40100.40200.41000.52600.55700.57900.77300.2425200 | WINDOW FIXING | 5d | 2026-06-04 | 2026-06-08 | 6516 |  | RGA -FINISHING | 8870334 |
| 6518 | 40100.40200.41000.52600.55700.57900.77300.2425300 | INTERNAL PAINTING - 1ST COAT | 4d | 2026-06-14 | 2026-06-17 | 6515 |  | RGA -FINISHING | 8870344 |
| 6519 | 40100.40200.41000.52600.55700.57900.77300.2425400 | INTERNAL DOOR FIXING | 15d | 2026-06-16 | 2026-06-30 | 6518FS-2d |  | RGA -FINISHING | 8870354 |
| 6520 | 40100.40200.41000.52600.55700.57900.77300.2425500 | WIRING & SWITCH PLATE FIXING | 8d | 2026-06-27 | 2026-07-04 | 6519FS-4d |  | RGA -FINISHING | 8870364 |
| 6521 | 40100.40200.41000.52600.55700.57900.77300.2425600 | TOILET FALSE CEILING | 7d | 2026-07-05 | 2026-07-11 | 6520 |  | RGA -FINISHING | 8870374 |
| 6522 | 40100.40200.41000.52600.55700.57900.77300.2425700 | MAIN DOOR FRAME SHUTTER FIXING | 6d | 2026-10-14 | 2026-10-19 | 6759 |  | RGA -FINISHING | 8870384 |
| 6523 | 40100.40200.41000.52600.55700.57900.77300.2425800 | FINAL COAT PAINT | 8d | 2026-10-20 | 2026-10-27 | 6522 |  | RGA -FINISHING | 8870394 |
| 6524 | 40100.40200.41000.52600.55700.57900.77600 | **20TH FLOOR** | 206d | 2026-04-05 | 2026-10-27 |  | start no earlier than 2026-04-05 | RGA -FINISHING | 8866094 |
| 6525 | 40100.40200.41000.52600.55700.57900.77600.2425900 | TOILET DADO TILE FIXING | 10d | 2026-05-19 | 2026-05-28 | 6214 |  | RGA -FINISHING | 8870404 |
| 6526 | 40100.40200.41000.52600.55700.57900.77600.2426000 | TOILET FLOORING WORK | 7d | 2026-05-29 | 2026-06-04 | 6525 |  | RGA -FINISHING | 8870414 |
| 6527 | 40100.40200.41000.52600.55700.57900.77600.2426100 | FIRE FIGHTING | 8d | 2026-04-05 | 2026-04-12 | 6213 |  | RGA -FINISHING | 8870424 |
| 6528 | 40100.40200.41000.52600.55700.57900.77600.2426200 | INTERNAL PAINTING - PUTTY / PRIMER APPLICATION | 5d | 2026-06-17 | 2026-06-21 | 6530 |  | RGA -FINISHING | 8870434 |
| 6529 | 40100.40200.41000.52600.55700.57900.77600.2426300 | FLAT FLOORING | 7d | 2026-06-05 | 2026-06-11 | 6526 |  | RGA -FINISHING | 8870444 |
| 6530 | 40100.40200.41000.52600.55700.57900.77600.2426400 | WINDOW FIXING | 5d | 2026-06-12 | 2026-06-16 | 6529 |  | RGA -FINISHING | 8870454 |
| 6531 | 40100.40200.41000.52600.55700.57900.77600.2426500 | INTERNAL PAINTING - 1ST COAT | 4d | 2026-06-22 | 2026-06-25 | 6528 |  | RGA -FINISHING | 8870464 |
| 6532 | 40100.40200.41000.52600.55700.57900.77600.2426600 | INTERNAL DOOR FIXING | 15d | 2026-06-24 | 2026-07-08 | 6531FS-2d |  | RGA -FINISHING | 8870474 |
| 6533 | 40100.40200.41000.52600.55700.57900.77600.2426700 | WIRING & SWITCH PLATE FIXING | 8d | 2026-07-05 | 2026-07-12 | 6532FS-4d |  | RGA -FINISHING | 8870484 |
| 6534 | 40100.40200.41000.52600.55700.57900.77600.2426800 | TOILET FALSE CEILING | 7d | 2026-07-13 | 2026-07-19 | 6533 |  | RGA -FINISHING | 8870494 |
| 6535 | 40100.40200.41000.52600.55700.57900.77600.2426900 | MAIN DOOR FRAME SHUTTER FIXING | 6d | 2026-10-14 | 2026-10-19 | 6767 |  | RGA -FINISHING | 8870504 |
| 6536 | 40100.40200.41000.52600.55700.57900.77600.2427000 | FINAL COAT PAINT | 8d | 2026-10-20 | 2026-10-27 | 6535 |  | RGA -FINISHING | 8870514 |

| ID | WBS | Task | Duration | Start | Finish | Predecessors | Constraint | Calendar | Unique_Task_ID |
| --- | --- | --- | --- | --- | --- | --- | --- | --- | --- |
| 6537 | 40100.40200.41000.52600.55700.57900.77700 | **21st FLOOR** | 208d | 2026-04-13 | 2026-11-06 |  | start no earlier than 2026-04-13 | RGA -FINISHING | 8866104 |
| 6538 | 40100.40200.41000.52600.55700.57900.77700.2427100 | TOILET DADO TILE FIXING | 10d | 2026-05-27 | 2026-06-05 | 6221 |  | RGA -FINISHING | 8870524 |
| 6539 | 40100.40200.41000.52600.55700.57900.77700.2427200 | TOILET FLOORING WORK | 7d | 2026-06-06 | 2026-06-12 | 6538 |  | RGA -FINISHING | 8870534 |
| 6540 | 40100.40200.41000.52600.55700.57900.77700.2427300 | FIRE FIGHTING | 8d | 2026-04-13 | 2026-04-20 | 6220 |  | RGA -FINISHING | 8870544 |
| 6541 | 40100.40200.41000.52600.55700.57900.77700.2427400 | INTERNAL PAINTING - PUTTY / PRIMER APPLICATION | 15d | 2026-06-25 | 2026-07-09 | 6543 |  | RGA -FINISHING | 8870554 |
| 6542 | 40100.40200.41000.52600.55700.57900.77700.2427500 | FLAT FLOORING | 5d | 2026-06-13 | 2026-06-17 | 6539 |  | RGA -FINISHING | 8870564 |
| 6543 | 40100.40200.41000.52600.55700.57900.77700.2427600 | WINDOW FIXING | 7d | 2026-06-18 | 2026-06-24 | 6542 |  | RGA -FINISHING | 8870574 |
| 6544 | 40100.40200.41000.52600.55700.57900.77700.2427700 | INTERNAL PAINTING - 1ST COAT | 5d | 2026-07-10 | 2026-07-14 | 6541 |  | RGA -FINISHING | 8870584 |
| 6545 | 40100.40200.41000.52600.55700.57900.77700.2427800 | INTERNAL DOOR FIXING | 4d | 2026-07-13 | 2026-07-16 | 6544FS-2d |  | RGA -FINISHING | 8870594 |
| 6546 | 40100.40200.41000.52600.55700.57900.77700.2427900 | WIRING & SWITCH PLATE FIXING | 8d | 2026-07-13 | 2026-07-20 | 6545FS-4d |  | RGA -FINISHING | 8870604 |
| 6547 | 40100.40200.41000.52600.55700.57900.77700.2428000 | TOILET FALSE CEILING | 7d | 2026-07-21 | 2026-07-27 | 6546 |  | RGA -FINISHING | 8870614 |
| 6548 | 40100.40200.41000.52600.55700.57900.77700.2428100 | MAIN DOOR FRAME SHUTTER FIXING | 6d | 2026-10-24 | 2026-10-29 | 6775 |  | RGA -FINISHING | 8870624 |
| 6549 | 40100.40200.41000.52600.55700.57900.77700.2428200 | FINAL COAT PAINT | 8d | 2026-10-30 | 2026-11-06 | 6548 |  | RGA -FINISHING | 8870634 |
| 6550 | 40100.40200.41000.52600.55700.57900.77800 | **22nd FLOOR** | 200d | 2026-04-21 | 2026-11-06 |  | start no earlier than 2026-04-21 | RGA -FINISHING | 8866114 |
| 6551 | 40100.40200.41000.52600.55700.57900.77800.2428300 | TOILET DADO TILE FIXING | 10d | 2026-06-04 | 2026-06-13 | 6228 |  | RGA -FINISHING | 8870644 |
| 6552 | 40100.40200.41000.52600.55700.57900.77800.2428400 | TOILET FLOORING WORK | 7d | 2026-06-14 | 2026-06-20 | 6551 |  | RGA -FINISHING | 8870654 |
| 6553 | 40100.40200.41000.52600.55700.57900.77800.2428500 | FIRE FIGHTING | 8d | 2026-04-21 | 2026-04-28 | 6227 |  | RGA -FINISHING | 8870664 |
| 6554 | 40100.40200.41000.52600.55700.57900.77800.2428600 | INTERNAL PAINTING - PUTTY / PRIMER APPLICATION | 5d | 2026-06-30 | 2026-07-04 | 6556 |  | RGA -FINISHING | 8870674 |
| 6555 | 40100.40200.41000.52600.55700.57900.77800.2428700 | FLAT FLOORING | 7d | 2026-06-21 | 2026-06-27 | 6552 |  | RGA -FINISHING | 8870684 |
| 6556 | 40100.40200.41000.52600.55700.57900.77800.2428800 | WINDOW FIXING | 5d | 2026-06-25 | 2026-06-29 | 6543 |  | RGA -FINISHING | 8870694 |
| 6557 | 40100.40200.41000.52600.55700.57900.77800.2428900 | INTERNAL PAINTING - 1ST COAT | 4d | 2026-07-05 | 2026-07-08 | 6554 |  | RGA -FINISHING | 8870704 |
| 6558 | 40100.40200.41000.52600.55700.57900.77800.2429000 | INTERNAL DOOR FIXING | 15d | 2026-07-07 | 2026-07-21 | 6557FS-2d |  | RGA -FINISHING | 8870714 |
| 6559 | 40100.40200.41000.52600.55700.57900.77800.2429100 | WIRING & SWITCH PLATE FIXING | 8d | 2026-07-18 | 2026-07-25 | 6558FS-4d |  | RGA -FINISHING | 8870724 |
| 6560 | 40100.40200.41000.52600.55700.57900.77800.2429200 | TOILET FALSE CEILING | 7d | 2026-07-26 | 2026-08-01 | 6559 |  | RGA -FINISHING | 8870734 |
| 6561 | 40100.40200.41000.52600.55700.57900.77800.2429300 | MAIN DOOR FRAME SHUTTER FIXING | 6d | 2026-10-24 | 2026-10-29 | 6783 |  | RGA -FINISHING | 8870744 |
| 6562 | 40100.40200.41000.52600.55700.57900.77800.2429400 | FINAL COAT PAINT | 8d | 2026-10-30 | 2026-11-06 | 6561 |  | RGA -FINISHING | 8870754 |

| ID | WBS | Task | Duration | Start | Finish | Predecessors | Constraint | Calendar | Unique_Task_ID |
| --- | --- | --- | --- | --- | --- | --- | --- | --- | --- |
| 6563 | 40100.40200.41000.52600.55700.57900.78000 | **23TH FLOOR** | 191d | 2026-04-30 | 2026-11-06 |  | start no earlier than 2026-04-30 | RGA -FINISHING | 8866124 |
| 6564 | 40100.40200.41000.52600.55700.57900.78000.2429500 | TOILET DADO TILE FIXING | 10d | 2026-07-12 | 2026-07-21 | 6235 |  | RGA -FINISHING | 8870764 |
| 6565 | 40100.40200.41000.52600.55700.57900.78000.2429600 | TOILET FLOORING WORK | 7d | 2026-07-22 | 2026-07-28 | 6564 |  | RGA -FINISHING | 8870774 |
| 6566 | 40100.40200.41000.52600.55700.57900.78000.2429700 | FIRE FIGHTING | 8d | 2026-04-30 | 2026-05-07 | 6234 |  | RGA -FINISHING | 8870784 |
| 6567 | 40100.40200.41000.52600.55700.57900.78000.2429800 | INTERNAL PAINTING - PUTTY / PRIMER APPLICATION | 5d | 2026-08-10 | 2026-08-14 | 6569 |  | RGA -FINISHING | 8870794 |
| 6568 | 40100.40200.41000.52600.55700.57900.78000.2429900 | FLAT FLOORING | 7d | 2026-07-29 | 2026-08-04 | 6565 |  | RGA -FINISHING | 8870804 |
| 6569 | 40100.40200.41000.52600.55700.57900.78000.2430000 | WINDOW FIXING | 5d | 2026-08-05 | 2026-08-09 | 6568 |  | RGA -FINISHING | 8870814 |
| 6570 | 40100.40200.41000.52600.55700.57900.78000.2430100 | INTERNAL PAINTING - 1ST COAT | 4d | 2026-08-15 | 2026-08-18 | 6567 |  | RGA -FINISHING | 8870824 |
| 6571 | 40100.40200.41000.52600.55700.57900.78000.2430200 | INTERNAL DOOR FIXING | 15d | 2026-08-17 | 2026-08-31 | 6570FS-2d |  | RGA -FINISHING | 8870834 |
| 6572 | 40100.40200.41000.52600.55700.57900.78000.2430300 | WIRING & SWITCH PLATE FIXING | 8d | 2026-08-28 | 2026-09-04 | 6571FS-4d |  | RGA -FINISHING | 8870844 |
| 6573 | 40100.40200.41000.52600.55700.57900.78000.2430400 | TOILET FALSE CEILING | 7d | 2026-09-05 | 2026-09-11 | 6572 |  | RGA -FINISHING | 8870854 |
| 6574 | 40100.40200.41000.52600.55700.57900.78000.2430500 | MAIN DOOR FRAME SHUTTER FIXING | 6d | 2026-10-24 | 2026-10-29 | 6791 |  | RGA -FINISHING | 8870864 |
| 6575 | 40100.40200.41000.52600.55700.57900.78000.2430600 | FINAL COAT PAINT | 8d | 2026-10-30 | 2026-11-06 | 6574 |  | RGA -FINISHING | 8870874 |
| 6576 | 40100.40200.41000.52600.55700.57900.78100 | **24TH FLOOR** | 182d | 2026-05-09 | 2026-11-06 |  | start no earlier than 2026-05-09 | RGA -FINISHING | 8866134 |
| 6577 | 40100.40200.41000.52600.55700.57900.78100.2430700 | TOILET DADO TILE FIXING | 10d | 2026-07-21 | 2026-07-30 | 6242 |  | RGA -FINISHING | 8870884 |
| 6578 | 40100.40200.41000.52600.55700.57900.78100.2430800 | TOILET FLOORING WORK | 7d | 2026-07-31 | 2026-08-06 | 6577 |  | RGA -FINISHING | 8870894 |
| 6579 | 40100.40200.41000.52600.55700.57900.78100.2430900 | FIRE FIGHTING | 8d | 2026-05-09 | 2026-05-16 | 6241 |  | RGA -FINISHING | 8870904 |
| 6580 | 40100.40200.41000.52600.55700.57900.78100.2431000 | INTERNAL PAINTING - PUTTY / PRIMER APPLICATION | 5d | 2026-08-19 | 2026-08-23 | 6582 |  | RGA -FINISHING | 8870914 |
| 6581 | 40100.40200.41000.52600.55700.57900.78100.2431100 | FLAT FLOORING | 7d | 2026-08-07 | 2026-08-13 | 6578 |  | RGA -FINISHING | 8870924 |
| 6582 | 40100.40200.41000.52600.55700.57900.78100.2431200 | WINDOW FIXING | 5d | 2026-08-14 | 2026-08-18 | 6581 |  | RGA -FINISHING | 8870934 |
| 6583 | 40100.40200.41000.52600.55700.57900.78100.2431300 | INTERNAL PAINTING - 1ST COAT | 4d | 2026-08-24 | 2026-08-27 | 6580 |  | RGA -FINISHING | 8870944 |
| 6584 | 40100.40200.41000.52600.55700.57900.78100.2431400 | INTERNAL DOOR FIXING | 15d | 2026-08-26 | 2026-09-09 | 6583FS-2d |  | RGA -FINISHING | 8870954 |
| 6585 | 40100.40200.41000.52600.55700.57900.78100.2431500 | WIRING & SWITCH PLATE FIXING | 8d | 2026-09-06 | 2026-09-13 | 6584FS-4d |  | RGA -FINISHING | 8870964 |
| 6586 | 40100.40200.41000.52600.55700.57900.78100.2431600 | TOILET FALSE CEILING | 7d | 2026-09-14 | 2026-09-20 | 6585 |  | RGA -FINISHING | 8870974 |
| 6587 | 40100.40200.41000.52600.55700.57900.78100.2431700 | MAIN DOOR FRAME SHUTTER FIXING | 6d | 2026-10-24 | 2026-10-29 | 6799 |  | RGA -FINISHING | 8870984 |
| 6588 | 40100.40200.41000.52600.55700.57900.78100.2431800 | FINAL COAT PAINT | 8d | 2026-10-30 | 2026-11-06 | 6587 |  | RGA -FINISHING | 8870994 |

| ID | WBS | Task | Duration | Start | Finish | Predecessors | Constraint | Calendar | Unique_Task_ID |
| --- | --- | --- | --- | --- | --- | --- | --- | --- | --- |
| 6589 | 40100.40200.41000.52600.55700.57900.78200 | **25TH FLOOR** | 198d | 2026-05-18 | 2026-12-01 |  | start no earlier than 2026-05-18 | RGA -FINISHING | 8866144 |
| 6590 | 40100.40200.41000.52600.55700.57900.78200.2431900 | TOILET DADO TILE FIXING | 10d | 2026-08-14 | 2026-08-23 | 6249 |  | RGA -FINISHING | 8871004 |
| 6591 | 40100.40200.41000.52600.55700.57900.78200.2432000 | TOILET FLOORING WORK | 7d | 2026-08-24 | 2026-08-30 | 6590 |  | RGA -FINISHING | 8871014 |
| 6592 | 40100.40200.41000.52600.55700.57900.78200.2432100 | FIRE FIGHTING | 8d | 2026-05-18 | 2026-05-25 | 6248 |  | RGA -FINISHING | 8871024 |
| 6593 | 40100.40200.41000.52600.55700.57900.78200.2432200 | INTERNAL PAINTING - PUTTY / PRIMER APPLICATION | 5d | 2026-09-12 | 2026-09-16 | 6595 |  | RGA -FINISHING | 8871034 |
| 6594 | 40100.40200.41000.52600.55700.57900.78200.2432300 | FLAT FLOORING | 7d | 2026-08-31 | 2026-09-06 | 6591 |  | RGA -FINISHING | 8871044 |
| 6595 | 40100.40200.41000.52600.55700.57900.78200.2432400 | WINDOW FIXING | 5d | 2026-09-07 | 2026-09-11 | 6594 |  | RGA -FINISHING | 8871054 |
| 6596 | 40100.40200.41000.52600.55700.57900.78200.2432500 | INTERNAL PAINTING - 1ST COAT | 4d | 2026-09-17 | 2026-09-20 | 6593 |  | RGA -FINISHING | 8871064 |
| 6597 | 40100.40200.41000.52600.55700.57900.78200.2432600 | INTERNAL DOOR FIXING | 15d | 2026-09-19 | 2026-10-03 | 6596FS-2d |  | RGA -FINISHING | 8871074 |
| 6598 | 40100.40200.41000.52600.55700.57900.78200.2432700 | WIRING & SWITCH PLATE FIXING | 8d | 2026-09-30 | 2026-10-07 | 6597FS-4d |  | RGA -FINISHING | 8871084 |
| 6599 | 40100.40200.41000.52600.55700.57900.78200.2432800 | TOILET FALSE CEILING | 7d | 2026-10-08 | 2026-10-14 | 6598 |  | RGA -FINISHING | 8871094 |
| 6600 | 40100.40200.41000.52600.55700.57900.78200.2432900 | MAIN DOOR FRAME SHUTTER FIXING | 6d | 2026-11-18 | 2026-11-23 | 6807 |  | RGA -FINISHING | 8871104 |
| 6601 | 40100.40200.41000.52600.55700.57900.78200.2433000 | FINAL COAT PAINT | 8d | 2026-11-24 | 2026-12-01 | 6600 |  | RGA -FINISHING | 8871114 |
| 6602 | 40100.40200.41000.52600.55700.60000 | **LIFT LOBBY & STAIRCASE FINISHING WORK** | 438d | 2025-09-30 | 2026-12-11 |  | start no earlier than 2025-09-30 | RGA -FINISHING | 8865844 |
| 6603 | 40100.40200.41000.52600.55700.60000.244700 | **GROUND FLOOR** | 336d | 2025-09-30 | 2026-08-31 |  | start no earlier than 2025-09-30 | RGA -FINISHING | 8866194 |
| 6604 | 40100.40200.41000.52600.55700.60000.244700.2433100 | FIRE FIGHTING | 5d | 2025-09-30 | 2025-10-04 | 6280FS-5d |  | RGA -FINISHING | 8871124 |
| 6605 | 40100.40200.41000.52600.55700.60000.244700.2433200 | LIFT BLOCK WORK | 3d | 2026-05-10 | 2026-05-12 | 6059 |  | RGA -FINISHING | 8871134 |
| 6606 | 40100.40200.41000.52600.55700.60000.244700.2433300 | LIFT DADO WORK | 6d | 2026-07-30 | 2026-08-04 | 6814FS-60d |  | RGA -FINISHING | 8871144 |
| 6607 | 40100.40200.41000.52600.55700.60000.244700.2433400 | LOBBY FLOORING WORK | 8d | 2026-08-05 | 2026-08-12 | 6606 |  | RGA -FINISHING | 8871154 |
| 6608 | 40100.40200.41000.52600.55700.60000.244700.2433500 | ELECTRICAL WIRING & SWITCH PLATE FIXING WORK | 6d | 2026-08-13 | 2026-08-18 | 6607 |  | RGA -FINISHING | 8871164 |
| 6609 | 40100.40200.41000.52600.55700.60000.244700.2433600 | False ceiling & 1ST COAT PAINTING | 10d | 2026-08-19 | 2026-08-28 | 6608 |  | RGA -FINISHING | 8871174 |
| 6610 | 40100.40200.41000.52600.55700.60000.244700.2433700 | CLEANING | 3d | 2026-08-29 | 2026-08-31 | 6609 |  | RGA -FINISHING | 8871184 |
| 6611 | 40100.40200.41000.52600.55700.60000.244800 | **1ST FLOOR** | 353d | 2025-09-30 | 2026-09-17 |  | start no earlier than 2025-09-30 | RGA -FINISHING | 8866204 |
| 6612 | 40100.40200.41000.52600.55700.60000.244800.2433800 | FIRE FIGHTING | 10d | 2025-09-30 | 2025-10-09 | 6280FS-5d |  | RGA -FINISHING | 8871194 |
| 6613 | 40100.40200.41000.52600.55700.60000.244800.2433900 | LIFT BLOCK WORK | 3d | 2026-05-13 | 2026-05-15 | 6605 |  | RGA -FINISHING | 8871204 |
| 6614 | 40100.40200.41000.52600.55700.60000.244800.2434000 | LIFT DADO WORK | 10d | 2026-08-05 | 2026-08-14 | 6606 |  | RGA -FINISHING | 8871214 |
| 6615 | 40100.40200.41000.52600.55700.60000.244800.2434100 | LOBBY FLOORING WORK | 10d | 2026-08-15 | 2026-08-24 | 6614 |  | RGA -FINISHING | 8871224 |
| 6616 | 40100.40200.41000.52600.55700.60000.244800.2434200 | ELECTRICAL WIRING & SWITCH PLATE FIXING WORK | 6d | 2026-08-25 | 2026-08-30 | 6615 |  | RGA -FINISHING | 8871234 |
| 6617 | 40100.40200.41000.52600.55700.60000.244800.2434300 | False ceiling & 1ST COAT PAINTING | 15d | 2026-08-31 | 2026-09-14 | 6616 |  | RGA -FINISHING | 8871244 |
| 6618 | 40100.40200.41000.52600.55700.60000.244800.2434400 | CLEANING | 3d | 2026-09-15 | 2026-09-17 | 6617 |  | RGA -FINISHING | 8871254 |

Notes:
- 6602: Completion in 12 months post last RCC
- 6604: Assumed
- 6612: Assumed

| ID | WBS | Task | Duration | Start | Finish | Predecessors | Constraint | Calendar | Unique_Task_ID |
| --- | --- | --- | --- | --- | --- | --- | --- | --- | --- |
| 6619 | 40100.40200.41000.52600.55700.60000.244900 | **2nd FLOOR** | 344d | 2025-10-09 | 2026-09-17 |  | start no earlier than 2025-10-09 | RGA -FINISHING | 8866214 |
| 6620 | 40100.40200.41000.52600.55700.60000.244900.2434500 | FIRE FIGHTING | 10d | 2025-10-09 | 2025-10-18 | 6293FS-5d |  | RGA -FINISHING | 8871264 |
| 6621 | 40100.40200.41000.52600.55700.60000.244900.2434600 | LIFT BLOCK WORK | 3d | 2026-05-13 | 2026-05-15 | 6613SS |  | RGA -FINISHING | 8871274 |
| 6622 | 40100.40200.41000.52600.55700.60000.244900.2434700 | LIFT DADO WORK | 10d | 2026-08-05 | 2026-08-14 | 6614SS |  | RGA -FINISHING | 8871284 |
| 6623 | 40100.40200.41000.52600.55700.60000.244900.2434800 | LOBBY FLOORING WORK | 10d | 2026-08-15 | 2026-08-24 | 6622 |  | RGA -FINISHING | 8871294 |
| 6624 | 40100.40200.41000.52600.55700.60000.244900.2434900 | ELECTRICAL WIRING & SWITCH PLATE FIXING WORK | 6d | 2026-08-25 | 2026-08-30 | 6623 |  | RGA -FINISHING | 8871304 |
| 6625 | 40100.40200.41000.52600.55700.60000.244900.2435000 | False ceiling & 1ST COAT PAINTING | 15d | 2026-08-31 | 2026-09-14 | 6624 |  | RGA -FINISHING | 8871314 |
| 6626 | 40100.40200.41000.52600.55700.60000.244900.2435100 | CLEANING | 3d | 2026-09-15 | 2026-09-17 | 6625 |  | RGA -FINISHING | 8871324 |
| 6627 | 40100.40200.41000.52600.55700.60000.245000 | **3rd FLOOR** | 319d | 2025-11-03 | 2026-09-17 |  | start no earlier than 2025-11-03 | RGA -FINISHING | 8866224 |
| 6628 | 40100.40200.41000.52600.55700.60000.245000.2435200 | FIRE FIGHTING | 10d | 2025-11-03 | 2025-11-12 | 6306FS-5d |  | RGA -FINISHING | 8871334 |
| 6629 | 40100.40200.41000.52600.55700.60000.245000.2435300 | LIFT BLOCK WORK | 3d | 2026-05-13 | 2026-05-15 | 6621SS |  | RGA -FINISHING | 8871344 |
| 6630 | 40100.40200.41000.52600.55700.60000.245000.2435400 | LIFT DADO WORK | 10d | 2026-08-05 | 2026-08-14 | 6622SS |  | RGA -FINISHING | 8871354 |
| 6631 | 40100.40200.41000.52600.55700.60000.245000.2435500 | LOBBY FLOORING WORK | 10d | 2026-08-15 | 2026-08-24 | 6630 |  | RGA -FINISHING | 8871364 |
| 6632 | 40100.40200.41000.52600.55700.60000.245000.2435600 | ELECTRICAL WIRING & SWITCH PLATE FIXING WORK | 6d | 2026-08-25 | 2026-08-30 | 6631 |  | RGA -FINISHING | 8871374 |
| 6633 | 40100.40200.41000.52600.55700.60000.245000.2435700 | False ceiling & 1ST COAT PAINTING | 15d | 2026-08-31 | 2026-09-14 | 6632 |  | RGA -FINISHING | 8871384 |
| 6634 | 40100.40200.41000.52600.55700.60000.245000.2435800 | CLEANING | 3d | 2026-09-15 | 2026-09-17 | 6633 |  | RGA -FINISHING | 8871394 |
| 6635 | 40100.40200.41000.52600.55700.60000.245100 | **4th FLOOR** | 319d | 2025-11-13 | 2026-09-27 |  | start no earlier than 2025-11-13 | RGA -FINISHING | 8866234 |
| 6636 | 40100.40200.41000.52600.55700.60000.245100.2435900 | FIRE FIGHTING | 10d | 2025-11-13 | 2025-11-22 | 6319FS-5d |  | RGA -FINISHING | 8871404 |
| 6637 | 40100.40200.41000.52600.55700.60000.245100.2436000 | LIFT BLOCK WORK | 3d | 2026-05-16 | 2026-05-18 | 6629 |  | RGA -FINISHING | 8871414 |
| 6638 | 40100.40200.41000.52600.55700.60000.245100.2436100 | LIFT DADO WORK | 10d | 2026-08-15 | 2026-08-24 | 6630 |  | RGA -FINISHING | 8871424 |
| 6639 | 40100.40200.41000.52600.55700.60000.245100.2436200 | LOBBY FLOORING WORK | 10d | 2026-08-25 | 2026-09-03 | 6638 |  | RGA -FINISHING | 8871434 |
| 6640 | 40100.40200.41000.52600.55700.60000.245100.2436300 | ELECTRICAL WIRING & SWITCH PLATE FIXING WORK | 6d | 2026-09-04 | 2026-09-09 | 6639 |  | RGA -FINISHING | 8871444 |
| 6641 | 40100.40200.41000.52600.55700.60000.245100.2436400 | False ceiling & 1ST COAT PAINTING | 15d | 2026-09-10 | 2026-09-24 | 6640 |  | RGA -FINISHING | 8871454 |
| 6642 | 40100.40200.41000.52600.55700.60000.245100.2436500 | CLEANING | 3d | 2026-09-25 | 2026-09-27 | 6641 |  | RGA -FINISHING | 8871464 |

Notes:
- 6620: Assumed
- 6628: Assumed
- 6636: Assumed

| ID | WBS | Task | Duration | Start | Finish | Predecessors | Constraint | Calendar | Unique_Task_ID |
| --- | --- | --- | --- | --- | --- | --- | --- | --- | --- |
| 6643 | 40100.40200.41000.52600.55700.60000.245200 | **5th FLOOR** | 310d | 2025-11-22 | 2026-09-27 |  | start no earlier than 2025-11-22 | RGA -FINISHING | 8866244 |
| 6644 | 40100.40200.41000.52600.55700.60000.245200.2436600 | FIRE FIGHTING | 10d | 2025-11-22 | 2025-12-01 | 6332FS-5d |  | RGA -FINISHING | 8871474 |
| 6645 | 40100.40200.41000.52600.55700.60000.245200.2436700 | LIFT BLOCK WORK | 3d | 2026-05-16 | 2026-05-18 | 6637SS |  | RGA -FINISHING | 8871484 |
| 6646 | 40100.40200.41000.52600.55700.60000.245200.2436800 | LIFT DADO WORK | 10d | 2026-08-15 | 2026-08-24 | 6638SS |  | RGA -FINISHING | 8871494 |
| 6647 | 40100.40200.41000.52600.55700.60000.245200.2436900 | LOBBY FLOORING WORK | 10d | 2026-08-25 | 2026-09-03 | 6646 |  | RGA -FINISHING | 8871504 |
| 6648 | 40100.40200.41000.52600.55700.60000.245200.2437000 | ELECTRICAL WIRING & SWITCH PLATE FIXING WORK | 6d | 2026-09-04 | 2026-09-09 | 6647 |  | RGA -FINISHING | 8871514 |
| 6649 | 40100.40200.41000.52600.55700.60000.245200.2437100 | False ceiling & 1ST COAT PAINTING | 15d | 2026-09-10 | 2026-09-24 | 6648 |  | RGA -FINISHING | 8871524 |
| 6650 | 40100.40200.41000.52600.55700.60000.245200.2437200 | CLEANING | 3d | 2026-09-25 | 2026-09-27 | 6649 |  | RGA -FINISHING | 8871534 |
| 6651 | 40100.40200.41000.52600.55700.60000.245300 | **6th FLOOR** | 301d | 2025-12-01 | 2026-09-27 |  | start no earlier than 2025-12-01 | RGA -FINISHING | 8866254 |
| 6652 | 40100.40200.41000.52600.55700.60000.245300.2437300 | FIRE FIGHTING | 10d | 2025-12-01 | 2025-12-10 | 6345FS-5d |  | RGA -FINISHING | 8871544 |
| 6653 | 40100.40200.41000.52600.55700.60000.245300.2437400 | LIFT BLOCK WORK | 3d | 2026-05-16 | 2026-05-18 | 6645SS |  | RGA -FINISHING | 8871554 |
| 6654 | 40100.40200.41000.52600.55700.60000.245300.2437500 | LIFT DADO WORK | 10d | 2026-08-15 | 2026-08-24 | 6646SS |  | RGA -FINISHING | 8871564 |
| 6655 | 40100.40200.41000.52600.55700.60000.245300.2437600 | LOBBY FLOORING WORK | 10d | 2026-08-25 | 2026-09-03 | 6654 |  | RGA -FINISHING | 8871574 |
| 6656 | 40100.40200.41000.52600.55700.60000.245300.2437700 | ELECTRICAL WIRING & SWITCH PLATE FIXING WORK | 6d | 2026-09-04 | 2026-09-09 | 6655 |  | RGA -FINISHING | 8871584 |
| 6657 | 40100.40200.41000.52600.55700.60000.245300.2437800 | False ceiling & 1ST COAT PAINTING | 15d | 2026-09-10 | 2026-09-24 | 6656 |  | RGA -FINISHING | 8871594 |
| 6658 | 40100.40200.41000.52600.55700.60000.245300.2437900 | CLEANING | 3d | 2026-09-25 | 2026-09-27 | 6657 |  | RGA -FINISHING | 8871604 |
| 6659 | 40100.40200.41000.52600.55700.60000.245400 | **7th FLOOR** | 250d | 2026-01-21 | 2026-09-27 |  | start no earlier than 2026-01-21 | RGA -FINISHING | 8866264 |
| 6660 | 40100.40200.41000.52600.55700.60000.245400.2438000 | FIRE FIGHTING | 10d | 2026-01-21 | 2026-01-30 | 6358FS-5d |  | RGA -FINISHING | 8871614 |
| 6661 | 40100.40200.41000.52600.55700.60000.245400.2438100 | LIFT BLOCK WORK | 3d | 2026-05-16 | 2026-05-18 | 6653SS |  | RGA -FINISHING | 8871624 |
| 6662 | 40100.40200.41000.52600.55700.60000.245400.2438200 | LIFT DADO WORK | 10d | 2026-08-15 | 2026-08-24 | 6654SS |  | RGA -FINISHING | 8871634 |
| 6663 | 40100.40200.41000.52600.55700.60000.245400.2438300 | LOBBY FLOORING WORK | 10d | 2026-08-25 | 2026-09-03 | 6662 |  | RGA -FINISHING | 8871644 |
| 6664 | 40100.40200.41000.52600.55700.60000.245400.2438400 | ELECTRICAL WIRING & SWITCH PLATE FIXING WORK | 6d | 2026-09-04 | 2026-09-09 | 6663 |  | RGA -FINISHING | 8871654 |
| 6665 | 40100.40200.41000.52600.55700.60000.245400.2438500 | False ceiling & 1ST COAT PAINTING | 15d | 2026-09-10 | 2026-09-24 | 6664 |  | RGA -FINISHING | 8871664 |
| 6666 | 40100.40200.41000.52600.55700.60000.245400.2438600 | CLEANING | 3d | 2026-09-25 | 2026-09-27 | 6665 |  | RGA -FINISHING | 8871674 |

Notes:
- 6644: Assumed
- 6652: Assumed
- 6660: Assumed

| ID | WBS | Task | Duration | Start | Finish | Predecessors | Constraint | Calendar | Unique_Task_ID |
| --- | --- | --- | --- | --- | --- | --- | --- | --- | --- |
| 6667 | 40100.40200.41000.52600.55700.60000.245500 | **8th FLOOR** | 293d | 2025-12-19 | 2026-10-07 |  | start no earlier than 2025-12-19 | RGA -FINISHING | 8866274 |
| 6668 | 40100.40200.41000.52600.55700.60000.245500.2438700 | FIRE FIGHTING | 10d | 2025-12-19 | 2025-12-28 | 6371FS-5d |  | RGA -FINISHING | 8871684 |
| 6669 | 40100.40200.41000.52600.55700.60000.245500.2438800 | LIFT BLOCK WORK | 3d | 2026-05-19 | 2026-05-21 | 6661 |  | RGA -FINISHING | 8871694 |
| 6670 | 40100.40200.41000.52600.55700.60000.245500.2438900 | LIFT DADO WORK | 10d | 2026-08-25 | 2026-09-03 | 6662 |  | RGA -FINISHING | 8871704 |
| 6671 | 40100.40200.41000.52600.55700.60000.245500.2439000 | LOBBY FLOORING WORK | 10d | 2026-09-04 | 2026-09-13 | 6670 |  | RGA -FINISHING | 8871714 |
| 6672 | 40100.40200.41000.52600.55700.60000.245500.2439100 | ELECTRICAL WIRING & SWITCH PLATE FIXING WORK | 6d | 2026-09-14 | 2026-09-19 | 6671 |  | RGA -FINISHING | 8871724 |
| 6673 | 40100.40200.41000.52600.55700.60000.245500.2439200 | False ceiling & 1ST COAT PAINTING | 15d | 2026-09-20 | 2026-10-04 | 6672 |  | RGA -FINISHING | 8871734 |
| 6674 | 40100.40200.41000.52600.55700.60000.245500.2439300 | CLEANING | 3d | 2026-10-05 | 2026-10-07 | 6673 |  | RGA -FINISHING | 8871744 |
| 6675 | 40100.40200.41000.52600.55700.60000.245600 | **9th FLOOR** | 284d | 2025-12-28 | 2026-10-07 |  | start no earlier than 2025-12-28 | RGA -FINISHING | 8866284 |
| 6676 | 40100.40200.41000.52600.55700.60000.245600.2439400 | FIRE FIGHTING | 10d | 2025-12-28 | 2026-01-06 | 6384FS-5d |  | RGA -FINISHING | 8871754 |
| 6677 | 40100.40200.41000.52600.55700.60000.245600.2439500 | LIFT BLOCK WORK | 3d | 2026-05-19 | 2026-05-21 | 6669SS |  | RGA -FINISHING | 8871764 |
| 6678 | 40100.40200.41000.52600.55700.60000.245600.2439600 | LIFT DADO WORK | 10d | 2026-08-25 | 2026-09-03 | 6670SS |  | RGA -FINISHING | 8871774 |
| 6679 | 40100.40200.41000.52600.55700.60000.245600.2439700 | LOBBY FLOORING WORK | 10d | 2026-09-04 | 2026-09-13 | 6678 |  | RGA -FINISHING | 8871784 |
| 6680 | 40100.40200.41000.52600.55700.60000.245600.2439800 | ELECTRICAL WIRING & SWITCH PLATE FIXING WORK | 6d | 2026-09-14 | 2026-09-19 | 6679 |  | RGA -FINISHING | 8871794 |
| 6681 | 40100.40200.41000.52600.55700.60000.245600.2439900 | False ceiling & 1ST COAT PAINTING | 15d | 2026-09-20 | 2026-10-04 | 6680 |  | RGA -FINISHING | 8871804 |
| 6682 | 40100.40200.41000.52600.55700.60000.245600.2440000 | CLEANING | 3d | 2026-10-05 | 2026-10-07 | 6681 |  | RGA -FINISHING | 8871814 |
| 6683 | 40100.40200.41000.52600.55700.60000.245700 | **10th FLOOR** | 275d | 2026-01-06 | 2026-10-07 |  | start no earlier than 2026-01-06 | RGA -FINISHING | 8866294 |
| 6684 | 40100.40200.41000.52600.55700.60000.245700.2440100 | FIRE FIGHTING | 10d | 2026-01-06 | 2026-01-15 | 6397FS-5d |  | RGA -FINISHING | 8871824 |
| 6685 | 40100.40200.41000.52600.55700.60000.245700.2440200 | LIFT BLOCK WORK | 3d | 2026-05-19 | 2026-05-21 | 6677SS |  | RGA -FINISHING | 8871834 |
| 6686 | 40100.40200.41000.52600.55700.60000.245700.2440300 | LIFT DADO WORK | 10d | 2026-08-25 | 2026-09-03 | 6678SS |  | RGA -FINISHING | 8871844 |
| 6687 | 40100.40200.41000.52600.55700.60000.245700.2440400 | LOBBY FLOORING WORK | 10d | 2026-09-04 | 2026-09-13 | 6686 |  | RGA -FINISHING | 8871854 |
| 6688 | 40100.40200.41000.52600.55700.60000.245700.2440500 | ELECTRICAL WIRING & SWITCH PLATE FIXING WORK | 6d | 2026-09-14 | 2026-09-19 | 6687 |  | RGA -FINISHING | 8871864 |
| 6689 | 40100.40200.41000.52600.55700.60000.245700.2440600 | False ceiling & 1ST COAT PAINTING | 15d | 2026-09-20 | 2026-10-04 | 6688 |  | RGA -FINISHING | 8871874 |
| 6690 | 40100.40200.41000.52600.55700.60000.245700.2440700 | CLEANING | 3d | 2026-10-05 | 2026-10-07 | 6689 |  | RGA -FINISHING | 8871884 |

Notes:
- 6668: Assumed
- 6676: Assumed
- 6684: Assumed

| ID | WBS | Task | Duration | Start | Finish | Predecessors | Constraint | Calendar | Unique_Task_ID |
| --- | --- | --- | --- | --- | --- | --- | --- | --- | --- |
| 6691 | 40100.40200.41000.52600.55700.60000.245800 | **11th FLOOR** | 266d | 2026-01-15 | 2026-10-07 |  | start no earlier than 2026-01-15 | RGA -FINISHING | 8866304 |
| 6692 | 40100.40200.41000.52600.55700.60000.245800.2440800 | FIRE FIGHTING | 10d | 2026-01-15 | 2026-01-24 | 6410FS-5d |  | RGA -FINISHING | 8871894 |
| 6693 | 40100.40200.41000.52600.55700.60000.245800.2440900 | LIFT BLOCK WORK | 3d | 2026-05-19 | 2026-05-21 | 6685SS |  | RGA -FINISHING | 8871904 |
| 6694 | 40100.40200.41000.52600.55700.60000.245800.2441000 | LIFT DADO WORK | 10d | 2026-08-25 | 2026-09-03 | 6686SS |  | RGA -FINISHING | 8871914 |
| 6695 | 40100.40200.41000.52600.55700.60000.245800.2441100 | LOBBY FLOORING WORK | 10d | 2026-09-04 | 2026-09-13 | 6694 |  | RGA -FINISHING | 8871924 |
| 6696 | 40100.40200.41000.52600.55700.60000.245800.2441200 | ELECTRICAL WIRING & SWITCH PLATE FIXING WORK | 6d | 2026-09-14 | 2026-09-19 | 6695 |  | RGA -FINISHING | 8871934 |
| 6697 | 40100.40200.41000.52600.55700.60000.245800.2441300 | False ceiling & 1ST COAT PAINTING | 15d | 2026-09-20 | 2026-10-04 | 6696 |  | RGA -FINISHING | 8871944 |
| 6698 | 40100.40200.41000.52600.55700.60000.245800.2441400 | CLEANING | 3d | 2026-10-05 | 2026-10-07 | 6697 |  | RGA -FINISHING | 8871954 |
| 6699 | 40100.40200.41000.52600.55700.60000.245900 | **12th FLOOR** | 267d | 2026-01-24 | 2026-10-17 |  | start no earlier than 2026-01-24 | RGA -FINISHING | 8866314 |
| 6700 | 40100.40200.41000.52600.55700.60000.245900.2441500 | FIRE FIGHTING | 10d | 2026-01-24 | 2026-02-02 | 6423FS-5d |  | RGA -FINISHING | 8871964 |
| 6701 | 40100.40200.41000.52600.55700.60000.245900.2441600 | LIFT BLOCK WORK | 3d | 2026-05-22 | 2026-05-24 | 6693 |  | RGA -FINISHING | 8871974 |
| 6702 | 40100.40200.41000.52600.55700.60000.245900.2441700 | LIFT DADO WORK | 10d | 2026-09-04 | 2026-09-13 | 6694 |  | RGA -FINISHING | 8871984 |
| 6703 | 40100.40200.41000.52600.55700.60000.245900.2441800 | LOBBY FLOORING WORK | 10d | 2026-09-14 | 2026-09-23 | 6702 |  | RGA -FINISHING | 8871994 |
| 6704 | 40100.40200.41000.52600.55700.60000.245900.2441900 | ELECTRICAL WIRING & SWITCH PLATE FIXING WORK | 6d | 2026-09-24 | 2026-09-29 | 6703 |  | RGA -FINISHING | 8872004 |
| 6705 | 40100.40200.41000.52600.55700.60000.245900.2442000 | False ceiling & 1ST COAT PAINTING | 15d | 2026-09-30 | 2026-10-14 | 6704 |  | RGA -FINISHING | 8872014 |
| 6706 | 40100.40200.41000.52600.55700.60000.245900.2442100 | CLEANING | 3d | 2026-10-15 | 2026-10-17 | 6705 |  | RGA -FINISHING | 8872024 |
| 6707 | 40100.40200.41000.52600.55700.60000.246000 | **13th FLOOR** | 256d | 2026-02-04 | 2026-10-17 |  | start no earlier than 2026-02-04 | RGA -FINISHING | 8866324 |
| 6708 | 40100.40200.41000.52600.55700.60000.246000.2442200 | FIRE FIGHTING | 10d | 2026-02-04 | 2026-02-13 | 6436FS-5d |  | RGA -FINISHING | 8872034 |
| 6709 | 40100.40200.41000.52600.55700.60000.246000.2442300 | LIFT BLOCK WORK | 3d | 2026-05-22 | 2026-05-24 | 6701SS |  | RGA -FINISHING | 8872044 |
| 6710 | 40100.40200.41000.52600.55700.60000.246000.2442400 | LIFT DADO WORK | 10d | 2026-09-04 | 2026-09-13 | 6702SS |  | RGA -FINISHING | 8872054 |
| 6711 | 40100.40200.41000.52600.55700.60000.246000.2442500 | LOBBY FLOORING WORK | 10d | 2026-09-14 | 2026-09-23 | 6710 |  | RGA -FINISHING | 8872064 |
| 6712 | 40100.40200.41000.52600.55700.60000.246000.2442600 | ELECTRICAL WIRING & SWITCH PLATE FIXING WORK | 6d | 2026-09-24 | 2026-09-29 | 6711 |  | RGA -FINISHING | 8872074 |
| 6713 | 40100.40200.41000.52600.55700.60000.246000.2442700 | False ceiling & 1ST COAT PAINTING | 15d | 2026-09-30 | 2026-10-14 | 6712 |  | RGA -FINISHING | 8872084 |
| 6714 | 40100.40200.41000.52600.55700.60000.246000.2442800 | CLEANING | 3d | 2026-10-15 | 2026-10-17 | 6713 |  | RGA -FINISHING | 8872094 |

Notes:
- 6692: Assumed
- 6700: Assumed
- 6708: Assumed

| ID | WBS | Task | Duration | Start | Finish | Predecessors | Constraint | Calendar | Unique_Task_ID |
| --- | --- | --- | --- | --- | --- | --- | --- | --- | --- |
| 6715 | 40100.40200.41000.52600.55700.60000.246100 | **14th FLOOR** | 246d | 2026-02-14 | 2026-10-17 |  | start no earlier than 2026-02-14 | RGA -FINISHING | 8866334 |
| 6716 | 40100.40200.41000.52600.55700.60000.246100.2442900 | FIRE FIGHTING | 10d | 2026-02-14 | 2026-02-23 | 6449FS-5d |  | RGA -FINISHING | 8872104 |
| 6717 | 40100.40200.41000.52600.55700.60000.246100.2443000 | LIFT BLOCK WORK | 3d | 2026-05-22 | 2026-05-24 | 6709SS |  | RGA -FINISHING | 8872114 |
| 6718 | 40100.40200.41000.52600.55700.60000.246100.2443100 | LIFT DADO WORK | 10d | 2026-09-04 | 2026-09-13 | 6710SS |  | RGA -FINISHING | 8872124 |
| 6719 | 40100.40200.41000.52600.55700.60000.246100.2443200 | LOBBY FLOORING WORK | 10d | 2026-09-14 | 2026-09-23 | 6718 |  | RGA -FINISHING | 8872134 |
| 6720 | 40100.40200.41000.52600.55700.60000.246100.2443300 | ELECTRICAL WIRING & SWITCH PLATE FIXING WORK | 6d | 2026-09-24 | 2026-09-29 | 6719 |  | RGA -FINISHING | 8872144 |
| 6721 | 40100.40200.41000.52600.55700.60000.246100.2443400 | False ceiling & 1ST COAT PAINTING | 15d | 2026-09-30 | 2026-10-14 | 6720 |  | RGA -FINISHING | 8872154 |
| 6722 | 40100.40200.41000.52600.55700.60000.246100.2443500 | CLEANING | 3d | 2026-10-15 | 2026-10-17 | 6721 |  | RGA -FINISHING | 8872164 |
| 6723 | 40100.40200.41000.52600.55700.60000.246200 | **15th FLOOR** | 237d | 2026-02-23 | 2026-10-17 |  | start no earlier than 2026-02-23 | RGA -FINISHING | 8866344 |
| 6724 | 40100.40200.41000.52600.55700.60000.246200.2443600 | FIRE FIGHTING | 10d | 2026-02-23 | 2026-03-04 | 6462FS-5d |  | RGA -FINISHING | 8872174 |
| 6725 | 40100.40200.41000.52600.55700.60000.246200.2443700 | LIFT BLOCK WORK | 3d | 2026-05-22 | 2026-05-24 | 6717SS |  | RGA -FINISHING | 8872184 |
| 6726 | 40100.40200.41000.52600.55700.60000.246200.2443800 | LIFT DADO WORK | 10d | 2026-09-04 | 2026-09-13 | 6718SS |  | RGA -FINISHING | 8872194 |
| 6727 | 40100.40200.41000.52600.55700.60000.246200.2443900 | LOBBY FLOORING WORK | 10d | 2026-09-14 | 2026-09-23 | 6726 |  | RGA -FINISHING | 8872204 |
| 6728 | 40100.40200.41000.52600.55700.60000.246200.2444000 | ELECTRICAL WIRING & SWITCH PLATE FIXING WORK | 6d | 2026-09-24 | 2026-09-29 | 6727 |  | RGA -FINISHING | 8872214 |
| 6729 | 40100.40200.41000.52600.55700.60000.246200.2444100 | False ceiling & 1ST COAT PAINTING | 15d | 2026-09-30 | 2026-10-14 | 6728 |  | RGA -FINISHING | 8872224 |
| 6730 | 40100.40200.41000.52600.55700.60000.246200.2444200 | CLEANING | 3d | 2026-10-15 | 2026-10-17 | 6729 |  | RGA -FINISHING | 8872234 |
| 6731 | 40100.40200.41000.52600.55700.60000.246300 | **16th FLOOR** | 239d | 2026-03-03 | 2026-10-27 |  | start no earlier than 2026-03-03 | RGA -FINISHING | 8866354 |
| 6732 | 40100.40200.41000.52600.55700.60000.246300.2444300 | FIRE FIGHTING | 10d | 2026-03-03 | 2026-03-12 | 6475FS-5d |  | RGA -FINISHING | 8872244 |
| 6733 | 40100.40200.41000.52600.55700.60000.246300.2444400 | LIFT BLOCK WORK | 3d | 2026-05-25 | 2026-05-27 | 6725 |  | RGA -FINISHING | 8872254 |
| 6734 | 40100.40200.41000.52600.55700.60000.246300.2444500 | LIFT DADO WORK | 10d | 2026-09-14 | 2026-09-23 | 6726 |  | RGA -FINISHING | 8872264 |
| 6735 | 40100.40200.41000.52600.55700.60000.246300.2444600 | LOBBY FLOORING WORK | 10d | 2026-09-24 | 2026-10-03 | 6734 |  | RGA -FINISHING | 8872274 |
| 6736 | 40100.40200.41000.52600.55700.60000.246300.2444700 | ELECTRICAL WIRING & SWITCH PLATE FIXING WORK | 6d | 2026-10-04 | 2026-10-09 | 6735 |  | RGA -FINISHING | 8872284 |
| 6737 | 40100.40200.41000.52600.55700.60000.246300.2444800 | False ceiling & 1ST COAT PAINTING | 15d | 2026-10-10 | 2026-10-24 | 6736 |  | RGA -FINISHING | 8872294 |
| 6738 | 40100.40200.41000.52600.55700.60000.246300.2444900 | CLEANING | 3d | 2026-10-25 | 2026-10-27 | 6737 |  | RGA -FINISHING | 8872304 |

Notes:
- 6716: Assumed
- 6724: Assumed
- 6732: Assumed

| ID | WBS | Task | Duration | Start | Finish | Predecessors | Constraint | Calendar | Unique_Task_ID |
| --- | --- | --- | --- | --- | --- | --- | --- | --- | --- |
| 6739 | 40100.40200.41000.52600.55700.60000.246400 | **17th FLOOR** | 227d | 2026-03-15 | 2026-10-27 |  | start no earlier than 2026-03-15 | RGA -FINISHING | 8866364 |
| 6740 | 40100.40200.41000.52600.55700.60000.246400.2445000 | FIRE FIGHTING | 10d | 2026-03-15 | 2026-03-24 | 6488FS-5d |  | RGA -FINISHING | 8872314 |
| 6741 | 40100.40200.41000.52600.55700.60000.246400.2445100 | LIFT BLOCK WORK | 3d | 2026-05-25 | 2026-05-27 | 6733SS |  | RGA -FINISHING | 8872324 |
| 6742 | 40100.40200.41000.52600.55700.60000.246400.2445200 | LIFT DADO WORK | 10d | 2026-09-14 | 2026-09-23 | 6734SS |  | RGA -FINISHING | 8872334 |
| 6743 | 40100.40200.41000.52600.55700.60000.246400.2445300 | LOBBY FLOORING WORK | 10d | 2026-09-24 | 2026-10-03 | 6742 |  | RGA -FINISHING | 8872344 |
| 6744 | 40100.40200.41000.52600.55700.60000.246400.2445400 | ELECTRICAL WIRING & SWITCH PLATE FIXING WORK | 6d | 2026-10-04 | 2026-10-09 | 6743 |  | RGA -FINISHING | 8872354 |
| 6745 | 40100.40200.41000.52600.55700.60000.246400.2445500 | False ceiling & 1ST COAT PAINTING | 15d | 2026-10-10 | 2026-10-24 | 6744 |  | RGA -FINISHING | 8872364 |
| 6746 | 40100.40200.41000.52600.55700.60000.246400.2445600 | CLEANING | 3d | 2026-10-25 | 2026-10-27 | 6745 |  | RGA -FINISHING | 8872374 |
| 6747 | 40100.40200.41000.52600.55700.60000.246500 | **18th FLOOR** | 219d | 2026-03-23 | 2026-10-27 |  | start no earlier than 2026-03-23 | RGA -FINISHING | 8866374 |
| 6748 | 40100.40200.41000.52600.55700.60000.246500.2445700 | FIRE FIGHTING | 10d | 2026-03-23 | 2026-04-01 | 6501FS-5d |  | RGA -FINISHING | 8872384 |
| 6749 | 40100.40200.41000.52600.55700.60000.246500.2445800 | LIFT BLOCK WORK | 3d | 2026-05-25 | 2026-05-27 | 6741SS |  | RGA -FINISHING | 8872394 |
| 6750 | 40100.40200.41000.52600.55700.60000.246500.2445900 | LIFT DADO WORK | 10d | 2026-09-14 | 2026-09-23 | 6742SS |  | RGA -FINISHING | 8872404 |
| 6751 | 40100.40200.41000.52600.55700.60000.246500.2446000 | LOBBY FLOORING WORK | 10d | 2026-09-24 | 2026-10-03 | 6750 |  | RGA -FINISHING | 8872414 |
| 6752 | 40100.40200.41000.52600.55700.60000.246500.2446100 | ELECTRICAL WIRING & SWITCH PLATE FIXING WORK | 6d | 2026-10-04 | 2026-10-09 | 6751 |  | RGA -FINISHING | 8872424 |
| 6753 | 40100.40200.41000.52600.55700.60000.246500.2446200 | False ceiling & 1ST COAT PAINTING | 15d | 2026-10-10 | 2026-10-24 | 6752 |  | RGA -FINISHING | 8872434 |
| 6754 | 40100.40200.41000.52600.55700.60000.246500.2446300 | CLEANING | 3d | 2026-10-25 | 2026-10-27 | 6753 |  | RGA -FINISHING | 8872444 |
| 6755 | 40100.40200.41000.52600.55700.60000.246600 | **19th FLOOR** | 221d | 2026-03-31 | 2026-11-06 |  | start no earlier than 2026-03-31 | RGA -FINISHING | 8866384 |
| 6756 | 40100.40200.41000.52600.55700.60000.246600.2446400 | FIRE FIGHTING | 10d | 2026-03-31 | 2026-04-09 | 6514FS-5d |  | RGA -FINISHING | 8872454 |
| 6757 | 40100.40200.41000.52600.55700.60000.246600.2446500 | LIFT BLOCK WORK | 3d | 2026-05-28 | 2026-05-30 | 6749 |  | RGA -FINISHING | 8872464 |
| 6758 | 40100.40200.41000.52600.55700.60000.246600.2446600 | LIFT DADO WORK | 10d | 2026-09-24 | 2026-10-03 | 6750 |  | RGA -FINISHING | 8872474 |
| 6759 | 40100.40200.41000.52600.55700.60000.246600.2446700 | LOBBY FLOORING WORK | 10d | 2026-10-04 | 2026-10-13 | 6758 |  | RGA -FINISHING | 8872484 |
| 6760 | 40100.40200.41000.52600.55700.60000.246600.2446800 | ELECTRICAL WIRING & SWITCH PLATE FIXING WORK | 6d | 2026-10-14 | 2026-10-19 | 6759 |  | RGA -FINISHING | 8872494 |
| 6761 | 40100.40200.41000.52600.55700.60000.246600.2446900 | False ceiling & 1ST COAT PAINTING | 15d | 2026-10-20 | 2026-11-03 | 6760 |  | RGA -FINISHING | 8872504 |
| 6762 | 40100.40200.41000.52600.55700.60000.246600.2447000 | CLEANING | 3d | 2026-11-04 | 2026-11-06 | 6761 |  | RGA -FINISHING | 8872514 |

Notes:
- 6740: Assumed
- 6748: Assumed
- 6756: Assumed

| ID | WBS | Task | Duration | Start | Finish | Predecessors | Constraint | Calendar | Unique_Task_ID |
| --- | --- | --- | --- | --- | --- | --- | --- | --- | --- |
| 6763 | 40100.40200.41000.52600.55700.60000.246700 | **20th FLOOR** | 213d | 2026-04-08 | 2026-11-06 |  | start no earlier than 2026-04-08 | RGA -FINISHING | 8866394 |
| 6764 | 40100.40200.41000.52600.55700.60000.246700.2447100 | FIRE FIGHTING | 10d | 2026-04-08 | 2026-04-17 | 6527FS-5d |  | RGA -FINISHING | 8872524 |
| 6765 | 40100.40200.41000.52600.55700.60000.246700.2447200 | LIFT BLOCK WORK | 3d | 2026-05-28 | 2026-05-30 | 6757SS |  | RGA -FINISHING | 8872534 |
| 6766 | 40100.40200.41000.52600.55700.60000.246700.2447300 | LIFT DADO WORK | 10d | 2026-09-24 | 2026-10-03 | 6758SS |  | RGA -FINISHING | 8872544 |
| 6767 | 40100.40200.41000.52600.55700.60000.246700.2447400 | LOBBY FLOORING WORK | 10d | 2026-10-04 | 2026-10-13 | 6766 |  | RGA -FINISHING | 8872554 |
| 6768 | 40100.40200.41000.52600.55700.60000.246700.2447500 | ELECTRICAL WIRING & SWITCH PLATE FIXING WORK | 6d | 2026-10-14 | 2026-10-19 | 6767 |  | RGA -FINISHING | 8872564 |
| 6769 | 40100.40200.41000.52600.55700.60000.246700.2447600 | False ceiling & 1ST COAT PAINTING | 15d | 2026-10-20 | 2026-11-03 | 6768 |  | RGA -FINISHING | 8872574 |
| 6770 | 40100.40200.41000.52600.55700.60000.246700.2447700 | CLEANING | 3d | 2026-11-04 | 2026-11-06 | 6769 |  | RGA -FINISHING | 8872584 |
| 6771 | 40100.40200.41000.52600.55700.60000.246800 | **21th FLOOR** | 215d | 2026-04-16 | 2026-11-16 |  | start no earlier than 2026-04-16 | RGA -FINISHING | 8866404 |
| 6772 | 40100.40200.41000.52600.55700.60000.246800.2447800 | FIRE FIGHTING | 10d | 2026-04-16 | 2026-04-25 | 6540FS-5d |  | RGA -FINISHING | 8872594 |
| 6773 | 40100.40200.41000.52600.55700.60000.246800.2447900 | LIFT BLOCK WORK | 3d | 2026-05-31 | 2026-06-02 | 6765 |  | RGA -FINISHING | 8872604 |
| 6774 | 40100.40200.41000.52600.55700.60000.246800.2448000 | LIFT DADO WORK | 10d | 2026-10-04 | 2026-10-13 | 6766 |  | RGA -FINISHING | 8872614 |
| 6775 | 40100.40200.41000.52600.55700.60000.246800.2448100 | LOBBY FLOORING WORK | 10d | 2026-10-14 | 2026-10-23 | 6774 |  | RGA -FINISHING | 8872624 |
| 6776 | 40100.40200.41000.52600.55700.60000.246800.2448200 | ELECTRICAL WIRING & SWITCH PLATE FIXING WORK | 6d | 2026-10-24 | 2026-10-29 | 6775 |  | RGA -FINISHING | 8872634 |
| 6777 | 40100.40200.41000.52600.55700.60000.246800.2448300 | False ceiling & 1ST COAT PAINTING | 15d | 2026-10-30 | 2026-11-13 | 6776 |  | RGA -FINISHING | 8872644 |
| 6778 | 40100.40200.41000.52600.55700.60000.246800.2448400 | CLEANING | 3d | 2026-11-14 | 2026-11-16 | 6777 |  | RGA -FINISHING | 8872654 |
| 6779 | 40100.40200.41000.52600.55700.60000.246900 | **22th FLOOR** | 207d | 2026-04-24 | 2026-11-16 |  | start no earlier than 2026-04-24 | RGA -FINISHING | 8866414 |
| 6780 | 40100.40200.41000.52600.55700.60000.246900.2448500 | FIRE FIGHTING | 10d | 2026-04-24 | 2026-05-03 | 6553FS-5d |  | RGA -FINISHING | 8872664 |
| 6781 | 40100.40200.41000.52600.55700.60000.246900.2448600 | LIFT BLOCK WORK | 3d | 2026-05-31 | 2026-06-02 | 6773SS |  | RGA -FINISHING | 8872674 |
| 6782 | 40100.40200.41000.52600.55700.60000.246900.2448700 | LIFT DADO WORK | 10d | 2026-10-04 | 2026-10-13 | 6774SS |  | RGA -FINISHING | 8872684 |
| 6783 | 40100.40200.41000.52600.55700.60000.246900.2448800 | LOBBY FLOORING WORK | 10d | 2026-10-14 | 2026-10-23 | 6782 |  | RGA -FINISHING | 8872694 |
| 6784 | 40100.40200.41000.52600.55700.60000.246900.2448900 | ELECTRICAL WIRING & SWITCH PLATE FIXING WORK | 6d | 2026-10-24 | 2026-10-29 | 6783 |  | RGA -FINISHING | 8872704 |
| 6785 | 40100.40200.41000.52600.55700.60000.246900.2449000 | False ceiling & 1ST COAT PAINTING | 15d | 2026-10-30 | 2026-11-13 | 6784 |  | RGA -FINISHING | 8872714 |
| 6786 | 40100.40200.41000.52600.55700.60000.246900.2449100 | CLEANING | 3d | 2026-11-14 | 2026-11-16 | 6785 |  | RGA -FINISHING | 8872724 |

Notes:
- 6764: Assumed
- 6772: Assumed
- 6780: Assumed

| ID | WBS | Task | Duration | Start | Finish | Predecessors | Constraint | Calendar | Unique_Task_ID |
| --- | --- | --- | --- | --- | --- | --- | --- | --- | --- |
| 6787 | 40100.40200.41000.52600.55700.60000.247000 | **23th FLOOR** | 198d | 2026-05-03 | 2026-11-16 |  | start no earlier than 2026-05-03 | RGA -FINISHING | 8866424 |
| 6788 | 40100.40200.41000.52600.55700.60000.247000.2449200 | FIRE FIGHTING | 10d | 2026-05-03 | 2026-05-12 | 6566FS-5d |  | RGA -FINISHING | 8872734 |
| 6789 | 40100.40200.41000.52600.55700.60000.247000.2449300 | LIFT BLOCK WORK | 3d | 2026-05-31 | 2026-06-02 | 6781SS |  | RGA -FINISHING | 8872744 |
| 6790 | 40100.40200.41000.52600.55700.60000.247000.2449400 | LIFT DADO WORK | 10d | 2026-10-04 | 2026-10-13 | 6782SS |  | RGA -FINISHING | 8872754 |
| 6791 | 40100.40200.41000.52600.55700.60000.247000.2449500 | LOBBY FLOORING WORK | 10d | 2026-10-14 | 2026-10-23 | 6790 |  | RGA -FINISHING | 8872764 |
| 6792 | 40100.40200.41000.52600.55700.60000.247000.2449600 | ELECTRICAL WIRING & SWITCH PLATE FIXING WORK | 6d | 2026-10-24 | 2026-10-29 | 6791 |  | RGA -FINISHING | 8872774 |
| 6793 | 40100.40200.41000.52600.55700.60000.247000.2449700 | False ceiling & 1ST COAT PAINTING | 15d | 2026-10-30 | 2026-11-13 | 6792 |  | RGA -FINISHING | 8872784 |
| 6794 | 40100.40200.41000.52600.55700.60000.247000.2449800 | CLEANING | 3d | 2026-11-14 | 2026-11-16 | 6793 |  | RGA -FINISHING | 8872794 |
| 6795 | 40100.40200.41000.52600.55700.60000.247100 | **24th FLOOR** | 189d | 2026-05-12 | 2026-11-16 |  | start no earlier than 2026-05-12 | RGA -FINISHING | 8866434 |
| 6796 | 40100.40200.41000.52600.55700.60000.247100.2449900 | FIRE FIGHTING | 10d | 2026-05-12 | 2026-05-21 | 6579FS-5d |  | RGA -FINISHING | 8872804 |
| 6797 | 40100.40200.41000.52600.55700.60000.247100.2450000 | LIFT BLOCK WORK | 3d | 2026-05-31 | 2026-06-02 | 6789SS |  | RGA -FINISHING | 8872814 |
| 6798 | 40100.40200.41000.52600.55700.60000.247100.2450100 | LIFT DADO WORK | 10d | 2026-10-04 | 2026-10-13 | 6790SS |  | RGA -FINISHING | 8872824 |
| 6799 | 40100.40200.41000.52600.55700.60000.247100.2450200 | LOBBY FLOORING WORK | 10d | 2026-10-14 | 2026-10-23 | 6798 |  | RGA -FINISHING | 8872834 |
| 6800 | 40100.40200.41000.52600.55700.60000.247100.2450300 | ELECTRICAL WIRING & SWITCH PLATE FIXING WORK | 6d | 2026-10-24 | 2026-10-29 | 6799 |  | RGA -FINISHING | 8872844 |
| 6801 | 40100.40200.41000.52600.55700.60000.247100.2450400 | False ceiling & 1ST COAT PAINTING | 15d | 2026-10-30 | 2026-11-13 | 6800 |  | RGA -FINISHING | 8872854 |
| 6802 | 40100.40200.41000.52600.55700.60000.247100.2450500 | CLEANING | 3d | 2026-11-14 | 2026-11-16 | 6801 |  | RGA -FINISHING | 8872864 |
| 6803 | 40100.40200.41000.52600.55700.60000.247200 | **25th FLOOR** | 205d | 2026-05-21 | 2026-12-11 |  | start no earlier than 2026-05-21 | RGA -FINISHING | 8866444 |
| 6804 | 40100.40200.41000.52600.55700.60000.247200.2450600 | FIRE FIGHTING | 10d | 2026-05-21 | 2026-05-30 | 6592FS-5d |  | RGA -FINISHING | 8872874 |
| 6805 | 40100.40200.41000.52600.55700.60000.247200.2450700 | LIFT BLOCK WORK | 3d | 2026-06-03 | 2026-06-05 | 6797 |  | RGA -FINISHING | 8872884 |
| 6806 | 40100.40200.41000.52600.55700.60000.247200.2450800 | LIFT DADO WORK | 10d | 2026-10-14 | 2026-10-23 | 6798 |  | RGA -FINISHING | 8872894 |
| 6807 | 40100.40200.41000.52600.55700.60000.247200.2450900 | LOBBY FLOORING WORK | 10d | 2026-11-08 | 2026-11-17 | 6806FS+15d |  | RGA -FINISHING | 8872904 |
| 6808 | 40100.40200.41000.52600.55700.60000.247200.2451000 | ELECTRICAL WIRING & SWITCH PLATE FIXING WORK | 6d | 2026-11-18 | 2026-11-23 | 6807 |  | RGA -FINISHING | 8872914 |
| 6809 | 40100.40200.41000.52600.55700.60000.247200.2451100 | False ceiling & 1ST COAT PAINTING | 15d | 2026-11-24 | 2026-12-08 | 6808 |  | RGA -FINISHING | 8872924 |
| 6810 | 40100.40200.41000.52600.55700.60000.247200.2451200 | CLEANING | 3d | 2026-12-09 | 2026-12-11 | 6809 |  | RGA -FINISHING | 8872934 |

Notes:
- 6788: Assumed
- 6796: Assumed
- 6804: Assumed

| ID | WBS | Task | Duration | Start | Finish | Predecessors | Constraint | Calendar | Unique_Task_ID |
| --- | --- | --- | --- | --- | --- | --- | --- | --- | --- |
| 6811 | 40100.40200.41000.52600.55700.160700 | **Common MEP Works** | 373.5d | 2026-04-11 | 2027-04-19 |  | start no earlier than 2026-04-11 | RGA -FINISHING | 8866154 |
| 6812 | 40100.40200.41000.52600.55700.160700.489700 | **Lift Works** | 141d | 2026-05-10 | 2026-09-27 |  | start no earlier than 2026-05-10 | RGA -FINISHING | 8867154 |
| 6813 | 40100.40200.41000.52600.55700.160700.489700.2451300 | Lift Shaft Handover | 30d | 2026-05-10 | 2026-06-08 | 6059 |  | RGA -FINISHING | 8872944 |
| 6814 | 40100.40200.41000.52600.55700.160700.489700.2451400 | Lift installation work | 110d | 2026-06-10 | 2026-09-27 | 6813FS+1d |  | RGA -FINISHING | 8872954 |
| 6815 | 40100.40200.41000.52600.55700.160700.489800 | **Plumbing works** | 127d | 2026-12-13 | 2027-04-19 |  | start no earlier than 2026-12-13 | RGA -FINISHING | 8867144 |
| 6816 | 40100.40200.41000.52600.55700.160700.489800.2451500 | Shaft Plumbing | 90d | 2026-12-13 | 2027-03-13 | 6262 |  | RGA -FINISHING | 8872964 |
| 6817 | 40100.40200.41000.52600.55700.160700.489800.2451600 | Terrace Looping | 90d | 2027-01-19 | 2027-04-19 | 6260 |  | RGA -FINISHING | 8872974 |
| 6818 | 40100.40200.41000.52600.55700.160700.489900 | **Fire Fighting works** | 76d | 2026-04-11 | 2026-06-25 |  | start no earlier than 2026-04-11 | RGA -FINISHING | 8867134 |
| 6819 | 40100.40200.41000.52600.55700.160700.489900.2451700 | Shaft Downtake works | 60d | 2026-04-11 | 2026-06-09 | 6064FF+21d |  | RGA -FINISHING | 8872984 |
| 6820 | 40100.40200.41000.52600.55700.160700.489900.2451800 | Connection to pump room | 15d | 2026-06-11 | 2026-06-25 | 6819FS+1d |  | RGA -FINISHING | 8872994 |
| 6821 | 40100.40200.41000.52600.55700.160700.339200 | **Electrical works** | 240d | 2026-06-04 | 2027-01-29 |  | start no earlier than 2026-06-04 | RGA -FINISHING | 8866734 |
| 6822 | 40100.40200.41000.52600.55700.160700.339200.2451900 | Shaft cabling | 45d | 2026-06-04 | 2026-07-18 | 6064FF+60d |  | RGA -FINISHING | 8873004 |
| 6823 | 40100.40200.41000.52600.55700.160700.339200.2452000 | Meter room erection | 15d | 2026-12-31 | 2027-01-14 | 5930FS+242d |  | RGA -FINISHING | 8873014 |
| 6824 | 40100.40200.41000.52600.55700.160700.339200.2452100 | Panel erection | 15d | 2027-01-15 | 2027-01-29 | 6823 |  | RGA -FINISHING | 8873024 |
| 6825 | 40100.40200.41000.52600.55700.160700.339200.2452200 | DG Installtion | 10d | 2026-10-02 | 2026-10-11 | 6823SS-90d |  | RGA -FINISHING | 8873034 |
| 6826 | 40100.40200.41000.52600.55700.160700.339200.2452300 | Transformer erection | 15d | 2026-10-02 | 2026-10-16 | 6825SS |  | RGA -FINISHING | 8873044 |
| 6827 | 40100.40200.41000.352500 | **Capex Item Procurment** | 220d | 2026-04-10 | 2026-11-15 |  | start no earlier than 2026-04-10 | RGA -FINISHING | 8866774 |
| 6828 | 40100.40200.41000.352500.563300 | Lift Procurement & delivery | 30d | 2026-04-10 | 2026-05-09 | 6813SS-30d |  | RGA -FINISHING | 8867314 |
| 6829 | 40100.40200.41000.352500.563400 | Panels | 30d | 2026-10-17 | 2026-11-15 | 6824SS-90d |  | RGA -FINISHING | 8867324 |
| 6830 | 40100.40200.41000.352500.563500 | DG procurement | 30d | 2026-07-04 | 2026-08-02 | 6825SS-90d |  | RGA -FINISHING | 8867334 |
| 6831 | 40100.40200.41000.352500.563600 | Transformer | 30d | 2026-07-04 | 2026-08-02 | 6826SS-90d |  | RGA -FINISHING | 8867344 |
| 6832 | 40100.40200.41000.44200 | **Handing Over Activities** | 56d | 2027-03-22 | 2027-05-16 |  | start no earlier than 2027-03-22 | RGA -FINISHING | 8865794 |
| 6833 | 40100.40200.41000.44200.563700 | SOAP WASHING GROUND FLOOR | 1d | 2027-03-22 | 2027-03-22 | 6810FS+100d |  | RGA -FINISHING | 8867354 |
| 6834 | 40100.40200.41000.44200.563800 | SOAP WASHING L1 | 1d | 2027-03-23 | 2027-03-23 | 6833 |  | RGA -FINISHING | 8867364 |
| 6835 | 40100.40200.41000.44200.563900 | SOAP WASHING L2 | 1d | 2027-03-24 | 2027-03-24 | 6834 |  | RGA -FINISHING | 8867374 |
| 6836 | 40100.40200.41000.44200.564000 | SOAP WASHING L3 | 1d | 2027-03-25 | 2027-03-25 | 6835 |  | RGA -FINISHING | 8867384 |
| 6837 | 40100.40200.41000.44200.564100 | SOAP WASHING L4 | 1d | 2027-03-26 | 2027-03-26 | 6836 |  | RGA -FINISHING | 8867394 |
| 6838 | 40100.40200.41000.44200.564200 | SOAP WASHING L5 | 1d | 2027-03-27 | 2027-03-27 | 6837 |  | RGA -FINISHING | 8867404 |
| 6839 | 40100.40200.41000.44200.564300 | SOAP WASHING L6 | 1d | 2027-03-28 | 2027-03-28 | 6838 |  | RGA -FINISHING | 8867414 |
| 6840 | 40100.40200.41000.44200.564400 | SOAP WASHING L7 | 1d | 2027-03-29 | 2027-03-29 | 6839 |  | RGA -FINISHING | 8867424 |
| 6841 | 40100.40200.41000.44200.564500 | SOAP WASHING L8 | 1d | 2027-03-30 | 2027-03-30 | 6840 |  | RGA -FINISHING | 8867434 |
| 6842 | 40100.40200.41000.44200.564600 | SOAP WASHING L9 | 1d | 2027-03-31 | 2027-03-31 | 6841 |  | RGA -FINISHING | 8867444 |
| 6843 | 40100.40200.41000.44200.564700 | SOAP WASHING L10 | 1d | 2027-04-01 | 2027-04-01 | 6842 |  | RGA -FINISHING | 8867454 |
| 6844 | 40100.40200.41000.44200.564800 | SOAP WASHING L11 | 1d | 2027-04-02 | 2027-04-02 | 6843 |  | RGA -FINISHING | 8867464 |
| 6845 | 40100.40200.41000.44200.564900 | SOAP WASHING L12 | 1d | 2027-04-03 | 2027-04-03 | 6844 |  | RGA -FINISHING | 8867474 |
| 6846 | 40100.40200.41000.44200.565000 | SOAP WASHING L13 | 1d | 2027-04-04 | 2027-04-04 | 6845 |  | RGA -FINISHING | 8867484 |
| 6847 | 40100.40200.41000.44200.565100 | SOAP WASHING L14 | 1d | 2027-04-05 | 2027-04-05 | 6846 |  | RGA -FINISHING | 8867494 |
| 6848 | 40100.40200.41000.44200.565200 | SOAP WASHING L15 | 1d | 2027-04-06 | 2027-04-06 | 6847 |  | RGA -FINISHING | 8867504 |
| 6849 | 40100.40200.41000.44200.565300 | SOAP WASHING L16 | 1d | 2027-04-07 | 2027-04-07 | 6848 |  | RGA -FINISHING | 8867514 |
| 6850 | 40100.40200.41000.44200.565400 | SOAP WASHING L17 | 1d | 2027-04-08 | 2027-04-08 | 6849 |  | RGA -FINISHING | 8867524 |
| 6851 | 40100.40200.41000.44200.565500 | SOAP WASHING L18 | 1d | 2027-04-09 | 2027-04-09 | 6850 |  | RGA -FINISHING | 8867534 |
| 6852 | 40100.40200.41000.44200.565600 | SOAP WASHING L19 | 1d | 2027-04-10 | 2027-04-10 | 6851 |  | RGA -FINISHING | 8867544 |
| 6853 | 40100.40200.41000.44200.565700 | SOAP WASHING L20 | 1d | 2027-04-11 | 2027-04-11 | 6852 |  | RGA -FINISHING | 8867554 |
| 6854 | 40100.40200.41000.44200.565800 | SOAP WASHING L21 | 1d | 2027-04-12 | 2027-04-12 | 6853 |  | RGA -FINISHING | 8867564 |
| 6855 | 40100.40200.41000.44200.565900 | SOAP WASHING L22 | 1d | 2027-04-13 | 2027-04-13 | 6854 |  | RGA -FINISHING | 8867574 |
| 6856 | 40100.40200.41000.44200.566000 | SOAP WASHING L23 | 1d | 2027-04-14 | 2027-04-14 | 6855 |  | RGA -FINISHING | 8867584 |
| 6857 | 40100.40200.41000.44200.566100 | SOAP WASHING L24 | 1d | 2027-04-15 | 2027-04-15 | 6856 |  | RGA -FINISHING | 8867594 |
| 6858 | 40100.40200.41000.44200.566200 | SOAP WASHING L25 | 1d | 2027-04-16 | 2027-04-16 | 6857 |  | RGA -FINISHING | 8867604 |
| 6859 | 40100.40200.41000.44200.566300 | CP & SANITARYWARE FIXING Ground | 2d | 2027-03-24 | 2027-03-25 | 6834 |  | RGA -FINISHING | 8867614 |
| 6860 | 40100.40200.41000.44200.566400 | CP & SANITARYWARE FIXING L1 | 2d | 2027-03-26 | 2027-03-27 | 6859 |  | RGA -FINISHING | 8867624 |
| 6861 | 40100.40200.41000.44200.566500 | CP & SANITARYWARE FIXING L2 | 2d | 2027-03-28 | 2027-03-29 | 6860 |  | RGA -FINISHING | 8867634 |
| 6862 | 40100.40200.41000.44200.566600 | CP & SANITARYWARE FIXING L3 | 2d | 2027-03-30 | 2027-03-31 | 6861 |  | RGA -FINISHING | 8867644 |
| 6863 | 40100.40200.41000.44200.566700 | CP & SANITARYWARE FIXING L4 | 2d | 2027-04-01 | 2027-04-02 | 6862 |  | RGA -FINISHING | 8867654 |
| 6864 | 40100.40200.41000.44200.566800 | CP & SANITARYWARE FIXING L5 | 2d | 2027-04-03 | 2027-04-04 | 6863 |  | RGA -FINISHING | 8867664 |
| 6865 | 40100.40200.41000.44200.566900 | CP & SANITARYWARE FIXING L6 | 2d | 2027-04-05 | 2027-04-06 | 6864 |  | RGA -FINISHING | 8867674 |
| 6866 | 40100.40200.41000.44200.567000 | CP & SANITARYWARE FIXING L7 | 2d | 2027-04-07 | 2027-04-08 | 6865 |  | RGA -FINISHING | 8867684 |
| 6867 | 40100.40200.41000.44200.567100 | CP & SANITARYWARE FIXING L8 | 2d | 2027-04-09 | 2027-04-10 | 6866 |  | RGA -FINISHING | 8867694 |
| 6868 | 40100.40200.41000.44200.567200 | CP & SANITARYWARE FIXING L9 | 2d | 2027-04-11 | 2027-04-12 | 6867 |  | RGA -FINISHING | 8867704 |
| 6869 | 40100.40200.41000.44200.567300 | CP & SANITARYWARE FIXING L10 | 2d | 2027-04-13 | 2027-04-14 | 6868 |  | RGA -FINISHING | 8867714 |
| 6870 | 40100.40200.41000.44200.567400 | CP & SANITARYWARE FIXING L11 | 2d | 2027-04-15 | 2027-04-16 | 6869 |  | RGA -FINISHING | 8867724 |
| 6871 | 40100.40200.41000.44200.567500 | CP & SANITARYWARE FIXING L12 | 2d | 2027-04-17 | 2027-04-18 | 6870 |  | RGA -FINISHING | 8867734 |
| 6872 | 40100.40200.41000.44200.567600 | CP & SANITARYWARE FIXING L13 | 2d | 2027-04-19 | 2027-04-20 | 6871 |  | RGA -FINISHING | 8867744 |
| 6873 | 40100.40200.41000.44200.567700 | CP & SANITARYWARE FIXING L14 | 2d | 2027-04-21 | 2027-04-22 | 6872 |  | RGA -FINISHING | 8867754 |
| 6874 | 40100.40200.41000.44200.567800 | CP & SANITARYWARE FIXING L15 | 2d | 2027-04-23 | 2027-04-24 | 6873 |  | RGA -FINISHING | 8867764 |
| 6875 | 40100.40200.41000.44200.567900 | CP & SANITARYWARE FIXING L16 | 2d | 2027-04-25 | 2027-04-26 | 6874 |  | RGA -FINISHING | 8867774 |
| 6876 | 40100.40200.41000.44200.568000 | CP & SANITARYWARE FIXING L17 | 2d | 2027-04-27 | 2027-04-28 | 6875 |  | RGA -FINISHING | 8867784 |
| 6877 | 40100.40200.41000.44200.568100 | CP & SANITARYWARE FIXING L18 | 2d | 2027-04-29 | 2027-04-30 | 6876 |  | RGA -FINISHING | 8867794 |
| 6878 | 40100.40200.41000.44200.568200 | CP & SANITARYWARE FIXING L18 | 2d | 2027-05-01 | 2027-05-02 | 6877 |  | RGA -FINISHING | 8867804 |
| 6879 | 40100.40200.41000.44200.568300 | CP & SANITARYWARE FIXING L19 | 2d | 2027-05-03 | 2027-05-04 | 6878 |  | RGA -FINISHING | 8867814 |
| 6880 | 40100.40200.41000.44200.568400 | CP & SANITARYWARE FIXING L20 | 2d | 2027-05-05 | 2027-05-06 | 6879 |  | RGA -FINISHING | 8867824 |

Notes:
- 6811: Completion in 12 months post last RCC

| ID | WBS | Task | Type | Duration | Start | Finish | Predecessors | Complete | Constraint | Calendar | Unique_Task_ID |
| --- | --- | --- | --- | --- | --- | --- | --- | --- | --- | --- | --- |
| 6881 | 40100.40200.41000.44200.568500 | CP & SANITARYWARE FIXING L21 |  | 2d | 2027-05-07 | 2027-05-08 | 6880 |  |  | RGA -FINISHING | 8867834 |
| 6882 | 40100.40200.41000.44200.568600 | CP & SANITARYWARE FIXING L22 |  | 2d | 2027-05-09 | 2027-05-10 | 6881 |  |  | RGA -FINISHING | 8867844 |
| 6883 | 40100.40200.41000.44200.568700 | CP & SANITARYWARE FIXING L23 |  | 2d | 2027-05-11 | 2027-05-12 | 6882 |  |  | RGA -FINISHING | 8867854 |
| 6884 | 40100.40200.41000.44200.568800 | CP & SANITARYWARE FIXING L24 |  | 2d | 2027-05-13 | 2027-05-14 | 6883 |  |  | RGA -FINISHING | 8867864 |
| 6885 | 40100.40200.41000.44200.568900 | CP & SANITARYWARE FIXING L25 |  | 2d | 2027-05-15 | 2027-05-16 | 6884 |  |  | RGA -FINISHING | 8867874 |
| 6886 | 40100.40200.41000.521700 | MIscellaneous (Aluform Supply) |  | 60d | 2025-07-10 | 2025-09-07 | 5963FS-66d |  |  | RGA -FINISHING | 8867274 |
| 6887 | 40100.40200.41000.521800 | Miscellaneous |  | 290d | 2027-03-12 | 2028-02-12 | 6886FS+472d |  |  | Indian Calendar | 8867284 |
| 6888 | 40100.40200.41100 | **TOWER 1 - (B+G+25 Floors+Terrace)** |  | 1054d | 2025-02-10 | 2028-02-07 |  |  | start no earlier than 2025-02-10 | RGA - STRUCTURE | 7803142 |
| 6889 | 40100.40200.41100.2747200 | Start date for Tower 1 | milestone | 0d | 2025-04-01 | 2025-04-01 | 3SS |  |  | RGA - STRUCTURE | 7847622 |
| 6890 | 40100.40200.41100.374800 | **Earth work** |  | 93d | 2025-02-10 | 2025-05-15 |  | 70% | start no earlier than 2025-02-10 | RGA - STRUCTURE | 7811792 |
| 6891 | 40100.40200.41100.374800.517700 | EXCAVATION - Tower Area |  | 4d | 2025-02-10 | 2025-02-13 | 6889SS-2.8d | 100% | start no earlier than 2025-02-10 | RGA - STRUCTURE | 7816392 |
| 6892 | 40100.40200.41100.374800.517600 | Excavation - Non Tower Area |  | 40d | 2025-03-18 | 2025-05-15 | 6891FS-27d | 67% |  | 5 day week, Bank Hols Xmas | 7433515 |
| 6893 | 40100.40200.41100.70400 | **Substructure works (Works up to plinth)** |  | 758d | 2025-04-01 | 2027-06-05 |  |  | start no earlier than 2025-04-01 | RGA - STRUCTURE | 7803932 |
| 6894 | 40100.40200.41100.70400.164800 | **Civil works (Shell & Core basement)** |  | 100d | 2025-04-01 | 2025-07-10 |  |  | start no earlier than 2025-04-01 | RGA - STRUCTURE | 7805332 |
| 6895 | 40100.40200.41100.70400.164800.174200 | **1st Basement** |  | 100d | 2025-04-01 | 2025-07-10 |  |  | start no earlier than 2025-04-01 | RGA - STRUCTURE | 7805402 |
| 6896 | 40100.40200.41100.70400.164800.174200.339500 | **RCC Works - Tower area** |  | 57d | 2025-05-15 | 2025-07-10 |  |  | start no earlier than 2025-05-15 | RGA - STRUCTURE | 7808212 |
| 6897 | 40100.40200.41100.70400.164800.174200.339500.409200 | **Foundation** |  | 26d | 2025-05-15 | 2025-06-09 |  |  | start no earlier than 2025-05-15 | RGA - STRUCTURE | 7810992 |
| 6898 | 40100.40200.41100.70400.164800.174200.339500.409200.2752500 | Pocket Excavation |  | 1d | 2025-05-15 | 2025-05-15 | 6891FS+88d |  |  | RGA - STRUCTURE | 7860152 |
| 6899 | 40100.40200.41100.70400.164800.174200.339500.409200.2752600 | Footing PCC |  | 4d | 2025-05-16 | 2025-05-19 | 6898 |  |  | RGA - STRUCTURE | 7860162 |
| 6900 | 40100.40200.41100.70400.164800.174200.339500.409200.2752700 | Footing / Raft works |  | 21d | 2025-05-20 | 2025-06-09 | 6899 |  |  | RGA - STRUCTURE | 7860172 |
| 6901 | 40100.40200.41100.70400.164800.174200.339500.472700 | **GF Slab** |  | 31d | 2025-06-10 | 2025-07-10 |  |  | start no earlier than 2025-06-10 | RGA - STRUCTURE | 7811532 |
| 6902 | 40100.40200.41100.70400.164800.174200.339500.472700.2752800 | Columns in Upper basement |  | 14d | 2025-06-10 | 2025-06-23 | 6900 |  |  | RGA - STRUCTURE | 7860182 |
| 6903 | 40100.40200.41100.70400.164800.174200.339500.472700.2752900 | Upper Basement slab |  | 17d | 2025-06-24 | 2025-07-10 | 6902 |  |  | RGA - STRUCTURE | 7860192 |
| 6904 | 40100.40200.41100.70400.164800.174200.968700 | Backfilling |  | 10d | 2025-04-01 | 2025-04-10 |  |  | start no earlier than 2025-04-01 | RGA - STRUCTURE | 7832052 |

Notes:
- 6890: 2 Months for Excavation

| ID | WBS | Task | Duration | Start | Finish | Predecessors | Constraint | Calendar | Unique_Task_ID |
| --- | --- | --- | --- | --- | --- | --- | --- | --- | --- |
| 6905 | 40100.40200.41100.70400.509100 | **Basement Block work and Plaster finishing** | 45d | 2026-03-13 | 2026-04-26 |  | start no earlier than 2026-03-13 | RGA - STRUCTURE | 7812222 |
| 6906 | 40100.40200.41100.70400.509100.830800 | Upper basement | 45d | 2026-03-13 | 2026-04-26 | 7012 |  | RGA - STRUCTURE | 7820222 |
| 6907 | 40100.40200.41100.70400.164900 | **Services** | 405d | 2026-04-27 | 2027-06-05 |  | start no earlier than 2026-04-27 | RGA -FINISHING | 7805322 |
| 6908 | 40100.40200.41100.70400.164900.378800 | **Plumbing** | 90d | 2026-04-27 | 2026-07-25 |  | start no earlier than 2026-04-27 | RGA -FINISHING | 7809242 |
| 6909 | 40100.40200.41100.70400.164900.378800.507800 | **Upper Basement Plumbing** | 90d | 2026-04-27 | 2026-07-25 |  | start no earlier than 2026-04-27 | RGA -FINISHING | 7811912 |
| 6910 | 40100.40200.41100.70400.164900.378800.507800.2452400 | Upper Basement Plumbing | 90d | 2026-04-27 | 2026-07-25 | 6906 |  | RGA -FINISHING | 7848162 |
| 6911 | 40100.40200.41100.70400.164900.378900 | **Fire fighting** | 90d | 2026-07-26 | 2026-10-23 |  | start no earlier than 2026-07-26 | RGA -FINISHING | 7809252 |
| 6912 | 40100.40200.41100.70400.164900.378900.507900 | **Upper Basement Fire fighting** | 90d | 2026-07-26 | 2026-10-23 |  | start no earlier than 2026-07-26 | RGA -FINISHING | 7811902 |
| 6913 | 40100.40200.41100.70400.164900.378900.507900.2452500 | Upper Basement Fire fighting | 90d | 2026-07-26 | 2026-10-23 | 6910 |  | RGA -FINISHING | 7848172 |
| 6914 | 40100.40200.41100.70400.164900.379000 | **Ventilation** | 90d | 2026-10-24 | 2027-01-21 |  | start no earlier than 2026-10-24 | RGA -FINISHING | 7809262 |
| 6915 | 40100.40200.41100.70400.164900.379000.508000 | **Upper Basement ventilation** | 90d | 2026-10-24 | 2027-01-21 |  | start no earlier than 2026-10-24 | RGA -FINISHING | 7811892 |
| 6916 | 40100.40200.41100.70400.164900.379000.508000.2452600 | Upper Basement ventilation | 90d | 2026-10-24 | 2027-01-21 | 6913 |  | RGA -FINISHING | 7848182 |
| 6917 | 40100.40200.41100.70400.164900.379100 | **Electrification** | 90d | 2027-01-22 | 2027-04-21 |  | start no earlier than 2027-01-22 | RGA -FINISHING | 7809272 |
| 6918 | 40100.40200.41100.70400.164900.379100.508100 | **Upper Basement Electrification** | 90d | 2027-01-22 | 2027-04-21 |  | start no earlier than 2027-01-22 | RGA -FINISHING | 7811882 |
| 6919 | 40100.40200.41100.70400.164900.379100.508100.2452700 | Upper Basement Electrification | 90d | 2027-01-22 | 2027-04-21 | 6916 |  | RGA -FINISHING | 7848192 |
| 6920 | 40100.40200.41100.70400.164900.379200 | **Security installations** | 45d | 2027-04-22 | 2027-06-05 |  | start no earlier than 2027-04-22 | RGA -FINISHING | 7809282 |
| 6921 | 40100.40200.41100.70400.164900.379200.508200 | **Upper Basement Security installations** | 45d | 2027-04-22 | 2027-06-05 |  | start no earlier than 2027-04-22 | RGA -FINISHING | 7811872 |
| 6922 | 40100.40200.41100.70400.164900.379200.508200.2452800 | Upper Basement Security installations | 45d | 2027-04-22 | 2027-06-05 | 6919 |  | RGA -FINISHING | 7848202 |
| 6923 | 40100.40200.41100.70400.364000 | **Finishing work** | 135d | 2026-04-27 | 2026-09-08 |  | start no earlier than 2026-04-27 | RGA -FINISHING | 7808672 |
| 6924 | 40100.40200.41100.70400.364000.511800 | **Basement Flooring** | 90d | 2026-04-27 | 2026-07-25 |  | start no earlier than 2026-04-27 | RGA -FINISHING | 7812462 |
| 6925 | 40100.40200.41100.70400.364000.511800.968800 | 1st Basement ventilation | 90d | 2026-04-27 | 2026-07-25 | 6906 |  | RGA -FINISHING | 7832062 |
| 6926 | 40100.40200.41100.70400.364000.511700 | **Basement Painting (1st Coat)** | 45d | 2026-07-26 | 2026-09-08 |  | start no earlier than 2026-07-26 | RGA -FINISHING | 7812472 |
| 6927 | 40100.40200.41100.70400.364000.511700.968900 | 2nd Basement ventilation | 45d | 2026-07-26 | 2026-09-08 | 6925 |  | RGA -FINISHING | 7832072 |
| 6928 | 40100.40200.41100.70400.509000 | **Water Proofing work** | 45d | 2026-04-27 | 2026-06-10 |  | start no earlier than 2026-04-27 | RGA -FINISHING | 7812232 |
| 6929 | 40100.40200.41100.70400.509000.830900 | GF/Stilt Floor | 45d | 2026-04-27 | 2026-06-10 | 6906 |  | RGA -FINISHING | 7820232 |

| ID | WBS | Task | Duration | Start | Finish | Predecessors | Constraint | Calendar | Unique_Task_ID |
| --- | --- | --- | --- | --- | --- | --- | --- | --- | --- |
| 6930 | 40100.40200.41100.54700 | **Superstructure works** | 663.5d | 2025-04-01 | 2027-03-03 |  | start no earlier than 2025-04-01 | RGA - STRUCTURE | 7803282 |
| 6931 | 40100.40200.41100.54700.56100 | **Civil works** | 663.5d | 2025-04-01 | 2027-03-03 |  | start no earlier than 2025-04-01 | RGA - STRUCTURE | 7803322 |
| 6932 | 40100.40200.41100.54700.56100.61800 | **Superstructure RCC Work** | 336d | 2025-07-11 | 2026-06-17 |  | start no earlier than 2025-07-11 | RGA - STRUCTURE | 7803512 |
| 6933 | 40100.40200.41100.54700.56100.61800.63000 | **Slab RCC works** | 293d | 2025-07-11 | 2026-05-04 |  | start no earlier than 2025-07-11 | RGA - STRUCTURE | 7803632 |
| 6934 | 40100.40200.41100.54700.56100.61800.63000.472800 | **1st Floor slab (Height More)** | 25d | 2025-07-11 | 2025-08-04 |  | start no earlier than 2025-07-11 | RGA - STRUCTURE | 7811542 |
| 6935 | 40100.40200.41100.54700.56100.61800.63000.472800.2753000 | Columns | 10d | 2025-07-11 | 2025-07-20 | 6903 |  | RGA - STRUCTURE | 7860202 |
| 6936 | 40100.40200.41100.54700.56100.61800.63000.472800.2753100 | Slab Work | 15d | 2025-07-21 | 2025-08-04 | 6935 |  | RGA - STRUCTURE | 7860212 |
| 6937 | 40100.40200.41100.54700.56100.61800.63000.409300 | **2nd Floor slab (Combo Height More)** | 25d | 2025-08-16 | 2025-09-09 |  | start no earlier than 2025-08-16 | RGA - STRUCTURE | 7811002 |
| 6938 | 40100.40200.41100.54700.56100.61800.63000.409300.2753200 | Wall rebar & Form work | 15d | 2025-08-16 | 2025-08-30 | 6936FS+10d |  | RGA - STRUCTURE | 7860222 |
| 6939 | 40100.40200.41100.54700.56100.61800.63000.409300.2753300 | Slab form work & Rebar. | 9d | 2025-08-31 | 2025-09-08 | 6938 |  | RGA - STRUCTURE | 7860232 |
| 6940 | 40100.40200.41100.54700.56100.61800.63000.409300.2753400 | Concreting | 1d | 2025-09-09 | 2025-09-09 | 6939 |  | RGA - STRUCTURE | 7860242 |
| 6941 | 40100.40200.41100.54700.56100.61800.63000.409400 | **3rd Floor slab (1stSet Up)** | 21d | 2025-09-10 | 2025-09-30 |  | start no earlier than 2025-09-10 | RGA - STRUCTURE | 7811012 |
| 6942 | 40100.40200.41100.54700.56100.61800.63000.409400.2753500 | Wall rebar & Form work | 10d | 2025-09-10 | 2025-09-19 | 6940 |  | RGA - STRUCTURE | 7860252 |
| 6943 | 40100.40200.41100.54700.56100.61800.63000.409400.2753600 | Slab form work & Rebar. | 10d | 2025-09-20 | 2025-09-29 | 6942 |  | RGA - STRUCTURE | 7860262 |
| 6944 | 40100.40200.41100.54700.56100.61800.63000.409400.2753700 | Concreting | 1d | 2025-09-30 | 2025-09-30 | 6943 |  | RGA - STRUCTURE | 7860272 |
| 6945 | 40100.40200.41100.54700.56100.61800.63000.409500 | **4th Floor slab (2nd Set Up)** | 15d | 2025-10-01 | 2025-10-16 |  | start no earlier than 2025-10-01 | RGA - STRUCTURE | 7811022 |
| 6946 | 40100.40200.41100.54700.56100.61800.63000.409500.2753800 | Wall rebar & Form work | 7d | 2025-10-01 | 2025-10-08 | 6944 |  | RGA - STRUCTURE | 7860282 |
| 6947 | 40100.40200.41100.54700.56100.61800.63000.409500.2753900 | Slab form work & Rebar. | 7d | 2025-10-09 | 2025-10-15 | 6946 |  | RGA - STRUCTURE | 7860292 |
| 6948 | 40100.40200.41100.54700.56100.61800.63000.409500.2754000 | Concreting | 1d | 2025-10-16 | 2025-10-16 | 6947 |  | RGA - STRUCTURE | 7860302 |
| 6949 | 40100.40200.41100.54700.56100.61800.63000.409600 | **5th Floor slab** | 9d | 2025-10-17 | 2025-10-25 |  | start no earlier than 2025-10-17 | RGA - STRUCTURE | 7811032 |
| 6950 | 40100.40200.41100.54700.56100.61800.63000.409600.2754100 | Wall rebar & Form work | 4d | 2025-10-17 | 2025-10-20 | 6948 |  | RGA - STRUCTURE | 7860312 |
| 6951 | 40100.40200.41100.54700.56100.61800.63000.409600.2754200 | Slab form work & Rebar. | 4d | 2025-10-21 | 2025-10-24 | 6950 |  | RGA -FINISHING | 7860322 |
| 6952 | 40100.40200.41100.54700.56100.61800.63000.409600.2754300 | Concreting | 1d | 2025-10-25 | 2025-10-25 | 6951 |  | RGA - STRUCTURE | 7860332 |
| 6953 | 40100.40200.41100.54700.56100.61800.63000.409700 | **6th Floor slab** | 9d | 2025-10-26 | 2025-11-04 |  | start no earlier than 2025-10-26 | RGA - STRUCTURE | 7811042 |
| 6954 | 40100.40200.41100.54700.56100.61800.63000.409700.2754400 | Wall rebar & Form work | 4d | 2025-10-26 | 2025-10-30 | 6952 |  | RGA - STRUCTURE | 7860342 |
| 6955 | 40100.40200.41100.54700.56100.61800.63000.409700.2754500 | Slab form work & Rebar. | 4d | 2025-10-31 | 2025-11-03 | 6954 |  | RGA - STRUCTURE | 7860352 |
| 6956 | 40100.40200.41100.54700.56100.61800.63000.409700.2754600 | Concreting | 1d | 2025-11-04 | 2025-11-04 | 6955 |  | RGA - STRUCTURE | 7860362 |

Notes:
- 6937: AVg Slab Cycle of 21 days
- 6941: AVg Slab Cycle of 21 days
- 6945: AVg Slab Cycle of 21 days

| ID | WBS | Task | Duration | Start | Finish | Predecessors | Constraint | Calendar | Unique_Task_ID |
| --- | --- | --- | --- | --- | --- | --- | --- | --- | --- |
| 6957 | 40100.40200.41100.54700.56100.61800.63000.409800 | **7th Floor slab** | 9d | 2025-11-05 | 2025-11-13 |  | start no earlier than 2025-11-05 | RGA - STRUCTURE | 7811052 |
| 6958 | 40100.40200.41100.54700.56100.61800.63000.409800.2754700 | Wall rebar & Form work | 4d | 2025-11-05 | 2025-11-08 | 6956 |  | RGA - STRUCTURE | 7860372 |
| 6959 | 40100.40200.41100.54700.56100.61800.63000.409800.2754800 | Slab form work & Rebar. | 4d | 2025-11-09 | 2025-11-12 | 6958 |  | RGA - STRUCTURE | 7860382 |
| 6960 | 40100.40200.41100.54700.56100.61800.63000.409800.2754900 | Concreting | 1d | 2025-11-13 | 2025-11-13 | 6959 |  | RGA - STRUCTURE | 7860392 |
| 6961 | 40100.40200.41100.54700.56100.61800.63000.409900 | **8th Floor slab** | 9d | 2025-11-14 | 2025-11-22 |  | start no earlier than 2025-11-14 | RGA - STRUCTURE | 7811062 |
| 6962 | 40100.40200.41100.54700.56100.61800.63000.409900.2755000 | Wall rebar & Form work | 4d | 2025-11-14 | 2025-11-17 | 6960 |  | RGA - STRUCTURE | 7860402 |
| 6963 | 40100.40200.41100.54700.56100.61800.63000.409900.2755100 | Slab form work & Rebar. | 4d | 2025-11-18 | 2025-11-21 | 6962 |  | RGA - STRUCTURE | 7860412 |
| 6964 | 40100.40200.41100.54700.56100.61800.63000.409900.2755200 | Concreting | 1d | 2025-11-22 | 2025-11-22 | 6963 |  | RGA - STRUCTURE | 7860422 |
| 6965 | 40100.40200.41100.54700.56100.61800.63000.410000 | **9th Floor slab** | 9d | 2025-11-23 | 2025-12-01 |  | start no earlier than 2025-11-23 | RGA - STRUCTURE | 7811072 |
| 6966 | 40100.40200.41100.54700.56100.61800.63000.410000.2755300 | Wall rebar & Form work | 4d | 2025-11-23 | 2025-11-26 | 6964 |  | RGA - STRUCTURE | 7860432 |
| 6967 | 40100.40200.41100.54700.56100.61800.63000.410000.2755400 | Slab form work & Rebar. | 4d | 2025-11-27 | 2025-11-30 | 6966 |  | RGA - STRUCTURE | 7860442 |
| 6968 | 40100.40200.41100.54700.56100.61800.63000.410000.2755500 | Concreting | 1d | 2025-12-01 | 2025-12-01 | 6967 |  | RGA - STRUCTURE | 7860452 |
| 6969 | 40100.40200.41100.54700.56100.61800.63000.410100 | **10th Floor slab** | 9d | 2025-12-02 | 2025-12-10 |  | start no earlier than 2025-12-02 | RGA - STRUCTURE | 7811082 |
| 6970 | 40100.40200.41100.54700.56100.61800.63000.410100.2755600 | Wall rebar & Form work | 4d | 2025-12-02 | 2025-12-05 | 6968 |  | RGA - STRUCTURE | 7860462 |
| 6971 | 40100.40200.41100.54700.56100.61800.63000.410100.2755700 | Slab form work & Rebar. | 4d | 2025-12-06 | 2025-12-09 | 6970 |  | RGA - STRUCTURE | 7860472 |
| 6972 | 40100.40200.41100.54700.56100.61800.63000.410100.2755800 | Concreting | 1d | 2025-12-10 | 2025-12-10 | 6971 |  | RGA - STRUCTURE | 7860482 |
| 6973 | 40100.40200.41100.54700.56100.61800.63000.410200 | **11th Floor slab** | 9d | 2025-12-11 | 2025-12-19 |  | start no earlier than 2025-12-11 | RGA - STRUCTURE | 7811092 |
| 6974 | 40100.40200.41100.54700.56100.61800.63000.410200.2755900 | Wall rebar & Form work | 4d | 2025-12-11 | 2025-12-14 | 6972 |  | RGA - STRUCTURE | 7860492 |
| 6975 | 40100.40200.41100.54700.56100.61800.63000.410200.2756000 | Slab form work & Rebar. | 4d | 2025-12-15 | 2025-12-18 | 6974 |  | RGA - STRUCTURE | 7860502 |
| 6976 | 40100.40200.41100.54700.56100.61800.63000.410200.2756100 | Concreting | 1d | 2025-12-19 | 2025-12-19 | 6975 |  | RGA - STRUCTURE | 7860512 |
| 6977 | 40100.40200.41100.54700.56100.61800.63000.410300 | **12th Floor slab** | 9d | 2025-12-20 | 2025-12-28 |  | start no earlier than 2025-12-20 | RGA - STRUCTURE | 7811102 |
| 6978 | 40100.40200.41100.54700.56100.61800.63000.410300.2756200 | Wall rebar & Form work | 4d | 2025-12-20 | 2025-12-23 | 6976 |  | RGA - STRUCTURE | 7860522 |
| 6979 | 40100.40200.41100.54700.56100.61800.63000.410300.2756300 | Slab form work & Rebar. | 4d | 2025-12-24 | 2025-12-27 | 6978 |  | RGA - STRUCTURE | 7860532 |
| 6980 | 40100.40200.41100.54700.56100.61800.63000.410300.2756400 | Concreting | 1d | 2025-12-28 | 2025-12-28 | 6979 |  | RGA - STRUCTURE | 7860542 |

Notes:
- 6977: AVg Slab Cycle of 21 days

| ID | WBS | Task | Duration | Start | Finish | Predecessors | Constraint | Calendar | Unique_Task_ID |
| --- | --- | --- | --- | --- | --- | --- | --- | --- | --- |
| 6981 | 40100.40200.41100.54700.56100.61800.63000.410400 | **13th Floor slab** | 9d | 2025-12-29 | 2026-01-06 |  | start no earlier than 2025-12-29 | RGA - STRUCTURE | 7811112 |
| 6982 | 40100.40200.41100.54700.56100.61800.63000.410400.2756500 | Wall rebar & Form work | 4d | 2025-12-29 | 2026-01-01 | 6980 |  | RGA - STRUCTURE | 7860552 |
| 6983 | 40100.40200.41100.54700.56100.61800.63000.410400.2756600 | Slab form work & Rebar. | 4d | 2026-01-02 | 2026-01-05 | 6982 |  | RGA - STRUCTURE | 7860562 |
| 6984 | 40100.40200.41100.54700.56100.61800.63000.410400.2756700 | Concreting | 1d | 2026-01-06 | 2026-01-06 | 6983 |  | RGA - STRUCTURE | 7860572 |
| 6985 | 40100.40200.41100.54700.56100.61800.63000.410500 | **14th Floor slab** | 9d | 2026-01-07 | 2026-01-15 |  | start no earlier than 2026-01-07 | RGA - STRUCTURE | 7811122 |
| 6986 | 40100.40200.41100.54700.56100.61800.63000.410500.2756800 | Wall rebar & Form work | 4d | 2026-01-07 | 2026-01-10 | 6984 |  | RGA - STRUCTURE | 7860582 |
| 6987 | 40100.40200.41100.54700.56100.61800.63000.410500.2756900 | Slab form work & Rebar. | 4d | 2026-01-11 | 2026-01-14 | 6986 |  | RGA - STRUCTURE | 7860592 |
| 6988 | 40100.40200.41100.54700.56100.61800.63000.410500.2757000 | Concreting | 1d | 2026-01-15 | 2026-01-15 | 6987 |  | RGA - STRUCTURE | 7860602 |
| 6989 | 40100.40200.41100.54700.56100.61800.63000.410600 | **15th Floor slab** | 9d | 2026-01-16 | 2026-01-24 |  | start no earlier than 2026-01-16 | RGA - STRUCTURE | 7811132 |
| 6990 | 40100.40200.41100.54700.56100.61800.63000.410600.2757100 | Wall rebar & Form work | 4d | 2026-01-16 | 2026-01-19 | 6988 |  | RGA - STRUCTURE | 7860612 |
| 6991 | 40100.40200.41100.54700.56100.61800.63000.410600.2757200 | Slab form work & Rebar. | 4d | 2026-01-20 | 2026-01-23 | 6990 |  | RGA - STRUCTURE | 7860622 |
| 6992 | 40100.40200.41100.54700.56100.61800.63000.410600.2757300 | Concreting | 1d | 2026-01-24 | 2026-01-24 | 6991 |  | RGA - STRUCTURE | 7860632 |
| 6993 | 40100.40200.41100.54700.56100.61800.63000.410700 | **16th Floor slab** | 9d | 2026-01-25 | 2026-02-03 |  | start no earlier than 2026-01-25 | RGA - STRUCTURE | 7811142 |
| 6994 | 40100.40200.41100.54700.56100.61800.63000.410700.2757400 | Wall rebar & Form work | 4d | 2026-01-25 | 2026-01-29 | 6992 |  | RGA - STRUCTURE | 7860642 |
| 6995 | 40100.40200.41100.54700.56100.61800.63000.410700.2757500 | Slab form work & Rebar. | 4d | 2026-01-30 | 2026-02-02 | 6994 |  | RGA - STRUCTURE | 7860652 |
| 6996 | 40100.40200.41100.54700.56100.61800.63000.410700.2757600 | Concreting | 1d | 2026-02-03 | 2026-02-03 | 6995 |  | RGA - STRUCTURE | 7860662 |
| 6997 | 40100.40200.41100.54700.56100.61800.63000.410800 | **17th Floor slab** | 9d | 2026-02-04 | 2026-02-12 |  | start no earlier than 2026-02-04 | RGA - STRUCTURE | 7811152 |
| 6998 | 40100.40200.41100.54700.56100.61800.63000.410800.2757700 | Wall rebar & Form work | 4d | 2026-02-04 | 2026-02-07 | 6996 |  | RGA - STRUCTURE | 7860672 |
| 6999 | 40100.40200.41100.54700.56100.61800.63000.410800.2757800 | Slab form work & Rebar. | 4d | 2026-02-08 | 2026-02-11 | 6998 |  | RGA - STRUCTURE | 7860682 |
| 7000 | 40100.40200.41100.54700.56100.61800.63000.410800.2757900 | Concreting | 1d | 2026-02-12 | 2026-02-12 | 6999 |  | RGA - STRUCTURE | 7860692 |
| 7001 | 40100.40200.41100.54700.56100.61800.63000.410900 | **18th Floor slab** | 9d | 2026-02-12 | 2026-02-20 |  | start no earlier than 2026-02-12 | RGA - STRUCTURE | 7811162 |
| 7002 | 40100.40200.41100.54700.56100.61800.63000.410900.2758000 | Wall rebar & Form work | 4d | 2026-02-12 | 2026-02-15 | 6999 |  | RGA - STRUCTURE | 7860702 |
| 7003 | 40100.40200.41100.54700.56100.61800.63000.410900.2758100 | Slab form work & Rebar. | 4d | 2026-02-16 | 2026-02-19 | 7002 |  | RGA - STRUCTURE | 7860712 |
| 7004 | 40100.40200.41100.54700.56100.61800.63000.410900.2758200 | Concreting | 1d | 2026-02-20 | 2026-02-20 | 7003 |  | RGA - STRUCTURE | 7860722 |

Notes:
- 6981: AVg Slab Cycle of 21 days
- 6985: AVg Slab Cycle of 21 days

| ID | WBS | Task | Duration | Start | Finish | Predecessors | Constraint | Calendar | Unique_Task_ID |
| --- | --- | --- | --- | --- | --- | --- | --- | --- | --- |
| 7005 | 40100.40200.41100.54700.56100.61800.63000.411000 | **19th Floor slab** | 8d | 2026-02-21 | 2026-02-28 |  | start no earlier than 2026-02-21 | RGA - STRUCTURE | 7811172 |
| 7006 | 40100.40200.41100.54700.56100.61800.63000.411000.2758300 | Wall rebar & Form work | 4d | 2026-02-21 | 2026-02-24 | 7004 |  | RGA - STRUCTURE | 7860732 |
| 7007 | 40100.40200.41100.54700.56100.61800.63000.411000.2758400 | Slab form work & Rebar. | 3d | 2026-02-25 | 2026-02-27 | 7006 |  | RGA - STRUCTURE | 7860742 |
| 7008 | 40100.40200.41100.54700.56100.61800.63000.411000.2758500 | Concreting | 1d | 2026-02-28 | 2026-02-28 | 7007 |  | RGA - STRUCTURE | 7860752 |
| 7009 | 40100.40200.41100.54700.56100.61800.63000.411100 | **20th Floor slab ( Refuge Floor )** | 12d | 2026-03-01 | 2026-03-12 |  | start no earlier than 2026-03-01 | RGA - STRUCTURE | 7811182 |
| 7010 | 40100.40200.41100.54700.56100.61800.63000.411100.2758600 | Wall rebar & Form work | 6d | 2026-03-01 | 2026-03-06 | 7008 |  | RGA - STRUCTURE | 7860762 |
| 7011 | 40100.40200.41100.54700.56100.61800.63000.411100.2758700 | Slab form work & Rebar. | 5d | 2026-03-07 | 2026-03-11 | 7010 |  | RGA - STRUCTURE | 7860772 |
| 7012 | 40100.40200.41100.54700.56100.61800.63000.411100.2758800 | Concreting | 1d | 2026-03-12 | 2026-03-12 | 7011 |  | RGA - STRUCTURE | 7860782 |
| 7013 | 40100.40200.41100.54700.56100.61800.63000.411200 | **21st Floor slab** | 8d | 2026-03-13 | 2026-03-20 |  | start no earlier than 2026-03-13 | RGA - STRUCTURE | 7811192 |
| 7014 | 40100.40200.41100.54700.56100.61800.63000.411200.2758900 | Wall rebar & Form work | 4d | 2026-03-13 | 2026-03-16 | 7012 |  | RGA - STRUCTURE | 7860792 |
| 7015 | 40100.40200.41100.54700.56100.61800.63000.411200.2759000 | Slab form work & Rebar. | 3d | 2026-03-17 | 2026-03-19 | 7014 |  | RGA - STRUCTURE | 7860802 |
| 7016 | 40100.40200.41100.54700.56100.61800.63000.411200.2759100 | Concreting | 1d | 2026-03-20 | 2026-03-20 | 7015 |  | RGA - STRUCTURE | 7860812 |
| 7017 | 40100.40200.41100.54700.56100.61800.63000.411300 | **22nd Floor slab** | 8d | 2026-03-21 | 2026-03-28 |  | start no earlier than 2026-03-21 | RGA - STRUCTURE | 7811202 |
| 7018 | 40100.40200.41100.54700.56100.61800.63000.411300.2759200 | Wall rebar & Form work | 4d | 2026-03-21 | 2026-03-24 | 7016 |  | RGA - STRUCTURE | 7860822 |
| 7019 | 40100.40200.41100.54700.56100.61800.63000.411300.2759300 | Slab form work & Rebar. | 3d | 2026-03-25 | 2026-03-27 | 7018 |  | RGA - STRUCTURE | 7860832 |
| 7020 | 40100.40200.41100.54700.56100.61800.63000.411300.2759400 | Concreting | 1d | 2026-03-28 | 2026-03-28 | 7019 |  | RGA - STRUCTURE | 7860842 |
| 7021 | 40100.40200.41100.54700.56100.61800.63000.411400 | **23rd Floor slab** | 8d | 2026-03-29 | 2026-04-05 |  | start no earlier than 2026-03-29 | RGA - STRUCTURE | 7811212 |
| 7022 | 40100.40200.41100.54700.56100.61800.63000.411400.2759500 | Wall rebar & Form work | 4d | 2026-03-29 | 2026-04-01 | 7020 |  | RGA - STRUCTURE | 7860852 |
| 7023 | 40100.40200.41100.54700.56100.61800.63000.411400.2759600 | Slab form work & Rebar. | 3d | 2026-04-02 | 2026-04-04 | 7022 |  | RGA - STRUCTURE | 7860862 |
| 7024 | 40100.40200.41100.54700.56100.61800.63000.411400.2759700 | Concreting | 1d | 2026-04-05 | 2026-04-05 | 7023 |  | RGA - STRUCTURE | 7860872 |
| 7025 | 40100.40200.41100.54700.56100.61800.63000.411500 | **24th Floor slab** | 8d | 2026-04-06 | 2026-04-13 |  | start no earlier than 2026-04-06 | RGA - STRUCTURE | 7811222 |
| 7026 | 40100.40200.41100.54700.56100.61800.63000.411500.2759800 | Wall rebar & Form work | 4d | 2026-04-06 | 2026-04-09 | 7024 |  | RGA - STRUCTURE | 7860882 |
| 7027 | 40100.40200.41100.54700.56100.61800.63000.411500.2759900 | Slab form work & Rebar. | 3d | 2026-04-10 | 2026-04-12 | 7026 |  | RGA - STRUCTURE | 7860892 |
| 7028 | 40100.40200.41100.54700.56100.61800.63000.411500.2760000 | Concreting | 1d | 2026-04-13 | 2026-04-13 | 7027 |  | RGA - STRUCTURE | 7860902 |

| ID | WBS | Task | Duration | Start | Finish | Predecessors | Constraint | Calendar | Unique_Task_ID |
| --- | --- | --- | --- | --- | --- | --- | --- | --- | --- |
| 7029 | 40100.40200.41100.54700.56100.61800.63000.411600 | **25th Floor slab** | 8d | 2026-04-14 | 2026-04-21 |  | start no earlier than 2026-04-14 | RGA - STRUCTURE | 7811232 |
| 7030 | 40100.40200.41100.54700.56100.61800.63000.411600.2760100 | Wall rebar & Form work | 4d | 2026-04-14 | 2026-04-17 | 7028 |  | RGA - STRUCTURE | 7860912 |
| 7031 | 40100.40200.41100.54700.56100.61800.63000.411600.2760200 | Slab form work & Rebar. | 3d | 2026-04-18 | 2026-04-20 | 7030 |  | RGA - STRUCTURE | 7860922 |
| 7032 | 40100.40200.41100.54700.56100.61800.63000.411600.2760300 | Concreting | 1d | 2026-04-21 | 2026-04-21 | 7031 |  | RGA - STRUCTURE | 7860932 |
| 7033 | 40100.40200.41100.54700.56100.61800.63000.411700 | **Terrace Floor slab work** | 12d | 2026-04-22 | 2026-05-04 |  | start no earlier than 2026-04-22 | RGA - STRUCTURE | 7811262 |
| 7034 | 40100.40200.41100.54700.56100.61800.63000.411700.2760400 | Wall rebar & Form work | 6d | 2026-04-22 | 2026-04-27 | 7032 |  | RGA - STRUCTURE | 7861002 |
| 7035 | 40100.40200.41100.54700.56100.61800.63000.411700.2760500 | Slab form work & Rebar. | 5d | 2026-04-28 | 2026-05-03 | 7034 |  | RGA - STRUCTURE | 7861012 |
| 7036 | 40100.40200.41100.54700.56100.61800.63000.411700.2760600 | Concreting | 1d | 2026-05-04 | 2026-05-04 | 7035 |  | RGA - STRUCTURE | 7861022 |
| 7037 | 40100.40200.41100.54700.56100.61800.254500 | **RCC work above Terrace** | 43d | 2026-05-05 | 2026-06-17 |  | start no earlier than 2026-05-05 | RGA - STRUCTURE | 7807002 |
| 7038 | 40100.40200.41100.54700.56100.61800.254500.370800 | **STAIRCASE & OHT CORE** | 39d | 2026-05-05 | 2026-06-12 |  | start no earlier than 2026-05-05 | RGA - STRUCTURE | 7808472 |
| 7039 | 40100.40200.41100.54700.56100.61800.254500.370800.2760700 | STAIRCASE HEAD ROOM | 10d | 2026-05-05 | 2026-05-14 | 7036 |  | RGA - STRUCTURE | 7861032 |
| 7040 | 40100.40200.41100.54700.56100.61800.254500.370800.2760800 | OHT | 15d | 2026-05-15 | 2026-05-29 | 7039 |  | RGA - STRUCTURE | 7861042 |
| 7041 | 40100.40200.41100.54700.56100.61800.254500.370800.2760900 | SHAFT COVERING SLAB | 10d | 2026-05-05 | 2026-05-14 | 7036 |  | RGA - STRUCTURE | 7861052 |
| 7042 | 40100.40200.41100.54700.56100.61800.254500.370800.2761000 | DESHUTTERING OF OHT TOP SLAB | 7d | 2026-06-06 | 2026-06-12 | 7040FS+7d |  | RGA - STRUCTURE | 7861062 |
| 7043 | 40100.40200.41100.54700.56100.61800.254500.411800 | **LMR BOTTOM & TOP SLAB** | 43d | 2026-05-05 | 2026-06-17 |  | start no earlier than 2026-05-05 | RGA - STRUCTURE | 7811272 |
| 7044 | 40100.40200.41100.54700.56100.61800.254500.411800.2761100 | LMR COLUMNS / WALLS | 15d | 2026-05-05 | 2026-05-19 | 7036 |  | RGA - STRUCTURE | 7861072 |
| 7045 | 40100.40200.41100.54700.56100.61800.254500.411800.2761200 | LMR TOP SLAB | 20d | 2026-05-20 | 2026-06-08 | 7044 |  | RGA - STRUCTURE | 7861082 |
| 7046 | 40100.40200.41100.54700.56100.61800.254500.411800.2761300 | DESHUTTERING | 8d | 2026-06-09 | 2026-06-17 | 7045 |  | RGA - STRUCTURE | 7861092 |
| 7047 | 40100.40200.41100.54700.56100.59100 | **Civil Finishing works (Brick work, Plaster,conduiting, concled plumbing, waterproofing)** | 648.5d | 2025-04-01 | 2027-01-09 |  | start no earlier than 2025-04-01 | RGA -FINISHING | 7421275 |
| 7048 | 40100.40200.41100.54700.56100.59100.61200 | **Flat finishing works** | 492d | 2025-04-01 | 2026-08-05 |  | start no earlier than 2025-04-01 | RGA -FINISHING | 7421295 |
| 7049 | 40100.40200.41100.54700.56100.59100.61200.319100 | **Ground FLOOR** | 424d | 2025-04-16 | 2026-06-13 |  | start no earlier than 2025-04-16 | RGA -FINISHING | 7422335 |
| 7050 | 40100.40200.41100.54700.56100.59100.61200.319100.2761400 | BALCONY RAILING FIXING | 9d | 2025-08-10 | 2025-08-18 | 6940FS-31d |  | RGA -FINISHING | 7429135 |
| 7051 | 40100.40200.41100.54700.56100.59100.61200.319100.2761500 | Block work | 8d | 2025-05-08 | 2025-05-15 | 7055 |  | RGA -FINISHING | 7429145 |
| 7052 | 40100.40200.41100.54700.56100.59100.61200.319100.2761600 | CONCEALED ELEC CONDUITING & ITS FINISHING | 5d | 2026-06-09 | 2026-06-13 | 6932FS-8.5d |  | RGA -FINISHING | 7429155 |
| 7053 | 40100.40200.41100.54700.56100.59100.61200.319100.2761700 | PLASTER APPLICATION | 6d | 2025-04-16 | 2025-04-21 | 7231 |  | RGA -FINISHING | 7429165 |
| 7054 | 40100.40200.41100.54700.56100.59100.61200.319100.2761800 | CONCEALED PLUMBING | 8d | 2025-04-22 | 2025-04-29 | 7053 |  | RGA -FINISHING | 7429175 |
| 7055 | 40100.40200.41100.54700.56100.59100.61200.319100.2761900 | WATERPROOFING WORK FOR TOILETS, KITCHEN SUNK & PLANTERS | 8d | 2025-04-30 | 2025-05-07 | 7054 |  | RGA -FINISHING | 7429185 |

Notes:
- 7033: AVg Slab Cycle of 21 days

| ID | WBS | Task | Duration | Start | Finish | Predecessors | Constraint | Calendar | Unique_Task_ID |
| --- | --- | --- | --- | --- | --- | --- | --- | --- | --- |
| 7056 | 40100.40200.41100.54700.56100.59100.61200.319000 | **1ST FLOOR** | 114d | 2025-07-29 | 2025-11-19 |  | start no earlier than 2025-07-29 | RGA -FINISHING | 7422325 |
| 7057 | 40100.40200.41100.54700.56100.59100.61200.319000.2762000 | BALCONY RAILING FIXING | 9d | 2025-09-01 | 2025-09-09 | 6944FS-30d |  | RGA -FINISHING | 7429195 |
| 7058 | 40100.40200.41100.54700.56100.59100.61200.319000.2762100 | Block work | 8d | 2025-11-12 | 2025-11-19 | 7062 |  | RGA -FINISHING | 7429205 |
| 7059 | 40100.40200.41100.54700.56100.59100.61200.319000.2762200 | CONCEALED ELEC CONDUITING & ITS FINISHING | 5d | 2025-07-29 | 2025-08-02 | 6936FS-7d |  | RGA -FINISHING | 7429215 |
| 7060 | 40100.40200.41100.54700.56100.59100.61200.319000.2762300 | PLASTER APPLICATION | 6d | 2025-10-21 | 2025-10-26 | 7244FS+35d |  | RGA -FINISHING | 7429225 |
| 7061 | 40100.40200.41100.54700.56100.59100.61200.319000.2762400 | CONCEALED PLUMBING | 8d | 2025-10-27 | 2025-11-03 | 7060 |  | RGA -FINISHING | 7429235 |
| 7062 | 40100.40200.41100.54700.56100.59100.61200.319000.2762500 | WATERPROOFING WORK FOR TOILETS, KITCHEN SUNK & PLANTERS | 8d | 2025-11-04 | 2025-11-11 | 7061 |  | RGA -FINISHING | 7429245 |
| 7063 | 40100.40200.41100.54700.56100.59100.61200.318900 | **2nd FLOOR** | 88d | 2025-09-03 | 2025-11-29 |  | start no earlier than 2025-09-03 | RGA -FINISHING | 7422315 |
| 7064 | 40100.40200.41100.54700.56100.59100.61200.318900.2762600 | BALCONY RAILING FIXING | 9d | 2025-09-16 | 2025-09-24 | 6948FS-31d |  | RGA -FINISHING | 7429255 |
| 7065 | 40100.40200.41100.54700.56100.59100.61200.318900.2762700 | Block work | 8d | 2025-11-22 | 2025-11-29 | 7069 |  | RGA -FINISHING | 7429265 |
| 7066 | 40100.40200.41100.54700.56100.59100.61200.318900.2762800 | CONCEALED ELEC CONDUITING & ITS FINISHING | 5d | 2025-09-03 | 2025-09-07 | 6940FS-7d |  | RGA -FINISHING | 7429275 |
| 7067 | 40100.40200.41100.54700.56100.59100.61200.318900.2762900 | PLASTER APPLICATION | 6d | 2025-10-31 | 2025-11-05 | 7257FS+30d |  | RGA -FINISHING | 7429285 |
| 7068 | 40100.40200.41100.54700.56100.59100.61200.318900.2763000 | CONCEALED PLUMBING | 8d | 2025-11-06 | 2025-11-13 | 7067 |  | RGA -FINISHING | 7429295 |
| 7069 | 40100.40200.41100.54700.56100.59100.61200.318900.2763100 | WATERPROOFING WORK FOR TOILETS, KITCHEN SUNK & PLANTERS | 8d | 2025-11-14 | 2025-11-21 | 7068 |  | RGA -FINISHING | 7429305 |
| 7070 | 40100.40200.41100.54700.56100.59100.61200.318800 | **3rd FLOOR** | 92d | 2025-09-24 | 2025-12-24 |  | start no earlier than 2025-09-24 | RGA -FINISHING | 7422305 |
| 7071 | 40100.40200.41100.54700.56100.59100.61200.318800.2763200 | BALCONY RAILING FIXING | 9d | 2025-10-11 | 2025-10-19 | 6952FS-15d |  | RGA -FINISHING | 7429315 |
| 7072 | 40100.40200.41100.54700.56100.59100.61200.318800.2763300 | Block work | 8d | 2025-12-17 | 2025-12-24 | 7076 |  | RGA -FINISHING | 7429325 |
| 7073 | 40100.40200.41100.54700.56100.59100.61200.318800.2763400 | CONCEALED ELEC CONDUITING & ITS FINISHING | 5d | 2025-09-24 | 2025-09-28 | 6944FS-7d |  | RGA -FINISHING | 7429335 |
| 7074 | 40100.40200.41100.54700.56100.59100.61200.318800.2763500 | PLASTER APPLICATION | 6d | 2025-11-25 | 2025-11-30 | 7270FS+30d |  | RGA -FINISHING | 7429345 |
| 7075 | 40100.40200.41100.54700.56100.59100.61200.318800.2763600 | CONCEALED PLUMBING | 8d | 2025-12-01 | 2025-12-08 | 7074 |  | RGA -FINISHING | 7429355 |
| 7076 | 40100.40200.41100.54700.56100.59100.61200.318800.2763700 | WATERPROOFING WORK FOR TOILETS, KITCHEN SUNK & PLANTERS | 8d | 2025-12-09 | 2025-12-16 | 7075 |  | RGA -FINISHING | 7429365 |
| 7077 | 40100.40200.41100.54700.56100.59100.61200.318700 | **4th FLOOR** | 85d | 2025-10-10 | 2026-01-02 |  | start no earlier than 2025-10-10 | RGA -FINISHING | 7422295 |
| 7078 | 40100.40200.41100.54700.56100.59100.61200.318700.2763800 | BALCONY RAILING FIXING | 9d | 2025-10-20 | 2025-10-28 | 6956FS-16d |  | RGA -FINISHING | 7429375 |
| 7079 | 40100.40200.41100.54700.56100.59100.61200.318700.2763900 | Block work | 8d | 2025-12-26 | 2026-01-02 | 7083 |  | RGA -FINISHING | 7429385 |
| 7080 | 40100.40200.41100.54700.56100.59100.61200.318700.2764000 | CONCEALED ELEC CONDUITING & ITS FINISHING | 5d | 2025-10-10 | 2025-10-14 | 6948FS-7d |  | RGA -FINISHING | 7429395 |
| 7081 | 40100.40200.41100.54700.56100.59100.61200.318700.2764100 | PLASTER APPLICATION | 6d | 2025-12-04 | 2025-12-09 | 7283FS+30d |  | RGA -FINISHING | 7429405 |
| 7082 | 40100.40200.41100.54700.56100.59100.61200.318700.2764200 | CONCEALED PLUMBING | 8d | 2025-12-10 | 2025-12-17 | 7081 |  | RGA -FINISHING | 7429415 |
| 7083 | 40100.40200.41100.54700.56100.59100.61200.318700.2764300 | WATERPROOFING WORK FOR TOILETS, KITCHEN SUNK & PLANTERS | 8d | 2025-12-18 | 2025-12-25 | 7082 |  | RGA -FINISHING | 7429425 |

| ID | WBS | Task | Duration | Start | Finish | Predecessors | Constraint | Calendar | Unique_Task_ID |
| --- | --- | --- | --- | --- | --- | --- | --- | --- | --- |
| 7084 | 40100.40200.41100.54700.56100.59100.61200.318600 | **5th FLOOR** | 76d | 2025-10-19 | 2026-01-02 |  | start no earlier than 2025-10-19 | RGA -FINISHING | 7422285 |
| 7085 | 40100.40200.41100.54700.56100.59100.61200.318600.2764400 | BALCONY RAILING FIXING | 9d | 2025-10-30 | 2025-11-07 | 6960FS-15d |  | RGA -FINISHING | 7429435 |
| 7086 | 40100.40200.41100.54700.56100.59100.61200.318600.2764500 | Block work | 8d | 2025-12-26 | 2026-01-02 | 7090 |  | RGA -FINISHING | 7429445 |
| 7087 | 40100.40200.41100.54700.56100.59100.61200.318600.2764600 | CONCEALED ELEC CONDUITING & ITS FINISHING | 5d | 2025-10-19 | 2025-10-23 | 6952FS-7d |  | RGA -FINISHING | 7429455 |
| 7088 | 40100.40200.41100.54700.56100.59100.61200.318600.2764700 | PLASTER APPLICATION | 6d | 2025-12-04 | 2025-12-09 | 7283FS+30d |  | RGA -FINISHING | 7429465 |
| 7089 | 40100.40200.41100.54700.56100.59100.61200.318600.2764800 | CONCEALED PLUMBING | 8d | 2025-12-10 | 2025-12-17 | 7088 |  | RGA -FINISHING | 7429475 |
| 7090 | 40100.40200.41100.54700.56100.59100.61200.318600.2764900 | WATERPROOFING WORK FOR TOILETS, KITCHEN SUNK & PLANTERS | 8d | 2025-12-18 | 2025-12-25 | 7089 |  | RGA -FINISHING | 7429485 |
| 7091 | 40100.40200.41100.54700.56100.59100.61200.318500 | **6th FLOOR** | 71d | 2025-10-29 | 2026-01-07 |  | start no earlier than 2025-10-29 | RGA -FINISHING | 7422275 |
| 7092 | 40100.40200.41100.54700.56100.59100.61200.318500.2765000 | BALCONY RAILING FIXING | 9d | 2025-11-08 | 2025-11-16 | 6964FS-15d |  | RGA -FINISHING | 7429495 |
| 7093 | 40100.40200.41100.54700.56100.59100.61200.318500.2765100 | Block work | 8d | 2025-12-31 | 2026-01-07 | 7097 |  | RGA -FINISHING | 7429505 |
| 7094 | 40100.40200.41100.54700.56100.59100.61200.318500.2765200 | CONCEALED ELEC CONDUITING & ITS FINISHING | 5d | 2025-10-29 | 2025-11-02 | 6956FS-7d |  | RGA -FINISHING | 7429515 |
| 7095 | 40100.40200.41100.54700.56100.59100.61200.318500.2765300 | PLASTER APPLICATION | 6d | 2025-12-09 | 2025-12-14 | 7296FS+25d |  | RGA -FINISHING | 7429525 |
| 7096 | 40100.40200.41100.54700.56100.59100.61200.318500.2765400 | CONCEALED PLUMBING | 8d | 2025-12-15 | 2025-12-22 | 7095 |  | RGA -FINISHING | 7429535 |
| 7097 | 40100.40200.41100.54700.56100.59100.61200.318500.2765500 | WATERPROOFING WORK FOR TOILETS, KITCHEN SUNK & PLANTERS | 8d | 2025-12-23 | 2025-12-30 | 7096 |  | RGA -FINISHING | 7429545 |
| 7098 | 40100.40200.41100.54700.56100.59100.61200.318400 | **7th FLOOR** | 71d | 2025-11-07 | 2026-01-16 |  | start no earlier than 2025-11-07 | RGA -FINISHING | 7422265 |
| 7099 | 40100.40200.41100.54700.56100.59100.61200.318400.2765600 | BALCONY RAILING FIXING | 9d | 2025-11-17 | 2025-11-25 | 6968FS-15d |  | RGA -FINISHING | 7429555 |
| 7100 | 40100.40200.41100.54700.56100.59100.61200.318400.2765700 | Block work | 8d | 2026-01-09 | 2026-01-16 | 7104 |  | RGA -FINISHING | 7429565 |
| 7101 | 40100.40200.41100.54700.56100.59100.61200.318400.2765800 | CONCEALED ELEC CONDUITING & ITS FINISHING | 5d | 2025-11-07 | 2025-11-11 | 6960FS-7d |  | RGA -FINISHING | 7429575 |
| 7102 | 40100.40200.41100.54700.56100.59100.61200.318400.2765900 | PLASTER APPLICATION | 6d | 2025-12-18 | 2025-12-23 | 7309FS+25d |  | RGA -FINISHING | 7429585 |
| 7103 | 40100.40200.41100.54700.56100.59100.61200.318400.2766000 | CONCEALED PLUMBING | 8d | 2025-12-24 | 2025-12-31 | 7102 |  | RGA -FINISHING | 7429595 |
| 7104 | 40100.40200.41100.54700.56100.59100.61200.318400.2766100 | WATERPROOFING WORK FOR TOILETS, KITCHEN SUNK & PLANTERS | 8d | 2026-01-01 | 2026-01-08 | 7103 |  | RGA -FINISHING | 7429605 |
| 7105 | 40100.40200.41100.54700.56100.59100.61200.318300 | **8th FLOOR** | 71d | 2025-11-16 | 2026-01-25 |  | start no earlier than 2025-11-16 | RGA -FINISHING | 7422255 |
| 7106 | 40100.40200.41100.54700.56100.59100.61200.318300.2766200 | BALCONY RAILING FIXING | 9d | 2025-11-26 | 2025-12-04 | 6972FS-15d |  | RGA -FINISHING | 7429615 |
| 7107 | 40100.40200.41100.54700.56100.59100.61200.318300.2766300 | Block work | 8d | 2026-01-18 | 2026-01-25 | 7111 |  | RGA -FINISHING | 7429625 |
| 7108 | 40100.40200.41100.54700.56100.59100.61200.318300.2766400 | CONCEALED ELEC CONDUITING & ITS FINISHING | 5d | 2025-11-16 | 2025-11-20 | 6964FS-7d |  | RGA -FINISHING | 7429635 |
| 7109 | 40100.40200.41100.54700.56100.59100.61200.318300.2766500 | PLASTER APPLICATION | 6d | 2025-12-27 | 2026-01-01 | 7322FS+25d |  | RGA -FINISHING | 7429645 |
| 7110 | 40100.40200.41100.54700.56100.59100.61200.318300.2766600 | CONCEALED PLUMBING | 8d | 2026-01-02 | 2026-01-09 | 7109 |  | RGA -FINISHING | 7429655 |
| 7111 | 40100.40200.41100.54700.56100.59100.61200.318300.2766700 | WATERPROOFING WORK FOR TOILETS, KITCHEN SUNK & PLANTERS | 8d | 2026-01-10 | 2026-01-17 | 7110 |  | RGA -FINISHING | 7429665 |

| ID | WBS | Task | Duration | Start | Finish | Predecessors | Constraint | Calendar | Unique_Task_ID |
| --- | --- | --- | --- | --- | --- | --- | --- | --- | --- |
| 7112 | 40100.40200.41100.54700.56100.59100.61200.318200 | **9th FLOOR** | 71d | 2025-11-25 | 2026-02-03 |  | start no earlier than 2025-11-25 | RGA -FINISHING | 7422245 |
| 7113 | 40100.40200.41100.54700.56100.59100.61200.318200.2766800 | BALCONY RAILING FIXING | 9d | 2025-12-05 | 2025-12-13 | 6976FS-15d |  | RGA -FINISHING | 7429675 |
| 7114 | 40100.40200.41100.54700.56100.59100.61200.318200.2766900 | Block work | 8d | 2026-01-27 | 2026-02-03 | 7118 |  | RGA -FINISHING | 7429685 |
| 7115 | 40100.40200.41100.54700.56100.59100.61200.318200.2767000 | CONCEALED ELEC CONDUITING & ITS FINISHING | 5d | 2025-11-25 | 2025-11-29 | 6968FS-7d |  | RGA -FINISHING | 7429695 |
| 7116 | 40100.40200.41100.54700.56100.59100.61200.318200.2767100 | PLASTER APPLICATION | 6d | 2026-01-05 | 2026-01-10 | 7335FS+25d |  | RGA -FINISHING | 7429705 |
| 7117 | 40100.40200.41100.54700.56100.59100.61200.318200.2767200 | CONCEALED PLUMBING | 8d | 2026-01-11 | 2026-01-18 | 7116 |  | RGA -FINISHING | 7429715 |
| 7118 | 40100.40200.41100.54700.56100.59100.61200.318200.2767300 | WATERPROOFING WORK FOR TOILETS, KITCHEN SUNK & PLANTERS | 8d | 2026-01-19 | 2026-01-26 | 7117 |  | RGA -FINISHING | 7429725 |
| 7119 | 40100.40200.41100.54700.56100.59100.61200.318100 | **10th FLOOR** | 71d | 2025-12-04 | 2026-02-12 |  | start no earlier than 2025-12-04 | RGA -FINISHING | 7422235 |
| 7120 | 40100.40200.41100.54700.56100.59100.61200.318100.2767400 | BALCONY RAILING FIXING | 9d | 2025-12-14 | 2025-12-22 | 6980FS-15d |  | RGA -FINISHING | 7429735 |
| 7121 | 40100.40200.41100.54700.56100.59100.61200.318100.2767500 | Block work | 8d | 2026-02-05 | 2026-02-12 | 7125 |  | RGA -FINISHING | 7429745 |
| 7122 | 40100.40200.41100.54700.56100.59100.61200.318100.2767600 | CONCEALED ELEC CONDUITING & ITS FINISHING | 5d | 2025-12-04 | 2025-12-08 | 6972FS-7d |  | RGA -FINISHING | 7429755 |
| 7123 | 40100.40200.41100.54700.56100.59100.61200.318100.2767700 | PLASTER APPLICATION | 6d | 2026-01-14 | 2026-01-19 | 7348FS+25d |  | RGA -FINISHING | 7429765 |
| 7124 | 40100.40200.41100.54700.56100.59100.61200.318100.2767800 | CONCEALED PLUMBING | 8d | 2026-01-20 | 2026-01-27 | 7123 |  | RGA -FINISHING | 7429775 |
| 7125 | 40100.40200.41100.54700.56100.59100.61200.318100.2767900 | WATERPROOFING WORK FOR TOILETS, KITCHEN SUNK & PLANTERS | 8d | 2026-01-28 | 2026-02-04 | 7124 |  | RGA -FINISHING | 7429785 |
| 7126 | 40100.40200.41100.54700.56100.59100.61200.318000 | **11th FLOOR** | 123d | 2025-12-13 | 2026-04-14 |  | start no earlier than 2025-12-13 | RGA -FINISHING | 7422225 |
| 7127 | 40100.40200.41100.54700.56100.59100.61200.318000.2768000 | BALCONY RAILING FIXING | 9d | 2025-12-23 | 2025-12-31 | 6984FS-15d |  | RGA -FINISHING | 7429795 |
| 7128 | 40100.40200.41100.54700.56100.59100.61200.318000.2768100 | Block work | 8d | 2026-04-07 | 2026-04-14 | 7132 |  | RGA -FINISHING | 7429805 |
| 7129 | 40100.40200.41100.54700.56100.59100.61200.318000.2768200 | CONCEALED ELEC CONDUITING & ITS FINISHING | 5d | 2025-12-13 | 2025-12-17 | 6976FS-7d |  | RGA -FINISHING | 7429815 |
| 7130 | 40100.40200.41100.54700.56100.59100.61200.318000.2768300 | PLASTER APPLICATION | 6d | 2026-03-16 | 2026-03-21 | 7361FS+25d |  | RGA -FINISHING | 7429825 |
| 7131 | 40100.40200.41100.54700.56100.59100.61200.318000.2768400 | CONCEALED PLUMBING | 8d | 2026-03-22 | 2026-03-29 | 7130 |  | RGA -FINISHING | 7429835 |
| 7132 | 40100.40200.41100.54700.56100.59100.61200.318000.2768500 | WATERPROOFING WORK FOR TOILETS, KITCHEN SUNK & PLANTERS | 8d | 2026-03-30 | 2026-04-06 | 7131 |  | RGA -FINISHING | 7429845 |
| 7133 | 40100.40200.41100.54700.56100.59100.61200.317900 | **12th FLOOR** | 63d | 2025-12-22 | 2026-02-22 |  | start no earlier than 2025-12-22 | RGA -FINISHING | 7422215 |
| 7134 | 40100.40200.41100.54700.56100.59100.61200.317900.2768600 | BALCONY RAILING FIXING | 9d | 2026-01-01 | 2026-01-09 | 6988FS-15d |  | RGA -FINISHING | 7429855 |
| 7135 | 40100.40200.41100.54700.56100.59100.61200.317900.2768700 | Block work | 8d | 2026-02-15 | 2026-02-22 | 7138 |  | RGA -FINISHING | 7429865 |
| 7136 | 40100.40200.41100.54700.56100.59100.61200.317900.2768800 | CONCEALED ELEC CONDUITING & ITS FINISHING | 5d | 2025-12-22 | 2025-12-26 | 6980FS-7d |  | RGA -FINISHING | 7429875 |
| 7137 | 40100.40200.41100.54700.56100.59100.61200.317900.2768900 | PLASTER APPLICATION | 6d | 2026-02-01 | 2026-02-06 | 7374FS+25d |  | RGA -FINISHING | 7429885 |
| 7138 | 40100.40200.41100.54700.56100.59100.61200.317900.2769000 | CONCEALED PLUMBING | 8d | 2026-02-07 | 2026-02-14 | 7137 |  | RGA -FINISHING | 7429895 |
| 7139 | 40100.40200.41100.54700.56100.59100.61200.317900.2769100 | WATERPROOFING WORK FOR TOILETS, KITCHEN SUNK & PLANTERS | 8d | 2026-02-15 | 2026-02-22 | 7138 |  | RGA -FINISHING | 7429905 |

| ID | WBS | Task | Duration | Start | Finish | Predecessors | Constraint | Calendar | Unique_Task_ID |
| --- | --- | --- | --- | --- | --- | --- | --- | --- | --- |
| 7140 | 40100.40200.41100.54700.56100.59100.61200.317800 | **13th FLOOR** | 85d | 2025-12-31 | 2026-03-25 |  | start no earlier than 2025-12-31 | RGA -FINISHING | 7422205 |
| 7141 | 40100.40200.41100.54700.56100.59100.61200.317800.2769200 | BALCONY RAILING FIXING | 9d | 2026-01-10 | 2026-01-18 | 6992FS-15d |  | RGA -FINISHING | 7429915 |
| 7142 | 40100.40200.41100.54700.56100.59100.61200.317800.2769300 | Block work | 8d | 2026-03-18 | 2026-03-25 | 7146 |  | RGA -FINISHING | 7429925 |
| 7143 | 40100.40200.41100.54700.56100.59100.61200.317800.2769400 | CONCEALED ELEC CONDUITING & ITS FINISHING | 5d | 2025-12-31 | 2026-01-04 | 6984FS-7d |  | RGA -FINISHING | 7429935 |
| 7144 | 40100.40200.41100.54700.56100.59100.61200.317800.2769500 | PLASTER APPLICATION | 15d | 2026-02-10 | 2026-02-24 | 7387FS+25d |  | RGA -FINISHING | 7429945 |
| 7145 | 40100.40200.41100.54700.56100.59100.61200.317800.2769600 | CONCEALED PLUMBING | 9d | 2026-02-25 | 2026-03-05 | 7144 |  | RGA -FINISHING | 7429955 |
| 7146 | 40100.40200.41100.54700.56100.59100.61200.317800.2769700 | WATERPROOFING WORK FOR TOILETS, KITCHEN SUNK & PLANTERS | 12d | 2026-03-06 | 2026-03-17 | 7145 |  | RGA -FINISHING | 7429965 |
| 7147 | 40100.40200.41100.54700.56100.59100.61200.317700 | **14th FLOOR** | 87d | 2026-01-09 | 2026-04-05 |  | start no earlier than 2026-01-09 | RGA -FINISHING | 7422195 |
| 7148 | 40100.40200.41100.54700.56100.59100.61200.317700.2769800 | BALCONY RAILING FIXING | 9d | 2026-01-19 | 2026-01-27 | 6996FS-16d |  | RGA -FINISHING | 7429975 |
| 7149 | 40100.40200.41100.54700.56100.59100.61200.317700.2769900 | Block work | 8d | 2026-03-29 | 2026-04-05 | 7153 |  | RGA -FINISHING | 7429985 |
| 7150 | 40100.40200.41100.54700.56100.59100.61200.317700.2770000 | CONCEALED ELEC CONDUITING & ITS FINISHING | 5d | 2026-01-09 | 2026-01-13 | 6988FS-7d |  | RGA -FINISHING | 7429995 |
| 7151 | 40100.40200.41100.54700.56100.59100.61200.317700.2770100 | PLASTER APPLICATION | 15d | 2026-02-21 | 2026-03-07 | 7400FS+25d |  | RGA -FINISHING | 7430005 |
| 7152 | 40100.40200.41100.54700.56100.59100.61200.317700.2770200 | CONCEALED PLUMBING | 9d | 2026-03-08 | 2026-03-16 | 7151 |  | RGA -FINISHING | 7430015 |
| 7153 | 40100.40200.41100.54700.56100.59100.61200.317700.2770300 | WATERPROOFING WORK FOR TOILETS, KITCHEN SUNK & PLANTERS | 12d | 2026-03-17 | 2026-03-28 | 7152 |  | RGA -FINISHING | 7430025 |
| 7154 | 40100.40200.41100.54700.56100.59100.61200.317600 | **15th FLOOR** | 87d | 2026-01-18 | 2026-04-14 |  | start no earlier than 2026-01-18 | RGA -FINISHING | 7422185 |
| 7155 | 40100.40200.41100.54700.56100.59100.61200.317600.2770400 | BALCONY RAILING FIXING | 9d | 2026-01-29 | 2026-02-06 | 7000FS-15d |  | RGA -FINISHING | 7430035 |
| 7156 | 40100.40200.41100.54700.56100.59100.61200.317600.2770500 | Block work | 8d | 2026-04-07 | 2026-04-14 | 7160 |  | RGA -FINISHING | 7430045 |
| 7157 | 40100.40200.41100.54700.56100.59100.61200.317600.2770600 | CONCEALED ELEC CONDUITING & ITS FINISHING | 5d | 2026-01-18 | 2026-01-22 | 6992FS-7d |  | RGA -FINISHING | 7430055 |
| 7158 | 40100.40200.41100.54700.56100.59100.61200.317600.2770700 | PLASTER APPLICATION | 15d | 2026-03-02 | 2026-03-16 | 7413FS+25d |  | RGA -FINISHING | 7430065 |
| 7159 | 40100.40200.41100.54700.56100.59100.61200.317600.2770800 | CONCEALED PLUMBING | 9d | 2026-03-17 | 2026-03-25 | 7158 |  | RGA -FINISHING | 7430075 |
| 7160 | 40100.40200.41100.54700.56100.59100.61200.317600.2770900 | WATERPROOFING WORK FOR TOILETS, KITCHEN SUNK & PLANTERS | 12d | 2026-03-26 | 2026-04-06 | 7159 |  | RGA -FINISHING | 7430085 |
| 7161 | 40100.40200.41100.54700.56100.59100.61200.317500 | **16th FLOOR** | 87d | 2026-01-28 | 2026-04-24 |  | start no earlier than 2026-01-28 | RGA -FINISHING | 7422175 |
| 7162 | 40100.40200.41100.54700.56100.59100.61200.317500.2771000 | BALCONY RAILING FIXING | 9d | 2026-02-06 | 2026-02-14 | 7004FS-15d |  | RGA -FINISHING | 7430095 |
| 7163 | 40100.40200.41100.54700.56100.59100.61200.317500.2771100 | Block work | 8d | 2026-04-17 | 2026-04-24 | 7167 |  | RGA -FINISHING | 7430105 |
| 7164 | 40100.40200.41100.54700.56100.59100.61200.317500.2771200 | CONCEALED ELEC CONDUITING & ITS FINISHING | 5d | 2026-01-28 | 2026-02-01 | 6996FS-7d |  | RGA -FINISHING | 7430115 |
| 7165 | 40100.40200.41100.54700.56100.59100.61200.317500.2771300 | PLASTER APPLICATION | 15d | 2026-03-12 | 2026-03-26 | 7426FS+25d |  | RGA -FINISHING | 7430125 |
| 7166 | 40100.40200.41100.54700.56100.59100.61200.317500.2771400 | CONCEALED PLUMBING | 9d | 2026-03-27 | 2026-04-04 | 7165 |  | RGA -FINISHING | 7430135 |
| 7167 | 40100.40200.41100.54700.56100.59100.61200.317500.2771500 | WATERPROOFING WORK FOR TOILETS, KITCHEN SUNK & PLANTERS | 12d | 2026-04-05 | 2026-04-16 | 7166 |  | RGA -FINISHING | 7430145 |

| ID | WBS | Task | Duration | Start | Finish | Predecessors | Constraint | Calendar | Unique_Task_ID |
| --- | --- | --- | --- | --- | --- | --- | --- | --- | --- |
| 7168 | 40100.40200.41100.54700.56100.59100.61200.317400 | **17th FLOOR** | 86d | 2026-02-06 | 2026-05-02 |  | start no earlier than 2026-02-06 | RGA -FINISHING | 7422165 |
| 7169 | 40100.40200.41100.54700.56100.59100.61200.317400.2771600 | BALCONY RAILING FIXING | 9d | 2026-02-14 | 2026-02-22 | 7008FS-15d |  | RGA -FINISHING | 7430155 |
| 7170 | 40100.40200.41100.54700.56100.59100.61200.317400.2771700 | Block work | 8d | 2026-04-25 | 2026-05-02 | 7174 |  | RGA -FINISHING | 7430165 |
| 7171 | 40100.40200.41100.54700.56100.59100.61200.317400.2771800 | CONCEALED ELEC CONDUITING & ITS FINISHING | 5d | 2026-02-06 | 2026-02-10 | 7000FS-7d |  | RGA -FINISHING | 7430175 |
| 7172 | 40100.40200.41100.54700.56100.59100.61200.317400.2771900 | PLASTER APPLICATION | 15d | 2026-03-20 | 2026-04-03 | 7439FS+25d |  | RGA -FINISHING | 7430185 |
| 7173 | 40100.40200.41100.54700.56100.59100.61200.317400.2772000 | CONCEALED PLUMBING | 9d | 2026-04-04 | 2026-04-12 | 7172 |  | RGA -FINISHING | 7430195 |
| 7174 | 40100.40200.41100.54700.56100.59100.61200.317400.2772100 | WATERPROOFING WORK FOR TOILETS, KITCHEN SUNK & PLANTERS | 12d | 2026-04-13 | 2026-04-24 | 7173 |  | RGA -FINISHING | 7430205 |
| 7175 | 40100.40200.41100.54700.56100.59100.61200.317300 | **18th FLOOR** | 78d | 2026-02-14 | 2026-05-02 |  | start no earlier than 2026-02-14 | RGA -FINISHING | 7422155 |
| 7176 | 40100.40200.41100.54700.56100.59100.61200.317300.2772200 | BALCONY RAILING FIXING | 9d | 2026-02-26 | 2026-03-06 | 7012FS-15d |  | RGA -FINISHING | 7430215 |
| 7177 | 40100.40200.41100.54700.56100.59100.61200.317300.2772300 | Block work | 8d | 2026-04-25 | 2026-05-02 | 7181 |  | RGA -FINISHING | 7430225 |
| 7178 | 40100.40200.41100.54700.56100.59100.61200.317300.2772400 | CONCEALED ELEC CONDUITING & ITS FINISHING | 5d | 2026-02-14 | 2026-02-18 | 7004FS-7d |  | RGA -FINISHING | 7430235 |
| 7179 | 40100.40200.41100.54700.56100.59100.61200.317300.2772500 | PLASTER APPLICATION | 15d | 2026-03-20 | 2026-04-03 | 7439FS+25d |  | RGA -FINISHING | 7430245 |
| 7180 | 40100.40200.41100.54700.56100.59100.61200.317300.2772600 | CONCEALED PLUMBING | 9d | 2026-04-04 | 2026-04-12 | 7179 |  | RGA -FINISHING | 7430255 |
| 7181 | 40100.40200.41100.54700.56100.59100.61200.317300.2772700 | WATERPROOFING WORK FOR TOILETS, KITCHEN SUNK & PLANTERS | 12d | 2026-04-13 | 2026-04-24 | 7180 |  | RGA -FINISHING | 7430265 |
| 7182 | 40100.40200.41100.54700.56100.59100.61200.317200 | **19th FLOOR** | 78d | 2026-02-22 | 2026-05-10 |  | start no earlier than 2026-02-22 | RGA -FINISHING | 7422145 |
| 7183 | 40100.40200.41100.54700.56100.59100.61200.317200.2772800 | BALCONY RAILING FIXING | 9d | 2026-03-06 | 2026-03-14 | 7016FS-15d |  | RGA -FINISHING | 7430275 |
| 7184 | 40100.40200.41100.54700.56100.59100.61200.317200.2772900 | Block work | 8d | 2026-05-03 | 2026-05-10 | 7188 |  | RGA -FINISHING | 7430285 |
| 7185 | 40100.40200.41100.54700.56100.59100.61200.317200.2773000 | CONCEALED ELEC CONDUITING & ITS FINISHING | 5d | 2026-02-22 | 2026-02-26 | 7008FS-7d |  | RGA -FINISHING | 7430295 |
| 7186 | 40100.40200.41100.54700.56100.59100.61200.317200.2773100 | PLASTER APPLICATION | 15d | 2026-03-28 | 2026-04-11 | 7452FS+25d |  | RGA -FINISHING | 7430305 |
| 7187 | 40100.40200.41100.54700.56100.59100.61200.317200.2773200 | CONCEALED PLUMBING | 9d | 2026-04-12 | 2026-04-20 | 7186 |  | RGA -FINISHING | 7430315 |
| 7188 | 40100.40200.41100.54700.56100.59100.61200.317200.2773300 | WATERPROOFING WORK FOR TOILETS, KITCHEN SUNK & PLANTERS | 12d | 2026-04-21 | 2026-05-02 | 7187 |  | RGA -FINISHING | 7430325 |
| 7189 | 40100.40200.41100.54700.56100.59100.61200.317100 | **20th FLOOR** | 78d | 2026-03-06 | 2026-05-22 |  | start no earlier than 2026-03-06 | RGA -FINISHING | 7422135 |
| 7190 | 40100.40200.41100.54700.56100.59100.61200.317100.2773400 | BALCONY RAILING FIXING | 9d | 2026-03-14 | 2026-03-22 | 7020FS-15d |  | RGA -FINISHING | 7430335 |
| 7191 | 40100.40200.41100.54700.56100.59100.61200.317100.2773500 | Block work | 8d | 2026-05-15 | 2026-05-22 | 7195 |  | RGA -FINISHING | 7430345 |
| 7192 | 40100.40200.41100.54700.56100.59100.61200.317100.2773600 | CONCEALED ELEC CONDUITING & ITS FINISHING | 5d | 2026-03-06 | 2026-03-10 | 7012FS-7d |  | RGA -FINISHING | 7430355 |
| 7193 | 40100.40200.41100.54700.56100.59100.61200.317100.2773700 | PLASTER APPLICATION | 15d | 2026-04-09 | 2026-04-23 | 7465FS+25d |  | RGA -FINISHING | 7430365 |
| 7194 | 40100.40200.41100.54700.56100.59100.61200.317100.2773800 | CONCEALED PLUMBING | 9d | 2026-04-24 | 2026-05-02 | 7193 |  | RGA -FINISHING | 7430375 |
| 7195 | 40100.40200.41100.54700.56100.59100.61200.317100.2773900 | WATERPROOFING WORK FOR TOILETS, KITCHEN SUNK & PLANTERS | 12d | 2026-05-03 | 2026-05-14 | 7194 |  | RGA -FINISHING | 7430385 |

Notes:
- 7177: Last floor BW completion 2 months post Last RCC
- 7184: Last floor BW completion 2 months post Last RCC
- 7191: Last floor BW completion 2 months post Last RCC

| ID | WBS | Task | Duration | Start | Finish | Predecessors | Constraint | Calendar | Unique_Task_ID |
| --- | --- | --- | --- | --- | --- | --- | --- | --- | --- |
| 7196 | 40100.40200.41100.54700.56100.59100.61200.317000 | **21th FLOOR** | 78d | 2026-03-14 | 2026-05-30 |  | start no earlier than 2026-03-14 | RGA -FINISHING | 7422125 |
| 7197 | 40100.40200.41100.54700.56100.59100.61200.317000.2774000 | BALCONY RAILING FIXING | 9d | 2026-03-22 | 2026-03-30 | 7024FS-15d |  | RGA -FINISHING | 7430395 |
| 7198 | 40100.40200.41100.54700.56100.59100.61200.317000.2774100 | Block work | 8d | 2026-05-23 | 2026-05-30 | 7202 |  | RGA -FINISHING | 7430405 |
| 7199 | 40100.40200.41100.54700.56100.59100.61200.317000.2774200 | CONCEALED ELEC CONDUITING & ITS FINISHING | 5d | 2026-03-14 | 2026-03-18 | 7016FS-7d |  | RGA -FINISHING | 7430415 |
| 7200 | 40100.40200.41100.54700.56100.59100.61200.317000.2774300 | PLASTER APPLICATION | 15d | 2026-04-17 | 2026-05-01 | 7478FS+25d |  | RGA -FINISHING | 7430425 |
| 7201 | 40100.40200.41100.54700.56100.59100.61200.317000.2774400 | CONCEALED PLUMBING | 9d | 2026-05-02 | 2026-05-10 | 7200 |  | RGA -FINISHING | 7430435 |
| 7202 | 40100.40200.41100.54700.56100.59100.61200.317000.2774500 | WATERPROOFING WORK FOR TOILETS, KITCHEN SUNK & PLANTERS | 12d | 2026-05-11 | 2026-05-22 | 7201 |  | RGA -FINISHING | 7430445 |
| 7203 | 40100.40200.41100.54700.56100.59100.61200.316900 | **22th FLOOR** | 78d | 2026-03-22 | 2026-06-07 |  | start no earlier than 2026-03-22 | RGA -FINISHING | 7422115 |
| 7204 | 40100.40200.41100.54700.56100.59100.61200.316900.2774600 | BALCONY RAILING FIXING | 9d | 2026-03-30 | 2026-04-07 | 7028FS-15d |  | RGA -FINISHING | 7430455 |
| 7205 | 40100.40200.41100.54700.56100.59100.61200.316900.2774700 | Block work | 8d | 2026-05-31 | 2026-06-07 | 7209 |  | RGA -FINISHING | 7430465 |
| 7206 | 40100.40200.41100.54700.56100.59100.61200.316900.2774800 | CONCEALED ELEC CONDUITING & ITS FINISHING | 5d | 2026-03-22 | 2026-03-26 | 7020FS-7d |  | RGA -FINISHING | 7430475 |
| 7207 | 40100.40200.41100.54700.56100.59100.61200.316900.2774900 | PLASTER APPLICATION | 15d | 2026-04-25 | 2026-05-09 | 7491FS+25d |  | RGA -FINISHING | 7430485 |
| 7208 | 40100.40200.41100.54700.56100.59100.61200.316900.2775000 | CONCEALED PLUMBING | 9d | 2026-05-10 | 2026-05-18 | 7207 |  | RGA -FINISHING | 7430495 |
| 7209 | 40100.40200.41100.54700.56100.59100.61200.316900.2775100 | WATERPROOFING WORK FOR TOILETS, KITCHEN SUNK & PLANTERS | 12d | 2026-05-19 | 2026-05-30 | 7208 |  | RGA -FINISHING | 7430505 |
| 7210 | 40100.40200.41100.54700.56100.59100.61200.316800 | **23th FLOOR** | 98d | 2026-03-30 | 2026-07-05 |  | start no earlier than 2026-03-30 | RGA -FINISHING | 7422105 |
| 7211 | 40100.40200.41100.54700.56100.59100.61200.316800.2775200 | BALCONY RAILING FIXING | 9d | 2026-04-22 | 2026-04-30 | 7032 |  | RGA -FINISHING | 7430515 |
| 7212 | 40100.40200.41100.54700.56100.59100.61200.316800.2775300 | Block work | 8d | 2026-06-28 | 2026-07-05 | 7216 |  | RGA -FINISHING | 7430525 |
| 7213 | 40100.40200.41100.54700.56100.59100.61200.316800.2775400 | CONCEALED ELEC CONDUITING & ITS FINISHING | 5d | 2026-03-30 | 2026-04-03 | 7024FS-7d |  | RGA -FINISHING | 7430535 |
| 7214 | 40100.40200.41100.54700.56100.59100.61200.316800.2775500 | PLASTER APPLICATION | 15d | 2026-05-23 | 2026-06-06 | 7504FS+45d |  | RGA -FINISHING | 7430545 |
| 7215 | 40100.40200.41100.54700.56100.59100.61200.316800.2775600 | CONCEALED PLUMBING | 9d | 2026-06-07 | 2026-06-15 | 7214 |  | RGA -FINISHING | 7430555 |
| 7216 | 40100.40200.41100.54700.56100.59100.61200.316800.2775700 | WATERPROOFING WORK FOR TOILETS, KITCHEN SUNK & PLANTERS | 12d | 2026-06-16 | 2026-06-27 | 7215 |  | RGA -FINISHING | 7430565 |
| 7217 | 40100.40200.41100.54700.56100.59100.61200.316700 | **24th FLOOR** | 98d | 2026-04-07 | 2026-07-13 |  | start no earlier than 2026-04-07 | RGA -FINISHING | 7422095 |
| 7218 | 40100.40200.41100.54700.56100.59100.61200.316700.2775800 | BALCONY RAILING FIXING | 9d | 2026-05-01 | 2026-05-09 | 7211 |  | RGA -FINISHING | 7430575 |
| 7219 | 40100.40200.41100.54700.56100.59100.61200.316700.2775900 | Block work | 8d | 2026-07-06 | 2026-07-13 | 7223 |  | RGA -FINISHING | 7430585 |
| 7220 | 40100.40200.41100.54700.56100.59100.61200.316700.2776000 | CONCEALED ELEC CONDUITING & ITS FINISHING | 5d | 2026-04-07 | 2026-04-11 | 7028FS-7d |  | RGA -FINISHING | 7430595 |
| 7221 | 40100.40200.41100.54700.56100.59100.61200.316700.2776100 | PLASTER APPLICATION | 15d | 2026-05-31 | 2026-06-14 | 7517FS+45d |  | RGA -FINISHING | 7430605 |
| 7222 | 40100.40200.41100.54700.56100.59100.61200.316700.2776200 | CONCEALED PLUMBING | 9d | 2026-06-15 | 2026-06-23 | 7221 |  | RGA -FINISHING | 7430615 |
| 7223 | 40100.40200.41100.54700.56100.59100.61200.316700.2776300 | WATERPROOFING WORK FOR TOILETS, KITCHEN SUNK & PLANTERS | 12d | 2026-06-24 | 2026-07-05 | 7222 |  | RGA -FINISHING | 7430625 |

Notes:
- 7198: Last floor BW completion 2 months post Last RCC
- 7205: Last floor BW completion 2 months post Last RCC
- 7212: Last floor BW completion 2 months post Last RCC
- 7219: Last floor BW completion 2 months post Last RCC

| ID | WBS | Task | Duration | Start | Finish | Predecessors | Constraint | Calendar | Unique_Task_ID |
| --- | --- | --- | --- | --- | --- | --- | --- | --- | --- |
| 7224 | 40100.40200.41100.54700.56100.59100.61200.316600 | **25thFLOOR** | 113d | 2026-04-15 | 2026-08-05 |  | start no earlier than 2026-04-15 | RGA -FINISHING | 7422085 |
| 7225 | 40100.40200.41100.54700.56100.59100.61200.316600.2776400 | BALCONY RAILING FIXING | 9d | 2026-05-10 | 2026-05-18 | 7218 |  | RGA -FINISHING | 7430635 |
| 7226 | 40100.40200.41100.54700.56100.59100.61200.316600.2776500 | Block work | 8d | 2026-07-29 | 2026-08-05 | 7230 |  | RGA -FINISHING | 7430645 |
| 7227 | 40100.40200.41100.54700.56100.59100.61200.316600.2776600 | CONCEALED ELEC CONDUITING & ITS FINISHING | 5d | 2026-04-15 | 2026-04-19 | 7032FS-7d |  | RGA -FINISHING | 7430655 |
| 7228 | 40100.40200.41100.54700.56100.59100.61200.316600.2776700 | PLASTER APPLICATION | 15d | 2026-06-23 | 2026-07-07 | 7530FS+45d |  | RGA -FINISHING | 7430665 |
| 7229 | 40100.40200.41100.54700.56100.59100.61200.316600.2776800 | CONCEALED PLUMBING | 9d | 2026-07-08 | 2026-07-16 | 7228 |  | RGA -FINISHING | 7430675 |
| 7230 | 40100.40200.41100.54700.56100.59100.61200.316600.2776900 | WATERPROOFING WORK FOR TOILETS, KITCHEN SUNK & PLANTERS | 12d | 2026-07-17 | 2026-07-28 | 7229 |  | RGA -FINISHING | 7430685 |
| 7231 | 40100.40200.41100.54700.56100.59100.61200.370900 | **LMR(To be deleted)** | 15d | 2025-04-01 | 2025-04-15 |  | start no earlier than 2025-04-01 | RGA -FINISHING | 7422355 |
| 7232 | 40100.40200.41100.54700.56100.59100.61200.370900.2777000 | Block work | 8d | 2025-04-01 | 2025-04-08 |  | start no earlier than 2025-04-01 | RGA -FINISHING | 7431175 |
| 7233 | 40100.40200.41100.54700.56100.59100.61200.370900.2777100 | CONCEALED ELEC CONDUITING & ITS FINISHING | 7d | 2025-04-01 | 2025-04-07 |  | start no earlier than 2025-04-01 | RGA -FINISHING | 7431185 |
| 7234 | 40100.40200.41100.54700.56100.59100.61200.370900.2777200 | PLASTER APPLICATION | 15d | 2025-04-01 | 2025-04-15 |  | start no earlier than 2025-04-01 | RGA -FINISHING | 7431195 |
| 7235 | 40100.40200.41100.54700.56100.59100.61200.370900.2777300 | DOOR FRAME FIXING | 3d | 2025-04-01 | 2025-04-03 |  | start no earlier than 2025-04-01 | RGA -FINISHING | 7431205 |
| 7236 | 40100.40200.41100.54700.56100.59100.508300 | **Terrace Finishing works** | 30d | 2026-12-10 | 2027-01-09 |  | start no earlier than 2026-12-10 | RGA -FINISHING | 7422395 |
| 7237 | 40100.40200.41100.54700.56100.59100.508300.2452900 | Terrace Waterproofing work | 30d | 2026-12-10 | 2027-01-09 | 7239FS+7d |  | RGA -FINISHING | 7422425 |
| 7238 | 40100.40200.41100.54700.56100.59100.508400 | **EXTERNAL Painting** | 165d | 2026-06-21 | 2026-12-03 |  | start no earlier than 2026-06-21 | RGA -FINISHING | 7422405 |
| 7239 | 40100.40200.41100.54700.56100.59100.508400.2453000 | 2nd coat | 165d | 2026-06-21 | 2026-12-03 | 7036FS+47.5d |  | RGA -FINISHING | 7422435 |
| 7240 | 40100.40200.41100.54700.56100.58500 | **Flat internal finishing & services works** | 432d | 2025-09-10 | 2026-11-15 |  | start no earlier than 2025-09-10 | RGA -FINISHING | 7421265 |
| 7241 | 40100.40200.41100.54700.56100.58500.78800 | **1ST FLOOR** | 382d | 2025-09-10 | 2026-09-26 |  | start no earlier than 2025-09-10 | RGA -FINISHING | 7421325 |
| 7242 | 40100.40200.41100.54700.56100.58500.78800.2453100 | TOILET DADO TILE FIXING | 7d | 2025-11-20 | 2025-11-26 | 7058 |  | RGA -FINISHING | 7422685 |
| 7243 | 40100.40200.41100.54700.56100.58500.78800.2453200 | TOILET FLOORING WORK | 7d | 2025-11-20 | 2025-11-26 | 7242FF |  | RGA -FINISHING | 7422695 |
| 7244 | 40100.40200.41100.54700.56100.58500.78800.2453300 | FIRE FIGHTING | 6d | 2025-09-10 | 2025-09-15 | 7057 |  | RGA -FINISHING | 7422705 |
| 7245 | 40100.40200.41100.54700.56100.58500.78800.2453400 | INTERNAL PAINTING - PUTTY / PRIMER APPLICATION | 6d | 2025-12-14 | 2025-12-19 | 7247 |  | RGA -FINISHING | 7422715 |
| 7246 | 40100.40200.41100.54700.56100.58500.78800.2453500 | FLAT FLOORING | 5d | 2025-11-27 | 2025-12-01 | 7243 |  | RGA -FINISHING | 7422725 |
| 7247 | 40100.40200.41100.54700.56100.58500.78800.2453600 | WINDOW FIXING | 12d | 2025-12-02 | 2025-12-13 | 7246 |  | RGA -FINISHING | 7422735 |
| 7248 | 40100.40200.41100.54700.56100.58500.78800.2453700 | INTERNAL PAINTING - 1ST COAT | 12d | 2025-12-20 | 2025-12-31 | 7245 |  | RGA -FINISHING | 7422745 |
| 7249 | 40100.40200.41100.54700.56100.58500.78800.2453800 | INTERNAL DOOR FIXING | 15d | 2025-12-30 | 2026-01-13 | 7248FS-2d |  | RGA -FINISHING | 7422755 |
| 7250 | 40100.40200.41100.54700.56100.58500.78800.2453900 | WIRING & SWITCH PLATE FIXING | 8d | 2026-01-10 | 2026-01-17 | 7249FS-4d |  | RGA -FINISHING | 7422765 |
| 7251 | 40100.40200.41100.54700.56100.58500.78800.2454000 | TOILET FALSE CEILING | 7d | 2026-01-18 | 2026-01-24 | 7250 |  | RGA -FINISHING | 7422775 |
| 7252 | 40100.40200.41100.54700.56100.58500.78800.2454100 | MAIN DOOR FRAME SHUTTER FIXING | 6d | 2026-09-13 | 2026-09-18 | 7579 |  | RGA -FINISHING | 7422785 |
| 7253 | 40100.40200.41100.54700.56100.58500.78800.2454200 | FINAL COAT PAINT | 8d | 2026-09-19 | 2026-09-26 | 7252 |  | RGA -FINISHING | 7422795 |

Notes:
- 7238: Ext Plaster (in 2 phases) completion 3.5 months post last BW
- 7240: Completion in 12 months post last RCC

| ID | WBS | Task | Duration | Start | Finish | Predecessors | Constraint | Calendar | Unique_Task_ID |
| --- | --- | --- | --- | --- | --- | --- | --- | --- | --- |
| 7254 | 40100.40200.41100.54700.56100.58500.79000 | **2ND FLOOR** | 367d | 2025-09-25 | 2026-09-26 |  | start no earlier than 2025-09-25 | RGA -FINISHING | 7421335 |
| 7255 | 40100.40200.41100.54700.56100.58500.79000.2454300 | TOILET DADO TILE FIXING | 7d | 2025-11-30 | 2025-12-06 | 7065 |  | RGA -FINISHING | 7422805 |
| 7256 | 40100.40200.41100.54700.56100.58500.79000.2454400 | TOILET FLOORING WORK | 7d | 2025-12-07 | 2025-12-13 | 7255 |  | RGA -FINISHING | 7422815 |
| 7257 | 40100.40200.41100.54700.56100.58500.79000.2454500 | FIRE FIGHTING | 6d | 2025-09-25 | 2025-09-30 | 7064 |  | RGA -FINISHING | 7422825 |
| 7258 | 40100.40200.41100.54700.56100.58500.79000.2454600 | INTERNAL PAINTING - PUTTY / PRIMER APPLICATION | 6d | 2025-12-31 | 2026-01-05 | 7260 |  | RGA -FINISHING | 7422835 |
| 7259 | 40100.40200.41100.54700.56100.58500.79000.2454700 | FLAT FLOORING | 5d | 2025-12-14 | 2025-12-18 | 7256 |  | RGA -FINISHING | 7422845 |
| 7260 | 40100.40200.41100.54700.56100.58500.79000.2454800 | WINDOW FIXING | 12d | 2025-12-19 | 2025-12-30 | 7259 |  | RGA -FINISHING | 7422855 |
| 7261 | 40100.40200.41100.54700.56100.58500.79000.2454900 | INTERNAL PAINTING - 1ST COAT | 12d | 2026-01-06 | 2026-01-17 | 7258 |  | RGA -FINISHING | 7422865 |
| 7262 | 40100.40200.41100.54700.56100.58500.79000.2455000 | INTERNAL DOOR FIXING | 15d | 2026-01-16 | 2026-01-30 | 7261FS-2d |  | RGA -FINISHING | 7422875 |
| 7263 | 40100.40200.41100.54700.56100.58500.79000.2455100 | WIRING & SWITCH PLATE FIXING | 8d | 2026-01-27 | 2026-02-03 | 7262FS-4d |  | RGA -FINISHING | 7422885 |
| 7264 | 40100.40200.41100.54700.56100.58500.79000.2455200 | TOILET FALSE CEILING | 7d | 2026-02-04 | 2026-02-10 | 7263 |  | RGA -FINISHING | 7422895 |
| 7265 | 40100.40200.41100.54700.56100.58500.79000.2455300 | MAIN DOOR FRAME SHUTTER FIXING | 6d | 2026-09-13 | 2026-09-18 | 7587 |  | RGA -FINISHING | 7422905 |
| 7266 | 40100.40200.41100.54700.56100.58500.79000.2455400 | FINAL COAT PAINT | 8d | 2026-09-19 | 2026-09-26 | 7265 |  | RGA -FINISHING | 7422915 |
| 7267 | 40100.40200.41100.54700.56100.58500.79100 | **3RD FLOOR** | 342d | 2025-10-20 | 2026-09-26 |  | start no earlier than 2025-10-20 | RGA -FINISHING | 7421345 |
| 7268 | 40100.40200.41100.54700.56100.58500.79100.2455500 | TOILET DADO TILE FIXING | 7d | 2025-12-25 | 2025-12-31 | 7072 |  | RGA -FINISHING | 7422925 |
| 7269 | 40100.40200.41100.54700.56100.58500.79100.2455600 | TOILET FLOORING WORK | 7d | 2026-01-01 | 2026-01-07 | 7268 |  | RGA -FINISHING | 7422935 |
| 7270 | 40100.40200.41100.54700.56100.58500.79100.2455700 | FIRE FIGHTING | 6d | 2025-10-20 | 2025-10-25 | 7071 |  | RGA -FINISHING | 7422945 |
| 7271 | 40100.40200.41100.54700.56100.58500.79100.2455800 | INTERNAL PAINTING - PUTTY / PRIMER APPLICATION | 6d | 2026-01-20 | 2026-01-25 | 7273 |  | RGA -FINISHING | 7422955 |
| 7272 | 40100.40200.41100.54700.56100.58500.79100.2455900 | FLAT FLOORING | 5d | 2026-01-08 | 2026-01-12 | 7269 |  | RGA -FINISHING | 7422965 |
| 7273 | 40100.40200.41100.54700.56100.58500.79100.2456000 | WINDOW FIXING | 7d | 2026-01-13 | 2026-01-19 | 7272 |  | RGA -FINISHING | 7422975 |
| 7274 | 40100.40200.41100.54700.56100.58500.79100.2456100 | INTERNAL PAINTING - 1ST COAT | 7d | 2026-01-26 | 2026-02-01 | 7271 |  | RGA -FINISHING | 7422985 |
| 7275 | 40100.40200.41100.54700.56100.58500.79100.2456200 | INTERNAL DOOR FIXING | 15d | 2026-01-31 | 2026-02-14 | 7274FS-2d |  | RGA -FINISHING | 7422995 |
| 7276 | 40100.40200.41100.54700.56100.58500.79100.2456300 | WIRING & SWITCH PLATE FIXING | 8d | 2026-02-11 | 2026-02-18 | 7275FS-4d |  | RGA -FINISHING | 7423005 |
| 7277 | 40100.40200.41100.54700.56100.58500.79100.2456400 | TOILET FALSE CEILING | 7d | 2026-02-19 | 2026-02-25 | 7276 |  | RGA -FINISHING | 7423015 |
| 7278 | 40100.40200.41100.54700.56100.58500.79100.2456500 | MAIN DOOR FRAME SHUTTER FIXING | 6d | 2026-09-13 | 2026-09-18 | 7595 |  | RGA -FINISHING | 7423025 |
| 7279 | 40100.40200.41100.54700.56100.58500.79100.2456600 | FINAL COAT PAINT | 8d | 2026-09-19 | 2026-09-26 | 7278 |  | RGA -FINISHING | 7423035 |

| ID | WBS | Task | Duration | Start | Finish | Predecessors | Constraint | Calendar | Unique_Task_ID |
| --- | --- | --- | --- | --- | --- | --- | --- | --- | --- |
| 7280 | 40100.40200.41100.54700.56100.58500.79200 | **4TH FLOOR** | 347d | 2025-10-15 | 2026-09-26 |  | start no earlier than 2025-10-15 | RGA -FINISHING | 7421355 |
| 7281 | 40100.40200.41100.54700.56100.58500.79200.2456700 | TOILET DADO TILE FIXING | 7d | 2025-10-15 | 2025-10-21 | 7080 |  | RGA -FINISHING | 7423045 |
| 7282 | 40100.40200.41100.54700.56100.58500.79200.2456800 | TOILET FLOORING WORK | 7d | 2025-10-22 | 2025-10-28 | 7281 |  | RGA -FINISHING | 7423055 |
| 7283 | 40100.40200.41100.54700.56100.58500.79200.2456900 | FIRE FIGHTING | 6d | 2025-10-29 | 2025-11-03 | 7078 |  | RGA -FINISHING | 7423065 |
| 7284 | 40100.40200.41100.54700.56100.58500.79200.2457000 | INTERNAL PAINTING - PUTTY / PRIMER APPLICATION | 6d | 2025-11-10 | 2025-11-15 | 7286 |  | RGA -FINISHING | 7423075 |
| 7285 | 40100.40200.41100.54700.56100.58500.79200.2457100 | FLAT FLOORING | 5d | 2025-10-29 | 2025-11-02 | 7282 |  | RGA -FINISHING | 7423085 |
| 7286 | 40100.40200.41100.54700.56100.58500.79200.2457200 | WINDOW FIXING | 7d | 2025-11-03 | 2025-11-09 | 7285 |  | RGA -FINISHING | 7423095 |
| 7287 | 40100.40200.41100.54700.56100.58500.79200.2457300 | INTERNAL PAINTING - 1ST COAT | 7d | 2025-11-16 | 2025-11-22 | 7284 |  | RGA -FINISHING | 7423105 |
| 7288 | 40100.40200.41100.54700.56100.58500.79200.2457400 | INTERNAL DOOR FIXING | 15d | 2025-11-21 | 2025-12-05 | 7287FS-2d |  | RGA -FINISHING | 7423115 |
| 7289 | 40100.40200.41100.54700.56100.58500.79200.2457500 | WIRING & SWITCH PLATE FIXING | 8d | 2025-12-02 | 2025-12-09 | 7288FS-4d |  | RGA -FINISHING | 7423125 |
| 7290 | 40100.40200.41100.54700.56100.58500.79200.2457600 | TOILET FALSE CEILING | 7d | 2025-12-10 | 2025-12-16 | 7289 |  | RGA -FINISHING | 7423135 |
| 7291 | 40100.40200.41100.54700.56100.58500.79200.2457700 | MAIN DOOR FRAME SHUTTER FIXING | 6d | 2026-09-13 | 2026-09-18 | 7603 |  | RGA -FINISHING | 7423145 |
| 7292 | 40100.40200.41100.54700.56100.58500.79200.2457800 | FINAL COAT PAINT | 8d | 2026-09-19 | 2026-09-26 | 7291 |  | RGA -FINISHING | 7423155 |
| 7293 | 40100.40200.41100.54700.56100.58500.79300 | **5TH FLOOR** | 323d | 2025-11-08 | 2026-09-26 |  | start no earlier than 2025-11-08 | RGA -FINISHING | 7421365 |
| 7294 | 40100.40200.41100.54700.56100.58500.79300.2457900 | TOILET DADO TILE FIXING | 7d | 2026-01-03 | 2026-01-09 | 7086 |  | RGA -FINISHING | 7423165 |
| 7295 | 40100.40200.41100.54700.56100.58500.79300.2458000 | TOILET FLOORING WORK | 7d | 2026-01-10 | 2026-01-16 | 7294 |  | RGA -FINISHING | 7423175 |
| 7296 | 40100.40200.41100.54700.56100.58500.79300.2458100 | FIRE FIGHTING | 6d | 2025-11-08 | 2025-11-13 | 7085 |  | RGA -FINISHING | 7423185 |
| 7297 | 40100.40200.41100.54700.56100.58500.79300.2458200 | INTERNAL PAINTING - PUTTY / PRIMER APPLICATION | 6d | 2026-01-29 | 2026-02-03 | 7299 |  | RGA -FINISHING | 7423195 |
| 7298 | 40100.40200.41100.54700.56100.58500.79300.2458300 | FLAT FLOORING | 5d | 2026-01-17 | 2026-01-21 | 7295 |  | RGA -FINISHING | 7423205 |
| 7299 | 40100.40200.41100.54700.56100.58500.79300.2458400 | WINDOW FIXING | 7d | 2026-01-22 | 2026-01-28 | 7298 |  | RGA -FINISHING | 7423215 |
| 7300 | 40100.40200.41100.54700.56100.58500.79300.2458500 | INTERNAL PAINTING - 1ST COAT | 7d | 2026-02-04 | 2026-02-10 | 7297 |  | RGA -FINISHING | 7423225 |
| 7301 | 40100.40200.41100.54700.56100.58500.79300.2458600 | INTERNAL DOOR FIXING | 15d | 2026-02-09 | 2026-02-23 | 7300FS-2d |  | RGA -FINISHING | 7423235 |
| 7302 | 40100.40200.41100.54700.56100.58500.79300.2458700 | WIRING & SWITCH PLATE FIXING | 8d | 2026-02-20 | 2026-02-27 | 7301FS-4d |  | RGA -FINISHING | 7423245 |
| 7303 | 40100.40200.41100.54700.56100.58500.79300.2458800 | TOILET FALSE CEILING | 7d | 2026-02-28 | 2026-03-06 | 7302 |  | RGA -FINISHING | 7423255 |
| 7304 | 40100.40200.41100.54700.56100.58500.79300.2458900 | MAIN DOOR FRAME SHUTTER FIXING | 6d | 2026-09-13 | 2026-09-18 | 7611 |  | RGA -FINISHING | 7423265 |
| 7305 | 40100.40200.41100.54700.56100.58500.79300.2459000 | FINAL COAT PAINT | 8d | 2026-09-19 | 2026-09-26 | 7304 |  | RGA -FINISHING | 7423275 |

| ID | WBS | Task | Duration | Start | Finish | Predecessors | Constraint | Calendar | Unique_Task_ID |
| --- | --- | --- | --- | --- | --- | --- | --- | --- | --- |
| 7306 | 40100.40200.41100.54700.56100.58500.79400 | **6TH FLOOR** | 324d | 2025-11-17 | 2026-10-06 |  | start no earlier than 2025-11-17 | RGA -FINISHING | 7421375 |
| 7307 | 40100.40200.41100.54700.56100.58500.79400.2459100 | TOILET DADO TILE FIXING | 7d | 2026-01-08 | 2026-01-14 | 7093 |  | RGA -FINISHING | 7423285 |
| 7308 | 40100.40200.41100.54700.56100.58500.79400.2459200 | TOILET FLOORING WORK | 7d | 2026-01-08 | 2026-01-14 | 7307FF |  | RGA -FINISHING | 7423295 |
| 7309 | 40100.40200.41100.54700.56100.58500.79400.2459300 | FIRE FIGHTING | 6d | 2025-11-17 | 2025-11-22 | 7092 |  | RGA -FINISHING | 7423305 |
| 7310 | 40100.40200.41100.54700.56100.58500.79400.2459400 | INTERNAL PAINTING - PUTTY / PRIMER APPLICATION | 6d | 2026-02-01 | 2026-02-06 | 7312 |  | RGA -FINISHING | 7423315 |
| 7311 | 40100.40200.41100.54700.56100.58500.79400.2459500 | FLAT FLOORING | 5d | 2026-01-15 | 2026-01-19 | 7308 |  | RGA -FINISHING | 7423325 |
| 7312 | 40100.40200.41100.54700.56100.58500.79400.2459600 | WINDOW FIXING | 12d | 2026-01-20 | 2026-01-31 | 7311 |  | RGA -FINISHING | 7423335 |
| 7313 | 40100.40200.41100.54700.56100.58500.79400.2459700 | INTERNAL PAINTING - 1ST COAT | 12d | 2026-02-07 | 2026-02-18 | 7310 |  | RGA -FINISHING | 7423345 |
| 7314 | 40100.40200.41100.54700.56100.58500.79400.2459800 | INTERNAL DOOR FIXING | 15d | 2026-02-17 | 2026-03-03 | 7313FS-2d |  | RGA -FINISHING | 7423355 |
| 7315 | 40100.40200.41100.54700.56100.58500.79400.2459900 | WIRING & SWITCH PLATE FIXING | 8d | 2026-02-28 | 2026-03-07 | 7314FS-4d |  | RGA -FINISHING | 7423365 |
| 7316 | 40100.40200.41100.54700.56100.58500.79400.2460000 | TOILET FALSE CEILING | 7d | 2026-03-08 | 2026-03-14 | 7315 |  | RGA -FINISHING | 7423375 |
| 7317 | 40100.40200.41100.54700.56100.58500.79400.2460100 | MAIN DOOR FRAME SHUTTER FIXING | 6d | 2026-09-23 | 2026-09-28 | 7619 |  | RGA -FINISHING | 7423385 |
| 7318 | 40100.40200.41100.54700.56100.58500.79400.2460200 | FINAL COAT PAINT | 8d | 2026-09-29 | 2026-10-06 | 7317 |  | RGA -FINISHING | 7423395 |
| 7319 | 40100.40200.41100.54700.56100.58500.79600 | **7TH FLOOR** | 315d | 2025-11-26 | 2026-10-06 |  | start no earlier than 2025-11-26 | RGA -FINISHING | 7421385 |
| 7320 | 40100.40200.41100.54700.56100.58500.79600.2460300 | TOILET DADO TILE FIXING | 7d | 2026-01-17 | 2026-01-23 | 7100 |  | RGA -FINISHING | 7423405 |
| 7321 | 40100.40200.41100.54700.56100.58500.79600.2460400 | TOILET FLOORING WORK | 7d | 2026-01-24 | 2026-01-30 | 7320 |  | RGA -FINISHING | 7423415 |
| 7322 | 40100.40200.41100.54700.56100.58500.79600.2460500 | FIRE FIGHTING | 6d | 2025-11-26 | 2025-12-01 | 7099 |  | RGA -FINISHING | 7423425 |
| 7323 | 40100.40200.41100.54700.56100.58500.79600.2460600 | INTERNAL PAINTING - PUTTY / PRIMER APPLICATION | 6d | 2026-02-17 | 2026-02-22 | 7325 |  | RGA -FINISHING | 7423435 |
| 7324 | 40100.40200.41100.54700.56100.58500.79600.2460700 | FLAT FLOORING | 5d | 2026-01-31 | 2026-02-04 | 7321 |  | RGA -FINISHING | 7423445 |
| 7325 | 40100.40200.41100.54700.56100.58500.79600.2460800 | WINDOW FIXING | 12d | 2026-02-05 | 2026-02-16 | 7324 |  | RGA -FINISHING | 7423455 |
| 7326 | 40100.40200.41100.54700.56100.58500.79600.2460900 | INTERNAL PAINTING - 1ST COAT | 5d | 2026-02-23 | 2026-02-27 | 7323 |  | RGA -FINISHING | 7423465 |
| 7327 | 40100.40200.41100.54700.56100.58500.79600.2461000 | INTERNAL DOOR FIXING | 15d | 2026-02-26 | 2026-03-12 | 7326FS-2d |  | RGA -FINISHING | 7423475 |
| 7328 | 40100.40200.41100.54700.56100.58500.79600.2461100 | WIRING & SWITCH PLATE FIXING | 8d | 2026-03-09 | 2026-03-16 | 7327FS-4d |  | RGA -FINISHING | 7423485 |
| 7329 | 40100.40200.41100.54700.56100.58500.79600.2461200 | TOILET FALSE CEILING | 7d | 2026-03-17 | 2026-03-23 | 7328 |  | RGA -FINISHING | 7423495 |
| 7330 | 40100.40200.41100.54700.56100.58500.79600.2461300 | MAIN DOOR FRAME SHUTTER FIXING | 6d | 2026-09-23 | 2026-09-28 | 7627 |  | RGA -FINISHING | 7423505 |
| 7331 | 40100.40200.41100.54700.56100.58500.79600.2461400 | FINAL COAT PAINT | 8d | 2026-09-29 | 2026-10-06 | 7330 |  | RGA -FINISHING | 7423515 |

| ID | WBS | Task | Duration | Start | Finish | Predecessors | Constraint | Calendar | Unique_Task_ID |
| --- | --- | --- | --- | --- | --- | --- | --- | --- | --- |
| 7332 | 40100.40200.41100.54700.56100.58500.79800 | **8TH FLOOR** | 306d | 2025-12-05 | 2026-10-06 |  | start no earlier than 2025-12-05 | RGA -FINISHING | 7421395 |
| 7333 | 40100.40200.41100.54700.56100.58500.79800.2461500 | TOILET DADO TILE FIXING | 7d | 2026-01-26 | 2026-02-01 | 7107 |  | RGA -FINISHING | 7423525 |
| 7334 | 40100.40200.41100.54700.56100.58500.79800.2461600 | TOILET FLOORING WORK | 7d | 2026-02-02 | 2026-02-08 | 7333 |  | RGA -FINISHING | 7423535 |
| 7335 | 40100.40200.41100.54700.56100.58500.79800.2461700 | FIRE FIGHTING | 6d | 2025-12-05 | 2025-12-10 | 7106 |  | RGA -FINISHING | 7423545 |
| 7336 | 40100.40200.41100.54700.56100.58500.79800.2461800 | INTERNAL PAINTING - PUTTY / PRIMER APPLICATION | 6d | 2026-02-26 | 2026-03-03 | 7338 |  | RGA -FINISHING | 7423555 |
| 7337 | 40100.40200.41100.54700.56100.58500.79800.2461900 | FLAT FLOORING | 5d | 2026-02-09 | 2026-02-13 | 7334 |  | RGA -FINISHING | 7423565 |
| 7338 | 40100.40200.41100.54700.56100.58500.79800.2462000 | WINDOW FIXING | 12d | 2026-02-14 | 2026-02-25 | 7337 |  | RGA -FINISHING | 7423575 |
| 7339 | 40100.40200.41100.54700.56100.58500.79800.2462100 | INTERNAL PAINTING - 1ST COAT | 10d | 2026-03-04 | 2026-03-13 | 7336 |  | RGA -FINISHING | 7423585 |
| 7340 | 40100.40200.41100.54700.56100.58500.79800.2462200 | INTERNAL DOOR FIXING | 15d | 2026-03-12 | 2026-03-26 | 7339FS-2d |  | RGA -FINISHING | 7423595 |
| 7341 | 40100.40200.41100.54700.56100.58500.79800.2462300 | WIRING & SWITCH PLATE FIXING | 8d | 2026-03-23 | 2026-03-30 | 7340FS-4d |  | RGA -FINISHING | 7423605 |
| 7342 | 40100.40200.41100.54700.56100.58500.79800.2462400 | TOILET FALSE CEILING | 7d | 2026-03-31 | 2026-04-06 | 7341 |  | RGA -FINISHING | 7423615 |
| 7343 | 40100.40200.41100.54700.56100.58500.79800.2462500 | MAIN DOOR FRAME SHUTTER FIXING | 6d | 2026-09-23 | 2026-09-28 | 7635 |  | RGA -FINISHING | 7423625 |
| 7344 | 40100.40200.41100.54700.56100.58500.79800.2462600 | FINAL COAT PAINT | 8d | 2026-09-29 | 2026-10-06 | 7343 |  | RGA -FINISHING | 7423635 |
| 7345 | 40100.40200.41100.54700.56100.58500.79900 | **9TH FLOOR** | 301d | 2025-12-14 | 2026-10-10 |  | start no earlier than 2025-12-14 | RGA -FINISHING | 7421405 |
| 7346 | 40100.40200.41100.54700.56100.58500.79900.2462700 | TOILET DADO TILE FIXING | 7d | 2026-02-04 | 2026-02-10 | 7114 |  | RGA -FINISHING | 7423645 |
| 7347 | 40100.40200.41100.54700.56100.58500.79900.2462800 | TOILET FLOORING WORK | 7d | 2026-02-11 | 2026-02-17 | 7346 |  | RGA -FINISHING | 7423655 |
| 7348 | 40100.40200.41100.54700.56100.58500.79900.2462900 | FIRE FIGHTING | 6d | 2025-12-14 | 2025-12-19 | 7113 |  | RGA -FINISHING | 7423665 |
| 7349 | 40100.40200.41100.54700.56100.58500.79900.2463000 | INTERNAL PAINTING - PUTTY / PRIMER APPLICATION | 6d | 2026-03-07 | 2026-03-12 | 7351 |  | RGA -FINISHING | 7423675 |
| 7350 | 40100.40200.41100.54700.56100.58500.79900.2463100 | FLAT FLOORING | 5d | 2026-02-18 | 2026-02-22 | 7347 |  | RGA -FINISHING | 7423685 |
| 7351 | 40100.40200.41100.54700.56100.58500.79900.2463200 | WINDOW FIXING | 12d | 2026-02-23 | 2026-03-06 | 7350 |  | RGA -FINISHING | 7423695 |
| 7352 | 40100.40200.41100.54700.56100.58500.79900.2463300 | INTERNAL PAINTING - 1ST COAT | 2d | 2026-03-13 | 2026-03-14 | 7349 |  | RGA -FINISHING | 7423705 |
| 7353 | 40100.40200.41100.54700.56100.58500.79900.2463400 | INTERNAL DOOR FIXING | 15d | 2026-03-13 | 2026-03-27 | 7352FS-2d |  | RGA -FINISHING | 7423715 |
| 7354 | 40100.40200.41100.54700.56100.58500.79900.2463500 | WIRING & SWITCH PLATE FIXING | 8d | 2026-03-24 | 2026-03-31 | 7353FS-4d |  | RGA -FINISHING | 7423725 |
| 7355 | 40100.40200.41100.54700.56100.58500.79900.2463600 | TOILET FALSE CEILING | 7d | 2026-04-01 | 2026-04-07 | 7354 |  | RGA -FINISHING | 7423735 |
| 7356 | 40100.40200.41100.54700.56100.58500.79900.2463700 | MAIN DOOR FRAME SHUTTER FIXING | 6d | 2026-09-23 | 2026-09-28 | 7643 |  | RGA -FINISHING | 7423745 |
| 7357 | 40100.40200.41100.54700.56100.58500.79900.2463800 | FINAL COAT PAINT | 8d | 2026-10-03 | 2026-10-10 | 7356FS+4d |  | RGA -FINISHING | 7423755 |

| ID | WBS | Task | Duration | Start | Finish | Predecessors | Constraint | Calendar | Unique_Task_ID |
| --- | --- | --- | --- | --- | --- | --- | --- | --- | --- |
| 7358 | 40100.40200.41100.54700.56100.58500.80000 | **10TH FLOOR** | 236d | 2026-02-13 | 2026-10-06 |  | start no earlier than 2026-02-13 | RGA -FINISHING | 7421415 |
| 7359 | 40100.40200.41100.54700.56100.58500.80000.2463900 | TOILET DADO TILE FIXING | 7d | 2026-02-13 | 2026-02-19 | 7121 |  | RGA -FINISHING | 7423765 |
| 7360 | 40100.40200.41100.54700.56100.58500.80000.2464000 | TOILET FLOORING WORK | 7d | 2026-02-20 | 2026-02-26 | 7359 |  | RGA -FINISHING | 7423775 |
| 7361 | 40100.40200.41100.54700.56100.58500.80000.2464100 | FIRE FIGHTING | 6d | 2026-02-13 | 2026-02-18 | 7119 |  | RGA -FINISHING | 7423785 |
| 7362 | 40100.40200.41100.54700.56100.58500.80000.2464200 | INTERNAL PAINTING - PUTTY / PRIMER APPLICATION | 6d | 2026-03-16 | 2026-03-21 | 7364 |  | RGA -FINISHING | 7423795 |
| 7363 | 40100.40200.41100.54700.56100.58500.80000.2464300 | FLAT FLOORING | 5d | 2026-02-27 | 2026-03-03 | 7360 |  | RGA -FINISHING | 7423805 |
| 7364 | 40100.40200.41100.54700.56100.58500.80000.2464400 | WINDOW FIXING | 12d | 2026-03-04 | 2026-03-15 | 7363 |  | RGA -FINISHING | 7423815 |
| 7365 | 40100.40200.41100.54700.56100.58500.80000.2464500 | INTERNAL PAINTING - 1ST COAT | 12d | 2026-03-22 | 2026-04-02 | 7362 |  | RGA -FINISHING | 7423825 |
| 7366 | 40100.40200.41100.54700.56100.58500.80000.2464600 | INTERNAL DOOR FIXING | 15d | 2026-04-01 | 2026-04-15 | 7365FS-2d |  | RGA -FINISHING | 7423835 |
| 7367 | 40100.40200.41100.54700.56100.58500.80000.2464700 | WIRING & SWITCH PLATE FIXING | 8d | 2026-04-12 | 2026-04-19 | 7366FS-4d |  | RGA -FINISHING | 7423845 |
| 7368 | 40100.40200.41100.54700.56100.58500.80000.2464800 | TOILET FALSE CEILING | 7d | 2026-04-20 | 2026-04-26 | 7367 |  | RGA -FINISHING | 7423855 |
| 7369 | 40100.40200.41100.54700.56100.58500.80000.2464900 | MAIN DOOR FRAME SHUTTER FIXING | 6d | 2026-09-23 | 2026-09-28 | 7651 |  | RGA -FINISHING | 7423865 |
| 7370 | 40100.40200.41100.54700.56100.58500.80000.2465000 | FINAL COAT PAINT | 8d | 2026-09-29 | 2026-10-06 | 7369 |  | RGA -FINISHING | 7423875 |
| 7371 | 40100.40200.41100.54700.56100.58500.80100 | **11TH FLOOR** | 289d | 2026-01-01 | 2026-10-16 |  | start no earlier than 2026-01-01 | RGA -FINISHING | 7421425 |
| 7372 | 40100.40200.41100.54700.56100.58500.80100.2465100 | TOILET DADO TILE FIXING | 7d | 2026-04-15 | 2026-04-21 | 7128 |  | RGA -FINISHING | 7423885 |
| 7373 | 40100.40200.41100.54700.56100.58500.80100.2465200 | TOILET FLOORING WORK | 7d | 2026-04-22 | 2026-04-28 | 7372 |  | RGA -FINISHING | 7423895 |
| 7374 | 40100.40200.41100.54700.56100.58500.80100.2465300 | FIRE FIGHTING | 6d | 2026-01-01 | 2026-01-06 | 7127 |  | RGA -FINISHING | 7423905 |
| 7375 | 40100.40200.41100.54700.56100.58500.80100.2465400 | INTERNAL PAINTING - PUTTY / PRIMER APPLICATION | 6d | 2026-05-16 | 2026-05-21 | 7377 |  | RGA -FINISHING | 7423915 |
| 7376 | 40100.40200.41100.54700.56100.58500.80100.2465500 | FLAT FLOORING | 5d | 2026-04-29 | 2026-05-03 | 7373 |  | RGA -FINISHING | 7423925 |
| 7377 | 40100.40200.41100.54700.56100.58500.80100.2465600 | WINDOW FIXING | 12d | 2026-05-04 | 2026-05-15 | 7376 |  | RGA -FINISHING | 7423935 |
| 7378 | 40100.40200.41100.54700.56100.58500.80100.2465700 | INTERNAL PAINTING - 1ST COAT | 12d | 2026-05-22 | 2026-06-02 | 7375 |  | RGA -FINISHING | 7423945 |
| 7379 | 40100.40200.41100.54700.56100.58500.80100.2465800 | INTERNAL DOOR FIXING | 15d | 2026-06-01 | 2026-06-15 | 7378FS-2d |  | RGA -FINISHING | 7423955 |
| 7380 | 40100.40200.41100.54700.56100.58500.80100.2465900 | WIRING & SWITCH PLATE FIXING | 8d | 2026-06-12 | 2026-06-19 | 7379FS-4d |  | RGA -FINISHING | 7423965 |
| 7381 | 40100.40200.41100.54700.56100.58500.80100.2466000 | TOILET FALSE CEILING | 7d | 2026-06-20 | 2026-06-26 | 7380 |  | RGA -FINISHING | 7423975 |
| 7382 | 40100.40200.41100.54700.56100.58500.80100.2466100 | MAIN DOOR FRAME SHUTTER FIXING | 6d | 2026-10-03 | 2026-10-08 | 7659 |  | RGA -FINISHING | 7423985 |
| 7383 | 40100.40200.41100.54700.56100.58500.80100.2466200 | FINAL COAT PAINT | 8d | 2026-10-09 | 2026-10-16 | 7382 |  | RGA -FINISHING | 7423995 |

| ID | WBS | Task | Duration | Start | Finish | Predecessors | Constraint | Calendar | Unique_Task_ID |
| --- | --- | --- | --- | --- | --- | --- | --- | --- | --- |
| 7384 | 40100.40200.41100.54700.56100.58500.80200 | **12TH FLOOR** | 280d | 2026-01-10 | 2026-10-16 |  | start no earlier than 2026-01-10 | RGA -FINISHING | 7421435 |
| 7385 | 40100.40200.41100.54700.56100.58500.80200.2466300 | TOILET DADO TILE FIXING | 7d | 2026-02-23 | 2026-03-01 | 7135 |  | RGA -FINISHING | 7424005 |
| 7386 | 40100.40200.41100.54700.56100.58500.80200.2466400 | TOILET FLOORING WORK | 7d | 2026-02-23 | 2026-03-01 | 7385FF |  | RGA -FINISHING | 7424015 |
| 7387 | 40100.40200.41100.54700.56100.58500.80200.2466500 | FIRE FIGHTING | 6d | 2026-01-10 | 2026-01-15 | 7134 |  | RGA -FINISHING | 7424025 |
| 7388 | 40100.40200.41100.54700.56100.58500.80200.2466600 | INTERNAL PAINTING - PUTTY / PRIMER APPLICATION | 6d | 2026-03-19 | 2026-03-24 | 7390 |  | RGA -FINISHING | 7424035 |
| 7389 | 40100.40200.41100.54700.56100.58500.80200.2466700 | FLAT FLOORING | 5d | 2026-03-02 | 2026-03-06 | 7386 |  | RGA -FINISHING | 7424045 |
| 7390 | 40100.40200.41100.54700.56100.58500.80200.2466800 | WINDOW FIXING | 12d | 2026-03-07 | 2026-03-18 | 7389 |  | RGA -FINISHING | 7424055 |
| 7391 | 40100.40200.41100.54700.56100.58500.80200.2466900 | INTERNAL PAINTING - 1ST COAT | 12d | 2026-03-25 | 2026-04-05 | 7388 |  | RGA -FINISHING | 7424065 |
| 7392 | 40100.40200.41100.54700.56100.58500.80200.2467000 | INTERNAL DOOR FIXING | 15d | 2026-04-04 | 2026-04-18 | 7391FS-2d |  | RGA -FINISHING | 7424075 |
| 7393 | 40100.40200.41100.54700.56100.58500.80200.2467100 | WIRING & SWITCH PLATE FIXING | 8d | 2026-04-15 | 2026-04-22 | 7392FS-4d |  | RGA -FINISHING | 7424085 |
| 7394 | 40100.40200.41100.54700.56100.58500.80200.2467200 | TOILET FALSE CEILING | 7d | 2026-04-23 | 2026-04-29 | 7393 |  | RGA -FINISHING | 7424095 |
| 7395 | 40100.40200.41100.54700.56100.58500.80200.2467300 | MAIN DOOR FRAME SHUTTER FIXING | 6d | 2026-10-03 | 2026-10-08 | 7667 |  | RGA -FINISHING | 7424105 |
| 7396 | 40100.40200.41100.54700.56100.58500.80200.2467400 | FINAL COAT PAINT | 8d | 2026-10-09 | 2026-10-16 | 7395 |  | RGA -FINISHING | 7424115 |
| 7397 | 40100.40200.41100.54700.56100.58500.80300 | **13TH FLOOR** | 271d | 2026-01-19 | 2026-10-16 |  | start no earlier than 2026-01-19 | RGA -FINISHING | 7421445 |
| 7398 | 40100.40200.41100.54700.56100.58500.80300.2467500 | TOILET DADO TILE FIXING | 10d | 2026-03-26 | 2026-04-04 | 7142 |  | RGA -FINISHING | 7424125 |
| 7399 | 40100.40200.41100.54700.56100.58500.80300.2467600 | TOILET FLOORING WORK | 7d | 2026-04-05 | 2026-04-11 | 7398 |  | RGA -FINISHING | 7424135 |
| 7400 | 40100.40200.41100.54700.56100.58500.80300.2467700 | FIRE FIGHTING | 8d | 2026-01-19 | 2026-01-26 | 7141 |  | RGA -FINISHING | 7424145 |
| 7401 | 40100.40200.41100.54700.56100.58500.80300.2467800 | INTERNAL PAINTING - PUTTY / PRIMER APPLICATION | 5d | 2026-04-24 | 2026-04-28 | 7403 |  | RGA -FINISHING | 7424155 |
| 7402 | 40100.40200.41100.54700.56100.58500.80300.2467900 | FLAT FLOORING | 7d | 2026-04-12 | 2026-04-18 | 7399 |  | RGA -FINISHING | 7424165 |
| 7403 | 40100.40200.41100.54700.56100.58500.80300.2468000 | WINDOW FIXING | 5d | 2026-04-19 | 2026-04-23 | 7402 |  | RGA -FINISHING | 7424175 |
| 7404 | 40100.40200.41100.54700.56100.58500.80300.2468100 | INTERNAL PAINTING - 1ST COAT | 4d | 2026-04-29 | 2026-05-02 | 7401 |  | RGA -FINISHING | 7424185 |
| 7405 | 40100.40200.41100.54700.56100.58500.80300.2468200 | INTERNAL DOOR FIXING | 15d | 2026-05-01 | 2026-05-15 | 7404FS-2d |  | RGA -FINISHING | 7424195 |
| 7406 | 40100.40200.41100.54700.56100.58500.80300.2468300 | WIRING & SWITCH PLATE FIXING | 8d | 2026-05-12 | 2026-05-19 | 7405FS-4d |  | RGA -FINISHING | 7424205 |
| 7407 | 40100.40200.41100.54700.56100.58500.80300.2468400 | TOILET FALSE CEILING | 7d | 2026-05-20 | 2026-05-26 | 7406 |  | RGA -FINISHING | 7424215 |
| 7408 | 40100.40200.41100.54700.56100.58500.80300.2468500 | MAIN DOOR FRAME SHUTTER FIXING | 6d | 2026-10-03 | 2026-10-08 | 7675 |  | RGA -FINISHING | 7424225 |
| 7409 | 40100.40200.41100.54700.56100.58500.80300.2468600 | FINAL COAT PAINT | 8d | 2026-10-09 | 2026-10-16 | 7408 |  | RGA -FINISHING | 7424235 |

| ID | WBS | Task | Duration | Start | Finish | Predecessors | Constraint | Calendar | Unique_Task_ID |
| --- | --- | --- | --- | --- | --- | --- | --- | --- | --- |
| 7410 | 40100.40200.41100.54700.56100.58500.80400 | **14TH FLOOR** | 262d | 2026-01-28 | 2026-10-16 |  | start no earlier than 2026-01-28 | RGA -FINISHING | 7421455 |
| 7411 | 40100.40200.41100.54700.56100.58500.80400.2468700 | TOILET DADO TILE FIXING | 10d | 2026-04-06 | 2026-04-15 | 7149 |  | RGA -FINISHING | 7424245 |
| 7412 | 40100.40200.41100.54700.56100.58500.80400.2468800 | TOILET FLOORING WORK | 7d | 2026-04-16 | 2026-04-22 | 7411 |  | RGA -FINISHING | 7424255 |
| 7413 | 40100.40200.41100.54700.56100.58500.80400.2468900 | FIRE FIGHTING | 8d | 2026-01-28 | 2026-02-04 | 7148 |  | RGA -FINISHING | 7424265 |
| 7414 | 40100.40200.41100.54700.56100.58500.80400.2469000 | INTERNAL PAINTING - PUTTY / PRIMER APPLICATION | 5d | 2026-05-05 | 2026-05-09 | 7416 |  | RGA -FINISHING | 7424275 |
| 7415 | 40100.40200.41100.54700.56100.58500.80400.2469100 | FLAT FLOORING | 7d | 2026-04-23 | 2026-04-29 | 7412 |  | RGA -FINISHING | 7424285 |
| 7416 | 40100.40200.41100.54700.56100.58500.80400.2469200 | WINDOW FIXING | 5d | 2026-04-30 | 2026-05-04 | 7415 |  | RGA -FINISHING | 7424295 |
| 7417 | 40100.40200.41100.54700.56100.58500.80400.2469300 | INTERNAL PAINTING - 1ST COAT | 4d | 2026-05-10 | 2026-05-13 | 7414 |  | RGA -FINISHING | 7424305 |
| 7418 | 40100.40200.41100.54700.56100.58500.80400.2469400 | INTERNAL DOOR FIXING | 15d | 2026-05-12 | 2026-05-26 | 7417FS-2d |  | RGA -FINISHING | 7424315 |
| 7419 | 40100.40200.41100.54700.56100.58500.80400.2469500 | WIRING & SWITCH PLATE FIXING | 8d | 2026-05-23 | 2026-05-30 | 7418FS-4d |  | RGA -FINISHING | 7424325 |
| 7420 | 40100.40200.41100.54700.56100.58500.80400.2469600 | TOILET FALSE CEILING | 7d | 2026-05-31 | 2026-06-06 | 7419 |  | RGA -FINISHING | 7424335 |
| 7421 | 40100.40200.41100.54700.56100.58500.80400.2469700 | MAIN DOOR FRAME SHUTTER FIXING | 6d | 2026-10-03 | 2026-10-08 | 7683 |  | RGA -FINISHING | 7424345 |
| 7422 | 40100.40200.41100.54700.56100.58500.80400.2469800 | FINAL COAT PAINT | 8d | 2026-10-09 | 2026-10-16 | 7421 |  | RGA -FINISHING | 7424355 |
| 7423 | 40100.40200.41100.54700.56100.58500.80500 | **15TH FLOOR** | 262d | 2026-02-07 | 2026-10-26 |  | start no earlier than 2026-02-07 | RGA -FINISHING | 7421465 |
| 7424 | 40100.40200.41100.54700.56100.58500.80500.2469900 | TOILET DADO TILE FIXING | 10d | 2026-04-15 | 2026-04-24 | 7156 |  | RGA -FINISHING | 7424365 |
| 7425 | 40100.40200.41100.54700.56100.58500.80500.2470000 | TOILET FLOORING WORK | 7d | 2026-04-25 | 2026-05-01 | 7424 |  | RGA -FINISHING | 7424375 |
| 7426 | 40100.40200.41100.54700.56100.58500.80500.2470100 | FIRE FIGHTING | 8d | 2026-02-07 | 2026-02-14 | 7155 |  | RGA -FINISHING | 7424385 |
| 7427 | 40100.40200.41100.54700.56100.58500.80500.2470200 | INTERNAL PAINTING - PUTTY / PRIMER APPLICATION | 5d | 2026-05-14 | 2026-05-18 | 7429 |  | RGA -FINISHING | 7424395 |
| 7428 | 40100.40200.41100.54700.56100.58500.80500.2470300 | FLAT FLOORING | 7d | 2026-05-02 | 2026-05-08 | 7425 |  | RGA -FINISHING | 7424405 |
| 7429 | 40100.40200.41100.54700.56100.58500.80500.2470400 | WINDOW FIXING | 5d | 2026-05-09 | 2026-05-13 | 7428 |  | RGA -FINISHING | 7424415 |
| 7430 | 40100.40200.41100.54700.56100.58500.80500.2470500 | INTERNAL PAINTING - 1ST COAT | 4d | 2026-05-19 | 2026-05-22 | 7427 |  | RGA -FINISHING | 7424425 |
| 7431 | 40100.40200.41100.54700.56100.58500.80500.2470600 | INTERNAL DOOR FIXING | 15d | 2026-05-21 | 2026-06-04 | 7430FS-2d |  | RGA -FINISHING | 7424435 |
| 7432 | 40100.40200.41100.54700.56100.58500.80500.2470700 | WIRING & SWITCH PLATE FIXING | 8d | 2026-06-01 | 2026-06-08 | 7431FS-4d |  | RGA -FINISHING | 7424445 |
| 7433 | 40100.40200.41100.54700.56100.58500.80500.2470800 | TOILET FALSE CEILING | 7d | 2026-06-09 | 2026-06-15 | 7432 |  | RGA -FINISHING | 7424455 |
| 7434 | 40100.40200.41100.54700.56100.58500.80500.2470900 | MAIN DOOR FRAME SHUTTER FIXING | 6d | 2026-10-13 | 2026-10-18 | 7691 |  | RGA -FINISHING | 7424465 |
| 7435 | 40100.40200.41100.54700.56100.58500.80500.2471000 | FINAL COAT PAINT | 8d | 2026-10-19 | 2026-10-26 | 7434 |  | RGA -FINISHING | 7424475 |

| ID | WBS | Task | Duration | Start | Finish | Predecessors | Constraint | Calendar | Unique_Task_ID |
| --- | --- | --- | --- | --- | --- | --- | --- | --- | --- |
| 7436 | 40100.40200.41100.54700.56100.58500.80600 | **16TH FLOOR** | 254d | 2026-02-15 | 2026-10-26 |  | start no earlier than 2026-02-15 | RGA -FINISHING | 7421475 |
| 7437 | 40100.40200.41100.54700.56100.58500.80600.2471100 | TOILET DADO TILE FIXING | 10d | 2026-04-25 | 2026-05-04 | 7163 |  | RGA -FINISHING | 7424485 |
| 7438 | 40100.40200.41100.54700.56100.58500.80600.2471200 | TOILET FLOORING WORK | 7d | 2026-05-05 | 2026-05-11 | 7437 |  | RGA -FINISHING | 7424495 |
| 7439 | 40100.40200.41100.54700.56100.58500.80600.2471300 | FIRE FIGHTING | 8d | 2026-02-15 | 2026-02-22 | 7162 |  | RGA -FINISHING | 7424505 |
| 7440 | 40100.40200.41100.54700.56100.58500.80600.2471400 | INTERNAL PAINTING - PUTTY / PRIMER APPLICATION | 5d | 2026-05-24 | 2026-05-28 | 7442 |  | RGA -FINISHING | 7424515 |
| 7441 | 40100.40200.41100.54700.56100.58500.80600.2471500 | FLAT FLOORING | 7d | 2026-05-12 | 2026-05-18 | 7438 |  | RGA -FINISHING | 7424525 |
| 7442 | 40100.40200.41100.54700.56100.58500.80600.2471600 | WINDOW FIXING | 5d | 2026-05-19 | 2026-05-23 | 7441 |  | RGA -FINISHING | 7424535 |
| 7443 | 40100.40200.41100.54700.56100.58500.80600.2471700 | INTERNAL PAINTING - 1ST COAT | 4d | 2026-05-29 | 2026-06-01 | 7440 |  | RGA -FINISHING | 7424545 |
| 7444 | 40100.40200.41100.54700.56100.58500.80600.2471800 | INTERNAL DOOR FIXING | 15d | 2026-05-31 | 2026-06-14 | 7443FS-2d |  | RGA -FINISHING | 7424555 |
| 7445 | 40100.40200.41100.54700.56100.58500.80600.2471900 | WIRING & SWITCH PLATE FIXING | 8d | 2026-06-11 | 2026-06-18 | 7444FS-4d |  | RGA -FINISHING | 7424565 |
| 7446 | 40100.40200.41100.54700.56100.58500.80600.2472000 | TOILET FALSE CEILING | 7d | 2026-06-19 | 2026-06-25 | 7445 |  | RGA -FINISHING | 7424575 |
| 7447 | 40100.40200.41100.54700.56100.58500.80600.2472100 | MAIN DOOR FRAME SHUTTER FIXING | 6d | 2026-10-13 | 2026-10-18 | 7699 |  | RGA -FINISHING | 7424585 |
| 7448 | 40100.40200.41100.54700.56100.58500.80600.2472200 | FINAL COAT PAINT | 8d | 2026-10-19 | 2026-10-26 | 7447 |  | RGA -FINISHING | 7424595 |
| 7449 | 40100.40200.41100.54700.56100.58500.80700 | **17TH FLOOR** | 246d | 2026-02-23 | 2026-10-26 |  | start no earlier than 2026-02-23 | RGA -FINISHING | 7421485 |
| 7450 | 40100.40200.41100.54700.56100.58500.80700.2472300 | TOILET DADO TILE FIXING | 10d | 2026-05-03 | 2026-05-12 | 7170 |  | RGA -FINISHING | 7424605 |
| 7451 | 40100.40200.41100.54700.56100.58500.80700.2472400 | TOILET FLOORING WORK | 7d | 2026-05-13 | 2026-05-19 | 7450 |  | RGA -FINISHING | 7424615 |
| 7452 | 40100.40200.41100.54700.56100.58500.80700.2472500 | FIRE FIGHTING | 8d | 2026-02-23 | 2026-03-02 | 7169 |  | RGA -FINISHING | 7424625 |
| 7453 | 40100.40200.41100.54700.56100.58500.80700.2472600 | INTERNAL PAINTING - PUTTY / PRIMER APPLICATION | 5d | 2026-06-01 | 2026-06-05 | 7455 |  | RGA -FINISHING | 7424635 |
| 7454 | 40100.40200.41100.54700.56100.58500.80700.2472700 | FLAT FLOORING | 7d | 2026-05-20 | 2026-05-26 | 7451 |  | RGA -FINISHING | 7424645 |
| 7455 | 40100.40200.41100.54700.56100.58500.80700.2472800 | WINDOW FIXING | 5d | 2026-05-27 | 2026-05-31 | 7454 |  | RGA -FINISHING | 7424655 |
| 7456 | 40100.40200.41100.54700.56100.58500.80700.2472900 | INTERNAL PAINTING - 1ST COAT | 4d | 2026-06-06 | 2026-06-09 | 7453 |  | RGA -FINISHING | 7424665 |
| 7457 | 40100.40200.41100.54700.56100.58500.80700.2473000 | INTERNAL DOOR FIXING | 15d | 2026-06-08 | 2026-06-22 | 7456FS-2d |  | RGA -FINISHING | 7424675 |
| 7458 | 40100.40200.41100.54700.56100.58500.80700.2473100 | WIRING & SWITCH PLATE FIXING | 8d | 2026-06-19 | 2026-06-26 | 7457FS-4d |  | RGA -FINISHING | 7424685 |
| 7459 | 40100.40200.41100.54700.56100.58500.80700.2473200 | TOILET FALSE CEILING | 7d | 2026-06-27 | 2026-07-03 | 7458 |  | RGA -FINISHING | 7424695 |
| 7460 | 40100.40200.41100.54700.56100.58500.80700.2473300 | MAIN DOOR FRAME SHUTTER FIXING | 6d | 2026-10-13 | 2026-10-18 | 7707 |  | RGA -FINISHING | 7424705 |
| 7461 | 40100.40200.41100.54700.56100.58500.80700.2473400 | FINAL COAT PAINT | 8d | 2026-10-19 | 2026-10-26 | 7460 |  | RGA -FINISHING | 7424715 |

| ID | WBS | Task | Duration | Start | Finish | Predecessors | Constraint | Calendar | Unique_Task_ID |
| --- | --- | --- | --- | --- | --- | --- | --- | --- | --- |
| 7462 | 40100.40200.41100.54700.56100.58500.80800 | **18TH FLOOR** | 234d | 2026-03-07 | 2026-10-26 |  | start no earlier than 2026-03-07 | RGA -FINISHING | 7421495 |
| 7463 | 40100.40200.41100.54700.56100.58500.80800.2473500 | TOILET DADO TILE FIXING | 10d | 2026-05-03 | 2026-05-12 | 7177 |  | RGA -FINISHING | 7424725 |
| 7464 | 40100.40200.41100.54700.56100.58500.80800.2473600 | TOILET FLOORING WORK | 7d | 2026-05-13 | 2026-05-19 | 7463 |  | RGA -FINISHING | 7424735 |
| 7465 | 40100.40200.41100.54700.56100.58500.80800.2473700 | FIRE FIGHTING | 8d | 2026-03-07 | 2026-03-14 | 7176 |  | RGA -FINISHING | 7424745 |
| 7466 | 40100.40200.41100.54700.56100.58500.80800.2473800 | INTERNAL PAINTING - PUTTY / PRIMER APPLICATION | 5d | 2026-06-01 | 2026-06-05 | 7468 |  | RGA -FINISHING | 7424755 |
| 7467 | 40100.40200.41100.54700.56100.58500.80800.2473900 | FLAT FLOORING | 7d | 2026-05-20 | 2026-05-26 | 7464 |  | RGA -FINISHING | 7424765 |
| 7468 | 40100.40200.41100.54700.56100.58500.80800.2474000 | WINDOW FIXING | 5d | 2026-05-27 | 2026-05-31 | 7467 |  | RGA -FINISHING | 7424775 |
| 7469 | 40100.40200.41100.54700.56100.58500.80800.2474100 | INTERNAL PAINTING - 1ST COAT | 4d | 2026-06-06 | 2026-06-09 | 7466 |  | RGA -FINISHING | 7424785 |
| 7470 | 40100.40200.41100.54700.56100.58500.80800.2474200 | INTERNAL DOOR FIXING | 15d | 2026-06-08 | 2026-06-22 | 7469FS-2d |  | RGA -FINISHING | 7424795 |
| 7471 | 40100.40200.41100.54700.56100.58500.80800.2474300 | WIRING & SWITCH PLATE FIXING | 8d | 2026-06-19 | 2026-06-26 | 7470FS-4d |  | RGA -FINISHING | 7424805 |
| 7472 | 40100.40200.41100.54700.56100.58500.80800.2474400 | TOILET FALSE CEILING | 7d | 2026-06-27 | 2026-07-03 | 7471 |  | RGA -FINISHING | 7424815 |
| 7473 | 40100.40200.41100.54700.56100.58500.80800.2474500 | MAIN DOOR FRAME SHUTTER FIXING | 6d | 2026-10-13 | 2026-10-18 | 7715 |  | RGA -FINISHING | 7424825 |
| 7474 | 40100.40200.41100.54700.56100.58500.80800.2474600 | FINAL COAT PAINT | 8d | 2026-10-19 | 2026-10-26 | 7473 |  | RGA -FINISHING | 7424835 |
| 7475 | 40100.40200.41100.54700.56100.58500.80900 | **19TH FLOOR** | 236d | 2026-03-15 | 2026-11-05 |  | start no earlier than 2026-03-15 | RGA -FINISHING | 7421505 |
| 7476 | 40100.40200.41100.54700.56100.58500.80900.2474700 | TOILET DADO TILE FIXING | 10d | 2026-05-11 | 2026-05-20 | 7184 |  | RGA -FINISHING | 7424845 |
| 7477 | 40100.40200.41100.54700.56100.58500.80900.2474800 | TOILET FLOORING WORK | 7d | 2026-05-21 | 2026-05-27 | 7476 |  | RGA -FINISHING | 7424855 |
| 7478 | 40100.40200.41100.54700.56100.58500.80900.2474900 | FIRE FIGHTING | 8d | 2026-03-15 | 2026-03-22 | 7183 |  | RGA -FINISHING | 7424865 |
| 7479 | 40100.40200.41100.54700.56100.58500.80900.2475000 | INTERNAL PAINTING - PUTTY / PRIMER APPLICATION | 5d | 2026-06-09 | 2026-06-13 | 7481 |  | RGA -FINISHING | 7424875 |
| 7480 | 40100.40200.41100.54700.56100.58500.80900.2475100 | FLAT FLOORING | 7d | 2026-05-28 | 2026-06-03 | 7477 |  | RGA -FINISHING | 7424885 |
| 7481 | 40100.40200.41100.54700.56100.58500.80900.2475200 | WINDOW FIXING | 5d | 2026-06-04 | 2026-06-08 | 7480 |  | RGA -FINISHING | 7424895 |
| 7482 | 40100.40200.41100.54700.56100.58500.80900.2475300 | INTERNAL PAINTING - 1ST COAT | 4d | 2026-06-14 | 2026-06-17 | 7479 |  | RGA -FINISHING | 7424905 |
| 7483 | 40100.40200.41100.54700.56100.58500.80900.2475400 | INTERNAL DOOR FIXING | 15d | 2026-06-16 | 2026-06-30 | 7482FS-2d |  | RGA -FINISHING | 7424915 |
| 7484 | 40100.40200.41100.54700.56100.58500.80900.2475500 | WIRING & SWITCH PLATE FIXING | 8d | 2026-06-27 | 2026-07-04 | 7483FS-4d |  | RGA -FINISHING | 7424925 |
| 7485 | 40100.40200.41100.54700.56100.58500.80900.2475600 | TOILET FALSE CEILING | 7d | 2026-07-05 | 2026-07-11 | 7484 |  | RGA -FINISHING | 7424935 |
| 7486 | 40100.40200.41100.54700.56100.58500.80900.2475700 | MAIN DOOR FRAME SHUTTER FIXING | 6d | 2026-10-23 | 2026-10-28 | 7723 |  | RGA -FINISHING | 7424945 |
| 7487 | 40100.40200.41100.54700.56100.58500.80900.2475800 | FINAL COAT PAINT | 8d | 2026-10-29 | 2026-11-05 | 7486 |  | RGA -FINISHING | 7424955 |

| ID | WBS | Task | Duration | Start | Finish | Predecessors | Constraint | Calendar | Unique_Task_ID |
| --- | --- | --- | --- | --- | --- | --- | --- | --- | --- |
| 7488 | 40100.40200.41100.54700.56100.58500.81000 | **20TH FLOOR** | 228d | 2026-03-23 | 2026-11-05 |  | start no earlier than 2026-03-23 | RGA -FINISHING | 7421515 |
| 7489 | 40100.40200.41100.54700.56100.58500.81000.2475900 | TOILET DADO TILE FIXING | 10d | 2026-05-23 | 2026-06-01 | 7191 |  | RGA -FINISHING | 7424965 |
| 7490 | 40100.40200.41100.54700.56100.58500.81000.2476000 | TOILET FLOORING WORK | 7d | 2026-06-02 | 2026-06-08 | 7489 |  | RGA -FINISHING | 7424975 |
| 7491 | 40100.40200.41100.54700.56100.58500.81000.2476100 | FIRE FIGHTING | 8d | 2026-03-23 | 2026-03-30 | 7190 |  | RGA -FINISHING | 7424985 |
| 7492 | 40100.40200.41100.54700.56100.58500.81000.2476200 | INTERNAL PAINTING - PUTTY / PRIMER APPLICATION | 5d | 2026-06-21 | 2026-06-25 | 7494 |  | RGA -FINISHING | 7424995 |
| 7493 | 40100.40200.41100.54700.56100.58500.81000.2476300 | FLAT FLOORING | 7d | 2026-06-09 | 2026-06-15 | 7490 |  | RGA -FINISHING | 7425005 |
| 7494 | 40100.40200.41100.54700.56100.58500.81000.2476400 | WINDOW FIXING | 5d | 2026-06-16 | 2026-06-20 | 7493 |  | RGA -FINISHING | 7425015 |
| 7495 | 40100.40200.41100.54700.56100.58500.81000.2476500 | INTERNAL PAINTING - 1ST COAT | 4d | 2026-06-26 | 2026-06-29 | 7492 |  | RGA -FINISHING | 7425025 |
| 7496 | 40100.40200.41100.54700.56100.58500.81000.2476600 | INTERNAL DOOR FIXING | 15d | 2026-06-28 | 2026-07-12 | 7495FS-2d |  | RGA -FINISHING | 7425035 |
| 7497 | 40100.40200.41100.54700.56100.58500.81000.2476700 | WIRING & SWITCH PLATE FIXING | 8d | 2026-07-09 | 2026-07-16 | 7496FS-4d |  | RGA -FINISHING | 7425045 |
| 7498 | 40100.40200.41100.54700.56100.58500.81000.2476800 | TOILET FALSE CEILING | 7d | 2026-07-17 | 2026-07-23 | 7497 |  | RGA -FINISHING | 7425055 |
| 7499 | 40100.40200.41100.54700.56100.58500.81000.2476900 | MAIN DOOR FRAME SHUTTER FIXING | 6d | 2026-10-23 | 2026-10-28 | 7731 |  | RGA -FINISHING | 7425065 |
| 7500 | 40100.40200.41100.54700.56100.58500.81000.2477000 | FINAL COAT PAINT | 8d | 2026-10-29 | 2026-11-05 | 7499 |  | RGA -FINISHING | 7425075 |
| 7501 | 40100.40200.41100.54700.56100.58500.81100 | **21st FLOOR** | 220d | 2026-03-31 | 2026-11-05 |  | start no earlier than 2026-03-31 | RGA -FINISHING | 7421525 |
| 7502 | 40100.40200.41100.54700.56100.58500.81100.2477100 | TOILET DADO TILE FIXING | 10d | 2026-05-31 | 2026-06-09 | 7198 |  | RGA -FINISHING | 7425085 |
| 7503 | 40100.40200.41100.54700.56100.58500.81100.2477200 | TOILET FLOORING WORK | 7d | 2026-06-10 | 2026-06-16 | 7502 |  | RGA -FINISHING | 7425095 |
| 7504 | 40100.40200.41100.54700.56100.58500.81100.2477300 | FIRE FIGHTING | 8d | 2026-03-31 | 2026-04-07 | 7197 |  | RGA -FINISHING | 7425105 |
| 7505 | 40100.40200.41100.54700.56100.58500.81100.2477400 | INTERNAL PAINTING - PUTTY / PRIMER APPLICATION | 15d | 2026-06-29 | 2026-07-13 | 7507 |  | RGA -FINISHING | 7425115 |
| 7506 | 40100.40200.41100.54700.56100.58500.81100.2477500 | FLAT FLOORING | 5d | 2026-06-17 | 2026-06-21 | 7503 |  | RGA -FINISHING | 7425125 |
| 7507 | 40100.40200.41100.54700.56100.58500.81100.2477600 | WINDOW FIXING | 7d | 2026-06-22 | 2026-06-28 | 7506 |  | RGA -FINISHING | 7425135 |
| 7508 | 40100.40200.41100.54700.56100.58500.81100.2477700 | INTERNAL PAINTING - 1ST COAT | 5d | 2026-07-14 | 2026-07-18 | 7505 |  | RGA -FINISHING | 7425145 |
| 7509 | 40100.40200.41100.54700.56100.58500.81100.2477800 | INTERNAL DOOR FIXING | 4d | 2026-07-17 | 2026-07-20 | 7508FS-2d |  | RGA -FINISHING | 7425155 |
| 7510 | 40100.40200.41100.54700.56100.58500.81100.2477900 | WIRING & SWITCH PLATE FIXING | 8d | 2026-07-17 | 2026-07-24 | 7509FS-4d |  | RGA -FINISHING | 7425165 |
| 7511 | 40100.40200.41100.54700.56100.58500.81100.2478000 | TOILET FALSE CEILING | 7d | 2026-07-25 | 2026-07-31 | 7510 |  | RGA -FINISHING | 7425175 |
| 7512 | 40100.40200.41100.54700.56100.58500.81100.2478100 | MAIN DOOR FRAME SHUTTER FIXING | 6d | 2026-10-23 | 2026-10-28 | 7739 |  | RGA -FINISHING | 7425185 |
| 7513 | 40100.40200.41100.54700.56100.58500.81100.2478200 | FINAL COAT PAINT | 8d | 2026-10-29 | 2026-11-05 | 7512 |  | RGA -FINISHING | 7425195 |

| ID | WBS | Task | Duration | Start | Finish | Predecessors | Constraint | Calendar | Unique_Task_ID |
| --- | --- | --- | --- | --- | --- | --- | --- | --- | --- |
| 7514 | 40100.40200.41100.54700.56100.58500.81200 | **22nd FLOOR** | 212d | 2026-04-08 | 2026-11-05 |  | start no earlier than 2026-04-08 | RGA -FINISHING | 7421535 |
| 7515 | 40100.40200.41100.54700.56100.58500.81200.2478300 | TOILET DADO TILE FIXING | 10d | 2026-06-08 | 2026-06-17 | 7205 |  | RGA -FINISHING | 7425205 |
| 7516 | 40100.40200.41100.54700.56100.58500.81200.2478400 | TOILET FLOORING WORK | 7d | 2026-06-18 | 2026-06-24 | 7515 |  | RGA -FINISHING | 7425215 |
| 7517 | 40100.40200.41100.54700.56100.58500.81200.2478500 | FIRE FIGHTING | 8d | 2026-04-08 | 2026-04-15 | 7204 |  | RGA -FINISHING | 7425225 |
| 7518 | 40100.40200.41100.54700.56100.58500.81200.2478600 | INTERNAL PAINTING - PUTTY / PRIMER APPLICATION | 5d | 2026-07-04 | 2026-07-08 | 7520 |  | RGA -FINISHING | 7425235 |
| 7519 | 40100.40200.41100.54700.56100.58500.81200.2478700 | FLAT FLOORING | 7d | 2026-06-25 | 2026-07-01 | 7516 |  | RGA -FINISHING | 7425245 |
| 7520 | 40100.40200.41100.54700.56100.58500.81200.2478800 | WINDOW FIXING | 5d | 2026-06-29 | 2026-07-03 | 7507 |  | RGA -FINISHING | 7425255 |
| 7521 | 40100.40200.41100.54700.56100.58500.81200.2478900 | INTERNAL PAINTING - 1ST COAT | 4d | 2026-07-09 | 2026-07-12 | 7518 |  | RGA -FINISHING | 7425265 |
| 7522 | 40100.40200.41100.54700.56100.58500.81200.2479000 | INTERNAL DOOR FIXING | 15d | 2026-07-11 | 2026-07-25 | 7521FS-2d |  | RGA -FINISHING | 7425275 |
| 7523 | 40100.40200.41100.54700.56100.58500.81200.2479100 | WIRING & SWITCH PLATE FIXING | 8d | 2026-07-22 | 2026-07-29 | 7522FS-4d |  | RGA -FINISHING | 7425285 |
| 7524 | 40100.40200.41100.54700.56100.58500.81200.2479200 | TOILET FALSE CEILING | 7d | 2026-07-30 | 2026-08-05 | 7523 |  | RGA -FINISHING | 7425295 |
| 7525 | 40100.40200.41100.54700.56100.58500.81200.2479300 | MAIN DOOR FRAME SHUTTER FIXING | 6d | 2026-10-23 | 2026-10-28 | 7747 |  | RGA -FINISHING | 7425305 |
| 7526 | 40100.40200.41100.54700.56100.58500.81200.2479400 | FINAL COAT PAINT | 8d | 2026-10-29 | 2026-11-05 | 7525 |  | RGA -FINISHING | 7425315 |
| 7527 | 40100.40200.41100.54700.56100.58500.81300 | **23TH FLOOR** | 199d | 2026-05-01 | 2026-11-15 |  | start no earlier than 2026-05-01 | RGA -FINISHING | 7421545 |
| 7528 | 40100.40200.41100.54700.56100.58500.81300.2479500 | TOILET DADO TILE FIXING | 10d | 2026-07-06 | 2026-07-15 | 7212 |  | RGA -FINISHING | 7425325 |
| 7529 | 40100.40200.41100.54700.56100.58500.81300.2479600 | TOILET FLOORING WORK | 7d | 2026-07-16 | 2026-07-22 | 7528 |  | RGA -FINISHING | 7425335 |
| 7530 | 40100.40200.41100.54700.56100.58500.81300.2479700 | FIRE FIGHTING | 8d | 2026-05-01 | 2026-05-08 | 7211 |  | RGA -FINISHING | 7425345 |
| 7531 | 40100.40200.41100.54700.56100.58500.81300.2479800 | INTERNAL PAINTING - PUTTY / PRIMER APPLICATION | 5d | 2026-08-04 | 2026-08-08 | 7533 |  | RGA -FINISHING | 7425355 |
| 7532 | 40100.40200.41100.54700.56100.58500.81300.2479900 | FLAT FLOORING | 7d | 2026-07-23 | 2026-07-29 | 7529 |  | RGA -FINISHING | 7425365 |
| 7533 | 40100.40200.41100.54700.56100.58500.81300.2480000 | WINDOW FIXING | 5d | 2026-07-30 | 2026-08-03 | 7532 |  | RGA -FINISHING | 7425375 |
| 7534 | 40100.40200.41100.54700.56100.58500.81300.2480100 | INTERNAL PAINTING - 1ST COAT | 4d | 2026-08-09 | 2026-08-12 | 7531 |  | RGA -FINISHING | 7425385 |
| 7535 | 40100.40200.41100.54700.56100.58500.81300.2480200 | INTERNAL DOOR FIXING | 15d | 2026-08-11 | 2026-08-25 | 7534FS-2d |  | RGA -FINISHING | 7425395 |
| 7536 | 40100.40200.41100.54700.56100.58500.81300.2480300 | WIRING & SWITCH PLATE FIXING | 8d | 2026-08-22 | 2026-08-29 | 7535FS-4d |  | RGA -FINISHING | 7425405 |
| 7537 | 40100.40200.41100.54700.56100.58500.81300.2480400 | TOILET FALSE CEILING | 7d | 2026-08-30 | 2026-09-05 | 7536 |  | RGA -FINISHING | 7425415 |
| 7538 | 40100.40200.41100.54700.56100.58500.81300.2480500 | MAIN DOOR FRAME SHUTTER FIXING | 6d | 2026-11-02 | 2026-11-07 | 7755 |  | RGA -FINISHING | 7425425 |
| 7539 | 40100.40200.41100.54700.56100.58500.81300.2480600 | FINAL COAT PAINT | 8d | 2026-11-08 | 2026-11-15 | 7538 |  | RGA -FINISHING | 7425435 |

| ID | WBS | Task | Duration | Start | Finish | Predecessors | Constraint | Calendar | Unique_Task_ID |
| --- | --- | --- | --- | --- | --- | --- | --- | --- | --- |
| 7540 | 40100.40200.41100.54700.56100.58500.81400 | **24TH FLOOR** | 154d | 2026-06-15 | 2026-11-15 |  | start no earlier than 2026-06-15 | RGA -FINISHING | 7421555 |
| 7541 | 40100.40200.41100.54700.56100.58500.81400.2480700 | TOILET DADO TILE FIXING | 10d | 2026-06-15 | 2026-06-24 | 7221 |  | RGA -FINISHING | 7425445 |
| 7542 | 40100.40200.41100.54700.56100.58500.81400.2480800 | TOILET FLOORING WORK | 7d | 2026-06-25 | 2026-07-01 | 7541 |  | RGA -FINISHING | 7425455 |
| 7543 | 40100.40200.41100.54700.56100.58500.81400.2480900 | FIRE FIGHTING | 8d | 2026-07-14 | 2026-07-21 | 7219 |  | RGA -FINISHING | 7425465 |
| 7544 | 40100.40200.41100.54700.56100.58500.81400.2481000 | INTERNAL PAINTING - PUTTY / PRIMER APPLICATION | 5d | 2026-07-14 | 2026-07-18 | 7546 |  | RGA -FINISHING | 7425475 |
| 7545 | 40100.40200.41100.54700.56100.58500.81400.2481100 | FLAT FLOORING | 7d | 2026-07-02 | 2026-07-08 | 7542 |  | RGA -FINISHING | 7425485 |
| 7546 | 40100.40200.41100.54700.56100.58500.81400.2481200 | WINDOW FIXING | 5d | 2026-07-09 | 2026-07-13 | 7545 |  | RGA -FINISHING | 7425495 |
| 7547 | 40100.40200.41100.54700.56100.58500.81400.2481300 | INTERNAL PAINTING - 1ST COAT | 4d | 2026-07-19 | 2026-07-22 | 7544 |  | RGA -FINISHING | 7425505 |
| 7548 | 40100.40200.41100.54700.56100.58500.81400.2481400 | INTERNAL DOOR FIXING | 15d | 2026-07-21 | 2026-08-04 | 7547FS-2d |  | RGA -FINISHING | 7425515 |
| 7549 | 40100.40200.41100.54700.56100.58500.81400.2481500 | WIRING & SWITCH PLATE FIXING | 8d | 2026-08-01 | 2026-08-08 | 7548FS-4d |  | RGA -FINISHING | 7425525 |
| 7550 | 40100.40200.41100.54700.56100.58500.81400.2481600 | TOILET FALSE CEILING | 7d | 2026-08-09 | 2026-08-15 | 7549 |  | RGA -FINISHING | 7425535 |
| 7551 | 40100.40200.41100.54700.56100.58500.81400.2481700 | MAIN DOOR FRAME SHUTTER FIXING | 6d | 2026-11-02 | 2026-11-07 | 7763 |  | RGA -FINISHING | 7425545 |
| 7552 | 40100.40200.41100.54700.56100.58500.81400.2481800 | FINAL COAT PAINT | 8d | 2026-11-08 | 2026-11-15 | 7551 |  | RGA -FINISHING | 7425555 |
| 7553 | 40100.40200.41100.54700.56100.58500.81500 | **25TH FLOOR** | 181d | 2026-05-19 | 2026-11-15 |  | start no earlier than 2026-05-19 | RGA -FINISHING | 7421565 |
| 7554 | 40100.40200.41100.54700.56100.58500.81500.2481900 | TOILET DADO TILE FIXING | 10d | 2026-08-06 | 2026-08-15 | 7226 |  | RGA -FINISHING | 7425565 |
| 7555 | 40100.40200.41100.54700.56100.58500.81500.2482000 | TOILET FLOORING WORK | 7d | 2026-08-16 | 2026-08-22 | 7554 |  | RGA -FINISHING | 7425575 |
| 7556 | 40100.40200.41100.54700.56100.58500.81500.2482100 | FIRE FIGHTING | 8d | 2026-05-19 | 2026-05-26 | 7225 |  | RGA -FINISHING | 7425585 |
| 7557 | 40100.40200.41100.54700.56100.58500.81500.2482200 | INTERNAL PAINTING - PUTTY / PRIMER APPLICATION | 5d | 2026-09-04 | 2026-09-08 | 7559 |  | RGA -FINISHING | 7425595 |
| 7558 | 40100.40200.41100.54700.56100.58500.81500.2482300 | FLAT FLOORING | 7d | 2026-08-23 | 2026-08-29 | 7555 |  | RGA -FINISHING | 7425605 |
| 7559 | 40100.40200.41100.54700.56100.58500.81500.2482400 | WINDOW FIXING | 5d | 2026-08-30 | 2026-09-03 | 7558 |  | RGA -FINISHING | 7425615 |
| 7560 | 40100.40200.41100.54700.56100.58500.81500.2482500 | INTERNAL PAINTING - 1ST COAT | 4d | 2026-09-09 | 2026-09-12 | 7557 |  | RGA -FINISHING | 7425625 |
| 7561 | 40100.40200.41100.54700.56100.58500.81500.2482600 | INTERNAL DOOR FIXING | 15d | 2026-09-11 | 2026-09-25 | 7560FS-2d |  | RGA -FINISHING | 7425635 |
| 7562 | 40100.40200.41100.54700.56100.58500.81500.2482700 | WIRING & SWITCH PLATE FIXING | 8d | 2026-09-22 | 2026-09-29 | 7561FS-4d |  | RGA -FINISHING | 7425645 |
| 7563 | 40100.40200.41100.54700.56100.58500.81500.2482800 | TOILET FALSE CEILING | 7d | 2026-09-30 | 2026-10-06 | 7562 |  | RGA -FINISHING | 7425655 |
| 7564 | 40100.40200.41100.54700.56100.58500.81500.2482900 | MAIN DOOR FRAME SHUTTER FIXING | 6d | 2026-11-02 | 2026-11-07 | 7771 |  | RGA -FINISHING | 7425665 |
| 7565 | 40100.40200.41100.54700.56100.58500.81500.2483000 | FINAL COAT PAINT | 8d | 2026-11-08 | 2026-11-15 | 7564 |  | RGA -FINISHING | 7425675 |

| ID | WBS | Task | Duration | Start | Finish | Predecessors | Constraint | Calendar | Unique_Task_ID |
| --- | --- | --- | --- | --- | --- | --- | --- | --- | --- |
| 7566 | 40100.40200.41100.54700.56100.59800 | **LIFT LOBBY & STAIRCASE FINISHING WORK** | 441d | 2025-09-11 | 2026-11-25 |  | start no earlier than 2025-09-11 | RGA -FINISHING | 7421285 |
| 7567 | 40100.40200.41100.54700.56100.59800.247300 | **GROUND FLOOR** | 391d | 2025-09-11 | 2026-10-06 |  | start no earlier than 2025-09-11 | RGA -FINISHING | 7421665 |
| 7568 | 40100.40200.41100.54700.56100.59800.247300.2483100 | FIRE FIGHTING | 10d | 2025-09-11 | 2025-09-20 | 7244FS-5d |  | RGA -FINISHING | 7426645 |
| 7569 | 40100.40200.41100.54700.56100.59800.247300.2483200 | LIFT BLOCK WORK | 3d | 2026-05-05 | 2026-05-07 | 7036 |  | RGA -FINISHING | 7426655 |
| 7570 | 40100.40200.41100.54700.56100.59800.247300.2483300 | LIFT DADO WORK | 10d | 2026-08-24 | 2026-09-02 | 7778FS-30d |  | RGA -FINISHING | 7426665 |
| 7571 | 40100.40200.41100.54700.56100.59800.247300.2483400 | LOBBY FLOORING WORK | 10d | 2026-09-03 | 2026-09-12 | 7570 |  | RGA -FINISHING | 7426675 |
| 7572 | 40100.40200.41100.54700.56100.59800.247300.2483500 | ELECTRICAL WIRING & SWITCH PLATE FIXING WORK | 6d | 2026-09-13 | 2026-09-18 | 7571 |  | RGA -FINISHING | 7426685 |
| 7573 | 40100.40200.41100.54700.56100.59800.247300.2483600 | False ceiling & 1ST COAT PAINTING | 15d | 2026-09-19 | 2026-10-03 | 7572 |  | RGA -FINISHING | 7426695 |
| 7574 | 40100.40200.41100.54700.56100.59800.247300.2483700 | CLEANING | 3d | 2026-10-04 | 2026-10-06 | 7573 |  | RGA -FINISHING | 7426705 |
| 7575 | 40100.40200.41100.54700.56100.59800.247400 | **1ST FLOOR** | 391d | 2025-09-11 | 2026-10-06 |  | start no earlier than 2025-09-11 | RGA -FINISHING | 7421675 |
| 7576 | 40100.40200.41100.54700.56100.59800.247400.2483800 | FIRE FIGHTING | 10d | 2025-09-11 | 2025-09-20 | 7244FS-5d |  | RGA -FINISHING | 7426715 |
| 7577 | 40100.40200.41100.54700.56100.59800.247400.2483900 | LIFT BLOCK WORK | 3d | 2026-05-05 | 2026-05-07 | 7569SS |  | RGA -FINISHING | 7426725 |
| 7578 | 40100.40200.41100.54700.56100.59800.247400.2484000 | LIFT DADO WORK | 10d | 2026-08-24 | 2026-09-02 | 7570SS |  | RGA -FINISHING | 7426735 |
| 7579 | 40100.40200.41100.54700.56100.59800.247400.2484100 | LOBBY FLOORING WORK | 10d | 2026-09-03 | 2026-09-12 | 7578 |  | RGA -FINISHING | 7426745 |
| 7580 | 40100.40200.41100.54700.56100.59800.247400.2484200 | ELECTRICAL WIRING & SWITCH PLATE FIXING WORK | 6d | 2026-09-13 | 2026-09-18 | 7579 |  | RGA -FINISHING | 7426755 |
| 7581 | 40100.40200.41100.54700.56100.59800.247400.2484300 | False ceiling & 1ST COAT PAINTING | 15d | 2026-09-19 | 2026-10-03 | 7580 |  | RGA -FINISHING | 7426765 |
| 7582 | 40100.40200.41100.54700.56100.59800.247400.2484400 | CLEANING | 3d | 2026-10-04 | 2026-10-06 | 7581 |  | RGA -FINISHING | 7426775 |
| 7583 | 40100.40200.41100.54700.56100.59800.247500 | **2nd FLOOR** | 376d | 2025-09-26 | 2026-10-06 |  | start no earlier than 2025-09-26 | RGA -FINISHING | 7421685 |
| 7584 | 40100.40200.41100.54700.56100.59800.247500.2484500 | FIRE FIGHTING | 10d | 2025-09-26 | 2025-10-05 | 7257FS-5d |  | RGA -FINISHING | 7426785 |
| 7585 | 40100.40200.41100.54700.56100.59800.247500.2484600 | LIFT BLOCK WORK | 3d | 2026-05-05 | 2026-05-07 | 7577SS |  | RGA -FINISHING | 7426795 |
| 7586 | 40100.40200.41100.54700.56100.59800.247500.2484700 | LIFT DADO WORK | 10d | 2026-08-24 | 2026-09-02 | 7578SS |  | RGA -FINISHING | 7426805 |
| 7587 | 40100.40200.41100.54700.56100.59800.247500.2484800 | LOBBY FLOORING WORK | 10d | 2026-09-03 | 2026-09-12 | 7586 |  | RGA -FINISHING | 7426815 |
| 7588 | 40100.40200.41100.54700.56100.59800.247500.2484900 | ELECTRICAL WIRING & SWITCH PLATE FIXING WORK | 6d | 2026-09-13 | 2026-09-18 | 7587 |  | RGA -FINISHING | 7426825 |
| 7589 | 40100.40200.41100.54700.56100.59800.247500.2485000 | False ceiling & 1ST COAT PAINTING | 15d | 2026-09-19 | 2026-10-03 | 7588 |  | RGA -FINISHING | 7426835 |
| 7590 | 40100.40200.41100.54700.56100.59800.247500.2485100 | CLEANING | 3d | 2026-10-04 | 2026-10-06 | 7589 |  | RGA -FINISHING | 7426845 |

Notes:
- 7566: Completion in 12 months post last RCC
- 7568: Assumed
- 7576: Assumed
- 7584: Assumed

| ID | WBS | Task | Duration | Start | Finish | Predecessors | Constraint | Calendar | Unique_Task_ID |
| --- | --- | --- | --- | --- | --- | --- | --- | --- | --- |
| 7591 | 40100.40200.41100.54700.56100.59800.247600 | **3rd FLOOR** | 351d | 2025-10-21 | 2026-10-06 |  | start no earlier than 2025-10-21 | RGA -FINISHING | 7421695 |
| 7592 | 40100.40200.41100.54700.56100.59800.247600.2485200 | FIRE FIGHTING | 10d | 2025-10-21 | 2025-10-30 | 7270FS-5d |  | RGA -FINISHING | 7426855 |
| 7593 | 40100.40200.41100.54700.56100.59800.247600.2485300 | LIFT BLOCK WORK | 3d | 2026-05-05 | 2026-05-07 | 7585SS |  | RGA -FINISHING | 7426865 |
| 7594 | 40100.40200.41100.54700.56100.59800.247600.2485400 | LIFT DADO WORK | 10d | 2026-08-24 | 2026-09-02 | 7586SS |  | RGA -FINISHING | 7426875 |
| 7595 | 40100.40200.41100.54700.56100.59800.247600.2485500 | LOBBY FLOORING WORK | 10d | 2026-09-03 | 2026-09-12 | 7594 |  | RGA -FINISHING | 7426885 |
| 7596 | 40100.40200.41100.54700.56100.59800.247600.2485600 | ELECTRICAL WIRING & SWITCH PLATE FIXING WORK | 6d | 2026-09-13 | 2026-09-18 | 7595 |  | RGA -FINISHING | 7426895 |
| 7597 | 40100.40200.41100.54700.56100.59800.247600.2485700 | False ceiling & 1ST COAT PAINTING | 15d | 2026-09-19 | 2026-10-03 | 7596 |  | RGA -FINISHING | 7426905 |
| 7598 | 40100.40200.41100.54700.56100.59800.247600.2485800 | CLEANING | 3d | 2026-10-04 | 2026-10-06 | 7597 |  | RGA -FINISHING | 7426915 |
| 7599 | 40100.40200.41100.54700.56100.59800.247700 | **4th FLOOR** | 342d | 2025-10-30 | 2026-10-06 |  | start no earlier than 2025-10-30 | RGA -FINISHING | 7421705 |
| 7600 | 40100.40200.41100.54700.56100.59800.247700.2485900 | FIRE FIGHTING | 10d | 2025-10-30 | 2025-11-08 | 7283FS-5d |  | RGA -FINISHING | 7426925 |
| 7601 | 40100.40200.41100.54700.56100.59800.247700.2486000 | LIFT BLOCK WORK | 3d | 2026-05-05 | 2026-05-07 | 7593SS |  | RGA -FINISHING | 7426935 |
| 7602 | 40100.40200.41100.54700.56100.59800.247700.2486100 | LIFT DADO WORK | 10d | 2026-08-24 | 2026-09-02 | 7594SS |  | RGA -FINISHING | 7426945 |
| 7603 | 40100.40200.41100.54700.56100.59800.247700.2486200 | LOBBY FLOORING WORK | 10d | 2026-09-03 | 2026-09-12 | 7602 |  | RGA -FINISHING | 7426955 |
| 7604 | 40100.40200.41100.54700.56100.59800.247700.2486300 | ELECTRICAL WIRING & SWITCH PLATE FIXING WORK | 6d | 2026-09-13 | 2026-09-18 | 7603 |  | RGA -FINISHING | 7426965 |
| 7605 | 40100.40200.41100.54700.56100.59800.247700.2486400 | False ceiling & 1ST COAT PAINTING | 15d | 2026-09-19 | 2026-10-03 | 7604 |  | RGA -FINISHING | 7426975 |
| 7606 | 40100.40200.41100.54700.56100.59800.247700.2486500 | CLEANING | 3d | 2026-10-04 | 2026-10-06 | 7605 |  | RGA -FINISHING | 7426985 |
| 7607 | 40100.40200.41100.54700.56100.59800.247800 | **5th FLOOR** | 332d | 2025-11-09 | 2026-10-06 |  | start no earlier than 2025-11-09 | RGA -FINISHING | 7421715 |
| 7608 | 40100.40200.41100.54700.56100.59800.247800.2486600 | FIRE FIGHTING | 10d | 2025-11-09 | 2025-11-18 | 7296FS-5d |  | RGA -FINISHING | 7426995 |
| 7609 | 40100.40200.41100.54700.56100.59800.247800.2486700 | LIFT BLOCK WORK | 3d | 2026-05-05 | 2026-05-07 | 7601SS |  | RGA -FINISHING | 7427005 |
| 7610 | 40100.40200.41100.54700.56100.59800.247800.2486800 | LIFT DADO WORK | 10d | 2026-08-24 | 2026-09-02 | 7602SS |  | RGA -FINISHING | 7427015 |
| 7611 | 40100.40200.41100.54700.56100.59800.247800.2486900 | LOBBY FLOORING WORK | 10d | 2026-09-03 | 2026-09-12 | 7610 |  | RGA -FINISHING | 7427025 |
| 7612 | 40100.40200.41100.54700.56100.59800.247800.2487000 | ELECTRICAL WIRING & SWITCH PLATE FIXING WORK | 6d | 2026-09-13 | 2026-09-18 | 7611 |  | RGA -FINISHING | 7427035 |
| 7613 | 40100.40200.41100.54700.56100.59800.247800.2487100 | False ceiling & 1ST COAT PAINTING | 15d | 2026-09-19 | 2026-10-03 | 7612 |  | RGA -FINISHING | 7427045 |
| 7614 | 40100.40200.41100.54700.56100.59800.247800.2487200 | CLEANING | 3d | 2026-10-04 | 2026-10-06 | 7613 |  | RGA -FINISHING | 7427055 |

Notes:
- 7592: Assumed
- 7600: Assumed
- 7608: Assumed

| ID | WBS | Task | Duration | Start | Finish | Predecessors | Constraint | Calendar | Unique_Task_ID |
| --- | --- | --- | --- | --- | --- | --- | --- | --- | --- |
| 7615 | 40100.40200.41100.54700.56100.59800.247900 | **6th FLOOR** | 333d | 2025-11-18 | 2026-10-16 |  | start no earlier than 2025-11-18 | RGA -FINISHING | 7421725 |
| 7616 | 40100.40200.41100.54700.56100.59800.247900.2487300 | FIRE FIGHTING | 10d | 2025-11-18 | 2025-11-27 | 7309FS-5d |  | RGA -FINISHING | 7427065 |
| 7617 | 40100.40200.41100.54700.56100.59800.247900.2487400 | LIFT BLOCK WORK | 3d | 2026-05-08 | 2026-05-10 | 7609 |  | RGA -FINISHING | 7427075 |
| 7618 | 40100.40200.41100.54700.56100.59800.247900.2487500 | LIFT DADO WORK | 10d | 2026-09-03 | 2026-09-12 | 7610 |  | RGA -FINISHING | 7427085 |
| 7619 | 40100.40200.41100.54700.56100.59800.247900.2487600 | LOBBY FLOORING WORK | 10d | 2026-09-13 | 2026-09-22 | 7618 |  | RGA -FINISHING | 7427095 |
| 7620 | 40100.40200.41100.54700.56100.59800.247900.2487700 | ELECTRICAL WIRING & SWITCH PLATE FIXING WORK | 6d | 2026-09-23 | 2026-09-28 | 7619 |  | RGA -FINISHING | 7427105 |
| 7621 | 40100.40200.41100.54700.56100.59800.247900.2487800 | False ceiling & 1ST COAT PAINTING | 15d | 2026-09-29 | 2026-10-13 | 7620 |  | RGA -FINISHING | 7427115 |
| 7622 | 40100.40200.41100.54700.56100.59800.247900.2487900 | CLEANING | 3d | 2026-10-14 | 2026-10-16 | 7621 |  | RGA -FINISHING | 7427125 |
| 7623 | 40100.40200.41100.54700.56100.59800.248000 | **7th FLOOR** | 324d | 2025-11-27 | 2026-10-16 |  | start no earlier than 2025-11-27 | RGA -FINISHING | 7421735 |
| 7624 | 40100.40200.41100.54700.56100.59800.248000.2488000 | FIRE FIGHTING | 10d | 2025-11-27 | 2025-12-06 | 7322FS-5d |  | RGA -FINISHING | 7427135 |
| 7625 | 40100.40200.41100.54700.56100.59800.248000.2488100 | LIFT BLOCK WORK | 3d | 2026-05-08 | 2026-05-10 | 7617SS |  | RGA -FINISHING | 7427145 |
| 7626 | 40100.40200.41100.54700.56100.59800.248000.2488200 | LIFT DADO WORK | 10d | 2026-09-03 | 2026-09-12 | 7618SS |  | RGA -FINISHING | 7427155 |
| 7627 | 40100.40200.41100.54700.56100.59800.248000.2488300 | LOBBY FLOORING WORK | 10d | 2026-09-13 | 2026-09-22 | 7626 |  | RGA -FINISHING | 7427165 |
| 7628 | 40100.40200.41100.54700.56100.59800.248000.2488400 | ELECTRICAL WIRING & SWITCH PLATE FIXING WORK | 6d | 2026-09-23 | 2026-09-28 | 7627 |  | RGA -FINISHING | 7427175 |
| 7629 | 40100.40200.41100.54700.56100.59800.248000.2488500 | False ceiling & 1ST COAT PAINTING | 15d | 2026-09-29 | 2026-10-13 | 7628 |  | RGA -FINISHING | 7427185 |
| 7630 | 40100.40200.41100.54700.56100.59800.248000.2488600 | CLEANING | 3d | 2026-10-14 | 2026-10-16 | 7629 |  | RGA -FINISHING | 7427195 |
| 7631 | 40100.40200.41100.54700.56100.59800.248100 | **8th FLOOR** | 315d | 2025-12-06 | 2026-10-16 |  | start no earlier than 2025-12-06 | RGA -FINISHING | 7421745 |
| 7632 | 40100.40200.41100.54700.56100.59800.248100.2488700 | FIRE FIGHTING | 10d | 2025-12-06 | 2025-12-15 | 7335FS-5d |  | RGA -FINISHING | 7427205 |
| 7633 | 40100.40200.41100.54700.56100.59800.248100.2488800 | LIFT BLOCK WORK | 3d | 2026-05-08 | 2026-05-10 | 7625SS |  | RGA -FINISHING | 7427215 |
| 7634 | 40100.40200.41100.54700.56100.59800.248100.2488900 | LIFT DADO WORK | 10d | 2026-09-03 | 2026-09-12 | 7626SS |  | RGA -FINISHING | 7427225 |
| 7635 | 40100.40200.41100.54700.56100.59800.248100.2489000 | LOBBY FLOORING WORK | 10d | 2026-09-13 | 2026-09-22 | 7634 |  | RGA -FINISHING | 7427235 |
| 7636 | 40100.40200.41100.54700.56100.59800.248100.2489100 | ELECTRICAL WIRING & SWITCH PLATE FIXING WORK | 6d | 2026-09-23 | 2026-09-28 | 7635 |  | RGA -FINISHING | 7427245 |
| 7637 | 40100.40200.41100.54700.56100.59800.248100.2489200 | False ceiling & 1ST COAT PAINTING | 15d | 2026-09-29 | 2026-10-13 | 7636 |  | RGA -FINISHING | 7427255 |
| 7638 | 40100.40200.41100.54700.56100.59800.248100.2489300 | CLEANING | 3d | 2026-10-14 | 2026-10-16 | 7637 |  | RGA -FINISHING | 7427265 |

Notes:
- 7616: Assumed
- 7624: Assumed
- 7632: Assumed

| ID | WBS | Task | Duration | Start | Finish | Predecessors | Constraint | Calendar | Unique_Task_ID |
| --- | --- | --- | --- | --- | --- | --- | --- | --- | --- |
| 7639 | 40100.40200.41100.54700.56100.59800.248200 | **9th FLOOR** | 306d | 2025-12-15 | 2026-10-16 |  | start no earlier than 2025-12-15 | RGA -FINISHING | 7421755 |
| 7640 | 40100.40200.41100.54700.56100.59800.248200.2489400 | FIRE FIGHTING | 10d | 2025-12-15 | 2025-12-24 | 7348FS-5d |  | RGA -FINISHING | 7427275 |
| 7641 | 40100.40200.41100.54700.56100.59800.248200.2489500 | LIFT BLOCK WORK | 3d | 2026-05-08 | 2026-05-10 | 7633SS |  | RGA -FINISHING | 7427285 |
| 7642 | 40100.40200.41100.54700.56100.59800.248200.2489600 | LIFT DADO WORK | 10d | 2026-09-03 | 2026-09-12 | 7634SS |  | RGA -FINISHING | 7427295 |
| 7643 | 40100.40200.41100.54700.56100.59800.248200.2489700 | LOBBY FLOORING WORK | 10d | 2026-09-13 | 2026-09-22 | 7642 |  | RGA -FINISHING | 7427305 |
| 7644 | 40100.40200.41100.54700.56100.59800.248200.2489800 | ELECTRICAL WIRING & SWITCH PLATE FIXING WORK | 6d | 2026-09-23 | 2026-09-28 | 7643 |  | RGA -FINISHING | 7427315 |
| 7645 | 40100.40200.41100.54700.56100.59800.248200.2489900 | False ceiling & 1ST COAT PAINTING | 15d | 2026-09-29 | 2026-10-13 | 7644 |  | RGA -FINISHING | 7427325 |
| 7646 | 40100.40200.41100.54700.56100.59800.248200.2490000 | CLEANING | 3d | 2026-10-14 | 2026-10-16 | 7645 |  | RGA -FINISHING | 7427335 |
| 7647 | 40100.40200.41100.54700.56100.59800.248300 | **10th FLOOR** | 245d | 2026-02-14 | 2026-10-16 |  | start no earlier than 2026-02-14 | RGA -FINISHING | 7421765 |
| 7648 | 40100.40200.41100.54700.56100.59800.248300.2490100 | FIRE FIGHTING | 10d | 2026-02-14 | 2026-02-23 | 7361FS-5d |  | RGA -FINISHING | 7427345 |
| 7649 | 40100.40200.41100.54700.56100.59800.248300.2490200 | LIFT BLOCK WORK | 3d | 2026-05-08 | 2026-05-10 | 7641SS |  | RGA -FINISHING | 7427355 |
| 7650 | 40100.40200.41100.54700.56100.59800.248300.2490300 | LIFT DADO WORK | 10d | 2026-09-03 | 2026-09-12 | 7642SS |  | RGA -FINISHING | 7427365 |
| 7651 | 40100.40200.41100.54700.56100.59800.248300.2490400 | LOBBY FLOORING WORK | 10d | 2026-09-13 | 2026-09-22 | 7650 |  | RGA -FINISHING | 7427375 |
| 7652 | 40100.40200.41100.54700.56100.59800.248300.2490500 | ELECTRICAL WIRING & SWITCH PLATE FIXING WORK | 6d | 2026-09-23 | 2026-09-28 | 7651 |  | RGA -FINISHING | 7427385 |
| 7653 | 40100.40200.41100.54700.56100.59800.248300.2490600 | False ceiling & 1ST COAT PAINTING | 15d | 2026-09-29 | 2026-10-13 | 7652 |  | RGA -FINISHING | 7427395 |
| 7654 | 40100.40200.41100.54700.56100.59800.248300.2490700 | CLEANING | 3d | 2026-10-14 | 2026-10-16 | 7653 |  | RGA -FINISHING | 7427405 |
| 7655 | 40100.40200.41100.54700.56100.59800.248400 | **11th FLOOR** | 298d | 2026-01-02 | 2026-10-26 |  | start no earlier than 2026-01-02 | RGA -FINISHING | 7421775 |
| 7656 | 40100.40200.41100.54700.56100.59800.248400.2490800 | FIRE FIGHTING | 10d | 2026-01-02 | 2026-01-11 | 7374FS-5d |  | RGA -FINISHING | 7427415 |
| 7657 | 40100.40200.41100.54700.56100.59800.248400.2490900 | LIFT BLOCK WORK | 3d | 2026-05-11 | 2026-05-13 | 7649 |  | RGA -FINISHING | 7427425 |
| 7658 | 40100.40200.41100.54700.56100.59800.248400.2491000 | LIFT DADO WORK | 10d | 2026-09-13 | 2026-09-22 | 7650 |  | RGA -FINISHING | 7427435 |
| 7659 | 40100.40200.41100.54700.56100.59800.248400.2491100 | LOBBY FLOORING WORK | 10d | 2026-09-23 | 2026-10-02 | 7658 |  | RGA -FINISHING | 7427445 |
| 7660 | 40100.40200.41100.54700.56100.59800.248400.2491200 | ELECTRICAL WIRING & SWITCH PLATE FIXING WORK | 6d | 2026-10-03 | 2026-10-08 | 7659 |  | RGA -FINISHING | 7427455 |
| 7661 | 40100.40200.41100.54700.56100.59800.248400.2491300 | False ceiling & 1ST COAT PAINTING | 15d | 2026-10-09 | 2026-10-23 | 7660 |  | RGA -FINISHING | 7427465 |
| 7662 | 40100.40200.41100.54700.56100.59800.248400.2491400 | CLEANING | 3d | 2026-10-24 | 2026-10-26 | 7661 |  | RGA -FINISHING | 7427475 |

Notes:
- 7640: Assumed
- 7648: Assumed
- 7656: Assumed

| ID | WBS | Task | Duration | Start | Finish | Predecessors | Constraint | Calendar | Unique_Task_ID |
| --- | --- | --- | --- | --- | --- | --- | --- | --- | --- |
| 7663 | 40100.40200.41100.54700.56100.59800.248500 | **12th FLOOR** | 289d | 2026-01-11 | 2026-10-26 |  | start no earlier than 2026-01-11 | RGA -FINISHING | 7421785 |
| 7664 | 40100.40200.41100.54700.56100.59800.248500.2491500 | FIRE FIGHTING | 10d | 2026-01-11 | 2026-01-20 | 7387FS-5d |  | RGA -FINISHING | 7427485 |
| 7665 | 40100.40200.41100.54700.56100.59800.248500.2491600 | LIFT BLOCK WORK | 3d | 2026-05-11 | 2026-05-13 | 7657SS |  | RGA -FINISHING | 7427495 |
| 7666 | 40100.40200.41100.54700.56100.59800.248500.2491700 | LIFT DADO WORK | 10d | 2026-09-13 | 2026-09-22 | 7658SS |  | RGA -FINISHING | 7427505 |
| 7667 | 40100.40200.41100.54700.56100.59800.248500.2491800 | LOBBY FLOORING WORK | 10d | 2026-09-23 | 2026-10-02 | 7666 |  | RGA -FINISHING | 7427515 |
| 7668 | 40100.40200.41100.54700.56100.59800.248500.2491900 | ELECTRICAL WIRING & SWITCH PLATE FIXING WORK | 6d | 2026-10-03 | 2026-10-08 | 7667 |  | RGA -FINISHING | 7427525 |
| 7669 | 40100.40200.41100.54700.56100.59800.248500.2492000 | False ceiling & 1ST COAT PAINTING | 15d | 2026-10-09 | 2026-10-23 | 7668 |  | RGA -FINISHING | 7427535 |
| 7670 | 40100.40200.41100.54700.56100.59800.248500.2492100 | CLEANING | 3d | 2026-10-24 | 2026-10-26 | 7669 |  | RGA -FINISHING | 7427545 |
| 7671 | 40100.40200.41100.54700.56100.59800.248600 | **13th FLOOR** | 278d | 2026-01-22 | 2026-10-26 |  | start no earlier than 2026-01-22 | RGA -FINISHING | 7421795 |
| 7672 | 40100.40200.41100.54700.56100.59800.248600.2492200 | FIRE FIGHTING | 10d | 2026-01-22 | 2026-01-31 | 7400FS-5d |  | RGA -FINISHING | 7427555 |
| 7673 | 40100.40200.41100.54700.56100.59800.248600.2492300 | LIFT BLOCK WORK | 3d | 2026-05-11 | 2026-05-13 | 7665SS |  | RGA -FINISHING | 7427565 |
| 7674 | 40100.40200.41100.54700.56100.59800.248600.2492400 | LIFT DADO WORK | 10d | 2026-09-13 | 2026-09-22 | 7666SS |  | RGA -FINISHING | 7427575 |
| 7675 | 40100.40200.41100.54700.56100.59800.248600.2492500 | LOBBY FLOORING WORK | 10d | 2026-09-23 | 2026-10-02 | 7674 |  | RGA -FINISHING | 7427585 |
| 7676 | 40100.40200.41100.54700.56100.59800.248600.2492600 | ELECTRICAL WIRING & SWITCH PLATE FIXING WORK | 6d | 2026-10-03 | 2026-10-08 | 7675 |  | RGA -FINISHING | 7427595 |
| 7677 | 40100.40200.41100.54700.56100.59800.248600.2492700 | False ceiling & 1ST COAT PAINTING | 15d | 2026-10-09 | 2026-10-23 | 7676 |  | RGA -FINISHING | 7427605 |
| 7678 | 40100.40200.41100.54700.56100.59800.248600.2492800 | CLEANING | 3d | 2026-10-24 | 2026-10-26 | 7677 |  | RGA -FINISHING | 7427615 |
| 7679 | 40100.40200.41100.54700.56100.59800.248700 | **14th FLOOR** | 269d | 2026-01-31 | 2026-10-26 |  | start no earlier than 2026-01-31 | RGA -FINISHING | 7421805 |
| 7680 | 40100.40200.41100.54700.56100.59800.248700.2492900 | FIRE FIGHTING | 10d | 2026-01-31 | 2026-02-09 | 7413FS-5d |  | RGA -FINISHING | 7427625 |
| 7681 | 40100.40200.41100.54700.56100.59800.248700.2493000 | LIFT BLOCK WORK | 3d | 2026-05-11 | 2026-05-13 | 7673SS |  | RGA -FINISHING | 7427635 |
| 7682 | 40100.40200.41100.54700.56100.59800.248700.2493100 | LIFT DADO WORK | 10d | 2026-09-13 | 2026-09-22 | 7674SS |  | RGA -FINISHING | 7427645 |
| 7683 | 40100.40200.41100.54700.56100.59800.248700.2493200 | LOBBY FLOORING WORK | 10d | 2026-09-23 | 2026-10-02 | 7682 |  | RGA -FINISHING | 7427655 |
| 7684 | 40100.40200.41100.54700.56100.59800.248700.2493300 | ELECTRICAL WIRING & SWITCH PLATE FIXING WORK | 6d | 2026-10-03 | 2026-10-08 | 7683 |  | RGA -FINISHING | 7427665 |
| 7685 | 40100.40200.41100.54700.56100.59800.248700.2493400 | False ceiling & 1ST COAT PAINTING | 15d | 2026-10-09 | 2026-10-23 | 7684 |  | RGA -FINISHING | 7427675 |
| 7686 | 40100.40200.41100.54700.56100.59800.248700.2493500 | CLEANING | 3d | 2026-10-24 | 2026-10-26 | 7685 |  | RGA -FINISHING | 7427685 |

Notes:
- 7664: Assumed
- 7672: Assumed
- 7680: Assumed

| ID | WBS | Task | Duration | Start | Finish | Predecessors | Constraint | Calendar | Unique_Task_ID |
| --- | --- | --- | --- | --- | --- | --- | --- | --- | --- |
| 7687 | 40100.40200.41100.54700.56100.59800.248800 | **15th FLOOR** | 269d | 2026-02-10 | 2026-11-05 |  | start no earlier than 2026-02-10 | RGA -FINISHING | 7421815 |
| 7688 | 40100.40200.41100.54700.56100.59800.248800.2493600 | FIRE FIGHTING | 10d | 2026-02-10 | 2026-02-19 | 7426FS-5d |  | RGA -FINISHING | 7427695 |
| 7689 | 40100.40200.41100.54700.56100.59800.248800.2493700 | LIFT BLOCK WORK | 3d | 2026-05-14 | 2026-05-16 | 7681 |  | RGA -FINISHING | 7427705 |
| 7690 | 40100.40200.41100.54700.56100.59800.248800.2493800 | LIFT DADO WORK | 10d | 2026-09-23 | 2026-10-02 | 7682 |  | RGA -FINISHING | 7427715 |
| 7691 | 40100.40200.41100.54700.56100.59800.248800.2493900 | LOBBY FLOORING WORK | 10d | 2026-10-03 | 2026-10-12 | 7690 |  | RGA -FINISHING | 7427725 |
| 7692 | 40100.40200.41100.54700.56100.59800.248800.2494000 | ELECTRICAL WIRING & SWITCH PLATE FIXING WORK | 6d | 2026-10-13 | 2026-10-18 | 7691 |  | RGA -FINISHING | 7427735 |
| 7693 | 40100.40200.41100.54700.56100.59800.248800.2494100 | False ceiling & 1ST COAT PAINTING | 15d | 2026-10-19 | 2026-11-02 | 7692 |  | RGA -FINISHING | 7427745 |
| 7694 | 40100.40200.41100.54700.56100.59800.248800.2494200 | CLEANING | 3d | 2026-11-03 | 2026-11-05 | 7693 |  | RGA -FINISHING | 7427755 |
| 7695 | 40100.40200.41100.54700.56100.59800.248900 | **16th FLOOR** | 261d | 2026-02-18 | 2026-11-05 |  | start no earlier than 2026-02-18 | RGA -FINISHING | 7421825 |
| 7696 | 40100.40200.41100.54700.56100.59800.248900.2494300 | FIRE FIGHTING | 10d | 2026-02-18 | 2026-02-27 | 7439FS-5d |  | RGA -FINISHING | 7427765 |
| 7697 | 40100.40200.41100.54700.56100.59800.248900.2494400 | LIFT BLOCK WORK | 3d | 2026-05-14 | 2026-05-16 | 7689SS |  | RGA -FINISHING | 7427775 |
| 7698 | 40100.40200.41100.54700.56100.59800.248900.2494500 | LIFT DADO WORK | 10d | 2026-09-23 | 2026-10-02 | 7690SS |  | RGA -FINISHING | 7427785 |
| 7699 | 40100.40200.41100.54700.56100.59800.248900.2494600 | LOBBY FLOORING WORK | 10d | 2026-10-03 | 2026-10-12 | 7698 |  | RGA -FINISHING | 7427795 |
| 7700 | 40100.40200.41100.54700.56100.59800.248900.2494700 | ELECTRICAL WIRING & SWITCH PLATE FIXING WORK | 6d | 2026-10-13 | 2026-10-18 | 7699 |  | RGA -FINISHING | 7427805 |
| 7701 | 40100.40200.41100.54700.56100.59800.248900.2494800 | False ceiling & 1ST COAT PAINTING | 15d | 2026-10-19 | 2026-11-02 | 7700 |  | RGA -FINISHING | 7427815 |
| 7702 | 40100.40200.41100.54700.56100.59800.248900.2494900 | CLEANING | 3d | 2026-11-03 | 2026-11-05 | 7701 |  | RGA -FINISHING | 7427825 |
| 7703 | 40100.40200.41100.54700.56100.59800.249000 | **17th FLOOR** | 253d | 2026-02-26 | 2026-11-05 |  | start no earlier than 2026-02-26 | RGA -FINISHING | 7421835 |
| 7704 | 40100.40200.41100.54700.56100.59800.249000.2495000 | FIRE FIGHTING | 10d | 2026-02-26 | 2026-03-07 | 7452FS-5d |  | RGA -FINISHING | 7427835 |
| 7705 | 40100.40200.41100.54700.56100.59800.249000.2495100 | LIFT BLOCK WORK | 3d | 2026-05-14 | 2026-05-16 | 7697SS |  | RGA -FINISHING | 7427845 |
| 7706 | 40100.40200.41100.54700.56100.59800.249000.2495200 | LIFT DADO WORK | 10d | 2026-09-23 | 2026-10-02 | 7698SS |  | RGA -FINISHING | 7427855 |
| 7707 | 40100.40200.41100.54700.56100.59800.249000.2495300 | LOBBY FLOORING WORK | 10d | 2026-10-03 | 2026-10-12 | 7706 |  | RGA -FINISHING | 7427865 |
| 7708 | 40100.40200.41100.54700.56100.59800.249000.2495400 | ELECTRICAL WIRING & SWITCH PLATE FIXING WORK | 6d | 2026-10-13 | 2026-10-18 | 7707 |  | RGA -FINISHING | 7427875 |
| 7709 | 40100.40200.41100.54700.56100.59800.249000.2495500 | False ceiling & 1ST COAT PAINTING | 15d | 2026-10-19 | 2026-11-02 | 7708 |  | RGA -FINISHING | 7427885 |
| 7710 | 40100.40200.41100.54700.56100.59800.249000.2495600 | CLEANING | 3d | 2026-11-03 | 2026-11-05 | 7709 |  | RGA -FINISHING | 7427895 |

Notes:
- 7688: Assumed
- 7696: Assumed
- 7704: Assumed

| ID | WBS | Task | Duration | Start | Finish | Predecessors | Constraint | Calendar | Unique_Task_ID |
| --- | --- | --- | --- | --- | --- | --- | --- | --- | --- |
| 7711 | 40100.40200.41100.54700.56100.59800.249100 | **18th FLOOR** | 241d | 2026-03-10 | 2026-11-05 |  | start no earlier than 2026-03-10 | RGA -FINISHING | 7421845 |
| 7712 | 40100.40200.41100.54700.56100.59800.249100.2495700 | FIRE FIGHTING | 10d | 2026-03-10 | 2026-03-19 | 7465FS-5d |  | RGA -FINISHING | 7427905 |
| 7713 | 40100.40200.41100.54700.56100.59800.249100.2495800 | LIFT BLOCK WORK | 3d | 2026-05-14 | 2026-05-16 | 7705SS |  | RGA -FINISHING | 7427915 |
| 7714 | 40100.40200.41100.54700.56100.59800.249100.2495900 | LIFT DADO WORK | 10d | 2026-09-23 | 2026-10-02 | 7706SS |  | RGA -FINISHING | 7427925 |
| 7715 | 40100.40200.41100.54700.56100.59800.249100.2496000 | LOBBY FLOORING WORK | 10d | 2026-10-03 | 2026-10-12 | 7714 |  | RGA -FINISHING | 7427935 |
| 7716 | 40100.40200.41100.54700.56100.59800.249100.2496100 | ELECTRICAL WIRING & SWITCH PLATE FIXING WORK | 6d | 2026-10-13 | 2026-10-18 | 7715 |  | RGA -FINISHING | 7427945 |
| 7717 | 40100.40200.41100.54700.56100.59800.249100.2496200 | False ceiling & 1ST COAT PAINTING | 15d | 2026-10-19 | 2026-11-02 | 7716 |  | RGA -FINISHING | 7427955 |
| 7718 | 40100.40200.41100.54700.56100.59800.249100.2496300 | CLEANING | 3d | 2026-11-03 | 2026-11-05 | 7717 |  | RGA -FINISHING | 7427965 |
| 7719 | 40100.40200.41100.54700.56100.59800.249200 | **19th FLOOR** | 243d | 2026-03-18 | 2026-11-15 |  | start no earlier than 2026-03-18 | RGA -FINISHING | 7421855 |
| 7720 | 40100.40200.41100.54700.56100.59800.249200.2496400 | FIRE FIGHTING | 10d | 2026-03-18 | 2026-03-27 | 7478FS-5d |  | RGA -FINISHING | 7427975 |
| 7721 | 40100.40200.41100.54700.56100.59800.249200.2496500 | LIFT BLOCK WORK | 3d | 2026-05-17 | 2026-05-19 | 7713 |  | RGA -FINISHING | 7427985 |
| 7722 | 40100.40200.41100.54700.56100.59800.249200.2496600 | LIFT DADO WORK | 10d | 2026-10-03 | 2026-10-12 | 7714 |  | RGA -FINISHING | 7427995 |
| 7723 | 40100.40200.41100.54700.56100.59800.249200.2496700 | LOBBY FLOORING WORK | 10d | 2026-10-13 | 2026-10-22 | 7722 |  | RGA -FINISHING | 7428005 |
| 7724 | 40100.40200.41100.54700.56100.59800.249200.2496800 | ELECTRICAL WIRING & SWITCH PLATE FIXING WORK | 6d | 2026-10-23 | 2026-10-28 | 7723 |  | RGA -FINISHING | 7428015 |
| 7725 | 40100.40200.41100.54700.56100.59800.249200.2496900 | False ceiling & 1ST COAT PAINTING | 15d | 2026-10-29 | 2026-11-12 | 7724 |  | RGA -FINISHING | 7428025 |
| 7726 | 40100.40200.41100.54700.56100.59800.249200.2497000 | CLEANING | 3d | 2026-11-13 | 2026-11-15 | 7725 |  | RGA -FINISHING | 7428035 |
| 7727 | 40100.40200.41100.54700.56100.59800.249300 | **20th FLOOR** | 235d | 2026-03-26 | 2026-11-15 |  | start no earlier than 2026-03-26 | RGA -FINISHING | 7421865 |
| 7728 | 40100.40200.41100.54700.56100.59800.249300.2497100 | FIRE FIGHTING | 10d | 2026-03-26 | 2026-04-04 | 7491FS-5d |  | RGA -FINISHING | 7428045 |
| 7729 | 40100.40200.41100.54700.56100.59800.249300.2497200 | LIFT BLOCK WORK | 3d | 2026-05-17 | 2026-05-19 | 7721SS |  | RGA -FINISHING | 7428055 |
| 7730 | 40100.40200.41100.54700.56100.59800.249300.2497300 | LIFT DADO WORK | 10d | 2026-10-03 | 2026-10-12 | 7722SS |  | RGA -FINISHING | 7428065 |
| 7731 | 40100.40200.41100.54700.56100.59800.249300.2497400 | LOBBY FLOORING WORK | 10d | 2026-10-13 | 2026-10-22 | 7730 |  | RGA -FINISHING | 7428075 |
| 7732 | 40100.40200.41100.54700.56100.59800.249300.2497500 | ELECTRICAL WIRING & SWITCH PLATE FIXING WORK | 6d | 2026-10-23 | 2026-10-28 | 7731 |  | RGA -FINISHING | 7428085 |
| 7733 | 40100.40200.41100.54700.56100.59800.249300.2497600 | False ceiling & 1ST COAT PAINTING | 15d | 2026-10-29 | 2026-11-12 | 7732 |  | RGA -FINISHING | 7428095 |
| 7734 | 40100.40200.41100.54700.56100.59800.249300.2497700 | CLEANING | 3d | 2026-11-13 | 2026-11-15 | 7733 |  | RGA -FINISHING | 7428105 |

Notes:
- 7712: Assumed
- 7720: Assumed
- 7728: Assumed

| ID | WBS | Task | Duration | Start | Finish | Predecessors | Constraint | Calendar | Unique_Task_ID |
| --- | --- | --- | --- | --- | --- | --- | --- | --- | --- |
| 7735 | 40100.40200.41100.54700.56100.59800.249400 | **21th FLOOR** | 227d | 2026-04-03 | 2026-11-15 |  | start no earlier than 2026-04-03 | RGA -FINISHING | 7421875 |
| 7736 | 40100.40200.41100.54700.56100.59800.249400.2497800 | FIRE FIGHTING | 10d | 2026-04-03 | 2026-04-12 | 7504FS-5d |  | RGA -FINISHING | 7428115 |
| 7737 | 40100.40200.41100.54700.56100.59800.249400.2497900 | LIFT BLOCK WORK | 3d | 2026-05-17 | 2026-05-19 | 7729SS |  | RGA -FINISHING | 7428125 |
| 7738 | 40100.40200.41100.54700.56100.59800.249400.2498000 | LIFT DADO WORK | 10d | 2026-10-03 | 2026-10-12 | 7730SS |  | RGA -FINISHING | 7428135 |
| 7739 | 40100.40200.41100.54700.56100.59800.249400.2498100 | LOBBY FLOORING WORK | 10d | 2026-10-13 | 2026-10-22 | 7738 |  | RGA -FINISHING | 7428145 |
| 7740 | 40100.40200.41100.54700.56100.59800.249400.2498200 | ELECTRICAL WIRING & SWITCH PLATE FIXING WORK | 6d | 2026-10-23 | 2026-10-28 | 7739 |  | RGA -FINISHING | 7428155 |
| 7741 | 40100.40200.41100.54700.56100.59800.249400.2498300 | False ceiling & 1ST COAT PAINTING | 15d | 2026-10-29 | 2026-11-12 | 7740 |  | RGA -FINISHING | 7428165 |
| 7742 | 40100.40200.41100.54700.56100.59800.249400.2498400 | CLEANING | 3d | 2026-11-13 | 2026-11-15 | 7741 |  | RGA -FINISHING | 7428175 |
| 7743 | 40100.40200.41100.54700.56100.59800.249500 | **22th FLOOR** | 219d | 2026-04-11 | 2026-11-15 |  | start no earlier than 2026-04-11 | RGA -FINISHING | 7421885 |
| 7744 | 40100.40200.41100.54700.56100.59800.249500.2498500 | FIRE FIGHTING | 10d | 2026-04-11 | 2026-04-20 | 7517FS-5d |  | RGA -FINISHING | 7428185 |
| 7745 | 40100.40200.41100.54700.56100.59800.249500.2498600 | LIFT BLOCK WORK | 3d | 2026-05-17 | 2026-05-19 | 7737SS |  | RGA -FINISHING | 7428195 |
| 7746 | 40100.40200.41100.54700.56100.59800.249500.2498700 | LIFT DADO WORK | 10d | 2026-10-03 | 2026-10-12 | 7738SS |  | RGA -FINISHING | 7428205 |
| 7747 | 40100.40200.41100.54700.56100.59800.249500.2498800 | LOBBY FLOORING WORK | 10d | 2026-10-13 | 2026-10-22 | 7746 |  | RGA -FINISHING | 7428215 |
| 7748 | 40100.40200.41100.54700.56100.59800.249500.2498900 | ELECTRICAL WIRING & SWITCH PLATE FIXING WORK | 6d | 2026-10-23 | 2026-10-28 | 7747 |  | RGA -FINISHING | 7428225 |
| 7749 | 40100.40200.41100.54700.56100.59800.249500.2499000 | False ceiling & 1ST COAT PAINTING | 15d | 2026-10-29 | 2026-11-12 | 7748 |  | RGA -FINISHING | 7428235 |
| 7750 | 40100.40200.41100.54700.56100.59800.249500.2499100 | CLEANING | 3d | 2026-11-13 | 2026-11-15 | 7749 |  | RGA -FINISHING | 7428245 |
| 7751 | 40100.40200.41100.54700.56100.59800.249600 | **23th FLOOR** | 206d | 2026-05-04 | 2026-11-25 |  | start no earlier than 2026-05-04 | RGA -FINISHING | 7421895 |
| 7752 | 40100.40200.41100.54700.56100.59800.249600.2499200 | FIRE FIGHTING | 10d | 2026-05-04 | 2026-05-13 | 7530FS-5d |  | RGA -FINISHING | 7428255 |
| 7753 | 40100.40200.41100.54700.56100.59800.249600.2499300 | LIFT BLOCK WORK | 3d | 2026-05-20 | 2026-05-22 | 7745 |  | RGA -FINISHING | 7428265 |
| 7754 | 40100.40200.41100.54700.56100.59800.249600.2499400 | LIFT DADO WORK | 10d | 2026-10-13 | 2026-10-22 | 7746 |  | RGA -FINISHING | 7428275 |
| 7755 | 40100.40200.41100.54700.56100.59800.249600.2499500 | LOBBY FLOORING WORK | 10d | 2026-10-23 | 2026-11-01 | 7754 |  | RGA -FINISHING | 7428285 |
| 7756 | 40100.40200.41100.54700.56100.59800.249600.2499600 | ELECTRICAL WIRING & SWITCH PLATE FIXING WORK | 6d | 2026-11-02 | 2026-11-07 | 7755 |  | RGA -FINISHING | 7428295 |
| 7757 | 40100.40200.41100.54700.56100.59800.249600.2499700 | False ceiling & 1ST COAT PAINTING | 15d | 2026-11-08 | 2026-11-22 | 7756 |  | RGA -FINISHING | 7428305 |
| 7758 | 40100.40200.41100.54700.56100.59800.249600.2499800 | CLEANING | 3d | 2026-11-23 | 2026-11-25 | 7757 |  | RGA -FINISHING | 7428315 |

Notes:
- 7736: Assumed
- 7744: Assumed
- 7752: Assumed

| ID | WBS | Task | Duration | Start | Finish | Predecessors | Constraint | Calendar | Unique_Task_ID |
| --- | --- | --- | --- | --- | --- | --- | --- | --- | --- |
| 7759 | 40100.40200.41100.54700.56100.59800.249700 | **24th FLOOR** | 190d | 2026-05-20 | 2026-11-25 |  | start no earlier than 2026-05-20 | RGA -FINISHING | 7421905 |
| 7760 | 40100.40200.41100.54700.56100.59800.249700.2499900 | FIRE FIGHTING | 10d | 2026-07-17 | 2026-07-26 | 7543FS-5d |  | RGA -FINISHING | 7428325 |
| 7761 | 40100.40200.41100.54700.56100.59800.249700.2500000 | LIFT BLOCK WORK | 3d | 2026-05-20 | 2026-05-22 | 7753SS |  | RGA -FINISHING | 7428335 |
| 7762 | 40100.40200.41100.54700.56100.59800.249700.2500100 | LIFT DADO WORK | 10d | 2026-10-13 | 2026-10-22 | 7754SS |  | RGA -FINISHING | 7428345 |
| 7763 | 40100.40200.41100.54700.56100.59800.249700.2500200 | LOBBY FLOORING WORK | 10d | 2026-10-23 | 2026-11-01 | 7762 |  | RGA -FINISHING | 7428355 |
| 7764 | 40100.40200.41100.54700.56100.59800.249700.2500300 | ELECTRICAL WIRING & SWITCH PLATE FIXING WORK | 6d | 2026-11-02 | 2026-11-07 | 7763 |  | RGA -FINISHING | 7428365 |
| 7765 | 40100.40200.41100.54700.56100.59800.249700.2500400 | False ceiling & 1ST COAT PAINTING | 15d | 2026-11-08 | 2026-11-22 | 7764 |  | RGA -FINISHING | 7428375 |
| 7766 | 40100.40200.41100.54700.56100.59800.249700.2500500 | CLEANING | 3d | 2026-11-23 | 2026-11-25 | 7765 |  | RGA -FINISHING | 7428385 |
| 7767 | 40100.40200.41100.54700.56100.59800.249800 | **25th FLOOR** | 190d | 2026-05-20 | 2026-11-25 |  | start no earlier than 2026-05-20 | RGA -FINISHING | 7421915 |
| 7768 | 40100.40200.41100.54700.56100.59800.249800.2500600 | FIRE FIGHTING | 10d | 2026-05-22 | 2026-05-31 | 7556FS-5d |  | RGA -FINISHING | 7428395 |
| 7769 | 40100.40200.41100.54700.56100.59800.249800.2500700 | LIFT BLOCK WORK | 3d | 2026-05-20 | 2026-05-22 | 7761SS |  | RGA -FINISHING | 7428405 |
| 7770 | 40100.40200.41100.54700.56100.59800.249800.2500800 | LIFT DADO WORK | 10d | 2026-10-13 | 2026-10-22 | 7762SS |  | RGA -FINISHING | 7428415 |
| 7771 | 40100.40200.41100.54700.56100.59800.249800.2500900 | LOBBY FLOORING WORK | 10d | 2026-10-23 | 2026-11-01 | 7770 |  | RGA -FINISHING | 7428425 |
| 7772 | 40100.40200.41100.54700.56100.59800.249800.2501000 | ELECTRICAL WIRING & SWITCH PLATE FIXING WORK | 6d | 2026-11-02 | 2026-11-07 | 7771 |  | RGA -FINISHING | 7428435 |
| 7773 | 40100.40200.41100.54700.56100.59800.249800.2501100 | False ceiling & 1ST COAT PAINTING | 15d | 2026-11-08 | 2026-11-22 | 7772 |  | RGA -FINISHING | 7428445 |
| 7774 | 40100.40200.41100.54700.56100.59800.249800.2501200 | CLEANING | 3d | 2026-11-23 | 2026-11-25 | 7773 |  | RGA -FINISHING | 7428455 |
| 7775 | 40100.40200.41100.54700.56100.160200 | **Common MEP Works** | 331.5d | 2026-04-06 | 2027-03-03 |  | start no earlier than 2026-04-06 | RGA -FINISHING | 7421655 |
| 7776 | 40100.40200.41100.54700.56100.160200.490000 | **Lift Works** | 141d | 2026-05-05 | 2026-09-22 |  | start no earlier than 2026-05-05 | RGA -FINISHING | 7422365 |
| 7777 | 40100.40200.41100.54700.56100.160200.490000.2501300 | Lift Shaft Handover | 30d | 2026-05-05 | 2026-06-03 | 7036 |  | RGA -FINISHING | 7429025 |
| 7778 | 40100.40200.41100.54700.56100.160200.490000.2501400 | Lift installation work | 110d | 2026-06-05 | 2026-09-22 | 7777FS+1d |  | RGA -FINISHING | 7429035 |
| 7779 | 40100.40200.41100.54700.56100.160200.490100 | **Plumbing works** | 143d | 2026-10-11 | 2027-03-03 |  | start no earlier than 2026-10-11 | RGA -FINISHING | 7422375 |
| 7780 | 40100.40200.41100.54700.56100.160200.490100.2501500 | Shaft Plumbing | 90d | 2026-12-03 | 2027-03-03 | 7239 |  | RGA -FINISHING | 7429045 |
| 7781 | 40100.40200.41100.54700.56100.160200.490100.2501600 | Terrace Looping | 90d | 2026-10-11 | 2027-01-09 | 7237FF |  | RGA -FINISHING | 7429055 |
| 7782 | 40100.40200.41100.54700.56100.160200.490200 | **Fire Fighting works** | 75d | 2026-04-06 | 2026-06-19 |  | start no earlier than 2026-04-06 | RGA -FINISHING | 7422385 |
| 7783 | 40100.40200.41100.54700.56100.160200.490200.2501700 | Shaft Downtake works | 60d | 2026-04-06 | 2026-06-04 | 7041FF+21d |  | RGA -FINISHING | 7429065 |
| 7784 | 40100.40200.41100.54700.56100.160200.490200.2501800 | Connection to pump room | 15d | 2026-06-05 | 2026-06-19 | 7783 |  | RGA -FINISHING | 7429075 |

Notes:
- 7760: Assumed
- 7768: Assumed
- 7775: Completion in 12 months post last RCC

| ID | WBS | Task | Duration | Start | Finish | Predecessors | Constraint | Calendar | Unique_Task_ID |
| --- | --- | --- | --- | --- | --- | --- | --- | --- | --- |
| 7785 | 40100.40200.41100.54700.56100.160200.340700 | **Electrical works** | 226d | 2026-06-13 | 2027-01-24 |  | start no earlier than 2026-06-13 | RGA -FINISHING | 7422345 |
| 7786 | 40100.40200.41100.54700.56100.160200.340700.2501900 | Shaft cabling | 45d | 2026-06-13 | 2026-07-27 | 7041FF+74d |  | RGA -FINISHING | 7429085 |
| 7787 | 40100.40200.41100.54700.56100.160200.340700.2502000 | Meter room erection | 15d | 2026-12-26 | 2027-01-09 | 6906FS+243d |  | RGA -FINISHING | 7429095 |
| 7788 | 40100.40200.41100.54700.56100.160200.340700.2502100 | Panel erection | 15d | 2027-01-10 | 2027-01-24 | 7787 |  | RGA -FINISHING | 7429105 |
| 7789 | 40100.40200.41100.54700.56100.160200.340700.2502200 | DG Installtion | 10d | 2026-09-27 | 2026-10-06 | 7787SS-90d |  | RGA -FINISHING | 7429115 |
| 7790 | 40100.40200.41100.54700.56100.160200.340700.2502300 | Transformer erection | 15d | 2026-09-27 | 2026-10-11 | 7789SS |  | RGA -FINISHING | 7429125 |
| 7791 | 40100.40200.41100.352600 | **Capex Item Procurment** | 220d | 2026-04-05 | 2026-11-10 |  | start no earlier than 2026-04-05 | RGA -FINISHING | 7808682 |
| 7792 | 40100.40200.41100.352600.569000 | Lift Procurement & delivery | 30d | 2026-04-05 | 2026-05-04 | 7777SS-30d |  | RGA -FINISHING | 7816402 |
| 7793 | 40100.40200.41100.352600.569100 | Panels | 30d | 2026-10-12 | 2026-11-10 | 7788SS-90d |  | RGA -FINISHING | 7816412 |
| 7794 | 40100.40200.41100.352600.569200 | DG procurement | 30d | 2026-06-29 | 2026-07-28 | 7789SS-90d |  | RGA -FINISHING | 7816422 |
| 7795 | 40100.40200.41100.352600.569300 | Transformer | 30d | 2026-06-29 | 2026-07-28 | 7790SS-90d |  | RGA -FINISHING | 7816432 |
| 7796 | 40100.40200.41100.44400 | **Handing Over Activities** | 56d | 2027-03-06 | 2027-04-30 |  | start no earlier than 2027-03-06 | RGA -FINISHING | 7803192 |
| 7797 | 40100.40200.41100.44400.569400 | SOAP WASHING GROUND FLOOR | 1d | 2027-03-06 | 2027-03-06 | 7774FS+100d |  | RGA -FINISHING | 7816442 |
| 7798 | 40100.40200.41100.44400.569500 | SOAP WASHING L1 | 1d | 2027-03-07 | 2027-03-07 | 7797 |  | RGA -FINISHING | 7816452 |
| 7799 | 40100.40200.41100.44400.569600 | SOAP WASHING L2 | 1d | 2027-03-08 | 2027-03-08 | 7798 |  | RGA -FINISHING | 7816462 |
| 7800 | 40100.40200.41100.44400.569700 | SOAP WASHING L3 | 1d | 2027-03-09 | 2027-03-09 | 7799 |  | RGA -FINISHING | 7816472 |
| 7801 | 40100.40200.41100.44400.569800 | SOAP WASHING L4 | 1d | 2027-03-10 | 2027-03-10 | 7800 |  | RGA -FINISHING | 7816482 |
| 7802 | 40100.40200.41100.44400.569900 | SOAP WASHING L5 | 1d | 2027-03-11 | 2027-03-11 | 7801 |  | RGA -FINISHING | 7816492 |
| 7803 | 40100.40200.41100.44400.570000 | SOAP WASHING L6 | 1d | 2027-03-12 | 2027-03-12 | 7802 |  | RGA -FINISHING | 7816502 |
| 7804 | 40100.40200.41100.44400.570100 | SOAP WASHING L7 | 1d | 2027-03-13 | 2027-03-13 | 7803 |  | RGA -FINISHING | 7816512 |
| 7805 | 40100.40200.41100.44400.570200 | SOAP WASHING L8 | 1d | 2027-03-14 | 2027-03-14 | 7804 |  | RGA -FINISHING | 7816522 |
| 7806 | 40100.40200.41100.44400.570300 | SOAP WASHING L9 | 1d | 2027-03-15 | 2027-03-15 | 7805 |  | RGA -FINISHING | 7816532 |
| 7807 | 40100.40200.41100.44400.570400 | SOAP WASHING L10 | 1d | 2027-03-16 | 2027-03-16 | 7806 |  | RGA -FINISHING | 7816542 |
| 7808 | 40100.40200.41100.44400.570500 | SOAP WASHING L11 | 1d | 2027-03-17 | 2027-03-17 | 7807 |  | RGA -FINISHING | 7816552 |
| 7809 | 40100.40200.41100.44400.570600 | SOAP WASHING L12 | 1d | 2027-03-18 | 2027-03-18 | 7808 |  | RGA -FINISHING | 7816562 |
| 7810 | 40100.40200.41100.44400.570700 | SOAP WASHING L13 | 1d | 2027-03-19 | 2027-03-19 | 7809 |  | RGA -FINISHING | 7816572 |
| 7811 | 40100.40200.41100.44400.570800 | SOAP WASHING L14 | 1d | 2027-03-20 | 2027-03-20 | 7810 |  | RGA -FINISHING | 7816582 |
| 7812 | 40100.40200.41100.44400.570900 | SOAP WASHING L15 | 1d | 2027-03-21 | 2027-03-21 | 7811 |  | RGA -FINISHING | 7816592 |
| 7813 | 40100.40200.41100.44400.571000 | SOAP WASHING L16 | 1d | 2027-03-22 | 2027-03-22 | 7812 |  | RGA -FINISHING | 7816602 |
| 7814 | 40100.40200.41100.44400.571100 | SOAP WASHING L17 | 1d | 2027-03-23 | 2027-03-23 | 7813 |  | RGA -FINISHING | 7816612 |
| 7815 | 40100.40200.41100.44400.571200 | SOAP WASHING L18 | 1d | 2027-03-24 | 2027-03-24 | 7814 |  | RGA -FINISHING | 7816622 |
| 7816 | 40100.40200.41100.44400.571300 | SOAP WASHING L19 | 1d | 2027-03-25 | 2027-03-25 | 7815 |  | RGA -FINISHING | 7816632 |
| 7817 | 40100.40200.41100.44400.571400 | SOAP WASHING L20 | 1d | 2027-03-26 | 2027-03-26 | 7816 |  | RGA -FINISHING | 7816642 |
| 7818 | 40100.40200.41100.44400.571500 | SOAP WASHING L21 | 1d | 2027-03-27 | 2027-03-27 | 7817 |  | RGA -FINISHING | 7816652 |
| 7819 | 40100.40200.41100.44400.571600 | SOAP WASHING L22 | 1d | 2027-03-28 | 2027-03-28 | 7818 |  | RGA -FINISHING | 7816662 |
| 7820 | 40100.40200.41100.44400.571700 | SOAP WASHING L23 | 1d | 2027-03-29 | 2027-03-29 | 7819 |  | RGA -FINISHING | 7816672 |
| 7821 | 40100.40200.41100.44400.571800 | SOAP WASHING L24 | 1d | 2027-03-30 | 2027-03-30 | 7820 |  | RGA -FINISHING | 7816682 |
| 7822 | 40100.40200.41100.44400.571900 | SOAP WASHING L25 | 1d | 2027-03-31 | 2027-03-31 | 7821 |  | RGA -FINISHING | 7816692 |
| 7823 | 40100.40200.41100.44400.572000 | CP & SANITARYWARE FIXING Ground | 2d | 2027-03-08 | 2027-03-09 | 7798 |  | RGA -FINISHING | 7816732 |
| 7824 | 40100.40200.41100.44400.572100 | CP & SANITARYWARE FIXING L1 | 2d | 2027-03-10 | 2027-03-11 | 7823 |  | RGA -FINISHING | 7816742 |
| 7825 | 40100.40200.41100.44400.572200 | CP & SANITARYWARE FIXING L2 | 2d | 2027-03-12 | 2027-03-13 | 7824 |  | RGA -FINISHING | 7816752 |
| 7826 | 40100.40200.41100.44400.572300 | CP & SANITARYWARE FIXING L3 | 2d | 2027-03-14 | 2027-03-15 | 7825 |  | RGA -FINISHING | 7816762 |
| 7827 | 40100.40200.41100.44400.572400 | CP & SANITARYWARE FIXING L4 | 2d | 2027-03-16 | 2027-03-17 | 7826 |  | RGA -FINISHING | 7816772 |
| 7828 | 40100.40200.41100.44400.572500 | CP & SANITARYWARE FIXING L5 | 2d | 2027-03-18 | 2027-03-19 | 7827 |  | RGA -FINISHING | 7816782 |
| 7829 | 40100.40200.41100.44400.572600 | CP & SANITARYWARE FIXING L6 | 2d | 2027-03-20 | 2027-03-21 | 7828 |  | RGA -FINISHING | 7816792 |
| 7830 | 40100.40200.41100.44400.572700 | CP & SANITARYWARE FIXING L7 | 2d | 2027-03-22 | 2027-03-23 | 7829 |  | RGA -FINISHING | 7816802 |
| 7831 | 40100.40200.41100.44400.572800 | CP & SANITARYWARE FIXING L8 | 2d | 2027-03-24 | 2027-03-25 | 7830 |  | RGA -FINISHING | 7816812 |
| 7832 | 40100.40200.41100.44400.572900 | CP & SANITARYWARE FIXING L9 | 2d | 2027-03-26 | 2027-03-27 | 7831 |  | RGA -FINISHING | 7816822 |
| 7833 | 40100.40200.41100.44400.573000 | CP & SANITARYWARE FIXING L10 | 2d | 2027-03-28 | 2027-03-29 | 7832 |  | RGA -FINISHING | 7816832 |
| 7834 | 40100.40200.41100.44400.573100 | CP & SANITARYWARE FIXING L11 | 2d | 2027-03-30 | 2027-03-31 | 7833 |  | RGA -FINISHING | 7816842 |
| 7835 | 40100.40200.41100.44400.573200 | CP & SANITARYWARE FIXING L12 | 2d | 2027-04-01 | 2027-04-02 | 7834 |  | RGA -FINISHING | 7816852 |
| 7836 | 40100.40200.41100.44400.573300 | CP & SANITARYWARE FIXING L13 | 2d | 2027-04-03 | 2027-04-04 | 7835 |  | RGA -FINISHING | 7816862 |
| 7837 | 40100.40200.41100.44400.573400 | CP & SANITARYWARE FIXING L14 | 2d | 2027-04-05 | 2027-04-06 | 7836 |  | RGA -FINISHING | 7816872 |
| 7838 | 40100.40200.41100.44400.573500 | CP & SANITARYWARE FIXING L15 | 2d | 2027-04-07 | 2027-04-08 | 7837 |  | RGA -FINISHING | 7816882 |
| 7839 | 40100.40200.41100.44400.573600 | CP & SANITARYWARE FIXING L16 | 2d | 2027-04-09 | 2027-04-10 | 7838 |  | RGA -FINISHING | 7816892 |
| 7840 | 40100.40200.41100.44400.573700 | CP & SANITARYWARE FIXING L17 | 2d | 2027-04-11 | 2027-04-12 | 7839 |  | RGA -FINISHING | 7816902 |
| 7841 | 40100.40200.41100.44400.573800 | CP & SANITARYWARE FIXING L18 | 2d | 2027-04-13 | 2027-04-14 | 7840 |  | RGA -FINISHING | 7816912 |
| 7842 | 40100.40200.41100.44400.573900 | CP & SANITARYWARE FIXING L18 | 2d | 2027-04-15 | 2027-04-16 | 7841 |  | RGA -FINISHING | 7816922 |
| 7843 | 40100.40200.41100.44400.574000 | CP & SANITARYWARE FIXING L19 | 2d | 2027-04-17 | 2027-04-18 | 7842 |  | RGA -FINISHING | 7816932 |
| 7844 | 40100.40200.41100.44400.574100 | CP & SANITARYWARE FIXING L20 | 2d | 2027-04-19 | 2027-04-20 | 7843 |  | RGA -FINISHING | 7816942 |
| 7845 | 40100.40200.41100.44400.574200 | CP & SANITARYWARE FIXING L21 | 2d | 2027-04-21 | 2027-04-22 | 7844 |  | RGA -FINISHING | 7816952 |
| 7846 | 40100.40200.41100.44400.574300 | CP & SANITARYWARE FIXING L22 | 2d | 2027-04-23 | 2027-04-24 | 7845 |  | RGA -FINISHING | 7816962 |
| 7847 | 40100.40200.41100.44400.574400 | CP & SANITARYWARE FIXING L23 | 2d | 2027-04-25 | 2027-04-26 | 7846 |  | RGA -FINISHING | 7816972 |
| 7848 | 40100.40200.41100.44400.574500 | CP & SANITARYWARE FIXING L24 | 2d | 2027-04-27 | 2027-04-28 | 7847 |  | RGA -FINISHING | 7816982 |
| 7849 | 40100.40200.41100.44400.574600 | CP & SANITARYWARE FIXING L25 | 2d | 2027-04-29 | 2027-04-30 | 7848 |  | RGA -FINISHING | 7816992 |
| 7850 | 40100.40200.41100.521900 | MIscellaneous (Aluform Supply) | 60d | 2025-07-06 | 2025-09-03 | 6940FS-66d |  | RGA -FINISHING | 7812632 |
| 7851 | 40100.40200.41100.522000 | Miscellaneous | 375d | 2026-11-27 | 2028-02-07 | 7850FS+385d |  | Indian Calendar | 7812642 |

| ID | WBS | Task | Duration | Start | Finish | Predecessors | Constraint | Calendar | Unique_Task_ID |
| --- | --- | --- | --- | --- | --- | --- | --- | --- | --- |
| 7852 | 40100.40200.63600 | **Non Tower Area** | 815d | 2025-11-11 | 2028-06-17 |  | start no earlier than 2025-11-11 | Indian Calendar | 7803782 |
| 7853 | 40100.40200.63600.69100 | **Non Tower Structure** | 281d | 2025-11-11 | 2026-10-03 |  | start no earlier than 2025-11-11 | Indian Calendar | 7803922 |
| 7854 | 40100.40200.63600.69100.339900 | **RCC Works - Nontower area- 1st Basement-Tower 7** | 150d | 2026-04-17 | 2026-09-30 |  | start no earlier than 2026-04-17 | RGA - STRUCTURE | 7808282 |
| 7855 | 40100.40200.63600.69100.339900.831000 | Pocket Excavation | 5d | 2026-04-17 | 2026-04-21 | 15FS+235d |  | RGA - STRUCTURE | 7820242 |
| 7856 | 40100.40200.63600.69100.339900.831100 | Raft / Footing PCC | 10d | 2026-04-22 | 2026-05-02 | 7855 |  | RGA - STRUCTURE | 7820252 |
| 7857 | 40100.40200.63600.69100.339900.831200 | Raft / Footing works | 30d | 2026-05-03 | 2026-06-01 | 7856 |  | RGA - STRUCTURE | 7820262 |
| 7858 | 40100.40200.63600.69100.339900.831300 | Columns in Upper basement | 45d | 2026-06-02 | 2026-07-31 | 7857 |  | RGA - STRUCTURE | 7820272 |
| 7859 | 40100.40200.63600.69100.339900.831400 | Upper Basement slab - Plinth slab | 60d | 2026-08-01 | 2026-09-30 | 7858 |  | RGA - STRUCTURE | 7820282 |
| 7860 | 40100.40200.63600.69100.340000 | **RCC Works - Nontower area 1st Basement-Tower 6** | 150d | 2026-04-13 | 2026-09-26 |  | start no earlier than 2026-04-13 | RGA - STRUCTURE | 7808312 |
| 7861 | 40100.40200.63600.69100.340000.831500 | Pocket Excavation | 5d | 2026-04-13 | 2026-04-17 | 1001FS+235d |  | RGA - STRUCTURE | 7820292 |
| 7862 | 40100.40200.63600.69100.340000.831600 | Raft / Footing PCC | 10d | 2026-04-18 | 2026-04-27 | 7861 |  | RGA - STRUCTURE | 7820302 |
| 7863 | 40100.40200.63600.69100.340000.831700 | Raft / Footing works | 30d | 2026-04-28 | 2026-05-28 | 7862 |  | RGA - STRUCTURE | 7820312 |
| 7864 | 40100.40200.63600.69100.340000.831800 | Columns in Upper basement | 45d | 2026-05-29 | 2026-07-27 | 7863 |  | RGA - STRUCTURE | 7820322 |
| 7865 | 40100.40200.63600.69100.340000.831900 | Upper Basement slab - Plinth slab | 60d | 2026-07-28 | 2026-09-26 | 7864 |  | RGA - STRUCTURE | 7820332 |
| 7866 | 40100.40200.63600.69100.340100 | **RCC Works - Nontower area- 1st Basement- Tower-5** | 150d | 2026-04-19 | 2026-10-03 |  | start no earlier than 2026-04-19 | RGA - STRUCTURE | 7808322 |
| 7867 | 40100.40200.63600.69100.340100.832000 | Pocket Excavation | 5d | 2026-04-19 | 2026-04-23 | 1987FS+205d |  | RGA - STRUCTURE | 7820342 |
| 7868 | 40100.40200.63600.69100.340100.832100 | Raft / Footing PCC | 10d | 2026-04-24 | 2026-05-04 | 7867 |  | RGA - STRUCTURE | 7820352 |
| 7869 | 40100.40200.63600.69100.340100.832200 | Raft / Footing works | 30d | 2026-05-05 | 2026-06-03 | 7868 |  | RGA - STRUCTURE | 7820362 |
| 7870 | 40100.40200.63600.69100.340100.832300 | Columns in Upper basement | 45d | 2026-06-04 | 2026-08-02 | 7869 |  | RGA - STRUCTURE | 7820372 |
| 7871 | 40100.40200.63600.69100.340100.832400 | Upper Basement slab - Plinth slab | 60d | 2026-08-03 | 2026-10-03 | 7870 |  | RGA - STRUCTURE | 7820382 |
| 7872 | 40100.40200.63600.69100.340200 | **RCC Works - Nontower area - 1st basement- Tower-4** | 150d | 2026-04-18 | 2026-10-01 |  | start no earlier than 2026-04-18 | RGA - STRUCTURE | 7808332 |
| 7873 | 40100.40200.63600.69100.340200.832500 | Pocket Excavation | 5d | 2026-04-18 | 2026-04-22 | 2973FS+215d |  | RGA - STRUCTURE | 7820392 |
| 7874 | 40100.40200.63600.69100.340200.832600 | Raft / Footing PCC | 10d | 2026-04-23 | 2026-05-03 | 7873 |  | RGA - STRUCTURE | 7820402 |
| 7875 | 40100.40200.63600.69100.340200.832700 | Raft / Footing works | 30d | 2026-05-04 | 2026-06-02 | 7874 |  | RGA - STRUCTURE | 7820412 |
| 7876 | 40100.40200.63600.69100.340200.832800 | Columns in Upper basement | 45d | 2026-06-03 | 2026-08-01 | 7875 |  | RGA - STRUCTURE | 7820422 |
| 7877 | 40100.40200.63600.69100.340200.832900 | Upper Basement slab - Plinth slab | 60d | 2026-08-02 | 2026-10-01 | 7876 |  | RGA - STRUCTURE | 7820432 |

| ID | WBS | Task | Duration | Start | Finish | Predecessors | Constraint | Calendar | Unique_Task_ID |
| --- | --- | --- | --- | --- | --- | --- | --- | --- | --- |
| 7878 | 40100.40200.63600.69100.340300 | **RCC Works - Nontower area- 1st basement- Tower-3** | 150d | 2026-04-08 | 2026-09-21 |  | start no earlier than 2026-04-08 | RGA - STRUCTURE | 7808342 |
| 7879 | 40100.40200.63600.69100.340300.833000 | Pocket Excavation | 5d | 2026-04-08 | 2026-04-12 | 3960FS+215d |  | RGA - STRUCTURE | 7820442 |
| 7880 | 40100.40200.63600.69100.340300.833100 | Raft / Footing PCC | 10d | 2026-04-13 | 2026-04-22 | 7879 |  | RGA - STRUCTURE | 7820452 |
| 7881 | 40100.40200.63600.69100.340300.833200 | Raft / Footing works | 30d | 2026-04-23 | 2026-05-23 | 7880 |  | RGA - STRUCTURE | 7820462 |
| 7882 | 40100.40200.63600.69100.340300.833300 | Columns in Upper basement | 45d | 2026-05-24 | 2026-07-22 | 7881 |  | RGA - STRUCTURE | 7820472 |
| 7883 | 40100.40200.63600.69100.340300.833400 | Upper Basement slab - Plinth slab | 60d | 2026-07-23 | 2026-09-21 | 7882 |  | RGA - STRUCTURE | 7820482 |
| 7884 | 40100.40200.63600.69100.340400 | **RCC Works - Nontower area- Tower- 2A** | 150d | 2025-11-11 | 2026-04-10 |  | start no earlier than 2025-11-11 | RGA - STRUCTURE | 7808352 |
| 7885 | 40100.40200.63600.69100.340400.833500 | Pocket Excavation | 5d | 2025-11-11 | 2025-11-15 | 4948FS+100d |  | RGA - STRUCTURE | 7820492 |
| 7886 | 40100.40200.63600.69100.340400.833600 | Raft / Footing PCC | 10d | 2025-11-16 | 2025-11-25 | 7885 |  | RGA - STRUCTURE | 7820502 |
| 7887 | 40100.40200.63600.69100.340400.833700 | Raft / Footing works | 30d | 2025-11-26 | 2025-12-25 | 7886 |  | RGA - STRUCTURE | 7820512 |
| 7888 | 40100.40200.63600.69100.340400.833800 | Columns in Upper basement | 45d | 2025-12-26 | 2026-02-09 | 7887 |  | RGA - STRUCTURE | 7820522 |
| 7889 | 40100.40200.63600.69100.340400.833900 | Upper Basement slab - Plinth slab | 60d | 2026-02-10 | 2026-04-10 | 7888 |  | RGA - STRUCTURE | 7820532 |
| 7890 | 40100.40200.63600.69100.340500 | **RCC Works - Nontower area- Tower- 2** | 150d | 2025-11-11 | 2026-04-10 |  | start no earlier than 2025-11-11 | RGA - STRUCTURE | 8875544 |
| 7891 | 40100.40200.63600.69100.340500.834000 | Pocket Excavation | 5d | 2025-11-11 | 2025-11-15 | 4948FS+100d |  | RGA - STRUCTURE | 8875554 |
| 7892 | 40100.40200.63600.69100.340500.834100 | Raft / Footing PCC | 10d | 2025-11-16 | 2025-11-25 | 7891 |  | RGA - STRUCTURE | 8875564 |
| 7893 | 40100.40200.63600.69100.340500.834200 | Raft / Footing works | 30d | 2025-11-26 | 2025-12-25 | 7892 |  | RGA - STRUCTURE | 8875574 |
| 7894 | 40100.40200.63600.69100.340500.834300 | Columns in Upper basement | 45d | 2025-12-26 | 2026-02-09 | 7893 |  | RGA - STRUCTURE | 8875584 |
| 7895 | 40100.40200.63600.69100.340500.834400 | Upper Basement slab - Plinth slab | 60d | 2026-02-10 | 2026-04-10 | 7894 |  | RGA - STRUCTURE | 8875594 |
| 7896 | 40100.40200.63600.69100.340600 | **RCC Works - Nontower area- Tower- 1** | 150d | 2025-11-11 | 2026-04-10 |  | start no earlier than 2025-11-11 | RGA - STRUCTURE | 7808362 |
| 7897 | 40100.40200.63600.69100.340600.834500 | Pocket Excavation | 5d | 2025-11-11 | 2025-11-15 | 4948FS+100d |  | RGA - STRUCTURE | 7820542 |
| 7898 | 40100.40200.63600.69100.340600.834600 | Raft / Footing PCC | 10d | 2025-11-16 | 2025-11-25 | 7897 |  | RGA - STRUCTURE | 7820552 |
| 7899 | 40100.40200.63600.69100.340600.834700 | Raft / Footing works | 30d | 2025-11-26 | 2025-12-25 | 7898 |  | RGA - STRUCTURE | 7820562 |
| 7900 | 40100.40200.63600.69100.340600.834800 | Columns in Upper basement | 45d | 2025-12-26 | 2026-02-09 | 7899 |  | RGA - STRUCTURE | 7820572 |
| 7901 | 40100.40200.63600.69100.340600.834900 | Upper Basement slab - Plinth slab | 60d | 2026-02-10 | 2026-04-10 | 7900 |  | RGA - STRUCTURE | 7820582 |

| ID | WBS | Task | Duration | Start | Finish | Predecessors | Constraint | Calendar | Unique_Task_ID |
| --- | --- | --- | --- | --- | --- | --- | --- | --- | --- |
| 7902 | 40100.40200.63600.67500 | **Supporting structures** | 443d | 2026-02-10 | 2027-04-28 |  | start no earlier than 2026-02-10 | RGA -FINISHING | 7803842 |
| 7903 | 40100.40200.63600.67500.168100 | **Compound Wall** | 90d | 2026-11-21 | 2027-02-18 |  | start no earlier than 2026-11-21 | RGA -FINISHING | 7806882 |
| 7904 | 40100.40200.63600.67500.168100.350400 | **Compound Wall** | 90d | 2026-11-21 | 2027-02-18 |  | start no earlier than 2026-11-21 | RGA -FINISHING | 7808202 |
| 7905 | 40100.40200.63600.67500.168100.350400.969000 | Excavation | 90d | 2026-11-21 | 2027-02-18 | 7917, 7932 |  | RGA -FINISHING | 7832082 |
| 7906 | 40100.40200.63600.67500.168100.350400.969100 | Footing / Raft PCC | 90d | 2026-11-21 | 2027-02-18 | 7905SS |  | RGA -FINISHING | 7832092 |
| 7907 | 40100.40200.63600.67500.168100.350400.969200 | Raft RCC work | 90d | 2026-11-21 | 2027-02-18 | 7906SS |  | RGA -FINISHING | 7832102 |
| 7908 | 40100.40200.63600.67500.168100.350400.969300 | Retaining wall / Compound wall | 90d | 2026-11-21 | 2027-02-18 | 7907SS |  | RGA -FINISHING | 7832112 |
| 7909 | 40100.40200.63600.67500.168100.350400.969400 | Paint - Two coats of ACE - Cement paint (Asian) | 90d | 2026-11-21 | 2027-02-18 | 7908FF |  | RGA -FINISHING | 7832122 |
| 7910 | 40100.40200.63600.67500.70900 | **UGWT with WTP** | 314d | 2026-04-11 | 2027-02-18 |  | start no earlier than 2026-04-11 | RGA -FINISHING | 7803902 |
| 7911 | 40100.40200.63600.67500.70900.835000 | Excavation | 10d | 2026-04-11 | 2026-04-20 | 7901 |  | RGA -FINISHING | 7820592 |
| 7912 | 40100.40200.63600.67500.70900.835100 | PCC | 2d | 2026-04-12 | 2026-04-13 | 7911FS-9d |  | RGA -FINISHING | 7820602 |
| 7913 | 40100.40200.63600.67500.70900.835200 | RCC Raft | 21d | 2026-05-04 | 2026-05-24 | 7912FS+20d |  | RGA -FINISHING | 7820612 |
| 7914 | 40100.40200.63600.67500.70900.835300 | Pump Foundation | 1d | 2026-06-15 | 2026-06-15 | 7913FS+21d |  | RGA -FINISHING | 7820622 |
| 7915 | 40100.40200.63600.67500.70900.835400 | Puddle Flange fixing | 3d | 2026-09-24 | 2026-09-26 | 7914FS+100d |  | RGA -FINISHING | 7820632 |
| 7916 | 40100.40200.63600.67500.70900.835500 | RCC Pardi | 18d | 2026-09-27 | 2026-10-14 | 7915 |  | RGA -FINISHING | 7820642 |
| 7917 | 40100.40200.63600.67500.70900.835600 | RCC Slab | 18d | 2026-11-03 | 2026-11-20 | 7916FS+19d |  | RGA -FINISHING | 7820652 |
| 7918 | 40100.40200.63600.67500.70900.835700 | Waterproofing | 30d | 2026-11-21 | 2026-12-20 | 7917 |  | RGA -FINISHING | 7820662 |
| 7919 | 40100.40200.63600.67500.70900.835800 | MS Structural Work | 30d | 2026-12-21 | 2027-01-19 | 7918 |  | RGA -FINISHING | 7820672 |
| 7920 | 40100.40200.63600.67500.70900.835900 | Delivery of Pumps & Panels at site | 30d | 2026-12-21 | 2027-01-19 | 7919FF |  | RGA -FINISHING | 7820682 |
| 7921 | 40100.40200.63600.67500.70900.836000 | Installation of pump & panels & WTP unit | 15d | 2027-01-20 | 2027-02-03 | 7920 |  | RGA -FINISHING | 7820692 |
| 7922 | 40100.40200.63600.67500.70900.836100 | Piping & Cabling work | 15d | 2027-01-30 | 2027-02-13 | 7921FF+10d |  | RGA -FINISHING | 7820702 |
| 7923 | 40100.40200.63600.67500.70900.836200 | Testing & Commissioning work | 5d | 2027-02-14 | 2027-02-18 | 7922 |  | RGA -FINISHING | 7820712 |
| 7924 | 40100.40200.63600.67500.157300 | **STP** | 300d | 2026-02-10 | 2026-12-06 |  | start no earlier than 2026-02-10 | RGA -FINISHING | 7805252 |
| 7925 | 40100.40200.63600.67500.157300.836300 | Excavation | 10d | 2026-02-10 | 2026-02-19 | 7901FS-60d |  | RGA -FINISHING | 7820722 |

Notes:
- 7903: Î
- 7904: Î
- 7905: Î
- 7907: Î
- 7910: Î
- 7911: Î
- 7912: Î
- 7913: Î
- 7914: Î
- 7915: Î
- 7916: Î
- 7917: Î
- 7918: Î
- 7919: Î
- 7920: Î
- 7921: Î
- 7922: Î
- 7923: Î
- 7924: Î
- 7925: Î

| ID | WBS | Task | Duration | Start | Finish | Predecessors | Constraint | Calendar | Unique_Task_ID |
| --- | --- | --- | --- | --- | --- | --- | --- | --- | --- |
| 7926 | 40100.40200.63600.67500.157300.174300 | **Waste Segregation Area** | 125d | 2026-05-21 | 2026-09-22 |  | start no earlier than 2026-05-21 | RGA -FINISHING | 7806912 |
| 7927 | 40100.40200.63600.67500.157300.174300.969500 | PCC | 7d | 2026-05-21 | 2026-05-27 | 7925FS+90d |  | RGA -FINISHING | 7832132 |
| 7928 | 40100.40200.63600.67500.157300.174300.969600 | RCC Raft | 25d | 2026-05-28 | 2026-06-21 | 7927 |  | RGA -FINISHING | 7832142 |
| 7929 | 40100.40200.63600.67500.157300.174300.969700 | Pump Foundation | 25d | 2026-06-22 | 2026-07-16 | 7928 |  | RGA -FINISHING | 7832152 |
| 7930 | 40100.40200.63600.67500.157300.174300.969800 | Puddle Flange fixing | 3d | 2026-07-17 | 2026-07-19 | 7929 |  | RGA -FINISHING | 7832162 |
| 7931 | 40100.40200.63600.67500.157300.174300.969900 | RCC Pardi | 30d | 2026-07-20 | 2026-08-18 | 7930 |  | RGA -FINISHING | 7832172 |
| 7932 | 40100.40200.63600.67500.157300.174300.970000 | RCC Slab | 21d | 2026-08-08 | 2026-08-28 | 7931FF+10d |  | RGA -FINISHING | 7832182 |
| 7933 | 40100.40200.63600.67500.157300.174300.970100 | Waterproofing | 25d | 2026-08-29 | 2026-09-22 | 7932 |  | RGA -FINISHING | 7832192 |
| 7934 | 40100.40200.63600.67500.157300.174400 | **Equipment & Treatment Plant above Ground** | 100d | 2026-08-29 | 2026-12-06 |  | start no earlier than 2026-08-29 | RGA -FINISHING | 7806902 |
| 7935 | 40100.40200.63600.67500.157300.174400.970200 | Masonary Work | 20d | 2026-08-29 | 2026-09-17 | 7932 |  | RGA -FINISHING | 7832202 |
| 7936 | 40100.40200.63600.67500.157300.174400.970300 | Plaster Work | 15d | 2026-09-18 | 2026-10-02 | 7935 |  | RGA -FINISHING | 7832212 |
| 7937 | 40100.40200.63600.67500.157300.174400.970400 | Painting Work | 15d | 2026-10-11 | 2026-10-25 | 7936FS+8d |  | RGA -FINISHING | 7832222 |
| 7938 | 40100.40200.63600.67500.157300.174400.970500 | Delivery of STP Equipment & Panels at site | 30d | 2026-10-03 | 2026-11-01 | 7936 |  | RGA -FINISHING | 7832232 |
| 7939 | 40100.40200.63600.67500.157300.174400.970600 | Installation of STP Equipment & Panels | 21d | 2026-11-02 | 2026-11-22 | 7937, 7938 |  | RGA -FINISHING | 7832242 |
| 7940 | 40100.40200.63600.67500.157300.174400.970700 | Piping & Cabeling Work | 7d | 2026-11-23 | 2026-11-29 | 7939 |  | RGA -FINISHING | 7832252 |
| 7941 | 40100.40200.63600.67500.157300.174400.970800 | Testing & Commissioning | 7d | 2026-11-30 | 2026-12-06 | 7940 |  | RGA -FINISHING | 7832262 |
| 7942 | 40100.40200.63600.67500.253600 | **Organic Waste Composter** | 69d | 2027-02-19 | 2027-04-28 |  | start no earlier than 2027-02-19 | RGA -FINISHING | 7806922 |
| 7943 | 40100.40200.63600.67500.253600.836400 | Foundation making | 7d | 2027-02-19 | 2027-02-25 | 7908 |  | RGA -FINISHING | 7820732 |
| 7944 | 40100.40200.63600.67500.253600.836500 | Floor PCC | 7d | 2027-02-26 | 2027-03-04 | 7943 |  | RGA -FINISHING | 7820742 |
| 7945 | 40100.40200.63600.67500.253600.836600 | Structural Roof | 15d | 2027-03-05 | 2027-03-19 | 7944 |  | RGA -FINISHING | 7820752 |
| 7946 | 40100.40200.63600.67500.253600.836700 | Delivery of OWC unit | 15d | 2027-03-23 | 2027-04-06 | 7945FS+3d |  | RGA -FINISHING | 7820762 |
| 7947 | 40100.40200.63600.67500.253600.836800 | Installation of OWC Unit | 15d | 2027-04-07 | 2027-04-21 | 7945, 7946 |  | RGA -FINISHING | 7820772 |
| 7948 | 40100.40200.63600.67500.253600.836900 | Electrical cabling work | 7d | 2027-04-22 | 2027-04-28 | 7945, 7946, 7947 |  | RGA -FINISHING | 7820782 |
| 7949 | 40100.40200.63600.67500.508800 | **Entrance Gate & Security Cabin** | 120d | 2026-11-01 | 2027-02-28 |  | start no earlier than 2026-11-01 | RGA -FINISHING | 7812242 |
| 7950 | 40100.40200.63600.67500.508800.837000 | Entrance Gate & Security Cabin | 120d | 2026-11-01 | 2027-02-28 | 7909FS-110d |  | RGA -FINISHING | 7820792 |

Notes:
- 7926: Î
- 7927: Î
- 7928: Î
- 7929: Î
- 7930: Î
- 7931: Î
- 7932: Î
- 7933: Î
- 7934: Î
- 7935: Î
- 7936: Î
- 7937: Î
- 7938: Î
- 7939: Î
- 7940: Î
- 7941: Î
- 7942: Î
- 7943: Î
- 7944: Î
- 7945: Î
- 7946: Î
- 7947: Î
- 7948: Î
- 7949: Î
- 7950: Î

| ID | WBS | Task | Duration | Start | Finish | Predecessors | Constraint | Calendar | Unique_Task_ID |
| --- | --- | --- | --- | --- | --- | --- | --- | --- | --- |
| 7951 | 40100.40200.63600.67500.508700 | **Signages** | 60d | 2027-02-28 | 2027-04-28 |  | start no earlier than 2027-02-28 | RGA -FINISHING | 7812252 |
| 7952 | 40100.40200.63600.67500.508700.837100 | Signages | 60d | 2027-02-28 | 2027-04-28 | 7948FF |  | RGA -FINISHING | 7820802 |
| 7953 | 40100.40200.63600.65500 | **External Infrastructure** | 522d | 2026-06-22 | 2027-11-25 |  | start no earlier than 2026-06-22 | RGA -FINISHING | 7803822 |
| 7954 | 40100.40200.63600.65500.508600 | **External Firefightning Work** | 150d | 2027-06-19 | 2027-11-15 |  | start no earlier than 2027-06-19 | RGA -FINISHING | 7812262 |
| 7955 | 40100.40200.63600.65500.508600.837200 | Excavation, Pipe Laying, Hyderent errection , Fitting , Testing & Commissioning | 150d | 2027-06-19 | 2027-11-15 | 919 |  | RGA -FINISHING | 7820812 |
| 7956 | 40100.40200.63600.65500.168200 | **External Plumbing** | 210d | 2027-04-30 | 2027-11-25 |  | start no earlier than 2027-04-30 | RGA -FINISHING | 7806892 |
| 7957 | 40100.40200.63600.65500.168200.511100 | **External Plumbing - Drainage** | 210d | 2027-04-30 | 2027-11-25 |  | start no earlier than 2027-04-30 | RGA -FINISHING | 7812502 |
| 7958 | 40100.40200.63600.65500.168200.511100.970900 | Excavation, Pipe Laying, Filling , Testing & Commissioning | 210d | 2027-04-30 | 2027-11-25 | 7955FF+10d |  | RGA -FINISHING | 7832272 |
| 7959 | 40100.40200.63600.65500.168200.511000 | **External Plumbing - Watersupply** | 210d | 2027-04-30 | 2027-11-25 |  | start no earlier than 2027-04-30 | RGA -FINISHING | 7812492 |
| 7960 | 40100.40200.63600.65500.168200.511000.971000 | Excavation, Pipe Laying, Filling , Testing & Commissioning | 210d | 2027-04-30 | 2027-11-25 | 7955FF+10d |  | RGA -FINISHING | 7832282 |
| 7961 | 40100.40200.63600.65500.168200.510900 | **External Plumbing - Storm Water** | 210d | 2027-04-30 | 2027-11-25 |  | start no earlier than 2027-04-30 | RGA -FINISHING | 7812482 |
| 7962 | 40100.40200.63600.65500.168200.510900.971100 | Excavation, PCC, BBM , IPS, Cover fixing, Curing | 210d | 2027-04-30 | 2027-11-25 | 7955FF+10d |  | RGA -FINISHING | 7832292 |
| 7963 | 40100.40200.63600.65500.168200.494200 | **Rain water Harvesting work** | 60d | 2027-09-27 | 2027-11-25 |  | start no earlier than 2027-09-27 | RGA -FINISHING | 7811822 |
| 7964 | 40100.40200.63600.65500.168200.494200.971200 | Bore Holes, Chamber, Finishing, | 60d | 2027-09-27 | 2027-11-25 | 7958FF |  | RGA -FINISHING | 7832302 |
| 7965 | 40100.40200.63600.65500.168200.494200.971300 | Roof Rain Water Collction Tank | 30d | 2027-10-27 | 2027-11-25 | 7964FF |  | RGA -FINISHING | 7832312 |
| 7966 | 40100.40200.63600.65500.66300 | **External Electrical Work** | 210d | 2027-03-19 | 2027-10-14 |  | start no earlier than 2027-03-19 | RGA -FINISHING | 7803832 |
| 7967 | 40100.40200.63600.65500.66300.350300 | **Receiving Station** | 210d | 2027-03-19 | 2027-10-14 |  | start no earlier than 2027-03-19 | RGA -FINISHING | 7808372 |
| 7968 | 40100.40200.63600.65500.66300.350300.971400 | Excavation | 30d | 2027-03-19 | 2027-04-17 | 924SS+180d |  | RGA -FINISHING | 7832322 |
| 7969 | 40100.40200.63600.65500.66300.350300.971500 | Substructure Work - Civil | 30d | 2027-04-18 | 2027-05-17 | 7968 |  | RGA -FINISHING | 7832332 |
| 7970 | 40100.40200.63600.65500.66300.350300.971600 | Superstructure Work - Civil | 60d | 2027-05-18 | 2027-07-16 | 7969 |  | RGA -FINISHING | 7832342 |
| 7971 | 40100.40200.63600.65500.66300.350300.971700 | Finishing Work | 30d | 2027-07-17 | 2027-08-15 | 7970 |  | RGA -FINISHING | 7832352 |
| 7972 | 40100.40200.63600.65500.66300.350300.971800 | MEP Work till TR | 60d | 2027-08-16 | 2027-10-14 | 7971 |  | RGA -FINISHING | 7832362 |
| 7973 | 40100.40200.63600.65500.66300.336500 | **External Electrical work** | 165d | 2027-04-18 | 2027-09-29 |  | start no earlier than 2027-04-18 | RGA -FINISHING | 7806932 |
| 7974 | 40100.40200.63600.65500.66300.336500.971900 | Laying of hume pipe with chambers for power cables & Data Cable | 90d | 2027-04-18 | 2027-07-16 | 7968 |  | RGA -FINISHING | 7832372 |
| 7975 | 40100.40200.63600.65500.66300.336500.972000 | Cable laying from Transformer room to bldg. | 21d | 2027-07-17 | 2027-08-06 | 7974 |  | RGA -FINISHING | 7832382 |
| 7976 | 40100.40200.63600.65500.66300.336500.972100 | Termination of LT cables | 20d | 2027-08-07 | 2027-08-26 | 7975 |  | RGA -FINISHING | 7832392 |
| 7977 | 40100.40200.63600.65500.66300.336500.972200 | cabling for Telephone / Internet / Intercon system | 45d | 2027-07-17 | 2027-08-30 | 7974 |  | RGA -FINISHING | 7832402 |
| 7978 | 40100.40200.63600.65500.66300.336500.972300 | Crone boxes fixing | 15d | 2027-08-31 | 2027-09-14 | 7977 |  | RGA -FINISHING | 7832412 |
| 7979 | 40100.40200.63600.65500.66300.336500.972400 | Building Earthing systeam common | 21d | 2027-09-09 | 2027-09-29 | 7980FF |  | RGA -FINISHING | 7832422 |

Notes:
- 7954: Î
- 7955: Î
- 7956: Î
- 7957: Î
- 7958: Î
- 7959: Î
- 7960: Î
- 7961: Î
- 7962: Î
- 7963: Î
- 7964: Î
- 7965: Î
- 7966: Î
- 7967: Î
- 7968: Î
- 7969: Î
- 7970: Î
- 7971: Î
- 7972: Î
- 7973: Î
- 7974: Î
- 7975: Î
- 7976: Î
- 7977: Î
- 7978: Î
- 7979: Î

| ID | WBS | Task | Duration | Start | Finish | Predecessors | Constraint | Calendar | Unique_Task_ID |
| --- | --- | --- | --- | --- | --- | --- | --- | --- | --- |
| 7980 | 40100.40200.63600.65500.66300.68000 | **Substation (Transformer & DG Room)** | 165d | 2027-04-18 | 2027-09-29 |  | start no earlier than 2027-04-18 | RGA -FINISHING | 7803852 |
| 7981 | 40100.40200.63600.65500.66300.68000.972500 | Excavation | 15d | 2027-04-18 | 2027-05-02 | 7968 |  | RGA -FINISHING | 7832432 |
| 7982 | 40100.40200.63600.65500.66300.68000.972600 | Substructure Work - Civil | 10d | 2027-05-03 | 2027-05-12 | 7981 |  | RGA -FINISHING | 7832442 |
| 7983 | 40100.40200.63600.65500.66300.68000.972700 | Superstructure Work - Civil | 20d | 2027-05-13 | 2027-06-01 | 7982 |  | RGA -FINISHING | 7832452 |
| 7984 | 40100.40200.63600.65500.66300.68000.972800 | Cabel Trenches / DG Foundation | 30d | 2027-05-13 | 2027-06-11 | 7983FF+10d |  | RGA -FINISHING | 7832462 |
| 7985 | 40100.40200.63600.65500.66300.68000.972900 | Roof Slab waterproofing | 15d | 2027-06-02 | 2027-06-16 | 7983 |  | RGA -FINISHING | 7832472 |
| 7986 | 40100.40200.63600.65500.66300.68000.973000 | Rolling Shutter & Window fixing | 15d | 2027-06-10 | 2027-06-24 | 7985FF+8d |  | RGA -FINISHING | 7832482 |
| 7987 | 40100.40200.63600.65500.66300.68000.973100 | Painting | 15d | 2027-06-25 | 2027-07-09 | 7986 |  | RGA -FINISHING | 7832492 |
| 7988 | 40100.40200.63600.65500.66300.68000.973200 | Delivery of DG / Transformer Room / Panels | 90d | 2027-04-18 | 2027-07-16 | 7987FF+7d |  | RGA -FINISHING | 7832502 |
| 7989 | 40100.40200.63600.65500.66300.68000.973300 | Installation of panels , DG & Transformer | 20d | 2027-07-17 | 2027-08-05 | 7987, 7988 |  | RGA -FINISHING | 7832512 |
| 7990 | 40100.40200.63600.65500.66300.68000.973400 | Laying & Termination of HT LT Cabels | 20d | 2027-08-06 | 2027-08-25 | 7989 |  | RGA -FINISHING | 7832522 |
| 7991 | 40100.40200.63600.65500.66300.68000.973500 | Installation of DG set | 20d | 2027-08-06 | 2027-08-25 | 7990FF |  | RGA -FINISHING | 7832532 |
| 7992 | 40100.40200.63600.65500.66300.68000.973600 | Cabeling work for DG set. | 20d | 2027-08-26 | 2027-09-14 | 7990 |  | RGA -FINISHING | 7832542 |
| 7993 | 40100.40200.63600.65500.66300.68000.973700 | Earthing systeam for DG & Transformer | 30d | 2027-08-16 | 2027-09-14 | 7992FF |  | RGA -FINISHING | 7832552 |
| 7994 | 40100.40200.63600.65500.66300.68000.973800 | Testing & Commissioning of Transformer | 15d | 2027-09-15 | 2027-09-29 | 7993 |  | RGA -FINISHING | 7832562 |
| 7995 | 40100.40200.63600.65500.66300.68000.973900 | Testing & Commissioning of DG | 10d | 2027-09-15 | 2027-09-24 | 7993 |  | RGA -FINISHING | 7832572 |
| 7996 | 40100.40200.63600.65500.66300.350200 | **Street Light Fixing** | 95d | 2027-05-03 | 2027-08-05 |  | start no earlier than 2027-05-03 | RGA -FINISHING | 7808382 |
| 7997 | 40100.40200.63600.65500.66300.350200.974000 | Pole Foundation | 45d | 2027-05-03 | 2027-06-16 | 7981 |  | RGA -FINISHING | 7832582 |
| 7998 | 40100.40200.63600.65500.66300.350200.974100 | Fixing of Pole | 15d | 2027-06-17 | 2027-07-01 | 7997 |  | RGA -FINISHING | 7832592 |
| 7999 | 40100.40200.63600.65500.66300.350200.974200 | Cabel Laying | 15d | 2027-07-02 | 2027-07-16 | 7998 |  | RGA -FINISHING | 7832602 |
| 8000 | 40100.40200.63600.65500.66300.350200.974300 | DB installation | 10d | 2027-07-17 | 2027-07-26 | 7999 |  | RGA -FINISHING | 7832612 |
| 8001 | 40100.40200.63600.65500.66300.350200.974400 | Termination of Cable | 10d | 2027-07-27 | 2027-08-05 | 8000 |  | RGA -FINISHING | 7832622 |
| 8002 | 40100.40200.63600.65500.364100 | **Hard Scape Work** | 195d | 2026-09-22 | 2027-04-04 |  | start no earlier than 2026-09-22 | RGA -FINISHING | 7808882 |
| 8003 | 40100.40200.63600.65500.364100.837300 | Excavation & Levelling | 45d | 2026-09-22 | 2026-11-05 | 7908FS-150d |  | RGA -FINISHING | 7820822 |
| 8004 | 40100.40200.63600.65500.364100.837400 | Civil Work | 60d | 2026-11-06 | 2027-01-04 | 8003 |  | RGA -FINISHING | 7820832 |
| 8005 | 40100.40200.63600.65500.364100.837500 | Base preparation for landscape | 60d | 2027-01-05 | 2027-03-05 | 8004 |  | RGA -FINISHING | 7820842 |
| 8006 | 40100.40200.63600.65500.364100.837600 | Tilling & Other finishing work | 60d | 2027-02-04 | 2027-04-04 | 8005FF+30d |  | RGA -FINISHING | 7820852 |

Notes:
- 7980: Î
- 7981: Î
- 7982: Î
- 7983: Î
- 7984: Î
- 7985: Î
- 7986: Î
- 7987: Î
- 7988: Î
- 7989: Î
- 7990: Î
- 7991: Î
- 7992: Î
- 7993: Î
- 7994: Î
- 7995: Î
- 7996: Î
- 7997: Î
- 7998: Î
- 7999: Î
- 8000: Î
- 8001: Î
- 8002: Î
- 8003: Î
- 8004: Î
- 8005: Î
- 8006: Î

| ID | WBS | Task | Duration | Start | Finish | Predecessors | Constraint | Calendar | Unique_Task_ID |
| --- | --- | --- | --- | --- | --- | --- | --- | --- | --- |
| 8007 | 40100.40200.63600.65500.375000 | **Soft Scape Work** | 48d | 2027-02-04 | 2027-03-23 |  | start no earlier than 2027-02-04 | RGA -FINISHING | 7808982 |
| 8008 | 40100.40200.63600.65500.375000.837700 | Soil & Manual filling | 30d | 2027-02-04 | 2027-03-05 | 8005FS-30d |  | RGA -FINISHING | 7820862 |
| 8009 | 40100.40200.63600.65500.375000.837800 | Plantation | 30d | 2027-02-19 | 2027-03-20 | 8008FS-15d |  | RGA -FINISHING | 7820872 |
| 8010 | 40100.40200.63600.65500.375000.837900 | Irrigation systeam | 20d | 2027-03-04 | 2027-03-23 | 8009FF+3d |  | RGA -FINISHING | 7820882 |
| 8011 | 40100.40200.63600.65500.153100 | **External Road (60M/24M/12M) (TBD)** | 152d | 2026-11-06 | 2027-04-06 |  | start no earlier than 2026-11-06 | RGA -FINISHING | 7805242 |
| 8012 | 40100.40200.63600.65500.153100.838000 | Levelling and removing loose soil | 30d | 2026-11-06 | 2026-12-05 | 8003 |  | RGA -FINISHING | 7820892 |
| 8013 | 40100.40200.63600.65500.153100.838100 | Excavation for all types of soft strata | 60d | 2026-11-11 | 2027-01-09 | 8012FS-25d |  | RGA -FINISHING | 7820902 |
| 8014 | 40100.40200.63600.65500.153100.838200 | Providing and laying Hume pipe of NP2 Grade of 300 mm dia | 60d | 2026-11-18 | 2027-01-16 | 8013FF+7d |  | RGA -FINISHING | 7820912 |
| 8015 | 40100.40200.63600.65500.153100.838300 | Filling and compacting with approved material avaialble within the site premises | 60d | 2026-11-28 | 2027-01-26 | 8014FF+10d |  | RGA -FINISHING | 7820922 |
| 8016 | 40100.40200.63600.65500.153100.838400 | Preparation of Sub Grade | 75d | 2026-11-23 | 2027-02-05 | 8015FF+10d |  | RGA -FINISHING | 7820932 |
| 8017 | 40100.40200.63600.65500.153100.838500 | WBM - thickness of 150mm of 75-90mm metal | 75d | 2026-12-08 | 2027-02-20 | 8016FF+15d |  | RGA -FINISHING | 7820942 |
| 8018 | 40100.40200.63600.65500.153100.838600 | WBM - thickness of 100mm of 50-60mm metal | 75d | 2026-12-08 | 2027-02-20 | 8017FF |  | RGA -FINISHING | 7820952 |
| 8019 | 40100.40200.63600.65500.153100.838700 | Providing & Applying 75mm thick semigrout using 40mm metal | 15d | 2027-02-21 | 2027-03-07 | 8018 |  | RGA -FINISHING | 7820962 |
| 8020 | 40100.40200.63600.65500.153100.838800 | Providing,laying and compacting 20-25mm thick carpet coat/Flagstones | 30d | 2027-02-21 | 2027-03-22 | 8019FF+15d |  | RGA -FINISHING | 7820972 |
| 8021 | 40100.40200.63600.65500.153100.838900 | Proving laying premix seal coat 10mm thick of ashpalt (type B)/Pavers | 10d | 2027-03-28 | 2027-04-06 | 8020FF+15d |  | RGA -FINISHING | 7820982 |
| 8022 | 40100.40200.63600.65500.153100.839000 | External Storm Water System | 30d | 2027-02-06 | 2027-03-07 | 8019FF |  | RGA -FINISHING | 7820992 |
| 8023 | 40100.40200.63600.65500.574700 | Club House land 2 | 210d | 2026-06-22 | 2027-02-20 | 8003FS-118d |  | Indian Calendar | 7817032 |
| 8024 | 40100.40200.63600.474200 | **Miscellaneous** | 445d | 2027-03-31 | 2028-06-17 |  | start no earlier than 2027-03-31 | RGA -FINISHING | 7811802 |
| 8025 | 40100.40200.63600.474200.574800 | Miscellaneous | 300d | 2027-03-31 | 2028-01-24 | 97FS+423d |  | RGA -FINISHING | 7817042 |
| 8026 | 40100.40200.63600.474200.574900 | Miscellaneous Others | 330d | 2027-05-31 | 2028-06-17 | 8025SS+52d |  | Indian Calendar | 7817052 |
| 8027 | 40100.40200.70700 | **OC Activities** | 214d | 2027-06-30 | 2028-01-30 |  | start no earlier than 2027-06-30 | RGA -FINISHING | 7804532 |
| 8028 | 40100.40200.70700.352700 | **Tower 7** | 214d | 2027-06-30 | 2028-01-30 |  | start no earlier than 2027-06-30 | RGA -FINISHING | 7808642 |
| 8029 | 40100.40200.70700.352700.575000 | OC Application | 1d | 2027-06-30 | 2027-07-01 | 8064FF |  | RGA -FINISHING | 7817062 |
| 8030 | 40100.40200.70700.352700.575100 | OC receipt | 1d | 2027-07-31 | 2027-08-01 | 8065FF |  | RGA -FINISHING | 7817072 |
| 8031 | 40100.40200.70700.352700.575200 | Customer commitment | 1d | 2028-01-28 | 2028-01-29 | 8066FF |  | RGA -FINISHING | 7817082 |
| 8032 | 40100.40200.70700.352700.575300 | RERA Commitment | 1d | 2028-01-29 | 2028-01-30 | 8067FF |  | RGA -FINISHING | 7817092 |

Notes:
- 8007: Î
- 8008: Î
- 8009: Î
- 8010: Î

| ID | WBS | Task | Duration | Start | Finish | Predecessors | Constraint | Calendar | Unique_Task_ID |
| --- | --- | --- | --- | --- | --- | --- | --- | --- | --- |
| 8033 | 40100.40200.70700.352800 | **Tower 6** | 214d | 2027-06-30 | 2028-01-30 |  | start no earlier than 2027-06-30 | RGA -FINISHING | 7808632 |
| 8034 | 40100.40200.70700.352800.575400 | OC Application | 1d | 2027-06-30 | 2027-07-01 | 8064FF |  | RGA -FINISHING | 7817102 |
| 8035 | 40100.40200.70700.352800.575500 | OC receipt | 1d | 2027-07-31 | 2027-08-01 | 8065FF |  | RGA -FINISHING | 7817112 |
| 8036 | 40100.40200.70700.352800.575600 | Customer commitment | 1d | 2028-01-28 | 2028-01-29 | 8066FF |  | RGA -FINISHING | 7817122 |
| 8037 | 40100.40200.70700.352800.575700 | RERA Commitment | 1d | 2028-01-29 | 2028-01-30 | 8067FF |  | RGA -FINISHING | 7817132 |
| 8038 | 40100.40200.70700.352900 | **Tower 5** | 214d | 2027-06-30 | 2028-01-30 |  | start no earlier than 2027-06-30 | RGA -FINISHING | 7808622 |
| 8039 | 40100.40200.70700.352900.575800 | OC Application | 1d | 2027-06-30 | 2027-07-01 | 8064FF |  | RGA -FINISHING | 7817142 |
| 8040 | 40100.40200.70700.352900.575900 | OC receipt | 1d | 2027-07-31 | 2027-08-01 | 8065FF |  | RGA -FINISHING | 7817152 |
| 8041 | 40100.40200.70700.352900.576000 | Customer commitment | 1d | 2028-01-28 | 2028-01-29 | 8066FF |  | RGA -FINISHING | 7817162 |
| 8042 | 40100.40200.70700.352900.576100 | RERA Commitment | 1d | 2028-01-29 | 2028-01-30 | 8067FF |  | RGA -FINISHING | 7817172 |
| 8043 | 40100.40200.70700.353000 | **Tower 4** | 214d | 2027-06-30 | 2028-01-30 |  | start no earlier than 2027-06-30 | RGA -FINISHING | 7808612 |
| 8044 | 40100.40200.70700.353000.576200 | OC Application | 1d | 2027-06-30 | 2027-07-01 | 8064FF |  | RGA -FINISHING | 7817182 |
| 8045 | 40100.40200.70700.353000.576300 | OC receipt | 1d | 2027-07-31 | 2027-08-01 | 8065FF |  | RGA -FINISHING | 7817192 |
| 8046 | 40100.40200.70700.353000.576400 | Customer commitment | 1d | 2028-01-28 | 2028-01-29 | 8066FF |  | RGA -FINISHING | 7817202 |
| 8047 | 40100.40200.70700.353000.576500 | RERA Commitment | 1d | 2028-01-29 | 2028-01-30 | 8067FF |  | RGA -FINISHING | 7817212 |
| 8048 | 40100.40200.70700.353100 | **Tower 3** | 214d | 2027-06-30 | 2028-01-30 |  | start no earlier than 2027-06-30 | RGA -FINISHING | 7808602 |
| 8049 | 40100.40200.70700.353100.576600 | OC Application | 1d | 2027-06-30 | 2027-07-01 | 8064FF |  | RGA -FINISHING | 7817222 |
| 8050 | 40100.40200.70700.353100.576700 | OC receipt | 1d | 2027-07-31 | 2027-08-01 | 8065FF |  | RGA -FINISHING | 7817232 |
| 8051 | 40100.40200.70700.353100.576800 | Customer commitment | 1d | 2028-01-28 | 2028-01-29 | 8066FF |  | RGA -FINISHING | 7817242 |
| 8052 | 40100.40200.70700.353100.576900 | RERA Commitment | 1d | 2028-01-29 | 2028-01-30 | 8067FF |  | RGA -FINISHING | 7817252 |
| 8053 | 40100.40200.70700.353200 | **Tower 2A** | 214d | 2027-06-30 | 2028-01-30 |  | start no earlier than 2027-06-30 | RGA -FINISHING | 7804542 |
| 8054 | 40100.40200.70700.353200.577000 | OC Application | 1d | 2027-06-30 | 2027-07-01 | 8064FF |  | RGA -FINISHING | 8875604 |
| 8055 | 40100.40200.70700.353200.577100 | OC receipt | 1d | 2027-07-31 | 2027-08-01 | 8065FF |  | RGA -FINISHING | 8875614 |
| 8056 | 40100.40200.70700.353200.577200 | Customer commitment | 1d | 2028-01-28 | 2028-01-29 | 8066FF |  | RGA -FINISHING | 8875624 |
| 8057 | 40100.40200.70700.353200.577300 | RERA Commitment | 1d | 2028-01-29 | 2028-01-30 | 8067FF |  | RGA -FINISHING | 8875634 |

| ID | WBS | Task | Duration | Start | Finish | Predecessors | Constraint | Calendar | Unique_Task_ID |
| --- | --- | --- | --- | --- | --- | --- | --- | --- | --- |
| 8058 | 40100.40200.70700.353300 | **Tower 2** | 214d | 2027-06-30 | 2028-01-30 |  | start no earlier than 2027-06-30 | RGA -FINISHING | 7808592 |
| 8059 | 40100.40200.70700.353300.577400 | OC Application | 1d | 2027-06-30 | 2027-07-01 | 8064FF |  | RGA -FINISHING | 7817262 |
| 8060 | 40100.40200.70700.353300.577500 | OC receipt | 1d | 2027-07-31 | 2027-08-01 | 8065FF |  | RGA -FINISHING | 7817272 |
| 8061 | 40100.40200.70700.353300.577600 | Customer commitment | 1d | 2028-01-28 | 2028-01-29 | 8066FF |  | RGA -FINISHING | 7817282 |
| 8062 | 40100.40200.70700.353300.577700 | RERA Commitment | 1d | 2028-01-29 | 2028-01-30 | 8067FF |  | RGA -FINISHING | 7817292 |
| 8063 | 40100.40200.70700.353400 | **Tower 1** | 214d | 2027-06-30 | 2028-01-30 |  | start no earlier than 2027-06-30 | RGA -FINISHING | 7808582 |
| 8064 | 40100.40200.70700.353400.577800 | OC Application | 1d | 2027-06-30 | 2027-07-01 | 934FS-95d, 1920FS-95d, 2906FS-95d, 3893FS-95d, 4880FS-95d, 5856FS-95d, 6832FS-95d, 7796FS-187d |  | RGA -FINISHING | 7817302 |
| 8065 | 40100.40200.70700.353400.577900 | OC receipt | 1d | 2027-07-31 | 2027-08-01 | 8064FS+30d |  | RGA -FINISHING | 7817312 |
| 8066 | 40100.40200.70700.353400.578000 | Customer commitment | 1d | 2028-01-28 | 2028-01-29 | 8065FS+180d |  | RGA -FINISHING | 7817322 |
| 8067 | 40100.40200.70700.353400.578100 | RERA Commitment | 1d | 2028-01-29 | 2028-01-30 | 8066 |  | RGA -FINISHING | 7817332 |
| 8068 | 40100.40200.63500 | **Aluform, Windows & Lift Order, Shop Drawing, Supply Tracker** | 667d | 2025-04-01 | 2027-01-27 |  | start no earlier than 2025-04-01 | RGA -FINISHING | 7803792 |
| 8069 | 40100.40200.63500.353500 | **ALUFORM Tower 7** | 172d | 2025-04-11 | 2025-10-01 |  | start no earlier than 2025-04-11 | RGA - STRUCTURE | 7808572 |
| 8070 | 40100.40200.63500.353500.578200 | Aluform-Order Date | 1d | 2025-04-11 | 2025-04-11 | 8071SS-7d |  | RGA - STRUCTURE | 7817342 |
| 8071 | 40100.40200.63500.353500.578300 | Aluform-Shop Drawing Approval Date | 1d | 2025-04-18 | 2025-04-18 | 8072SS-60d |  | RGA - STRUCTURE | 7817352 |
| 8072 | 40100.40200.63500.353500.578400 | Aluform-Start of supply for first lot date | 1d | 2025-06-18 | 2025-06-18 | 64SS-110d |  | RGA - STRUCTURE | 7817362 |
| 8073 | 40100.40200.63500.353500.578500 | Aluform-Start of supply for last lot date | 1d | 2025-10-01 | 2025-10-01 | 64SS-6d |  | RGA - STRUCTURE | 7817372 |
| 8074 | 40100.40200.63500.353600 | **ALUFORM Tower 6** | 204d | 2025-04-24 | 2025-11-18 |  | start no earlier than 2025-04-24 | RGA - STRUCTURE | 7808562 |
| 8075 | 40100.40200.63500.353600.578600 | Aluform-Order Date | 1d | 2025-04-24 | 2025-04-25 | 8076SS-7d |  | RGA - STRUCTURE | 7817382 |
| 8076 | 40100.40200.63500.353600.578700 | Aluform-Shop Drawing Approval Date | 1d | 2025-05-02 | 2025-05-03 | 8077SS-60d |  | RGA - STRUCTURE | 7817392 |
| 8077 | 40100.40200.63500.353600.578800 | Aluform-Start of supply for first lot date | 1d | 2025-07-01 | 2025-07-02 | 1050SS-109.5d |  | RGA - STRUCTURE | 7817402 |
| 8078 | 40100.40200.63500.353600.578900 | Aluform-Start of supply for last lot date | 1d | 2025-11-17 | 2025-11-18 | 1050SS+26.5d |  | RGA - STRUCTURE | 7817412 |
| 8079 | 40100.40200.63500.353700 | **ALUFORM Tower 5** | 172d | 2025-06-18 | 2025-12-09 |  | start no earlier than 2025-06-18 | RGA - STRUCTURE | 7808552 |
| 8080 | 40100.40200.63500.353700.579000 | Aluform-Order Date | 1d | 2025-06-18 | 2025-06-18 | 8081SS-7d |  | RGA - STRUCTURE | 7817422 |
| 8081 | 40100.40200.63500.353700.579100 | Aluform-Shop Drawing Approval Date | 1d | 2025-06-25 | 2025-06-25 | 8082SS-60d |  | RGA - STRUCTURE | 7817432 |
| 8082 | 40100.40200.63500.353700.579200 | Aluform-Start of supply for first lot date | 1d | 2025-08-25 | 2025-08-25 | 2037SS-110d |  | RGA - STRUCTURE | 7817442 |
| 8083 | 40100.40200.63500.353700.579300 | Aluform-Start of supply for last lot date | 1d | 2025-12-09 | 2025-12-09 | 2037SS-6d |  | RGA - STRUCTURE | 7817452 |

| ID | WBS | Task | Duration | Start | Finish | Predecessors | Constraint | Calendar | Unique_Task_ID |
| --- | --- | --- | --- | --- | --- | --- | --- | --- | --- |
| 8084 | 40100.40200.63500.353800 | **ALUFORM Tower 4** | 172d | 2025-06-08 | 2025-11-29 |  | start no earlier than 2025-06-08 | RGA - STRUCTURE | 7808542 |
| 8085 | 40100.40200.63500.353800.579400 | Aluform-Order Date | 1d | 2025-06-08 | 2025-06-08 | 8086SS-7d |  | RGA - STRUCTURE | 7817462 |
| 8086 | 40100.40200.63500.353800.579500 | Aluform-Shop Drawing Approval Date | 1d | 2025-06-15 | 2025-06-15 | 8087SS-60d |  | RGA - STRUCTURE | 7817472 |
| 8087 | 40100.40200.63500.353800.579600 | Aluform-Start of supply for first lot date | 1d | 2025-08-14 | 2025-08-14 | 3023SS-109d |  | RGA - STRUCTURE | 7817482 |
| 8088 | 40100.40200.63500.353800.579700 | Aluform-Start of supply for last lot date | 1d | 2025-11-29 | 2025-11-29 | 3023SS-5d |  | RGA - STRUCTURE | 7817492 |
| 8089 | 40100.40200.63500.353900 | **ALUFORM Tower 3** | 172d | 2025-05-28 | 2025-11-18 |  | start no earlier than 2025-05-28 | RGA - STRUCTURE | 7808532 |
| 8090 | 40100.40200.63500.353900.579800 | Aluform-Order Date | 1d | 2025-05-28 | 2025-05-28 | 8091SS-7d |  | RGA - STRUCTURE | 7817502 |
| 8091 | 40100.40200.63500.353900.579900 | Aluform-Shop Drawing Approval Date | 1d | 2025-06-04 | 2025-06-04 | 8092SS-60d |  | RGA - STRUCTURE | 7817512 |
| 8092 | 40100.40200.63500.353900.580000 | Aluform-Start of supply for first lot date | 1d | 2025-08-03 | 2025-08-03 | 4010SS-110d |  | RGA - STRUCTURE | 7817522 |
| 8093 | 40100.40200.63500.353900.580100 | Aluform-Start of supply for last lot date | 1d | 2025-11-18 | 2025-11-18 | 4010SS-6d |  | RGA - STRUCTURE | 7817532 |
| 8094 | 40100.40200.63500.354000 | **ALUFORM Tower 2A** | 172d | 2025-04-10 | 2025-09-30 |  | start no earlier than 2025-04-10 | RGA - STRUCTURE | 7808522 |
| 8095 | 40100.40200.63500.354000.580200 | Aluform-Order Date | 1d | 2025-04-10 | 2025-04-10 | 8096SS-7d |  | RGA - STRUCTURE | 7817542 |
| 8096 | 40100.40200.63500.354000.580300 | Aluform-Shop Drawing Approval Date | 1d | 2025-04-17 | 2025-04-17 | 8097SS-60d |  | RGA - STRUCTURE | 7817552 |
| 8097 | 40100.40200.63500.354000.580400 | Aluform-Start of supply for first lot date | 1d | 2025-06-17 | 2025-06-17 | 4986SS-114d |  | RGA - STRUCTURE | 7817562 |
| 8098 | 40100.40200.63500.354000.580500 | Aluform-Start of supply for last lot date | 1d | 2025-09-30 | 2025-09-30 | 4986SS-10d |  | RGA - STRUCTURE | 7817572 |
| 8099 | 40100.40200.63500.354100 | **ALUFORM Tower 2** | 140d | 2025-04-01 | 2025-08-20 |  | start no earlier than 2025-04-01 | RGA - STRUCTURE | 8875644 |
| 8100 | 40100.40200.63500.354100.580600 | Aluform-Order Date | 1d | 2025-04-01 | 2025-04-01 | 8101SS-7d |  | RGA - STRUCTURE | 8875654 |
| 8101 | 40100.40200.63500.354100.580700 | Aluform-Shop Drawing Approval Date | 1d | 2025-04-01 | 2025-04-01 | 8102SS-60d |  | RGA - STRUCTURE | 8875664 |
| 8102 | 40100.40200.63500.354100.580800 | Aluform-Start of supply for first lot date | 1d | 2025-05-07 | 2025-05-07 | 5962FS-114d |  | RGA - STRUCTURE | 8875674 |
| 8103 | 40100.40200.63500.354100.580900 | Aluform-Start of supply for last lot date | 1d | 2025-08-20 | 2025-08-20 | 5962FS-10d |  | RGA - STRUCTURE | 8875684 |
| 8104 | 40100.40200.63500.354200 | **ALUFORM Tower 1** | 101d | 2025-04-01 | 2025-07-11 |  | start no earlier than 2025-04-01 | RGA - STRUCTURE | 7808902 |
| 8105 | 40100.40200.63500.354200.581000 | Aluform-Order Date | 1d | 2025-04-01 | 2025-04-01 | 8106SS-7d |  | RGA - STRUCTURE | 7817582 |
| 8106 | 40100.40200.63500.354200.581100 | Aluform-Shop Drawing Approval Date | 1d | 2025-04-01 | 2025-04-01 | 8107SS-60d |  | RGA - STRUCTURE | 7817592 |
| 8107 | 40100.40200.63500.354200.581200 | Aluform-Start of supply for first lot date | 1d | 2025-04-01 | 2025-04-01 | 6936SS-114d |  | RGA - STRUCTURE | 7817602 |
| 8108 | 40100.40200.63500.354200.581300 | Aluform-Start of supply for last lot date | 1d | 2025-07-11 | 2025-07-11 | 6936SS-10d |  | RGA - STRUCTURE | 7861172 |

| ID | WBS | Task | Duration | Start | Finish | Predecessors | Constraint | Calendar | Unique_Task_ID |
| --- | --- | --- | --- | --- | --- | --- | --- | --- | --- |
| 8109 | 40100.40200.63500.354300 | **UPVC WINDOWS Tower 7** | 320d | 2025-11-06 | 2026-09-21 |  | start no earlier than 2025-11-06 | RGA -FINISHING | 7808912 |
| 8110 | 40100.40200.63500.354300.581400 | Aluminium Windows-Order Date | 1d | 2025-11-06 | 2025-11-06 | 8111SS-7d |  | RGA -FINISHING | 7817612 |
| 8111 | 40100.40200.63500.354300.581500 | Aluminium Windows-Shop Drawing Approval Date | 1d | 2025-11-13 | 2025-11-13 | 8112SS-35d |  | RGA -FINISHING | 7817622 |
| 8112 | 40100.40200.63500.354300.581600 | Aluminium Windows-Start of supply for first lot date | 1d | 2025-12-18 | 2025-12-18 | 385SS-15d |  | Indian Calendar | 7817632 |
| 8113 | 40100.40200.63500.354300.581700 | Aluminium Windows-Start of supply for last lot date | 1d | 2026-09-21 | 2026-09-21 | 697SS-12d |  | Indian Calendar | 7861162 |
| 8114 | 40100.40200.63500.354400 | **UPVC WINDOWS Tower 6** | 341d | 2025-12-15 | 2026-11-20 |  | start no earlier than 2025-12-15 | RGA -FINISHING | 7808922 |
| 8115 | 40100.40200.63500.354400.581800 | Aluminium Windows-Order Date | 1d | 2025-12-15 | 2025-12-15 | 8116SS-7d |  | RGA -FINISHING | 7817642 |
| 8116 | 40100.40200.63500.354400.581900 | Aluminium Windows-Shop Drawing Approval Date | 1d | 2025-12-22 | 2025-12-22 | 8117SS-35d |  | RGA -FINISHING | 7817652 |
| 8117 | 40100.40200.63500.354400.582000 | Aluminium Windows-Start of supply for first lot date | 1d | 2026-01-26 | 2026-01-26 | 1369SS-16d |  | Indian Calendar | 7817662 |
| 8118 | 40100.40200.63500.354400.582100 | Aluminium Windows-Start of supply for last lot date | 1d | 2026-11-20 | 2026-11-20 | 1683SS-13d |  | Indian Calendar | 7861152 |
| 8119 | 40100.40200.63500.354500 | **UPVC WINDOWS Tower 5** | 334d | 2026-02-28 | 2027-01-27 |  | start no earlier than 2026-02-28 | RGA -FINISHING | 7808932 |
| 8120 | 40100.40200.63500.354500.582200 | Aluminium Windows-Order Date | 1d | 2026-02-28 | 2026-02-28 | 8121SS-7d |  | RGA -FINISHING | 7817672 |
| 8121 | 40100.40200.63500.354500.582300 | Aluminium Windows-Shop Drawing Approval Date | 1d | 2026-03-07 | 2026-03-07 | 8122SS-35d |  | RGA -FINISHING | 7817682 |
| 8122 | 40100.40200.63500.354500.582400 | Aluminium Windows-Start of supply for first lot date | 1d | 2026-04-11 | 2026-04-11 | 2344SS-13d |  | Indian Calendar | 7817692 |
| 8123 | 40100.40200.63500.354500.582500 | Aluminium Windows-Start of supply for last lot date | 1d | 2027-01-27 | 2027-01-27 | 2669SS-13d |  | Indian Calendar | 7861142 |
| 8124 | 40100.40200.63500.354600 | **UPVC WINDOWS Tower 4** | 345d | 2026-02-06 | 2027-01-16 |  | start no earlier than 2026-02-06 | RGA -FINISHING | 7808942 |
| 8125 | 40100.40200.63500.354600.582600 | Aluminium Windows-Order Date | 1d | 2026-02-06 | 2026-02-06 | 8126SS-7d |  | RGA -FINISHING | 7817702 |
| 8126 | 40100.40200.63500.354600.582700 | Aluminium Windows-Shop Drawing Approval Date | 1d | 2026-02-13 | 2026-02-13 | 8127SS-35d |  | RGA -FINISHING | 7817712 |
| 8127 | 40100.40200.63500.354600.582800 | Aluminium Windows-Start of supply for first lot date | 1d | 2026-03-20 | 2026-03-20 | 3331SS-13d |  | Indian Calendar | 7817722 |
| 8128 | 40100.40200.63500.354600.582900 | Aluminium Windows-Start of supply for last lot date | 1d | 2027-01-16 | 2027-01-16 | 3656SS-13d |  | Indian Calendar | 7861132 |
| 8129 | 40100.40200.63500.354700 | **UPVC WINDOWS Tower 3** | 346d | 2026-01-31 | 2027-01-11 |  | start no earlier than 2026-01-31 | RGA -FINISHING | 7808952 |
| 8130 | 40100.40200.63500.354700.583000 | Aluminium Windows-Order Date | 1d | 2026-01-31 | 2026-01-31 | 8131SS-7d |  | RGA -FINISHING | 7817732 |
| 8131 | 40100.40200.63500.354700.583100 | Aluminium Windows-Shop Drawing Approval Date | 1d | 2026-02-07 | 2026-02-07 | 8132SS-35d |  | RGA -FINISHING | 7817742 |
| 8132 | 40100.40200.63500.354700.583200 | Aluminium Windows-Start of supply for first lot date | 1d | 2026-03-14 | 2026-03-14 | 4318SS-13d |  | Indian Calendar | 7817752 |
| 8133 | 40100.40200.63500.354700.583300 | Aluminium Windows-Start of supply for last lot date | 1d | 2027-01-11 | 2027-01-11 | 4643SS-13d |  | Indian Calendar | 7861122 |

| ID | WBS | Task | Duration | Start | Finish | Predecessors | Constraint | Calendar | Unique_Task_ID |
| --- | --- | --- | --- | --- | --- | --- | --- | --- | --- |
| 8134 | 40100.40200.63500.354800 | **UPVC WINDOWS Tower 2A** | 558d | 2025-04-17 | 2026-10-26 |  | start no earlier than 2025-04-17 | RGA -FINISHING | 7808962 |
| 8135 | 40100.40200.63500.354800.583400 | Aluminium Windows-Order Date | 1d | 2025-04-17 | 2025-04-17 | 8136SS-7d |  | RGA -FINISHING | 7817762 |
| 8136 | 40100.40200.63500.354800.583500 | Aluminium Windows-Shop Drawing Approval Date | 1d | 2025-04-24 | 2025-04-24 | 8137SS-35d |  | RGA -FINISHING | 7817772 |
| 8137 | 40100.40200.63500.354800.583600 | Aluminium Windows-Start of supply for first lot date | 1d | 2025-05-29 | 2025-05-29 | 5294SS-13d |  | Indian Calendar | 7817782 |
| 8138 | 40100.40200.63500.354800.583700 | Aluminium Windows-Start of supply for last lot date | 1d | 2026-10-26 | 2026-10-26 | 5619SS-12d |  | Indian Calendar | 7861112 |
| 8139 | 40100.40200.63500.354900 | **UPVC WINDOWS Tower 2** | 542d | 2025-05-17 | 2026-11-09 |  | start no earlier than 2025-05-17 | RGA -FINISHING | 8875694 |
| 8140 | 40100.40200.63500.354900.583800 | Aluminium Windows-Order Date | 1d | 2025-05-17 | 2025-05-17 | 8141SS-7d |  | RGA -FINISHING | 8875704 |
| 8141 | 40100.40200.63500.354900.583900 | Aluminium Windows-Shop Drawing Approval Date | 1d | 2025-05-24 | 2025-05-24 | 8142SS-35d |  | RGA -FINISHING | 8875714 |
| 8142 | 40100.40200.63500.354900.584000 | Aluminium Windows-Start of supply for first lot date | 1d | 2025-06-28 | 2025-06-28 | 6270SS-13d |  | Indian Calendar | 8875724 |
| 8143 | 40100.40200.63500.354900.584100 | Aluminium Windows-Start of supply for last lot date | 1d | 2026-11-09 | 2026-11-09 | 6601SS-13d |  | Indian Calendar | 8875734 |
| 8144 | 40100.40200.63500.355000 | **UPVC WINDOWS Tower 1** | 314d | 2025-10-06 | 2026-08-15 |  | start no earlier than 2025-10-06 | RGA -FINISHING | 7808972 |
| 8145 | 40100.40200.63500.355000.584200 | Aluminium Windows-Order Date | 1d | 2025-10-06 | 2025-10-06 | 8146SS-7d |  | RGA -FINISHING | 7817792 |
| 8146 | 40100.40200.63500.355000.584300 | Aluminium Windows-Shop Drawing Approval Date | 1d | 2025-10-13 | 2025-10-13 | 8147SS-35d |  | RGA -FINISHING | 7817802 |
| 8147 | 40100.40200.63500.355000.584400 | Aluminium Windows-Start of supply for first lot date | 1d | 2025-11-17 | 2025-11-17 | 7247SS-13d |  | Indian Calendar | 7817812 |
| 8148 | 40100.40200.63500.355000.584500 | Aluminium Windows-Start of supply for last lot date | 1d | 2026-08-15 | 2026-08-15 | 7559SS-13d |  | Indian Calendar | 7861102 |
| 8149 | 40100.40200.63500.355100 | **LIFT WORKS Tower 7** | 186d | 2025-11-11 | 2026-05-15 |  | start no earlier than 2025-11-11 | RGA -FINISHING | 7808482 |
| 8150 | 40100.40200.63500.355100.584600 | Lift-Order Date | 1d | 2025-11-11 | 2025-11-11 | 8151FS-7d |  | RGA -FINISHING | 7817822 |
| 8151 | 40100.40200.63500.355100.584700 | Lift-Shop Drawing Approval Date | 1d | 2025-11-17 | 2025-11-17 | 8152FS-90d |  | RGA -FINISHING | 7817832 |
| 8152 | 40100.40200.63500.355100.584800 | Lift-Start of supply for first lot date | 1d | 2026-02-14 | 2026-02-14 | 930SS-120d |  | RGA -FINISHING | 7817842 |
| 8153 | 40100.40200.63500.355100.584900 | Lift-Start of supply for last lot date | 1d | 2026-05-15 | 2026-05-15 | 930SS-30d |  | RGA -FINISHING | 7817852 |
| 8154 | 40100.40200.63500.355200 | **LIFT WORKS Tower 6** | 186d | 2025-09-27 | 2026-03-31 |  | start no earlier than 2025-09-27 | RGA -FINISHING | 7808462 |
| 8155 | 40100.40200.63500.355200.585000 | Lift-Order Date | 1d | 2025-09-27 | 2025-09-27 | 8156FS-7d |  | RGA -FINISHING | 7817862 |
| 8156 | 40100.40200.63500.355200.585100 | Lift-Shop Drawing Approval Date | 1d | 2025-10-03 | 2025-10-03 | 8157FS-90d |  | RGA -FINISHING | 7817872 |
| 8157 | 40100.40200.63500.355200.585200 | Lift-Start of supply for first lot date | 1d | 2025-12-31 | 2025-12-31 | 1916SS-120d |  | RGA -FINISHING | 7817882 |
| 8158 | 40100.40200.63500.355200.585300 | Lift-Start of supply for last lot date | 1d | 2026-03-31 | 2026-03-31 | 1916SS-30d |  | RGA -FINISHING | 7817892 |

| ID | WBS | Task | Duration | Start | Finish | Predecessors | Constraint | Calendar | Unique_Task_ID |
| --- | --- | --- | --- | --- | --- | --- | --- | --- | --- |
| 8159 | 40100.40200.63500.355300 | **LIFT WORKS Tower 5** | 186d | 2025-12-02 | 2026-06-06 |  | start no earlier than 2025-12-02 | RGA -FINISHING | 7808452 |
| 8160 | 40100.40200.63500.355300.585400 | Lift-Order Date | 1d | 2025-12-02 | 2025-12-03 | 8161FS-7d |  | RGA -FINISHING | 7817902 |
| 8161 | 40100.40200.63500.355300.585500 | Lift-Shop Drawing Approval Date | 1d | 2025-12-08 | 2025-12-09 | 8162FS-90d |  | RGA -FINISHING | 7817912 |
| 8162 | 40100.40200.63500.355300.585600 | Lift-Start of supply for first lot date | 1d | 2026-03-07 | 2026-03-08 | 2902SS-120d |  | RGA -FINISHING | 7817922 |
| 8163 | 40100.40200.63500.355300.585700 | Lift-Start of supply for last lot date | 1d | 2026-06-05 | 2026-06-06 | 2902SS-30d |  | RGA -FINISHING | 7817932 |
| 8164 | 40100.40200.63500.355400 | **LIFT WORKS Tower 4** | 186d | 2025-11-21 | 2026-05-25 |  | start no earlier than 2025-11-21 | RGA -FINISHING | 7808442 |
| 8165 | 40100.40200.63500.355400.585800 | Lift-Order Date | 1d | 2025-11-21 | 2025-11-21 | 8166FS-7d |  | RGA -FINISHING | 7817942 |
| 8166 | 40100.40200.63500.355400.585900 | Lift-Shop Drawing Approval Date | 1d | 2025-11-27 | 2025-11-27 | 8167FS-90d |  | RGA -FINISHING | 7817952 |
| 8167 | 40100.40200.63500.355400.586000 | Lift-Start of supply for first lot date | 1d | 2026-02-24 | 2026-02-24 | 3889SS-120d |  | RGA -FINISHING | 7817962 |
| 8168 | 40100.40200.63500.355400.586100 | Lift-Start of supply for last lot date | 1d | 2026-05-25 | 2026-05-25 | 3889SS-30d |  | RGA -FINISHING | 7817972 |
| 8169 | 40100.40200.63500.355500 | **LIFT WORKS Tower 3** | 186d | 2025-11-11 | 2026-05-15 |  | start no earlier than 2025-11-11 | RGA -FINISHING | 7808432 |
| 8170 | 40100.40200.63500.355500.586200 | Lift-Order Date | 1d | 2025-11-11 | 2025-11-11 | 8171FS-7d |  | RGA -FINISHING | 7817982 |
| 8171 | 40100.40200.63500.355500.586300 | Lift-Shop Drawing Approval Date | 1d | 2025-11-17 | 2025-11-17 | 8172FS-90d |  | RGA -FINISHING | 7817992 |
| 8172 | 40100.40200.63500.355500.586400 | Lift-Start of supply for first lot date | 1d | 2026-02-14 | 2026-02-14 | 4876SS-120d |  | RGA -FINISHING | 7818002 |
| 8173 | 40100.40200.63500.355500.586500 | Lift-Start of supply for last lot date | 1d | 2026-05-15 | 2026-05-15 | 4876SS-30d |  | RGA -FINISHING | 7818012 |
| 8174 | 40100.40200.63500.355600 | **LIFT WORKS Tower 2A** | 186d | 2025-09-01 | 2026-03-06 |  | start no earlier than 2025-09-01 | RGA -FINISHING | 7808422 |
| 8175 | 40100.40200.63500.355600.586600 | Lift-Order Date | 1d | 2025-09-01 | 2025-09-02 | 8176FS-7d |  | RGA -FINISHING | 7818022 |
| 8176 | 40100.40200.63500.355600.586700 | Lift-Shop Drawing Approval Date | 1d | 2025-09-07 | 2025-09-08 | 8177FS-90d |  | RGA -FINISHING | 7818032 |
| 8177 | 40100.40200.63500.355600.586800 | Lift-Start of supply for first lot date | 1d | 2025-12-05 | 2025-12-06 | 5852SS-120d |  | RGA -FINISHING | 7818042 |
| 8178 | 40100.40200.63500.355600.586900 | Lift-Start of supply for last lot date | 1d | 2026-03-05 | 2026-03-06 | 5852SS-30d |  | RGA -FINISHING | 7818052 |
| 8179 | 40100.40200.63500.355700 | **LIFT WORKS Tower 2** | 186d | 2025-09-07 | 2026-03-11 |  | start no earlier than 2025-09-07 | RGA -FINISHING | 8875744 |
| 8180 | 40100.40200.63500.355700.587000 | Lift-Order Date | 1d | 2025-09-07 | 2025-09-07 | 8181FS-7d |  | RGA -FINISHING | 8875754 |
| 8181 | 40100.40200.63500.355700.587100 | Lift-Shop Drawing Approval Date | 1d | 2025-09-13 | 2025-09-13 | 8182FS-90d |  | RGA -FINISHING | 8875764 |
| 8182 | 40100.40200.63500.355700.587200 | Lift-Start of supply for first lot date | 1d | 2025-12-11 | 2025-12-11 | 6828SS-120d |  | RGA -FINISHING | 8875774 |
| 8183 | 40100.40200.63500.355700.587300 | Lift-Start of supply for last lot date | 1d | 2026-03-11 | 2026-03-11 | 6828SS-30d |  | RGA -FINISHING | 8875784 |

| ID | WBS | Task | Duration | Start | Finish | Predecessors | Constraint | Calendar | Unique_Task_ID |
| --- | --- | --- | --- | --- | --- | --- | --- | --- | --- |
| 8184 | 40100.40200.63500.355800 | **LIFT WORKS Tower 1** | 186d | 2025-09-02 | 2026-03-06 |  | start no earlier than 2025-09-02 | RGA -FINISHING | 7808412 |
| 8185 | 40100.40200.63500.355800.587400 | Lift-Order Date | 1d | 2025-09-02 | 2025-09-02 | 8186FS-7d |  | RGA -FINISHING | 7818062 |
| 8186 | 40100.40200.63500.355800.587500 | Lift-Shop Drawing Approval Date | 1d | 2025-09-08 | 2025-09-08 | 8187FS-90d |  | RGA -FINISHING | 7818072 |
| 8187 | 40100.40200.63500.355800.587600 | Lift-Start of supply for first lot date | 1d | 2025-12-06 | 2025-12-06 | 7792SS-120d |  | RGA -FINISHING | 7818082 |
| 8188 | 40100.40200.63500.355800.587700 | Lift-Start of supply for last lot date | 1d | 2026-03-06 | 2026-03-06 | 7792SS-30d |  | RGA -FINISHING | 7818092 |
| 8189 | 40100.40200.60100 | **Post Pour Tracker** | 474d | 2025-04-01 | 2026-10-05 |  | start no earlier than 2025-04-01 | Indian Calendar | 7803712 |
| 8190 | 40100.40200.60100.64300 | **Tower 7** | 396d | 2025-04-01 | 2026-07-06 |  | start no earlier than 2025-04-01 | Indian Calendar | 7803732 |
| 8191 | 40100.40200.60100.64300.587800 | UB Floor | 1d | 2025-11-03 | 2025-11-03 | 65 |  | Indian Calendar | 7818102 |
| 8192 | 40100.40200.60100.64300.587900 | Ground Floor | 1d | 2025-11-24 | 2025-11-24 | 69 |  | Indian Calendar | 7818112 |
| 8193 | 40100.40200.60100.64300.588000 | 1st Floor | 1d | 2025-12-09 | 2025-12-09 | 73 |  | Indian Calendar | 7818122 |
| 8194 | 40100.40200.60100.64300.588100 | 2nd Floor | 1d | 2025-12-18 | 2025-12-18 | 77 |  | Indian Calendar | 7818132 |
| 8195 | 40100.40200.60100.64300.588200 | 3rd Floor | 1d | 2025-12-26 | 2025-12-26 | 81 |  | Indian Calendar | 7818142 |
| 8196 | 40100.40200.60100.64300.588300 | 4th Floor | 1d | 2026-01-05 | 2026-01-05 | 85 |  | Indian Calendar | 7818152 |
| 8197 | 40100.40200.60100.64300.588400 | 5th Floor | 1d | 2026-01-13 | 2026-01-13 | 89 |  | Indian Calendar | 7818162 |
| 8198 | 40100.40200.60100.64300.588500 | 6th Floor | 1d | 2026-01-22 | 2026-01-22 | 93 |  | Indian Calendar | 7818172 |
| 8199 | 40100.40200.60100.64300.588600 | 7th Floor | 1d | 2026-02-02 | 2026-02-02 | 97 |  | Indian Calendar | 7818182 |
| 8200 | 40100.40200.60100.64300.588700 | 8th Floor | 1d | 2026-02-10 | 2026-02-10 | 101 |  | Indian Calendar | 7818192 |
| 8201 | 40100.40200.60100.64300.588800 | 9th Floor | 1d | 2026-02-19 | 2026-02-19 | 105 |  | Indian Calendar | 7818202 |
| 8202 | 40100.40200.60100.64300.588900 | 10th Floor | 1d | 2026-02-28 | 2026-02-28 | 109 |  | Indian Calendar | 7818212 |
| 8203 | 40100.40200.60100.64300.589000 | 11th Floor | 1d | 2026-03-09 | 2026-03-09 | 113 |  | Indian Calendar | 7818222 |
| 8204 | 40100.40200.60100.64300.589100 | 12th Floor | 1d | 2026-03-18 | 2026-03-18 | 117 |  | Indian Calendar | 7818232 |
| 8205 | 40100.40200.60100.64300.589200 | 13th Floor | 1d | 2026-03-27 | 2026-03-27 | 121 |  | Indian Calendar | 7818242 |
| 8206 | 40100.40200.60100.64300.589300 | 14th Floor | 1d | 2026-04-06 | 2026-04-06 | 125 |  | Indian Calendar | 7818252 |
| 8207 | 40100.40200.60100.64300.589400 | 15th Floor | 1d | 2026-04-14 | 2026-04-14 | 129 |  | Indian Calendar | 7818262 |
| 8208 | 40100.40200.60100.64300.589500 | 16th Floor | 1d | 2026-04-22 | 2026-04-22 | 133 |  | Indian Calendar | 7818272 |
| 8209 | 40100.40200.60100.64300.589600 | 17th Floor | 1d | 2026-05-05 | 2026-05-05 | 137 |  | Indian Calendar | 7818282 |
| 8210 | 40100.40200.60100.64300.589700 | 18th Floor | 1d | 2026-05-13 | 2026-05-13 | 141 |  | Indian Calendar | 7818292 |
| 8211 | 40100.40200.60100.64300.589800 | 19th Floor | 1d | 2026-05-21 | 2026-05-21 | 145 |  | Indian Calendar | 7818302 |
| 8212 | 40100.40200.60100.64300.589900 | 20th Floor | 1d | 2026-05-29 | 2026-05-29 | 149 |  | Indian Calendar | 7818312 |
| 8213 | 40100.40200.60100.64300.590000 | 21st Floor | 1d | 2026-06-06 | 2026-06-06 | 153 |  | Indian Calendar | 7818322 |
| 8214 | 40100.40200.60100.64300.3348600 | 22nd Floor | 1d | 2025-04-01 | 2025-04-01 |  | start no earlier than 2025-04-01 | Indian Calendar | 7818332 |
| 8215 | 40100.40200.60100.64300.3348500 | 23rd Floor | 1d | 2025-04-01 | 2025-04-01 |  | start no earlier than 2025-04-01 | Indian Calendar | 7818342 |
| 8216 | 40100.40200.60100.64300.3348400 | 24th Floor | 1d | 2025-04-01 | 2025-04-01 |  | start no earlier than 2025-04-01 | Indian Calendar | 7818352 |
| 8217 | 40100.40200.60100.64300.590100 | 25th Floor | 1d | 2026-07-06 | 2026-07-06 | 161 |  | Indian Calendar | 7818362 |

| ID | WBS | Task | Duration | Start | Finish | Predecessors | Constraint | Calendar | Unique_Task_ID |
| --- | --- | --- | --- | --- | --- | --- | --- | --- | --- |
| 8218 | 40100.40200.60100.64400 | **Tower 6** | 413d | 2025-04-01 | 2026-07-25 |  | start no earlier than 2025-04-01 | Indian Calendar | 7803742 |
| 8219 | 40100.40200.60100.64400.590200 | UB Floor | 1d | 2025-10-21 | 2025-10-21 | 1048 |  | Indian Calendar | 7818392 |
| 8220 | 40100.40200.60100.64400.590300 | Ground Floor | 1d | 2025-11-17 | 2025-11-17 | 1051 |  | Indian Calendar | 7818402 |
| 8221 | 40100.40200.60100.64400.590400 | 1st Floor | 1d | 2025-12-08 | 2025-12-08 | 1055 |  | Indian Calendar | 7818412 |
| 8222 | 40100.40200.60100.64400.590500 | 2nd Floor | 1d | 2025-12-22 | 2025-12-22 | 1059 |  | Indian Calendar | 7818422 |
| 8223 | 40100.40200.60100.64400.590600 | 3rd Floor | 1d | 2025-12-31 | 2025-12-31 | 1063 |  | Indian Calendar | 7818432 |
| 8224 | 40100.40200.60100.64400.590700 | 4th Floor | 1d | 2026-01-09 | 2026-01-09 | 1067 |  | Indian Calendar | 7818442 |
| 8225 | 40100.40200.60100.64400.590800 | 5th Floor | 1d | 2026-01-19 | 2026-01-19 | 1071 |  | Indian Calendar | 7818452 |
| 8226 | 40100.40200.60100.64400.590900 | 6th Floor | 1d | 2026-01-28 | 2026-01-28 | 1075 |  | Indian Calendar | 7818462 |
| 8227 | 40100.40200.60100.64400.591000 | 7th Floor | 1d | 2026-02-06 | 2026-02-06 | 1079 |  | Indian Calendar | 7818472 |
| 8228 | 40100.40200.60100.64400.591100 | 8th Floor | 1d | 2026-02-16 | 2026-02-16 | 1083 |  | Indian Calendar | 7818482 |
| 8229 | 40100.40200.60100.64400.591200 | 9th Floor | 1d | 2026-02-24 | 2026-02-24 | 1087 |  | Indian Calendar | 7818492 |
| 8230 | 40100.40200.60100.64400.591300 | 10th Floor | 1d | 2026-03-05 | 2026-03-05 | 1091 |  | Indian Calendar | 7818502 |
| 8231 | 40100.40200.60100.64400.591400 | 11th Floor | 1d | 2026-03-14 | 2026-03-14 | 1095 |  | Indian Calendar | 7818512 |
| 8232 | 40100.40200.60100.64400.591500 | 12th Floor | 1d | 2026-03-23 | 2026-03-23 | 1099 |  | Indian Calendar | 7818522 |
| 8233 | 40100.40200.60100.64400.591600 | 13th Floor | 1d | 2026-04-01 | 2026-04-01 | 1103 |  | Indian Calendar | 7818532 |
| 8234 | 40100.40200.60100.64400.591700 | 14th Floor | 1d | 2026-04-10 | 2026-04-10 | 1107 |  | Indian Calendar | 7818542 |
| 8235 | 40100.40200.60100.64400.591800 | 15th Floor | 1d | 2026-04-20 | 2026-04-20 | 1111 |  | Indian Calendar | 7818552 |
| 8236 | 40100.40200.60100.64400.591900 | 16th Floor | 1d | 2026-04-28 | 2026-04-28 | 1115 |  | Indian Calendar | 7818562 |
| 8237 | 40100.40200.60100.64400.592000 | 17th Floor | 1d | 2026-05-07 | 2026-05-07 | 1119 |  | Indian Calendar | 7818572 |
| 8238 | 40100.40200.60100.64400.592100 | 18th Floor | 1d | 2026-05-19 | 2026-05-19 | 1123 |  | Indian Calendar | 7818582 |
| 8239 | 40100.40200.60100.64400.592200 | 19th Floor | 1d | 2026-05-27 | 2026-05-27 | 1127 |  | Indian Calendar | 7818592 |
| 8240 | 40100.40200.60100.64400.592300 | 20th Floor | 1d | 2026-06-04 | 2026-06-04 | 1131 |  | Indian Calendar | 7818602 |
| 8241 | 40100.40200.60100.64400.592400 | 21st Floor | 1d | 2026-06-12 | 2026-06-12 | 1135 |  | Indian Calendar | 7818612 |
| 8242 | 40100.40200.60100.64400.592500 | 22nd Floor | 1d | 2026-06-23 | 2026-06-24 | 1139 |  | Indian Calendar | 7818622 |
| 8243 | 40100.40200.60100.64400.592600 | 23rd Floor | 1d | 2026-07-09 | 2026-07-10 | 1143 |  | Indian Calendar | 7818632 |
| 8244 | 40100.40200.60100.64400.3348300 | 24th Floor | 1d | 2025-04-01 | 2025-04-01 |  | start no earlier than 2025-04-01 | Indian Calendar | 7818642 |
| 8245 | 40100.40200.60100.64400.592700 | 25th Floor | 1d | 2026-07-25 | 2026-07-25 | 1147 |  | Indian Calendar | 7818652 |

| ID | WBS | Task | Duration | Start | Finish | Predecessors | Constraint | Calendar | Unique_Task_ID |
| --- | --- | --- | --- | --- | --- | --- | --- | --- | --- |
| 8246 | 40100.40200.60100.64500 | **Tower 5** | 474d | 2025-04-01 | 2026-10-05 |  | start no earlier than 2025-04-01 | Indian Calendar | 7803772 |
| 8247 | 40100.40200.60100.64500.592800 | UB Floor | 1d | 2026-01-09 | 2026-01-09 | 2038 |  | Indian Calendar | 7818682 |
| 8248 | 40100.40200.60100.64500.592900 | Ground Floor | 1d | 2026-02-04 | 2026-02-04 | 2041 |  | Indian Calendar | 7818692 |
| 8249 | 40100.40200.60100.64500.593000 | 1st Floor | 1d | 2026-02-25 | 2026-02-25 | 2045 |  | Indian Calendar | 7818702 |
| 8250 | 40100.40200.60100.64500.593100 | 2nd Floor | 1d | 2026-03-12 | 2026-03-12 | 2049 |  | Indian Calendar | 7818712 |
| 8251 | 40100.40200.60100.64500.593200 | 3rd Floor | 1d | 2026-03-21 | 2026-03-21 | 2053 |  | Indian Calendar | 7818722 |
| 8252 | 40100.40200.60100.64500.593300 | 4th Floor | 1d | 2026-03-30 | 2026-03-30 | 2057 |  | Indian Calendar | 7818732 |
| 8253 | 40100.40200.60100.64500.593400 | 5th Floor | 1d | 2026-04-08 | 2026-04-08 | 2061 |  | Indian Calendar | 7818742 |
| 8254 | 40100.40200.60100.64500.593500 | 6th Floor | 1d | 2026-04-17 | 2026-04-17 | 2065 |  | Indian Calendar | 7818752 |
| 8255 | 40100.40200.60100.64500.593600 | 7th Floor | 1d | 2026-04-27 | 2026-04-27 | 2069 |  | Indian Calendar | 7818762 |
| 8256 | 40100.40200.60100.64500.593700 | 8th Floor | 1d | 2026-05-06 | 2026-05-06 | 2073 |  | Indian Calendar | 7818772 |
| 8257 | 40100.40200.60100.64500.593800 | 9th Floor | 1d | 2026-05-15 | 2026-05-15 | 2077 |  | Indian Calendar | 7818782 |
| 8258 | 40100.40200.60100.64500.593900 | 10th Floor | 1d | 2026-05-25 | 2026-05-25 | 2081 |  | Indian Calendar | 7818792 |
| 8259 | 40100.40200.60100.64500.594000 | 11th Floor | 1d | 2026-06-02 | 2026-06-02 | 2085 |  | Indian Calendar | 7818802 |
| 8260 | 40100.40200.60100.64500.594100 | 12th Floor | 1d | 2026-06-11 | 2026-06-11 | 2089 |  | Indian Calendar | 7818812 |
| 8261 | 40100.40200.60100.64500.594200 | 13th Floor | 1d | 2026-06-23 | 2026-06-24 | 2093 |  | Indian Calendar | 7818822 |
| 8262 | 40100.40200.60100.64500.594300 | 14th Floor | 1d | 2026-07-11 | 2026-07-13 | 2097 |  | Indian Calendar | 7818832 |
| 8263 | 40100.40200.60100.64500.594400 | 15th Floor | 1d | 2026-07-23 | 2026-07-23 | 2101 |  | Indian Calendar | 7818842 |
| 8264 | 40100.40200.60100.64500.594500 | 16th Floor | 1d | 2026-07-31 | 2026-07-31 | 2105 |  | Indian Calendar | 7818852 |
| 8265 | 40100.40200.60100.64500.594600 | 17th Floor | 1d | 2026-08-12 | 2026-08-12 | 2109 |  | Indian Calendar | 7818862 |
| 8266 | 40100.40200.60100.64500.594700 | 18th Floor | 1d | 2026-08-21 | 2026-08-21 | 2113 |  | Indian Calendar | 7818872 |
| 8267 | 40100.40200.60100.64500.594800 | 19th Floor | 1d | 2026-08-29 | 2026-08-29 | 2117 |  | Indian Calendar | 7818882 |
| 8268 | 40100.40200.60100.64500.594900 | 20th Floor | 1d | 2026-09-07 | 2026-09-07 | 2121 |  | Indian Calendar | 7818892 |
| 8269 | 40100.40200.60100.64500.595000 | 21st Floor | 1d | 2026-09-14 | 2026-09-14 | 2125 |  | Indian Calendar | 7818902 |
| 8270 | 40100.40200.60100.64500.595100 | 22nd Floor | 1d | 2026-09-22 | 2026-09-22 | 2129 |  | Indian Calendar | 7818912 |
| 8271 | 40100.40200.60100.64500.3348200 | 23rd Floor | 1d | 2025-04-01 | 2025-04-01 |  | start no earlier than 2025-04-01 | Indian Calendar | 7818922 |
| 8272 | 40100.40200.60100.64500.3348100 | 24th Floor | 1d | 2025-04-01 | 2025-04-01 |  | start no earlier than 2025-04-01 | Indian Calendar | 7818932 |
| 8273 | 40100.40200.60100.64500.595200 | 25th Floor | 1d | 2026-10-05 | 2026-10-05 | 2133 |  | Indian Calendar | 7818942 |

| ID | WBS | Task | Duration | Start | Finish | Predecessors | Constraint | Calendar | Unique_Task_ID |
| --- | --- | --- | --- | --- | --- | --- | --- | --- | --- |
| 8274 | 40100.40200.60100.64200 | **Tower 4** | 464d | 2025-04-01 | 2026-09-23 |  | start no earlier than 2025-04-01 | Indian Calendar | 7803762 |
| 8275 | 40100.40200.60100.64200.595300 | UB Floor | 1d | 2025-12-29 | 2025-12-29 | 3024 |  | Indian Calendar | 7818972 |
| 8276 | 40100.40200.60100.64200.595400 | Ground Floor | 1d | 2026-01-23 | 2026-01-23 | 3028 |  | Indian Calendar | 7818982 |
| 8277 | 40100.40200.60100.64200.595500 | 1st Floor | 1d | 2026-02-14 | 2026-02-14 | 3032 |  | Indian Calendar | 7818992 |
| 8278 | 40100.40200.60100.64200.595600 | 2nd Floor | 1d | 2026-03-02 | 2026-03-02 | 3036 |  | Indian Calendar | 7819002 |
| 8279 | 40100.40200.60100.64200.595700 | 3rd Floor | 1d | 2026-03-10 | 2026-03-10 | 3040 |  | Indian Calendar | 7819012 |
| 8280 | 40100.40200.60100.64200.595800 | 4th Floor | 1d | 2026-03-19 | 2026-03-19 | 3044 |  | Indian Calendar | 7819022 |
| 8281 | 40100.40200.60100.64200.595900 | 5th Floor | 1d | 2026-03-28 | 2026-03-28 | 3048 |  | Indian Calendar | 7819032 |
| 8282 | 40100.40200.60100.64200.596000 | 6th Floor | 1d | 2026-04-06 | 2026-04-06 | 3052 |  | Indian Calendar | 7819042 |
| 8283 | 40100.40200.60100.64200.596100 | 7th Floor | 1d | 2026-04-15 | 2026-04-15 | 3056 |  | Indian Calendar | 7819052 |
| 8284 | 40100.40200.60100.64200.596200 | 8th Floor | 1d | 2026-04-24 | 2026-04-24 | 3060 |  | Indian Calendar | 7819062 |
| 8285 | 40100.40200.60100.64200.596300 | 9th Floor | 1d | 2026-05-04 | 2026-05-04 | 3064 |  | Indian Calendar | 7819072 |
| 8286 | 40100.40200.60100.64200.596400 | 10th Floor | 1d | 2026-05-13 | 2026-05-13 | 3068 |  | Indian Calendar | 7819082 |
| 8287 | 40100.40200.60100.64200.596500 | 11th Floor | 1d | 2026-05-22 | 2026-05-22 | 3072 |  | Indian Calendar | 7819092 |
| 8288 | 40100.40200.60100.64200.596600 | 12th Floor | 1d | 2026-06-01 | 2026-06-01 | 3076 |  | Indian Calendar | 7819102 |
| 8289 | 40100.40200.60100.64200.596700 | 13th Floor | 1d | 2026-06-09 | 2026-06-09 | 3080 |  | Indian Calendar | 7819112 |
| 8290 | 40100.40200.60100.64200.596800 | 14th Floor | 1d | 2026-06-19 | 2026-06-20 | 3084 |  | Indian Calendar | 7819122 |
| 8291 | 40100.40200.60100.64200.596900 | 15th Floor | 1d | 2026-07-07 | 2026-07-08 | 3088 |  | Indian Calendar | 7819132 |
| 8292 | 40100.40200.60100.64200.597000 | 16th Floor | 1d | 2026-07-20 | 2026-07-20 | 3092 |  | Indian Calendar | 7819142 |
| 8293 | 40100.40200.60100.64200.597100 | 17th Floor | 1d | 2026-08-01 | 2026-08-01 | 3096 |  | Indian Calendar | 7819152 |
| 8294 | 40100.40200.60100.64200.597200 | 18th Floor | 1d | 2026-08-10 | 2026-08-10 | 3100 |  | Indian Calendar | 7819162 |
| 8295 | 40100.40200.60100.64200.597300 | 19th Floor | 1d | 2026-08-18 | 2026-08-18 | 3104 |  | Indian Calendar | 7819172 |
| 8296 | 40100.40200.60100.64200.597400 | 20th Floor | 1d | 2026-08-26 | 2026-08-26 | 3108 |  | Indian Calendar | 7819182 |
| 8297 | 40100.40200.60100.64200.597500 | 21st Floor | 1d | 2026-09-03 | 2026-09-03 | 3112 |  | Indian Calendar | 7819192 |
| 8298 | 40100.40200.60100.64200.597600 | 22nd Floor | 1d | 2026-09-11 | 2026-09-11 | 3116 |  | Indian Calendar | 7819202 |
| 8299 | 40100.40200.60100.64200.3348000 | 23rd Floor | 1d | 2025-04-01 | 2025-04-01 |  | start no earlier than 2025-04-01 | Indian Calendar | 7819212 |
| 8300 | 40100.40200.60100.64200.3347900 | 24th Floor | 1d | 2025-04-01 | 2025-04-01 |  | start no earlier than 2025-04-01 | Indian Calendar | 7819222 |
| 8301 | 40100.40200.60100.64200.597700 | 25th Floor | 1d | 2026-09-23 | 2026-09-23 | 3120 |  | Indian Calendar | 7819232 |

| ID | WBS | Task | Duration | Start | Finish | Predecessors | Constraint | Calendar | Unique_Task_ID |
| --- | --- | --- | --- | --- | --- | --- | --- | --- | --- |
| 8302 | 40100.40200.60100.64100 | **Tower 3** | 456d | 2025-04-01 | 2026-09-14 |  | start no earlier than 2025-04-01 | Indian Calendar | 7803752 |
| 8303 | 40100.40200.60100.64100.597800 | UB Floor | 1d | 2025-12-19 | 2025-12-19 | 4011 |  | Indian Calendar | 7819262 |
| 8304 | 40100.40200.60100.64100.597900 | Ground Floor | 1d | 2026-01-13 | 2026-01-13 | 4015 |  | Indian Calendar | 7819272 |
| 8305 | 40100.40200.60100.64100.598000 | 1st Floor | 1d | 2026-02-04 | 2026-02-04 | 4019 |  | Indian Calendar | 7819282 |
| 8306 | 40100.40200.60100.64100.598100 | 2nd Floor | 1d | 2026-02-19 | 2026-02-19 | 4023 |  | Indian Calendar | 7819292 |
| 8307 | 40100.40200.60100.64100.598200 | 3rd Floor | 1d | 2026-02-28 | 2026-02-28 | 4027 |  | Indian Calendar | 7819302 |
| 8308 | 40100.40200.60100.64100.598300 | 4th Floor | 1d | 2026-03-09 | 2026-03-09 | 4031 |  | Indian Calendar | 7819312 |
| 8309 | 40100.40200.60100.64100.598400 | 5th Floor | 1d | 2026-03-18 | 2026-03-18 | 4035 |  | Indian Calendar | 7819322 |
| 8310 | 40100.40200.60100.64100.598500 | 6th Floor | 1d | 2026-03-27 | 2026-03-27 | 4039 |  | Indian Calendar | 7819332 |
| 8311 | 40100.40200.60100.64100.598600 | 7th Floor | 1d | 2026-04-06 | 2026-04-06 | 4043 |  | Indian Calendar | 7819342 |
| 8312 | 40100.40200.60100.64100.598700 | 8th Floor | 1d | 2026-04-14 | 2026-04-14 | 4047 |  | Indian Calendar | 7819352 |
| 8313 | 40100.40200.60100.64100.598800 | 9th Floor | 1d | 2026-04-23 | 2026-04-23 | 4051 |  | Indian Calendar | 7819362 |
| 8314 | 40100.40200.60100.64100.598900 | 10th Floor | 1d | 2026-05-04 | 2026-05-04 | 4055 |  | Indian Calendar | 7819372 |
| 8315 | 40100.40200.60100.64100.599000 | 11th Floor | 1d | 2026-05-12 | 2026-05-12 | 4059 |  | Indian Calendar | 7819382 |
| 8316 | 40100.40200.60100.64100.599100 | 12th Floor | 1d | 2026-05-21 | 2026-05-21 | 4063 |  | Indian Calendar | 7819392 |
| 8317 | 40100.40200.60100.64100.599200 | 13th Floor | 1d | 2026-05-30 | 2026-05-30 | 4067 |  | Indian Calendar | 7819402 |
| 8318 | 40100.40200.60100.64100.599300 | 14th Floor | 1d | 2026-06-08 | 2026-06-08 | 4071 |  | Indian Calendar | 7819412 |
| 8319 | 40100.40200.60100.64100.599400 | 15th Floor | 1d | 2026-06-17 | 2026-06-18 | 4075 |  | Indian Calendar | 7819422 |
| 8320 | 40100.40200.60100.64100.599500 | 16th Floor | 1d | 2026-07-03 | 2026-07-04 | 4079 |  | Indian Calendar | 7819432 |
| 8321 | 40100.40200.60100.64100.599600 | 17th Floor | 1d | 2026-07-22 | 2026-07-22 | 4083 |  | Indian Calendar | 7819442 |
| 8322 | 40100.40200.60100.64100.599700 | 18th Floor | 1d | 2026-07-30 | 2026-07-30 | 4087 |  | Indian Calendar | 7819452 |
| 8323 | 40100.40200.60100.64100.599800 | 19th Floor | 1d | 2026-08-07 | 2026-08-07 | 4091 |  | Indian Calendar | 7819462 |
| 8324 | 40100.40200.60100.64100.599900 | 20th Floor | 1d | 2026-08-15 | 2026-08-15 | 4095 |  | Indian Calendar | 7819472 |
| 8325 | 40100.40200.60100.64100.600000 | 21st Floor | 1d | 2026-08-24 | 2026-08-24 | 4099 |  | Indian Calendar | 7819482 |
| 8326 | 40100.40200.60100.64100.600100 | 22nd Floor | 1d | 2026-09-01 | 2026-09-01 | 4103 |  | Indian Calendar | 7819492 |
| 8327 | 40100.40200.60100.64100.3347800 | 23rd Floor | 1d | 2025-04-01 | 2025-04-01 |  | start no earlier than 2025-04-01 | Indian Calendar | 7819502 |
| 8328 | 40100.40200.60100.64100.3347700 | 24th Floor | 1d | 2025-04-01 | 2025-04-01 |  | start no earlier than 2025-04-01 | Indian Calendar | 7819512 |
| 8329 | 40100.40200.60100.64100.600200 | 25th Floor | 1d | 2026-09-14 | 2026-09-14 | 4107 |  | Indian Calendar | 7819522 |

| ID | WBS | Task | Duration | Start | Finish | Predecessors | Constraint | Calendar | Unique_Task_ID |
| --- | --- | --- | --- | --- | --- | --- | --- | --- | --- |
| 8330 | 40100.40200.60100.64600 | **Tower 2A** | 418.5d | 2025-04-01 | 2026-08-01 |  | start no earlier than 2025-04-01 | Indian Calendar | 7803812 |
| 8331 | 40100.40200.60100.64600.600300 | Ground Floor | 1d | 2025-11-06 | 2025-11-06 | 4987 |  | Indian Calendar | 7819552 |
| 8332 | 40100.40200.60100.64600.600400 | 1st Floor | 1d | 2025-11-27 | 2025-11-27 | 4991 |  | Indian Calendar | 7819562 |
| 8333 | 40100.40200.60100.64600.600500 | 2nd Floor | 1d | 2025-12-12 | 2025-12-12 | 4995 |  | Indian Calendar | 7819572 |
| 8334 | 40100.40200.60100.64600.600600 | 3rd Floor | 1d | 2025-12-22 | 2025-12-22 | 4999 |  | Indian Calendar | 7819582 |
| 8335 | 40100.40200.60100.64600.600700 | 4th Floor | 1d | 2025-12-30 | 2025-12-30 | 5003 |  | Indian Calendar | 7819592 |
| 8336 | 40100.40200.60100.64600.600800 | 5th Floor | 1d | 2026-01-08 | 2026-01-08 | 5007 |  | Indian Calendar | 7819602 |
| 8337 | 40100.40200.60100.64600.600900 | 6th Floor | 1d | 2026-01-17 | 2026-01-17 | 5011 |  | Indian Calendar | 7819612 |
| 8338 | 40100.40200.60100.64600.601000 | 7th Floor | 1d | 2026-01-26 | 2026-01-26 | 5015 |  | Indian Calendar | 7819622 |
| 8339 | 40100.40200.60100.64600.601100 | 8th Floor | 1d | 2026-02-05 | 2026-02-05 | 5019 |  | Indian Calendar | 7819632 |
| 8340 | 40100.40200.60100.64600.601200 | 9th Floor | 1d | 2026-02-14 | 2026-02-14 | 5023 |  | Indian Calendar | 7819642 |
| 8341 | 40100.40200.60100.64600.601300 | 10th Floor | 1d | 2026-02-23 | 2026-02-23 | 5027 |  | Indian Calendar | 7819652 |
| 8342 | 40100.40200.60100.64600.601400 | 11th Floor | 1d | 2026-03-04 | 2026-03-04 | 5031 |  | Indian Calendar | 7819662 |
| 8343 | 40100.40200.60100.64600.601500 | 12th Floor | 1d | 2026-03-13 | 2026-03-13 | 5035 |  | Indian Calendar | 7819672 |
| 8344 | 40100.40200.60100.64600.601600 | 13th Floor | 1d | 2026-03-23 | 2026-03-23 | 5039 |  | Indian Calendar | 7819682 |
| 8345 | 40100.40200.60100.64600.601700 | 14th Floor | 1d | 2026-03-31 | 2026-03-31 | 5043 |  | Indian Calendar | 7819692 |
| 8346 | 40100.40200.60100.64600.601800 | 15th Floor | 1d | 2026-04-09 | 2026-04-09 | 5047 |  | Indian Calendar | 7819702 |
| 8347 | 40100.40200.60100.64600.601900 | 16th Floor | 1d | 2026-04-18 | 2026-04-18 | 5051 |  | Indian Calendar | 7819712 |
| 8348 | 40100.40200.60100.64600.602000 | 17th Floor | 1d | 2026-04-27 | 2026-04-27 | 5055 |  | Indian Calendar | 7819722 |
| 8349 | 40100.40200.60100.64600.602100 | 18th Floor | 1d | 2026-05-09 | 2026-05-09 | 5059 |  | Indian Calendar | 7819732 |
| 8350 | 40100.40200.60100.64600.602200 | 19th Floor | 1d | 2026-05-18 | 2026-05-18 | 5063 |  | Indian Calendar | 7819742 |
| 8351 | 40100.40200.60100.64600.602300 | 20th Floor | 1d | 2026-05-25 | 2026-05-25 | 5067 |  | Indian Calendar | 7819752 |
| 8352 | 40100.40200.60100.64600.602400 | 21st Floor | 1d | 2026-06-02 | 2026-06-02 | 5071 |  | Indian Calendar | 7819762 |
| 8353 | 40100.40200.60100.64600.602500 | 22nd Floor | 1d | 2026-06-10 | 2026-06-10 | 5075 |  | Indian Calendar | 7819772 |
| 8354 | 40100.40200.60100.64600.602600 | 23rd Floor | 1d | 2026-07-13 | 2026-07-14 | 5083 |  | Indian Calendar | 7819782 |
| 8355 | 40100.40200.60100.64600.602700 | 24th Floor | 1d | 2026-07-31 | 2026-08-01 | 8354FS+15d |  | Indian Calendar | 7819792 |
| 8356 | 40100.40200.60100.64600.3347600 | 25th Floor | 1d | 2025-04-01 | 2025-04-01 |  | start no earlier than 2025-04-01 | Indian Calendar | 8875794 |

| ID | WBS | Task | Duration | Start | Finish | Predecessors | Constraint | Calendar | Unique_Task_ID |
| --- | --- | --- | --- | --- | --- | --- | --- | --- | --- |
| 8357 | 40100.40200.60100.64700 | **Tower 2** | 17d | 2025-04-01 | 2025-04-19 |  | start no earlier than 2025-04-01 | Indian Calendar | 8875804 |
| 8358 | 40100.40200.60100.64700.3347500 | Ground Floor | 1d | 2025-04-01 | 2025-04-01 |  | start no earlier than 2025-04-01 | Indian Calendar | 8875834 |
| 8359 | 40100.40200.60100.64700.3347400 | 1st Floor | 1d | 2025-04-01 | 2025-04-01 |  | start no earlier than 2025-04-01 | Indian Calendar | 8875844 |
| 8360 | 40100.40200.60100.64700.3347300 | 2nd Floor | 1d | 2025-04-01 | 2025-04-01 |  | start no earlier than 2025-04-01 | Indian Calendar | 8875854 |
| 8361 | 40100.40200.60100.64700.3347200 | 3rd Floor | 1d | 2025-04-01 | 2025-04-01 |  | start no earlier than 2025-04-01 | Indian Calendar | 8875864 |
| 8362 | 40100.40200.60100.64700.3347100 | 4th Floor | 1d | 2025-04-01 | 2025-04-01 |  | start no earlier than 2025-04-01 | Indian Calendar | 8875874 |
| 8363 | 40100.40200.60100.64700.3347000 | 5th Floor | 1d | 2025-04-01 | 2025-04-01 |  | start no earlier than 2025-04-01 | Indian Calendar | 8875884 |
| 8364 | 40100.40200.60100.64700.3346900 | 6th Floor | 1d | 2025-04-01 | 2025-04-01 |  | start no earlier than 2025-04-01 | Indian Calendar | 8875894 |
| 8365 | 40100.40200.60100.64700.3346800 | 7th Floor | 1d | 2025-04-01 | 2025-04-01 |  | start no earlier than 2025-04-01 | Indian Calendar | 8875904 |
| 8366 | 40100.40200.60100.64700.3346700 | 8th Floor | 1d | 2025-04-01 | 2025-04-01 |  | start no earlier than 2025-04-01 | Indian Calendar | 8875914 |
| 8367 | 40100.40200.60100.64700.3346600 | 9th Floor | 1d | 2025-04-01 | 2025-04-01 |  | start no earlier than 2025-04-01 | Indian Calendar | 8875924 |
| 8368 | 40100.40200.60100.64700.3346500 | 10th Floor | 1d | 2025-04-01 | 2025-04-01 |  | start no earlier than 2025-04-01 | Indian Calendar | 8875934 |
| 8369 | 40100.40200.60100.64700.3346400 | 11th Floor | 1d | 2025-04-01 | 2025-04-01 |  | start no earlier than 2025-04-01 | Indian Calendar | 8875944 |
| 8370 | 40100.40200.60100.64700.3346300 | 12th Floor | 1d | 2025-04-01 | 2025-04-01 |  | start no earlier than 2025-04-01 | Indian Calendar | 8875954 |
| 8371 | 40100.40200.60100.64700.3346200 | 13th Floor | 1d | 2025-04-01 | 2025-04-01 |  | start no earlier than 2025-04-01 | Indian Calendar | 8875964 |
| 8372 | 40100.40200.60100.64700.3346100 | 14th Floor | 1d | 2025-04-01 | 2025-04-01 |  | start no earlier than 2025-04-01 | Indian Calendar | 8875974 |
| 8373 | 40100.40200.60100.64700.3346000 | 15th Floor | 1d | 2025-04-01 | 2025-04-01 |  | start no earlier than 2025-04-01 | Indian Calendar | 8875984 |
| 8374 | 40100.40200.60100.64700.3345900 | 16th Floor | 1d | 2025-04-01 | 2025-04-01 |  | start no earlier than 2025-04-01 | Indian Calendar | 8875994 |
| 8375 | 40100.40200.60100.64700.3345800 | 17th Floor | 1d | 2025-04-01 | 2025-04-01 |  | start no earlier than 2025-04-01 | Indian Calendar | 8876004 |
| 8376 | 40100.40200.60100.64700.3345700 | 18th Floor | 1d | 2025-04-01 | 2025-04-01 |  | start no earlier than 2025-04-01 | Indian Calendar | 8876014 |
| 8377 | 40100.40200.60100.64700.3345600 | 19th Floor | 1d | 2025-04-01 | 2025-04-01 |  | start no earlier than 2025-04-01 | Indian Calendar | 8876024 |
| 8378 | 40100.40200.60100.64700.3345500 | 20th Floor | 1d | 2025-04-01 | 2025-04-01 |  | start no earlier than 2025-04-01 | Indian Calendar | 8876034 |
| 8379 | 40100.40200.60100.64700.3345400 | 21st Floor | 1d | 2025-04-01 | 2025-04-01 |  | start no earlier than 2025-04-01 | Indian Calendar | 8876044 |
| 8380 | 40100.40200.60100.64700.3345300 | 22nd Floor | 1d | 2025-04-01 | 2025-04-01 |  | start no earlier than 2025-04-01 | Indian Calendar | 8876054 |
| 8381 | 40100.40200.60100.64700.602800 | 23rd Floor | 1d | 2025-04-01 | 2025-04-01 |  | start no earlier than 2025-04-01 | Indian Calendar | 8875814 |
| 8382 | 40100.40200.60100.64700.602900 | 24th Floor | 1d | 2025-04-19 | 2025-04-19 | 8381FS+15d |  | Indian Calendar | 8875824 |
| 8383 | 40100.40200.60100.64700.3345200 | 25th Floor | 1d | 2025-04-01 | 2025-04-01 |  | start no earlier than 2025-04-01 | Indian Calendar | 8876064 |

| ID | WBS | Task | Duration | Start | Finish | Predecessors | Constraint | Calendar | Unique_Task_ID |
| --- | --- | --- | --- | --- | --- | --- | --- | --- | --- |
| 8384 | 40100.40200.60100.64800 | **Tower 1** | 359d | 2025-04-01 | 2026-05-23 |  | start no earlier than 2025-04-01 | Indian Calendar | 7803802 |
| 8385 | 40100.40200.60100.64800.603000 | Ground Floor | 1d | 2025-09-10 | 2025-09-10 | 6940 |  | Indian Calendar | 7819802 |
| 8386 | 40100.40200.60100.64800.603100 | 1st Floor | 1d | 2025-10-01 | 2025-10-01 | 6944 |  | Indian Calendar | 7819812 |
| 8387 | 40100.40200.60100.64800.603200 | 2nd Floor | 1d | 2025-10-17 | 2025-10-17 | 6948 |  | Indian Calendar | 7819822 |
| 8388 | 40100.40200.60100.64800.603300 | 3rd Floor | 1d | 2025-10-27 | 2025-10-27 | 6952 |  | Indian Calendar | 7819832 |
| 8389 | 40100.40200.60100.64800.603400 | 4th Floor | 1d | 2025-11-05 | 2025-11-05 | 6956 |  | Indian Calendar | 7819842 |
| 8390 | 40100.40200.60100.64800.603500 | 5th Floor | 1d | 2025-11-14 | 2025-11-14 | 6960 |  | Indian Calendar | 7819852 |
| 8391 | 40100.40200.60100.64800.603600 | 6th Floor | 1d | 2025-11-24 | 2025-11-24 | 6964 |  | Indian Calendar | 7819862 |
| 8392 | 40100.40200.60100.64800.603700 | 7th Floor | 1d | 2025-12-02 | 2025-12-02 | 6968 |  | Indian Calendar | 7819872 |
| 8393 | 40100.40200.60100.64800.603800 | 8th Floor | 1d | 2025-12-11 | 2025-12-11 | 6972 |  | Indian Calendar | 7819882 |
| 8394 | 40100.40200.60100.64800.603900 | 9th Floor | 1d | 2025-12-20 | 2025-12-20 | 6976 |  | Indian Calendar | 7819892 |
| 8395 | 40100.40200.60100.64800.604000 | 10th Floor | 1d | 2025-12-29 | 2025-12-29 | 6980 |  | Indian Calendar | 7819902 |
| 8396 | 40100.40200.60100.64800.604100 | 11th Floor | 1d | 2026-01-07 | 2026-01-07 | 6984 |  | Indian Calendar | 7819912 |
| 8397 | 40100.40200.60100.64800.604200 | 12th Floor | 1d | 2026-01-16 | 2026-01-16 | 6988 |  | Indian Calendar | 7819922 |
| 8398 | 40100.40200.60100.64800.604300 | 13th Floor | 1d | 2026-01-26 | 2026-01-26 | 6992 |  | Indian Calendar | 7819932 |
| 8399 | 40100.40200.60100.64800.604400 | 14th Floor | 1d | 2026-02-04 | 2026-02-04 | 6996 |  | Indian Calendar | 7819942 |
| 8400 | 40100.40200.60100.64800.604500 | 15th Floor | 1d | 2026-02-13 | 2026-02-13 | 7000 |  | Indian Calendar | 7819952 |
| 8401 | 40100.40200.60100.64800.604600 | 16th Floor | 1d | 2026-02-21 | 2026-02-21 | 7004 |  | Indian Calendar | 7819962 |
| 8402 | 40100.40200.60100.64800.604700 | 17th Floor | 1d | 2026-03-02 | 2026-03-02 | 7008 |  | Indian Calendar | 7819972 |
| 8403 | 40100.40200.60100.64800.604800 | 18th Floor | 1d | 2026-03-13 | 2026-03-13 | 7012 |  | Indian Calendar | 7819982 |
| 8404 | 40100.40200.60100.64800.604900 | 19th Floor | 1d | 2026-03-21 | 2026-03-21 | 7016 |  | Indian Calendar | 7819992 |
| 8405 | 40100.40200.60100.64800.605000 | 20th Floor | 1d | 2026-03-30 | 2026-03-30 | 7020 |  | Indian Calendar | 7820002 |
| 8406 | 40100.40200.60100.64800.605100 | 21st Floor | 1d | 2026-04-06 | 2026-04-06 | 7024 |  | Indian Calendar | 7820012 |
| 8407 | 40100.40200.60100.64800.605200 | 22nd Floor | 1d | 2026-04-14 | 2026-04-14 | 7028 |  | Indian Calendar | 7820022 |
| 8408 | 40100.40200.60100.64800.605300 | 23rd Floor | 1d | 2026-05-05 | 2026-05-05 | 7036 |  | Indian Calendar | 7820032 |
| 8409 | 40100.40200.60100.64800.605400 | 24th Floor | 1d | 2026-05-23 | 2026-05-23 | 8408FS+15d |  | Indian Calendar | 7820042 |
| 8410 | 40100.40200.60100.64800.3345100 | 25th Floor | 1d | 2025-04-01 | 2025-04-01 |  | start no earlier than 2025-04-01 | Indian Calendar | 8876074 |

| ID | WBS | Task | Duration | Start | Finish | Constraint | Calendar | Unique_Task_ID |
| --- | --- | --- | --- | --- | --- | --- | --- | --- |
| 8411 | 40100.40200.63400 | **Customer Milestone Summary** | 5d | 2025-04-01 | 2025-04-05 | start no earlier than 2025-04-01 | Indian Calendar | 8876075 |
| 8412 | 40100.40200.63400.355900 | **Tower 7** | 1d | 2025-04-01 | 2025-04-01 | start no earlier than 2025-04-01 | Indian Calendar | 8876084 |
| 8413 | 40100.40200.63400.355900.3345000 | On Completion of Foundation | 1d | 2025-04-01 | 2025-04-01 | start no earlier than 2025-04-01 | Indian Calendar | 8876085 |
| 8414 | 40100.40200.63400.355900.3344900 | On Completion of 2nd Floor Slab | 1d | 2025-04-01 | 2025-04-01 | start no earlier than 2025-04-01 | Indian Calendar | 8876086 |
| 8415 | 40100.40200.63400.355900.3344800 | On Completion of 7th Floor Slab | 1d | 2025-04-01 | 2025-04-01 | start no earlier than 2025-04-01 | Indian Calendar | 8876087 |
| 8416 | 40100.40200.63400.355900.3344700 | On Completion of 17th Floor Slab | 1d | 2025-04-01 | 2025-04-01 | start no earlier than 2025-04-01 | Indian Calendar | 8876088 |
| 8417 | 40100.40200.63400.355900.3344600 | On Completion of Flooring of the unit - 17th Floor | 1d | 2025-04-01 | 2025-04-01 | start no earlier than 2025-04-01 | Indian Calendar | 8876089 |
| 8418 | 40100.40200.63400.345600 | **Tower 6** | 1d | 2025-04-01 | 2025-04-01 | start no earlier than 2025-04-01 | Indian Calendar | 8876094 |
| 8419 | 40100.40200.63400.345600.3344500 | Mass Excavation Completion | 1d | 2025-04-01 | 2025-04-01 | start no earlier than 2025-04-01 | Indian Calendar | 9636626 |
| 8420 | 40100.40200.63400.345600.3344400 | Commencement of 2nd Floor | 1d | 2025-04-01 | 2025-04-01 | start no earlier than 2025-04-01 | Indian Calendar | 9636636 |
| 8421 | 40100.40200.63400.345600.3344300 | Commencement of 8th Floor | 1d | 2025-04-01 | 2025-04-01 | start no earlier than 2025-04-01 | Indian Calendar | 9636646 |
| 8422 | 40100.40200.63400.345600.3344200 | Commencement of 16th Floor | 1d | 2025-04-01 | 2025-04-01 | start no earlier than 2025-04-01 | Indian Calendar | 9636656 |
| 8423 | 40100.40200.63400.345600.3344100 | Commencement of 25th Floor | 1d | 2025-04-01 | 2025-04-01 | start no earlier than 2025-04-01 | Indian Calendar | 9636666 |
| 8424 | 40100.40200.63400.345600.3344000 | Commencement of External Painting | 1d | 2025-04-01 | 2025-04-01 | start no earlier than 2025-04-01 | Indian Calendar | 9636676 |
| 8425 | 40100.40200.63400.345700 | **Tower 5** | 1d | 2025-04-01 | 2025-04-01 | start no earlier than 2025-04-01 | Indian Calendar | 8876104 |
| 8426 | 40100.40200.63400.345700.3343900 | Mass Excavation Completion | 1d | 2025-04-01 | 2025-04-01 | start no earlier than 2025-04-01 | Indian Calendar | 9636686 |
| 8427 | 40100.40200.63400.345700.3343800 | Commencement of 2nd Floor | 1d | 2025-04-01 | 2025-04-01 | start no earlier than 2025-04-01 | Indian Calendar | 9636696 |
| 8428 | 40100.40200.63400.345700.3343700 | Commencement of 8th Floor | 1d | 2025-04-01 | 2025-04-01 | start no earlier than 2025-04-01 | Indian Calendar | 9636706 |
| 8429 | 40100.40200.63400.345700.3343600 | Commencement of 16th Floor | 1d | 2025-04-01 | 2025-04-01 | start no earlier than 2025-04-01 | Indian Calendar | 9636716 |
| 8430 | 40100.40200.63400.345700.3343500 | Commencement of 25th Floor | 1d | 2025-04-01 | 2025-04-01 | start no earlier than 2025-04-01 | Indian Calendar | 9636726 |
| 8431 | 40100.40200.63400.345700.3343400 | Commencement of External Painting | 1d | 2025-04-01 | 2025-04-01 | start no earlier than 2025-04-01 | Indian Calendar | 9636736 |
| 8432 | 40100.40200.63400.64900 | **Tower 4** | 1d | 2025-04-01 | 2025-04-01 | start no earlier than 2025-04-01 | Indian Calendar | 8876114 |
| 8433 | 40100.40200.63400.64900.3343300 | Mass Excavation Completion | 1d | 2025-04-01 | 2025-04-01 | start no earlier than 2025-04-01 | Indian Calendar | 9636746 |
| 8434 | 40100.40200.63400.64900.3343200 | Commencement of 2nd Floor | 1d | 2025-04-01 | 2025-04-01 | start no earlier than 2025-04-01 | Indian Calendar | 9636756 |
| 8435 | 40100.40200.63400.64900.3343100 | Commencement of 8th Floor | 1d | 2025-04-01 | 2025-04-01 | start no earlier than 2025-04-01 | Indian Calendar | 9636766 |
| 8436 | 40100.40200.63400.64900.3343000 | Commencement of 16th Floor | 1d | 2025-04-01 | 2025-04-01 | start no earlier than 2025-04-01 | Indian Calendar | 9636776 |
| 8437 | 40100.40200.63400.64900.3342900 | Commencement of 25th Floor | 1d | 2025-04-01 | 2025-04-01 | start no earlier than 2025-04-01 | Indian Calendar | 9636786 |
| 8438 | 40100.40200.63400.64900.3342800 | Commencement of External Painting | 1d | 2025-04-01 | 2025-04-01 | start no earlier than 2025-04-01 | Indian Calendar | 9636796 |
| 8439 | 40100.40200.63400.64900.3342700 | On Completion of Foundation | 1d | 2025-04-01 | 2025-04-01 | start no earlier than 2025-04-01 | Indian Calendar | 8876115 |
| 8440 | 40100.40200.63400.64900.3342600 | On Completion of Basement Slab | 1d | 2025-04-01 | 2025-04-01 | start no earlier than 2025-04-01 | Indian Calendar | 8876116 |
| 8441 | 40100.40200.63400.64900.3342500 | On Completion of Ground Floor Slab | 1d | 2025-04-01 | 2025-04-01 | start no earlier than 2025-04-01 | Indian Calendar | 8876117 |
| 8442 | 40100.40200.63400.64900.3342400 | On Completion of 2nd Floor slab | 1d | 2025-04-01 | 2025-04-01 | start no earlier than 2025-04-01 | Indian Calendar | 8876118 |
| 8443 | 40100.40200.63400.64900.3342300 | On Completion of 4th Floor Slab | 1d | 2025-04-01 | 2025-04-01 | start no earlier than 2025-04-01 | Indian Calendar | 8876119 |
| 8444 | 40100.40200.63400.64900.3342200 | On Completion of 5th floor slab | 1d | 2025-04-01 | 2025-04-01 | start no earlier than 2025-04-01 | Indian Calendar | 8876120 |
| 8445 | 40100.40200.63400.64900.3342100 | On Completion of 6th Floor Slab | 1d | 2025-04-01 | 2025-04-01 | start no earlier than 2025-04-01 | Indian Calendar | 8876121 |
| 8446 | 40100.40200.63400.64900.3342000 | On Completion of 8th Floor slab | 1d | 2025-04-01 | 2025-04-01 | start no earlier than 2025-04-01 | Indian Calendar | 8876122 |
| 8447 | 40100.40200.63400.64900.3341900 | On Completion of 10th floor slab | 1d | 2025-04-01 | 2025-04-01 | start no earlier than 2025-04-01 | Indian Calendar | 8876123 |
| 8448 | 40100.40200.63400.64900.3341800 | On Completion of 12th Floor Slab | 1d | 2025-04-01 | 2025-04-01 | start no earlier than 2025-04-01 | Indian Calendar | 8876133 |
| 8449 | 40100.40200.63400.64900.3341700 | On Completion of 14th Floor Slab | 1d | 2025-04-01 | 2025-04-01 | start no earlier than 2025-04-01 | Indian Calendar | 8876143 |
| 8450 | 40100.40200.63400.64900.3341600 | On Completion of 16th Floor Slab | 1d | 2025-04-01 | 2025-04-01 | start no earlier than 2025-04-01 | Indian Calendar | 8876153 |
| 8451 | 40100.40200.63400.64900.3341500 | On Completion of 18th Floor Slab | 1d | 2025-04-01 | 2025-04-01 | start no earlier than 2025-04-01 | Indian Calendar | 8876163 |
| 8452 | 40100.40200.63400.64900.3341400 | On Completion of 20th Floor Slab | 1d | 2025-04-01 | 2025-04-01 | start no earlier than 2025-04-01 | Indian Calendar | 8876173 |
| 8453 | 40100.40200.63400.64900.3341300 | On Completion of 22nd Floor Slab | 1d | 2025-04-01 | 2025-04-01 | start no earlier than 2025-04-01 | Indian Calendar | 8876183 |
| 8454 | 40100.40200.63400.64900.3341200 | On Completion of 24th Floor Slab | 1d | 2025-04-01 | 2025-04-01 | start no earlier than 2025-04-01 | Indian Calendar | 8876193 |
| 8455 | 40100.40200.63400.64900.3341100 | On Completion of Terrace Floor Slab | 1d | 2025-04-01 | 2025-04-01 | start no earlier than 2025-04-01 | Indian Calendar | 8876203 |
| 8456 | 40100.40200.63400.64900.3341000 | On Completion of Flooring of the unit - 20th Floor | 1d | 2025-04-01 | 2025-04-01 | start no earlier than 2025-04-01 | Indian Calendar | 8876213 |
| 8457 | 40100.40200.63400.64900.3340900 | On Completion of Internal painting of the unit - 20th Floor | 1d | 2025-04-01 | 2025-04-01 | start no earlier than 2025-04-01 | Indian Calendar | 8876223 |

| ID | WBS | Task | Duration | Start | Finish | Constraint | Calendar | Unique_Task_ID |
| --- | --- | --- | --- | --- | --- | --- | --- | --- |
| 8458 | 40100.40200.63400.346300 | **Tower 3** | 1d | 2025-04-01 | 2025-04-01 | start no earlier than 2025-04-01 | Indian Calendar | 8876124 |
| 8459 | 40100.40200.63400.346300.3340800 | Mass Excavation Completion | 1d | 2025-04-01 | 2025-04-01 | start no earlier than 2025-04-01 | Indian Calendar | 9636806 |
| 8460 | 40100.40200.63400.346300.3340700 | Commencement of 2nd Floor | 1d | 2025-04-01 | 2025-04-01 | start no earlier than 2025-04-01 | Indian Calendar | 9636816 |
| 8461 | 40100.40200.63400.346300.3340600 | Commencement of 8th Floor | 1d | 2025-04-01 | 2025-04-01 | start no earlier than 2025-04-01 | Indian Calendar | 9636826 |
| 8462 | 40100.40200.63400.346300.3340500 | Commencement of 16th Floor | 1d | 2025-04-01 | 2025-04-01 | start no earlier than 2025-04-01 | Indian Calendar | 9636836 |
| 8463 | 40100.40200.63400.346300.3340400 | Commencement of 25th Floor | 1d | 2025-04-01 | 2025-04-01 | start no earlier than 2025-04-01 | Indian Calendar | 9636846 |
| 8464 | 40100.40200.63400.346300.3340300 | Commencement of External Painting | 1d | 2025-04-01 | 2025-04-01 | start no earlier than 2025-04-01 | Indian Calendar | 9636856 |
| 8465 | 40100.40200.63400.356000 | **Tower 2A** | 1d | 2025-04-01 | 2025-04-01 | start no earlier than 2025-04-01 | Indian Calendar | 8876134 |
| 8466 | 40100.40200.63400.356000.3340200 | On Completion of Foundation | 1d | 2025-04-01 | 2025-04-01 | start no earlier than 2025-04-01 | Indian Calendar | 9636866 |
| 8467 | 40100.40200.63400.356000.3340100 | On Completion of 2nd Floor Slab | 1d | 2025-04-01 | 2025-04-01 | start no earlier than 2025-04-01 | Indian Calendar | 9636876 |
| 8468 | 40100.40200.63400.356000.3340000 | On Completion of 7th Floor Slab | 1d | 2025-04-01 | 2025-04-01 | start no earlier than 2025-04-01 | Indian Calendar | 9636886 |
| 8469 | 40100.40200.63400.356000.3339900 | On Completion of 17th Floor Slab | 1d | 2025-04-01 | 2025-04-01 | start no earlier than 2025-04-01 | Indian Calendar | 9636896 |
| 8470 | 40100.40200.63400.356000.3339800 | On Completion of Flooring of the unit - 17th Floor | 1d | 2025-04-01 | 2025-04-01 | start no earlier than 2025-04-01 | Indian Calendar | 9636906 |
| 8471 | 40100.40200.63400.356100 | **Tower 2** | 1d | 2025-04-01 | 2025-04-01 | start no earlier than 2025-04-01 | Indian Calendar | 8876144 |
| 8472 | 40100.40200.63400.356100.3339700 | Commencement of 2nd Floor | 1d | 2025-04-01 | 2025-04-01 | start no earlier than 2025-04-01 | Indian Calendar | 9636936 |
| 8473 | 40100.40200.63400.356100.3339600 | Commencement of 8th Floor | 1d | 2025-04-01 | 2025-04-01 | start no earlier than 2025-04-01 | Indian Calendar | 9636946 |
| 8474 | 40100.40200.63400.356100.3339500 | Commencement of 16th Floor | 1d | 2025-04-01 | 2025-04-01 | start no earlier than 2025-04-01 | Indian Calendar | 9636956 |
| 8475 | 40100.40200.63400.356100.3339400 | Commencement of 25th Floor | 1d | 2025-04-01 | 2025-04-01 | start no earlier than 2025-04-01 | Indian Calendar | 9636966 |
| 8476 | 40100.40200.63400.356100.3339300 | Commencement of External Painting | 1d | 2025-04-01 | 2025-04-01 | start no earlier than 2025-04-01 | Indian Calendar | 9636976 |
| 8477 | 40100.40200.63400.356200 | **Tower 1** | 1d | 2025-04-01 | 2025-04-01 | start no earlier than 2025-04-01 | Indian Calendar | 8876154 |
| 8478 | 40100.40200.63400.356200.3339200 | Commencement of 2nd Floor | 1d | 2025-04-01 | 2025-04-01 | start no earlier than 2025-04-01 | Indian Calendar | 8876174 |
| 8479 | 40100.40200.63400.356200.3339100 | Commencement of 8th Floor | 1d | 2025-04-01 | 2025-04-01 | start no earlier than 2025-04-01 | Indian Calendar | 8876184 |
| 8480 | 40100.40200.63400.356200.3339000 | Commencement of 16th Floor | 1d | 2025-04-01 | 2025-04-01 | start no earlier than 2025-04-01 | Indian Calendar | 8876194 |
| 8481 | 40100.40200.63400.356200.3338900 | Commencement of 25th Floor | 1d | 2025-04-01 | 2025-04-01 | start no earlier than 2025-04-01 | Indian Calendar | 8876204 |
| 8482 | 40100.40200.63400.356200.3338800 | Commencement of External Painting | 1d | 2025-04-01 | 2025-04-01 | start no earlier than 2025-04-01 | Indian Calendar | 8876214 |
| 8483 | 40100.40200.63400.3367700 | OCA | 1d | 2025-04-01 | 2025-04-01 | start no earlier than 2025-04-01 | Indian Calendar | 8876224 |
| 8484 | 40100.40200.63400.3367600 | OCR | 5d | 2025-04-01 | 2025-04-05 | start no earlier than 2025-04-01 | Indian Calendar | 8876234 |
| 8485 | 40100.40200.63400.3367500 | PIL | 5d | 2025-04-01 | 2025-04-05 | start no earlier than 2025-04-01 | Indian Calendar | 8876244 |
