Schedule from MS Project XML, 2025-04-01 to 2028-11-21.

## Calendars

- Standard: Mon-Fri 08:00-12:00, 13:00-17:00; Sat-Sun off. Exceptions (off unless hours are given): 2025-04-18 to 2025-04-21, 2025-05-05, 2025-05-26, 2025-08-25, 2025-12-22 to 2026-01-04, 2026-03-27 to 2026-03-30, 2026-05-04, 2026-05-23 to 2026-05-25, 2026-08-29 to 2026-08-31, 2026-12-21 to 2027-01-03, 2027-04-16 to 2027-04-19, 2027-05-01 to 2027-05-03, 2027-05-29 to 2027-05-31, 2027-08-30, 2027-12-25 to 2028-01-09, 2028-03-31 to 2028-04-03, 2028-04-29 to 2028-05-01, 2028-05-27 to 2028-05-29, 2028-08-26 to 2028-08-28.
- Indian Calendar: Mon-Sat 08:00-12:00, 13:00-17:00; Sun off.
- BAGALURU -P2: Mon-Sun 08:00-12:00, 13:00-17:00.
- Yashwantpur Finshing: Mon-Fri 08:00-12:00, 13:00-17:00; Sat-Sun off.
- Whitefield - STRUCTURE: Mon-Sun 08:00-12:00, 13:00-17:00.

## Resources

| Resource |
| --- |
| Yeshwanthpur |
| BAGALURU |
| Project Costs |
| GPL Revenue |
| Cost |
| Woodscapes |
| RGA - P1 |
| RGA |
| Woodscapes project |

## Schedule

| ID | WBS | Task | Type | Duration | Start | Finish | Predecessors | Constraint | Calendar | Unique_Task_ID |
| --- | --- | --- | --- | --- | --- | --- | --- | --- | --- | --- |
| 1 | 42100 | **Ramaiah phase 1a** |  | 1330.38ed | 2025-04-01 | 2028-11-21 |  | start no earlier than 2025-04-01 |  | 8853604 |
| 2 | 42100.42600 | **Ramaiah 3 towers** |  | 1141d | 2025-04-01 | 2028-11-21 |  | start no earlier than 2025-04-01 | Indian Calendar | 8853605 |
| 3 | 42100.42600.46700 | **TOWER 1** |  | 1314d | 2025-04-01 | 2028-11-04 |  | start no earlier than 2025-04-01 |  | 8950334 |
| 4 | 42100.42600.46700.374900 | **Earth work** |  | 483d | 2025-04-01 | 2026-07-27 |  | start no earlier than 2025-04-01 | BAGALURU -P2 | 8951094 |
| 5 | 42100.42600.46700.374900.2746100 | work start | milestone | 0d | 2025-04-01 | 2025-04-01 |  | start no earlier than 2025-04-01 | BAGALURU -P2 | 8951334 |
| 6 | 42100.42600.46700.374900.816100 | Mass Excavation |  | 87d | 2025-04-01 | 2025-06-26 | 5 |  | BAGALURU -P2 | 8951344 |
| 7 | 42100.42600.46700.374900.816200 | Backfilling |  | 80d | 2026-05-09 | 2026-07-27 | 1303 |  | BAGALURU -P2 | 8951354 |
| 8 | 42100.42600.46700.70200 | **Substructure works (Works up to plinth)** |  | 101d | 2025-06-27 | 2025-10-05 |  | start no earlier than 2025-06-27 | BAGALURU -P2 | 8950414 |
| 9 | 42100.42600.46700.70200.154900 | **Civil works (Shell & Core basement)** |  | 101d | 2025-06-27 | 2025-10-05 |  | start no earlier than 2025-06-27 | BAGALURU -P2 | 8950574 |
| 10 | 42100.42600.46700.70200.154900.341700 | **Raft works** |  | 26d | 2025-06-27 | 2025-07-22 |  | start no earlier than 2025-06-27 | BAGALURU -P2 | 8951024 |
| 11 | 42100.42600.46700.70200.154900.341700.391300 | **RCC Works - Tower area** |  | 26d | 2025-06-27 | 2025-07-22 |  | start no earlier than 2025-06-27 | BAGALURU -P2 | 8951074 |
| 12 | 42100.42600.46700.70200.154900.341700.391300.2545800 | Pocket Excavation |  | 16d | 2025-06-27 | 2025-07-12 | 6 |  | BAGALURU -P2 | 8955154 |
| 13 | 42100.42600.46700.70200.154900.341700.391300.2545900 | Footing PCC |  | 16d | 2025-06-27 | 2025-07-12 | 12SS |  | BAGALURU -P2 | 8955164 |
| 14 | 42100.42600.46700.70200.154900.341700.391300.2546000 | Footing / Raft works |  | 26d | 2025-06-27 | 2025-07-22 | 13SS |  | BAGALURU -P2 | 8955174 |
| 15 | 42100.42600.46700.70200.154900.166100 | **Basements** |  | 75d | 2025-07-23 | 2025-10-05 |  | start no earlier than 2025-07-23 | BAGALURU -P2 | 8951044 |
| 16 | 42100.42600.46700.70200.154900.166100.497000 | **Basement 1** |  | 25d | 2025-07-23 | 2025-08-16 |  | start no earlier than 2025-07-23 | BAGALURU -P2 | 8951144 |
| 17 | 42100.42600.46700.70200.154900.166100.497000.2546100 | columns |  | 16d | 2025-07-23 | 2025-08-07 | 14 |  | BAGALURU -P2 | 8955204 |
| 18 | 42100.42600.46700.70200.154900.166100.497000.2546200 | Beam & slab |  | 21d | 2025-07-27 | 2025-08-16 | 17SS+4d |  | BAGALURU -P2 | 8955214 |
| 19 | 42100.42600.46700.70200.154900.166100.368800 | **Ground floor slab** |  | 25d | 2025-08-17 | 2025-09-10 |  | start no earlier than 2025-08-17 | BAGALURU -P2 | 8951054 |
| 20 | 42100.42600.46700.70200.154900.166100.368800.477100 | **RCC Works - Tower area** |  | 25d | 2025-08-17 | 2025-09-10 |  | start no earlier than 2025-08-17 |  | 9558226 |
| 21 | 42100.42600.46700.70200.154900.166100.368800.477100.3327600 | columns |  | 16d | 2025-08-17 | 2025-09-01 | 18 |  |  | 9558236 |
| 22 | 42100.42600.46700.70200.154900.166100.368800.477100.3327700 | Beam & slab |  | 22d | 2025-08-20 | 2025-09-10 | 21SS+3d |  |  | 9558246 |
| 23 | 42100.42600.46700.70200.154900.166100.368900 | **1st floor slab** |  | 25d | 2025-09-11 | 2025-10-05 |  | start no earlier than 2025-09-11 | BAGALURU -P2 | 8951034 |
| 24 | 42100.42600.46700.70200.154900.166100.368900.477200 | **RCC Works - Tower area** |  | 25d | 2025-09-11 | 2025-10-05 |  | start no earlier than 2025-09-11 |  | 8951154 |
| 25 | 42100.42600.46700.70200.154900.166100.368900.477200.3327800 | columns |  | 16d | 2025-09-11 | 2025-09-26 | 22 |  |  | 8955224 |
| 26 | 42100.42600.46700.70200.154900.166100.368900.477200.3327900 | Beam & slab |  | 22d | 2025-09-14 | 2025-10-05 | 25SS+3d |  |  | 8955234 |

Notes:
- 4: 2 Months for Excavation

| ID | WBS | Task | Duration | Start | Finish | Predecessors | Constraint | Calendar | Unique_Task_ID |
| --- | --- | --- | --- | --- | --- | --- | --- | --- | --- |
| 27 | 42100.42600.46700.62300 | **Superstructure Works** | 922d | 2025-10-06 | 2028-04-14 |  | start no earlier than 2025-10-06 |  | 8950354 |
| 28 | 42100.42600.46700.62300.66400 | **RCC Slab works** | 172d | 2025-10-06 | 2026-03-26 |  | start no earlier than 2025-10-06 | Whitefield - STRUCTURE | 8950394 |
| 29 | 42100.42600.46700.62300.66400.66800 | **Slab RCC works** | 172d | 2025-10-06 | 2026-03-26 |  | start no earlier than 2025-10-06 | Whitefield - STRUCTURE | 8950404 |
| 30 | 42100.42600.46700.62300.66400.66800.516300 | **2nd floor slab (conventional floor)** | 25d | 2025-10-06 | 2025-10-30 |  | start no earlier than 2025-10-06 |  | 8951164 |
| 31 | 42100.42600.46700.62300.66400.66800.516300.2546300 | 2nd floor slab | 25d | 2025-10-06 | 2025-10-30 | 26 |  |  | 8955244 |
| 32 | 42100.42600.46700.62300.66400.66800.516200 | **3rd floor slab (1st setting)** | 21d | 2025-10-31 | 2025-11-20 |  | start no earlier than 2025-10-31 |  | 8951174 |
| 33 | 42100.42600.46700.62300.66400.66800.516200.2546400 | 3rd floor slab | 21d | 2025-10-31 | 2025-11-20 | 31 |  |  | 8955254 |
| 34 | 42100.42600.46700.62300.66400.66800.516100 | **4th floor slab** | 15d | 2025-11-21 | 2025-12-05 |  | start no earlier than 2025-11-21 |  | 8951184 |
| 35 | 42100.42600.46700.62300.66400.66800.516100.2546500 | 4th floor slab | 15d | 2025-11-21 | 2025-12-05 | 33 |  |  | 8955264 |
| 36 | 42100.42600.46700.62300.66400.66800.516000 | **5th floor slab** | 9d | 2025-12-06 | 2025-12-14 |  | start no earlier than 2025-12-06 |  | 8951194 |
| 37 | 42100.42600.46700.62300.66400.66800.516000.2546600 | 5th floor slab | 9d | 2025-12-06 | 2025-12-14 | 35 |  |  | 8955274 |
| 38 | 42100.42600.46700.62300.66400.66800.515900 | **6th floor slab** | 9d | 2025-12-15 | 2025-12-23 |  | start no earlier than 2025-12-15 |  | 8951204 |
| 39 | 42100.42600.46700.62300.66400.66800.515900.2546700 | 6th floor slab | 9d | 2025-12-15 | 2025-12-23 | 37 |  |  | 8955284 |
| 40 | 42100.42600.46700.62300.66400.66800.515800 | **7th floor slab** | 9d | 2025-12-24 | 2026-01-01 |  | start no earlier than 2025-12-24 |  | 8951214 |
| 41 | 42100.42600.46700.62300.66400.66800.515800.2546800 | 7th floor slab | 9d | 2025-12-24 | 2026-01-01 | 39 |  |  | 8955294 |
| 42 | 42100.42600.46700.62300.66400.66800.515700 | **8th floor slab** | 9d | 2026-01-02 | 2026-01-10 |  | start no earlier than 2026-01-02 |  | 8951224 |
| 43 | 42100.42600.46700.62300.66400.66800.515700.2546900 | 8th floor slab | 9d | 2026-01-02 | 2026-01-10 | 41 |  |  | 8955304 |
| 44 | 42100.42600.46700.62300.66400.66800.515600 | **9th floor slab** | 9d | 2026-01-11 | 2026-01-19 |  | start no earlier than 2026-01-11 |  | 8951234 |
| 45 | 42100.42600.46700.62300.66400.66800.515600.2547000 | 9th floor slab | 9d | 2026-01-11 | 2026-01-19 | 43 |  |  | 8955314 |
| 46 | 42100.42600.46700.62300.66400.66800.515500 | **10th floor slab** | 9d | 2026-01-20 | 2026-01-28 |  | start no earlier than 2026-01-20 |  | 8951244 |
| 47 | 42100.42600.46700.62300.66400.66800.515500.2547100 | 10th floor slab | 9d | 2026-01-20 | 2026-01-28 | 45 |  |  | 8955324 |
| 48 | 42100.42600.46700.62300.66400.66800.515400 | **11th floor slab** | 9d | 2026-01-29 | 2026-02-06 |  | start no earlier than 2026-01-29 |  | 8951254 |
| 49 | 42100.42600.46700.62300.66400.66800.515400.2547200 | 11th floor slab | 9d | 2026-01-29 | 2026-02-06 | 47 |  |  | 8955334 |
| 50 | 42100.42600.46700.62300.66400.66800.515300 | **12th floor slab** | 9d | 2026-02-07 | 2026-02-15 |  | start no earlier than 2026-02-07 |  | 8951264 |
| 51 | 42100.42600.46700.62300.66400.66800.515300.2547300 | 12th floor slab | 9d | 2026-02-07 | 2026-02-15 | 49 |  |  | 8955344 |

Notes:
- 30: AVg Slab Cycle of 21 days
- 32: AVg Slab Cycle of 21 days
- 34: AVg Slab Cycle of 21 days
- 36: AVg Slab Cycle of 21 days
- 38: AVg Slab Cycle of 21 days
- 40: AVg Slab Cycle of 21 days
- 42: AVg Slab Cycle of 21 days
- 44: AVg Slab Cycle of 21 days
- 46: AVg Slab Cycle of 21 days
- 48: AVg Slab Cycle of 21 days
- 50: AVg Slab Cycle of 21 days

| ID | WBS | Task | Duration | Start | Finish | Predecessors | Constraint | Calendar | Unique_Task_ID |
| --- | --- | --- | --- | --- | --- | --- | --- | --- | --- |
| 52 | 42100.42600.46700.62300.66400.66800.515200 | **13th floor slab** | 9d | 2026-02-16 | 2026-02-24 |  | start no earlier than 2026-02-16 |  | 8951274 |
| 53 | 42100.42600.46700.62300.66400.66800.515200.2547400 | 13th floor slab | 9d | 2026-02-16 | 2026-02-24 | 51 |  |  | 8955354 |
| 54 | 42100.42600.46700.62300.66400.66800.515100 | **14th floor slab** | 9d | 2026-02-25 | 2026-03-05 |  | start no earlier than 2026-02-25 |  | 8951284 |
| 55 | 42100.42600.46700.62300.66400.66800.515100.2547500 | 14th floor slab | 9d | 2026-02-25 | 2026-03-05 | 53 |  |  | 8955364 |
| 56 | 42100.42600.46700.62300.66400.66800.515000 | **15th floor slab** | 9d | 2026-03-06 | 2026-03-14 |  | start no earlier than 2026-03-06 |  | 9324164 |
| 57 | 42100.42600.46700.62300.66400.66800.515000.2547600 | 15th floor slab | 9d | 2026-03-06 | 2026-03-14 | 55 |  |  | 9324174 |
| 58 | 42100.42600.46700.62300.66400.66800.514900 | **terrace floor** | 12d | 2026-03-15 | 2026-03-26 |  | start no earlier than 2026-03-15 |  | 8951304 |
| 59 | 42100.42600.46700.62300.66400.66800.514900.2547700 | terrace slab | 12d | 2026-03-15 | 2026-03-26 | 57 |  |  | 8955384 |
| 60 | 42100.42600.46700.62300.65000 | **Civil Finishing works (Brick work, Plaster,conduiting, concled plumbing, waterproofing)** | 175d | 2025-12-06 | 2026-08-08 |  | start no earlier than 2025-12-06 | Yashwantpur Finshing | 9547926 |
| 61 | 42100.42600.46700.62300.65000.65900 | **Flat finishing works** | 162d | 2025-12-06 | 2026-05-16 |  | start no earlier than 2025-12-06 | BAGALURU -P2 | 9547936 |
| 62 | 42100.42600.46700.62300.65000.65900.333700 | **Floor 1** | 30d | 2025-12-06 | 2026-01-04 |  | start no earlier than 2025-12-06 | BAGALURU -P2 | 9638036 |
| 63 | 42100.42600.46700.62300.65000.65900.333700.2547800 | POST POUR CLEARENCE | 9d | 2025-12-06 | 2025-12-14 | 35 |  | BAGALURU -P2 | 9638046 |
| 64 | 42100.42600.46700.62300.65000.65900.333700.2547900 | BALCONY RAILING FIXING | 9d | 2025-12-15 | 2025-12-23 | 63 |  | BAGALURU -P2 | 9638056 |
| 65 | 42100.42600.46700.62300.65000.65900.333700.2548000 | FPS WORKS | 7d | 2025-12-11 | 2025-12-17 | 63FS-4d |  | BAGALURU -P2 | 9638066 |
| 66 | 42100.42600.46700.62300.65000.65900.333700.2548100 | GYPSUM PLASTR APPLICATION | 9d | 2025-12-15 | 2025-12-23 | 65FS-3d |  | BAGALURU -P2 | 9638076 |
| 67 | 42100.42600.46700.62300.65000.65900.333700.2548200 | CONCEALED PLUMBING | 9d | 2025-12-18 | 2025-12-26 | 65 |  | BAGALURU -P2 | 9638086 |
| 68 | 42100.42600.46700.62300.65000.65900.333700.2548300 | WATERPROOFING WORK FOR TOILETS, KITCHEN SUNK & PLANTERS | 9d | 2025-12-27 | 2026-01-04 | 67 |  | BAGALURU -P2 | 9638096 |
| 69 | 42100.42600.46700.62300.65000.65900.333500 | **Floor 2** | 30d | 2025-12-15 | 2026-01-13 |  | start no earlier than 2025-12-15 | BAGALURU -P2 | 9548256 |
| 70 | 42100.42600.46700.62300.65000.65900.333500.2548400 | POST POUR CLEARENCE | 9d | 2025-12-15 | 2025-12-23 | 63 |  | BAGALURU -P2 | 9552906 |
| 71 | 42100.42600.46700.62300.65000.65900.333500.2548500 | BALCONY RAILING FIXING | 9d | 2025-12-24 | 2026-01-01 | 70 |  | BAGALURU -P2 | 9552916 |
| 72 | 42100.42600.46700.62300.65000.65900.333500.2548600 | FPS WORKS | 7d | 2025-12-20 | 2025-12-26 | 70FS-4d |  | BAGALURU -P2 | 9552926 |
| 73 | 42100.42600.46700.62300.65000.65900.333500.2548700 | GYPSUM PLASTR APPLICATION | 9d | 2025-12-24 | 2026-01-01 | 72FS-3d |  | BAGALURU -P2 | 9552936 |
| 74 | 42100.42600.46700.62300.65000.65900.333500.2548800 | CONCEALED PLUMBING | 9d | 2025-12-27 | 2026-01-04 | 72 |  | BAGALURU -P2 | 9552946 |
| 75 | 42100.42600.46700.62300.65000.65900.333500.2548900 | WATERPROOFING WORK FOR TOILETS, KITCHEN SUNK & PLANTERS | 9d | 2026-01-05 | 2026-01-13 | 74 |  | BAGALURU -P2 | 9552956 |

Notes:
- 52: AVg Slab Cycle of 21 days
- 54: AVg Slab Cycle of 21 days
- 56: AVg Slab Cycle of 21 days
- 58: AVg Slab Cycle of 21 days

| ID | WBS | Task | Duration | Start | Finish | Predecessors | Constraint | Calendar | Unique_Task_ID |
| --- | --- | --- | --- | --- | --- | --- | --- | --- | --- |
| 76 | 42100.42600.46700.62300.65000.65900.333400 | **Floor 3** | 30d | 2025-12-24 | 2026-01-22 |  | start no earlier than 2025-12-24 | BAGALURU -P2 | 9638946 |
| 77 | 42100.42600.46700.62300.65000.65900.333400.2549000 | POST POUR CLEARENCE | 9d | 2025-12-24 | 2026-01-01 | 70 |  | BAGALURU -P2 | 9638956 |
| 78 | 42100.42600.46700.62300.65000.65900.333400.2549100 | BALCONY RAILING FIXING | 9d | 2026-01-02 | 2026-01-10 | 77 |  | BAGALURU -P2 | 9638966 |
| 79 | 42100.42600.46700.62300.65000.65900.333400.2549200 | FPS WORKS | 7d | 2025-12-29 | 2026-01-04 | 77FS-4d |  | BAGALURU -P2 | 9638976 |
| 80 | 42100.42600.46700.62300.65000.65900.333400.2549300 | GYPSUM PLASTR APPLICATION | 9d | 2026-01-02 | 2026-01-10 | 79FS-3d |  | BAGALURU -P2 | 9638986 |
| 81 | 42100.42600.46700.62300.65000.65900.333400.2549400 | CONCEALED PLUMBING | 9d | 2026-01-05 | 2026-01-13 | 79 |  | BAGALURU -P2 | 9638996 |
| 82 | 42100.42600.46700.62300.65000.65900.333400.2549500 | WATERPROOFING WORK FOR TOILETS, KITCHEN SUNK & PLANTERS | 9d | 2026-01-14 | 2026-01-22 | 81 |  | BAGALURU -P2 | 9639006 |
| 83 | 42100.42600.46700.62300.65000.65900.327000 | **Floor 4** | 30d | 2026-01-02 | 2026-01-31 |  | start no earlier than 2026-01-02 | BAGALURU -P2 | 9638876 |
| 84 | 42100.42600.46700.62300.65000.65900.327000.2549600 | POST POUR CLEARENCE | 9d | 2026-01-02 | 2026-01-10 | 77 |  | BAGALURU -P2 | 9638886 |
| 85 | 42100.42600.46700.62300.65000.65900.327000.2549700 | BALCONY RAILING FIXING | 9d | 2026-01-11 | 2026-01-19 | 84 |  | BAGALURU -P2 | 9638896 |
| 86 | 42100.42600.46700.62300.65000.65900.327000.2549800 | FPS WORKS | 7d | 2026-01-07 | 2026-01-13 | 84FS-4d |  | BAGALURU -P2 | 9638906 |
| 87 | 42100.42600.46700.62300.65000.65900.327000.2549900 | GYPSUM PLASTR APPLICATION | 9d | 2026-01-11 | 2026-01-19 | 86FS-3d |  | BAGALURU -P2 | 9638916 |
| 88 | 42100.42600.46700.62300.65000.65900.327000.2550000 | CONCEALED PLUMBING | 9d | 2026-01-14 | 2026-01-22 | 86 |  | BAGALURU -P2 | 9638926 |
| 89 | 42100.42600.46700.62300.65000.65900.327000.2550100 | WATERPROOFING WORK FOR TOILETS, KITCHEN SUNK & PLANTERS | 9d | 2026-01-23 | 2026-01-31 | 88 |  | BAGALURU -P2 | 9638936 |
| 90 | 42100.42600.46700.62300.65000.65900.322800 | **Floor 5** | 30d | 2026-01-11 | 2026-02-09 |  | start no earlier than 2026-01-11 | BAGALURU -P2 | 9638806 |
| 91 | 42100.42600.46700.62300.65000.65900.322800.2550200 | POST POUR CLEARENCE | 9d | 2026-01-11 | 2026-01-19 | 84 |  | BAGALURU -P2 | 9638816 |
| 92 | 42100.42600.46700.62300.65000.65900.322800.2550300 | BALCONY RAILING FIXING | 9d | 2026-01-20 | 2026-01-28 | 91 |  | BAGALURU -P2 | 9638826 |
| 93 | 42100.42600.46700.62300.65000.65900.322800.2550400 | FPS WORKS | 7d | 2026-01-16 | 2026-01-22 | 91FS-4d |  | BAGALURU -P2 | 9638836 |
| 94 | 42100.42600.46700.62300.65000.65900.322800.2550500 | GYPSUM PLASTR APPLICATION | 9d | 2026-01-20 | 2026-01-28 | 93FS-3d |  | BAGALURU -P2 | 9638846 |
| 95 | 42100.42600.46700.62300.65000.65900.322800.2550600 | CONCEALED PLUMBING | 9d | 2026-01-23 | 2026-01-31 | 93 |  | BAGALURU -P2 | 9638856 |
| 96 | 42100.42600.46700.62300.65000.65900.322800.2550700 | WATERPROOFING WORK FOR TOILETS, KITCHEN SUNK & PLANTERS | 9d | 2026-02-01 | 2026-02-09 | 95 |  | BAGALURU -P2 | 9638866 |
| 97 | 42100.42600.46700.62300.65000.65900.320200 | **Floor 6** | 30d | 2026-01-20 | 2026-02-18 |  | start no earlier than 2026-01-20 | BAGALURU -P2 | 9638736 |
| 98 | 42100.42600.46700.62300.65000.65900.320200.2550800 | POST POUR CLEARENCE | 9d | 2026-01-20 | 2026-01-28 | 91 |  | BAGALURU -P2 | 9638746 |
| 99 | 42100.42600.46700.62300.65000.65900.320200.2550900 | BALCONY RAILING FIXING | 9d | 2026-01-29 | 2026-02-06 | 98 |  | BAGALURU -P2 | 9638756 |
| 100 | 42100.42600.46700.62300.65000.65900.320200.2551000 | FPS WORKS | 7d | 2026-01-25 | 2026-01-31 | 98FS-4d |  | BAGALURU -P2 | 9638766 |
| 101 | 42100.42600.46700.62300.65000.65900.320200.2551100 | GYPSUM PLASTR APPLICATION | 9d | 2026-01-29 | 2026-02-06 | 100FS-3d |  | BAGALURU -P2 | 9638776 |
| 102 | 42100.42600.46700.62300.65000.65900.320200.2551200 | CONCEALED PLUMBING | 9d | 2026-02-01 | 2026-02-09 | 100 |  | BAGALURU -P2 | 9638786 |
| 103 | 42100.42600.46700.62300.65000.65900.320200.2551300 | WATERPROOFING WORK FOR TOILETS, KITCHEN SUNK & PLANTERS | 9d | 2026-02-10 | 2026-02-18 | 102 |  | BAGALURU -P2 | 9638796 |

| ID | WBS | Task | Duration | Start | Finish | Predecessors | Constraint | Calendar | Unique_Task_ID |
| --- | --- | --- | --- | --- | --- | --- | --- | --- | --- |
| 104 | 42100.42600.46700.62300.65000.65900.316300 | **Floor 7** | 30d | 2026-01-29 | 2026-02-27 |  | start no earlier than 2026-01-29 | BAGALURU -P2 | 9638666 |
| 105 | 42100.42600.46700.62300.65000.65900.316300.2551400 | POST POUR CLEARENCE | 9d | 2026-01-29 | 2026-02-06 | 98 |  | BAGALURU -P2 | 9638676 |
| 106 | 42100.42600.46700.62300.65000.65900.316300.2551500 | BALCONY RAILING FIXING | 9d | 2026-02-07 | 2026-02-15 | 105 |  | BAGALURU -P2 | 9638686 |
| 107 | 42100.42600.46700.62300.65000.65900.316300.2551600 | FPS WORKS | 7d | 2026-02-03 | 2026-02-09 | 105FS-4d |  | BAGALURU -P2 | 9638696 |
| 108 | 42100.42600.46700.62300.65000.65900.316300.2551700 | GYPSUM PLASTR APPLICATION | 9d | 2026-02-07 | 2026-02-15 | 107FS-3d |  | BAGALURU -P2 | 9638706 |
| 109 | 42100.42600.46700.62300.65000.65900.316300.2551800 | CONCEALED PLUMBING | 9d | 2026-02-10 | 2026-02-18 | 107 |  | BAGALURU -P2 | 9638716 |
| 110 | 42100.42600.46700.62300.65000.65900.316300.2551900 | WATERPROOFING WORK FOR TOILETS, KITCHEN SUNK & PLANTERS | 9d | 2026-02-19 | 2026-02-27 | 109 |  | BAGALURU -P2 | 9638726 |
| 111 | 42100.42600.46700.62300.65000.65900.316200 | **Floor 8** | 30d | 2026-02-07 | 2026-03-08 |  | start no earlier than 2026-02-07 | BAGALURU -P2 | 9638596 |
| 112 | 42100.42600.46700.62300.65000.65900.316200.2552000 | POST POUR CLEARENCE | 9d | 2026-02-07 | 2026-02-15 | 105 |  | BAGALURU -P2 | 9638606 |
| 113 | 42100.42600.46700.62300.65000.65900.316200.2552100 | BALCONY RAILING FIXING | 9d | 2026-02-16 | 2026-02-24 | 112 |  | BAGALURU -P2 | 9638616 |
| 114 | 42100.42600.46700.62300.65000.65900.316200.2552200 | FPS WORKS | 7d | 2026-02-12 | 2026-02-18 | 112FS-4d |  | BAGALURU -P2 | 9638626 |
| 115 | 42100.42600.46700.62300.65000.65900.316200.2552300 | GYPSUM PLASTR APPLICATION | 9d | 2026-02-16 | 2026-02-24 | 114FS-3d |  | BAGALURU -P2 | 9638636 |
| 116 | 42100.42600.46700.62300.65000.65900.316200.2552400 | CONCEALED PLUMBING | 9d | 2026-02-19 | 2026-02-27 | 114 |  | BAGALURU -P2 | 9638646 |
| 117 | 42100.42600.46700.62300.65000.65900.316200.2552500 | WATERPROOFING WORK FOR TOILETS, KITCHEN SUNK & PLANTERS | 9d | 2026-02-28 | 2026-03-08 | 116 |  | BAGALURU -P2 | 9638656 |
| 118 | 42100.42600.46700.62300.65000.65900.311600 | **Floor 9** | 30d | 2026-02-16 | 2026-03-17 |  | start no earlier than 2026-02-16 | BAGALURU -P2 | 9638526 |
| 119 | 42100.42600.46700.62300.65000.65900.311600.2552600 | POST POUR CLEARENCE | 9d | 2026-02-16 | 2026-02-24 | 112 |  | BAGALURU -P2 | 9638536 |
| 120 | 42100.42600.46700.62300.65000.65900.311600.2552700 | BALCONY RAILING FIXING | 9d | 2026-02-25 | 2026-03-05 | 119 |  | BAGALURU -P2 | 9638546 |
| 121 | 42100.42600.46700.62300.65000.65900.311600.2552800 | FPS WORKS | 7d | 2026-02-21 | 2026-02-27 | 119FS-4d |  | BAGALURU -P2 | 9638556 |
| 122 | 42100.42600.46700.62300.65000.65900.311600.2552900 | GYPSUM PLASTR APPLICATION | 9d | 2026-02-25 | 2026-03-05 | 121FS-3d |  | BAGALURU -P2 | 9638566 |
| 123 | 42100.42600.46700.62300.65000.65900.311600.2553000 | CONCEALED PLUMBING | 9d | 2026-02-28 | 2026-03-08 | 121 |  | BAGALURU -P2 | 9638576 |
| 124 | 42100.42600.46700.62300.65000.65900.311600.2553100 | WATERPROOFING WORK FOR TOILETS, KITCHEN SUNK & PLANTERS | 9d | 2026-03-09 | 2026-03-17 | 123 |  | BAGALURU -P2 | 9638586 |
| 125 | 42100.42600.46700.62300.65000.65900.310100 | **Floor 10** | 30d | 2026-02-25 | 2026-03-26 |  | start no earlier than 2026-02-25 | BAGALURU -P2 | 9638456 |
| 126 | 42100.42600.46700.62300.65000.65900.310100.2553200 | POST POUR CLEARENCE | 9d | 2026-02-25 | 2026-03-05 | 119 |  | BAGALURU -P2 | 9638466 |
| 127 | 42100.42600.46700.62300.65000.65900.310100.2553300 | BALCONY RAILING FIXING | 9d | 2026-03-06 | 2026-03-14 | 126 |  | BAGALURU -P2 | 9638476 |
| 128 | 42100.42600.46700.62300.65000.65900.310100.2553400 | FPS WORKS | 7d | 2026-03-02 | 2026-03-08 | 126FS-4d |  | BAGALURU -P2 | 9638486 |
| 129 | 42100.42600.46700.62300.65000.65900.310100.2553500 | GYPSUM PLASTR APPLICATION | 9d | 2026-03-06 | 2026-03-14 | 128FS-3d |  | BAGALURU -P2 | 9638496 |
| 130 | 42100.42600.46700.62300.65000.65900.310100.2553600 | CONCEALED PLUMBING | 9d | 2026-03-09 | 2026-03-17 | 128 |  | BAGALURU -P2 | 9638506 |
| 131 | 42100.42600.46700.62300.65000.65900.310100.2553700 | WATERPROOFING WORK FOR TOILETS, KITCHEN SUNK & PLANTERS | 9d | 2026-03-18 | 2026-03-26 | 130 |  | BAGALURU -P2 | 9638516 |

| ID | WBS | Task | Duration | Start | Finish | Predecessors | Constraint | Calendar | Unique_Task_ID |
| --- | --- | --- | --- | --- | --- | --- | --- | --- | --- |
| 132 | 42100.42600.46700.62300.65000.65900.308300 | **Floor 11** | 30d | 2026-03-06 | 2026-04-04 |  | start no earlier than 2026-03-06 | BAGALURU -P2 | 9638386 |
| 133 | 42100.42600.46700.62300.65000.65900.308300.2553800 | POST POUR CLEARENCE | 9d | 2026-03-06 | 2026-03-14 | 126 |  | BAGALURU -P2 | 9638396 |
| 134 | 42100.42600.46700.62300.65000.65900.308300.2553900 | BALCONY RAILING FIXING | 9d | 2026-03-15 | 2026-03-23 | 133 |  | BAGALURU -P2 | 9638406 |
| 135 | 42100.42600.46700.62300.65000.65900.308300.2554000 | FPS WORKS | 7d | 2026-03-11 | 2026-03-17 | 133FS-4d |  | BAGALURU -P2 | 9638416 |
| 136 | 42100.42600.46700.62300.65000.65900.308300.2554100 | GYPSUM PLASTR APPLICATION | 9d | 2026-03-15 | 2026-03-23 | 135FS-3d |  | BAGALURU -P2 | 9638426 |
| 137 | 42100.42600.46700.62300.65000.65900.308300.2554200 | CONCEALED PLUMBING | 9d | 2026-03-18 | 2026-03-26 | 135 |  | BAGALURU -P2 | 9638436 |
| 138 | 42100.42600.46700.62300.65000.65900.308300.2554300 | WATERPROOFING WORK FOR TOILETS, KITCHEN SUNK & PLANTERS | 9d | 2026-03-27 | 2026-04-04 | 137 |  | BAGALURU -P2 | 9638446 |
| 139 | 42100.42600.46700.62300.65000.65900.307600 | **Floor 12** | 30d | 2026-03-15 | 2026-04-13 |  | start no earlier than 2026-03-15 | BAGALURU -P2 | 9638316 |
| 140 | 42100.42600.46700.62300.65000.65900.307600.2554400 | POST POUR CLEARENCE | 9d | 2026-03-15 | 2026-03-23 | 133 |  | BAGALURU -P2 | 9638326 |
| 141 | 42100.42600.46700.62300.65000.65900.307600.2554500 | BALCONY RAILING FIXING | 9d | 2026-03-24 | 2026-04-01 | 140 |  | BAGALURU -P2 | 9638336 |
| 142 | 42100.42600.46700.62300.65000.65900.307600.2554600 | FPS WORKS | 7d | 2026-03-20 | 2026-03-26 | 140FS-4d |  | BAGALURU -P2 | 9638346 |
| 143 | 42100.42600.46700.62300.65000.65900.307600.2554700 | GYPSUM PLASTR APPLICATION | 9d | 2026-03-24 | 2026-04-01 | 142FS-3d |  | BAGALURU -P2 | 9638356 |
| 144 | 42100.42600.46700.62300.65000.65900.307600.2554800 | CONCEALED PLUMBING | 9d | 2026-03-27 | 2026-04-04 | 142 |  | BAGALURU -P2 | 9638366 |
| 145 | 42100.42600.46700.62300.65000.65900.307600.2554900 | WATERPROOFING WORK FOR TOILETS, KITCHEN SUNK & PLANTERS | 9d | 2026-04-05 | 2026-04-13 | 144 |  | BAGALURU -P2 | 9638376 |
| 146 | 42100.42600.46700.62300.65000.65900.300100 | **Floor 13** | 36d | 2026-03-24 | 2026-04-28 |  | start no earlier than 2026-03-24 | BAGALURU -P2 | 9638246 |
| 147 | 42100.42600.46700.62300.65000.65900.300100.2555000 | POST POUR CLEARENCE | 9d | 2026-03-24 | 2026-04-01 | 140 |  | BAGALURU -P2 | 9638256 |
| 148 | 42100.42600.46700.62300.65000.65900.300100.2555100 | BALCONY RAILING FIXING | 9d | 2026-04-02 | 2026-04-10 | 147 |  | BAGALURU -P2 | 9638266 |
| 149 | 42100.42600.46700.62300.65000.65900.300100.2555200 | FPS WORKS | 7d | 2026-04-04 | 2026-04-10 | 147FS+2d |  | BAGALURU -P2 | 9638276 |
| 150 | 42100.42600.46700.62300.65000.65900.300100.2555300 | GYPSUM PLASTR APPLICATION | 9d | 2026-04-11 | 2026-04-19 | 149 |  | BAGALURU -P2 | 9638286 |
| 151 | 42100.42600.46700.62300.65000.65900.300100.2555400 | CONCEALED PLUMBING | 9d | 2026-04-11 | 2026-04-19 | 149 |  | BAGALURU -P2 | 9638296 |
| 152 | 42100.42600.46700.62300.65000.65900.300100.2555500 | WATERPROOFING WORK FOR TOILETS, KITCHEN SUNK & PLANTERS | 9d | 2026-04-20 | 2026-04-28 | 151 |  | BAGALURU -P2 | 9638306 |
| 153 | 42100.42600.46700.62300.65000.65900.291200 | **Floor 14** | 36d | 2026-04-02 | 2026-05-07 |  | start no earlier than 2026-04-02 | BAGALURU -P2 | 9638176 |
| 154 | 42100.42600.46700.62300.65000.65900.291200.2555600 | POST POUR CLEARENCE | 9d | 2026-04-02 | 2026-04-10 | 147 |  | BAGALURU -P2 | 9638186 |
| 155 | 42100.42600.46700.62300.65000.65900.291200.2555700 | BALCONY RAILING FIXING | 9d | 2026-04-11 | 2026-04-19 | 154 |  | BAGALURU -P2 | 9638196 |
| 156 | 42100.42600.46700.62300.65000.65900.291200.2555800 | FPS WORKS | 7d | 2026-04-13 | 2026-04-19 | 154FS+2d |  | BAGALURU -P2 | 9638206 |
| 157 | 42100.42600.46700.62300.65000.65900.291200.2555900 | GYPSUM PLASTR APPLICATION | 9d | 2026-04-20 | 2026-04-28 | 156 |  | BAGALURU -P2 | 9638216 |
| 158 | 42100.42600.46700.62300.65000.65900.291200.2556000 | CONCEALED PLUMBING | 9d | 2026-04-20 | 2026-04-28 | 156 |  | BAGALURU -P2 | 9638226 |
| 159 | 42100.42600.46700.62300.65000.65900.291200.2556100 | WATERPROOFING WORK FOR TOILETS, KITCHEN SUNK & PLANTERS | 9d | 2026-04-29 | 2026-05-07 | 158 |  | BAGALURU -P2 | 9638236 |

| ID | WBS | Task | Duration | Start | Finish | Predecessors | Constraint | Calendar | Unique_Task_ID |
| --- | --- | --- | --- | --- | --- | --- | --- | --- | --- |
| 160 | 42100.42600.46700.62300.65000.65900.285300 | **Floor 15** | 36d | 2026-04-11 | 2026-05-16 |  | start no earlier than 2026-04-11 | BAGALURU -P2 | 9638106 |
| 161 | 42100.42600.46700.62300.65000.65900.285300.2556200 | POST POUR CLEARENCE | 9d | 2026-04-11 | 2026-04-19 | 154 |  | BAGALURU -P2 | 9638116 |
| 162 | 42100.42600.46700.62300.65000.65900.285300.2556300 | BALCONY RAILING FIXING | 9d | 2026-04-20 | 2026-04-28 | 161 |  | BAGALURU -P2 | 9638126 |
| 163 | 42100.42600.46700.62300.65000.65900.285300.2556400 | FPS WORKS | 7d | 2026-04-22 | 2026-04-28 | 161FS+2d |  | BAGALURU -P2 | 9638136 |
| 164 | 42100.42600.46700.62300.65000.65900.285300.2556500 | GYPSUM PLASTR APPLICATION | 9d | 2026-04-29 | 2026-05-07 | 163 |  | BAGALURU -P2 | 9638146 |
| 165 | 42100.42600.46700.62300.65000.65900.285300.2556600 | CONCEALED PLUMBING | 9d | 2026-04-29 | 2026-05-07 | 163 |  | BAGALURU -P2 | 9638156 |
| 166 | 42100.42600.46700.62300.65000.65900.285300.2556700 | WATERPROOFING WORK FOR TOILETS, KITCHEN SUNK & PLANTERS | 9d | 2026-05-08 | 2026-05-16 | 165 |  | BAGALURU -P2 | 9638166 |
| 167 | 42100.42600.46700.62300.65000.505000 | **Terrace finishing works** | 30d | 2026-06-25 | 2026-07-24 |  | start no earlier than 2026-06-25 | BAGALURU -P2 | 9548596 |
| 168 | 42100.42600.46700.62300.65000.505000.2137000 | Terrace Waterproofing work | 30d | 2026-06-25 | 2026-07-24 | 59FS+90d |  | BAGALURU -P2 | 9548726 |
| 169 | 42100.42600.46700.62300.65000.504900 | **EXTERNAL Painting** | 90d | 2026-05-11 | 2026-08-08 |  | start no earlier than 2026-05-11 | BAGALURU -P2 | 9548586 |
| 170 | 42100.42600.46700.62300.65000.504900.2137100 | External Painting | 90d | 2026-05-11 | 2026-08-08 | 59FS+45d |  | BAGALURU -P2 | 9548736 |
| 171 | 42100.42600.46700.62300.64000 | **Flat finishes** | 281d | 2026-01-02 | 2027-01-30 |  | start no earlier than 2026-01-02 |  | 9547916 |
| 172 | 42100.42600.46700.62300.64000.152700 | **Floor 1** | 268d | 2026-01-02 | 2026-09-26 |  | start no earlier than 2026-01-02 | BAGALURU -P2 | 9667486 |
| 173 | 42100.42600.46700.62300.64000.152700.2137200 | TOILET DADO TILE FIXING | 9d | 2026-01-02 | 2026-01-10 | 68FS-3d |  | BAGALURU -P2 | 9667496 |
| 174 | 42100.42600.46700.62300.64000.152700.2137300 | FLAT FLOORING | 9d | 2026-01-11 | 2026-01-19 | 173 |  | BAGALURU -P2 | 9667506 |
| 175 | 42100.42600.46700.62300.64000.152700.2137400 | CORNICE WORKS | 9d | 2026-01-20 | 2026-01-28 | 174 |  | BAGALURU -P2 | 9667516 |
| 176 | 42100.42600.46700.62300.64000.152700.2137500 | INTERNAL PAINTING - PUTTY / PRIMER APPLICATION | 9d | 2026-02-16 | 2026-02-24 | 175FS+18d |  | BAGALURU -P2 | 9667526 |
| 177 | 42100.42600.46700.62300.64000.152700.2137600 | WINDOW FIXING | 9d | 2026-02-25 | 2026-03-05 | 176 |  | BAGALURU -P2 | 9667536 |
| 178 | 42100.42600.46700.62300.64000.152700.2137700 | INTERNAL PAINTING - 1ST COAT | 15d | 2026-05-05 | 2026-05-19 | 177FS+60d |  | BAGALURU -P2 | 9667546 |
| 179 | 42100.42600.46700.62300.64000.152700.2137800 | INTERNAL DOOR FIXING | 15d | 2026-05-20 | 2026-06-03 | 178 |  | BAGALURU -P2 | 9667556 |
| 180 | 42100.42600.46700.62300.64000.152700.2137900 | WIRING & SWITCH PLATE FIXING | 10d | 2026-06-04 | 2026-06-13 | 179 |  | BAGALURU -P2 | 9667566 |
| 181 | 42100.42600.46700.62300.64000.152700.2138000 | TOILET FALSE CEILING | 15d | 2026-08-21 | 2026-09-04 | 180FS+68d |  | BAGALURU -P2 | 9667576 |
| 182 | 42100.42600.46700.62300.64000.152700.2138100 | CP & SANITARY FIXING | 10d | 2026-09-05 | 2026-09-14 | 181 |  | BAGALURU -P2 | 9667586 |
| 183 | 42100.42600.46700.62300.64000.152700.2138200 | FINAL COAT PAINT | 12d | 2026-09-15 | 2026-09-26 | 182 |  | BAGALURU -P2 | 9667596 |

Notes:
- 169: Ext Plaster (in 2 phases) completion 3.5 months post last BW

| ID | WBS | Task | Duration | Start | Finish | Predecessors | Constraint | Calendar | Unique_Task_ID |
| --- | --- | --- | --- | --- | --- | --- | --- | --- | --- |
| 184 | 42100.42600.46700.62300.64000.153200 | **Floor 2** | 268d | 2026-01-11 | 2026-10-05 |  | start no earlier than 2026-01-11 | BAGALURU -P2 | 9667366 |
| 185 | 42100.42600.46700.62300.64000.153200.2138300 | TOILET DADO TILE FIXING | 9d | 2026-01-11 | 2026-01-19 | 173 |  | BAGALURU -P2 | 9667376 |
| 186 | 42100.42600.46700.62300.64000.153200.2138400 | FLAT FLOORING | 9d | 2026-01-20 | 2026-01-28 | 185 |  | BAGALURU -P2 | 9667386 |
| 187 | 42100.42600.46700.62300.64000.153200.2138500 | CORNICE WORKS | 9d | 2026-01-29 | 2026-02-06 | 186 |  | BAGALURU -P2 | 9667396 |
| 188 | 42100.42600.46700.62300.64000.153200.2138600 | INTERNAL PAINTING - PUTTY / PRIMER APPLICATION | 9d | 2026-02-25 | 2026-03-05 | 187FS+18d |  | BAGALURU -P2 | 9667406 |
| 189 | 42100.42600.46700.62300.64000.153200.2138700 | WINDOW FIXING | 9d | 2026-03-06 | 2026-03-14 | 188 |  | BAGALURU -P2 | 9667416 |
| 190 | 42100.42600.46700.62300.64000.153200.2138800 | INTERNAL PAINTING - 1ST COAT | 15d | 2026-05-14 | 2026-05-28 | 189FS+60d |  | BAGALURU -P2 | 9667426 |
| 191 | 42100.42600.46700.62300.64000.153200.2138900 | INTERNAL DOOR FIXING | 15d | 2026-05-29 | 2026-06-12 | 190 |  | BAGALURU -P2 | 9667436 |
| 192 | 42100.42600.46700.62300.64000.153200.2139000 | WIRING & SWITCH PLATE FIXING | 10d | 2026-06-13 | 2026-06-22 | 191 |  | BAGALURU -P2 | 9667446 |
| 193 | 42100.42600.46700.62300.64000.153200.2139100 | TOILET FALSE CEILING | 15d | 2026-08-30 | 2026-09-13 | 192FS+68d |  | BAGALURU -P2 | 9667456 |
| 194 | 42100.42600.46700.62300.64000.153200.2139200 | CP & SANITARY FIXING | 10d | 2026-09-14 | 2026-09-23 | 193 |  | BAGALURU -P2 | 9667466 |
| 195 | 42100.42600.46700.62300.64000.153200.2139300 | FINAL COAT PAINT | 12d | 2026-09-24 | 2026-10-05 | 194 |  | BAGALURU -P2 | 9667476 |
| 196 | 42100.42600.46700.62300.64000.153300 | **Floor 3** | 268d | 2026-01-20 | 2026-10-14 |  | start no earlier than 2026-01-20 | BAGALURU -P2 | 9667246 |
| 197 | 42100.42600.46700.62300.64000.153300.2139400 | TOILET DADO TILE FIXING | 9d | 2026-01-20 | 2026-01-28 | 185 |  | BAGALURU -P2 | 9667256 |
| 198 | 42100.42600.46700.62300.64000.153300.2139500 | FLAT FLOORING | 9d | 2026-01-29 | 2026-02-06 | 197 |  | BAGALURU -P2 | 9667266 |
| 199 | 42100.42600.46700.62300.64000.153300.2139600 | CORNICE WORKS | 9d | 2026-02-07 | 2026-02-15 | 198 |  | BAGALURU -P2 | 9667276 |
| 200 | 42100.42600.46700.62300.64000.153300.2139700 | INTERNAL PAINTING - PUTTY / PRIMER APPLICATION | 9d | 2026-03-06 | 2026-03-14 | 199FS+18d |  | BAGALURU -P2 | 9667286 |
| 201 | 42100.42600.46700.62300.64000.153300.2139800 | WINDOW FIXING | 9d | 2026-03-15 | 2026-03-23 | 200 |  | BAGALURU -P2 | 9667296 |
| 202 | 42100.42600.46700.62300.64000.153300.2139900 | INTERNAL PAINTING - 1ST COAT | 15d | 2026-05-23 | 2026-06-06 | 201FS+60d |  | BAGALURU -P2 | 9667306 |
| 203 | 42100.42600.46700.62300.64000.153300.2140000 | INTERNAL DOOR FIXING | 15d | 2026-06-07 | 2026-06-21 | 202 |  | BAGALURU -P2 | 9667316 |
| 204 | 42100.42600.46700.62300.64000.153300.2140100 | WIRING & SWITCH PLATE FIXING | 10d | 2026-06-22 | 2026-07-01 | 203 |  | BAGALURU -P2 | 9667326 |
| 205 | 42100.42600.46700.62300.64000.153300.2140200 | TOILET FALSE CEILING | 15d | 2026-09-08 | 2026-09-22 | 204FS+68d |  | BAGALURU -P2 | 9667336 |
| 206 | 42100.42600.46700.62300.64000.153300.2140300 | CP & SANITARY FIXING | 10d | 2026-09-23 | 2026-10-02 | 205 |  | BAGALURU -P2 | 9667346 |
| 207 | 42100.42600.46700.62300.64000.153300.2140400 | FINAL COAT PAINT | 12d | 2026-10-03 | 2026-10-14 | 206 |  | BAGALURU -P2 | 9667356 |

| ID | WBS | Task | Duration | Start | Finish | Predecessors | Constraint | Calendar | Unique_Task_ID |
| --- | --- | --- | --- | --- | --- | --- | --- | --- | --- |
| 208 | 42100.42600.46700.62300.64000.153400 | **Floor 4** | 268d | 2026-01-29 | 2026-10-23 |  | start no earlier than 2026-01-29 | BAGALURU -P2 | 9667126 |
| 209 | 42100.42600.46700.62300.64000.153400.2140500 | TOILET DADO TILE FIXING | 9d | 2026-01-29 | 2026-02-06 | 197 |  | BAGALURU -P2 | 9667136 |
| 210 | 42100.42600.46700.62300.64000.153400.2140600 | FLAT FLOORING | 9d | 2026-02-07 | 2026-02-15 | 209 |  | BAGALURU -P2 | 9667146 |
| 211 | 42100.42600.46700.62300.64000.153400.2140700 | CORNICE WORKS | 9d | 2026-02-16 | 2026-02-24 | 210 |  | BAGALURU -P2 | 9667156 |
| 212 | 42100.42600.46700.62300.64000.153400.2140800 | INTERNAL PAINTING - PUTTY / PRIMER APPLICATION | 9d | 2026-03-15 | 2026-03-23 | 211FS+18d |  | BAGALURU -P2 | 9667166 |
| 213 | 42100.42600.46700.62300.64000.153400.2140900 | WINDOW FIXING | 9d | 2026-03-24 | 2026-04-01 | 212 |  | BAGALURU -P2 | 9667176 |
| 214 | 42100.42600.46700.62300.64000.153400.2141000 | INTERNAL PAINTING - 1ST COAT | 15d | 2026-06-01 | 2026-06-15 | 213FS+60d |  | BAGALURU -P2 | 9667186 |
| 215 | 42100.42600.46700.62300.64000.153400.2141100 | INTERNAL DOOR FIXING | 15d | 2026-06-16 | 2026-06-30 | 214 |  | BAGALURU -P2 | 9667196 |
| 216 | 42100.42600.46700.62300.64000.153400.2141200 | WIRING & SWITCH PLATE FIXING | 10d | 2026-07-01 | 2026-07-10 | 215 |  | BAGALURU -P2 | 9667206 |
| 217 | 42100.42600.46700.62300.64000.153400.2141300 | TOILET FALSE CEILING | 15d | 2026-09-17 | 2026-10-01 | 216FS+68d |  | BAGALURU -P2 | 9667216 |
| 218 | 42100.42600.46700.62300.64000.153400.2141400 | CP & SANITARY FIXING | 10d | 2026-10-02 | 2026-10-11 | 217 |  | BAGALURU -P2 | 9667226 |
| 219 | 42100.42600.46700.62300.64000.153400.2141500 | FINAL COAT PAINT | 12d | 2026-10-12 | 2026-10-23 | 218 |  | BAGALURU -P2 | 9667236 |
| 220 | 42100.42600.46700.62300.64000.153600 | **Floor 5** | 268d | 2026-02-07 | 2026-11-01 |  | start no earlier than 2026-02-07 | BAGALURU -P2 | 9667006 |
| 221 | 42100.42600.46700.62300.64000.153600.2141600 | TOILET DADO TILE FIXING | 9d | 2026-02-07 | 2026-02-15 | 209 |  | BAGALURU -P2 | 9667016 |
| 222 | 42100.42600.46700.62300.64000.153600.2141700 | FLAT FLOORING | 9d | 2026-02-16 | 2026-02-24 | 221 |  | BAGALURU -P2 | 9667026 |
| 223 | 42100.42600.46700.62300.64000.153600.2141800 | CORNICE WORKS | 9d | 2026-02-25 | 2026-03-05 | 222 |  | BAGALURU -P2 | 9667036 |
| 224 | 42100.42600.46700.62300.64000.153600.2141900 | INTERNAL PAINTING - PUTTY / PRIMER APPLICATION | 9d | 2026-03-24 | 2026-04-01 | 223FS+18d |  | BAGALURU -P2 | 9667046 |
| 225 | 42100.42600.46700.62300.64000.153600.2142000 | WINDOW FIXING | 9d | 2026-04-02 | 2026-04-10 | 224 |  | BAGALURU -P2 | 9667056 |
| 226 | 42100.42600.46700.62300.64000.153600.2142100 | INTERNAL PAINTING - 1ST COAT | 15d | 2026-06-10 | 2026-06-24 | 225FS+60d |  | BAGALURU -P2 | 9667066 |
| 227 | 42100.42600.46700.62300.64000.153600.2142200 | INTERNAL DOOR FIXING | 15d | 2026-06-25 | 2026-07-09 | 226 |  | BAGALURU -P2 | 9667076 |
| 228 | 42100.42600.46700.62300.64000.153600.2142300 | WIRING & SWITCH PLATE FIXING | 10d | 2026-07-10 | 2026-07-19 | 227 |  | BAGALURU -P2 | 9667086 |
| 229 | 42100.42600.46700.62300.64000.153600.2142400 | TOILET FALSE CEILING | 15d | 2026-09-26 | 2026-10-10 | 228FS+68d |  | BAGALURU -P2 | 9667096 |
| 230 | 42100.42600.46700.62300.64000.153600.2142500 | CP & SANITARY FIXING | 10d | 2026-10-11 | 2026-10-20 | 229 |  | BAGALURU -P2 | 9667106 |
| 231 | 42100.42600.46700.62300.64000.153600.2142600 | FINAL COAT PAINT | 12d | 2026-10-21 | 2026-11-01 | 230 |  | BAGALURU -P2 | 9667116 |

| ID | WBS | Task | Duration | Start | Finish | Predecessors | Constraint | Calendar | Unique_Task_ID |
| --- | --- | --- | --- | --- | --- | --- | --- | --- | --- |
| 232 | 42100.42600.46700.62300.64000.153700 | **Floor 6** | 268d | 2026-02-16 | 2026-11-10 |  | start no earlier than 2026-02-16 | BAGALURU -P2 | 9666886 |
| 233 | 42100.42600.46700.62300.64000.153700.2142700 | TOILET DADO TILE FIXING | 9d | 2026-02-16 | 2026-02-24 | 221 |  | BAGALURU -P2 | 9666896 |
| 234 | 42100.42600.46700.62300.64000.153700.2142800 | FLAT FLOORING | 9d | 2026-02-25 | 2026-03-05 | 233 |  | BAGALURU -P2 | 9666906 |
| 235 | 42100.42600.46700.62300.64000.153700.2142900 | CORNICE WORKS | 9d | 2026-03-06 | 2026-03-14 | 234 |  | BAGALURU -P2 | 9666916 |
| 236 | 42100.42600.46700.62300.64000.153700.2143000 | INTERNAL PAINTING - PUTTY / PRIMER APPLICATION | 9d | 2026-04-02 | 2026-04-10 | 235FS+18d |  | BAGALURU -P2 | 9666926 |
| 237 | 42100.42600.46700.62300.64000.153700.2143100 | WINDOW FIXING | 9d | 2026-04-11 | 2026-04-19 | 236 |  | BAGALURU -P2 | 9666936 |
| 238 | 42100.42600.46700.62300.64000.153700.2143200 | INTERNAL PAINTING - 1ST COAT | 15d | 2026-06-19 | 2026-07-03 | 237FS+60d |  | BAGALURU -P2 | 9666946 |
| 239 | 42100.42600.46700.62300.64000.153700.2143300 | INTERNAL DOOR FIXING | 15d | 2026-07-04 | 2026-07-18 | 238 |  | BAGALURU -P2 | 9666956 |
| 240 | 42100.42600.46700.62300.64000.153700.2143400 | WIRING & SWITCH PLATE FIXING | 10d | 2026-07-19 | 2026-07-28 | 239 |  | BAGALURU -P2 | 9666966 |
| 241 | 42100.42600.46700.62300.64000.153700.2143500 | TOILET FALSE CEILING | 15d | 2026-10-05 | 2026-10-19 | 240FS+68d |  | BAGALURU -P2 | 9666976 |
| 242 | 42100.42600.46700.62300.64000.153700.2143600 | CP & SANITARY FIXING | 10d | 2026-10-20 | 2026-10-29 | 241 |  | BAGALURU -P2 | 9666986 |
| 243 | 42100.42600.46700.62300.64000.153700.2143700 | FINAL COAT PAINT | 12d | 2026-10-30 | 2026-11-10 | 242 |  | BAGALURU -P2 | 9666996 |
| 244 | 42100.42600.46700.62300.64000.153800 | **Floor 7** | 268d | 2026-02-25 | 2026-11-19 |  | start no earlier than 2026-02-25 | BAGALURU -P2 | 9666766 |
| 245 | 42100.42600.46700.62300.64000.153800.2143800 | TOILET DADO TILE FIXING | 9d | 2026-02-25 | 2026-03-05 | 233 |  | BAGALURU -P2 | 9666776 |
| 246 | 42100.42600.46700.62300.64000.153800.2143900 | FLAT FLOORING | 9d | 2026-03-06 | 2026-03-14 | 245 |  | BAGALURU -P2 | 9666786 |
| 247 | 42100.42600.46700.62300.64000.153800.2144000 | CORNICE WORKS | 9d | 2026-03-15 | 2026-03-23 | 246 |  | BAGALURU -P2 | 9666796 |
| 248 | 42100.42600.46700.62300.64000.153800.2144100 | INTERNAL PAINTING - PUTTY / PRIMER APPLICATION | 9d | 2026-04-11 | 2026-04-19 | 247FS+18d |  | BAGALURU -P2 | 9666806 |
| 249 | 42100.42600.46700.62300.64000.153800.2144200 | WINDOW FIXING | 9d | 2026-04-20 | 2026-04-28 | 248 |  | BAGALURU -P2 | 9666816 |
| 250 | 42100.42600.46700.62300.64000.153800.2144300 | INTERNAL PAINTING - 1ST COAT | 15d | 2026-06-28 | 2026-07-12 | 249FS+60d |  | BAGALURU -P2 | 9666826 |
| 251 | 42100.42600.46700.62300.64000.153800.2144400 | INTERNAL DOOR FIXING | 15d | 2026-07-13 | 2026-07-27 | 250 |  | BAGALURU -P2 | 9666836 |
| 252 | 42100.42600.46700.62300.64000.153800.2144500 | WIRING & SWITCH PLATE FIXING | 10d | 2026-07-28 | 2026-08-06 | 251 |  | BAGALURU -P2 | 9666846 |
| 253 | 42100.42600.46700.62300.64000.153800.2144600 | TOILET FALSE CEILING | 15d | 2026-10-14 | 2026-10-28 | 252FS+68d |  | BAGALURU -P2 | 9666856 |
| 254 | 42100.42600.46700.62300.64000.153800.2144700 | CP & SANITARY FIXING | 10d | 2026-10-29 | 2026-11-07 | 253 |  | BAGALURU -P2 | 9666866 |
| 255 | 42100.42600.46700.62300.64000.153800.2144800 | FINAL COAT PAINT | 12d | 2026-11-08 | 2026-11-19 | 254 |  | BAGALURU -P2 | 9666876 |

| ID | WBS | Task | Duration | Start | Finish | Predecessors | Constraint | Calendar | Unique_Task_ID |
| --- | --- | --- | --- | --- | --- | --- | --- | --- | --- |
| 256 | 42100.42600.46700.62300.64000.153900 | **Floor 8** | 268d | 2026-03-06 | 2026-11-28 |  | start no earlier than 2026-03-06 | BAGALURU -P2 | 9666646 |
| 257 | 42100.42600.46700.62300.64000.153900.2144900 | TOILET DADO TILE FIXING | 9d | 2026-03-06 | 2026-03-14 | 245 |  | BAGALURU -P2 | 9666656 |
| 258 | 42100.42600.46700.62300.64000.153900.2145000 | FLAT FLOORING | 9d | 2026-03-15 | 2026-03-23 | 257 |  | BAGALURU -P2 | 9666666 |
| 259 | 42100.42600.46700.62300.64000.153900.2145100 | CORNICE WORKS | 9d | 2026-03-24 | 2026-04-01 | 258 |  | BAGALURU -P2 | 9666676 |
| 260 | 42100.42600.46700.62300.64000.153900.2145200 | INTERNAL PAINTING - PUTTY / PRIMER APPLICATION | 9d | 2026-04-20 | 2026-04-28 | 259FS+18d |  | BAGALURU -P2 | 9666686 |
| 261 | 42100.42600.46700.62300.64000.153900.2145300 | WINDOW FIXING | 9d | 2026-04-29 | 2026-05-07 | 260 |  | BAGALURU -P2 | 9666696 |
| 262 | 42100.42600.46700.62300.64000.153900.2145400 | INTERNAL PAINTING - 1ST COAT | 15d | 2026-07-07 | 2026-07-21 | 261FS+60d |  | BAGALURU -P2 | 9666706 |
| 263 | 42100.42600.46700.62300.64000.153900.2145500 | INTERNAL DOOR FIXING | 15d | 2026-07-22 | 2026-08-05 | 262 |  | BAGALURU -P2 | 9666716 |
| 264 | 42100.42600.46700.62300.64000.153900.2145600 | WIRING & SWITCH PLATE FIXING | 10d | 2026-08-06 | 2026-08-15 | 263 |  | BAGALURU -P2 | 9666726 |
| 265 | 42100.42600.46700.62300.64000.153900.2145700 | TOILET FALSE CEILING | 15d | 2026-10-23 | 2026-11-06 | 264FS+68d |  | BAGALURU -P2 | 9666736 |
| 266 | 42100.42600.46700.62300.64000.153900.2145800 | CP & SANITARY FIXING | 10d | 2026-11-07 | 2026-11-16 | 265 |  | BAGALURU -P2 | 9666746 |
| 267 | 42100.42600.46700.62300.64000.153900.2145900 | FINAL COAT PAINT | 12d | 2026-11-17 | 2026-11-28 | 266 |  | BAGALURU -P2 | 9666756 |
| 268 | 42100.42600.46700.62300.64000.154000 | **Floor 9** | 268d | 2026-03-15 | 2026-12-07 |  | start no earlier than 2026-03-15 | BAGALURU -P2 | 9666526 |
| 269 | 42100.42600.46700.62300.64000.154000.2146000 | TOILET DADO TILE FIXING | 9d | 2026-03-15 | 2026-03-23 | 257 |  | BAGALURU -P2 | 9666536 |
| 270 | 42100.42600.46700.62300.64000.154000.2146100 | FLAT FLOORING | 9d | 2026-03-24 | 2026-04-01 | 269 |  | BAGALURU -P2 | 9666546 |
| 271 | 42100.42600.46700.62300.64000.154000.2146200 | CORNICE WORKS | 9d | 2026-04-02 | 2026-04-10 | 270 |  | BAGALURU -P2 | 9666556 |
| 272 | 42100.42600.46700.62300.64000.154000.2146300 | INTERNAL PAINTING - PUTTY / PRIMER APPLICATION | 9d | 2026-04-29 | 2026-05-07 | 271FS+18d |  | BAGALURU -P2 | 9666566 |
| 273 | 42100.42600.46700.62300.64000.154000.2146400 | WINDOW FIXING | 9d | 2026-05-08 | 2026-05-16 | 272 |  | BAGALURU -P2 | 9666576 |
| 274 | 42100.42600.46700.62300.64000.154000.2146500 | INTERNAL PAINTING - 1ST COAT | 15d | 2026-07-16 | 2026-07-30 | 273FS+60d |  | BAGALURU -P2 | 9666586 |
| 275 | 42100.42600.46700.62300.64000.154000.2146600 | INTERNAL DOOR FIXING | 15d | 2026-07-31 | 2026-08-14 | 274 |  | BAGALURU -P2 | 9666596 |
| 276 | 42100.42600.46700.62300.64000.154000.2146700 | WIRING & SWITCH PLATE FIXING | 10d | 2026-08-15 | 2026-08-24 | 275 |  | BAGALURU -P2 | 9666606 |
| 277 | 42100.42600.46700.62300.64000.154000.2146800 | TOILET FALSE CEILING | 15d | 2026-11-01 | 2026-11-15 | 276FS+68d |  | BAGALURU -P2 | 9666616 |
| 278 | 42100.42600.46700.62300.64000.154000.2146900 | CP & SANITARY FIXING | 10d | 2026-11-16 | 2026-11-25 | 277 |  | BAGALURU -P2 | 9666626 |
| 279 | 42100.42600.46700.62300.64000.154000.2147000 | FINAL COAT PAINT | 12d | 2026-11-26 | 2026-12-07 | 278 |  | BAGALURU -P2 | 9666636 |

| ID | WBS | Task | Duration | Start | Finish | Predecessors | Constraint | Calendar | Unique_Task_ID |
| --- | --- | --- | --- | --- | --- | --- | --- | --- | --- |
| 280 | 42100.42600.46700.62300.64000.154100 | **Floor 10** | 268d | 2026-03-24 | 2026-12-16 |  | start no earlier than 2026-03-24 | BAGALURU -P2 | 9666396 |
| 281 | 42100.42600.46700.62300.64000.154100.2147100 | TOILET DADO TILE FIXING | 9d | 2026-03-24 | 2026-04-01 | 269 |  | BAGALURU -P2 | 9666406 |
| 282 | 42100.42600.46700.62300.64000.154100.2147200 | FLAT FLOORING | 9d | 2026-04-02 | 2026-04-10 | 281 |  | BAGALURU -P2 | 9666416 |
| 283 | 42100.42600.46700.62300.64000.154100.2147300 | CORNICE WORKS | 9d | 2026-04-11 | 2026-04-19 | 282 |  | BAGALURU -P2 | 9666436 |
| 284 | 42100.42600.46700.62300.64000.154100.2147400 | INTERNAL PAINTING - PUTTY / PRIMER APPLICATION | 9d | 2026-05-08 | 2026-05-16 | 283FS+18d |  | BAGALURU -P2 | 9666446 |
| 285 | 42100.42600.46700.62300.64000.154100.2147500 | WINDOW FIXING | 9d | 2026-05-17 | 2026-05-25 | 284 |  | BAGALURU -P2 | 9666456 |
| 286 | 42100.42600.46700.62300.64000.154100.2147600 | INTERNAL PAINTING - 1ST COAT | 15d | 2026-07-25 | 2026-08-08 | 285FS+60d |  | BAGALURU -P2 | 9666466 |
| 287 | 42100.42600.46700.62300.64000.154100.2147700 | INTERNAL DOOR FIXING | 15d | 2026-08-09 | 2026-08-23 | 286 |  | BAGALURU -P2 | 9666476 |
| 288 | 42100.42600.46700.62300.64000.154100.2147800 | WIRING & SWITCH PLATE FIXING | 10d | 2026-08-24 | 2026-09-02 | 287 |  | BAGALURU -P2 | 9666486 |
| 289 | 42100.42600.46700.62300.64000.154100.2147900 | TOILET FALSE CEILING | 15d | 2026-11-10 | 2026-11-24 | 288FS+68d |  | BAGALURU -P2 | 9666496 |
| 290 | 42100.42600.46700.62300.64000.154100.2148000 | CP & SANITARY FIXING | 10d | 2026-11-25 | 2026-12-04 | 289 |  | BAGALURU -P2 | 9666506 |
| 291 | 42100.42600.46700.62300.64000.154100.2148100 | FINAL COAT PAINT | 12d | 2026-12-05 | 2026-12-16 | 290 |  | BAGALURU -P2 | 9666516 |
| 292 | 42100.42600.46700.62300.64000.154600 | **Floor 11** | 268d | 2026-04-02 | 2026-12-25 |  | start no earlier than 2026-04-02 | BAGALURU -P2 | 9639536 |
| 293 | 42100.42600.46700.62300.64000.154600.2148200 | TOILET DADO TILE FIXING | 9d | 2026-04-02 | 2026-04-10 | 281 |  | BAGALURU -P2 | 9639546 |
| 294 | 42100.42600.46700.62300.64000.154600.2148300 | FLAT FLOORING | 9d | 2026-04-11 | 2026-04-19 | 293 |  | BAGALURU -P2 | 9639556 |
| 295 | 42100.42600.46700.62300.64000.154600.2148400 | CORNICE WORKS | 9d | 2026-04-20 | 2026-04-28 | 294 |  | BAGALURU -P2 | 9639566 |
| 296 | 42100.42600.46700.62300.64000.154600.2148500 | INTERNAL PAINTING - PUTTY / PRIMER APPLICATION | 9d | 2026-05-17 | 2026-05-25 | 295FS+18d |  | BAGALURU -P2 | 9639696 |
| 297 | 42100.42600.46700.62300.64000.154600.2148600 | WINDOW FIXING | 9d | 2026-05-26 | 2026-06-03 | 296 |  | BAGALURU -P2 | 9639706 |
| 298 | 42100.42600.46700.62300.64000.154600.2148700 | INTERNAL PAINTING - 1ST COAT | 15d | 2026-08-03 | 2026-08-17 | 297FS+60d |  | BAGALURU -P2 | 9639716 |
| 299 | 42100.42600.46700.62300.64000.154600.2148800 | INTERNAL DOOR FIXING | 15d | 2026-08-18 | 2026-09-01 | 298 |  | BAGALURU -P2 | 9639726 |
| 300 | 42100.42600.46700.62300.64000.154600.2148900 | WIRING & SWITCH PLATE FIXING | 10d | 2026-09-02 | 2026-09-11 | 299 |  | BAGALURU -P2 | 9639736 |
| 301 | 42100.42600.46700.62300.64000.154600.2149000 | TOILET FALSE CEILING | 15d | 2026-11-19 | 2026-12-03 | 300FS+68d |  | BAGALURU -P2 | 9639746 |
| 302 | 42100.42600.46700.62300.64000.154600.2149100 | CP & SANITARY FIXING | 10d | 2026-12-04 | 2026-12-13 | 301 |  | BAGALURU -P2 | 9639756 |
| 303 | 42100.42600.46700.62300.64000.154600.2149200 | FINAL COAT PAINT | 12d | 2026-12-14 | 2026-12-25 | 302 |  | BAGALURU -P2 | 9639766 |

| ID | WBS | Task | Duration | Start | Finish | Predecessors | Constraint | Calendar | Unique_Task_ID |
| --- | --- | --- | --- | --- | --- | --- | --- | --- | --- |
| 304 | 42100.42600.46700.62300.64000.155200 | **Floor 12** | 268d | 2026-04-11 | 2027-01-03 |  | start no earlier than 2026-04-11 | BAGALURU -P2 | 9639416 |
| 305 | 42100.42600.46700.62300.64000.155200.2149300 | TOILET DADO TILE FIXING | 9d | 2026-04-11 | 2026-04-19 | 293 |  | BAGALURU -P2 | 9639426 |
| 306 | 42100.42600.46700.62300.64000.155200.2149400 | FLAT FLOORING | 9d | 2026-04-20 | 2026-04-28 | 305 |  | BAGALURU -P2 | 9639436 |
| 307 | 42100.42600.46700.62300.64000.155200.2149500 | CORNICE WORKS | 9d | 2026-04-29 | 2026-05-07 | 306 |  | BAGALURU -P2 | 9639446 |
| 308 | 42100.42600.46700.62300.64000.155200.2149600 | INTERNAL PAINTING - PUTTY / PRIMER APPLICATION | 9d | 2026-05-26 | 2026-06-03 | 307FS+18d |  | BAGALURU -P2 | 9639456 |
| 309 | 42100.42600.46700.62300.64000.155200.2149700 | WINDOW FIXING | 9d | 2026-06-04 | 2026-06-12 | 308 |  | BAGALURU -P2 | 9639466 |
| 310 | 42100.42600.46700.62300.64000.155200.2149800 | INTERNAL PAINTING - 1ST COAT | 15d | 2026-08-12 | 2026-08-26 | 309FS+60d |  | BAGALURU -P2 | 9639476 |
| 311 | 42100.42600.46700.62300.64000.155200.2149900 | INTERNAL DOOR FIXING | 15d | 2026-08-27 | 2026-09-10 | 310 |  | BAGALURU -P2 | 9639486 |
| 312 | 42100.42600.46700.62300.64000.155200.2150000 | WIRING & SWITCH PLATE FIXING | 10d | 2026-09-11 | 2026-09-20 | 311 |  | BAGALURU -P2 | 9639496 |
| 313 | 42100.42600.46700.62300.64000.155200.2150100 | TOILET FALSE CEILING | 15d | 2026-11-28 | 2026-12-12 | 312FS+68d |  | BAGALURU -P2 | 9639506 |
| 314 | 42100.42600.46700.62300.64000.155200.2150200 | CP & SANITARY FIXING | 10d | 2026-12-13 | 2026-12-22 | 313 |  | BAGALURU -P2 | 9639516 |
| 315 | 42100.42600.46700.62300.64000.155200.2150300 | FINAL COAT PAINT | 12d | 2026-12-23 | 2027-01-03 | 314 |  | BAGALURU -P2 | 9639526 |
| 316 | 42100.42600.46700.62300.64000.155400 | **Floor 13** | 268d | 2026-04-20 | 2027-01-12 |  | start no earlier than 2026-04-20 | BAGALURU -P2 | 9639296 |
| 317 | 42100.42600.46700.62300.64000.155400.2150400 | TOILET DADO TILE FIXING | 9d | 2026-04-20 | 2026-04-28 | 305 |  | BAGALURU -P2 | 9639306 |
| 318 | 42100.42600.46700.62300.64000.155400.2150500 | FLAT FLOORING | 9d | 2026-04-29 | 2026-05-07 | 317 |  | BAGALURU -P2 | 9639316 |
| 319 | 42100.42600.46700.62300.64000.155400.2150600 | CORNICE WORKS | 9d | 2026-05-08 | 2026-05-16 | 318 |  | BAGALURU -P2 | 9639326 |
| 320 | 42100.42600.46700.62300.64000.155400.2150700 | INTERNAL PAINTING - PUTTY / PRIMER APPLICATION | 9d | 2026-06-04 | 2026-06-12 | 319FS+18d |  | BAGALURU -P2 | 9639336 |
| 321 | 42100.42600.46700.62300.64000.155400.2150800 | WINDOW FIXING | 9d | 2026-06-13 | 2026-06-21 | 320 |  | BAGALURU -P2 | 9639346 |
| 322 | 42100.42600.46700.62300.64000.155400.2150900 | INTERNAL PAINTING - 1ST COAT | 15d | 2026-08-21 | 2026-09-04 | 321FS+60d |  | BAGALURU -P2 | 9639356 |
| 323 | 42100.42600.46700.62300.64000.155400.2151000 | INTERNAL DOOR FIXING | 15d | 2026-09-05 | 2026-09-19 | 322 |  | BAGALURU -P2 | 9639366 |
| 324 | 42100.42600.46700.62300.64000.155400.2151100 | WIRING & SWITCH PLATE FIXING | 10d | 2026-09-20 | 2026-09-29 | 323 |  | BAGALURU -P2 | 9639376 |
| 325 | 42100.42600.46700.62300.64000.155400.2151200 | TOILET FALSE CEILING | 15d | 2026-12-07 | 2026-12-21 | 324FS+68d |  | BAGALURU -P2 | 9639386 |
| 326 | 42100.42600.46700.62300.64000.155400.2151300 | CP & SANITARY FIXING | 10d | 2026-12-22 | 2026-12-31 | 325 |  | BAGALURU -P2 | 9639396 |
| 327 | 42100.42600.46700.62300.64000.155400.2151400 | FINAL COAT PAINT | 12d | 2027-01-01 | 2027-01-12 | 326 |  | BAGALURU -P2 | 9639406 |

| ID | WBS | Task | Duration | Start | Finish | Predecessors | Constraint | Calendar | Unique_Task_ID |
| --- | --- | --- | --- | --- | --- | --- | --- | --- | --- |
| 328 | 42100.42600.46700.62300.64000.155500 | **Floor 14** | 268d | 2026-04-29 | 2027-01-21 |  | start no earlier than 2026-04-29 | BAGALURU -P2 | 9639176 |
| 329 | 42100.42600.46700.62300.64000.155500.2151500 | TOILET DADO TILE FIXING | 9d | 2026-04-29 | 2026-05-07 | 317 |  | BAGALURU -P2 | 9639186 |
| 330 | 42100.42600.46700.62300.64000.155500.2151600 | FLAT FLOORING | 9d | 2026-05-08 | 2026-05-16 | 329 |  | BAGALURU -P2 | 9639196 |
| 331 | 42100.42600.46700.62300.64000.155500.2151700 | CORNICE WORKS | 9d | 2026-05-17 | 2026-05-25 | 330 |  | BAGALURU -P2 | 9639206 |
| 332 | 42100.42600.46700.62300.64000.155500.2151800 | INTERNAL PAINTING - PUTTY / PRIMER APPLICATION | 9d | 2026-06-13 | 2026-06-21 | 331FS+18d |  | BAGALURU -P2 | 9639216 |
| 333 | 42100.42600.46700.62300.64000.155500.2151900 | WINDOW FIXING | 9d | 2026-06-22 | 2026-06-30 | 332 |  | BAGALURU -P2 | 9639226 |
| 334 | 42100.42600.46700.62300.64000.155500.2152000 | INTERNAL PAINTING - 1ST COAT | 15d | 2026-08-30 | 2026-09-13 | 333FS+60d |  | BAGALURU -P2 | 9639236 |
| 335 | 42100.42600.46700.62300.64000.155500.2152100 | INTERNAL DOOR FIXING | 15d | 2026-09-14 | 2026-09-28 | 334 |  | BAGALURU -P2 | 9639246 |
| 336 | 42100.42600.46700.62300.64000.155500.2152200 | WIRING & SWITCH PLATE FIXING | 10d | 2026-09-29 | 2026-10-08 | 335 |  | BAGALURU -P2 | 9639256 |
| 337 | 42100.42600.46700.62300.64000.155500.2152300 | TOILET FALSE CEILING | 15d | 2026-12-16 | 2026-12-30 | 336FS+68d |  | BAGALURU -P2 | 9639266 |
| 338 | 42100.42600.46700.62300.64000.155500.2152400 | CP & SANITARY FIXING | 10d | 2026-12-31 | 2027-01-09 | 337 |  | BAGALURU -P2 | 9639276 |
| 339 | 42100.42600.46700.62300.64000.155500.2152500 | FINAL COAT PAINT | 12d | 2027-01-10 | 2027-01-21 | 338 |  | BAGALURU -P2 | 9639286 |
| 340 | 42100.42600.46700.62300.64000.155700 | **Floor 15** | 268d | 2026-05-08 | 2027-01-30 |  | start no earlier than 2026-05-08 | BAGALURU -P2 | 9639056 |
| 341 | 42100.42600.46700.62300.64000.155700.2152600 | TOILET DADO TILE FIXING | 9d | 2026-05-08 | 2026-05-16 | 329 |  | BAGALURU -P2 | 9639066 |
| 342 | 42100.42600.46700.62300.64000.155700.2152700 | FLAT FLOORING | 9d | 2026-05-17 | 2026-05-25 | 341 |  | BAGALURU -P2 | 9639076 |
| 343 | 42100.42600.46700.62300.64000.155700.2152800 | CORNICE WORKS | 9d | 2026-05-26 | 2026-06-03 | 342 |  | BAGALURU -P2 | 9639086 |
| 344 | 42100.42600.46700.62300.64000.155700.2152900 | INTERNAL PAINTING - PUTTY / PRIMER APPLICATION | 9d | 2026-06-22 | 2026-06-30 | 343FS+18d |  | BAGALURU -P2 | 9639096 |
| 345 | 42100.42600.46700.62300.64000.155700.2153000 | WINDOW FIXING | 9d | 2026-07-01 | 2026-07-09 | 344 |  | BAGALURU -P2 | 9639106 |
| 346 | 42100.42600.46700.62300.64000.155700.2153100 | INTERNAL PAINTING - 1ST COAT | 15d | 2026-09-08 | 2026-09-22 | 345FS+60d |  | BAGALURU -P2 | 9639116 |
| 347 | 42100.42600.46700.62300.64000.155700.2153200 | INTERNAL DOOR FIXING | 15d | 2026-09-23 | 2026-10-07 | 346 |  | BAGALURU -P2 | 9639126 |
| 348 | 42100.42600.46700.62300.64000.155700.2153300 | WIRING & SWITCH PLATE FIXING | 10d | 2026-10-08 | 2026-10-17 | 347 |  | BAGALURU -P2 | 9639136 |
| 349 | 42100.42600.46700.62300.64000.155700.2153400 | TOILET FALSE CEILING | 15d | 2026-12-25 | 2027-01-08 | 348FS+68d |  | BAGALURU -P2 | 9639146 |
| 350 | 42100.42600.46700.62300.64000.155700.2153500 | CP & SANITARY FIXING | 10d | 2027-01-09 | 2027-01-18 | 349 |  | BAGALURU -P2 | 9639156 |
| 351 | 42100.42600.46700.62300.64000.155700.2153600 | FINAL COAT PAINT | 12d | 2027-01-19 | 2027-01-30 | 350 |  | BAGALURU -P2 | 9639166 |

| ID | WBS | Task | Duration | Start | Finish | Predecessors | Constraint | Calendar | Unique_Task_ID |
| --- | --- | --- | --- | --- | --- | --- | --- | --- | --- |
| 352 | 42100.42600.46700.62300.131100 | **Lobby Finishes** | 536d | 2026-03-27 | 2028-04-14 |  | start no earlier than 2026-03-27 |  | 9548236 |
| 353 | 42100.42600.46700.62300.131100.858600 | STAIRCASE RAILING | 150d | 2026-03-27 | 2026-08-23 | 59 |  | BAGALURU -P2 | 9548606 |
| 354 | 42100.42600.46700.62300.131100.858700 | LIFT BLOCK WORK | 120d | 2026-08-24 | 2026-12-21 | 353 |  | BAGALURU -P2 | 9548616 |
| 355 | 42100.42600.46700.62300.131100.858800 | FIRE RATED DOORs | 90d | 2026-12-22 | 2027-03-21 | 354 |  | BAGALURU -P2 | 9548626 |
| 356 | 42100.42600.46700.62300.131100.858900 | LOBBY FLOORING WORK | 120d | 2027-01-21 | 2027-05-20 | 355SS+30d |  | BAGALURU -P2 | 9548636 |
| 357 | 42100.42600.46700.62300.131100.859000 | STAIRCASE TILING | 120d | 2027-02-20 | 2027-06-19 | 356SS+30d |  | BAGALURU -P2 | 9548646 |
| 358 | 42100.42600.46700.62300.131100.859100 | PUTTY + PRIMER | 120d | 2027-03-22 | 2027-07-19 | 357SS+30d |  | BAGALURU -P2 | 9548656 |
| 359 | 42100.42600.46700.62300.131100.859200 | False ceiling & 1ST COAT PAINTING | 120d | 2027-04-21 | 2027-08-18 | 358SS+30d |  | BAGALURU -P2 | 9548666 |
| 360 | 42100.42600.46700.62300.131100.859300 | FINAL COAT PAINT | 90d | 2027-11-17 | 2028-02-14 | 359FS+90d |  | BAGALURU -P2 | 9548676 |
| 361 | 42100.42600.46700.62300.131100.859400 | CLEANING | 30d | 2028-02-15 | 2028-03-15 | 360 |  | BAGALURU -P2 | 9548686 |
| 362 | 42100.42600.46700.62300.131100.859500 | Terrace glass railing works | 45d | 2028-02-15 | 2028-03-30 | 360 |  | BAGALURU -P2 | 9548696 |
| 363 | 42100.42600.46700.62300.131100.859600 | Common area False ceiling | 30d | 2028-02-15 | 2028-03-15 | 360 |  | BAGALURU -P2 | 9548706 |
| 364 | 42100.42600.46700.62300.131100.859700 | Entrance Lobby (excl. MEP Works) | 60d | 2028-02-15 | 2028-04-14 | 360 |  | BAGALURU -P2 | 9548716 |
| 365 | 42100.42600.46700.62300.166400 | **MEP works** | 420d | 2026-04-29 | 2027-12-07 |  | start no earlier than 2026-04-29 |  | 9548246 |
| 366 | 42100.42600.46700.62300.166400.483700 | **Lift Works** | 165d | 2026-12-22 | 2027-06-04 |  | start no earlier than 2026-12-22 | BAGALURU -P2 | 9548576 |
| 367 | 42100.42600.46700.62300.166400.483700.2153700 | Lift Suppply | 45d | 2026-12-22 | 2027-02-04 | 354 |  | BAGALURU -P2 | 9552806 |
| 368 | 42100.42600.46700.62300.166400.483700.2153800 | Lift installation work | 120d | 2027-02-05 | 2027-06-04 | 367 |  | BAGALURU -P2 | 9552816 |
| 369 | 42100.42600.46700.62300.166400.382100 | **Plumbing works** | 570d | 2026-05-17 | 2027-12-07 |  | start no earlier than 2026-05-17 | BAGALURU -P2 | 9548546 |
| 370 | 42100.42600.46700.62300.166400.382100.2153900 | Shaft Plumbing | 120d | 2026-05-17 | 2026-09-13 | 166 |  | BAGALURU -P2 | 9552826 |
| 371 | 42100.42600.46700.62300.166400.382100.2154000 | Terrace Plumbing | 90d | 2026-07-16 | 2026-10-13 | 370FF+30d |  | BAGALURU -P2 | 9552836 |
| 372 | 42100.42600.46700.62300.166400.382100.2154100 | T & C | 90d | 2027-09-09 | 2027-12-07 | 370FS+360d |  | BAGALURU -P2 | 9552846 |
| 373 | 42100.42600.46700.62300.166400.382200 | **Fire Fighting works** | 588d | 2026-04-29 | 2027-12-07 |  | start no earlier than 2026-04-29 | BAGALURU -P2 | 9548566 |
| 374 | 42100.42600.46700.62300.166400.382200.2154200 | Shaft works | 60d | 2026-04-29 | 2026-06-27 | 163 |  | BAGALURU -P2 | 9552856 |
| 375 | 42100.42600.46700.62300.166400.382200.2154300 | FAPA works | 7.5d | 2026-06-29 | 2026-07-07 | 374 |  | Indian Calendar | 9552857 |
| 376 | 42100.42600.46700.62300.166400.382200.2154400 | T & C | 90d | 2027-09-09 | 2027-12-07 | 372FF |  | BAGALURU -P2 | 9552866 |

| ID | WBS | Task | Duration | Start | Finish | Predecessors | Constraint | Calendar | Unique_Task_ID |
| --- | --- | --- | --- | --- | --- | --- | --- | --- | --- |
| 377 | 42100.42600.46700.62300.166400.382300 | **Electrical works** | 390d | 2026-11-13 | 2027-12-07 |  | start no earlier than 2026-11-13 | BAGALURU -P2 | 9548556 |
| 378 | 42100.42600.46700.62300.166400.382300.2154500 | Basement & Shaft electrical | 90d | 2026-11-13 | 2027-02-10 | 370FS+60d |  | BAGALURU -P2 | 9552876 |
| 379 | 42100.42600.46700.62300.166400.382300.2154600 | Basement & common area lighting | 30d | 2027-02-11 | 2027-03-12 | 378 |  | BAGALURU -P2 | 9552886 |
| 380 | 42100.42600.46700.62300.166400.382300.2154700 | T & C | 90d | 2027-09-09 | 2027-12-07 | 372FF |  | BAGALURU -P2 | 9552896 |
| 381 | 42100.42600.46700.52700 | **Customer milestone T-1** | 987d | 2025-09-11 | 2028-11-04 |  | start no earlier than 2025-09-11 | Indian Calendar | 9554666 |
| 382 | 42100.42600.46700.52700.816300 | Commencement of Ground Floor - A | 1d | 2025-09-11 | 2025-09-11 | 22 |  | Indian Calendar | 9557036 |
| 383 | 42100.42600.46700.52700.3336000 | Commencement of Ground Floor - B | 1d | 2025-12-01 | 2025-12-01 |  | start no earlier than 2025-12-01 | Indian Calendar | 10032379 |
| 384 | 42100.42600.46700.52700.3335900 | Commencement of Ground Floor - C | 1d | 2025-12-01 | 2025-12-01 |  | start no earlier than 2025-12-01 | Indian Calendar | 10032369 |
| 385 | 42100.42600.46700.52700.3335800 | Commencement of Ground Floor - D | 1d | 2025-12-01 | 2025-12-01 |  | start no earlier than 2025-12-01 | Indian Calendar | 10032359 |
| 386 | 42100.42600.46700.52700.3335700 | Commencement of Ground Floor - E | 1d | 2025-12-01 | 2025-12-01 |  | start no earlier than 2025-12-01 | Indian Calendar | 10032349 |
| 387 | 42100.42600.46700.52700.816400 | Commencement of 3rd Floor A | 1d | 2025-12-06 | 2025-12-06 | 35 |  | Indian Calendar | 9557046 |
| 388 | 42100.42600.46700.52700.3335600 | Commencement of 3rd Floor B | 1d | 2025-12-13 | 2025-12-13 |  | start no earlier than 2025-12-13 | Indian Calendar | 10032429 |
| 389 | 42100.42600.46700.52700.3335500 | Commencement of 3rd Floor C | 1d | 2025-12-13 | 2025-12-13 |  | start no earlier than 2025-12-13 | Indian Calendar | 10032419 |
| 390 | 42100.42600.46700.52700.3335400 | Commencement of 3rd Floor D | 1d | 2025-12-13 | 2025-12-13 |  | start no earlier than 2025-12-13 | Indian Calendar | 10032409 |
| 391 | 42100.42600.46700.52700.3335300 | Commencement of 3rd Floor E | 1d | 2025-12-13 | 2025-12-13 |  | start no earlier than 2025-12-13 | Indian Calendar | 10032399 |
| 392 | 42100.42600.46700.52700.816500 | Commencement of 6th Floor A | 1d | 2026-01-02 | 2026-01-02 | 41 |  | Indian Calendar | 9557066 |
| 393 | 42100.42600.46700.52700.3335200 | Commencement of 6th Floor B | 1d | 2026-01-09 | 2026-01-09 |  | start no earlier than 2026-01-09 | Indian Calendar | 10032469 |
| 394 | 42100.42600.46700.52700.3335100 | Commencement of 6th Floor C | 1d | 2026-01-09 | 2026-01-09 |  | start no earlier than 2026-01-09 | Indian Calendar | 10032459 |
| 395 | 42100.42600.46700.52700.3335000 | Commencement of 6th Floor D | 1d | 2026-01-09 | 2026-01-09 |  | start no earlier than 2026-01-09 | Indian Calendar | 10032449 |
| 396 | 42100.42600.46700.52700.3334900 | Commencement of 6th Floor E | 1d | 2026-01-09 | 2026-01-09 |  | start no earlier than 2026-01-09 | Indian Calendar | 10032439 |
| 397 | 42100.42600.46700.52700.816600 | Commencement of 9th Floor A | 1d | 2026-01-29 | 2026-01-29 | 47 |  | Indian Calendar | 9557076 |
| 398 | 42100.42600.46700.52700.3334800 | Commencement of 9th Floor B | 1d | 2026-02-05 | 2026-02-05 |  | start no earlier than 2026-02-05 | Indian Calendar | 10032509 |
| 399 | 42100.42600.46700.52700.3334700 | Commencement of 9th Floor C | 1d | 2026-02-05 | 2026-02-05 |  | start no earlier than 2026-02-05 | Indian Calendar | 10032499 |
| 400 | 42100.42600.46700.52700.3334600 | Commencement of 9th Floor D | 1d | 2026-02-05 | 2026-02-05 |  | start no earlier than 2026-02-05 | Indian Calendar | 10032489 |
| 401 | 42100.42600.46700.52700.3334500 | Commencement of 9th Floor E | 1d | 2026-02-05 | 2026-02-05 |  | start no earlier than 2026-02-05 | Indian Calendar | 10032479 |
| 402 | 42100.42600.46700.52700.816700 | Commencement of 12th Floor A | 1d | 2026-02-25 | 2026-02-25 | 53 |  | Indian Calendar | 9557086 |
| 403 | 42100.42600.46700.52700.3334400 | Commencement of 12th Floor B | 1d | 2026-03-04 | 2026-03-04 |  | start no earlier than 2026-03-04 | Indian Calendar | 10032549 |
| 404 | 42100.42600.46700.52700.3334300 | Commencement of 12th Floor C | 1d | 2026-03-04 | 2026-03-04 |  | start no earlier than 2026-03-04 | Indian Calendar | 10032539 |
| 405 | 42100.42600.46700.52700.3334200 | Commencement of 12th Floor D | 1d | 2026-03-04 | 2026-03-04 |  | start no earlier than 2026-03-04 | Indian Calendar | 10032529 |
| 406 | 42100.42600.46700.52700.3334100 | Commencement of 12th Floor E | 1d | 2026-03-04 | 2026-03-04 |  | start no earlier than 2026-03-04 | Indian Calendar | 10032519 |
| 407 | 42100.42600.46700.52700.816800 | Commencement of Terrace | 1d | 2026-03-27 | 2026-03-27 | 59 |  | Indian Calendar | 9554966 |
| 408 | 42100.42600.46700.52700.3334000 | Commencement of Terrace | 1d | 2026-04-03 | 2026-04-03 |  | start no earlier than 2026-04-03 | Indian Calendar | 10037719 |
| 409 | 42100.42600.46700.52700.3333900 | Commencement of Terrace | 1d | 2026-04-03 | 2026-04-03 |  | start no earlier than 2026-04-03 | Indian Calendar | 10037709 |
| 410 | 42100.42600.46700.52700.3333800 | Commencement of Terrace | 1d | 2026-04-03 | 2026-04-03 |  | start no earlier than 2026-04-03 | Indian Calendar | 10037699 |
| 411 | 42100.42600.46700.52700.3333700 | Commencement of Terrace | 1d | 2026-04-03 | 2026-04-03 |  | start no earlier than 2026-04-03 | Indian Calendar | 10037689 |
| 412 | 42100.42600.46700.52700.816900 | Commencement of External Painting | 1d | 2026-10-24 | 2026-10-24 | 407FS+180d |  | Indian Calendar | 9554976 |
| 413 | 42100.42600.46700.52700.3333600 | Commencement of External Painting | 1d | 2026-10-31 | 2026-10-31 |  | start no earlier than 2026-10-31 | Indian Calendar | 10037759 |
| 414 | 42100.42600.46700.52700.3333500 | Commencement of External Painting | 1d | 2026-10-31 | 2026-10-31 |  | start no earlier than 2026-10-31 | Indian Calendar | 10037749 |
| 415 | 42100.42600.46700.52700.3333400 | Commencement of External Painting | 1d | 2026-10-31 | 2026-10-31 |  | start no earlier than 2026-10-31 | Indian Calendar | 10037739 |
| 416 | 42100.42600.46700.52700.3333300 | Commencement of External Painting | 1d | 2026-10-31 | 2026-10-31 |  | start no earlier than 2026-10-31 | Indian Calendar | 10037729 |
| 417 | 42100.42600.46700.52700.817000 | Receipt of Fire CC | 1d | 2027-05-28 | 2027-05-28 | 407FS+365d |  | Indian Calendar | 9554986 |
| 418 | 42100.42600.46700.52700.3333200 | Receipt of Fire CC | 1d | 2027-06-04 | 2027-06-04 |  | start no earlier than 2027-06-04 | Indian Calendar | 10037799 |
| 419 | 42100.42600.46700.52700.3333100 | Receipt of Fire CC | 1d | 2027-06-04 | 2027-06-04 |  | start no earlier than 2027-06-04 | Indian Calendar | 10037789 |
| 420 | 42100.42600.46700.52700.3333000 | Receipt of Fire CC | 1d | 2027-06-04 | 2027-06-04 |  | start no earlier than 2027-06-04 | Indian Calendar | 10037779 |
| 421 | 42100.42600.46700.52700.3332900 | Receipt of Fire CC | 1d | 2027-06-04 | 2027-06-04 |  | start no earlier than 2027-06-04 | Indian Calendar | 10037769 |
| 422 | 42100.42600.46700.52700.3332800 | Notice to possession (Tower specific) | 1d | 2028-11-04 | 2028-11-04 |  | start no earlier than 2028-11-04 | Indian Calendar | 10037839 |
| 423 | 42100.42600.46700.52700.3332700 | Notice to possession (Tower specific) | 1d | 2028-11-04 | 2028-11-04 |  | start no earlier than 2028-11-04 | Indian Calendar | 10037829 |
| 424 | 42100.42600.46700.52700.3332600 | Notice to possession (Tower specific) | 1d | 2028-11-04 | 2028-11-04 |  | start no earlier than 2028-11-04 | Indian Calendar | 10037819 |
| 425 | 42100.42600.46700.52700.3332500 | Notice to possession (Tower specific) | 1d | 2028-11-04 | 2028-11-04 |  | start no earlier than 2028-11-04 | Indian Calendar | 10037809 |
| 426 | 42100.42600.46700.52700.817100 | Notice to possession (Tower specific) | 1d | 2028-10-28 | 2028-10-28 | 417SS+445d |  | Indian Calendar | 9554996 |

| ID | WBS | Task | Duration | Start | Finish | Predecessors | Constraint | Calendar | Unique_Task_ID |
| --- | --- | --- | --- | --- | --- | --- | --- | --- | --- |
| 427 | 42100.42600.46700.164100 | **Handing Over** | 45d | 2027-02-01 | 2027-03-24 |  | start no earlier than 2027-02-01 | Indian Calendar | 9554656 |
| 428 | 42100.42600.46700.164100.168500 | **Floor 1** | 45d | 2027-02-01 | 2027-03-24 |  | start no earlier than 2027-02-01 | Indian Calendar | 9554676 |
| 429 | 42100.42600.46700.164100.168500.859800 | GLPL Snagging | 15d | 2027-02-01 | 2027-02-17 | 351 |  | Indian Calendar | 9555006 |
| 430 | 42100.42600.46700.164100.168500.859900 | GPLPL Desnagging | 30d | 2027-02-18 | 2027-03-24 | 429 |  | Indian Calendar | 9555016 |
| 431 | 42100.42600.46700.164100.168500.860000 | Gypsum hold 10% | 30d | 2027-02-18 | 2027-03-24 | 430FF |  | Indian Calendar | 9555026 |
| 432 | 42100.42600.46700.164100.168500.860100 | Flooring hold 10% | 30d | 2027-02-18 | 2027-03-24 | 430FF |  | Indian Calendar | 9555036 |
| 433 | 42100.42600.46700.164100.168500.860200 | Painting hold 10% | 30d | 2027-02-18 | 2027-03-24 | 430FF |  | Indian Calendar | 9555046 |
| 434 | 42100.42600.46700.164100.168500.860300 | Doors hold 10% | 30d | 2027-02-18 | 2027-03-24 | 430FF |  | Indian Calendar | 9555056 |
| 435 | 42100.42600.46700.164100.168500.860400 | Windows hold 10% | 30d | 2027-02-18 | 2027-03-24 | 430FF |  | Indian Calendar | 9555066 |
| 436 | 42100.42600.46800 | **TOWER 2** | 1315d | 2025-04-09 | 2028-11-13 |  | start no earlier than 2025-04-09 |  | 8853615 |
| 437 | 42100.42600.46800.492300 | **Earth work** | 482d | 2025-04-09 | 2026-08-03 |  | start no earlier than 2025-04-09 | BAGALURU -P2 | 9670306 |
| 438 | 42100.42600.46800.492300.817200 | Mass Excavation | 94d | 2025-04-09 | 2025-07-11 | 6SS+8d |  | BAGALURU -P2 | 9670566 |
| 439 | 42100.42600.46800.492300.817300 | Backfilling | 87d | 2026-05-09 | 2026-08-03 | 1303 |  | BAGALURU -P2 | 9670576 |
| 440 | 42100.42600.46800.70100 | **Substructure works (Works up to plinth)** | 101d | 2025-07-12 | 2025-10-20 |  | start no earlier than 2025-07-12 | BAGALURU -P2 | 9668506 |
| 441 | 42100.42600.46800.70100.151700 | **Civil works (Shell & Core basement)** | 101d | 2025-07-12 | 2025-10-20 |  | start no earlier than 2025-07-12 | BAGALURU -P2 | 9668526 |
| 442 | 42100.42600.46800.70100.151700.342000 | **Raft works** | 26d | 2025-07-12 | 2025-08-06 |  | start no earlier than 2025-07-12 | BAGALURU -P2 | 9670276 |
| 443 | 42100.42600.46800.70100.151700.342000.391400 | **RCC Works - Tower area** | 26d | 2025-07-12 | 2025-08-06 |  | start no earlier than 2025-07-12 | BAGALURU -P2 | 9670346 |
| 444 | 42100.42600.46800.70100.151700.342000.391400.2556800 | Pocket Excavation | 16d | 2025-07-12 | 2025-07-27 | 438 |  | BAGALURU -P2 | 9675586 |
| 445 | 42100.42600.46800.70100.151700.342000.391400.2556900 | Footing PCC | 16d | 2025-07-12 | 2025-07-27 | 444SS |  | BAGALURU -P2 | 9675596 |
| 446 | 42100.42600.46800.70100.151700.342000.391400.2557000 | Footing / Raft works | 26d | 2025-07-12 | 2025-08-06 | 445SS |  | BAGALURU -P2 | 9675606 |
| 447 | 42100.42600.46800.70100.151700.166000 | **Basements** | 75d | 2025-08-07 | 2025-10-20 |  | start no earlier than 2025-08-07 | BAGALURU -P2 | 9668706 |
| 448 | 42100.42600.46800.70100.151700.166000.496900 | **Basement 1** | 25d | 2025-08-07 | 2025-08-31 |  | start no earlier than 2025-08-07 | BAGALURU -P2 | 9670356 |
| 449 | 42100.42600.46800.70100.151700.166000.496900.2557100 | columns | 16d | 2025-08-07 | 2025-08-22 | 446 |  | BAGALURU -P2 | 9675616 |
| 450 | 42100.42600.46800.70100.151700.166000.496900.2557200 | Beam & slab | 21d | 2025-08-11 | 2025-08-31 | 449SS+4d |  | BAGALURU -P2 | 9675626 |

Notes:
- 437: 2 Months for Excavation

| ID | WBS | Task | Duration | Start | Finish | Predecessors | Constraint | Calendar | Unique_Task_ID |
| --- | --- | --- | --- | --- | --- | --- | --- | --- | --- |
| 451 | 42100.42600.46800.70100.151700.166000.369000 | **Ground floor slab** | 25d | 2025-09-01 | 2025-09-25 |  | start no earlier than 2025-09-01 | BAGALURU -P2 | 9670296 |
| 452 | 42100.42600.46800.70100.151700.166000.369000.477300 | **RCC Works - Tower area** | 25d | 2025-09-01 | 2025-09-25 |  | start no earlier than 2025-09-01 |  | 9670376 |
| 453 | 42100.42600.46800.70100.151700.166000.369000.477300.3328000 | columns | 16d | 2025-09-01 | 2025-09-16 | 450 |  |  | 9676686 |
| 454 | 42100.42600.46800.70100.151700.166000.369000.477300.3328100 | Beam & slab | 22d | 2025-09-04 | 2025-09-25 | 453SS+3d |  |  | 9676696 |
| 455 | 42100.42600.46800.70100.151700.166000.369100 | **1st floor slab** | 25d | 2025-09-26 | 2025-10-20 |  | start no earlier than 2025-09-26 | BAGALURU -P2 | 9670286 |
| 456 | 42100.42600.46800.70100.151700.166000.369100.477400 | **RCC Works - Tower area** | 25d | 2025-09-26 | 2025-10-20 |  | start no earlier than 2025-09-26 |  | 9670386 |
| 457 | 42100.42600.46800.70100.151700.166000.369100.477400.3328200 | columns | 16d | 2025-09-26 | 2025-10-11 | 454 |  |  | 9676706 |
| 458 | 42100.42600.46800.70100.151700.166000.369100.477400.3328300 | Beam & slab | 22d | 2025-09-29 | 2025-10-20 | 457SS+3d |  |  | 9676716 |
| 459 | 42100.42600.46800.62400 | **Superstructure Works** | 922d | 2025-10-21 | 2028-04-29 |  | start no earlier than 2025-10-21 |  | 9668446 |
| 460 | 42100.42600.46800.62400.66500 | **RCC Slab works** | 172d | 2025-10-21 | 2026-04-10 |  | start no earlier than 2025-10-21 | Whitefield - STRUCTURE | 9668486 |
| 461 | 42100.42600.46800.62400.66500.66900 | **Slab RCC works** | 172d | 2025-10-21 | 2026-04-10 |  | start no earlier than 2025-10-21 | Whitefield - STRUCTURE | 9668496 |
| 462 | 42100.42600.46800.62400.66500.66900.514800 | **2nd floor slab (conventional floor)** | 25d | 2025-10-21 | 2025-11-14 |  | start no earlier than 2025-10-21 |  | 9670496 |
| 463 | 42100.42600.46800.62400.66500.66900.514800.2557300 | 2nd floor slab | 25d | 2025-10-21 | 2025-11-14 | 458 |  |  | 9675636 |
| 464 | 42100.42600.46800.62400.66500.66900.514700 | **3rd floor slab (1st setting)** | 21d | 2025-11-15 | 2025-12-05 |  | start no earlier than 2025-11-15 |  | 9670466 |
| 465 | 42100.42600.46800.62400.66500.66900.514700.2557400 | 3rd floor slab | 21d | 2025-11-15 | 2025-12-05 | 463 |  |  | 9675646 |
| 466 | 42100.42600.46800.62400.66500.66900.514600 | **4th floor slab** | 15d | 2025-12-06 | 2025-12-20 |  | start no earlier than 2025-12-06 |  | 9670406 |
| 467 | 42100.42600.46800.62400.66500.66900.514600.2557500 | 4th floor slab | 15d | 2025-12-06 | 2025-12-20 | 465 |  |  | 9675656 |
| 468 | 42100.42600.46800.62400.66500.66900.514500 | **5th floor slab** | 9d | 2025-12-21 | 2025-12-29 |  | start no earlier than 2025-12-21 |  | 9670416 |
| 469 | 42100.42600.46800.62400.66500.66900.514500.2557600 | 5th floor slab | 9d | 2025-12-21 | 2025-12-29 | 467 |  |  | 9675666 |
| 470 | 42100.42600.46800.62400.66500.66900.514400 | **6th floor slab** | 9d | 2025-12-30 | 2026-01-07 |  | start no earlier than 2025-12-30 |  | 9670426 |
| 471 | 42100.42600.46800.62400.66500.66900.514400.2557700 | 6th floor slab | 9d | 2025-12-30 | 2026-01-07 | 469 |  |  | 9675676 |
| 472 | 42100.42600.46800.62400.66500.66900.514300 | **7th floor slab** | 9d | 2026-01-08 | 2026-01-16 |  | start no earlier than 2026-01-08 |  | 9670436 |
| 473 | 42100.42600.46800.62400.66500.66900.514300.2557800 | 7th floor slab | 9d | 2026-01-08 | 2026-01-16 | 471 |  |  | 9675686 |
| 474 | 42100.42600.46800.62400.66500.66900.514200 | **8th floor slab** | 9d | 2026-01-17 | 2026-01-25 |  | start no earlier than 2026-01-17 |  | 9670396 |
| 475 | 42100.42600.46800.62400.66500.66900.514200.2557900 | 8th floor slab | 9d | 2026-01-17 | 2026-01-25 | 473 |  |  | 9675696 |

Notes:
- 462: AVg Slab Cycle of 21 days
- 464: AVg Slab Cycle of 21 days
- 466: AVg Slab Cycle of 21 days
- 468: AVg Slab Cycle of 21 days
- 470: AVg Slab Cycle of 21 days
- 472: AVg Slab Cycle of 21 days
- 474: AVg Slab Cycle of 21 days

| ID | WBS | Task | Duration | Start | Finish | Predecessors | Constraint | Calendar | Unique_Task_ID |
| --- | --- | --- | --- | --- | --- | --- | --- | --- | --- |
| 476 | 42100.42600.46800.62400.66500.66900.514100 | **9th floor slab** | 9d | 2026-01-26 | 2026-02-03 |  | start no earlier than 2026-01-26 |  | 9670476 |
| 477 | 42100.42600.46800.62400.66500.66900.514100.2558000 | 9th floor slab | 9d | 2026-01-26 | 2026-02-03 | 475 |  |  | 9675706 |
| 478 | 42100.42600.46800.62400.66500.66900.514000 | **10th floor slab** | 9d | 2026-02-04 | 2026-02-12 |  | start no earlier than 2026-02-04 |  | 9670556 |
| 479 | 42100.42600.46800.62400.66500.66900.514000.2558100 | 10th floor slab | 9d | 2026-02-04 | 2026-02-12 | 477 |  |  | 9675716 |
| 480 | 42100.42600.46800.62400.66500.66900.513900 | **11th floor slab** | 9d | 2026-02-13 | 2026-02-21 |  | start no earlier than 2026-02-13 |  | 9670546 |
| 481 | 42100.42600.46800.62400.66500.66900.513900.2558200 | 11th floor slab | 9d | 2026-02-13 | 2026-02-21 | 479 |  |  | 9675726 |
| 482 | 42100.42600.46800.62400.66500.66900.513800 | **12th floor slab** | 9d | 2026-02-22 | 2026-03-02 |  | start no earlier than 2026-02-22 |  | 9670456 |
| 483 | 42100.42600.46800.62400.66500.66900.513800.2558300 | 12th floor slab | 9d | 2026-02-22 | 2026-03-02 | 481 |  |  | 9675736 |
| 484 | 42100.42600.46800.62400.66500.66900.513700 | **13th floor slab** | 9d | 2026-03-03 | 2026-03-11 |  | start no earlier than 2026-03-03 |  | 9670486 |
| 485 | 42100.42600.46800.62400.66500.66900.513700.2558400 | 13th floor slab | 9d | 2026-03-03 | 2026-03-11 | 483 |  |  | 9675746 |
| 486 | 42100.42600.46800.62400.66500.66900.513600 | **14th floor slab** | 9d | 2026-03-12 | 2026-03-20 |  | start no earlier than 2026-03-12 |  | 9670516 |
| 487 | 42100.42600.46800.62400.66500.66900.513600.2558500 | 14th floor slab | 9d | 2026-03-12 | 2026-03-20 | 485 |  |  | 9675756 |
| 488 | 42100.42600.46800.62400.66500.66900.513500 | **15th floor slab** | 9d | 2026-03-21 | 2026-03-29 |  | start no earlier than 2026-03-21 |  | 9670446 |
| 489 | 42100.42600.46800.62400.66500.66900.513500.2558600 | 15th floor slab | 9d | 2026-03-21 | 2026-03-29 | 487 |  |  | 9675766 |
| 490 | 42100.42600.46800.62400.66500.66900.513400 | **terrace floor** | 12d | 2026-03-30 | 2026-04-10 |  | start no earlier than 2026-03-30 |  | 9670506 |
| 491 | 42100.42600.46800.62400.66500.66900.513400.2558700 | terrace slab | 12d | 2026-03-30 | 2026-04-10 | 489 |  |  | 9675776 |
| 492 | 42100.42600.46800.62400.65100 | **Civil Finishing works (Brick work, Plaster,conduiting, concled plumbing, waterproofing)** | 175d | 2025-12-21 | 2026-08-23 |  | start no earlier than 2025-12-21 | Yashwantpur Finshing | 9668466 |
| 493 | 42100.42600.46800.62400.65100.65700 | **Flat finishing works** | 162d | 2025-12-21 | 2026-05-31 |  | start no earlier than 2025-12-21 | BAGALURU -P2 | 9668476 |
| 494 | 42100.42600.46800.62400.65100.65700.271400 | **Floor 1** | 31d | 2025-12-21 | 2026-01-20 |  | start no earlier than 2025-12-21 | BAGALURU -P2 | 9668736 |
| 495 | 42100.42600.46800.62400.65100.65700.271400.2558800 | POST POUR CLEARENCE | 9d | 2025-12-21 | 2025-12-29 | 467 |  | BAGALURU -P2 | 9675786 |
| 496 | 42100.42600.46800.62400.65100.65700.271400.2558900 | BALCONY RAILING FIXING | 9d | 2025-12-30 | 2026-01-07 | 495 |  | BAGALURU -P2 | 9675796 |
| 497 | 42100.42600.46800.62400.65100.65700.271400.2559000 | FPS WORKS | 7d | 2025-12-27 | 2026-01-02 | 495FS-3d |  | BAGALURU -P2 | 9675806 |
| 498 | 42100.42600.46800.62400.65100.65700.271400.2559100 | GYPSUM PLASTR APPLICATION | 9d | 2025-12-30 | 2026-01-07 | 497FS-4d |  | BAGALURU -P2 | 9675816 |
| 499 | 42100.42600.46800.62400.65100.65700.271400.2559200 | CONCEALED PLUMBING | 9d | 2026-01-03 | 2026-01-11 | 497 |  | BAGALURU -P2 | 9675826 |
| 500 | 42100.42600.46800.62400.65100.65700.271400.2559300 | WATERPROOFING WORK FOR TOILETS, KITCHEN SUNK & PLANTERS | 9d | 2026-01-12 | 2026-01-20 | 499 |  | BAGALURU -P2 | 9675836 |

Notes:
- 476: AVg Slab Cycle of 21 days
- 478: AVg Slab Cycle of 21 days
- 480: AVg Slab Cycle of 21 days
- 482: AVg Slab Cycle of 21 days
- 484: AVg Slab Cycle of 21 days
- 486: AVg Slab Cycle of 21 days
- 488: AVg Slab Cycle of 21 days
- 490: AVg Slab Cycle of 21 days

| ID | WBS | Task | Duration | Start | Finish | Predecessors | Constraint | Calendar | Unique_Task_ID |
| --- | --- | --- | --- | --- | --- | --- | --- | --- | --- |
| 501 | 42100.42600.46800.62400.65100.65700.266900 | **Floor 2** | 31d | 2025-12-30 | 2026-01-29 |  | start no earlier than 2025-12-30 | BAGALURU -P2 | 9670126 |
| 502 | 42100.42600.46800.62400.65100.65700.266900.2559400 | POST POUR CLEARENCE | 9d | 2025-12-30 | 2026-01-07 | 495 |  | BAGALURU -P2 | 9675846 |
| 503 | 42100.42600.46800.62400.65100.65700.266900.2559500 | BALCONY RAILING FIXING | 9d | 2026-01-08 | 2026-01-16 | 502 |  | BAGALURU -P2 | 9675856 |
| 504 | 42100.42600.46800.62400.65100.65700.266900.2559600 | FPS WORKS | 7d | 2026-01-05 | 2026-01-11 | 502FS-3d |  | BAGALURU -P2 | 9675866 |
| 505 | 42100.42600.46800.62400.65100.65700.266900.2559700 | GYPSUM PLASTR APPLICATION | 9d | 2026-01-08 | 2026-01-16 | 504FS-4d |  | BAGALURU -P2 | 9675876 |
| 506 | 42100.42600.46800.62400.65100.65700.266900.2559800 | CONCEALED PLUMBING | 9d | 2026-01-12 | 2026-01-20 | 504 |  | BAGALURU -P2 | 9675886 |
| 507 | 42100.42600.46800.62400.65100.65700.266900.2559900 | WATERPROOFING WORK FOR TOILETS, KITCHEN SUNK & PLANTERS | 9d | 2026-01-21 | 2026-01-29 | 506 |  | BAGALURU -P2 | 9675896 |
| 508 | 42100.42600.46800.62400.65100.65700.262900 | **Floor 3** | 31d | 2026-01-08 | 2026-02-07 |  | start no earlier than 2026-01-08 | BAGALURU -P2 | 9670146 |
| 509 | 42100.42600.46800.62400.65100.65700.262900.2560000 | POST POUR CLEARENCE | 9d | 2026-01-08 | 2026-01-16 | 502 |  | BAGALURU -P2 | 9675906 |
| 510 | 42100.42600.46800.62400.65100.65700.262900.2560100 | BALCONY RAILING FIXING | 9d | 2026-01-17 | 2026-01-25 | 509 |  | BAGALURU -P2 | 9675916 |
| 511 | 42100.42600.46800.62400.65100.65700.262900.2560200 | FPS WORKS | 7d | 2026-01-14 | 2026-01-20 | 509FS-3d |  | BAGALURU -P2 | 9675926 |
| 512 | 42100.42600.46800.62400.65100.65700.262900.2560300 | GYPSUM PLASTR APPLICATION | 9d | 2026-01-17 | 2026-01-25 | 511FS-4d |  | BAGALURU -P2 | 9675936 |
| 513 | 42100.42600.46800.62400.65100.65700.262900.2560400 | CONCEALED PLUMBING | 9d | 2026-01-21 | 2026-01-29 | 511 |  | BAGALURU -P2 | 9675946 |
| 514 | 42100.42600.46800.62400.65100.65700.262900.2560500 | WATERPROOFING WORK FOR TOILETS, KITCHEN SUNK & PLANTERS | 9d | 2026-01-30 | 2026-02-07 | 513 |  | BAGALURU -P2 | 9675956 |
| 515 | 42100.42600.46800.62400.65100.65700.257700 | **Floor 4** | 31d | 2026-01-17 | 2026-02-16 |  | start no earlier than 2026-01-17 | BAGALURU -P2 | 9670156 |
| 516 | 42100.42600.46800.62400.65100.65700.257700.2560600 | POST POUR CLEARENCE | 9d | 2026-01-17 | 2026-01-25 | 509 |  | BAGALURU -P2 | 9675966 |
| 517 | 42100.42600.46800.62400.65100.65700.257700.2560700 | BALCONY RAILING FIXING | 9d | 2026-01-26 | 2026-02-03 | 516 |  | BAGALURU -P2 | 9675976 |
| 518 | 42100.42600.46800.62400.65100.65700.257700.2560800 | FPS WORKS | 7d | 2026-01-23 | 2026-01-29 | 516FS-3d |  | BAGALURU -P2 | 9675986 |
| 519 | 42100.42600.46800.62400.65100.65700.257700.2560900 | GYPSUM PLASTR APPLICATION | 9d | 2026-01-26 | 2026-02-03 | 518FS-4d |  | BAGALURU -P2 | 9675996 |
| 520 | 42100.42600.46800.62400.65100.65700.257700.2561000 | CONCEALED PLUMBING | 9d | 2026-01-30 | 2026-02-07 | 518 |  | BAGALURU -P2 | 9676006 |
| 521 | 42100.42600.46800.62400.65100.65700.257700.2561100 | WATERPROOFING WORK FOR TOILETS, KITCHEN SUNK & PLANTERS | 9d | 2026-02-08 | 2026-02-16 | 520 |  | BAGALURU -P2 | 9676016 |
| 522 | 42100.42600.46800.62400.65100.65700.254100 | **Floor 5** | 31d | 2026-01-26 | 2026-02-25 |  | start no earlier than 2026-01-26 | BAGALURU -P2 | 9670166 |
| 523 | 42100.42600.46800.62400.65100.65700.254100.2561200 | POST POUR CLEARENCE | 9d | 2026-01-26 | 2026-02-03 | 516 |  | BAGALURU -P2 | 9676026 |
| 524 | 42100.42600.46800.62400.65100.65700.254100.2561300 | BALCONY RAILING FIXING | 9d | 2026-02-04 | 2026-02-12 | 523 |  | BAGALURU -P2 | 9676036 |
| 525 | 42100.42600.46800.62400.65100.65700.254100.2561400 | FPS WORKS | 7d | 2026-02-01 | 2026-02-07 | 523FS-3d |  | BAGALURU -P2 | 9676046 |
| 526 | 42100.42600.46800.62400.65100.65700.254100.2561500 | GYPSUM PLASTR APPLICATION | 9d | 2026-02-04 | 2026-02-12 | 525FS-4d |  | BAGALURU -P2 | 9676056 |
| 527 | 42100.42600.46800.62400.65100.65700.254100.2561600 | CONCEALED PLUMBING | 9d | 2026-02-08 | 2026-02-16 | 525 |  | BAGALURU -P2 | 9676066 |
| 528 | 42100.42600.46800.62400.65100.65700.254100.2561700 | WATERPROOFING WORK FOR TOILETS, KITCHEN SUNK & PLANTERS | 9d | 2026-02-17 | 2026-02-25 | 527 |  | BAGALURU -P2 | 9676076 |

| ID | WBS | Task | Duration | Start | Finish | Predecessors | Constraint | Calendar | Unique_Task_ID |
| --- | --- | --- | --- | --- | --- | --- | --- | --- | --- |
| 529 | 42100.42600.46800.62400.65100.65700.253300 | **Floor 6** | 31d | 2026-02-04 | 2026-03-06 |  | start no earlier than 2026-02-04 | BAGALURU -P2 | 9670176 |
| 530 | 42100.42600.46800.62400.65100.65700.253300.2561800 | POST POUR CLEARENCE | 9d | 2026-02-04 | 2026-02-12 | 523 |  | BAGALURU -P2 | 9676086 |
| 531 | 42100.42600.46800.62400.65100.65700.253300.2561900 | BALCONY RAILING FIXING | 9d | 2026-02-13 | 2026-02-21 | 530 |  | BAGALURU -P2 | 9676096 |
| 532 | 42100.42600.46800.62400.65100.65700.253300.2562000 | FPS WORKS | 7d | 2026-02-10 | 2026-02-16 | 530FS-3d |  | BAGALURU -P2 | 9676106 |
| 533 | 42100.42600.46800.62400.65100.65700.253300.2562100 | GYPSUM PLASTR APPLICATION | 9d | 2026-02-13 | 2026-02-21 | 532FS-4d |  | BAGALURU -P2 | 9676116 |
| 534 | 42100.42600.46800.62400.65100.65700.253300.2562200 | CONCEALED PLUMBING | 9d | 2026-02-17 | 2026-02-25 | 532 |  | BAGALURU -P2 | 9676126 |
| 535 | 42100.42600.46800.62400.65100.65700.253300.2562300 | WATERPROOFING WORK FOR TOILETS, KITCHEN SUNK & PLANTERS | 9d | 2026-02-26 | 2026-03-06 | 534 |  | BAGALURU -P2 | 9676136 |
| 536 | 42100.42600.46800.62400.65100.65700.251800 | **Floor 7** | 31d | 2026-02-13 | 2026-03-15 |  | start no earlier than 2026-02-13 | BAGALURU -P2 | 9670186 |
| 537 | 42100.42600.46800.62400.65100.65700.251800.2562400 | POST POUR CLEARENCE | 9d | 2026-02-13 | 2026-02-21 | 530 |  | BAGALURU -P2 | 9676146 |
| 538 | 42100.42600.46800.62400.65100.65700.251800.2562500 | BALCONY RAILING FIXING | 9d | 2026-02-22 | 2026-03-02 | 537 |  | BAGALURU -P2 | 9676156 |
| 539 | 42100.42600.46800.62400.65100.65700.251800.2562600 | FPS WORKS | 7d | 2026-02-19 | 2026-02-25 | 537FS-3d |  | BAGALURU -P2 | 9676166 |
| 540 | 42100.42600.46800.62400.65100.65700.251800.2562700 | GYPSUM PLASTR APPLICATION | 9d | 2026-02-22 | 2026-03-02 | 539FS-4d |  | BAGALURU -P2 | 9676176 |
| 541 | 42100.42600.46800.62400.65100.65700.251800.2562800 | CONCEALED PLUMBING | 9d | 2026-02-26 | 2026-03-06 | 539 |  | BAGALURU -P2 | 9676186 |
| 542 | 42100.42600.46800.62400.65100.65700.251800.2562900 | WATERPROOFING WORK FOR TOILETS, KITCHEN SUNK & PLANTERS | 9d | 2026-03-07 | 2026-03-15 | 541 |  | BAGALURU -P2 | 9676196 |
| 543 | 42100.42600.46800.62400.65100.65700.251400 | **Floor 8** | 31d | 2026-02-22 | 2026-03-24 |  | start no earlier than 2026-02-22 | BAGALURU -P2 | 9670196 |
| 544 | 42100.42600.46800.62400.65100.65700.251400.2563000 | POST POUR CLEARENCE | 9d | 2026-02-22 | 2026-03-02 | 537 |  | BAGALURU -P2 | 9676206 |
| 545 | 42100.42600.46800.62400.65100.65700.251400.2563100 | BALCONY RAILING FIXING | 9d | 2026-03-03 | 2026-03-11 | 544 |  | BAGALURU -P2 | 9676216 |
| 546 | 42100.42600.46800.62400.65100.65700.251400.2563200 | FPS WORKS | 7d | 2026-02-28 | 2026-03-06 | 544FS-3d |  | BAGALURU -P2 | 9676226 |
| 547 | 42100.42600.46800.62400.65100.65700.251400.2563300 | GYPSUM PLASTR APPLICATION | 9d | 2026-03-03 | 2026-03-11 | 546FS-4d |  | BAGALURU -P2 | 9676236 |
| 548 | 42100.42600.46800.62400.65100.65700.251400.2563400 | CONCEALED PLUMBING | 9d | 2026-03-07 | 2026-03-15 | 546 |  | BAGALURU -P2 | 9676246 |
| 549 | 42100.42600.46800.62400.65100.65700.251400.2563500 | WATERPROOFING WORK FOR TOILETS, KITCHEN SUNK & PLANTERS | 9d | 2026-03-16 | 2026-03-24 | 548 |  | BAGALURU -P2 | 9676256 |
| 550 | 42100.42600.46800.62400.65100.65700.251100 | **Floor 9** | 31d | 2026-03-03 | 2026-04-02 |  | start no earlier than 2026-03-03 | BAGALURU -P2 | 9670206 |
| 551 | 42100.42600.46800.62400.65100.65700.251100.2563600 | POST POUR CLEARENCE | 9d | 2026-03-03 | 2026-03-11 | 544 |  | BAGALURU -P2 | 9676266 |
| 552 | 42100.42600.46800.62400.65100.65700.251100.2563700 | BALCONY RAILING FIXING | 9d | 2026-03-12 | 2026-03-20 | 551 |  | BAGALURU -P2 | 9676276 |
| 553 | 42100.42600.46800.62400.65100.65700.251100.2563800 | FPS WORKS | 7d | 2026-03-09 | 2026-03-15 | 551FS-3d |  | BAGALURU -P2 | 9676286 |
| 554 | 42100.42600.46800.62400.65100.65700.251100.2563900 | GYPSUM PLASTR APPLICATION | 9d | 2026-03-12 | 2026-03-20 | 553FS-4d |  | BAGALURU -P2 | 9676296 |
| 555 | 42100.42600.46800.62400.65100.65700.251100.2564000 | CONCEALED PLUMBING | 9d | 2026-03-16 | 2026-03-24 | 553 |  | BAGALURU -P2 | 9676306 |
| 556 | 42100.42600.46800.62400.65100.65700.251100.2564100 | WATERPROOFING WORK FOR TOILETS, KITCHEN SUNK & PLANTERS | 9d | 2026-03-25 | 2026-04-02 | 555 |  | BAGALURU -P2 | 9676316 |

| ID | WBS | Task | Duration | Start | Finish | Predecessors | Constraint | Calendar | Unique_Task_ID |
| --- | --- | --- | --- | --- | --- | --- | --- | --- | --- |
| 557 | 42100.42600.46800.62400.65100.65700.250900 | **Floor 10** | 31d | 2026-03-12 | 2026-04-11 |  | start no earlier than 2026-03-12 | BAGALURU -P2 | 9670216 |
| 558 | 42100.42600.46800.62400.65100.65700.250900.2564200 | POST POUR CLEARENCE | 9d | 2026-03-12 | 2026-03-20 | 551 |  | BAGALURU -P2 | 9676326 |
| 559 | 42100.42600.46800.62400.65100.65700.250900.2564300 | BALCONY RAILING FIXING | 9d | 2026-03-21 | 2026-03-29 | 558 |  | BAGALURU -P2 | 9676336 |
| 560 | 42100.42600.46800.62400.65100.65700.250900.2564400 | FPS WORKS | 7d | 2026-03-18 | 2026-03-24 | 558FS-3d |  | BAGALURU -P2 | 9676346 |
| 561 | 42100.42600.46800.62400.65100.65700.250900.2564500 | GYPSUM PLASTR APPLICATION | 9d | 2026-03-21 | 2026-03-29 | 560FS-4d |  | BAGALURU -P2 | 9676356 |
| 562 | 42100.42600.46800.62400.65100.65700.250900.2564600 | CONCEALED PLUMBING | 9d | 2026-03-25 | 2026-04-02 | 560 |  | BAGALURU -P2 | 9676366 |
| 563 | 42100.42600.46800.62400.65100.65700.250900.2564700 | WATERPROOFING WORK FOR TOILETS, KITCHEN SUNK & PLANTERS | 9d | 2026-04-03 | 2026-04-11 | 562 |  | BAGALURU -P2 | 9676376 |
| 564 | 42100.42600.46800.62400.65100.65700.250000 | **Floor 11** | 31d | 2026-03-21 | 2026-04-20 |  | start no earlier than 2026-03-21 | BAGALURU -P2 | 9670226 |
| 565 | 42100.42600.46800.62400.65100.65700.250000.2564800 | POST POUR CLEARENCE | 9d | 2026-03-21 | 2026-03-29 | 558 |  | BAGALURU -P2 | 9676386 |
| 566 | 42100.42600.46800.62400.65100.65700.250000.2564900 | BALCONY RAILING FIXING | 9d | 2026-03-30 | 2026-04-07 | 565 |  | BAGALURU -P2 | 9676396 |
| 567 | 42100.42600.46800.62400.65100.65700.250000.2565000 | FPS WORKS | 7d | 2026-03-27 | 2026-04-02 | 565FS-3d |  | BAGALURU -P2 | 9676406 |
| 568 | 42100.42600.46800.62400.65100.65700.250000.2565100 | GYPSUM PLASTR APPLICATION | 9d | 2026-03-30 | 2026-04-07 | 567FS-4d |  | BAGALURU -P2 | 9676416 |
| 569 | 42100.42600.46800.62400.65100.65700.250000.2565200 | CONCEALED PLUMBING | 9d | 2026-04-03 | 2026-04-11 | 567 |  | BAGALURU -P2 | 9676426 |
| 570 | 42100.42600.46800.62400.65100.65700.250000.2565300 | WATERPROOFING WORK FOR TOILETS, KITCHEN SUNK & PLANTERS | 9d | 2026-04-12 | 2026-04-20 | 569 |  | BAGALURU -P2 | 9676436 |
| 571 | 42100.42600.46800.62400.65100.65700.249900 | **Floor 12** | 36d | 2026-03-30 | 2026-05-04 |  | start no earlier than 2026-03-30 | BAGALURU -P2 | 9670236 |
| 572 | 42100.42600.46800.62400.65100.65700.249900.2565400 | POST POUR CLEARENCE | 9d | 2026-03-30 | 2026-04-07 | 565 |  | BAGALURU -P2 | 9676446 |
| 573 | 42100.42600.46800.62400.65100.65700.249900.2565500 | BALCONY RAILING FIXING | 9d | 2026-04-08 | 2026-04-16 | 572 |  | BAGALURU -P2 | 9676456 |
| 574 | 42100.42600.46800.62400.65100.65700.249900.2565600 | FPS WORKS | 7d | 2026-04-10 | 2026-04-16 | 572FS+2d |  | BAGALURU -P2 | 9676466 |
| 575 | 42100.42600.46800.62400.65100.65700.249900.2565700 | GYPSUM PLASTR APPLICATION | 9d | 2026-04-17 | 2026-04-25 | 574 |  | BAGALURU -P2 | 9676476 |
| 576 | 42100.42600.46800.62400.65100.65700.249900.2565800 | CONCEALED PLUMBING | 9d | 2026-04-17 | 2026-04-25 | 574 |  | BAGALURU -P2 | 9676486 |
| 577 | 42100.42600.46800.62400.65100.65700.249900.2565900 | WATERPROOFING WORK FOR TOILETS, KITCHEN SUNK & PLANTERS | 9d | 2026-04-26 | 2026-05-04 | 576 |  | BAGALURU -P2 | 9676496 |
| 578 | 42100.42600.46800.62400.65100.65700.250100 | **Floor 13** | 36d | 2026-04-08 | 2026-05-13 |  | start no earlier than 2026-04-08 | BAGALURU -P2 | 9670246 |
| 579 | 42100.42600.46800.62400.65100.65700.250100.2566000 | POST POUR CLEARENCE | 9d | 2026-04-08 | 2026-04-16 | 572 |  | BAGALURU -P2 | 9676506 |
| 580 | 42100.42600.46800.62400.65100.65700.250100.2566100 | BALCONY RAILING FIXING | 9d | 2026-04-17 | 2026-04-25 | 579 |  | BAGALURU -P2 | 9676516 |
| 581 | 42100.42600.46800.62400.65100.65700.250100.2566200 | FPS WORKS | 7d | 2026-04-19 | 2026-04-25 | 579FS+2d |  | BAGALURU -P2 | 9676526 |
| 582 | 42100.42600.46800.62400.65100.65700.250100.2566300 | GYPSUM PLASTR APPLICATION | 9d | 2026-04-26 | 2026-05-04 | 581 |  | BAGALURU -P2 | 9676536 |
| 583 | 42100.42600.46800.62400.65100.65700.250100.2566400 | CONCEALED PLUMBING | 9d | 2026-04-26 | 2026-05-04 | 581 |  | BAGALURU -P2 | 9676546 |
| 584 | 42100.42600.46800.62400.65100.65700.250100.2566500 | WATERPROOFING WORK FOR TOILETS, KITCHEN SUNK & PLANTERS | 9d | 2026-05-05 | 2026-05-13 | 583 |  | BAGALURU -P2 | 9676556 |

| ID | WBS | Task | Duration | Start | Finish | Predecessors | Constraint | Calendar | Unique_Task_ID |
| --- | --- | --- | --- | --- | --- | --- | --- | --- | --- |
| 585 | 42100.42600.46800.62400.65100.65700.250300 | **Floor 14** | 36d | 2026-04-17 | 2026-05-22 |  | start no earlier than 2026-04-17 | BAGALURU -P2 | 9670256 |
| 586 | 42100.42600.46800.62400.65100.65700.250300.2566600 | POST POUR CLEARENCE | 9d | 2026-04-17 | 2026-04-25 | 579 |  | BAGALURU -P2 | 9676566 |
| 587 | 42100.42600.46800.62400.65100.65700.250300.2566700 | BALCONY RAILING FIXING | 9d | 2026-04-26 | 2026-05-04 | 586 |  | BAGALURU -P2 | 9676576 |
| 588 | 42100.42600.46800.62400.65100.65700.250300.2566800 | FPS WORKS | 7d | 2026-04-28 | 2026-05-04 | 586FS+2d |  | BAGALURU -P2 | 9676586 |
| 589 | 42100.42600.46800.62400.65100.65700.250300.2566900 | GYPSUM PLASTR APPLICATION | 9d | 2026-05-05 | 2026-05-13 | 588 |  | BAGALURU -P2 | 9676596 |
| 590 | 42100.42600.46800.62400.65100.65700.250300.2567000 | CONCEALED PLUMBING | 9d | 2026-05-05 | 2026-05-13 | 588 |  | BAGALURU -P2 | 9676606 |
| 591 | 42100.42600.46800.62400.65100.65700.250300.2567100 | WATERPROOFING WORK FOR TOILETS, KITCHEN SUNK & PLANTERS | 9d | 2026-05-14 | 2026-05-22 | 590 |  | BAGALURU -P2 | 9676616 |
| 592 | 42100.42600.46800.62400.65100.65700.250400 | **Floor 15** | 36d | 2026-04-26 | 2026-05-31 |  | start no earlier than 2026-04-26 | BAGALURU -P2 | 9670266 |
| 593 | 42100.42600.46800.62400.65100.65700.250400.2567200 | POST POUR CLEARENCE | 9d | 2026-04-26 | 2026-05-04 | 586 |  | BAGALURU -P2 | 9676626 |
| 594 | 42100.42600.46800.62400.65100.65700.250400.2567300 | BALCONY RAILING FIXING | 9d | 2026-05-05 | 2026-05-13 | 593 |  | BAGALURU -P2 | 9676636 |
| 595 | 42100.42600.46800.62400.65100.65700.250400.2567400 | FPS WORKS | 7d | 2026-05-07 | 2026-05-13 | 593FS+2d |  | BAGALURU -P2 | 9676646 |
| 596 | 42100.42600.46800.62400.65100.65700.250400.2567500 | GYPSUM PLASTR APPLICATION | 9d | 2026-05-14 | 2026-05-22 | 595 |  | BAGALURU -P2 | 9676656 |
| 597 | 42100.42600.46800.62400.65100.65700.250400.2567600 | CONCEALED PLUMBING | 9d | 2026-05-14 | 2026-05-22 | 595 |  | BAGALURU -P2 | 9676666 |
| 598 | 42100.42600.46800.62400.65100.65700.250400.2567700 | WATERPROOFING WORK FOR TOILETS, KITCHEN SUNK & PLANTERS | 9d | 2026-05-23 | 2026-05-31 | 597 |  | BAGALURU -P2 | 9676676 |
| 599 | 42100.42600.46800.62400.65100.504800 | **Terrace finishing works** | 30d | 2026-07-10 | 2026-08-08 |  | start no earlier than 2026-07-10 | BAGALURU -P2 | 9670526 |
| 600 | 42100.42600.46800.62400.65100.504800.2154800 | Terrace Waterproofing work | 30d | 2026-07-10 | 2026-08-08 | 491FS+90d |  | BAGALURU -P2 | 9670866 |
| 601 | 42100.42600.46800.62400.65100.504700 | **EXTERNAL Painting** | 90d | 2026-05-26 | 2026-08-23 |  | start no earlier than 2026-05-26 | BAGALURU -P2 | 9670536 |
| 602 | 42100.42600.46800.62400.65100.504700.2154900 | External Painting | 90d | 2026-05-26 | 2026-08-23 | 491FS+45d |  | BAGALURU -P2 | 9670876 |
| 603 | 42100.42600.46800.62400.63800 | **Flat finishes** | 280d | 2026-01-17 | 2027-02-14 |  | start no earlier than 2026-01-17 |  | 9668456 |
| 604 | 42100.42600.46800.62400.63800.155800 | **Floor 1** | 268d | 2026-01-17 | 2026-10-11 |  | start no earlier than 2026-01-17 | BAGALURU -P2 | 9668536 |
| 605 | 42100.42600.46800.62400.63800.155800.2155000 | TOILET DADO TILE FIXING | 9d | 2026-01-17 | 2026-01-25 | 500FS-4d |  | BAGALURU -P2 | 9670886 |
| 606 | 42100.42600.46800.62400.63800.155800.2155100 | FLAT FLOORING | 9d | 2026-01-26 | 2026-02-03 | 605 |  | BAGALURU -P2 | 9670896 |
| 607 | 42100.42600.46800.62400.63800.155800.2155200 | CORNICE WORKS | 9d | 2026-02-04 | 2026-02-12 | 606 |  | BAGALURU -P2 | 9670906 |
| 608 | 42100.42600.46800.62400.63800.155800.2155300 | INTERNAL PAINTING - PUTTY / PRIMER APPLICATION | 9d | 2026-03-03 | 2026-03-11 | 607FS+18d |  | BAGALURU -P2 | 9670916 |
| 609 | 42100.42600.46800.62400.63800.155800.2155400 | WINDOW FIXING | 9d | 2026-03-12 | 2026-03-20 | 608 |  | BAGALURU -P2 | 9670926 |
| 610 | 42100.42600.46800.62400.63800.155800.2155500 | INTERNAL PAINTING - 1ST COAT | 15d | 2026-05-20 | 2026-06-03 | 609FS+60d |  | BAGALURU -P2 | 9670936 |
| 611 | 42100.42600.46800.62400.63800.155800.2155600 | INTERNAL DOOR FIXING | 15d | 2026-06-04 | 2026-06-18 | 610 |  | BAGALURU -P2 | 9670946 |
| 612 | 42100.42600.46800.62400.63800.155800.2155700 | WIRING & SWITCH PLATE FIXING | 10d | 2026-06-19 | 2026-06-28 | 611 |  | BAGALURU -P2 | 9670956 |
| 613 | 42100.42600.46800.62400.63800.155800.2155800 | TOILET FALSE CEILING | 15d | 2026-09-05 | 2026-09-19 | 612FS+68d |  | BAGALURU -P2 | 9670966 |
| 614 | 42100.42600.46800.62400.63800.155800.2155900 | CP & SANITARY FIXING | 10d | 2026-09-20 | 2026-09-29 | 613 |  | BAGALURU -P2 | 9670976 |
| 615 | 42100.42600.46800.62400.63800.155800.2156000 | FINAL COAT PAINT | 12d | 2026-09-30 | 2026-10-11 | 614 |  | BAGALURU -P2 | 9670986 |

Notes:
- 601: Ext Plaster (in 2 phases) completion 3.5 months post last BW

| ID | WBS | Task | Duration | Start | Finish | Predecessors | Constraint | Calendar | Unique_Task_ID |
| --- | --- | --- | --- | --- | --- | --- | --- | --- | --- |
| 616 | 42100.42600.46800.62400.63800.155900 | **Floor 2** | 268d | 2026-01-26 | 2026-10-20 |  | start no earlier than 2026-01-26 | BAGALURU -P2 | 9668546 |
| 617 | 42100.42600.46800.62400.63800.155900.2156100 | TOILET DADO TILE FIXING | 9d | 2026-01-26 | 2026-02-03 | 605 |  | BAGALURU -P2 | 9670996 |
| 618 | 42100.42600.46800.62400.63800.155900.2156200 | FLAT FLOORING | 9d | 2026-02-04 | 2026-02-12 | 617 |  | BAGALURU -P2 | 9671006 |
| 619 | 42100.42600.46800.62400.63800.155900.2156300 | CORNICE WORKS | 9d | 2026-02-13 | 2026-02-21 | 618 |  | BAGALURU -P2 | 9671016 |
| 620 | 42100.42600.46800.62400.63800.155900.2156400 | INTERNAL PAINTING - PUTTY / PRIMER APPLICATION | 9d | 2026-03-12 | 2026-03-20 | 619FS+18d |  | BAGALURU -P2 | 9671026 |
| 621 | 42100.42600.46800.62400.63800.155900.2156500 | WINDOW FIXING | 9d | 2026-03-21 | 2026-03-29 | 620 |  | BAGALURU -P2 | 9671036 |
| 622 | 42100.42600.46800.62400.63800.155900.2156600 | INTERNAL PAINTING - 1ST COAT | 15d | 2026-05-29 | 2026-06-12 | 621FS+60d |  | BAGALURU -P2 | 9671046 |
| 623 | 42100.42600.46800.62400.63800.155900.2156700 | INTERNAL DOOR FIXING | 15d | 2026-06-13 | 2026-06-27 | 622 |  | BAGALURU -P2 | 9671056 |
| 624 | 42100.42600.46800.62400.63800.155900.2156800 | WIRING & SWITCH PLATE FIXING | 10d | 2026-06-28 | 2026-07-07 | 623 |  | BAGALURU -P2 | 9671066 |
| 625 | 42100.42600.46800.62400.63800.155900.2156900 | TOILET FALSE CEILING | 15d | 2026-09-14 | 2026-09-28 | 624FS+68d |  | BAGALURU -P2 | 9671076 |
| 626 | 42100.42600.46800.62400.63800.155900.2157000 | CP & SANITARY FIXING | 10d | 2026-09-29 | 2026-10-08 | 625 |  | BAGALURU -P2 | 9671086 |
| 627 | 42100.42600.46800.62400.63800.155900.2157100 | FINAL COAT PAINT | 12d | 2026-10-09 | 2026-10-20 | 626 |  | BAGALURU -P2 | 9671096 |
| 628 | 42100.42600.46800.62400.63800.156000 | **Floor 3** | 268d | 2026-02-04 | 2026-10-29 |  | start no earlier than 2026-02-04 | BAGALURU -P2 | 9668556 |
| 629 | 42100.42600.46800.62400.63800.156000.2157200 | TOILET DADO TILE FIXING | 9d | 2026-02-04 | 2026-02-12 | 617 |  | BAGALURU -P2 | 9671106 |
| 630 | 42100.42600.46800.62400.63800.156000.2157300 | FLAT FLOORING | 9d | 2026-02-13 | 2026-02-21 | 629 |  | BAGALURU -P2 | 9671116 |
| 631 | 42100.42600.46800.62400.63800.156000.2157400 | CORNICE WORKS | 9d | 2026-02-22 | 2026-03-02 | 630 |  | BAGALURU -P2 | 9671126 |
| 632 | 42100.42600.46800.62400.63800.156000.2157500 | INTERNAL PAINTING - PUTTY / PRIMER APPLICATION | 9d | 2026-03-21 | 2026-03-29 | 631FS+18d |  | BAGALURU -P2 | 9671136 |
| 633 | 42100.42600.46800.62400.63800.156000.2157600 | WINDOW FIXING | 9d | 2026-03-30 | 2026-04-07 | 632 |  | BAGALURU -P2 | 9671146 |
| 634 | 42100.42600.46800.62400.63800.156000.2157700 | INTERNAL PAINTING - 1ST COAT | 15d | 2026-06-07 | 2026-06-21 | 633FS+60d |  | BAGALURU -P2 | 9671156 |
| 635 | 42100.42600.46800.62400.63800.156000.2157800 | INTERNAL DOOR FIXING | 15d | 2026-06-22 | 2026-07-06 | 634 |  | BAGALURU -P2 | 9671166 |
| 636 | 42100.42600.46800.62400.63800.156000.2157900 | WIRING & SWITCH PLATE FIXING | 10d | 2026-07-07 | 2026-07-16 | 635 |  | BAGALURU -P2 | 9671176 |
| 637 | 42100.42600.46800.62400.63800.156000.2158000 | TOILET FALSE CEILING | 15d | 2026-09-23 | 2026-10-07 | 636FS+68d |  | BAGALURU -P2 | 9671186 |
| 638 | 42100.42600.46800.62400.63800.156000.2158100 | CP & SANITARY FIXING | 10d | 2026-10-08 | 2026-10-17 | 637 |  | BAGALURU -P2 | 9671196 |
| 639 | 42100.42600.46800.62400.63800.156000.2158200 | FINAL COAT PAINT | 12d | 2026-10-18 | 2026-10-29 | 638 |  | BAGALURU -P2 | 9671206 |

| ID | WBS | Task | Duration | Start | Finish | Predecessors | Constraint | Calendar | Unique_Task_ID |
| --- | --- | --- | --- | --- | --- | --- | --- | --- | --- |
| 640 | 42100.42600.46800.62400.63800.156100 | **Floor 4** | 268d | 2026-02-13 | 2026-11-07 |  | start no earlier than 2026-02-13 | BAGALURU -P2 | 9668566 |
| 641 | 42100.42600.46800.62400.63800.156100.2158300 | TOILET DADO TILE FIXING | 9d | 2026-02-13 | 2026-02-21 | 629 |  | BAGALURU -P2 | 9671216 |
| 642 | 42100.42600.46800.62400.63800.156100.2158400 | FLAT FLOORING | 9d | 2026-02-22 | 2026-03-02 | 641 |  | BAGALURU -P2 | 9671226 |
| 643 | 42100.42600.46800.62400.63800.156100.2158500 | CORNICE WORKS | 9d | 2026-03-03 | 2026-03-11 | 642 |  | BAGALURU -P2 | 9671236 |
| 644 | 42100.42600.46800.62400.63800.156100.2158600 | INTERNAL PAINTING - PUTTY / PRIMER APPLICATION | 9d | 2026-03-30 | 2026-04-07 | 643FS+18d |  | BAGALURU -P2 | 9671246 |
| 645 | 42100.42600.46800.62400.63800.156100.2158700 | WINDOW FIXING | 9d | 2026-04-08 | 2026-04-16 | 644 |  | BAGALURU -P2 | 9671256 |
| 646 | 42100.42600.46800.62400.63800.156100.2158800 | INTERNAL PAINTING - 1ST COAT | 15d | 2026-06-16 | 2026-06-30 | 645FS+60d |  | BAGALURU -P2 | 9671266 |
| 647 | 42100.42600.46800.62400.63800.156100.2158900 | INTERNAL DOOR FIXING | 15d | 2026-07-01 | 2026-07-15 | 646 |  | BAGALURU -P2 | 9671276 |
| 648 | 42100.42600.46800.62400.63800.156100.2159000 | WIRING & SWITCH PLATE FIXING | 10d | 2026-07-16 | 2026-07-25 | 647 |  | BAGALURU -P2 | 9671286 |
| 649 | 42100.42600.46800.62400.63800.156100.2159100 | TOILET FALSE CEILING | 15d | 2026-10-02 | 2026-10-16 | 648FS+68d |  | BAGALURU -P2 | 9671296 |
| 650 | 42100.42600.46800.62400.63800.156100.2159200 | CP & SANITARY FIXING | 10d | 2026-10-17 | 2026-10-26 | 649 |  | BAGALURU -P2 | 9671306 |
| 651 | 42100.42600.46800.62400.63800.156100.2159300 | FINAL COAT PAINT | 12d | 2026-10-27 | 2026-11-07 | 650 |  | BAGALURU -P2 | 9671316 |
| 652 | 42100.42600.46800.62400.63800.156200 | **Floor 5** | 268d | 2026-02-22 | 2026-11-16 |  | start no earlier than 2026-02-22 | BAGALURU -P2 | 9668576 |
| 653 | 42100.42600.46800.62400.63800.156200.2159400 | TOILET DADO TILE FIXING | 9d | 2026-02-22 | 2026-03-02 | 641 |  | BAGALURU -P2 | 9671326 |
| 654 | 42100.42600.46800.62400.63800.156200.2159500 | FLAT FLOORING | 9d | 2026-03-03 | 2026-03-11 | 653 |  | BAGALURU -P2 | 9671336 |
| 655 | 42100.42600.46800.62400.63800.156200.2159600 | CORNICE WORKS | 9d | 2026-03-12 | 2026-03-20 | 654 |  | BAGALURU -P2 | 9671346 |
| 656 | 42100.42600.46800.62400.63800.156200.2159700 | INTERNAL PAINTING - PUTTY / PRIMER APPLICATION | 9d | 2026-04-08 | 2026-04-16 | 655FS+18d |  | BAGALURU -P2 | 9671356 |
| 657 | 42100.42600.46800.62400.63800.156200.2159800 | WINDOW FIXING | 9d | 2026-04-17 | 2026-04-25 | 656 |  | BAGALURU -P2 | 9671366 |
| 658 | 42100.42600.46800.62400.63800.156200.2159900 | INTERNAL PAINTING - 1ST COAT | 15d | 2026-06-25 | 2026-07-09 | 657FS+60d |  | BAGALURU -P2 | 9671376 |
| 659 | 42100.42600.46800.62400.63800.156200.2160000 | INTERNAL DOOR FIXING | 15d | 2026-07-10 | 2026-07-24 | 658 |  | BAGALURU -P2 | 9671386 |
| 660 | 42100.42600.46800.62400.63800.156200.2160100 | WIRING & SWITCH PLATE FIXING | 10d | 2026-07-25 | 2026-08-03 | 659 |  | BAGALURU -P2 | 9671396 |
| 661 | 42100.42600.46800.62400.63800.156200.2160200 | TOILET FALSE CEILING | 15d | 2026-10-11 | 2026-10-25 | 660FS+68d |  | BAGALURU -P2 | 9671406 |
| 662 | 42100.42600.46800.62400.63800.156200.2160300 | CP & SANITARY FIXING | 10d | 2026-10-26 | 2026-11-04 | 661 |  | BAGALURU -P2 | 9671416 |
| 663 | 42100.42600.46800.62400.63800.156200.2160400 | FINAL COAT PAINT | 12d | 2026-11-05 | 2026-11-16 | 662 |  | BAGALURU -P2 | 9671426 |

| ID | WBS | Task | Duration | Start | Finish | Predecessors | Constraint | Calendar | Unique_Task_ID |
| --- | --- | --- | --- | --- | --- | --- | --- | --- | --- |
| 664 | 42100.42600.46800.62400.63800.156300 | **Floor 6** | 268d | 2026-03-03 | 2026-11-25 |  | start no earlier than 2026-03-03 | BAGALURU -P2 | 9668586 |
| 665 | 42100.42600.46800.62400.63800.156300.2160500 | TOILET DADO TILE FIXING | 9d | 2026-03-03 | 2026-03-11 | 653 |  | BAGALURU -P2 | 9671436 |
| 666 | 42100.42600.46800.62400.63800.156300.2160600 | FLAT FLOORING | 9d | 2026-03-12 | 2026-03-20 | 665 |  | BAGALURU -P2 | 9671446 |
| 667 | 42100.42600.46800.62400.63800.156300.2160700 | CORNICE WORKS | 9d | 2026-03-21 | 2026-03-29 | 666 |  | BAGALURU -P2 | 9671456 |
| 668 | 42100.42600.46800.62400.63800.156300.2160800 | INTERNAL PAINTING - PUTTY / PRIMER APPLICATION | 9d | 2026-04-17 | 2026-04-25 | 667FS+18d |  | BAGALURU -P2 | 9671466 |
| 669 | 42100.42600.46800.62400.63800.156300.2160900 | WINDOW FIXING | 9d | 2026-04-26 | 2026-05-04 | 668 |  | BAGALURU -P2 | 9671476 |
| 670 | 42100.42600.46800.62400.63800.156300.2161000 | INTERNAL PAINTING - 1ST COAT | 15d | 2026-07-04 | 2026-07-18 | 669FS+60d |  | BAGALURU -P2 | 9671486 |
| 671 | 42100.42600.46800.62400.63800.156300.2161100 | INTERNAL DOOR FIXING | 15d | 2026-07-19 | 2026-08-02 | 670 |  | BAGALURU -P2 | 9671496 |
| 672 | 42100.42600.46800.62400.63800.156300.2161200 | WIRING & SWITCH PLATE FIXING | 10d | 2026-08-03 | 2026-08-12 | 671 |  | BAGALURU -P2 | 9671506 |
| 673 | 42100.42600.46800.62400.63800.156300.2161300 | TOILET FALSE CEILING | 15d | 2026-10-20 | 2026-11-03 | 672FS+68d |  | BAGALURU -P2 | 9671516 |
| 674 | 42100.42600.46800.62400.63800.156300.2161400 | CP & SANITARY FIXING | 10d | 2026-11-04 | 2026-11-13 | 673 |  | BAGALURU -P2 | 9671526 |
| 675 | 42100.42600.46800.62400.63800.156300.2161500 | FINAL COAT PAINT | 12d | 2026-11-14 | 2026-11-25 | 674 |  | BAGALURU -P2 | 9671536 |
| 676 | 42100.42600.46800.62400.63800.156400 | **Floor 7** | 268d | 2026-03-12 | 2026-12-04 |  | start no earlier than 2026-03-12 | BAGALURU -P2 | 9668596 |
| 677 | 42100.42600.46800.62400.63800.156400.2161600 | TOILET DADO TILE FIXING | 9d | 2026-03-12 | 2026-03-20 | 665 |  | BAGALURU -P2 | 9671546 |
| 678 | 42100.42600.46800.62400.63800.156400.2161700 | FLAT FLOORING | 9d | 2026-03-21 | 2026-03-29 | 677 |  | BAGALURU -P2 | 9671556 |
| 679 | 42100.42600.46800.62400.63800.156400.2161800 | CORNICE WORKS | 9d | 2026-03-30 | 2026-04-07 | 678 |  | BAGALURU -P2 | 9671566 |
| 680 | 42100.42600.46800.62400.63800.156400.2161900 | INTERNAL PAINTING - PUTTY / PRIMER APPLICATION | 9d | 2026-04-26 | 2026-05-04 | 679FS+18d |  | BAGALURU -P2 | 9671576 |
| 681 | 42100.42600.46800.62400.63800.156400.2162000 | WINDOW FIXING | 9d | 2026-05-05 | 2026-05-13 | 680 |  | BAGALURU -P2 | 9671586 |
| 682 | 42100.42600.46800.62400.63800.156400.2162100 | INTERNAL PAINTING - 1ST COAT | 15d | 2026-07-13 | 2026-07-27 | 681FS+60d |  | BAGALURU -P2 | 9671596 |
| 683 | 42100.42600.46800.62400.63800.156400.2162200 | INTERNAL DOOR FIXING | 15d | 2026-07-28 | 2026-08-11 | 682 |  | BAGALURU -P2 | 9671606 |
| 684 | 42100.42600.46800.62400.63800.156400.2162300 | WIRING & SWITCH PLATE FIXING | 10d | 2026-08-12 | 2026-08-21 | 683 |  | BAGALURU -P2 | 9671616 |
| 685 | 42100.42600.46800.62400.63800.156400.2162400 | TOILET FALSE CEILING | 15d | 2026-10-29 | 2026-11-12 | 684FS+68d |  | BAGALURU -P2 | 9671626 |
| 686 | 42100.42600.46800.62400.63800.156400.2162500 | CP & SANITARY FIXING | 10d | 2026-11-13 | 2026-11-22 | 685 |  | BAGALURU -P2 | 9671636 |
| 687 | 42100.42600.46800.62400.63800.156400.2162600 | FINAL COAT PAINT | 12d | 2026-11-23 | 2026-12-04 | 686 |  | BAGALURU -P2 | 9671646 |

| ID | WBS | Task | Duration | Start | Finish | Predecessors | Constraint | Calendar | Unique_Task_ID |
| --- | --- | --- | --- | --- | --- | --- | --- | --- | --- |
| 688 | 42100.42600.46800.62400.63800.156500 | **Floor 8** | 268d | 2026-03-21 | 2026-12-13 |  | start no earlier than 2026-03-21 | BAGALURU -P2 | 9668606 |
| 689 | 42100.42600.46800.62400.63800.156500.2162700 | TOILET DADO TILE FIXING | 9d | 2026-03-21 | 2026-03-29 | 677 |  | BAGALURU -P2 | 9671656 |
| 690 | 42100.42600.46800.62400.63800.156500.2162800 | FLAT FLOORING | 9d | 2026-03-30 | 2026-04-07 | 689 |  | BAGALURU -P2 | 9671666 |
| 691 | 42100.42600.46800.62400.63800.156500.2162900 | CORNICE WORKS | 9d | 2026-04-08 | 2026-04-16 | 690 |  | BAGALURU -P2 | 9671676 |
| 692 | 42100.42600.46800.62400.63800.156500.2163000 | INTERNAL PAINTING - PUTTY / PRIMER APPLICATION | 9d | 2026-05-05 | 2026-05-13 | 691FS+18d |  | BAGALURU -P2 | 9671686 |
| 693 | 42100.42600.46800.62400.63800.156500.2163100 | WINDOW FIXING | 9d | 2026-05-14 | 2026-05-22 | 692 |  | BAGALURU -P2 | 9671696 |
| 694 | 42100.42600.46800.62400.63800.156500.2163200 | INTERNAL PAINTING - 1ST COAT | 15d | 2026-07-22 | 2026-08-05 | 693FS+60d |  | BAGALURU -P2 | 9671706 |
| 695 | 42100.42600.46800.62400.63800.156500.2163300 | INTERNAL DOOR FIXING | 15d | 2026-08-06 | 2026-08-20 | 694 |  | BAGALURU -P2 | 9671716 |
| 696 | 42100.42600.46800.62400.63800.156500.2163400 | WIRING & SWITCH PLATE FIXING | 10d | 2026-08-21 | 2026-08-30 | 695 |  | BAGALURU -P2 | 9671726 |
| 697 | 42100.42600.46800.62400.63800.156500.2163500 | TOILET FALSE CEILING | 15d | 2026-11-07 | 2026-11-21 | 696FS+68d |  | BAGALURU -P2 | 9671736 |
| 698 | 42100.42600.46800.62400.63800.156500.2163600 | CP & SANITARY FIXING | 10d | 2026-11-22 | 2026-12-01 | 697 |  | BAGALURU -P2 | 9671746 |
| 699 | 42100.42600.46800.62400.63800.156500.2163700 | FINAL COAT PAINT | 12d | 2026-12-02 | 2026-12-13 | 698 |  | BAGALURU -P2 | 9671756 |
| 700 | 42100.42600.46800.62400.63800.156600 | **Floor 9** | 268d | 2026-03-30 | 2026-12-22 |  | start no earlier than 2026-03-30 | BAGALURU -P2 | 9668616 |
| 701 | 42100.42600.46800.62400.63800.156600.2163800 | TOILET DADO TILE FIXING | 9d | 2026-03-30 | 2026-04-07 | 689 |  | BAGALURU -P2 | 9671766 |
| 702 | 42100.42600.46800.62400.63800.156600.2163900 | FLAT FLOORING | 9d | 2026-04-08 | 2026-04-16 | 701 |  | BAGALURU -P2 | 9671776 |
| 703 | 42100.42600.46800.62400.63800.156600.2164000 | CORNICE WORKS | 9d | 2026-04-17 | 2026-04-25 | 702 |  | BAGALURU -P2 | 9671786 |
| 704 | 42100.42600.46800.62400.63800.156600.2164100 | INTERNAL PAINTING - PUTTY / PRIMER APPLICATION | 9d | 2026-05-14 | 2026-05-22 | 703FS+18d |  | BAGALURU -P2 | 9671796 |
| 705 | 42100.42600.46800.62400.63800.156600.2164200 | WINDOW FIXING | 9d | 2026-05-23 | 2026-05-31 | 704 |  | BAGALURU -P2 | 9671806 |
| 706 | 42100.42600.46800.62400.63800.156600.2164300 | INTERNAL PAINTING - 1ST COAT | 15d | 2026-07-31 | 2026-08-14 | 705FS+60d |  | BAGALURU -P2 | 9671816 |
| 707 | 42100.42600.46800.62400.63800.156600.2164400 | INTERNAL DOOR FIXING | 15d | 2026-08-15 | 2026-08-29 | 706 |  | BAGALURU -P2 | 9671826 |
| 708 | 42100.42600.46800.62400.63800.156600.2164500 | WIRING & SWITCH PLATE FIXING | 10d | 2026-08-30 | 2026-09-08 | 707 |  | BAGALURU -P2 | 9671836 |
| 709 | 42100.42600.46800.62400.63800.156600.2164600 | TOILET FALSE CEILING | 15d | 2026-11-16 | 2026-11-30 | 708FS+68d |  | BAGALURU -P2 | 9671846 |
| 710 | 42100.42600.46800.62400.63800.156600.2164700 | CP & SANITARY FIXING | 10d | 2026-12-01 | 2026-12-10 | 709 |  | BAGALURU -P2 | 9671856 |
| 711 | 42100.42600.46800.62400.63800.156600.2164800 | FINAL COAT PAINT | 12d | 2026-12-11 | 2026-12-22 | 710 |  | BAGALURU -P2 | 9671866 |

| ID | WBS | Task | Duration | Start | Finish | Predecessors | Constraint | Calendar | Unique_Task_ID |
| --- | --- | --- | --- | --- | --- | --- | --- | --- | --- |
| 712 | 42100.42600.46800.62400.63800.156700 | **Floor 10** | 268d | 2026-04-08 | 2026-12-31 |  | start no earlier than 2026-04-08 | BAGALURU -P2 | 9668626 |
| 713 | 42100.42600.46800.62400.63800.156700.2164900 | TOILET DADO TILE FIXING | 9d | 2026-04-08 | 2026-04-16 | 701 |  | BAGALURU -P2 | 9671876 |
| 714 | 42100.42600.46800.62400.63800.156700.2165000 | FLAT FLOORING | 9d | 2026-04-17 | 2026-04-25 | 713 |  | BAGALURU -P2 | 9671886 |
| 715 | 42100.42600.46800.62400.63800.156700.2165100 | CORNICE WORKS | 9d | 2026-04-26 | 2026-05-04 | 714 |  | BAGALURU -P2 | 9671896 |
| 716 | 42100.42600.46800.62400.63800.156700.2165200 | INTERNAL PAINTING - PUTTY / PRIMER APPLICATION | 9d | 2026-05-23 | 2026-05-31 | 715FS+18d |  | BAGALURU -P2 | 9671906 |
| 717 | 42100.42600.46800.62400.63800.156700.2165300 | WINDOW FIXING | 9d | 2026-06-01 | 2026-06-09 | 716 |  | BAGALURU -P2 | 9671916 |
| 718 | 42100.42600.46800.62400.63800.156700.2165400 | INTERNAL PAINTING - 1ST COAT | 15d | 2026-08-09 | 2026-08-23 | 717FS+60d |  | BAGALURU -P2 | 9671926 |
| 719 | 42100.42600.46800.62400.63800.156700.2165500 | INTERNAL DOOR FIXING | 15d | 2026-08-24 | 2026-09-07 | 718 |  | BAGALURU -P2 | 9671936 |
| 720 | 42100.42600.46800.62400.63800.156700.2165600 | WIRING & SWITCH PLATE FIXING | 10d | 2026-09-08 | 2026-09-17 | 719 |  | BAGALURU -P2 | 9671946 |
| 721 | 42100.42600.46800.62400.63800.156700.2165700 | TOILET FALSE CEILING | 15d | 2026-11-25 | 2026-12-09 | 720FS+68d |  | BAGALURU -P2 | 9671956 |
| 722 | 42100.42600.46800.62400.63800.156700.2165800 | CP & SANITARY FIXING | 10d | 2026-12-10 | 2026-12-19 | 721 |  | BAGALURU -P2 | 9671966 |
| 723 | 42100.42600.46800.62400.63800.156700.2165900 | FINAL COAT PAINT | 12d | 2026-12-20 | 2026-12-31 | 722 |  | BAGALURU -P2 | 9671976 |
| 724 | 42100.42600.46800.62400.63800.156800 | **Floor 11** | 268d | 2026-04-17 | 2027-01-09 |  | start no earlier than 2026-04-17 | BAGALURU -P2 | 9668636 |
| 725 | 42100.42600.46800.62400.63800.156800.2166000 | TOILET DADO TILE FIXING | 9d | 2026-04-17 | 2026-04-25 | 713 |  | BAGALURU -P2 | 9671986 |
| 726 | 42100.42600.46800.62400.63800.156800.2166100 | FLAT FLOORING | 9d | 2026-04-26 | 2026-05-04 | 725 |  | BAGALURU -P2 | 9671996 |
| 727 | 42100.42600.46800.62400.63800.156800.2166200 | CORNICE WORKS | 9d | 2026-05-05 | 2026-05-13 | 726 |  | BAGALURU -P2 | 9672006 |
| 728 | 42100.42600.46800.62400.63800.156800.2166300 | INTERNAL PAINTING - PUTTY / PRIMER APPLICATION | 9d | 2026-06-01 | 2026-06-09 | 727FS+18d |  | BAGALURU -P2 | 9674946 |
| 729 | 42100.42600.46800.62400.63800.156800.2166400 | WINDOW FIXING | 9d | 2026-06-10 | 2026-06-18 | 728 |  | BAGALURU -P2 | 9674956 |
| 730 | 42100.42600.46800.62400.63800.156800.2166500 | INTERNAL PAINTING - 1ST COAT | 15d | 2026-08-18 | 2026-09-01 | 729FS+60d |  | BAGALURU -P2 | 9674966 |
| 731 | 42100.42600.46800.62400.63800.156800.2166600 | INTERNAL DOOR FIXING | 15d | 2026-09-02 | 2026-09-16 | 730 |  | BAGALURU -P2 | 9674976 |
| 732 | 42100.42600.46800.62400.63800.156800.2166700 | WIRING & SWITCH PLATE FIXING | 10d | 2026-09-17 | 2026-09-26 | 731 |  | BAGALURU -P2 | 9674996 |
| 733 | 42100.42600.46800.62400.63800.156800.2166800 | TOILET FALSE CEILING | 15d | 2026-12-04 | 2026-12-18 | 732FS+68d |  | BAGALURU -P2 | 9675006 |
| 734 | 42100.42600.46800.62400.63800.156800.2166900 | CP & SANITARY FIXING | 10d | 2026-12-19 | 2026-12-28 | 733 |  | BAGALURU -P2 | 9675016 |
| 735 | 42100.42600.46800.62400.63800.156800.2167000 | FINAL COAT PAINT | 12d | 2026-12-29 | 2027-01-09 | 734 |  | BAGALURU -P2 | 9675026 |

| ID | WBS | Task | Duration | Start | Finish | Predecessors | Constraint | Calendar | Unique_Task_ID |
| --- | --- | --- | --- | --- | --- | --- | --- | --- | --- |
| 736 | 42100.42600.46800.62400.63800.156900 | **Floor 12** | 268d | 2026-04-26 | 2027-01-18 |  | start no earlier than 2026-04-26 | BAGALURU -P2 | 9668646 |
| 737 | 42100.42600.46800.62400.63800.156900.2167100 | TOILET DADO TILE FIXING | 9d | 2026-04-26 | 2026-05-04 | 725 |  | BAGALURU -P2 | 9675036 |
| 738 | 42100.42600.46800.62400.63800.156900.2167200 | FLAT FLOORING | 9d | 2026-05-05 | 2026-05-13 | 737 |  | BAGALURU -P2 | 9675046 |
| 739 | 42100.42600.46800.62400.63800.156900.2167300 | CORNICE WORKS | 9d | 2026-05-14 | 2026-05-22 | 738 |  | BAGALURU -P2 | 9675056 |
| 740 | 42100.42600.46800.62400.63800.156900.2167400 | INTERNAL PAINTING - PUTTY / PRIMER APPLICATION | 9d | 2026-06-10 | 2026-06-18 | 739FS+18d |  | BAGALURU -P2 | 9675066 |
| 741 | 42100.42600.46800.62400.63800.156900.2167500 | WINDOW FIXING | 9d | 2026-06-19 | 2026-06-27 | 740 |  | BAGALURU -P2 | 9675076 |
| 742 | 42100.42600.46800.62400.63800.156900.2167600 | INTERNAL PAINTING - 1ST COAT | 15d | 2026-08-27 | 2026-09-10 | 741FS+60d |  | BAGALURU -P2 | 9675086 |
| 743 | 42100.42600.46800.62400.63800.156900.2167700 | INTERNAL DOOR FIXING | 15d | 2026-09-11 | 2026-09-25 | 742 |  | BAGALURU -P2 | 9675096 |
| 744 | 42100.42600.46800.62400.63800.156900.2167800 | WIRING & SWITCH PLATE FIXING | 10d | 2026-09-26 | 2026-10-05 | 743 |  | BAGALURU -P2 | 9675106 |
| 745 | 42100.42600.46800.62400.63800.156900.2167900 | TOILET FALSE CEILING | 15d | 2026-12-13 | 2026-12-27 | 744FS+68d |  | BAGALURU -P2 | 9675116 |
| 746 | 42100.42600.46800.62400.63800.156900.2168000 | CP & SANITARY FIXING | 10d | 2026-12-28 | 2027-01-06 | 745 |  | BAGALURU -P2 | 9675126 |
| 747 | 42100.42600.46800.62400.63800.156900.2168100 | FINAL COAT PAINT | 12d | 2027-01-07 | 2027-01-18 | 746 |  | BAGALURU -P2 | 9675136 |
| 748 | 42100.42600.46800.62400.63800.157000 | **Floor 13** | 268d | 2026-05-05 | 2027-01-27 |  | start no earlier than 2026-05-05 | BAGALURU -P2 | 9668656 |
| 749 | 42100.42600.46800.62400.63800.157000.2168200 | TOILET DADO TILE FIXING | 9d | 2026-05-05 | 2026-05-13 | 737 |  | BAGALURU -P2 | 9675146 |
| 750 | 42100.42600.46800.62400.63800.157000.2168300 | FLAT FLOORING | 9d | 2026-05-14 | 2026-05-22 | 749 |  | BAGALURU -P2 | 9675156 |
| 751 | 42100.42600.46800.62400.63800.157000.2168400 | CORNICE WORKS | 9d | 2026-05-23 | 2026-05-31 | 750 |  | BAGALURU -P2 | 9675166 |
| 752 | 42100.42600.46800.62400.63800.157000.2168500 | INTERNAL PAINTING - PUTTY / PRIMER APPLICATION | 9d | 2026-06-19 | 2026-06-27 | 751FS+18d |  | BAGALURU -P2 | 9675176 |
| 753 | 42100.42600.46800.62400.63800.157000.2168600 | WINDOW FIXING | 9d | 2026-06-28 | 2026-07-06 | 752 |  | BAGALURU -P2 | 9675186 |
| 754 | 42100.42600.46800.62400.63800.157000.2168700 | INTERNAL PAINTING - 1ST COAT | 15d | 2026-09-05 | 2026-09-19 | 753FS+60d |  | BAGALURU -P2 | 9675196 |
| 755 | 42100.42600.46800.62400.63800.157000.2168800 | INTERNAL DOOR FIXING | 15d | 2026-09-20 | 2026-10-04 | 754 |  | BAGALURU -P2 | 9675206 |
| 756 | 42100.42600.46800.62400.63800.157000.2168900 | WIRING & SWITCH PLATE FIXING | 10d | 2026-10-05 | 2026-10-14 | 755 |  | BAGALURU -P2 | 9675216 |
| 757 | 42100.42600.46800.62400.63800.157000.2169000 | TOILET FALSE CEILING | 15d | 2026-12-22 | 2027-01-05 | 756FS+68d |  | BAGALURU -P2 | 9675226 |
| 758 | 42100.42600.46800.62400.63800.157000.2169100 | CP & SANITARY FIXING | 10d | 2027-01-06 | 2027-01-15 | 757 |  | BAGALURU -P2 | 9675236 |
| 759 | 42100.42600.46800.62400.63800.157000.2169200 | FINAL COAT PAINT | 12d | 2027-01-16 | 2027-01-27 | 758 |  | BAGALURU -P2 | 9675246 |

| ID | WBS | Task | Duration | Start | Finish | Predecessors | Constraint | Calendar | Unique_Task_ID |
| --- | --- | --- | --- | --- | --- | --- | --- | --- | --- |
| 760 | 42100.42600.46800.62400.63800.157100 | **Floor 14** | 268d | 2026-05-14 | 2027-02-05 |  | start no earlier than 2026-05-14 | BAGALURU -P2 | 9668666 |
| 761 | 42100.42600.46800.62400.63800.157100.2169300 | TOILET DADO TILE FIXING | 9d | 2026-05-14 | 2026-05-22 | 749 |  | BAGALURU -P2 | 9675256 |
| 762 | 42100.42600.46800.62400.63800.157100.2169400 | FLAT FLOORING | 9d | 2026-05-23 | 2026-05-31 | 761 |  | BAGALURU -P2 | 9675266 |
| 763 | 42100.42600.46800.62400.63800.157100.2169500 | CORNICE WORKS | 9d | 2026-06-01 | 2026-06-09 | 762 |  | BAGALURU -P2 | 9675276 |
| 764 | 42100.42600.46800.62400.63800.157100.2169600 | INTERNAL PAINTING - PUTTY / PRIMER APPLICATION | 9d | 2026-06-28 | 2026-07-06 | 763FS+18d |  | BAGALURU -P2 | 9675286 |
| 765 | 42100.42600.46800.62400.63800.157100.2169700 | WINDOW FIXING | 9d | 2026-07-07 | 2026-07-15 | 764 |  | BAGALURU -P2 | 9675296 |
| 766 | 42100.42600.46800.62400.63800.157100.2169800 | INTERNAL PAINTING - 1ST COAT | 15d | 2026-09-14 | 2026-09-28 | 765FS+60d |  | BAGALURU -P2 | 9675306 |
| 767 | 42100.42600.46800.62400.63800.157100.2169900 | INTERNAL DOOR FIXING | 15d | 2026-09-29 | 2026-10-13 | 766 |  | BAGALURU -P2 | 9675316 |
| 768 | 42100.42600.46800.62400.63800.157100.2170000 | WIRING & SWITCH PLATE FIXING | 10d | 2026-10-14 | 2026-10-23 | 767 |  | BAGALURU -P2 | 9675326 |
| 769 | 42100.42600.46800.62400.63800.157100.2170100 | TOILET FALSE CEILING | 15d | 2026-12-31 | 2027-01-14 | 768FS+68d |  | BAGALURU -P2 | 9675336 |
| 770 | 42100.42600.46800.62400.63800.157100.2170200 | CP & SANITARY FIXING | 10d | 2027-01-15 | 2027-01-24 | 769 |  | BAGALURU -P2 | 9675346 |
| 771 | 42100.42600.46800.62400.63800.157100.2170300 | FINAL COAT PAINT | 12d | 2027-01-25 | 2027-02-05 | 770 |  | BAGALURU -P2 | 9675356 |
| 772 | 42100.42600.46800.62400.63800.157200 | **Floor 15** | 268d | 2026-05-23 | 2027-02-14 |  | start no earlier than 2026-05-23 | BAGALURU -P2 | 9668676 |
| 773 | 42100.42600.46800.62400.63800.157200.2170400 | TOILET DADO TILE FIXING | 9d | 2026-05-23 | 2026-05-31 | 761 |  | BAGALURU -P2 | 9675366 |
| 774 | 42100.42600.46800.62400.63800.157200.2170500 | FLAT FLOORING | 9d | 2026-06-01 | 2026-06-09 | 773 |  | BAGALURU -P2 | 9675376 |
| 775 | 42100.42600.46800.62400.63800.157200.2170600 | CORNICE WORKS | 9d | 2026-06-10 | 2026-06-18 | 774 |  | BAGALURU -P2 | 9675386 |
| 776 | 42100.42600.46800.62400.63800.157200.2170700 | INTERNAL PAINTING - PUTTY / PRIMER APPLICATION | 9d | 2026-07-07 | 2026-07-15 | 775FS+18d |  | BAGALURU -P2 | 9675396 |
| 777 | 42100.42600.46800.62400.63800.157200.2170800 | WINDOW FIXING | 9d | 2026-07-16 | 2026-07-24 | 776 |  | BAGALURU -P2 | 9675406 |
| 778 | 42100.42600.46800.62400.63800.157200.2170900 | INTERNAL PAINTING - 1ST COAT | 15d | 2026-09-23 | 2026-10-07 | 777FS+60d |  | BAGALURU -P2 | 9675416 |
| 779 | 42100.42600.46800.62400.63800.157200.2171000 | INTERNAL DOOR FIXING | 15d | 2026-10-08 | 2026-10-22 | 778 |  | BAGALURU -P2 | 9675426 |
| 780 | 42100.42600.46800.62400.63800.157200.2171100 | WIRING & SWITCH PLATE FIXING | 10d | 2026-10-23 | 2026-11-01 | 779 |  | BAGALURU -P2 | 9675436 |
| 781 | 42100.42600.46800.62400.63800.157200.2171200 | TOILET FALSE CEILING | 15d | 2027-01-09 | 2027-01-23 | 780FS+68d |  | BAGALURU -P2 | 9675446 |
| 782 | 42100.42600.46800.62400.63800.157200.2171300 | CP & SANITARY FIXING | 10d | 2027-01-24 | 2027-02-02 | 781 |  | BAGALURU -P2 | 9675456 |
| 783 | 42100.42600.46800.62400.63800.157200.2171400 | FINAL COAT PAINT | 12d | 2027-02-03 | 2027-02-14 | 782 |  | BAGALURU -P2 | 9675466 |

| ID | WBS | Task | Duration | Start | Finish | Predecessors | Constraint | Calendar | Unique_Task_ID |
| --- | --- | --- | --- | --- | --- | --- | --- | --- | --- |
| 784 | 42100.42600.46800.62400.107100 | **Lobby Finishes** | 535d | 2026-04-11 | 2028-04-29 |  | start no earlier than 2026-04-11 |  | 9668516 |
| 785 | 42100.42600.46800.62400.107100.860500 | STAIRCASE RAILING | 150d | 2026-04-11 | 2026-09-07 | 491 |  | BAGALURU -P2 | 9670676 |
| 786 | 42100.42600.46800.62400.107100.860600 | LIFT BLOCK WORK | 120d | 2026-09-08 | 2027-01-05 | 785 |  | BAGALURU -P2 | 9670686 |
| 787 | 42100.42600.46800.62400.107100.860700 | FIRE RATED DOORs | 90d | 2027-01-06 | 2027-04-05 | 786 |  | BAGALURU -P2 | 9670696 |
| 788 | 42100.42600.46800.62400.107100.860800 | LOBBY FLOORING WORK | 120d | 2027-02-05 | 2027-06-04 | 787SS+30d |  | BAGALURU -P2 | 9670706 |
| 789 | 42100.42600.46800.62400.107100.860900 | STAIRCASE TILING | 120d | 2027-03-07 | 2027-07-04 | 788SS+30d |  | BAGALURU -P2 | 9670716 |
| 790 | 42100.42600.46800.62400.107100.861000 | PUTTY + PRIMER | 120d | 2027-04-06 | 2027-08-03 | 789SS+30d |  | BAGALURU -P2 | 9670726 |
| 791 | 42100.42600.46800.62400.107100.861100 | False ceiling & 1ST COAT PAINTING | 120d | 2027-05-06 | 2027-09-02 | 790SS+30d |  | BAGALURU -P2 | 9670736 |
| 792 | 42100.42600.46800.62400.107100.861200 | FINAL COAT PAINT | 90d | 2027-12-02 | 2028-02-29 | 791FS+90d |  | BAGALURU -P2 | 9670746 |
| 793 | 42100.42600.46800.62400.107100.861300 | CLEANING | 30d | 2028-03-01 | 2028-03-30 | 792 |  | BAGALURU -P2 | 9670756 |
| 794 | 42100.42600.46800.62400.107100.861400 | Terrace glass railing works | 45d | 2028-03-01 | 2028-04-14 | 792 |  | BAGALURU -P2 | 9670766 |
| 795 | 42100.42600.46800.62400.107100.861500 | Common area False ceiling | 30d | 2028-03-01 | 2028-03-30 | 792 |  | BAGALURU -P2 | 9670776 |
| 796 | 42100.42600.46800.62400.107100.861600 | Entrance Lobby (excl. MEP Works) | 60d | 2028-03-01 | 2028-04-29 | 792 |  | BAGALURU -P2 | 9670786 |
| 797 | 42100.42600.46800.62400.167100 | **MEP works** | 420d | 2026-05-14 | 2027-12-22 |  | start no earlier than 2026-05-14 |  | 9668716 |
| 798 | 42100.42600.46800.62400.167100.484100 | **Lift Works** | 165d | 2027-01-06 | 2027-06-19 |  | start no earlier than 2027-01-06 | BAGALURU -P2 | 9670366 |
| 799 | 42100.42600.46800.62400.167100.484100.2171500 | Lift Suppply | 45d | 2027-01-06 | 2027-02-19 | 786 |  | BAGALURU -P2 | 9675476 |
| 800 | 42100.42600.46800.62400.167100.484100.2171600 | Lift installation work | 120d | 2027-02-20 | 2027-06-19 | 799 |  | BAGALURU -P2 | 9675486 |
| 801 | 42100.42600.46800.62400.167100.382400 | **Plumbing works** | 570d | 2026-06-01 | 2027-12-22 |  | start no earlier than 2026-06-01 | BAGALURU -P2 | 9670316 |
| 802 | 42100.42600.46800.62400.167100.382400.2171700 | Shaft Plumbing | 120d | 2026-06-01 | 2026-09-28 | 598 |  | BAGALURU -P2 | 9675496 |
| 803 | 42100.42600.46800.62400.167100.382400.2171800 | Terrace Plumbing | 90d | 2026-07-31 | 2026-10-28 | 802FF+30d |  | BAGALURU -P2 | 9675506 |
| 804 | 42100.42600.46800.62400.167100.382400.2171900 | T & C | 90d | 2027-09-24 | 2027-12-22 | 802FS+360d |  | BAGALURU -P2 | 9675516 |
| 805 | 42100.42600.46800.62400.167100.382500 | **Fire Fighting works** | 588d | 2026-05-14 | 2027-12-22 |  | start no earlier than 2026-05-14 | BAGALURU -P2 | 9670326 |
| 806 | 42100.42600.46800.62400.167100.382500.2172000 | Shaft works | 60d | 2026-05-14 | 2026-07-12 | 595 |  | BAGALURU -P2 | 9675526 |
| 807 | 42100.42600.46800.62400.167100.382500.2172100 | FAPA works | 7.5d | 2026-07-13 | 2026-07-21 | 806 |  | Indian Calendar | 9675536 |
| 808 | 42100.42600.46800.62400.167100.382500.2172200 | T & C | 90d | 2027-09-24 | 2027-12-22 | 804FF |  | BAGALURU -P2 | 9675546 |

| ID | WBS | Task | Duration | Start | Finish | Predecessors | Constraint | Calendar | Unique_Task_ID |
| --- | --- | --- | --- | --- | --- | --- | --- | --- | --- |
| 809 | 42100.42600.46800.62400.167100.382600 | **Electrical works** | 390d | 2026-11-28 | 2027-12-22 |  | start no earlier than 2026-11-28 | BAGALURU -P2 | 9670336 |
| 810 | 42100.42600.46800.62400.167100.382600.2172300 | Basement & Shaft electrical | 90d | 2026-11-28 | 2027-02-25 | 802FS+60d |  | BAGALURU -P2 | 9675556 |
| 811 | 42100.42600.46800.62400.167100.382600.2172400 | Basement & common area lighting | 30d | 2027-02-26 | 2027-03-27 | 810 |  | BAGALURU -P2 | 9675566 |
| 812 | 42100.42600.46800.62400.167100.382600.2172500 | T & C | 90d | 2027-09-24 | 2027-12-22 | 804FF |  | BAGALURU -P2 | 9675576 |
| 813 | 42100.42600.46800.52900 | **Customer milestone T-2** | 981d | 2025-09-26 | 2028-11-13 |  | start no earlier than 2025-09-26 | Indian Calendar | 9668696 |
| 814 | 42100.42600.46800.52900.817400 | Commencement of Ground Floor | 1d | 2025-09-26 | 2025-09-26 | 454 |  | Indian Calendar | 9670586 |
| 815 | 42100.42600.46800.52900.817500 | Commencement of Ground Floor | 1d | 2025-09-26 | 2025-09-26 | 814FF |  | Indian Calendar | 10037879 |
| 816 | 42100.42600.46800.52900.817600 | Commencement of Ground Floor | 1d | 2025-09-26 | 2025-09-26 | 814FF |  | Indian Calendar | 10037869 |
| 817 | 42100.42600.46800.52900.817700 | Commencement of Ground Floor | 1d | 2025-09-26 | 2025-09-26 | 814FF |  | Indian Calendar | 10037859 |
| 818 | 42100.42600.46800.52900.817800 | Commencement of Ground Floor | 1d | 2025-09-26 | 2025-09-26 | 814FF |  | Indian Calendar | 10037849 |
| 819 | 42100.42600.46800.52900.817900 | Commencement of 3rd Floor | 1d | 2025-12-22 | 2025-12-22 | 467 |  | Indian Calendar | 9670596 |
| 820 | 42100.42600.46800.52900.818000 | Commencement of 3rd Floor | 1d | 2025-12-22 | 2025-12-22 | 819FF |  | Indian Calendar | 10037909 |
| 821 | 42100.42600.46800.52900.818100 | Commencement of 3rd Floor | 1d | 2025-12-22 | 2025-12-22 | 819FF |  | Indian Calendar | 10037899 |
| 822 | 42100.42600.46800.52900.818200 | Commencement of 3rd Floor | 1d | 2025-12-22 | 2025-12-22 | 819FF |  | Indian Calendar | 10037889 |
| 823 | 42100.42600.46800.52900.818300 | Commencement of 3rd Floor | 1d | 2025-12-22 | 2025-12-22 | 819FF |  | Indian Calendar | 10037919 |
| 824 | 42100.42600.46800.52900.818400 | Commencement of 6th Floor | 1d | 2026-01-17 | 2026-01-17 | 473 |  | Indian Calendar | 9670606 |
| 825 | 42100.42600.46800.52900.818500 | Commencement of 6th Floor | 1d | 2026-01-17 | 2026-01-17 | 824FF |  | Indian Calendar | 10037959 |
| 826 | 42100.42600.46800.52900.818600 | Commencement of 6th Floor | 1d | 2026-01-17 | 2026-01-17 | 824FF |  | Indian Calendar | 10037949 |
| 827 | 42100.42600.46800.52900.818700 | Commencement of 6th Floor | 1d | 2026-01-17 | 2026-01-17 | 824FF |  | Indian Calendar | 10037939 |
| 828 | 42100.42600.46800.52900.818800 | Commencement of 6th Floor | 1d | 2026-01-17 | 2026-01-17 | 824FF |  | Indian Calendar | 10037929 |
| 829 | 42100.42600.46800.52900.818900 | Commencement of 9th Floor | 1d | 2026-02-13 | 2026-02-13 | 479 |  | Indian Calendar | 9670616 |
| 830 | 42100.42600.46800.52900.819000 | Commencement of 9th Floor | 1d | 2026-02-13 | 2026-02-13 | 829FF |  | Indian Calendar | 10037999 |
| 831 | 42100.42600.46800.52900.819100 | Commencement of 9th Floor | 1d | 2026-02-13 | 2026-02-13 | 829FF |  | Indian Calendar | 10037989 |
| 832 | 42100.42600.46800.52900.819200 | Commencement of 9th Floor | 1d | 2026-02-13 | 2026-02-13 | 829FF |  | Indian Calendar | 10037979 |
| 833 | 42100.42600.46800.52900.819300 | Commencement of 9th Floor | 1d | 2026-02-13 | 2026-02-13 | 829FF |  | Indian Calendar | 10037969 |
| 834 | 42100.42600.46800.52900.819400 | Commencement of 12th Floor | 1d | 2026-03-12 | 2026-03-12 | 485 |  | Indian Calendar | 9670626 |
| 835 | 42100.42600.46800.52900.819500 | Commencement of 12th Floor | 1d | 2026-03-12 | 2026-03-12 | 834FF |  | Indian Calendar | 10038039 |
| 836 | 42100.42600.46800.52900.819600 | Commencement of 12th Floor | 1d | 2026-03-12 | 2026-03-12 | 834FF |  | Indian Calendar | 10038029 |
| 837 | 42100.42600.46800.52900.819700 | Commencement of 12th Floor | 1d | 2026-03-12 | 2026-03-12 | 834FF |  | Indian Calendar | 10038019 |
| 838 | 42100.42600.46800.52900.819800 | Commencement of 12th Floor | 1d | 2026-03-12 | 2026-03-12 | 834FF |  | Indian Calendar | 10038049 |
| 839 | 42100.42600.46800.52900.819900 | Commencement of Terrace | 1d | 2026-04-11 | 2026-04-11 | 491 |  | Indian Calendar | 9670636 |
| 840 | 42100.42600.46800.52900.820000 | Commencement of Terrace | 1d | 2026-04-11 | 2026-04-11 | 839FF |  | Indian Calendar | 10038089 |
| 841 | 42100.42600.46800.52900.820100 | Commencement of Terrace | 1d | 2026-04-11 | 2026-04-11 | 839FF |  | Indian Calendar | 10038079 |
| 842 | 42100.42600.46800.52900.820200 | Commencement of Terrace | 1d | 2026-04-11 | 2026-04-11 | 839FF |  | Indian Calendar | 10038069 |
| 843 | 42100.42600.46800.52900.820300 | Commencement of Terrace | 1d | 2026-04-11 | 2026-04-11 | 839FF |  | Indian Calendar | 10038059 |
| 844 | 42100.42600.46800.52900.820400 | Commencement of External Painting | 1d | 2026-11-09 | 2026-11-09 | 839FS+180d |  | Indian Calendar | 9670646 |
| 845 | 42100.42600.46800.52900.820500 | Commencement of External Painting | 1d | 2026-11-09 | 2026-11-09 | 844FF |  | Indian Calendar | 10038129 |
| 846 | 42100.42600.46800.52900.820600 | Commencement of External Painting | 1d | 2026-11-09 | 2026-11-09 | 844FF |  | Indian Calendar | 10038119 |
| 847 | 42100.42600.46800.52900.820700 | Commencement of External Painting | 1d | 2026-11-09 | 2026-11-09 | 844FF |  | Indian Calendar | 10038109 |
| 848 | 42100.42600.46800.52900.820800 | Commencement of External Painting | 1d | 2026-11-09 | 2026-11-09 | 844FF |  | Indian Calendar | 10038099 |
| 849 | 42100.42600.46800.52900.820900 | Receipt of Fire CC | 1d | 2027-06-12 | 2027-06-12 | 839FS+365d |  | Indian Calendar | 9670656 |
| 850 | 42100.42600.46800.52900.821000 | Receipt of Fire CC | 1d | 2027-06-12 | 2027-06-12 | 849FF |  | Indian Calendar | 10038179 |
| 851 | 42100.42600.46800.52900.821100 | Receipt of Fire CC | 1d | 2027-06-12 | 2027-06-12 | 849FF |  | Indian Calendar | 10038169 |
| 852 | 42100.42600.46800.52900.821200 | Receipt of Fire CC | 1d | 2027-06-12 | 2027-06-12 | 849FF |  | Indian Calendar | 10038159 |
| 853 | 42100.42600.46800.52900.821300 | Receipt of Fire CC | 1d | 2027-06-12 | 2027-06-12 | 849FF |  | Indian Calendar | 10038149 |
| 854 | 42100.42600.46800.52900.821400 | Notice to possession (Tower specific) | 1d | 2028-11-13 | 2028-11-13 | 849SS+445d |  | Indian Calendar | 9670666 |
| 855 | 42100.42600.46800.52900.821500 | Notice to possession (Tower specific) | 1d | 2028-11-13 | 2028-11-13 | 854FF |  | Indian Calendar | 10038239 |
| 856 | 42100.42600.46800.52900.821600 | Notice to possession (Tower specific) | 1d | 2028-11-13 | 2028-11-13 | 854FF |  | Indian Calendar | 10038229 |
| 857 | 42100.42600.46800.52900.821700 | Notice to possession (Tower specific) | 1d | 2028-11-13 | 2028-11-13 | 854FF |  | Indian Calendar | 10038219 |
| 858 | 42100.42600.46800.52900.821800 | Notice to possession (Tower specific) | 1d | 2028-11-13 | 2028-11-13 | 854FF |  | Indian Calendar | 10038209 |

| ID | WBS | Task | Duration | Start | Finish | Predecessors | Constraint | Calendar | Unique_Task_ID |
| --- | --- | --- | --- | --- | --- | --- | --- | --- | --- |
| 859 | 42100.42600.46800.164200 | **Handing Over** | 45d | 2027-02-15 | 2027-04-07 |  | start no earlier than 2027-02-15 | Indian Calendar | 9668686 |
| 860 | 42100.42600.46800.164200.168600 | **Floor 1** | 45d | 2027-02-15 | 2027-04-07 |  | start no earlier than 2027-02-15 | Indian Calendar | 9668726 |
| 861 | 42100.42600.46800.164200.168600.861700 | GLPL Snagging | 15d | 2027-02-15 | 2027-03-03 | 783 |  | Indian Calendar | 9670796 |
| 862 | 42100.42600.46800.164200.168600.861800 | GPLPL Desnagging | 30d | 2027-03-04 | 2027-04-07 | 861 |  | Indian Calendar | 9670806 |
| 863 | 42100.42600.46800.164200.168600.861900 | Gypsum hold 10% | 30d | 2027-03-04 | 2027-04-07 | 862FF |  | Indian Calendar | 9670816 |
| 864 | 42100.42600.46800.164200.168600.862000 | Flooring hold 10% | 30d | 2027-03-04 | 2027-04-07 | 862FF |  | Indian Calendar | 9670826 |
| 865 | 42100.42600.46800.164200.168600.862100 | Painting hold 10% | 30d | 2027-03-04 | 2027-04-07 | 862FF |  | Indian Calendar | 9670836 |
| 866 | 42100.42600.46800.164200.168600.862200 | Doors hold 10% | 30d | 2027-03-04 | 2027-04-07 | 862FF |  | Indian Calendar | 9670846 |
| 867 | 42100.42600.46800.164200.168600.862300 | Windows hold 10% | 30d | 2027-03-04 | 2027-04-07 | 862FF |  | Indian Calendar | 9670856 |
| 868 | 42100.42600.46900 | **TOWER 3** | 1315d | 2025-04-17 | 2028-11-21 |  | start no earlier than 2025-04-17 |  | 9676726 |
| 869 | 42100.42600.46900.492400 | **Earth work** | 481d | 2025-04-17 | 2026-08-10 |  | start no earlier than 2025-04-17 | BAGALURU -P2 | 9677206 |
| 870 | 42100.42600.46900.492400.821900 | Mass Excavation | 94d | 2025-04-17 | 2025-07-19 | 438SS+8d |  | BAGALURU -P2 | 9677466 |
| 871 | 42100.42600.46900.492400.822000 | Backfilling | 94d | 2026-05-09 | 2026-08-10 | 1303 |  | BAGALURU -P2 | 9677476 |
| 872 | 42100.42600.46900.70300 | **Substructure works (Works up to plinth)** | 101d | 2025-07-20 | 2025-10-28 |  | start no earlier than 2025-07-20 | BAGALURU -P2 | 9676796 |
| 873 | 42100.42600.46900.70300.154700 | **Civil works (Shell & Core basement)** | 101d | 2025-07-20 | 2025-10-28 |  | start no earlier than 2025-07-20 | BAGALURU -P2 | 9676816 |
| 874 | 42100.42600.46900.70300.154700.342100 | **Raft works** | 26d | 2025-07-20 | 2025-08-14 |  | start no earlier than 2025-07-20 | BAGALURU -P2 | 9677176 |
| 875 | 42100.42600.46900.70300.154700.342100.391500 | **RCC Works - Tower area** | 26d | 2025-07-20 | 2025-08-14 |  | start no earlier than 2025-07-20 | BAGALURU -P2 | 9677246 |
| 876 | 42100.42600.46900.70300.154700.342100.391500.2567800 | Pocket Excavation | 16d | 2025-07-20 | 2025-08-04 | 870 |  | BAGALURU -P2 | 9679556 |
| 877 | 42100.42600.46900.70300.154700.342100.391500.2567900 | Footing PCC | 16d | 2025-07-20 | 2025-08-04 | 876SS |  | BAGALURU -P2 | 9679566 |
| 878 | 42100.42600.46900.70300.154700.342100.391500.2568000 | Footing / Raft works | 26d | 2025-07-20 | 2025-08-14 | 877SS |  | BAGALURU -P2 | 9679576 |
| 879 | 42100.42600.46900.70300.154700.165900 | **Basements** | 75d | 2025-08-15 | 2025-10-28 |  | start no earlier than 2025-08-15 | BAGALURU -P2 | 9676996 |
| 880 | 42100.42600.46900.70300.154700.165900.496600 | **Basement 1** | 25d | 2025-08-15 | 2025-09-08 |  | start no earlier than 2025-08-15 | BAGALURU -P2 | 9677256 |
| 881 | 42100.42600.46900.70300.154700.165900.496600.2568100 | columns | 16d | 2025-08-15 | 2025-08-30 | 878 |  | BAGALURU -P2 | 9679586 |
| 882 | 42100.42600.46900.70300.154700.165900.496600.2568200 | Beam & slab | 21d | 2025-08-19 | 2025-09-08 | 881SS+4d |  | BAGALURU -P2 | 9679596 |

Notes:
- 869: 2 Months for Excavation

| ID | WBS | Task | Duration | Start | Finish | Predecessors | Constraint | Calendar | Unique_Task_ID |
| --- | --- | --- | --- | --- | --- | --- | --- | --- | --- |
| 883 | 42100.42600.46900.70300.154700.165900.369200 | **Ground floor slab** | 25d | 2025-09-09 | 2025-10-03 |  | start no earlier than 2025-09-09 | BAGALURU -P2 | 9677196 |
| 884 | 42100.42600.46900.70300.154700.165900.369200.477500 | **RCC Works - Tower area** | 25d | 2025-09-09 | 2025-10-03 |  | start no earlier than 2025-09-09 |  | 9677276 |
| 885 | 42100.42600.46900.70300.154700.165900.369200.477500.3328400 | columns | 16d | 2025-09-09 | 2025-09-24 | 882 |  |  | 9680656 |
| 886 | 42100.42600.46900.70300.154700.165900.369200.477500.3328500 | Beam & slab | 22d | 2025-09-12 | 2025-10-03 | 885SS+3d |  |  | 9680666 |
| 887 | 42100.42600.46900.70300.154700.165900.369300 | **1st floor slab** | 25d | 2025-10-04 | 2025-10-28 |  | start no earlier than 2025-10-04 | BAGALURU -P2 | 9677186 |
| 888 | 42100.42600.46900.70300.154700.165900.369300.477600 | **RCC Works - Tower area** | 25d | 2025-10-04 | 2025-10-28 |  | start no earlier than 2025-10-04 |  | 9677286 |
| 889 | 42100.42600.46900.70300.154700.165900.369300.477600.3328600 | columns | 16d | 2025-10-04 | 2025-10-19 | 886 |  |  | 9680676 |
| 890 | 42100.42600.46900.70300.154700.165900.369300.477600.3328700 | Beam & slab | 22d | 2025-10-07 | 2025-10-28 | 889SS+3d |  |  | 9680686 |
| 891 | 42100.42600.46900.62500 | **Superstructure Works** | 922d | 2025-10-29 | 2028-05-07 |  | start no earlier than 2025-10-29 |  | 9676736 |
| 892 | 42100.42600.46900.62500.66200 | **RCC Slab works** | 172d | 2025-10-29 | 2026-04-18 |  | start no earlier than 2025-10-29 | Whitefield - STRUCTURE | 9676776 |
| 893 | 42100.42600.46900.62500.66200.67100 | **Slab RCC works** | 172d | 2025-10-29 | 2026-04-18 |  | start no earlier than 2025-10-29 | Whitefield - STRUCTURE | 9676786 |
| 894 | 42100.42600.46900.62500.66200.67100.513300 | **2nd floor slab (conventional floor)** | 25d | 2025-10-29 | 2025-11-22 |  | start no earlier than 2025-10-29 |  | 9677396 |
| 895 | 42100.42600.46900.62500.66200.67100.513300.2568300 | 2nd floor slab | 25d | 2025-10-29 | 2025-11-22 | 890 |  |  | 9679606 |
| 896 | 42100.42600.46900.62500.66200.67100.513200 | **3rd floor slab (1st setting)** | 21d | 2025-11-23 | 2025-12-13 |  | start no earlier than 2025-11-23 |  | 9677366 |
| 897 | 42100.42600.46900.62500.66200.67100.513200.2568400 | 3rd floor slab | 21d | 2025-11-23 | 2025-12-13 | 895 |  |  | 9679616 |
| 898 | 42100.42600.46900.62500.66200.67100.513100 | **4th floor slab** | 15d | 2025-12-14 | 2025-12-28 |  | start no earlier than 2025-12-14 |  | 9677306 |
| 899 | 42100.42600.46900.62500.66200.67100.513100.2568500 | 4th floor slab | 15d | 2025-12-14 | 2025-12-28 | 897 |  |  | 9679626 |
| 900 | 42100.42600.46900.62500.66200.67100.513000 | **5th floor slab** | 9d | 2025-12-29 | 2026-01-06 |  | start no earlier than 2025-12-29 |  | 9677316 |
| 901 | 42100.42600.46900.62500.66200.67100.513000.2568600 | 5th floor slab | 9d | 2025-12-29 | 2026-01-06 | 899 |  |  | 9679636 |
| 902 | 42100.42600.46900.62500.66200.67100.512900 | **6th floor slab** | 9d | 2026-01-07 | 2026-01-15 |  | start no earlier than 2026-01-07 |  | 9677326 |
| 903 | 42100.42600.46900.62500.66200.67100.512900.2568700 | 6th floor slab | 9d | 2026-01-07 | 2026-01-15 | 901 |  |  | 9679646 |
| 904 | 42100.42600.46900.62500.66200.67100.512800 | **7th floor slab** | 9d | 2026-01-16 | 2026-01-24 |  | start no earlier than 2026-01-16 |  | 9677336 |
| 905 | 42100.42600.46900.62500.66200.67100.512800.2568800 | 7th floor slab | 9d | 2026-01-16 | 2026-01-24 | 903 |  |  | 9679656 |
| 906 | 42100.42600.46900.62500.66200.67100.512700 | **8th floor slab** | 9d | 2026-01-25 | 2026-02-02 |  | start no earlier than 2026-01-25 |  | 9677296 |
| 907 | 42100.42600.46900.62500.66200.67100.512700.2568900 | 8th floor slab | 9d | 2026-01-25 | 2026-02-02 | 905 |  |  | 9679666 |

Notes:
- 894: AVg Slab Cycle of 21 days
- 896: AVg Slab Cycle of 21 days
- 898: AVg Slab Cycle of 21 days
- 900: AVg Slab Cycle of 21 days
- 902: AVg Slab Cycle of 21 days
- 904: AVg Slab Cycle of 21 days
- 906: AVg Slab Cycle of 21 days

| ID | WBS | Task | Duration | Start | Finish | Predecessors | Constraint | Calendar | Unique_Task_ID |
| --- | --- | --- | --- | --- | --- | --- | --- | --- | --- |
| 908 | 42100.42600.46900.62500.66200.67100.512600 | **9th floor slab** | 9d | 2026-02-03 | 2026-02-11 |  | start no earlier than 2026-02-03 |  | 9677376 |
| 909 | 42100.42600.46900.62500.66200.67100.512600.2569000 | 9th floor slab | 9d | 2026-02-03 | 2026-02-11 | 907 |  |  | 9679676 |
| 910 | 42100.42600.46900.62500.66200.67100.512500 | **10th floor slab** | 9d | 2026-02-12 | 2026-02-20 |  | start no earlier than 2026-02-12 |  | 9677456 |
| 911 | 42100.42600.46900.62500.66200.67100.512500.2569100 | 10th floor slab | 9d | 2026-02-12 | 2026-02-20 | 909 |  |  | 9679686 |
| 912 | 42100.42600.46900.62500.66200.67100.512400 | **11th floor slab** | 9d | 2026-02-21 | 2026-03-01 |  | start no earlier than 2026-02-21 |  | 9677446 |
| 913 | 42100.42600.46900.62500.66200.67100.512400.2569200 | 11th floor slab | 9d | 2026-02-21 | 2026-03-01 | 911 |  |  | 9679696 |
| 914 | 42100.42600.46900.62500.66200.67100.512300 | **12th floor slab** | 9d | 2026-03-02 | 2026-03-10 |  | start no earlier than 2026-03-02 |  | 9677356 |
| 915 | 42100.42600.46900.62500.66200.67100.512300.2569300 | 12th floor slab | 9d | 2026-03-02 | 2026-03-10 | 913 |  |  | 9679706 |
| 916 | 42100.42600.46900.62500.66200.67100.512200 | **13th floor slab** | 9d | 2026-03-11 | 2026-03-19 |  | start no earlier than 2026-03-11 |  | 9677386 |
| 917 | 42100.42600.46900.62500.66200.67100.512200.2569400 | 13th floor slab | 9d | 2026-03-11 | 2026-03-19 | 915 |  |  | 9679716 |
| 918 | 42100.42600.46900.62500.66200.67100.512100 | **14th floor slab** | 9d | 2026-03-20 | 2026-03-28 |  | start no earlier than 2026-03-20 |  | 9677416 |
| 919 | 42100.42600.46900.62500.66200.67100.512100.2569500 | 14th floor slab | 9d | 2026-03-20 | 2026-03-28 | 917 |  |  | 9679726 |
| 920 | 42100.42600.46900.62500.66200.67100.512000 | **15th floor slab** | 9d | 2026-03-29 | 2026-04-06 |  | start no earlier than 2026-03-29 |  | 9677346 |
| 921 | 42100.42600.46900.62500.66200.67100.512000.2569600 | 15th floor slab | 9d | 2026-03-29 | 2026-04-06 | 919 |  |  | 9679736 |
| 922 | 42100.42600.46900.62500.66200.67100.511900 | **terrace floor** | 12d | 2026-04-07 | 2026-04-18 |  | start no earlier than 2026-04-07 |  | 9677406 |
| 923 | 42100.42600.46900.62500.66200.67100.511900.2569700 | terrace slab | 12d | 2026-04-07 | 2026-04-18 | 921 |  |  | 9679746 |
| 924 | 42100.42600.46900.62500.65200 | **Civil Finishing works (Brick work, Plaster,conduiting, concled plumbing, waterproofing)** | 176d | 2025-12-29 | 2026-08-31 |  | start no earlier than 2025-12-29 | Yashwantpur Finshing | 9676756 |
| 925 | 42100.42600.46900.62500.65200.65800 | **Flat finishing works** | 162d | 2025-12-29 | 2026-06-08 |  | start no earlier than 2025-12-29 | BAGALURU -P2 | 9676766 |
| 926 | 42100.42600.46900.62500.65200.65800.250500 | **Floor 1** | 31d | 2025-12-29 | 2026-01-28 |  | start no earlier than 2025-12-29 | BAGALURU -P2 | 9677026 |
| 927 | 42100.42600.46900.62500.65200.65800.250500.2569800 | POST POUR CLEARENCE | 9d | 2025-12-29 | 2026-01-06 | 899 |  | BAGALURU -P2 | 9679756 |
| 928 | 42100.42600.46900.62500.65200.65800.250500.2569900 | BALCONY RAILING FIXING | 9d | 2026-01-07 | 2026-01-15 | 927 |  | BAGALURU -P2 | 9679766 |
| 929 | 42100.42600.46900.62500.65200.65800.250500.2570000 | FPS WORKS | 7d | 2026-01-04 | 2026-01-10 | 927FS-3d |  | BAGALURU -P2 | 9679776 |
| 930 | 42100.42600.46900.62500.65200.65800.250500.2570100 | GYPSUM PLASTR APPLICATION | 9d | 2026-01-07 | 2026-01-15 | 929FS-4d |  | BAGALURU -P2 | 9679786 |
| 931 | 42100.42600.46900.62500.65200.65800.250500.2570200 | CONCEALED PLUMBING | 9d | 2026-01-11 | 2026-01-19 | 929 |  | BAGALURU -P2 | 9679796 |
| 932 | 42100.42600.46900.62500.65200.65800.250500.2570300 | WATERPROOFING WORK FOR TOILETS, KITCHEN SUNK & PLANTERS | 9d | 2026-01-20 | 2026-01-28 | 931 |  | BAGALURU -P2 | 9679806 |

Notes:
- 908: AVg Slab Cycle of 21 days
- 910: AVg Slab Cycle of 21 days
- 912: AVg Slab Cycle of 21 days
- 914: AVg Slab Cycle of 21 days
- 916: AVg Slab Cycle of 21 days
- 918: AVg Slab Cycle of 21 days
- 920: AVg Slab Cycle of 21 days
- 922: AVg Slab Cycle of 21 days

| ID | WBS | Task | Duration | Start | Finish | Predecessors | Constraint | Calendar | Unique_Task_ID |
| --- | --- | --- | --- | --- | --- | --- | --- | --- | --- |
| 933 | 42100.42600.46900.62500.65200.65800.250600 | **Floor 2** | 31d | 2026-01-07 | 2026-02-06 |  | start no earlier than 2026-01-07 | BAGALURU -P2 | 9677036 |
| 934 | 42100.42600.46900.62500.65200.65800.250600.2570400 | POST POUR CLEARENCE | 9d | 2026-01-07 | 2026-01-15 | 927 |  | BAGALURU -P2 | 9679816 |
| 935 | 42100.42600.46900.62500.65200.65800.250600.2570500 | BALCONY RAILING FIXING | 9d | 2026-01-16 | 2026-01-24 | 934 |  | BAGALURU -P2 | 9679826 |
| 936 | 42100.42600.46900.62500.65200.65800.250600.2570600 | FPS WORKS | 7d | 2026-01-13 | 2026-01-19 | 934FS-3d |  | BAGALURU -P2 | 9679836 |
| 937 | 42100.42600.46900.62500.65200.65800.250600.2570700 | GYPSUM PLASTR APPLICATION | 9d | 2026-01-16 | 2026-01-24 | 936FS-4d |  | BAGALURU -P2 | 9679846 |
| 938 | 42100.42600.46900.62500.65200.65800.250600.2570800 | CONCEALED PLUMBING | 9d | 2026-01-20 | 2026-01-28 | 936 |  | BAGALURU -P2 | 9679856 |
| 939 | 42100.42600.46900.62500.65200.65800.250600.2570900 | WATERPROOFING WORK FOR TOILETS, KITCHEN SUNK & PLANTERS | 9d | 2026-01-29 | 2026-02-06 | 938 |  | BAGALURU -P2 | 9679866 |
| 940 | 42100.42600.46900.62500.65200.65800.250800 | **Floor 3** | 31d | 2026-01-16 | 2026-02-15 |  | start no earlier than 2026-01-16 | BAGALURU -P2 | 9677046 |
| 941 | 42100.42600.46900.62500.65200.65800.250800.2571000 | POST POUR CLEARENCE | 9d | 2026-01-16 | 2026-01-24 | 934 |  | BAGALURU -P2 | 9679876 |
| 942 | 42100.42600.46900.62500.65200.65800.250800.2571100 | BALCONY RAILING FIXING | 9d | 2026-01-25 | 2026-02-02 | 941 |  | BAGALURU -P2 | 9679886 |
| 943 | 42100.42600.46900.62500.65200.65800.250800.2571200 | FPS WORKS | 7d | 2026-01-22 | 2026-01-28 | 941FS-3d |  | BAGALURU -P2 | 9679896 |
| 944 | 42100.42600.46900.62500.65200.65800.250800.2571300 | GYPSUM PLASTR APPLICATION | 9d | 2026-01-25 | 2026-02-02 | 943FS-4d |  | BAGALURU -P2 | 9679906 |
| 945 | 42100.42600.46900.62500.65200.65800.250800.2571400 | CONCEALED PLUMBING | 9d | 2026-01-29 | 2026-02-06 | 943 |  | BAGALURU -P2 | 9679916 |
| 946 | 42100.42600.46900.62500.65200.65800.250800.2571500 | WATERPROOFING WORK FOR TOILETS, KITCHEN SUNK & PLANTERS | 9d | 2026-02-07 | 2026-02-15 | 945 |  | BAGALURU -P2 | 9679926 |
| 947 | 42100.42600.46900.62500.65200.65800.251000 | **Floor 4** | 31d | 2026-01-25 | 2026-02-24 |  | start no earlier than 2026-01-25 | BAGALURU -P2 | 9677056 |
| 948 | 42100.42600.46900.62500.65200.65800.251000.2571600 | POST POUR CLEARENCE | 9d | 2026-01-25 | 2026-02-02 | 941 |  | BAGALURU -P2 | 9679936 |
| 949 | 42100.42600.46900.62500.65200.65800.251000.2571700 | BALCONY RAILING FIXING | 9d | 2026-02-03 | 2026-02-11 | 948 |  | BAGALURU -P2 | 9679946 |
| 950 | 42100.42600.46900.62500.65200.65800.251000.2571800 | FPS WORKS | 7d | 2026-01-31 | 2026-02-06 | 948FS-3d |  | BAGALURU -P2 | 9679956 |
| 951 | 42100.42600.46900.62500.65200.65800.251000.2571900 | GYPSUM PLASTR APPLICATION | 9d | 2026-02-03 | 2026-02-11 | 950FS-4d |  | BAGALURU -P2 | 9679966 |
| 952 | 42100.42600.46900.62500.65200.65800.251000.2572000 | CONCEALED PLUMBING | 9d | 2026-02-07 | 2026-02-15 | 950 |  | BAGALURU -P2 | 9679976 |
| 953 | 42100.42600.46900.62500.65200.65800.251000.2572100 | WATERPROOFING WORK FOR TOILETS, KITCHEN SUNK & PLANTERS | 9d | 2026-02-16 | 2026-02-24 | 952 |  | BAGALURU -P2 | 9679986 |
| 954 | 42100.42600.46900.62500.65200.65800.251300 | **Floor 5** | 31d | 2026-02-03 | 2026-03-05 |  | start no earlier than 2026-02-03 | BAGALURU -P2 | 9677066 |
| 955 | 42100.42600.46900.62500.65200.65800.251300.2572200 | POST POUR CLEARENCE | 9d | 2026-02-03 | 2026-02-11 | 948 |  | BAGALURU -P2 | 9679996 |
| 956 | 42100.42600.46900.62500.65200.65800.251300.2572300 | BALCONY RAILING FIXING | 9d | 2026-02-12 | 2026-02-20 | 955 |  | BAGALURU -P2 | 9680006 |
| 957 | 42100.42600.46900.62500.65200.65800.251300.2572400 | FPS WORKS | 7d | 2026-02-09 | 2026-02-15 | 955FS-3d |  | BAGALURU -P2 | 9680016 |
| 958 | 42100.42600.46900.62500.65200.65800.251300.2572500 | GYPSUM PLASTR APPLICATION | 9d | 2026-02-12 | 2026-02-20 | 957FS-4d |  | BAGALURU -P2 | 9680026 |
| 959 | 42100.42600.46900.62500.65200.65800.251300.2572600 | CONCEALED PLUMBING | 9d | 2026-02-16 | 2026-02-24 | 957 |  | BAGALURU -P2 | 9680036 |
| 960 | 42100.42600.46900.62500.65200.65800.251300.2572700 | WATERPROOFING WORK FOR TOILETS, KITCHEN SUNK & PLANTERS | 9d | 2026-02-25 | 2026-03-05 | 959 |  | BAGALURU -P2 | 9680046 |

| ID | WBS | Task | Duration | Start | Finish | Predecessors | Constraint | Calendar | Unique_Task_ID |
| --- | --- | --- | --- | --- | --- | --- | --- | --- | --- |
| 961 | 42100.42600.46900.62500.65200.65800.251500 | **Floor 6** | 31d | 2026-02-12 | 2026-03-14 |  | start no earlier than 2026-02-12 | BAGALURU -P2 | 9677076 |
| 962 | 42100.42600.46900.62500.65200.65800.251500.2572800 | POST POUR CLEARENCE | 9d | 2026-02-12 | 2026-02-20 | 955 |  | BAGALURU -P2 | 9680056 |
| 963 | 42100.42600.46900.62500.65200.65800.251500.2572900 | BALCONY RAILING FIXING | 9d | 2026-02-21 | 2026-03-01 | 962 |  | BAGALURU -P2 | 9680066 |
| 964 | 42100.42600.46900.62500.65200.65800.251500.2573000 | FPS WORKS | 7d | 2026-02-18 | 2026-02-24 | 962FS-3d |  | BAGALURU -P2 | 9680076 |
| 965 | 42100.42600.46900.62500.65200.65800.251500.2573100 | GYPSUM PLASTR APPLICATION | 9d | 2026-02-21 | 2026-03-01 | 964FS-4d |  | BAGALURU -P2 | 9680086 |
| 966 | 42100.42600.46900.62500.65200.65800.251500.2573200 | CONCEALED PLUMBING | 9d | 2026-02-25 | 2026-03-05 | 964 |  | BAGALURU -P2 | 9680096 |
| 967 | 42100.42600.46900.62500.65200.65800.251500.2573300 | WATERPROOFING WORK FOR TOILETS, KITCHEN SUNK & PLANTERS | 9d | 2026-03-06 | 2026-03-14 | 966 |  | BAGALURU -P2 | 9680106 |
| 968 | 42100.42600.46900.62500.65200.65800.252100 | **Floor 7** | 31d | 2026-02-21 | 2026-03-23 |  | start no earlier than 2026-02-21 | BAGALURU -P2 | 9677086 |
| 969 | 42100.42600.46900.62500.65200.65800.252100.2573400 | POST POUR CLEARENCE | 9d | 2026-02-21 | 2026-03-01 | 962 |  | BAGALURU -P2 | 9680116 |
| 970 | 42100.42600.46900.62500.65200.65800.252100.2573500 | BALCONY RAILING FIXING | 9d | 2026-03-02 | 2026-03-10 | 969 |  | BAGALURU -P2 | 9680126 |
| 971 | 42100.42600.46900.62500.65200.65800.252100.2573600 | FPS WORKS | 7d | 2026-02-27 | 2026-03-05 | 969FS-3d |  | BAGALURU -P2 | 9680136 |
| 972 | 42100.42600.46900.62500.65200.65800.252100.2573700 | GYPSUM PLASTR APPLICATION | 9d | 2026-03-02 | 2026-03-10 | 971FS-4d |  | BAGALURU -P2 | 9680146 |
| 973 | 42100.42600.46900.62500.65200.65800.252100.2573800 | CONCEALED PLUMBING | 9d | 2026-03-06 | 2026-03-14 | 971 |  | BAGALURU -P2 | 9680156 |
| 974 | 42100.42600.46900.62500.65200.65800.252100.2573900 | WATERPROOFING WORK FOR TOILETS, KITCHEN SUNK & PLANTERS | 9d | 2026-03-15 | 2026-03-23 | 973 |  | BAGALURU -P2 | 9680166 |
| 975 | 42100.42600.46900.62500.65200.65800.252200 | **Floor 8** | 31d | 2026-03-02 | 2026-04-01 |  | start no earlier than 2026-03-02 | BAGALURU -P2 | 9677096 |
| 976 | 42100.42600.46900.62500.65200.65800.252200.2574000 | POST POUR CLEARENCE | 9d | 2026-03-02 | 2026-03-10 | 969 |  | BAGALURU -P2 | 9680176 |
| 977 | 42100.42600.46900.62500.65200.65800.252200.2574100 | BALCONY RAILING FIXING | 9d | 2026-03-11 | 2026-03-19 | 976 |  | BAGALURU -P2 | 9680186 |
| 978 | 42100.42600.46900.62500.65200.65800.252200.2574200 | FPS WORKS | 7d | 2026-03-08 | 2026-03-14 | 976FS-3d |  | BAGALURU -P2 | 9680196 |
| 979 | 42100.42600.46900.62500.65200.65800.252200.2574300 | GYPSUM PLASTR APPLICATION | 9d | 2026-03-11 | 2026-03-19 | 978FS-4d |  | BAGALURU -P2 | 9680206 |
| 980 | 42100.42600.46900.62500.65200.65800.252200.2574400 | CONCEALED PLUMBING | 9d | 2026-03-15 | 2026-03-23 | 978 |  | BAGALURU -P2 | 9680216 |
| 981 | 42100.42600.46900.62500.65200.65800.252200.2574500 | WATERPROOFING WORK FOR TOILETS, KITCHEN SUNK & PLANTERS | 9d | 2026-03-24 | 2026-04-01 | 980 |  | BAGALURU -P2 | 9680226 |
| 982 | 42100.42600.46900.62500.65200.65800.252300 | **Floor 9** | 31d | 2026-03-11 | 2026-04-10 |  | start no earlier than 2026-03-11 | BAGALURU -P2 | 9677106 |
| 983 | 42100.42600.46900.62500.65200.65800.252300.2574600 | POST POUR CLEARENCE | 9d | 2026-03-11 | 2026-03-19 | 976 |  | BAGALURU -P2 | 9680236 |
| 984 | 42100.42600.46900.62500.65200.65800.252300.2574700 | BALCONY RAILING FIXING | 9d | 2026-03-20 | 2026-03-28 | 983 |  | BAGALURU -P2 | 9680246 |
| 985 | 42100.42600.46900.62500.65200.65800.252300.2574800 | FPS WORKS | 7d | 2026-03-17 | 2026-03-23 | 983FS-3d |  | BAGALURU -P2 | 9680256 |
| 986 | 42100.42600.46900.62500.65200.65800.252300.2574900 | GYPSUM PLASTR APPLICATION | 9d | 2026-03-20 | 2026-03-28 | 985FS-4d |  | BAGALURU -P2 | 9680266 |
| 987 | 42100.42600.46900.62500.65200.65800.252300.2575000 | CONCEALED PLUMBING | 9d | 2026-03-24 | 2026-04-01 | 985 |  | BAGALURU -P2 | 9680276 |
| 988 | 42100.42600.46900.62500.65200.65800.252300.2575100 | WATERPROOFING WORK FOR TOILETS, KITCHEN SUNK & PLANTERS | 9d | 2026-04-02 | 2026-04-10 | 987 |  | BAGALURU -P2 | 9680286 |

| ID | WBS | Task | Duration | Start | Finish | Predecessors | Constraint | Calendar | Unique_Task_ID |
| --- | --- | --- | --- | --- | --- | --- | --- | --- | --- |
| 989 | 42100.42600.46900.62500.65200.65800.252400 | **Floor 10** | 31d | 2026-03-20 | 2026-04-19 |  | start no earlier than 2026-03-20 | BAGALURU -P2 | 9677116 |
| 990 | 42100.42600.46900.62500.65200.65800.252400.2575200 | POST POUR CLEARENCE | 9d | 2026-03-20 | 2026-03-28 | 983 |  | BAGALURU -P2 | 9680296 |
| 991 | 42100.42600.46900.62500.65200.65800.252400.2575300 | BALCONY RAILING FIXING | 9d | 2026-03-29 | 2026-04-06 | 990 |  | BAGALURU -P2 | 9680306 |
| 992 | 42100.42600.46900.62500.65200.65800.252400.2575400 | FPS WORKS | 7d | 2026-03-26 | 2026-04-01 | 990FS-3d |  | BAGALURU -P2 | 9680316 |
| 993 | 42100.42600.46900.62500.65200.65800.252400.2575500 | GYPSUM PLASTR APPLICATION | 9d | 2026-03-29 | 2026-04-06 | 992FS-4d |  | BAGALURU -P2 | 9680326 |
| 994 | 42100.42600.46900.62500.65200.65800.252400.2575600 | CONCEALED PLUMBING | 9d | 2026-04-02 | 2026-04-10 | 992 |  | BAGALURU -P2 | 9680336 |
| 995 | 42100.42600.46900.62500.65200.65800.252400.2575700 | WATERPROOFING WORK FOR TOILETS, KITCHEN SUNK & PLANTERS | 9d | 2026-04-11 | 2026-04-19 | 994 |  | BAGALURU -P2 | 9680346 |
| 996 | 42100.42600.46900.62500.65200.65800.252500 | **Floor 11** | 31d | 2026-03-29 | 2026-04-28 |  | start no earlier than 2026-03-29 | BAGALURU -P2 | 9677126 |
| 997 | 42100.42600.46900.62500.65200.65800.252500.2575800 | POST POUR CLEARENCE | 9d | 2026-03-29 | 2026-04-06 | 990 |  | BAGALURU -P2 | 9680356 |
| 998 | 42100.42600.46900.62500.65200.65800.252500.2575900 | BALCONY RAILING FIXING | 9d | 2026-04-07 | 2026-04-15 | 997 |  | BAGALURU -P2 | 9680366 |
| 999 | 42100.42600.46900.62500.65200.65800.252500.2576000 | FPS WORKS | 7d | 2026-04-04 | 2026-04-10 | 997FS-3d |  | BAGALURU -P2 | 9680376 |
| 1000 | 42100.42600.46900.62500.65200.65800.252500.2576100 | GYPSUM PLASTR APPLICATION | 9d | 2026-04-07 | 2026-04-15 | 999FS-4d |  | BAGALURU -P2 | 9680386 |
| 1001 | 42100.42600.46900.62500.65200.65800.252500.2576200 | CONCEALED PLUMBING | 9d | 2026-04-11 | 2026-04-19 | 999 |  | BAGALURU -P2 | 9680396 |
| 1002 | 42100.42600.46900.62500.65200.65800.252500.2576300 | WATERPROOFING WORK FOR TOILETS, KITCHEN SUNK & PLANTERS | 9d | 2026-04-20 | 2026-04-28 | 1001 |  | BAGALURU -P2 | 9680406 |
| 1003 | 42100.42600.46900.62500.65200.65800.252600 | **Floor 12** | 36d | 2026-04-07 | 2026-05-12 |  | start no earlier than 2026-04-07 | BAGALURU -P2 | 9677136 |
| 1004 | 42100.42600.46900.62500.65200.65800.252600.2576400 | POST POUR CLEARENCE | 9d | 2026-04-07 | 2026-04-15 | 997 |  | BAGALURU -P2 | 9680416 |
| 1005 | 42100.42600.46900.62500.65200.65800.252600.2576500 | BALCONY RAILING FIXING | 9d | 2026-04-16 | 2026-04-24 | 1004 |  | BAGALURU -P2 | 9680426 |
| 1006 | 42100.42600.46900.62500.65200.65800.252600.2576600 | FPS WORKS | 7d | 2026-04-18 | 2026-04-24 | 1004FS+2d |  | BAGALURU -P2 | 9680436 |
| 1007 | 42100.42600.46900.62500.65200.65800.252600.2576700 | GYPSUM PLASTR APPLICATION | 9d | 2026-04-25 | 2026-05-03 | 1006 |  | BAGALURU -P2 | 9680446 |
| 1008 | 42100.42600.46900.62500.65200.65800.252600.2576800 | CONCEALED PLUMBING | 9d | 2026-04-25 | 2026-05-03 | 1006 |  | BAGALURU -P2 | 9680456 |
| 1009 | 42100.42600.46900.62500.65200.65800.252600.2576900 | WATERPROOFING WORK FOR TOILETS, KITCHEN SUNK & PLANTERS | 9d | 2026-05-04 | 2026-05-12 | 1008 |  | BAGALURU -P2 | 9680466 |
| 1010 | 42100.42600.46900.62500.65200.65800.252700 | **Floor 13** | 36d | 2026-04-16 | 2026-05-21 |  | start no earlier than 2026-04-16 | BAGALURU -P2 | 9677146 |
| 1011 | 42100.42600.46900.62500.65200.65800.252700.2577000 | POST POUR CLEARENCE | 9d | 2026-04-16 | 2026-04-24 | 1004 |  | BAGALURU -P2 | 9680476 |
| 1012 | 42100.42600.46900.62500.65200.65800.252700.2577100 | BALCONY RAILING FIXING | 9d | 2026-04-25 | 2026-05-03 | 1011 |  | BAGALURU -P2 | 9680486 |
| 1013 | 42100.42600.46900.62500.65200.65800.252700.2577200 | FPS WORKS | 7d | 2026-04-27 | 2026-05-03 | 1011FS+2d |  | BAGALURU -P2 | 9680496 |
| 1014 | 42100.42600.46900.62500.65200.65800.252700.2577300 | GYPSUM PLASTR APPLICATION | 9d | 2026-05-04 | 2026-05-12 | 1013 |  | BAGALURU -P2 | 9680506 |
| 1015 | 42100.42600.46900.62500.65200.65800.252700.2577400 | CONCEALED PLUMBING | 9d | 2026-05-04 | 2026-05-12 | 1013 |  | BAGALURU -P2 | 9680516 |
| 1016 | 42100.42600.46900.62500.65200.65800.252700.2577500 | WATERPROOFING WORK FOR TOILETS, KITCHEN SUNK & PLANTERS | 9d | 2026-05-13 | 2026-05-21 | 1015 |  | BAGALURU -P2 | 9680526 |

| ID | WBS | Task | Duration | Start | Finish | Predecessors | Constraint | Calendar | Unique_Task_ID |
| --- | --- | --- | --- | --- | --- | --- | --- | --- | --- |
| 1017 | 42100.42600.46900.62500.65200.65800.252800 | **Floor 14** | 36d | 2026-04-25 | 2026-05-30 |  | start no earlier than 2026-04-25 | BAGALURU -P2 | 9677156 |
| 1018 | 42100.42600.46900.62500.65200.65800.252800.2577600 | POST POUR CLEARENCE | 9d | 2026-04-25 | 2026-05-03 | 1011 |  | BAGALURU -P2 | 9680536 |
| 1019 | 42100.42600.46900.62500.65200.65800.252800.2577700 | BALCONY RAILING FIXING | 9d | 2026-05-04 | 2026-05-12 | 1018 |  | BAGALURU -P2 | 9680546 |
| 1020 | 42100.42600.46900.62500.65200.65800.252800.2577800 | FPS WORKS | 7d | 2026-05-06 | 2026-05-12 | 1018FS+2d |  | BAGALURU -P2 | 9680556 |
| 1021 | 42100.42600.46900.62500.65200.65800.252800.2577900 | GYPSUM PLASTR APPLICATION | 9d | 2026-05-13 | 2026-05-21 | 1020 |  | BAGALURU -P2 | 9680566 |
| 1022 | 42100.42600.46900.62500.65200.65800.252800.2578000 | CONCEALED PLUMBING | 9d | 2026-05-13 | 2026-05-21 | 1020 |  | BAGALURU -P2 | 9680576 |
| 1023 | 42100.42600.46900.62500.65200.65800.252800.2578100 | WATERPROOFING WORK FOR TOILETS, KITCHEN SUNK & PLANTERS | 9d | 2026-05-22 | 2026-05-30 | 1022 |  | BAGALURU -P2 | 9680586 |
| 1024 | 42100.42600.46900.62500.65200.65800.252900 | **Floor 15** | 36d | 2026-05-04 | 2026-06-08 |  | start no earlier than 2026-05-04 | BAGALURU -P2 | 9677166 |
| 1025 | 42100.42600.46900.62500.65200.65800.252900.2578200 | POST POUR CLEARENCE | 9d | 2026-05-04 | 2026-05-12 | 1018 |  | BAGALURU -P2 | 9680596 |
| 1026 | 42100.42600.46900.62500.65200.65800.252900.2578300 | BALCONY RAILING FIXING | 9d | 2026-05-13 | 2026-05-21 | 1025 |  | BAGALURU -P2 | 9680606 |
| 1027 | 42100.42600.46900.62500.65200.65800.252900.2578400 | FPS WORKS | 7d | 2026-05-15 | 2026-05-21 | 1025FS+2d |  | BAGALURU -P2 | 9680616 |
| 1028 | 42100.42600.46900.62500.65200.65800.252900.2578500 | GYPSUM PLASTR APPLICATION | 9d | 2026-05-22 | 2026-05-30 | 1027 |  | BAGALURU -P2 | 9680626 |
| 1029 | 42100.42600.46900.62500.65200.65800.252900.2578600 | CONCEALED PLUMBING | 9d | 2026-05-22 | 2026-05-30 | 1027 |  | BAGALURU -P2 | 9680636 |
| 1030 | 42100.42600.46900.62500.65200.65800.252900.2578700 | WATERPROOFING WORK FOR TOILETS, KITCHEN SUNK & PLANTERS | 9d | 2026-05-31 | 2026-06-08 | 1029 |  | BAGALURU -P2 | 9680646 |
| 1031 | 42100.42600.46900.62500.65200.504600 | **Terrace finishing works** | 30d | 2026-07-18 | 2026-08-16 |  | start no earlier than 2026-07-18 | BAGALURU -P2 | 9677426 |
| 1032 | 42100.42600.46900.62500.65200.504600.2172600 | Terrace Waterproofing work | 30d | 2026-07-18 | 2026-08-16 | 923FS+90d |  | BAGALURU -P2 | 9677766 |
| 1033 | 42100.42600.46900.62500.65200.504500 | **EXTERNAL Painting** | 90d | 2026-06-03 | 2026-08-31 |  | start no earlier than 2026-06-03 | BAGALURU -P2 | 9677436 |
| 1034 | 42100.42600.46900.62500.65200.504500.2172700 | External Painting | 90d | 2026-06-03 | 2026-08-31 | 923FS+45d |  | BAGALURU -P2 | 9677776 |
| 1035 | 42100.42600.46900.62500.63700 | **Flat finishes** | 281d | 2026-01-25 | 2027-02-22 |  | start no earlier than 2026-01-25 |  | 9676746 |
| 1036 | 42100.42600.46900.62500.63700.157500 | **Floor 1** | 268d | 2026-01-25 | 2026-10-19 |  | start no earlier than 2026-01-25 | BAGALURU -P2 | 9676826 |
| 1037 | 42100.42600.46900.62500.63700.157500.2172800 | TOILET DADO TILE FIXING | 9d | 2026-01-25 | 2026-02-02 | 932FS-4d |  | BAGALURU -P2 | 9677786 |
| 1038 | 42100.42600.46900.62500.63700.157500.2172900 | FLAT FLOORING | 9d | 2026-02-03 | 2026-02-11 | 1037 |  | BAGALURU -P2 | 9677796 |
| 1039 | 42100.42600.46900.62500.63700.157500.2173000 | CORNICE WORKS | 9d | 2026-02-12 | 2026-02-20 | 1038 |  | BAGALURU -P2 | 9677806 |
| 1040 | 42100.42600.46900.62500.63700.157500.2173100 | INTERNAL PAINTING - PUTTY / PRIMER APPLICATION | 9d | 2026-03-11 | 2026-03-19 | 1039FS+18d |  | BAGALURU -P2 | 9677816 |
| 1041 | 42100.42600.46900.62500.63700.157500.2173200 | WINDOW FIXING | 9d | 2026-03-20 | 2026-03-28 | 1040 |  | BAGALURU -P2 | 9677826 |
| 1042 | 42100.42600.46900.62500.63700.157500.2173300 | INTERNAL PAINTING - 1ST COAT | 15d | 2026-05-28 | 2026-06-11 | 1041FS+60d |  | BAGALURU -P2 | 9677836 |
| 1043 | 42100.42600.46900.62500.63700.157500.2173400 | INTERNAL DOOR FIXING | 15d | 2026-06-12 | 2026-06-26 | 1042 |  | BAGALURU -P2 | 9677846 |
| 1044 | 42100.42600.46900.62500.63700.157500.2173500 | WIRING & SWITCH PLATE FIXING | 10d | 2026-06-27 | 2026-07-06 | 1043 |  | BAGALURU -P2 | 9677856 |
| 1045 | 42100.42600.46900.62500.63700.157500.2173600 | TOILET FALSE CEILING | 15d | 2026-09-13 | 2026-09-27 | 1044FS+68d |  | BAGALURU -P2 | 9677866 |
| 1046 | 42100.42600.46900.62500.63700.157500.2173700 | CP & SANITARY FIXING | 10d | 2026-09-28 | 2026-10-07 | 1045 |  | BAGALURU -P2 | 9677876 |
| 1047 | 42100.42600.46900.62500.63700.157500.2173800 | FINAL COAT PAINT | 12d | 2026-10-08 | 2026-10-19 | 1046 |  | BAGALURU -P2 | 9677886 |

Notes:
- 1033: Ext Plaster (in 2 phases) completion 3.5 months post last BW

| ID | WBS | Task | Duration | Start | Finish | Predecessors | Constraint | Calendar | Unique_Task_ID |
| --- | --- | --- | --- | --- | --- | --- | --- | --- | --- |
| 1048 | 42100.42600.46900.62500.63700.157600 | **Floor 2** | 268d | 2026-02-03 | 2026-10-28 |  | start no earlier than 2026-02-03 | BAGALURU -P2 | 9676836 |
| 1049 | 42100.42600.46900.62500.63700.157600.2173900 | TOILET DADO TILE FIXING | 9d | 2026-02-03 | 2026-02-11 | 1037 |  | BAGALURU -P2 | 9677896 |
| 1050 | 42100.42600.46900.62500.63700.157600.2174000 | FLAT FLOORING | 9d | 2026-02-12 | 2026-02-20 | 1049 |  | BAGALURU -P2 | 9677906 |
| 1051 | 42100.42600.46900.62500.63700.157600.2174100 | CORNICE WORKS | 9d | 2026-02-21 | 2026-03-01 | 1050 |  | BAGALURU -P2 | 9677916 |
| 1052 | 42100.42600.46900.62500.63700.157600.2174200 | INTERNAL PAINTING - PUTTY / PRIMER APPLICATION | 9d | 2026-03-20 | 2026-03-28 | 1051FS+18d |  | BAGALURU -P2 | 9677926 |
| 1053 | 42100.42600.46900.62500.63700.157600.2174300 | WINDOW FIXING | 9d | 2026-03-29 | 2026-04-06 | 1052 |  | BAGALURU -P2 | 9677936 |
| 1054 | 42100.42600.46900.62500.63700.157600.2174400 | INTERNAL PAINTING - 1ST COAT | 15d | 2026-06-06 | 2026-06-20 | 1053FS+60d |  | BAGALURU -P2 | 9677946 |
| 1055 | 42100.42600.46900.62500.63700.157600.2174500 | INTERNAL DOOR FIXING | 15d | 2026-06-21 | 2026-07-05 | 1054 |  | BAGALURU -P2 | 9677956 |
| 1056 | 42100.42600.46900.62500.63700.157600.2174600 | WIRING & SWITCH PLATE FIXING | 10d | 2026-07-06 | 2026-07-15 | 1055 |  | BAGALURU -P2 | 9677966 |
| 1057 | 42100.42600.46900.62500.63700.157600.2174700 | TOILET FALSE CEILING | 15d | 2026-09-22 | 2026-10-06 | 1056FS+68d |  | BAGALURU -P2 | 9677976 |
| 1058 | 42100.42600.46900.62500.63700.157600.2174800 | CP & SANITARY FIXING | 10d | 2026-10-07 | 2026-10-16 | 1057 |  | BAGALURU -P2 | 9677986 |
| 1059 | 42100.42600.46900.62500.63700.157600.2174900 | FINAL COAT PAINT | 12d | 2026-10-17 | 2026-10-28 | 1058 |  | BAGALURU -P2 | 9677996 |
| 1060 | 42100.42600.46900.62500.63700.157700 | **Floor 3** | 268d | 2026-02-12 | 2026-11-06 |  | start no earlier than 2026-02-12 | BAGALURU -P2 | 9676846 |
| 1061 | 42100.42600.46900.62500.63700.157700.2175000 | TOILET DADO TILE FIXING | 9d | 2026-02-12 | 2026-02-20 | 1049 |  | BAGALURU -P2 | 9678006 |
| 1062 | 42100.42600.46900.62500.63700.157700.2175100 | FLAT FLOORING | 9d | 2026-02-21 | 2026-03-01 | 1061 |  | BAGALURU -P2 | 9678016 |
| 1063 | 42100.42600.46900.62500.63700.157700.2175200 | CORNICE WORKS | 9d | 2026-03-02 | 2026-03-10 | 1062 |  | BAGALURU -P2 | 9678026 |
| 1064 | 42100.42600.46900.62500.63700.157700.2175300 | INTERNAL PAINTING - PUTTY / PRIMER APPLICATION | 9d | 2026-03-29 | 2026-04-06 | 1063FS+18d |  | BAGALURU -P2 | 9678036 |
| 1065 | 42100.42600.46900.62500.63700.157700.2175400 | WINDOW FIXING | 9d | 2026-04-07 | 2026-04-15 | 1064 |  | BAGALURU -P2 | 9678046 |
| 1066 | 42100.42600.46900.62500.63700.157700.2175500 | INTERNAL PAINTING - 1ST COAT | 15d | 2026-06-15 | 2026-06-29 | 1065FS+60d |  | BAGALURU -P2 | 9678056 |
| 1067 | 42100.42600.46900.62500.63700.157700.2175600 | INTERNAL DOOR FIXING | 15d | 2026-06-30 | 2026-07-14 | 1066 |  | BAGALURU -P2 | 9678066 |
| 1068 | 42100.42600.46900.62500.63700.157700.2175700 | WIRING & SWITCH PLATE FIXING | 10d | 2026-07-15 | 2026-07-24 | 1067 |  | BAGALURU -P2 | 9678076 |
| 1069 | 42100.42600.46900.62500.63700.157700.2175800 | TOILET FALSE CEILING | 15d | 2026-10-01 | 2026-10-15 | 1068FS+68d |  | BAGALURU -P2 | 9678086 |
| 1070 | 42100.42600.46900.62500.63700.157700.2175900 | CP & SANITARY FIXING | 10d | 2026-10-16 | 2026-10-25 | 1069 |  | BAGALURU -P2 | 9678096 |
| 1071 | 42100.42600.46900.62500.63700.157700.2176000 | FINAL COAT PAINT | 12d | 2026-10-26 | 2026-11-06 | 1070 |  | BAGALURU -P2 | 9678106 |

| ID | WBS | Task | Duration | Start | Finish | Predecessors | Constraint | Calendar | Unique_Task_ID |
| --- | --- | --- | --- | --- | --- | --- | --- | --- | --- |
| 1072 | 42100.42600.46900.62500.63700.157800 | **Floor 4** | 268d | 2026-02-21 | 2026-11-15 |  | start no earlier than 2026-02-21 | BAGALURU -P2 | 9676856 |
| 1073 | 42100.42600.46900.62500.63700.157800.2176100 | TOILET DADO TILE FIXING | 9d | 2026-02-21 | 2026-03-01 | 1061 |  | BAGALURU -P2 | 9678116 |
| 1074 | 42100.42600.46900.62500.63700.157800.2176200 | FLAT FLOORING | 9d | 2026-03-02 | 2026-03-10 | 1073 |  | BAGALURU -P2 | 9678126 |
| 1075 | 42100.42600.46900.62500.63700.157800.2176300 | CORNICE WORKS | 9d | 2026-03-11 | 2026-03-19 | 1074 |  | BAGALURU -P2 | 9678136 |
| 1076 | 42100.42600.46900.62500.63700.157800.2176400 | INTERNAL PAINTING - PUTTY / PRIMER APPLICATION | 9d | 2026-04-07 | 2026-04-15 | 1075FS+18d |  | BAGALURU -P2 | 9678146 |
| 1077 | 42100.42600.46900.62500.63700.157800.2176500 | WINDOW FIXING | 9d | 2026-04-16 | 2026-04-24 | 1076 |  | BAGALURU -P2 | 9678156 |
| 1078 | 42100.42600.46900.62500.63700.157800.2176600 | INTERNAL PAINTING - 1ST COAT | 15d | 2026-06-24 | 2026-07-08 | 1077FS+60d |  | BAGALURU -P2 | 9678166 |
| 1079 | 42100.42600.46900.62500.63700.157800.2176700 | INTERNAL DOOR FIXING | 15d | 2026-07-09 | 2026-07-23 | 1078 |  | BAGALURU -P2 | 9678176 |
| 1080 | 42100.42600.46900.62500.63700.157800.2176800 | WIRING & SWITCH PLATE FIXING | 10d | 2026-07-24 | 2026-08-02 | 1079 |  | BAGALURU -P2 | 9678186 |
| 1081 | 42100.42600.46900.62500.63700.157800.2176900 | TOILET FALSE CEILING | 15d | 2026-10-10 | 2026-10-24 | 1080FS+68d |  | BAGALURU -P2 | 9678196 |
| 1082 | 42100.42600.46900.62500.63700.157800.2177000 | CP & SANITARY FIXING | 10d | 2026-10-25 | 2026-11-03 | 1081 |  | BAGALURU -P2 | 9678206 |
| 1083 | 42100.42600.46900.62500.63700.157800.2177100 | FINAL COAT PAINT | 12d | 2026-11-04 | 2026-11-15 | 1082 |  | BAGALURU -P2 | 9678216 |
| 1084 | 42100.42600.46900.62500.63700.157900 | **Floor 5** | 268d | 2026-03-02 | 2026-11-24 |  | start no earlier than 2026-03-02 | BAGALURU -P2 | 9676866 |
| 1085 | 42100.42600.46900.62500.63700.157900.2177200 | TOILET DADO TILE FIXING | 9d | 2026-03-02 | 2026-03-10 | 1073 |  | BAGALURU -P2 | 9678226 |
| 1086 | 42100.42600.46900.62500.63700.157900.2177300 | FLAT FLOORING | 9d | 2026-03-11 | 2026-03-19 | 1085 |  | BAGALURU -P2 | 9678236 |
| 1087 | 42100.42600.46900.62500.63700.157900.2177400 | CORNICE WORKS | 9d | 2026-03-20 | 2026-03-28 | 1086 |  | BAGALURU -P2 | 9678246 |
| 1088 | 42100.42600.46900.62500.63700.157900.2177500 | INTERNAL PAINTING - PUTTY / PRIMER APPLICATION | 9d | 2026-04-16 | 2026-04-24 | 1087FS+18d |  | BAGALURU -P2 | 9678256 |
| 1089 | 42100.42600.46900.62500.63700.157900.2177600 | WINDOW FIXING | 9d | 2026-04-25 | 2026-05-03 | 1088 |  | BAGALURU -P2 | 9678266 |
| 1090 | 42100.42600.46900.62500.63700.157900.2177700 | INTERNAL PAINTING - 1ST COAT | 15d | 2026-07-03 | 2026-07-17 | 1089FS+60d |  | BAGALURU -P2 | 9678276 |
| 1091 | 42100.42600.46900.62500.63700.157900.2177800 | INTERNAL DOOR FIXING | 15d | 2026-07-18 | 2026-08-01 | 1090 |  | BAGALURU -P2 | 9678286 |
| 1092 | 42100.42600.46900.62500.63700.157900.2177900 | WIRING & SWITCH PLATE FIXING | 10d | 2026-08-02 | 2026-08-11 | 1091 |  | BAGALURU -P2 | 9678296 |
| 1093 | 42100.42600.46900.62500.63700.157900.2178000 | TOILET FALSE CEILING | 15d | 2026-10-19 | 2026-11-02 | 1092FS+68d |  | BAGALURU -P2 | 9678306 |
| 1094 | 42100.42600.46900.62500.63700.157900.2178100 | CP & SANITARY FIXING | 10d | 2026-11-03 | 2026-11-12 | 1093 |  | BAGALURU -P2 | 9678316 |
| 1095 | 42100.42600.46900.62500.63700.157900.2178200 | FINAL COAT PAINT | 12d | 2026-11-13 | 2026-11-24 | 1094 |  | BAGALURU -P2 | 9678326 |

| ID | WBS | Task | Duration | Start | Finish | Predecessors | Constraint | Calendar | Unique_Task_ID |
| --- | --- | --- | --- | --- | --- | --- | --- | --- | --- |
| 1096 | 42100.42600.46900.62500.63700.158000 | **Floor 6** | 268d | 2026-03-11 | 2026-12-03 |  | start no earlier than 2026-03-11 | BAGALURU -P2 | 9676876 |
| 1097 | 42100.42600.46900.62500.63700.158000.2178300 | TOILET DADO TILE FIXING | 9d | 2026-03-11 | 2026-03-19 | 1085 |  | BAGALURU -P2 | 9678336 |
| 1098 | 42100.42600.46900.62500.63700.158000.2178400 | FLAT FLOORING | 9d | 2026-03-20 | 2026-03-28 | 1097 |  | BAGALURU -P2 | 9678346 |
| 1099 | 42100.42600.46900.62500.63700.158000.2178500 | CORNICE WORKS | 9d | 2026-03-29 | 2026-04-06 | 1098 |  | BAGALURU -P2 | 9678356 |
| 1100 | 42100.42600.46900.62500.63700.158000.2178600 | INTERNAL PAINTING - PUTTY / PRIMER APPLICATION | 9d | 2026-04-25 | 2026-05-03 | 1099FS+18d |  | BAGALURU -P2 | 9678366 |
| 1101 | 42100.42600.46900.62500.63700.158000.2178700 | WINDOW FIXING | 9d | 2026-05-04 | 2026-05-12 | 1100 |  | BAGALURU -P2 | 9678376 |
| 1102 | 42100.42600.46900.62500.63700.158000.2178800 | INTERNAL PAINTING - 1ST COAT | 15d | 2026-07-12 | 2026-07-26 | 1101FS+60d |  | BAGALURU -P2 | 9678386 |
| 1103 | 42100.42600.46900.62500.63700.158000.2178900 | INTERNAL DOOR FIXING | 15d | 2026-07-27 | 2026-08-10 | 1102 |  | BAGALURU -P2 | 9678396 |
| 1104 | 42100.42600.46900.62500.63700.158000.2179000 | WIRING & SWITCH PLATE FIXING | 10d | 2026-08-11 | 2026-08-20 | 1103 |  | BAGALURU -P2 | 9678406 |
| 1105 | 42100.42600.46900.62500.63700.158000.2179100 | TOILET FALSE CEILING | 15d | 2026-10-28 | 2026-11-11 | 1104FS+68d |  | BAGALURU -P2 | 9678416 |
| 1106 | 42100.42600.46900.62500.63700.158000.2179200 | CP & SANITARY FIXING | 10d | 2026-11-12 | 2026-11-21 | 1105 |  | BAGALURU -P2 | 9678426 |
| 1107 | 42100.42600.46900.62500.63700.158000.2179300 | FINAL COAT PAINT | 12d | 2026-11-22 | 2026-12-03 | 1106 |  | BAGALURU -P2 | 9678436 |
| 1108 | 42100.42600.46900.62500.63700.158100 | **Floor 7** | 268d | 2026-03-20 | 2026-12-12 |  | start no earlier than 2026-03-20 | BAGALURU -P2 | 9676886 |
| 1109 | 42100.42600.46900.62500.63700.158100.2179400 | TOILET DADO TILE FIXING | 9d | 2026-03-20 | 2026-03-28 | 1097 |  | BAGALURU -P2 | 9678446 |
| 1110 | 42100.42600.46900.62500.63700.158100.2179500 | FLAT FLOORING | 9d | 2026-03-29 | 2026-04-06 | 1109 |  | BAGALURU -P2 | 9678456 |
| 1111 | 42100.42600.46900.62500.63700.158100.2179600 | CORNICE WORKS | 9d | 2026-04-07 | 2026-04-15 | 1110 |  | BAGALURU -P2 | 9678466 |
| 1112 | 42100.42600.46900.62500.63700.158100.2179700 | INTERNAL PAINTING - PUTTY / PRIMER APPLICATION | 9d | 2026-05-04 | 2026-05-12 | 1111FS+18d |  | BAGALURU -P2 | 9678476 |
| 1113 | 42100.42600.46900.62500.63700.158100.2179800 | WINDOW FIXING | 9d | 2026-05-13 | 2026-05-21 | 1112 |  | BAGALURU -P2 | 9678486 |
| 1114 | 42100.42600.46900.62500.63700.158100.2179900 | INTERNAL PAINTING - 1ST COAT | 15d | 2026-07-21 | 2026-08-04 | 1113FS+60d |  | BAGALURU -P2 | 9678496 |
| 1115 | 42100.42600.46900.62500.63700.158100.2180000 | INTERNAL DOOR FIXING | 15d | 2026-08-05 | 2026-08-19 | 1114 |  | BAGALURU -P2 | 9678506 |
| 1116 | 42100.42600.46900.62500.63700.158100.2180100 | WIRING & SWITCH PLATE FIXING | 10d | 2026-08-20 | 2026-08-29 | 1115 |  | BAGALURU -P2 | 9678516 |
| 1117 | 42100.42600.46900.62500.63700.158100.2180200 | TOILET FALSE CEILING | 15d | 2026-11-06 | 2026-11-20 | 1116FS+68d |  | BAGALURU -P2 | 9678526 |
| 1118 | 42100.42600.46900.62500.63700.158100.2180300 | CP & SANITARY FIXING | 10d | 2026-11-21 | 2026-11-30 | 1117 |  | BAGALURU -P2 | 9678536 |
| 1119 | 42100.42600.46900.62500.63700.158100.2180400 | FINAL COAT PAINT | 12d | 2026-12-01 | 2026-12-12 | 1118 |  | BAGALURU -P2 | 9678546 |

| ID | WBS | Task | Duration | Start | Finish | Predecessors | Constraint | Calendar | Unique_Task_ID |
| --- | --- | --- | --- | --- | --- | --- | --- | --- | --- |
| 1120 | 42100.42600.46900.62500.63700.158200 | **Floor 8** | 268d | 2026-03-29 | 2026-12-21 |  | start no earlier than 2026-03-29 | BAGALURU -P2 | 9676896 |
| 1121 | 42100.42600.46900.62500.63700.158200.2180500 | TOILET DADO TILE FIXING | 9d | 2026-03-29 | 2026-04-06 | 1109 |  | BAGALURU -P2 | 9678556 |
| 1122 | 42100.42600.46900.62500.63700.158200.2180600 | FLAT FLOORING | 9d | 2026-04-07 | 2026-04-15 | 1121 |  | BAGALURU -P2 | 9678566 |
| 1123 | 42100.42600.46900.62500.63700.158200.2180700 | CORNICE WORKS | 9d | 2026-04-16 | 2026-04-24 | 1122 |  | BAGALURU -P2 | 9678576 |
| 1124 | 42100.42600.46900.62500.63700.158200.2180800 | INTERNAL PAINTING - PUTTY / PRIMER APPLICATION | 9d | 2026-05-13 | 2026-05-21 | 1123FS+18d |  | BAGALURU -P2 | 9678586 |
| 1125 | 42100.42600.46900.62500.63700.158200.2180900 | WINDOW FIXING | 9d | 2026-05-22 | 2026-05-30 | 1124 |  | BAGALURU -P2 | 9678596 |
| 1126 | 42100.42600.46900.62500.63700.158200.2181000 | INTERNAL PAINTING - 1ST COAT | 15d | 2026-07-30 | 2026-08-13 | 1125FS+60d |  | BAGALURU -P2 | 9678606 |
| 1127 | 42100.42600.46900.62500.63700.158200.2181100 | INTERNAL DOOR FIXING | 15d | 2026-08-14 | 2026-08-28 | 1126 |  | BAGALURU -P2 | 9678616 |
| 1128 | 42100.42600.46900.62500.63700.158200.2181200 | WIRING & SWITCH PLATE FIXING | 10d | 2026-08-29 | 2026-09-07 | 1127 |  | BAGALURU -P2 | 9678626 |
| 1129 | 42100.42600.46900.62500.63700.158200.2181300 | TOILET FALSE CEILING | 15d | 2026-11-15 | 2026-11-29 | 1128FS+68d |  | BAGALURU -P2 | 9678636 |
| 1130 | 42100.42600.46900.62500.63700.158200.2181400 | CP & SANITARY FIXING | 10d | 2026-11-30 | 2026-12-09 | 1129 |  | BAGALURU -P2 | 9678646 |
| 1131 | 42100.42600.46900.62500.63700.158200.2181500 | FINAL COAT PAINT | 12d | 2026-12-10 | 2026-12-21 | 1130 |  | BAGALURU -P2 | 9678656 |
| 1132 | 42100.42600.46900.62500.63700.158300 | **Floor 9** | 268d | 2026-04-07 | 2026-12-30 |  | start no earlier than 2026-04-07 | BAGALURU -P2 | 9676906 |
| 1133 | 42100.42600.46900.62500.63700.158300.2181600 | TOILET DADO TILE FIXING | 9d | 2026-04-07 | 2026-04-15 | 1121 |  | BAGALURU -P2 | 9678666 |
| 1134 | 42100.42600.46900.62500.63700.158300.2181700 | FLAT FLOORING | 9d | 2026-04-16 | 2026-04-24 | 1133 |  | BAGALURU -P2 | 9678676 |
| 1135 | 42100.42600.46900.62500.63700.158300.2181800 | CORNICE WORKS | 9d | 2026-04-25 | 2026-05-03 | 1134 |  | BAGALURU -P2 | 9678686 |
| 1136 | 42100.42600.46900.62500.63700.158300.2181900 | INTERNAL PAINTING - PUTTY / PRIMER APPLICATION | 9d | 2026-05-22 | 2026-05-30 | 1135FS+18d |  | BAGALURU -P2 | 9678696 |
| 1137 | 42100.42600.46900.62500.63700.158300.2182000 | WINDOW FIXING | 9d | 2026-05-31 | 2026-06-08 | 1136 |  | BAGALURU -P2 | 9678706 |
| 1138 | 42100.42600.46900.62500.63700.158300.2182100 | INTERNAL PAINTING - 1ST COAT | 15d | 2026-08-08 | 2026-08-22 | 1137FS+60d |  | BAGALURU -P2 | 9678716 |
| 1139 | 42100.42600.46900.62500.63700.158300.2182200 | INTERNAL DOOR FIXING | 15d | 2026-08-23 | 2026-09-06 | 1138 |  | BAGALURU -P2 | 9678726 |
| 1140 | 42100.42600.46900.62500.63700.158300.2182300 | WIRING & SWITCH PLATE FIXING | 10d | 2026-09-07 | 2026-09-16 | 1139 |  | BAGALURU -P2 | 9678736 |
| 1141 | 42100.42600.46900.62500.63700.158300.2182400 | TOILET FALSE CEILING | 15d | 2026-11-24 | 2026-12-08 | 1140FS+68d |  | BAGALURU -P2 | 9678746 |
| 1142 | 42100.42600.46900.62500.63700.158300.2182500 | CP & SANITARY FIXING | 10d | 2026-12-09 | 2026-12-18 | 1141 |  | BAGALURU -P2 | 9678756 |
| 1143 | 42100.42600.46900.62500.63700.158300.2182600 | FINAL COAT PAINT | 12d | 2026-12-19 | 2026-12-30 | 1142 |  | BAGALURU -P2 | 9678766 |

| ID | WBS | Task | Duration | Start | Finish | Predecessors | Constraint | Calendar | Unique_Task_ID |
| --- | --- | --- | --- | --- | --- | --- | --- | --- | --- |
| 1144 | 42100.42600.46900.62500.63700.158400 | **Floor 10** | 268d | 2026-04-16 | 2027-01-08 |  | start no earlier than 2026-04-16 | BAGALURU -P2 | 9676916 |
| 1145 | 42100.42600.46900.62500.63700.158400.2182700 | TOILET DADO TILE FIXING | 9d | 2026-04-16 | 2026-04-24 | 1133 |  | BAGALURU -P2 | 9678776 |
| 1146 | 42100.42600.46900.62500.63700.158400.2182800 | FLAT FLOORING | 9d | 2026-04-25 | 2026-05-03 | 1145 |  | BAGALURU -P2 | 9678786 |
| 1147 | 42100.42600.46900.62500.63700.158400.2182900 | CORNICE WORKS | 9d | 2026-05-04 | 2026-05-12 | 1146 |  | BAGALURU -P2 | 9678796 |
| 1148 | 42100.42600.46900.62500.63700.158400.2183000 | INTERNAL PAINTING - PUTTY / PRIMER APPLICATION | 9d | 2026-05-31 | 2026-06-08 | 1147FS+18d |  | BAGALURU -P2 | 9678806 |
| 1149 | 42100.42600.46900.62500.63700.158400.2183100 | WINDOW FIXING | 9d | 2026-06-09 | 2026-06-17 | 1148 |  | BAGALURU -P2 | 9678816 |
| 1150 | 42100.42600.46900.62500.63700.158400.2183200 | INTERNAL PAINTING - 1ST COAT | 15d | 2026-08-17 | 2026-08-31 | 1149FS+60d |  | BAGALURU -P2 | 9678826 |
| 1151 | 42100.42600.46900.62500.63700.158400.2183300 | INTERNAL DOOR FIXING | 15d | 2026-09-01 | 2026-09-15 | 1150 |  | BAGALURU -P2 | 9678836 |
| 1152 | 42100.42600.46900.62500.63700.158400.2183400 | WIRING & SWITCH PLATE FIXING | 10d | 2026-09-16 | 2026-09-25 | 1151 |  | BAGALURU -P2 | 9678846 |
| 1153 | 42100.42600.46900.62500.63700.158400.2183500 | TOILET FALSE CEILING | 15d | 2026-12-03 | 2026-12-17 | 1152FS+68d |  | BAGALURU -P2 | 9678856 |
| 1154 | 42100.42600.46900.62500.63700.158400.2183600 | CP & SANITARY FIXING | 10d | 2026-12-18 | 2026-12-27 | 1153 |  | BAGALURU -P2 | 9678866 |
| 1155 | 42100.42600.46900.62500.63700.158400.2183700 | FINAL COAT PAINT | 12d | 2026-12-28 | 2027-01-08 | 1154 |  | BAGALURU -P2 | 9678876 |
| 1156 | 42100.42600.46900.62500.63700.158500 | **Floor 11** | 268d | 2026-04-25 | 2027-01-17 |  | start no earlier than 2026-04-25 | BAGALURU -P2 | 9676926 |
| 1157 | 42100.42600.46900.62500.63700.158500.2183800 | TOILET DADO TILE FIXING | 9d | 2026-04-25 | 2026-05-03 | 1145 |  | BAGALURU -P2 | 9678886 |
| 1158 | 42100.42600.46900.62500.63700.158500.2183900 | FLAT FLOORING | 9d | 2026-05-04 | 2026-05-12 | 1157 |  | BAGALURU -P2 | 9678896 |
| 1159 | 42100.42600.46900.62500.63700.158500.2184000 | CORNICE WORKS | 9d | 2026-05-13 | 2026-05-21 | 1158 |  | BAGALURU -P2 | 9678906 |
| 1160 | 42100.42600.46900.62500.63700.158500.2184100 | INTERNAL PAINTING - PUTTY / PRIMER APPLICATION | 9d | 2026-06-09 | 2026-06-17 | 1159FS+18d |  | BAGALURU -P2 | 9678916 |
| 1161 | 42100.42600.46900.62500.63700.158500.2184200 | WINDOW FIXING | 9d | 2026-06-18 | 2026-06-26 | 1160 |  | BAGALURU -P2 | 9678926 |
| 1162 | 42100.42600.46900.62500.63700.158500.2184300 | INTERNAL PAINTING - 1ST COAT | 15d | 2026-08-26 | 2026-09-09 | 1161FS+60d |  | BAGALURU -P2 | 9678936 |
| 1163 | 42100.42600.46900.62500.63700.158500.2184400 | INTERNAL DOOR FIXING | 15d | 2026-09-10 | 2026-09-24 | 1162 |  | BAGALURU -P2 | 9678946 |
| 1164 | 42100.42600.46900.62500.63700.158500.2184500 | WIRING & SWITCH PLATE FIXING | 10d | 2026-09-25 | 2026-10-04 | 1163 |  | BAGALURU -P2 | 9678966 |
| 1165 | 42100.42600.46900.62500.63700.158500.2184600 | TOILET FALSE CEILING | 15d | 2026-12-12 | 2026-12-26 | 1164FS+68d |  | BAGALURU -P2 | 9678976 |
| 1166 | 42100.42600.46900.62500.63700.158500.2184700 | CP & SANITARY FIXING | 10d | 2026-12-27 | 2027-01-05 | 1165 |  | BAGALURU -P2 | 9678986 |
| 1167 | 42100.42600.46900.62500.63700.158500.2184800 | FINAL COAT PAINT | 12d | 2027-01-06 | 2027-01-17 | 1166 |  | BAGALURU -P2 | 9678996 |

| ID | WBS | Task | Duration | Start | Finish | Predecessors | Constraint | Calendar | Unique_Task_ID |
| --- | --- | --- | --- | --- | --- | --- | --- | --- | --- |
| 1168 | 42100.42600.46900.62500.63700.158600 | **Floor 12** | 268d | 2026-05-04 | 2027-01-26 |  | start no earlier than 2026-05-04 | BAGALURU -P2 | 9676936 |
| 1169 | 42100.42600.46900.62500.63700.158600.2184900 | TOILET DADO TILE FIXING | 9d | 2026-05-04 | 2026-05-12 | 1157 |  | BAGALURU -P2 | 9679006 |
| 1170 | 42100.42600.46900.62500.63700.158600.2185000 | FLAT FLOORING | 9d | 2026-05-13 | 2026-05-21 | 1169 |  | BAGALURU -P2 | 9679016 |
| 1171 | 42100.42600.46900.62500.63700.158600.2185100 | CORNICE WORKS | 9d | 2026-05-22 | 2026-05-30 | 1170 |  | BAGALURU -P2 | 9679026 |
| 1172 | 42100.42600.46900.62500.63700.158600.2185200 | INTERNAL PAINTING - PUTTY / PRIMER APPLICATION | 9d | 2026-06-18 | 2026-06-26 | 1171FS+18d |  | BAGALURU -P2 | 9679036 |
| 1173 | 42100.42600.46900.62500.63700.158600.2185300 | WINDOW FIXING | 9d | 2026-06-27 | 2026-07-05 | 1172 |  | BAGALURU -P2 | 9679046 |
| 1174 | 42100.42600.46900.62500.63700.158600.2185400 | INTERNAL PAINTING - 1ST COAT | 15d | 2026-09-04 | 2026-09-18 | 1173FS+60d |  | BAGALURU -P2 | 9679056 |
| 1175 | 42100.42600.46900.62500.63700.158600.2185500 | INTERNAL DOOR FIXING | 15d | 2026-09-19 | 2026-10-03 | 1174 |  | BAGALURU -P2 | 9679066 |
| 1176 | 42100.42600.46900.62500.63700.158600.2185600 | WIRING & SWITCH PLATE FIXING | 10d | 2026-10-04 | 2026-10-13 | 1175 |  | BAGALURU -P2 | 9679076 |
| 1177 | 42100.42600.46900.62500.63700.158600.2185700 | TOILET FALSE CEILING | 15d | 2026-12-21 | 2027-01-04 | 1176FS+68d |  | BAGALURU -P2 | 9679086 |
| 1178 | 42100.42600.46900.62500.63700.158600.2185800 | CP & SANITARY FIXING | 10d | 2027-01-05 | 2027-01-14 | 1177 |  | BAGALURU -P2 | 9679096 |
| 1179 | 42100.42600.46900.62500.63700.158600.2185900 | FINAL COAT PAINT | 12d | 2027-01-15 | 2027-01-26 | 1178 |  | BAGALURU -P2 | 9679106 |
| 1180 | 42100.42600.46900.62500.63700.158700 | **Floor 13** | 268d | 2026-05-13 | 2027-02-04 |  | start no earlier than 2026-05-13 | BAGALURU -P2 | 9676946 |
| 1181 | 42100.42600.46900.62500.63700.158700.2186000 | TOILET DADO TILE FIXING | 9d | 2026-05-13 | 2026-05-21 | 1169 |  | BAGALURU -P2 | 9679116 |
| 1182 | 42100.42600.46900.62500.63700.158700.2186100 | FLAT FLOORING | 9d | 2026-05-22 | 2026-05-30 | 1181 |  | BAGALURU -P2 | 9679126 |
| 1183 | 42100.42600.46900.62500.63700.158700.2186200 | CORNICE WORKS | 9d | 2026-05-31 | 2026-06-08 | 1182 |  | BAGALURU -P2 | 9679136 |
| 1184 | 42100.42600.46900.62500.63700.158700.2186300 | INTERNAL PAINTING - PUTTY / PRIMER APPLICATION | 9d | 2026-06-27 | 2026-07-05 | 1183FS+18d |  | BAGALURU -P2 | 9679146 |
| 1185 | 42100.42600.46900.62500.63700.158700.2186400 | WINDOW FIXING | 9d | 2026-07-06 | 2026-07-14 | 1184 |  | BAGALURU -P2 | 9679156 |
| 1186 | 42100.42600.46900.62500.63700.158700.2186500 | INTERNAL PAINTING - 1ST COAT | 15d | 2026-09-13 | 2026-09-27 | 1185FS+60d |  | BAGALURU -P2 | 9679166 |
| 1187 | 42100.42600.46900.62500.63700.158700.2186600 | INTERNAL DOOR FIXING | 15d | 2026-09-28 | 2026-10-12 | 1186 |  | BAGALURU -P2 | 9679176 |
| 1188 | 42100.42600.46900.62500.63700.158700.2186700 | WIRING & SWITCH PLATE FIXING | 10d | 2026-10-13 | 2026-10-22 | 1187 |  | BAGALURU -P2 | 9679186 |
| 1189 | 42100.42600.46900.62500.63700.158700.2186800 | TOILET FALSE CEILING | 15d | 2026-12-30 | 2027-01-13 | 1188FS+68d |  | BAGALURU -P2 | 9679196 |
| 1190 | 42100.42600.46900.62500.63700.158700.2186900 | CP & SANITARY FIXING | 10d | 2027-01-14 | 2027-01-23 | 1189 |  | BAGALURU -P2 | 9679206 |
| 1191 | 42100.42600.46900.62500.63700.158700.2187000 | FINAL COAT PAINT | 12d | 2027-01-24 | 2027-02-04 | 1190 |  | BAGALURU -P2 | 9679216 |

| ID | WBS | Task | Duration | Start | Finish | Predecessors | Constraint | Calendar | Unique_Task_ID |
| --- | --- | --- | --- | --- | --- | --- | --- | --- | --- |
| 1192 | 42100.42600.46900.62500.63700.158800 | **Floor 14** | 268d | 2026-05-22 | 2027-02-13 |  | start no earlier than 2026-05-22 | BAGALURU -P2 | 9676956 |
| 1193 | 42100.42600.46900.62500.63700.158800.2187100 | TOILET DADO TILE FIXING | 9d | 2026-05-22 | 2026-05-30 | 1181 |  | BAGALURU -P2 | 9679226 |
| 1194 | 42100.42600.46900.62500.63700.158800.2187200 | FLAT FLOORING | 9d | 2026-05-31 | 2026-06-08 | 1193 |  | BAGALURU -P2 | 9679236 |
| 1195 | 42100.42600.46900.62500.63700.158800.2187300 | CORNICE WORKS | 9d | 2026-06-09 | 2026-06-17 | 1194 |  | BAGALURU -P2 | 9679246 |
| 1196 | 42100.42600.46900.62500.63700.158800.2187400 | INTERNAL PAINTING - PUTTY / PRIMER APPLICATION | 9d | 2026-07-06 | 2026-07-14 | 1195FS+18d |  | BAGALURU -P2 | 9679256 |
| 1197 | 42100.42600.46900.62500.63700.158800.2187500 | WINDOW FIXING | 9d | 2026-07-15 | 2026-07-23 | 1196 |  | BAGALURU -P2 | 9679266 |
| 1198 | 42100.42600.46900.62500.63700.158800.2187600 | INTERNAL PAINTING - 1ST COAT | 15d | 2026-09-22 | 2026-10-06 | 1197FS+60d |  | BAGALURU -P2 | 9679276 |
| 1199 | 42100.42600.46900.62500.63700.158800.2187700 | INTERNAL DOOR FIXING | 15d | 2026-10-07 | 2026-10-21 | 1198 |  | BAGALURU -P2 | 9679286 |
| 1200 | 42100.42600.46900.62500.63700.158800.2187800 | WIRING & SWITCH PLATE FIXING | 10d | 2026-10-22 | 2026-10-31 | 1199 |  | BAGALURU -P2 | 9679296 |
| 1201 | 42100.42600.46900.62500.63700.158800.2187900 | TOILET FALSE CEILING | 15d | 2027-01-08 | 2027-01-22 | 1200FS+68d |  | BAGALURU -P2 | 9679306 |
| 1202 | 42100.42600.46900.62500.63700.158800.2188000 | CP & SANITARY FIXING | 10d | 2027-01-23 | 2027-02-01 | 1201 |  | BAGALURU -P2 | 9679316 |
| 1203 | 42100.42600.46900.62500.63700.158800.2188100 | FINAL COAT PAINT | 12d | 2027-02-02 | 2027-02-13 | 1202 |  | BAGALURU -P2 | 9679326 |
| 1204 | 42100.42600.46900.62500.63700.158900 | **Floor 15** | 268d | 2026-05-31 | 2027-02-22 |  | start no earlier than 2026-05-31 | BAGALURU -P2 | 9676966 |
| 1205 | 42100.42600.46900.62500.63700.158900.2188200 | TOILET DADO TILE FIXING | 9d | 2026-05-31 | 2026-06-08 | 1193 |  | BAGALURU -P2 | 9679336 |
| 1206 | 42100.42600.46900.62500.63700.158900.2188300 | FLAT FLOORING | 9d | 2026-06-09 | 2026-06-17 | 1205 |  | BAGALURU -P2 | 9679346 |
| 1207 | 42100.42600.46900.62500.63700.158900.2188400 | CORNICE WORKS | 9d | 2026-06-18 | 2026-06-26 | 1206 |  | BAGALURU -P2 | 9679356 |
| 1208 | 42100.42600.46900.62500.63700.158900.2188500 | INTERNAL PAINTING - PUTTY / PRIMER APPLICATION | 9d | 2026-07-15 | 2026-07-23 | 1207FS+18d |  | BAGALURU -P2 | 9679366 |
| 1209 | 42100.42600.46900.62500.63700.158900.2188600 | WINDOW FIXING | 9d | 2026-07-24 | 2026-08-01 | 1208 |  | BAGALURU -P2 | 9679376 |
| 1210 | 42100.42600.46900.62500.63700.158900.2188700 | INTERNAL PAINTING - 1ST COAT | 15d | 2026-10-01 | 2026-10-15 | 1209FS+60d |  | BAGALURU -P2 | 9679386 |
| 1211 | 42100.42600.46900.62500.63700.158900.2188800 | INTERNAL DOOR FIXING | 15d | 2026-10-16 | 2026-10-30 | 1210 |  | BAGALURU -P2 | 9679396 |
| 1212 | 42100.42600.46900.62500.63700.158900.2188900 | WIRING & SWITCH PLATE FIXING | 10d | 2026-10-31 | 2026-11-09 | 1211 |  | BAGALURU -P2 | 9679406 |
| 1213 | 42100.42600.46900.62500.63700.158900.2189000 | TOILET FALSE CEILING | 15d | 2027-01-17 | 2027-01-31 | 1212FS+68d |  | BAGALURU -P2 | 9679416 |
| 1214 | 42100.42600.46900.62500.63700.158900.2189100 | CP & SANITARY FIXING | 10d | 2027-02-01 | 2027-02-10 | 1213 |  | BAGALURU -P2 | 9679426 |
| 1215 | 42100.42600.46900.62500.63700.158900.2189200 | FINAL COAT PAINT | 12d | 2027-02-11 | 2027-02-22 | 1214 |  | BAGALURU -P2 | 9679436 |

| ID | WBS | Task | Duration | Start | Finish | Predecessors | Constraint | Calendar | Unique_Task_ID |
| --- | --- | --- | --- | --- | --- | --- | --- | --- | --- |
| 1216 | 42100.42600.46900.62500.111400 | **Lobby Finishes** | 535d | 2026-04-19 | 2028-05-07 |  | start no earlier than 2026-04-19 |  | 9676806 |
| 1217 | 42100.42600.46900.62500.111400.862400 | STAIRCASE RAILING | 150d | 2026-04-19 | 2026-09-15 | 923 |  | BAGALURU -P2 | 9677576 |
| 1218 | 42100.42600.46900.62500.111400.862500 | LIFT BLOCK WORK | 120d | 2026-09-16 | 2027-01-13 | 1217 |  | BAGALURU -P2 | 9677586 |
| 1219 | 42100.42600.46900.62500.111400.862600 | FIRE RATED DOORs | 90d | 2027-01-14 | 2027-04-13 | 1218 |  | BAGALURU -P2 | 9677596 |
| 1220 | 42100.42600.46900.62500.111400.862700 | LOBBY FLOORING WORK | 120d | 2027-02-13 | 2027-06-12 | 1219SS+30d |  | BAGALURU -P2 | 9677606 |
| 1221 | 42100.42600.46900.62500.111400.862800 | STAIRCASE TILING | 120d | 2027-03-15 | 2027-07-12 | 1220SS+30d |  | BAGALURU -P2 | 9677616 |
| 1222 | 42100.42600.46900.62500.111400.862900 | PUTTY + PRIMER | 120d | 2027-04-14 | 2027-08-11 | 1221SS+30d |  | BAGALURU -P2 | 9677626 |
| 1223 | 42100.42600.46900.62500.111400.863000 | False ceiling & 1ST COAT PAINTING | 120d | 2027-05-14 | 2027-09-10 | 1222SS+30d |  | BAGALURU -P2 | 9677636 |
| 1224 | 42100.42600.46900.62500.111400.863100 | FINAL COAT PAINT | 90d | 2027-12-10 | 2028-03-08 | 1223FS+90d |  | BAGALURU -P2 | 9677646 |
| 1225 | 42100.42600.46900.62500.111400.863200 | CLEANING | 30d | 2028-03-09 | 2028-04-07 | 1224 |  | BAGALURU -P2 | 9677656 |
| 1226 | 42100.42600.46900.62500.111400.863300 | Terrace glass railing works | 45d | 2028-03-09 | 2028-04-22 | 1224 |  | BAGALURU -P2 | 9677666 |
| 1227 | 42100.42600.46900.62500.111400.863400 | Common area False ceiling | 30d | 2028-03-09 | 2028-04-07 | 1224 |  | BAGALURU -P2 | 9677676 |
| 1228 | 42100.42600.46900.62500.111400.863500 | Entrance Lobby (excl. MEP Works) | 60d | 2028-03-09 | 2028-05-07 | 1224 |  | BAGALURU -P2 | 9677686 |
| 1229 | 42100.42600.46900.62500.165700 | **MEP works** | 420d | 2026-05-22 | 2027-12-30 |  | start no earlier than 2026-05-22 |  | 9677006 |
| 1230 | 42100.42600.46900.62500.165700.485100 | **Lift Works** | 165d | 2027-01-14 | 2027-06-27 |  | start no earlier than 2027-01-14 | BAGALURU -P2 | 9677266 |
| 1231 | 42100.42600.46900.62500.165700.485100.2189300 | Lift Suppply | 45d | 2027-01-14 | 2027-02-27 | 1218 |  | BAGALURU -P2 | 9679446 |
| 1232 | 42100.42600.46900.62500.165700.485100.2189400 | Lift installation work | 120d | 2027-02-28 | 2027-06-27 | 1231 |  | BAGALURU -P2 | 9679456 |
| 1233 | 42100.42600.46900.62500.165700.382700 | **Plumbing works** | 570d | 2026-06-09 | 2027-12-30 |  | start no earlier than 2026-06-09 | BAGALURU -P2 | 9677216 |
| 1234 | 42100.42600.46900.62500.165700.382700.2189500 | Shaft Plumbing | 120d | 2026-06-09 | 2026-10-06 | 1030 |  | BAGALURU -P2 | 9679466 |
| 1235 | 42100.42600.46900.62500.165700.382700.2189600 | Terrace Plumbing | 90d | 2026-08-08 | 2026-11-05 | 1234FF+30d |  | BAGALURU -P2 | 9679476 |
| 1236 | 42100.42600.46900.62500.165700.382700.2189700 | T & C | 90d | 2027-10-02 | 2027-12-30 | 1234FS+360d |  | BAGALURU -P2 | 9679486 |
| 1237 | 42100.42600.46900.62500.165700.382800 | **Fire Fighting works** | 588d | 2026-05-22 | 2027-12-30 |  | start no earlier than 2026-05-22 | BAGALURU -P2 | 9677226 |
| 1238 | 42100.42600.46900.62500.165700.382800.2189800 | Shaft works | 60d | 2026-05-22 | 2026-07-20 | 1027 |  | BAGALURU -P2 | 9679496 |
| 1239 | 42100.42600.46900.62500.165700.382800.2189900 | FAPA works | 7.5d | 2026-07-21 | 2026-07-29 | 1238 |  | Indian Calendar | 9679506 |
| 1240 | 42100.42600.46900.62500.165700.382800.2190000 | T & C | 90d | 2027-10-02 | 2027-12-30 | 1236FF |  | BAGALURU -P2 | 9679516 |

| ID | WBS | Task | Duration | Start | Finish | Predecessors | Constraint | Calendar | Unique_Task_ID |
| --- | --- | --- | --- | --- | --- | --- | --- | --- | --- |
| 1241 | 42100.42600.46900.62500.165700.382900 | **Electrical works** | 390d | 2026-12-06 | 2027-12-30 |  | start no earlier than 2026-12-06 | BAGALURU -P2 | 9677236 |
| 1242 | 42100.42600.46900.62500.165700.382900.2190100 | Basement & Shaft electrical | 90d | 2026-12-06 | 2027-03-05 | 1234FS+60d |  | BAGALURU -P2 | 9679526 |
| 1243 | 42100.42600.46900.62500.165700.382900.2190200 | Basement & common area lighting | 30d | 2027-03-06 | 2027-04-04 | 1242 |  | BAGALURU -P2 | 9679536 |
| 1244 | 42100.42600.46900.62500.165700.382900.2190300 | T & C | 90d | 2027-10-02 | 2027-12-30 | 1236FF |  | BAGALURU -P2 | 9679546 |
| 1245 | 42100.42600.46900.53300 | **Customer milestone T-3** | 981d | 2025-10-04 | 2028-11-21 |  | start no earlier than 2025-10-04 | Indian Calendar | 9676986 |
| 1246 | 42100.42600.46900.53300.822100 | Commencement of Ground Floor | 1d | 2025-10-04 | 2025-10-04 | 886 |  | Indian Calendar | 9677486 |
| 1247 | 42100.42600.46900.53300.3332400 | Commencement of Ground Floor | 1d | 2025-12-01 | 2025-12-01 |  | start no earlier than 2025-12-01 | Indian Calendar | 10038279 |
| 1248 | 42100.42600.46900.53300.3332300 | Commencement of Ground Floor | 1d | 2025-12-01 | 2025-12-01 |  | start no earlier than 2025-12-01 | Indian Calendar | 10038269 |
| 1249 | 42100.42600.46900.53300.3332200 | Commencement of Ground Floor | 1d | 2025-12-01 | 2025-12-01 |  | start no earlier than 2025-12-01 | Indian Calendar | 10038259 |
| 1250 | 42100.42600.46900.53300.3332100 | Commencement of Ground Floor | 1d | 2025-12-01 | 2025-12-01 |  | start no earlier than 2025-12-01 | Indian Calendar | 10038249 |
| 1251 | 42100.42600.46900.53300.822200 | Commencement of 3rd Floor | 1d | 2025-12-29 | 2025-12-29 | 899 |  | Indian Calendar | 9677496 |
| 1252 | 42100.42600.46900.53300.3332000 | Commencement of 3rd Floor | 1d | 2025-12-27 | 2025-12-27 |  | start no earlier than 2025-12-27 | Indian Calendar | 10038319 |
| 1253 | 42100.42600.46900.53300.3331900 | Commencement of 3rd Floor | 1d | 2025-12-27 | 2025-12-27 |  | start no earlier than 2025-12-27 | Indian Calendar | 10038309 |
| 1254 | 42100.42600.46900.53300.3331800 | Commencement of 3rd Floor | 1d | 2025-12-27 | 2025-12-27 |  | start no earlier than 2025-12-27 | Indian Calendar | 10038299 |
| 1255 | 42100.42600.46900.53300.3331700 | Commencement of 3rd Floor | 1d | 2025-12-27 | 2025-12-27 |  | start no earlier than 2025-12-27 | Indian Calendar | 10038289 |
| 1256 | 42100.42600.46900.53300.822300 | Commencement of 6th Floor | 1d | 2026-01-26 | 2026-01-26 | 905 |  | Indian Calendar | 9677506 |
| 1257 | 42100.42600.46900.53300.3331600 | Commencement of 6th Floor | 1d | 2026-01-23 | 2026-01-23 |  | start no earlier than 2026-01-23 | Indian Calendar | 10038369 |
| 1258 | 42100.42600.46900.53300.3331500 | Commencement of 6th Floor | 1d | 2026-01-23 | 2026-01-23 |  | start no earlier than 2026-01-23 | Indian Calendar | 10038359 |
| 1259 | 42100.42600.46900.53300.3331400 | Commencement of 6th Floor | 1d | 2026-01-23 | 2026-01-23 |  | start no earlier than 2026-01-23 | Indian Calendar | 10038349 |
| 1260 | 42100.42600.46900.53300.3331300 | Commencement of 6th Floor | 1d | 2026-01-23 | 2026-01-23 |  | start no earlier than 2026-01-23 | Indian Calendar | 10038339 |
| 1261 | 42100.42600.46900.53300.822400 | Commencement of 9th Floor | 1d | 2026-02-21 | 2026-02-21 | 911 |  | Indian Calendar | 9677516 |
| 1262 | 42100.42600.46900.53300.3331200 | Commencement of 9th Floor | 1d | 2026-02-19 | 2026-02-19 |  | start no earlier than 2026-02-19 | Indian Calendar | 10038429 |
| 1263 | 42100.42600.46900.53300.3331100 | Commencement of 9th Floor | 1d | 2026-02-19 | 2026-02-19 |  | start no earlier than 2026-02-19 | Indian Calendar | 10038419 |
| 1264 | 42100.42600.46900.53300.3331000 | Commencement of 9th Floor | 1d | 2026-02-19 | 2026-02-19 |  | start no earlier than 2026-02-19 | Indian Calendar | 10038409 |
| 1265 | 42100.42600.46900.53300.3330900 | Commencement of 9th Floor | 1d | 2026-02-19 | 2026-02-19 |  | start no earlier than 2026-02-19 | Indian Calendar | 10038399 |
| 1266 | 42100.42600.46900.53300.822500 | Commencement of 12th Floor | 1d | 2026-03-20 | 2026-03-20 | 917 |  | Indian Calendar | 9677526 |
| 1267 | 42100.42600.46900.53300.3330800 | Commencement of 12th Floor | 1d | 2026-03-18 | 2026-03-18 |  | start no earlier than 2026-03-18 | Indian Calendar | 10038469 |
| 1268 | 42100.42600.46900.53300.3330700 | Commencement of 12th Floor | 1d | 2026-03-18 | 2026-03-18 |  | start no earlier than 2026-03-18 | Indian Calendar | 10038459 |
| 1269 | 42100.42600.46900.53300.3330600 | Commencement of 12th Floor | 1d | 2026-03-18 | 2026-03-18 |  | start no earlier than 2026-03-18 | Indian Calendar | 10038449 |
| 1270 | 42100.42600.46900.53300.3330500 | Commencement of 12th Floor | 1d | 2026-03-18 | 2026-03-18 |  | start no earlier than 2026-03-18 | Indian Calendar | 10038439 |
| 1271 | 42100.42600.46900.53300.822600 | Commencement of Terrace | 1d | 2026-04-20 | 2026-04-20 | 923 |  | Indian Calendar | 9677536 |
| 1272 | 42100.42600.46900.53300.3330400 | Commencement of Terrace | 1d | 2026-04-17 | 2026-04-17 |  | start no earlier than 2026-04-17 | Indian Calendar | 10038509 |
| 1273 | 42100.42600.46900.53300.3330300 | Commencement of Terrace | 1d | 2026-04-17 | 2026-04-17 |  | start no earlier than 2026-04-17 | Indian Calendar | 10038499 |
| 1274 | 42100.42600.46900.53300.3330200 | Commencement of Terrace | 1d | 2026-04-17 | 2026-04-17 |  | start no earlier than 2026-04-17 | Indian Calendar | 10038489 |
| 1275 | 42100.42600.46900.53300.3330100 | Commencement of Terrace | 1d | 2026-04-17 | 2026-04-17 |  | start no earlier than 2026-04-17 | Indian Calendar | 10038479 |
| 1276 | 42100.42600.46900.53300.822700 | Commencement of External Painting | 1d | 2026-11-17 | 2026-11-17 | 1271FS+180d |  | Indian Calendar | 9677546 |
| 1277 | 42100.42600.46900.53300.3330000 | Commencement of External Painting | 1d | 2026-11-14 | 2026-11-14 |  | start no earlier than 2026-11-14 | Indian Calendar | 10038549 |
| 1278 | 42100.42600.46900.53300.3329900 | Commencement of External Painting | 1d | 2026-11-14 | 2026-11-14 |  | start no earlier than 2026-11-14 | Indian Calendar | 10038539 |
| 1279 | 42100.42600.46900.53300.3329800 | Commencement of External Painting | 1d | 2026-11-14 | 2026-11-14 |  | start no earlier than 2026-11-14 | Indian Calendar | 10038529 |
| 1280 | 42100.42600.46900.53300.3329700 | Commencement of External Painting | 1d | 2026-11-14 | 2026-11-14 |  | start no earlier than 2026-11-14 | Indian Calendar | 10038519 |
| 1281 | 42100.42600.46900.53300.3329600 | Receipt of Fire CC | 1d | 2027-06-18 | 2027-06-18 |  | start no earlier than 2027-06-18 | Indian Calendar | 10038589 |
| 1282 | 42100.42600.46900.53300.3329500 | Receipt of Fire CC | 1d | 2027-06-18 | 2027-06-18 |  | start no earlier than 2027-06-18 | Indian Calendar | 10038579 |
| 1283 | 42100.42600.46900.53300.3329400 | Receipt of Fire CC | 1d | 2027-06-18 | 2027-06-18 |  | start no earlier than 2027-06-18 | Indian Calendar | 10038569 |
| 1284 | 42100.42600.46900.53300.3329300 | Receipt of Fire CC | 1d | 2027-06-18 | 2027-06-18 |  | start no earlier than 2027-06-18 | Indian Calendar | 10038559 |
| 1285 | 42100.42600.46900.53300.822800 | Receipt of Fire CC | 1d | 2027-06-21 | 2027-06-21 | 1271FS+365d |  | Indian Calendar | 9677556 |
| 1286 | 42100.42600.46900.53300.3329200 | Notice to possession (Tower specific) | 1d | 2028-11-18 | 2028-11-18 |  | start no earlier than 2028-11-18 | Indian Calendar | 10038629 |
| 1287 | 42100.42600.46900.53300.3329100 | Notice to possession (Tower specific) | 1d | 2028-11-18 | 2028-11-18 |  | start no earlier than 2028-11-18 | Indian Calendar | 10038619 |
| 1288 | 42100.42600.46900.53300.3329000 | Notice to possession (Tower specific) | 1d | 2028-11-18 | 2028-11-18 |  | start no earlier than 2028-11-18 | Indian Calendar | 10038609 |
| 1289 | 42100.42600.46900.53300.3328900 | Notice to possession (Tower specific) | 1d | 2028-11-18 | 2028-11-18 |  | start no earlier than 2028-11-18 | Indian Calendar | 10038599 |
| 1290 | 42100.42600.46900.53300.822900 | Notice to possession (Tower specific) | 1d | 2028-11-21 | 2028-11-21 | 1285SS+445d |  | Indian Calendar | 9677566 |

| ID | WBS | Task | Duration | Start | Finish | Predecessors | Constraint | Calendar | Unique_Task_ID |
| --- | --- | --- | --- | --- | --- | --- | --- | --- | --- |
| 1291 | 42100.42600.46900.164300 | **Handing Over** | 730d | 2026-05-04 | 2028-08-31 |  | start no earlier than 2026-05-04 | Indian Calendar | 9676976 |
| 1292 | 42100.42600.46900.164300.168700 | **Floor 1** | 730d | 2026-05-04 | 2028-08-31 |  | start no earlier than 2026-05-04 | Indian Calendar | 9677016 |
| 1293 | 42100.42600.46900.164300.168700.863600 | GLPL Snagging | 365d | 2026-05-04 | 2027-07-02 | 1401FS-103d |  | Indian Calendar | 9677696 |
| 1294 | 42100.42600.46900.164300.168700.863700 | GPLPL Desnagging | 365d | 2027-07-03 | 2028-08-31 | 1293 |  | Indian Calendar | 9677706 |
| 1295 | 42100.42600.46900.164300.168700.863800 | Gypsum hold 10% | 365d | 2027-07-03 | 2028-08-31 | 1294FF |  | Indian Calendar | 9677716 |
| 1296 | 42100.42600.46900.164300.168700.863900 | Flooring hold 10% | 365d | 2027-07-03 | 2028-08-31 | 1294FF |  | Indian Calendar | 9677726 |
| 1297 | 42100.42600.46900.164300.168700.864000 | Painting hold 10% | 365d | 2027-07-03 | 2028-08-31 | 1294FF |  | Indian Calendar | 9677736 |
| 1298 | 42100.42600.46900.164300.168700.864100 | Doors hold 10% | 365d | 2027-07-03 | 2028-08-31 | 1294FF |  | Indian Calendar | 9677746 |
| 1299 | 42100.42600.46900.164300.168700.864200 | Windows hold 10% | 365d | 2027-07-03 | 2028-08-31 | 1294FF |  | Indian Calendar | 9677756 |
| 1300 | 42100.42600.162600 | **NTA slabs** | 565d | 2025-08-16 | 2027-03-03 |  | start no earlier than 2025-08-16 |  | 9324114 |
| 1301 | 42100.42600.162600.345200 | **NTA Slabs (RCC)** | 228d | 2025-08-16 | 2026-05-08 |  | start no earlier than 2025-08-16 | Indian Calendar | 9557256 |
| 1302 | 42100.42600.162600.345200.823000 | Mass excavation NTA | 75d | 2025-08-16 | 2025-10-29 | 12SS+50d |  | BAGALURU -P2 | 8951345 |
| 1303 | 42100.42600.162600.345200.823100 | NTA backfilling | 110d | 2026-01-01 | 2026-05-08 | 1306FF+26d |  | Indian Calendar | 8951346 |
| 1304 | 42100.42600.162600.345200.823200 | NTA PCC | 140d | 2025-08-19 | 2026-01-28 | 13SS+45d |  | Indian Calendar | 8951347 |
| 1305 | 42100.42600.162600.345200.823300 | NTA raft | 140d | 2025-10-04 | 2026-03-16 | 1304SS+40d |  | Indian Calendar | 8951348 |
| 1306 | 42100.42600.162600.345200.823400 | NTA slabs | 140d | 2025-11-20 | 2026-04-08 | 1305SS+47d |  |  | 9324124 |
| 1307 | 42100.42600.162600.167600 | **Basement finishing** | 339d | 2026-03-30 | 2027-03-03 |  | start no earlier than 2026-03-30 | Whitefield - STRUCTURE | 9557096 |
| 1308 | 42100.42600.162600.167600.823500 | Retaining Wall waterproofing | 90d | 2026-03-30 | 2026-07-11 | 1306SS+111d |  | Indian Calendar | 9557097 |
| 1309 | 42100.42600.162600.167600.823600 | Grade slab/VDF | 180d | 2026-06-07 | 2026-12-03 | 1308SS+69d |  | BAGALURU -P2 | 9557116 |
| 1310 | 42100.42600.162600.167600.823700 | Blockwork | 5d | 2026-12-04 | 2026-12-08 | 1309 |  | BAGALURU -P2 | 9557126 |
| 1311 | 42100.42600.162600.167600.823800 | Railing/Misc. | 90d | 2026-12-04 | 2027-03-03 | 1309 |  | BAGALURU -P2 | 9557136 |
| 1312 | 42100.42600.162600.167600.823900 | Basement Painting | 180d | 2026-08-06 | 2027-02-01 | 1309SS+60d |  | BAGALURU -P2 | 9557146 |
| 1313 | 42100.42600.162600.167600.824000 | Plastering | 5d | 2026-12-19 | 2026-12-23 | 1310SS+15d |  | BAGALURU -P2 | 9557156 |
| 1314 | 42100.42600.162600.167600.824100 | Waterproofing STP/UGT | 60d | 2026-07-12 | 2026-09-09 | 1308 |  | BAGALURU -P2 | 9557166 |

Notes:
- 1300: AVg Slab Cycle of 21 days

| ID | WBS | Task | Duration | Start | Finish | Predecessors | Constraint | Calendar | Unique_Task_ID |
| --- | --- | --- | --- | --- | --- | --- | --- | --- | --- |
| 1315 | 42100.42600.162600.345300 | **Basement Services** | 175d | 2026-09-05 | 2027-02-26 |  | start no earlier than 2026-09-05 | Whitefield - STRUCTURE | 9557106 |
| 1316 | 42100.42600.162600.345300.824200 | Basement PHE works | 120d | 2026-09-05 | 2027-01-02 | 1312SS+30d |  | BAGALURU -P2 | 9557176 |
| 1317 | 42100.42600.162600.345300.824300 | Basement Fire works | 120d | 2026-09-05 | 2027-01-02 | 1312SS+30d |  | BAGALURU -P2 | 9557186 |
| 1318 | 42100.42600.162600.345300.824400 | Basement Electrical Works | 120d | 2026-09-05 | 2027-01-22 | 1317SS |  | Indian Calendar | 9557196 |
| 1319 | 42100.42600.162600.345300.824500 | Basement lighting works | 120d | 2026-09-05 | 2027-01-22 | 1318SS |  | Indian Calendar | 9557206 |
| 1320 | 42100.42600.162600.345300.824600 | HVAC | 120d | 2026-10-10 | 2027-02-26 | 1318SS+30d |  | Indian Calendar | 9557216 |
| 1321 | 42100.42600.152900 | **Capex Item Procurment** | 208d | 2026-07-18 | 2027-02-10 |  | start no earlier than 2026-07-18 | BAGALURU -P2 | 9557276 |
| 1322 | 42100.42600.152900.492500 | **DG Works** | 91d | 2026-07-18 | 2026-10-16 |  | start no earlier than 2026-07-18 | BAGALURU -P2 | 9557386 |
| 1323 | 42100.42600.152900.492500.824700 | DG Suppply | 1d | 2026-07-18 | 2026-07-18 | 923FS+90d |  | BAGALURU -P2 | 9557866 |
| 1324 | 42100.42600.152900.492500.824800 | DG installation work | 90d | 2026-07-19 | 2026-10-16 | 1323 |  | BAGALURU -P2 | 9557876 |
| 1325 | 42100.42600.152900.492600 | **Transformers Works** | 91d | 2026-07-19 | 2026-10-17 |  | start no earlier than 2026-07-19 | BAGALURU -P2 | 9557396 |
| 1326 | 42100.42600.152900.492600.824900 | Transformers Suppply | 1d | 2026-07-19 | 2026-07-19 | 1323 |  | BAGALURU -P2 | 9557886 |
| 1327 | 42100.42600.152900.492600.825000 | Transformers installation work | 90d | 2026-07-20 | 2026-10-17 | 1326 |  | BAGALURU -P2 | 9557896 |
| 1328 | 42100.42600.152900.492700 | **LT Panles/RMU Works** | 119d | 2026-07-20 | 2026-11-15 |  | start no earlier than 2026-07-20 | BAGALURU -P2 | 9557406 |
| 1329 | 42100.42600.152900.492700.825100 | LT Panles/RMU Suppply | 30d | 2026-10-17 | 2026-11-15 | 1324 |  | BAGALURU -P2 | 9557906 |
| 1330 | 42100.42600.152900.492700.825200 | LT Panles/RMU installation work | 60d | 2026-07-20 | 2026-09-17 | 1326 |  | BAGALURU -P2 | 9557916 |
| 1331 | 42100.42600.152900.492800 | **STP/WTP Works** | 146d | 2026-07-18 | 2026-12-10 |  | start no earlier than 2026-07-18 | BAGALURU -P2 | 9557416 |
| 1332 | 42100.42600.152900.492800.825300 | STP/WTP Suppply | 5d | 2026-07-18 | 2026-07-23 | 923FS+77d |  | Indian Calendar | 9557926 |
| 1333 | 42100.42600.152900.492800.825400 | STP/WTP Installation | 120d | 2026-07-24 | 2026-12-10 | 1332 |  | Indian Calendar | 9557936 |
| 1334 | 42100.42600.152900.492900 | **Pump Supply Works** | 61d | 2026-12-11 | 2027-02-09 |  | start no earlier than 2026-12-11 | BAGALURU -P2 | 9557426 |
| 1335 | 42100.42600.152900.492900.825500 | Pump Supply | 1d | 2026-12-11 | 2026-12-11 | 1333 |  | BAGALURU -P2 | 9557946 |
| 1336 | 42100.42600.152900.492900.825600 | Pump installation work | 60d | 2026-12-12 | 2027-02-09 | 1335 |  | BAGALURU -P2 | 9557956 |
| 1337 | 42100.42600.152900.493000 | **Solar** | 61d | 2026-12-12 | 2027-02-10 |  | start no earlier than 2026-12-12 | BAGALURU -P2 | 9557466 |
| 1338 | 42100.42600.152900.493000.825700 | Solar Supply | 1d | 2026-12-12 | 2026-12-12 | 1335 |  | BAGALURU -P2 | 9557966 |
| 1339 | 42100.42600.152900.493000.825800 | Solar installation work | 60d | 2026-12-13 | 2027-02-10 | 1338 |  | BAGALURU -P2 | 9557976 |

| ID | WBS | Task | Duration | Start | Finish | Predecessors | Constraint | Calendar | Unique_Task_ID |
| --- | --- | --- | --- | --- | --- | --- | --- | --- | --- |
| 1340 | 42100.42600.152900.493100 | **OWC** | 61d | 2026-12-11 | 2027-02-09 |  | start no earlier than 2026-12-11 | BAGALURU -P2 | 9557376 |
| 1341 | 42100.42600.152900.493100.825900 | OWC Supply | 1d | 2026-12-11 | 2026-12-11 | 1333 |  | BAGALURU -P2 | 9557986 |
| 1342 | 42100.42600.152900.493100.826000 | OWC installation work | 60d | 2026-12-12 | 2027-02-09 | 1341 |  | BAGALURU -P2 | 9557996 |
| 1343 | 42100.42600.152900.493200 | **CCTV** | 7d | 2026-07-18 | 2026-07-24 |  | start no earlier than 2026-07-18 | BAGALURU -P2 | 9557366 |
| 1344 | 42100.42600.152900.493200.826100 | Security System supply | 1d | 2026-07-18 | 2026-07-18 | 923FS+90d |  | BAGALURU -P2 | 9558006 |
| 1345 | 42100.42600.152900.493200.826200 | Security System installation | 5d | 2026-07-20 | 2026-07-24 | 1344 |  | Indian Calendar | 9558016 |
| 1346 | 42100.42600.162500 | **External Development Works** | 755d | 2026-04-19 | 2028-05-12 |  | start no earlier than 2026-04-19 | BAGALURU -P2 | 9557296 |
| 1347 | 42100.42600.162500.166900 | **External Development Works** | 665d | 2026-07-18 | 2028-05-12 |  | start no earlier than 2026-07-18 | BAGALURU -P2 | 9557306 |
| 1348 | 42100.42600.162500.166900.826300 | Podium Waterproofing | 120d | 2026-07-18 | 2026-11-14 | 923FS+90d |  | BAGALURU -P2 | 9558026 |
| 1349 | 42100.42600.162500.166900.826400 | Road works | 120d | 2026-10-16 | 2027-03-04 | 1348FS-26d |  | Indian Calendar | 9558036 |
| 1350 | 42100.42600.162500.166900.826500 | Storm water drain | 90d | 2026-10-16 | 2027-01-28 | 1349SS |  | Indian Calendar | 9558046 |
| 1351 | 42100.42600.162500.166900.826600 | Utility Trench | 90d | 2026-11-20 | 2027-03-04 | 1350SS+30d |  | Indian Calendar | 9558056 |
| 1352 | 42100.42600.162500.166900.826700 | Rain water harvesting | 90d | 2027-11-15 | 2028-02-26 | 1348FS+312d |  | Indian Calendar | 9558066 |
| 1353 | 42100.42600.162500.166900.826800 | Hardscape | 150d | 2027-11-15 | 2028-04-12 | 1352SS |  | BAGALURU -P2 | 9558076 |
| 1354 | 42100.42600.162500.166900.826900 | Softscape | 150d | 2027-12-15 | 2028-05-12 | 1353SS+30d |  | BAGALURU -P2 | 9558086 |
| 1355 | 42100.42600.162500.166900.827000 | SIgnage | 90d | 2028-02-13 | 2028-05-12 | 1354FF |  | BAGALURU -P2 | 9558096 |
| 1356 | 42100.42600.162500.493300 | **Compound wall Works** | 210d | 2026-04-19 | 2026-11-14 |  | start no earlier than 2026-04-19 | BAGALURU -P2 | 9557356 |
| 1357 | 42100.42600.162500.493300.827100 | Compound wall | 180d | 2026-04-19 | 2026-10-15 | 923 |  | BAGALURU -P2 | 9558106 |
| 1358 | 42100.42600.162500.493300.827200 | Entrance Portal +gate | 60d | 2026-09-16 | 2026-11-14 | 1357FS-30d |  | BAGALURU -P2 | 9558116 |
| 1359 | 42100.42600.162500.345400 | **External MEP Works** | 513d | 2026-10-18 | 2028-03-13 |  | start no earlier than 2026-10-18 | BAGALURU -P2 | 9557326 |
| 1360 | 42100.42600.162500.345400.827300 | Electrical Highside | 90d | 2026-10-18 | 2027-01-15 | 1327 |  | BAGALURU -P2 | 9558126 |
| 1361 | 42100.42600.162500.345400.827400 | External FPS works | 60d | 2027-01-16 | 2027-03-16 | 1360 |  | BAGALURU -P2 | 9558136 |
| 1362 | 42100.42600.162500.345400.827500 | External PHE works | 30d | 2027-01-16 | 2027-02-14 | 1360 |  | BAGALURU -P2 | 9558146 |
| 1363 | 42100.42600.162500.345400.827600 | External electrical works | 60d | 2027-01-16 | 2027-03-16 | 1360 |  | BAGALURU -P2 | 9558156 |
| 1364 | 42100.42600.162500.345400.827700 | Irrigation works | 90d | 2027-12-15 | 2028-03-13 | 1354SS |  | BAGALURU -P2 | 9558166 |

| ID | WBS | Task | Duration | Start | Finish | Predecessors | Constraint | Calendar | Unique_Task_ID |
| --- | --- | --- | --- | --- | --- | --- | --- | --- | --- |
| 1365 | 42100.42600.374100 | **Retail Works** | 112d | 2027-05-04 | 2027-08-23 |  | start no earlier than 2027-05-04 | BAGALURU -P2 | 9557336 |
| 1366 | 42100.42600.374100.526000 | Shell & Core | 45d | 2027-05-04 | 2027-06-24 | 1370FS+197d |  | Indian Calendar | 9557826 |
| 1367 | 42100.42600.374100.526100 | Finishes | 30d | 2027-06-25 | 2027-07-29 | 1366 |  | Indian Calendar | 9557816 |
| 1368 | 42100.42600.374100.526200 | Façade | 21d | 2027-07-30 | 2027-08-23 | 1367 |  | Indian Calendar | 9557806 |
| 1369 | 42100.42600.162300 | **Club works** | 490d | 2026-04-19 | 2027-08-21 |  | start no earlier than 2026-04-19 | BAGALURU -P2 | 9557286 |
| 1370 | 42100.42600.162300.526300 | Club structure | 150d | 2026-04-19 | 2026-09-15 | 923 |  | BAGALURU -P2 | 9557796 |
| 1371 | 42100.42600.162300.526400 | Finishes | 180d | 2026-11-16 | 2027-06-12 | 1370FS+52d |  | Indian Calendar | 9557786 |
| 1372 | 42100.42600.162300.526500 | Façade | 30d | 2027-06-14 | 2027-07-17 | 1371 |  | Indian Calendar | 9557776 |
| 1373 | 42100.42600.162300.526600 | MEP | 15d | 2027-06-14 | 2027-06-30 | 1371 |  | Indian Calendar | 9557766 |
| 1374 | 42100.42600.162300.526700 | Elevator | 30d | 2026-09-16 | 2026-10-20 | 1370 |  | Indian Calendar | 9557746 |
| 1375 | 42100.42600.162300.526800 | Light Fixtures | 15d | 2027-07-19 | 2027-08-04 | 1372 |  | Indian Calendar | 9557736 |
| 1376 | 42100.42600.162300.526900 | Furniture | 15d | 2027-07-19 | 2027-08-04 | 1372 |  | Indian Calendar | 9557726 |
| 1377 | 42100.42600.162300.527000 | Gym Equipments | 15d | 2027-08-05 | 2027-08-21 | 1376 |  | Indian Calendar | 9557716 |
| 1378 | 42100.42600.162300.527100 | Club Additional Req | 15d | 2027-08-05 | 2027-08-21 | 1376 |  | Indian Calendar | 9557706 |
| 1379 | 42100.42600.162300.527200 | Swimming Pool | 120d | 2026-09-16 | 2027-02-02 | 1370 |  | Indian Calendar | 9557696 |
| 1380 | 42100.42600.71000 | **Miscelleneous costs** | 105d | 2027-11-07 | 2028-02-19 |  | start no earlier than 2027-11-07 | BAGALURU -P2 | 9557266 |
| 1381 | 42100.42600.71000.527300 | USP cost | 90d | 2027-11-07 | 2028-02-04 |  | start no earlier than 2027-11-07 | BAGALURU -P2 | 9557666 |
| 1382 | 42100.42600.71000.527400 | Ad on | 90d | 2027-11-07 | 2028-02-04 |  | start no earlier than 2027-11-07 | BAGALURU -P2 | 9557656 |
| 1383 | 42100.42600.71000.527500 | IGBC | 90d | 2027-11-07 | 2028-02-04 |  | start no earlier than 2027-11-07 | BAGALURU -P2 | 9557636 |
| 1384 | 42100.42600.71000.527600 | Labour incentive/Bonus | 90d | 2027-11-07 | 2028-02-04 |  | start no earlier than 2027-11-07 | BAGALURU -P2 | 9557626 |
| 1385 | 42100.42600.71000.527700 | Miscellaneous | 90d | 2027-11-07 | 2028-02-04 |  | start no earlier than 2027-11-07 | BAGALURU -P2 | 9557846 |
| 1386 | 42100.42600.71000.527800 | LPS | 90d | 2027-11-07 | 2028-02-04 |  | start no earlier than 2027-11-07 | BAGALURU -P2 | 9557616 |
| 1387 | 42100.42600.71000.527900 | Shaft & toilet ceiling | 90d | 2027-11-08 | 2028-02-19 |  | start no earlier than 2027-11-08 | Indian Calendar | 9557606 |
| 1388 | 42100.42600.71000.528000 | cost to match COC | 90d | 2027-11-08 | 2028-02-19 |  | start no earlier than 2027-11-08 | Indian Calendar | 9557586 |
| 1389 | 42100.42600.71000.528100 | Miscelleneous MEP | 90d | 2027-11-08 | 2028-02-19 |  | start no earlier than 2027-11-08 | Indian Calendar | 9557576 |
| 1390 | 42100.42600.71000.528200 | Boxing | 90d | 2027-11-08 | 2028-02-19 |  | start no earlier than 2027-11-08 | Indian Calendar | 9557566 |
| 1391 | 42100.42600.71000.528300 | Rock - Mass Excavation | 5d | 2027-11-08 | 2027-11-12 |  | start no earlier than 2027-11-08 | Indian Calendar | 9557556 |
| 1392 | 42100.42600.71000.528400 | Misc. Excavation | 30d | 2027-11-08 | 2027-12-11 |  | start no earlier than 2027-11-08 | Indian Calendar | 9557546 |
| 1393 | 42100.42600.71000.528500 | Plum concrete | 30d | 2027-11-08 | 2027-12-11 |  | start no earlier than 2027-11-08 | Indian Calendar | 9557536 |

| ID | WBS | Task | Type | Duration | Start | Finish | Predecessors | Constraint | Calendar | Unique_Task_ID |
| --- | --- | --- | --- | --- | --- | --- | --- | --- | --- | --- |
| 1394 | 42100.42600.374200 | **Other Works** |  | 120d | 2026-12-15 | 2027-04-13 |  | start no earlier than 2026-12-15 | BAGALURU -P2 | 9557346 |
| 1395 | 42100.42600.374200.528600 | Elevation features |  | 90d | 2026-12-15 | 2027-03-14 | 1348FS+30d |  | BAGALURU -P2 | 9557526 |
| 1396 | 42100.42600.374200.528700 | Louvers, jalli |  | 60d | 2026-12-15 | 2027-02-12 | 1348FS+30d |  | BAGALURU -P2 | 9557516 |
| 1397 | 42100.42600.374200.528800 | Signage |  | 60d | 2027-02-13 | 2027-04-13 | 1396 |  | BAGALURU -P2 | 9557506 |
| 1398 | 42100.42600.333600 | **OC Activities** |  | 31d | 2026-08-01 | 2026-08-31 |  | start no earlier than 2026-08-01 | BAGALURU -P2 | 9557316 |
| 1399 | 42100.42600.333600.493400 | **Tower 1** |  | 31d | 2026-08-01 | 2026-08-31 |  | start no earlier than 2026-08-01 | BAGALURU -P2 | 9557436 |
| 1400 | 42100.42600.333600.493400.2746200 | OC Application | milestone | 0d | 2026-08-01 | 2026-08-01 | 1206FS+44d |  | BAGALURU -P2 | 9557486 |
| 1401 | 42100.42600.333600.493400.827800 | OC receipt |  | 31d | 2026-08-01 | 2026-08-31 | 1400 |  | BAGALURU -P2 | 9558176 |
| 1402 | 42100.42600.333600.493500 | **Tower 2** |  | 31d | 2026-08-01 | 2026-08-31 |  | start no earlier than 2026-08-01 | BAGALURU -P2 | 9557446 |
| 1403 | 42100.42600.333600.493500.2746300 | OC Application | milestone | 0d | 2026-08-01 | 2026-08-01 | 1400FF |  | BAGALURU -P2 | 9558186 |
| 1404 | 42100.42600.333600.493500.827900 | OC receipt |  | 31d | 2026-08-01 | 2026-08-31 | 1403 |  | BAGALURU -P2 | 9557856 |
| 1405 | 42100.42600.333600.493600 | **Tower 3** |  | 31d | 2026-08-01 | 2026-08-31 |  | start no earlier than 2026-08-01 | BAGALURU -P2 | 9557456 |
| 1406 | 42100.42600.333600.493600.2746400 | OC Application | milestone | 0d | 2026-08-01 | 2026-08-01 | 1400FF |  | BAGALURU -P2 | 9558196 |
| 1407 | 42100.42600.333600.493600.828000 | OC receipt |  | 31d | 2026-08-01 | 2026-08-31 | 1406 |  | BAGALURU -P2 | 9557836 |
