Schedule from MS Project XML, 2024-01-18 to 2030-05-06, A marks actual dates.

## Calendars

- Standard: Mon-Fri 08:00-12:00, 13:00-17:00; Sat-Sun off. Exceptions (off unless hours are given): 2024-03-29 to 2024-04-01, 2024-05-06, 2024-05-27, 2024-08-26, 2024-12-23 to 2025-01-05, 2025-04-18 to 2025-04-21, 2025-05-05, 2025-05-26, 2025-08-25, 2025-12-22 to 2026-01-04, 2026-03-27 to 2026-03-30, 2026-05-04, 2026-05-23 to 2026-05-25, 2026-08-29 to 2026-08-31, 2026-12-21 to 2027-01-03, 2027-04-16 to 2027-04-19, 2027-05-01 to 2027-05-03, 2027-05-29 to 2027-05-31, 2027-08-30, 2027-12-25 to 2028-01-09, 2028-03-31 to 2028-04-03, 2028-04-29 to 2028-05-01, 2028-05-27 to 2028-05-29, 2028-08-26 to 2028-08-28, 2028-12-23 to 2029-01-07, 2029-03-23 to 2029-03-26, 2029-05-07, 2029-05-28, 2029-08-27, 2029-12-24 to 2030-01-06, 2030-04-12 to 2030-04-15, 2030-05-06.
- Indian Calendar: Mon-Sat 08:00-12:00, 13:00-17:00; Sun off. Exceptions (off unless hours are given): 2024-07-01 to 2024-07-06 08:00-10:00, 14:00-17:00, 2024-07-07, 2024-07-08 to 2024-07-13 08:00-10:00, 14:00-17:00, 2024-07-14, 2024-07-15 to 2024-07-20 08:00-10:00, 14:00-17:00, 2024-07-21, 2024-07-22 to 2024-07-27 08:00-10:00, 14:00-17:00, 2024-07-28, 2024-07-29 to 2024-07-31 08:00-10:00, 14:00-17:00, 2024-08-01 to 2024-08-03 08:00-10:00, 11:00-12:00, 13:00-17:00, 2024-08-04, 2024-08-05 to 2024-08-10 08:00-10:00, 11:00-12:00, 13:00-17:00, 2024-08-11, 2024-08-12 to 2024-08-17 08:00-10:00, 11:00-12:00, 13:00-17:00, 2024-08-18, 2024-08-19 to 2024-08-24 08:00-10:00, 11:00-12:00, 13:00-17:00, 2024-08-25, 2024-08-26 to 2024-08-31 08:00-10:00, 11:00-12:00, 13:00-17:00, 2024-09-01, 2024-09-02 to 2024-09-07 08:00-10:00, 11:00-12:00, 13:00-17:00, 2024-09-08, 2024-09-09 to 2024-09-14 08:00-10:00, 11:00-12:00, 13:00-17:00, 2024-09-15, 2024-09-16 to 2024-09-21 08:00-10:00, 11:00-12:00, 13:00-17:00, 2024-09-22, 2024-09-23 to 2024-09-28 08:00-10:00, 11:00-12:00, 13:00-17:00, 2024-09-29, 2024-09-30 08:00-10:00, 11:00-12:00, 13:00-17:00.
- Sector-44 Noida: Mon-Sun 08:00-12:00, 13:00-17:00. Exceptions (off unless hours are given): 2025-11-01 to 2025-12-15, 2026-11-01 to 2026-12-15, 2027-11-01 to 2027-12-15, 2028-11-01 to 2028-12-15.
- Sector-44 Noida(2): Mon-Sun 08:00-12:00, 13:00-17:00. Exceptions (off unless hours are given): 2025-11-01 to 2025-12-15, 2026-11-01 to 2026-12-15, 2027-11-01 to 2027-12-15, 2028-11-01 to 2028-12-15.
- Yashwantpur Finshing: Mon-Fri 08:00-12:00, 13:00-17:00; Sat-Sun off.
- GC1: Mon-Sun 08:30-13:00, 14:00-18:30. Exceptions (off unless hours are given): 2025-11-01 to 2025-12-15, 2026-11-01 to 2026-12-15, 2027-11-01 to 2027-12-15.

## Resources

| Resource |
| --- |
| GPL Revenue |
| GPL Costs & Revenue |
| GPL cost & revenue |
| Riverine |

## Schedule

| ID | WBS | Task | Type | Duration | Start | Finish | Predecessors | Complete | Constraint | Calendar | Unique_Task_ID |
| --- | --- | --- | --- | --- | --- | --- | --- | --- | --- | --- | --- |
| 1 | 36900 | **Riverine** |  | 1642d | 2024-01-18 | 2030-05-06 |  | 1% | start no earlier than 2024-01-18 | Yashwantpur Finshing | 9146084 |
| 2 | 36900.37000 | **Riverine, Sector-44 Noida** |  | 2120d | 2024-01-18 | 2030-05-06 |  | 1% | start no earlier than 2024-01-18 | Sector-44 Noida | 9146094 |
| 3 | 36900.37000.44700 | **Project Snapshot** |  | 1359d | 2025-01-18 | 2029-04-06 |  | 2% | start no earlier than 2025-01-18 | Sector-44 Noida | 9362344 |
| 4 | 36900.37000.44700.47200 | **Intermediate milestones** |  | 1082d | 2025-05-26 | 2028-09-24 |  |  | start no earlier than 2025-05-26 | Sector-44 Noida | 9362584 |
| 5 | 36900.37000.44700.47200.382600 | Removal of soldier piles | milestone | 0d | 2027-03-23 | 2027-03-23 | 3395FS-1d |  |  | Sector-44 Noida(2) | 9375514 |
| 6 | 36900.37000.44700.47200.382500 | Tower-1 -Completion of Raft | milestone | 0d | 2025-05-26 | 2025-05-26 | 66FS-1d |  |  | Indian Calendar | 9781436 |
| 7 | 36900.37000.44700.47200.382400 | Tower-1 -Completion of 12th Floor Slab | milestone | 0d | 2026-03-09 | 2026-03-09 | 180 |  |  | Indian Calendar | 9781446 |
| 8 | 36900.37000.44700.47200.382300 | Tower-1 -Terrace Completion | milestone | 0d | 2026-06-22 | 2026-06-22 | 252FS-1d |  |  | Indian Calendar | 9781456 |
| 9 | 36900.37000.44700.47200.382200 | Tower-1 -Plaster Completion | milestone | 0d | 2026-08-31 | 2026-08-31 | 678FS-1d |  |  | Indian Calendar | 9781466 |
| 10 | 36900.37000.44700.47200.382100 | Tower-1 -Flooring Completion | milestone | 0d | 2027-02-12 | 2027-02-12 | 700FS-1d |  |  | Indian Calendar | 9781476 |
| 11 | 36900.37000.44700.47200.382000 | Tower-1 -Lift Installation | milestone | 0d | 2026-10-20 | 2026-10-20 | 761FS-1d |  |  | Indian Calendar | 9781486 |
| 12 | 36900.37000.44700.47200.381900 | Tower-1 -OC Application | milestone | 0d | 2027-04-21 | 2027-04-21 | 767FS-1d |  |  | Indian Calendar | 9781496 |
| 13 | 36900.37000.44700.47200.381800 | Tower -1 - Intimation of Possession | milestone | 0d | 2028-05-17 | 2028-05-17 | 775SS |  |  | Sector-44 Noida(2) | 9375504 |
| 14 | 36900.37000.44700.47200.381700 | Tower-2 -Completion of Raft | milestone | 0d | 2025-06-11 | 2025-06-11 | 798FS-1d |  |  | Indian Calendar | 9781516 |
| 15 | 36900.37000.44700.47200.381600 | Tower-2 -Completion of 12th Floor Slab | milestone | 0d | 2026-03-23 | 2026-03-23 | 912FS-2d |  |  | Indian Calendar | 9781526 |
| 16 | 36900.37000.44700.47200.381500 | Tower-2 -Terrace Completion | milestone | 0d | 2026-07-07 | 2026-07-07 | 984FS-2d |  |  | Indian Calendar | 9781536 |
| 17 | 36900.37000.44700.47200.381400 | Tower-2 -Plaster Completion | milestone | 0d | 2026-09-16 | 2026-09-16 | 1410FS-1d |  |  | Indian Calendar | 9781546 |
| 18 | 36900.37000.44700.47200.381300 | Tower-2 -Flooring Completion | milestone | 0d | 2027-03-01 | 2027-03-01 | 1432 |  |  | Indian Calendar | 9781556 |
| 19 | 36900.37000.44700.47200.381200 | Tower-2 -Lift Installation | milestone | 0d | 2026-12-21 | 2026-12-21 | 1493 |  |  | Indian Calendar | 9781566 |
| 20 | 36900.37000.44700.47200.381100 | Tower-2 -OC Application | milestone | 0d | 2027-05-07 | 2027-05-07 | 1499FS-1d |  |  | Indian Calendar | 9781576 |
| 21 | 36900.37000.44700.47200.381000 | Tower -2 - Intimation of Possession | milestone | 0d | 2028-02-12 | 2028-02-12 | 1507SS |  |  | Sector-44 Noida(2) | 9375494 |
| 22 | 36900.37000.44700.47200.380900 | Tower-3 -Completion of Raft | milestone | 0d | 2025-06-20 | 2025-06-20 | 1530FS-1d |  |  | Indian Calendar | 9781606 |
| 23 | 36900.37000.44700.47200.380800 | Tower-3 -Completion of 12th Floor Slab | milestone | 0d | 2026-04-02 | 2026-04-02 | 1644FS-1d |  |  | Indian Calendar | 9781616 |
| 24 | 36900.37000.44700.47200.380700 | Tower-3 -Terrace Completion | milestone | 0d | 2026-07-17 | 2026-07-17 | 1716FS-1d |  |  | Indian Calendar | 9781617 |
| 25 | 36900.37000.44700.47200.380600 | Tower-3 -Plaster Completion | milestone | 0d | 2026-09-25 | 2026-09-25 | 2142FS-1d |  |  | Indian Calendar | 9781626 |
| 26 | 36900.37000.44700.47200.380500 | Tower-3 -Flooring Completion | milestone | 0d | 2027-03-09 | 2027-03-09 | 2164FS-1d |  |  | Indian Calendar | 9781636 |
| 27 | 36900.37000.44700.47200.380400 | Tower-3 -Lift Installation | milestone | 0d | 2026-12-29 | 2026-12-29 | 2225FS-1d |  |  | Indian Calendar | 9781646 |
| 28 | 36900.37000.44700.47200.380300 | Tower-3 -OC Application | milestone | 0d | 2027-05-17 | 2027-05-17 | 2231 |  |  | Indian Calendar | 9781656 |
| 29 | 36900.37000.44700.47200.380200 | Tower -3 - Intimation of Possession | milestone | 0d | 2028-02-21 | 2028-02-21 | 2239SS |  |  | Sector-44 Noida(2) | 9375484 |
| 30 | 36900.37000.44700.47200.380100 | Tower-4 -Completion of Raft | milestone | 0d | 2025-08-08 | 2025-08-08 | 2264FS-1d |  |  | Indian Calendar | 9781666 |
| 31 | 36900.37000.44700.47200.380000 | Tower-4 -Completion of 12th Floor Slab | milestone | 0d | 2026-05-21 | 2026-05-21 | 2378FS-1d |  |  | Indian Calendar | 9781676 |
| 32 | 36900.37000.44700.47200.379900 | Tower-4 -Terrace Completion | milestone | 0d | 2027-03-04 | 2027-03-04 | 2540FS-1d |  |  | Indian Calendar | 9781686 |
| 33 | 36900.37000.44700.47200.379800 | Tower-4 -Plaster Completion | milestone | 0d | 2027-05-13 | 2027-05-13 | 3236FS-1d |  |  | Indian Calendar | 9781696 |
| 34 | 36900.37000.44700.47200.379700 | Tower-4 -Flooring Completion | milestone | 0d | 2027-09-10 | 2027-09-10 | 3258FS-1d |  |  | Indian Calendar | 9781706 |
| 35 | 36900.37000.44700.47200.379600 | Tower-4 -Lift Installation | milestone | 0d | 2027-07-06 | 2027-07-06 | 3333FS-1d |  |  | Indian Calendar | 9781716 |
| 36 | 36900.37000.44700.47200.379500 | Tower-4 -OC Application | milestone | 0d | 2028-02-01 | 2028-02-01 | 3339FS-1d |  |  | Indian Calendar | 9781726 |
| 37 | 36900.37000.44700.47200.379400 | Tower -4 - Intimation of Possession | milestone | 0d | 2028-09-24 | 2028-09-24 | 3347SS |  |  | Sector-44 Noida(2) | 9375474 |
| 38 | 36900.37000.44700.47200.379300 | OC receipt of Club Area | milestone | 0d | 2027-12-17 | 2027-12-17 | 3612FS-1d |  |  | Sector-44 Noida(2) | 9375464 |
| 39 | 36900.37000.44700.47200.379200 | Completion of Landscape works | milestone | 0d | 2027-08-06 | 2027-08-06 | 3461FS-1d |  |  | Sector-44 Noida(2) | 9375454 |

| ID | WBS | Task | Type | Duration | Start | Finish | Predecessors | Complete | Constraint | Calendar | Unique_Task_ID |
| --- | --- | --- | --- | --- | --- | --- | --- | --- | --- | --- | --- |
| 40 | 36900.37000.44700.189700 | **Project Data** |  | 1359d | 2025-01-18 | 2029-04-06 |  | 50% | start no earlier than 2025-01-18 | Sector-44 Noida | 9366054 |
| 41 | 36900.37000.44700.189700.379100 | Start of Project | milestone | 0d | 2025-01-18 A | 2025-01-18 A |  | 100% | start no earlier than 2025-01-01 | Sector-44 Noida(2) | 9375534 |
| 42 | 36900.37000.44700.189700.379000 | Completion of project | milestone | 0d | 2029-04-06 | 2029-04-06 | 3619FS-1d, 775FS-1d, 1507FS-1d, 2239FS-1d, 3347FS-1d |  |  | Sector-44 Noida(2) | 9375524 |
| 43 | 36900.37000.1339700 | Project Snapshot |  | 3d | 2030-05-04 | 2030-05-06 | 3 |  |  | Sector-44 Noida(2) | 9396494 |
| 44 | 36900.37000.42500 | **Tower-1 (2B+S+P+23)** |  | 1595d | 2024-01-18 | 2028-10-13 |  | 5% | start no earlier than 2024-01-18 | Sector-44 Noida(2) | 9356624 |
| 45 | 36900.37000.42500.108900 | **Soldier Piling & Excavation work** |  | 528d | 2024-01-18 | 2025-06-29 |  | 82% | start no earlier than 2024-01-18 | Sector-44 Noida(2) | 9362624 |
| 46 | 36900.37000.42500.108900.127000 | **Till 2.5 Mtr** |  | 433d | 2024-01-18 | 2025-03-26 |  | 100% | start no earlier than 2024-01-18 | Sector-44 Noida(2) | 9365664 |
| 47 | 36900.37000.42500.108900.127000.202000 | H beam pile driving - 12m |  | 391d | 2024-01-18 | 2025-03-02 | 41 | 100% | start no earlier than 2024-01-18 | Sector-44 Noida(2) | 9366514 |
| 48 | 36900.37000.42500.108900.127000.202100 | Excavation from NGL to 2.5m |  | 30d | 2025-01-18 | 2025-03-11 | 47FS-44d | 100% | start no earlier than 2025-01-18 | Sector-44 Noida(2) | 9366524 |
| 49 | 36900.37000.42500.108900.127000.202200 | Plank installation & anchoring till 2.5m |  | 35d | 2025-02-20 | 2025-03-26 | 48FF | 100% | start no earlier than 2025-02-20 | Sector-44 Noida(2) | 9366534 |
| 50 | 36900.37000.42500.108900.183400 | **2.5 mtrs till 5 mtrs** |  | 83d | 2025-01-28 | 2025-04-21 |  | 67% | start no earlier than 2025-01-28 | Sector-44 Noida(2) | 9366074 |
| 51 | 36900.37000.42500.108900.183400.202300 | Excavation from 2.5m till 5m |  | 32d | 2025-01-28 | 2025-04-05 | 49FS-57d | 84% | start no earlier than 2025-01-28 | Sector-44 Noida(2) | 9366544 |
| 52 | 36900.37000.42500.108900.183400.202400 | Plank installation & anchoring till 2.5m till 5m |  | 49d | 2025-01-28 | 2025-04-21 | 51FS-52d | 57% |  | Sector-44 Noida(2) | 9366554 |
| 53 | 36900.37000.42500.108900.190400 | **12 mts till NTA fotting bottom** |  | 69d | 2025-04-22 | 2025-06-29 |  |  | start no earlier than 2025-04-22 | Sector-44 Noida(2) | 9366024 |
| 54 | 36900.37000.42500.108900.190400.237500 | Excavation from 5m to fotting PCC bottom |  | 26d | 2025-04-22 | 2025-05-17 | 52 |  |  | Sector-44 Noida(2) | 9366564 |
| 55 | 36900.37000.42500.108900.190400.237600 | Plank installation & anchoring from 5m to footing PCC bottom |  | 53d | 2025-05-08 | 2025-06-29 | 54FS-10d |  |  | Sector-44 Noida(2) | 9366574 |
| 56 | 36900.37000.42500.59900 | **Sub-Structure works** |  | 261d | 2025-05-01 | 2026-03-02 |  |  | start no earlier than 2025-05-01 | Sector-44 Noida(2) | 9362094 |
| 57 | 36900.37000.42500.59900.127100 | **Soil bed preparation** |  | 6d | 2025-05-01 | 2025-05-06 |  |  | start no earlier than 2025-05-01 | Sector-44 Noida(2) | 9364254 |
| 58 | 36900.37000.42500.59900.127100.237700 | Excavation completion |  | 2d | 2025-05-01 | 2025-05-02 | 55FS-60d |  |  | Sector-44 Noida(2) | 9366584 |
| 59 | 36900.37000.42500.59900.127100.237800 | Surface dressing |  | 2d | 2025-05-03 | 2025-05-04 | 58 |  |  | Sector-44 Noida(2) | 9366594 |
| 60 | 36900.37000.42500.59900.127100.237900 | ATT |  | 1d | 2025-05-05 | 2025-05-05 | 59 |  |  | Sector-44 Noida(2) | 9366604 |
| 61 | 36900.37000.42500.59900.127100.238000 | PCC |  | 1d | 2025-05-06 | 2025-05-06 | 58FF, 59SF, 60 |  |  | Sector-44 Noida(2) | 9366614 |
| 62 | 36900.37000.42500.59900.102000 | **RCC Works** |  | 70d | 2025-05-07 | 2025-07-15 |  |  | start no earlier than 2025-05-07 | Sector-44 Noida(2) | 9362404 |
| 63 | 36900.37000.42500.59900.102000.187700 | **Raft** |  | 20d | 2025-05-07 | 2025-05-26 |  |  | start no earlier than 2025-05-07 | Sector-44 Noida(2) | 9365684 |
| 64 | 36900.37000.42500.59900.102000.187700.334300 | Reinforcement Work |  | 18d | 2025-05-07 | 2025-05-24 | 61 |  |  | Sector-44 Noida(2) | 9369534 |
| 65 | 36900.37000.42500.59900.102000.187700.334400 | Shuttering work |  | 10d | 2025-05-15 | 2025-05-24 | 64FS-10d |  |  | Sector-44 Noida(2) | 9369544 |
| 66 | 36900.37000.42500.59900.102000.187700.334500 | Concreteing work |  | 2d | 2025-05-25 | 2025-05-26 | 64FF, 65 |  |  | Sector-44 Noida(2) | 9369554 |

| ID | WBS | Task | Duration | Start | Finish | Predecessors | Constraint | Calendar | Unique_Task_ID |
| --- | --- | --- | --- | --- | --- | --- | --- | --- | --- |
| 67 | 36900.37000.42500.59900.102000.125300 | **Basement-2 Roof Slab** | 25d | 2025-05-27 | 2025-06-20 |  | start no earlier than 2025-05-27 | Sector-44 Noida(2) | 9364174 |
| 68 | 36900.37000.42500.59900.102000.125300.185900 | **B2 Roof Slab** | 25d | 2025-05-27 | 2025-06-20 |  | start no earlier than 2025-05-27 | Sector-44 Noida(2) | 9365844 |
| 69 | 36900.37000.42500.59900.102000.125300.185900.580100 | Shuttering Work | 17d | 2025-05-27 | 2025-06-12 | 66 |  | Sector-44 Noida(2) | 9373544 |
| 70 | 36900.37000.42500.59900.102000.125300.185900.580200 | Reinforcement Work | 12d | 2025-06-08 | 2025-06-19 | 69FS-5d |  | Sector-44 Noida(2) | 9373554 |
| 71 | 36900.37000.42500.59900.102000.125300.185900.580300 | Concreteing work | 1d | 2025-06-20 | 2025-06-20 | 69FF, 70 |  | Sector-44 Noida(2) | 9373564 |
| 72 | 36900.37000.42500.59900.102000.125200 | **Basement-1 Roof Slab** | 25d | 2025-06-21 | 2025-07-15 |  | start no earlier than 2025-06-21 | Sector-44 Noida(2) | 9364184 |
| 73 | 36900.37000.42500.59900.102000.125200.185800 | **B1 Roof Slab** | 25d | 2025-06-21 | 2025-07-15 |  | start no earlier than 2025-06-21 | Sector-44 Noida(2) | 9365834 |
| 74 | 36900.37000.42500.59900.102000.125200.185800.580400 | Shuttering Work | 17d | 2025-06-21 | 2025-07-07 | 71 |  | Sector-44 Noida(2) | 9373574 |
| 75 | 36900.37000.42500.59900.102000.125200.185800.580500 | Reinforcement Work | 12d | 2025-07-03 | 2025-07-14 | 74FS-5d |  | Sector-44 Noida(2) | 9373584 |
| 76 | 36900.37000.42500.59900.102000.125200.185800.580600 | Concreteing work | 1d | 2025-07-15 | 2025-07-15 | 74FF, 75 |  | Sector-44 Noida(2) | 9373594 |
| 77 | 36900.37000.42500.59900.100800 | **Sub structure finishing works** | 140d | 2025-08-30 | 2026-03-02 |  | start no earlier than 2025-08-30 | Sector-44 Noida(2) | 9362324 |
| 78 | 36900.37000.42500.59900.100800.103400 | **Basement-2** | 110d | 2025-08-30 | 2026-01-31 |  | start no earlier than 2025-08-30 | Sector-44 Noida(2) | 9362504 |
| 79 | 36900.37000.42500.59900.100800.103400.334600 | Masonary | 30d | 2025-08-30 | 2025-09-28 | 76FS+45d |  | Sector-44 Noida(2) | 9369564 |
| 80 | 36900.37000.42500.59900.100800.103400.334700 | Structural Steel | 30d | 2025-08-30 | 2025-09-28 | 76FS+45d |  | Sector-44 Noida(2) | 9369574 |
| 81 | 36900.37000.42500.59900.100800.103400.334800 | Plaster | 30d | 2025-09-29 | 2025-10-28 | 79, 80 |  | Sector-44 Noida(2) | 9369584 |
| 82 | 36900.37000.42500.59900.100800.103400.334900 | White Wash | 30d | 2025-10-29 | 2026-01-11 | 81 |  | Sector-44 Noida(2) | 9369594 |
| 83 | 36900.37000.42500.59900.100800.103400.335000 | VDF | 60d | 2025-09-14 | 2025-12-27 | 81FS-45d |  | Sector-44 Noida(2) | 9369604 |
| 84 | 36900.37000.42500.59900.100800.103400.335100 | Drain & Sump (incl. gratings) | 60d | 2025-10-14 | 2026-01-26 | 83FS-30d |  | Sector-44 Noida(2) | 9369614 |
| 85 | 36900.37000.42500.59900.100800.103400.335200 | Car parking marking | 30d | 2025-12-28 | 2026-01-26 | 82FS-15d |  | Sector-44 Noida(2) | 9369624 |
| 86 | 36900.37000.42500.59900.100800.103400.335300 | Signages | 30d | 2026-01-02 | 2026-01-31 | 79FF, 80FF, 81FF, 82FS-10d, 83FF, 84FF, 85FF |  | Sector-44 Noida(2) | 9369634 |
| 87 | 36900.37000.42500.59900.100800.103300 | **Basement-1** | 110d | 2025-09-29 | 2026-03-02 |  | start no earlier than 2025-09-29 | Sector-44 Noida(2) | 9362564 |
| 88 | 36900.37000.42500.59900.100800.103300.335400 | Masonary | 30d | 2025-09-29 | 2025-10-28 | 79 |  | Sector-44 Noida(2) | 9369644 |
| 89 | 36900.37000.42500.59900.100800.103300.335500 | Structural Steel | 30d | 2025-09-29 | 2025-10-28 | 79 |  | Sector-44 Noida(2) | 9369654 |
| 90 | 36900.37000.42500.59900.100800.103300.335600 | Plaster | 30d | 2025-10-29 | 2026-01-11 | 88, 89 |  | Sector-44 Noida(2) | 9369664 |
| 91 | 36900.37000.42500.59900.100800.103300.335700 | White Wash | 30d | 2026-01-12 | 2026-02-10 | 90 |  | Sector-44 Noida(2) | 9369674 |
| 92 | 36900.37000.42500.59900.100800.103300.335800 | VDF | 60d | 2025-10-14 | 2026-01-26 | 90FS-45d |  | Sector-44 Noida(2) | 9369684 |
| 93 | 36900.37000.42500.59900.100800.103300.335900 | Drain & Sump (incl. gratings) | 60d | 2025-12-28 | 2026-02-25 | 92FS-30d |  | Sector-44 Noida(2) | 9369694 |
| 94 | 36900.37000.42500.59900.100800.103300.336000 | Car parking marking | 30d | 2026-01-27 | 2026-02-25 | 91FS-15d |  | Sector-44 Noida(2) | 9369704 |
| 95 | 36900.37000.42500.59900.100800.103300.336100 | Signages | 30d | 2026-02-01 | 2026-03-02 | 88FF, 89FF, 90FF, 91FS-10d, 92FF, 93FF, 94FF |  | Sector-44 Noida(2) | 9369714 |

| ID | WBS | Task | Duration | Start | Finish | Predecessors | Constraint | Calendar | Unique_Task_ID |
| --- | --- | --- | --- | --- | --- | --- | --- | --- | --- |
| 96 | 36900.37000.42500.42700 | **Super structure works** | 1051d | 2025-07-16 | 2028-10-13 |  | start no earlier than 2025-07-16 | Sector-44 Noida(2) | 9360714 |
| 97 | 36900.37000.42500.42700.47100 | **RCC Works** | 332d | 2025-07-16 | 2026-07-27 |  | start no earlier than 2025-07-16 | Sector-44 Noida(2) | 9360824 |
| 98 | 36900.37000.42500.42700.47100.124900 | **Stilt/GF Slab** | 25d | 2025-07-16 | 2025-08-09 |  | start no earlier than 2025-07-16 | Sector-44 Noida(2) | 9364234 |
| 99 | 36900.37000.42500.42700.47100.124900.185300 | **Stilt/GF Slab** | 25d | 2025-07-16 | 2025-08-09 |  | start no earlier than 2025-07-16 | Sector-44 Noida(2) | 9365794 |
| 100 | 36900.37000.42500.42700.47100.124900.185300.580700 | Shuttering Work | 17d | 2025-07-16 | 2025-08-01 | 76 |  | Sector-44 Noida(2) | 9373604 |
| 101 | 36900.37000.42500.42700.47100.124900.185300.580800 | Reinforcement Work | 12d | 2025-07-28 | 2025-08-08 | 100FS-5d |  | Sector-44 Noida(2) | 9373614 |
| 102 | 36900.37000.42500.42700.47100.124900.185300.580900 | Concreteing work | 1d | 2025-08-09 | 2025-08-09 | 100FF, 101 |  | Sector-44 Noida(2) | 9373624 |
| 103 | 36900.37000.42500.42700.47100.120800 | **Podium-1 Slab** | 25d | 2025-08-10 | 2025-09-03 |  | start no earlier than 2025-08-10 | Sector-44 Noida(2) | 9362684 |
| 104 | 36900.37000.42500.42700.47100.120800.169300 | **Podium-1 Slab** | 25d | 2025-08-10 | 2025-09-03 |  | start no earlier than 2025-08-10 | Sector-44 Noida(2) | 9364354 |
| 105 | 36900.37000.42500.42700.47100.120800.169300.581000 | Shuttering Work | 17d | 2025-08-10 | 2025-08-26 | 102 |  | Sector-44 Noida(2) | 9373634 |
| 106 | 36900.37000.42500.42700.47100.120800.169300.581100 | Reinforcement Work | 12d | 2025-08-22 | 2025-09-02 | 105FS-5d |  | Sector-44 Noida(2) | 9373644 |
| 107 | 36900.37000.42500.42700.47100.120800.169300.581200 | Conduiting work | 1d | 2025-09-02 | 2025-09-02 | 106FS-1d |  | Sector-44 Noida(2) | 9373654 |
| 108 | 36900.37000.42500.42700.47100.120800.169300.581300 | Concreteing work | 1d | 2025-09-03 | 2025-09-03 | 105FF, 106FF, 107 |  | Sector-44 Noida(2) | 9373664 |
| 109 | 36900.37000.42500.42700.47100.120700 | **1st Floor Slab** | 24d | 2025-09-04 | 2025-09-27 |  | start no earlier than 2025-09-04 | Sector-44 Noida(2) | 9362694 |
| 110 | 36900.37000.42500.42700.47100.120700.169400 | **1st Floor Slab** | 24d | 2025-09-04 | 2025-09-27 |  | start no earlier than 2025-09-04 | Sector-44 Noida(2) | 9364364 |
| 111 | 36900.37000.42500.42700.47100.120700.169400.581400 | Shuttering Work | 16d | 2025-09-04 | 2025-09-19 | 108 |  | Sector-44 Noida(2) | 9373674 |
| 112 | 36900.37000.42500.42700.47100.120700.169400.581500 | Reinforcement Work | 12d | 2025-09-15 | 2025-09-26 | 111FS-5d |  | Sector-44 Noida(2) | 9373684 |
| 113 | 36900.37000.42500.42700.47100.120700.169400.581600 | Conduiting work | 1d | 2025-09-26 | 2025-09-26 | 112FS-1d |  | Sector-44 Noida(2) | 9373694 |
| 114 | 36900.37000.42500.42700.47100.120700.169400.581700 | Concreteing work | 1d | 2025-09-27 | 2025-09-27 | 111FF, 112FF, 113 |  | Sector-44 Noida(2) | 9373704 |
| 115 | 36900.37000.42500.42700.47100.120600 | **2nd Floor Slab (1st MIVAN Setup)** | 21d | 2025-09-28 | 2025-10-18 |  | start no earlier than 2025-09-28 | Sector-44 Noida(2) | 9362704 |
| 116 | 36900.37000.42500.42700.47100.120600.169500 | **2nd Floor Slab** | 21d | 2025-09-28 | 2025-10-18 |  | start no earlier than 2025-09-28 | Sector-44 Noida(2) | 9364374 |
| 117 | 36900.37000.42500.42700.47100.120600.169500.581800 | Shuttering Work | 13d | 2025-09-28 | 2025-10-10 | 114 |  | Sector-44 Noida(2) | 9373714 |
| 118 | 36900.37000.42500.42700.47100.120600.169500.581900 | Reinforcement Work | 10d | 2025-10-08 | 2025-10-17 | 117FS-3d |  | Sector-44 Noida(2) | 9373724 |
| 119 | 36900.37000.42500.42700.47100.120600.169500.582000 | Conduiting work | 1d | 2025-10-17 | 2025-10-17 | 118FS-1d |  | Sector-44 Noida(2) | 9373734 |
| 120 | 36900.37000.42500.42700.47100.120600.169500.582100 | Concreteing work | 1d | 2025-10-18 | 2025-10-18 | 117FF, 118FF, 119 |  | Sector-44 Noida(2) | 9373744 |

| ID | WBS | Task | Duration | Start | Finish | Predecessors | Constraint | Calendar | Unique_Task_ID |
| --- | --- | --- | --- | --- | --- | --- | --- | --- | --- |
| 121 | 36900.37000.42500.42700.47100.120500 | **3rd Floor Slab** | 15d | 2025-10-19 | 2025-12-17 |  | start no earlier than 2025-10-19 | Sector-44 Noida(2) | 9362714 |
| 122 | 36900.37000.42500.42700.47100.120500.169600 | **3rd Floor Slab** | 15d | 2025-10-19 | 2025-12-17 |  | start no earlier than 2025-10-19 | Sector-44 Noida(2) | 9364384 |
| 123 | 36900.37000.42500.42700.47100.120500.169600.582200 | Shuttering Work | 11d | 2025-10-19 | 2025-10-29 | 120 |  | Sector-44 Noida(2) | 9373754 |
| 124 | 36900.37000.42500.42700.47100.120500.169600.582300 | Reinforcement Work | 6d | 2025-10-27 | 2025-12-16 | 123FS-3d |  | Sector-44 Noida(2) | 9373764 |
| 125 | 36900.37000.42500.42700.47100.120500.169600.582400 | Conduiting work | 1d | 2025-12-16 | 2025-12-16 | 124FS-1d |  | Sector-44 Noida(2) | 9373774 |
| 126 | 36900.37000.42500.42700.47100.120500.169600.582500 | Concreteing work | 1d | 2025-12-17 | 2025-12-17 | 123FF, 124FF, 125 |  | Sector-44 Noida(2) | 9373784 |
| 127 | 36900.37000.42500.42700.47100.120400 | **4th Floor Slab** | 9d | 2025-12-18 | 2025-12-26 |  | start no earlier than 2025-12-18 | Sector-44 Noida(2) | 9362724 |
| 128 | 36900.37000.42500.42700.47100.120400.169700 | **4th Floor Slab** | 9d | 2025-12-18 | 2025-12-26 |  | start no earlier than 2025-12-18 | Sector-44 Noida(2) | 9364394 |
| 129 | 36900.37000.42500.42700.47100.120400.169700.582600 | Shuttering Work | 8d | 2025-12-18 | 2025-12-25 | 126 |  | Sector-44 Noida(2) | 9373794 |
| 130 | 36900.37000.42500.42700.47100.120400.169700.582700 | Reinforcement Work | 3d | 2025-12-23 | 2025-12-25 | 129FS-3d |  | Sector-44 Noida(2) | 9373804 |
| 131 | 36900.37000.42500.42700.47100.120400.169700.582800 | Conduiting work | 1d | 2025-12-25 | 2025-12-25 | 130FS-1d |  | Sector-44 Noida(2) | 9373814 |
| 132 | 36900.37000.42500.42700.47100.120400.169700.582900 | Concreteing work | 1d | 2025-12-26 | 2025-12-26 | 129FF, 130FF, 131 |  | Sector-44 Noida(2) | 9373824 |
| 133 | 36900.37000.42500.42700.47100.120300 | **5th Floor Slab** | 9d | 2025-12-27 | 2026-01-04 |  | start no earlier than 2025-12-27 | Sector-44 Noida(2) | 9362734 |
| 134 | 36900.37000.42500.42700.47100.120300.169800 | **5th Floor Slab** | 9d | 2025-12-27 | 2026-01-04 |  | start no earlier than 2025-12-27 | Sector-44 Noida(2) | 9364404 |
| 135 | 36900.37000.42500.42700.47100.120300.169800.583000 | Shuttering Work | 8d | 2025-12-27 | 2026-01-03 | 132 |  | Sector-44 Noida(2) | 9373834 |
| 136 | 36900.37000.42500.42700.47100.120300.169800.583100 | Reinforcement Work | 3d | 2026-01-01 | 2026-01-03 | 135FS-3d |  | Sector-44 Noida(2) | 9373844 |
| 137 | 36900.37000.42500.42700.47100.120300.169800.583200 | Conduiting work | 1d | 2026-01-03 | 2026-01-03 | 136FS-1d |  | Sector-44 Noida(2) | 9373854 |
| 138 | 36900.37000.42500.42700.47100.120300.169800.583300 | Concreteing work | 1d | 2026-01-04 | 2026-01-04 | 135FF, 136FF, 137 |  | Sector-44 Noida(2) | 9373864 |
| 139 | 36900.37000.42500.42700.47100.120200 | **6th Floor Slab** | 9d | 2026-01-05 | 2026-01-13 |  | start no earlier than 2026-01-05 | Sector-44 Noida(2) | 9362744 |
| 140 | 36900.37000.42500.42700.47100.120200.169900 | **6th Floor Slab** | 9d | 2026-01-05 | 2026-01-13 |  | start no earlier than 2026-01-05 | Sector-44 Noida(2) | 9364414 |
| 141 | 36900.37000.42500.42700.47100.120200.169900.583400 | Shuttering Work | 8d | 2026-01-05 | 2026-01-12 | 138 |  | Sector-44 Noida(2) | 9373874 |
| 142 | 36900.37000.42500.42700.47100.120200.169900.583500 | Reinforcement Work | 3d | 2026-01-10 | 2026-01-12 | 141FS-3d |  | Sector-44 Noida(2) | 9373884 |
| 143 | 36900.37000.42500.42700.47100.120200.169900.583600 | Conduiting work | 1d | 2026-01-12 | 2026-01-12 | 142FS-1d |  | Sector-44 Noida(2) | 9373894 |
| 144 | 36900.37000.42500.42700.47100.120200.169900.583700 | Concreteing work | 1d | 2026-01-13 | 2026-01-13 | 141FF, 142FF, 143 |  | Sector-44 Noida(2) | 9373904 |

| ID | WBS | Task | Duration | Start | Finish | Predecessors | Constraint | Calendar | Unique_Task_ID |
| --- | --- | --- | --- | --- | --- | --- | --- | --- | --- |
| 145 | 36900.37000.42500.42700.47100.120100 | **7th Floor Slab** | 9d | 2026-01-14 | 2026-01-22 |  | start no earlier than 2026-01-14 | Sector-44 Noida(2) | 9362754 |
| 146 | 36900.37000.42500.42700.47100.120100.170000 | **7th Floor Slab** | 9d | 2026-01-14 | 2026-01-22 |  | start no earlier than 2026-01-14 | Sector-44 Noida(2) | 9364424 |
| 147 | 36900.37000.42500.42700.47100.120100.170000.583800 | Shuttering Work | 8d | 2026-01-14 | 2026-01-21 | 144 |  | Sector-44 Noida(2) | 9373914 |
| 148 | 36900.37000.42500.42700.47100.120100.170000.583900 | Reinforcement Work | 3d | 2026-01-19 | 2026-01-21 | 147FS-3d |  | Sector-44 Noida(2) | 9373924 |
| 149 | 36900.37000.42500.42700.47100.120100.170000.584000 | Conduiting work | 1d | 2026-01-21 | 2026-01-21 | 148FS-1d |  | Sector-44 Noida(2) | 9373934 |
| 150 | 36900.37000.42500.42700.47100.120100.170000.584100 | Concreteing work | 1d | 2026-01-22 | 2026-01-22 | 147FF, 148FF, 149 |  | Sector-44 Noida(2) | 9373944 |
| 151 | 36900.37000.42500.42700.47100.120000 | **8th Floor Slab** | 9d | 2026-01-23 | 2026-01-31 |  | start no earlier than 2026-01-23 | Sector-44 Noida(2) | 9362764 |
| 152 | 36900.37000.42500.42700.47100.120000.170100 | **8th Floor Slab** | 9d | 2026-01-23 | 2026-01-31 |  | start no earlier than 2026-01-23 | Sector-44 Noida(2) | 9364434 |
| 153 | 36900.37000.42500.42700.47100.120000.170100.584200 | Shuttering Work | 8d | 2026-01-23 | 2026-01-30 | 150 |  | Sector-44 Noida(2) | 9373954 |
| 154 | 36900.37000.42500.42700.47100.120000.170100.584300 | Reinforcement Work | 3d | 2026-01-28 | 2026-01-30 | 153FS-3d |  | Sector-44 Noida(2) | 9373964 |
| 155 | 36900.37000.42500.42700.47100.120000.170100.584400 | Conduiting work | 1d | 2026-01-30 | 2026-01-30 | 154FS-1d |  | Sector-44 Noida(2) | 9373974 |
| 156 | 36900.37000.42500.42700.47100.120000.170100.584500 | Concreteing work | 1d | 2026-01-31 | 2026-01-31 | 153FF, 154FF, 155 |  | Sector-44 Noida(2) | 9373984 |
| 157 | 36900.37000.42500.42700.47100.119900 | **9th Floor Slab** | 9d | 2026-02-01 | 2026-02-09 |  | start no earlier than 2026-02-01 | Sector-44 Noida(2) | 9362774 |
| 158 | 36900.37000.42500.42700.47100.119900.170200 | **9th Floor Slab** | 9d | 2026-02-01 | 2026-02-09 |  | start no earlier than 2026-02-01 | Sector-44 Noida(2) | 9364444 |
| 159 | 36900.37000.42500.42700.47100.119900.170200.584600 | Shuttering Work | 8d | 2026-02-01 | 2026-02-08 | 156 |  | Sector-44 Noida(2) | 9373994 |
| 160 | 36900.37000.42500.42700.47100.119900.170200.584700 | Reinforcement Work | 3d | 2026-02-06 | 2026-02-08 | 159FS-3d |  | Sector-44 Noida(2) | 9374004 |
| 161 | 36900.37000.42500.42700.47100.119900.170200.584800 | Conduiting work | 1d | 2026-02-08 | 2026-02-08 | 160FS-1d |  | Sector-44 Noida(2) | 9374014 |
| 162 | 36900.37000.42500.42700.47100.119900.170200.584900 | Concreteing work | 1d | 2026-02-09 | 2026-02-09 | 159FF, 160FF, 161 |  | Sector-44 Noida(2) | 9374024 |
| 163 | 36900.37000.42500.42700.47100.119800 | **10th Floor Slab** | 9d | 2026-02-10 | 2026-02-18 |  | start no earlier than 2026-02-10 | Sector-44 Noida(2) | 9362784 |
| 164 | 36900.37000.42500.42700.47100.119800.170300 | **10th Floor Slab** | 9d | 2026-02-10 | 2026-02-18 |  | start no earlier than 2026-02-10 | Sector-44 Noida(2) | 9364454 |
| 165 | 36900.37000.42500.42700.47100.119800.170300.585000 | Shuttering Work | 8d | 2026-02-10 | 2026-02-17 | 162 |  | Sector-44 Noida(2) | 9374034 |
| 166 | 36900.37000.42500.42700.47100.119800.170300.585100 | Reinforcement Work | 3d | 2026-02-15 | 2026-02-17 | 165FS-3d |  | Sector-44 Noida(2) | 9374044 |
| 167 | 36900.37000.42500.42700.47100.119800.170300.585200 | Conduiting work | 1d | 2026-02-17 | 2026-02-17 | 166FS-1d |  | Sector-44 Noida(2) | 9374054 |
| 168 | 36900.37000.42500.42700.47100.119800.170300.585300 | Concreteing work | 1d | 2026-02-18 | 2026-02-18 | 165FF, 166FF, 167 |  | Sector-44 Noida(2) | 9374064 |

| ID | WBS | Task | Duration | Start | Finish | Predecessors | Constraint | Calendar | Unique_Task_ID |
| --- | --- | --- | --- | --- | --- | --- | --- | --- | --- |
| 169 | 36900.37000.42500.42700.47100.119700 | **11th Floor Slab** | 9d | 2026-02-19 | 2026-02-27 |  | start no earlier than 2026-02-19 | Sector-44 Noida(2) | 9362794 |
| 170 | 36900.37000.42500.42700.47100.119700.170400 | **11th Floor Slab** | 9d | 2026-02-19 | 2026-02-27 |  | start no earlier than 2026-02-19 | Sector-44 Noida(2) | 9364464 |
| 171 | 36900.37000.42500.42700.47100.119700.170400.585400 | Shuttering Work | 8d | 2026-02-19 | 2026-02-26 | 168 |  | Sector-44 Noida(2) | 9374074 |
| 172 | 36900.37000.42500.42700.47100.119700.170400.585500 | Reinforcement Work | 3d | 2026-02-24 | 2026-02-26 | 171FS-3d |  | Sector-44 Noida(2) | 9374084 |
| 173 | 36900.37000.42500.42700.47100.119700.170400.585600 | Conduiting work | 1d | 2026-02-26 | 2026-02-26 | 172FS-1d |  | Sector-44 Noida(2) | 9374094 |
| 174 | 36900.37000.42500.42700.47100.119700.170400.585700 | Concreteing work | 1d | 2026-02-27 | 2026-02-27 | 171FF, 172FF, 173 |  | Sector-44 Noida(2) | 9374104 |
| 175 | 36900.37000.42500.42700.47100.119600 | **12th Floor Slab** | 9d | 2026-02-28 | 2026-03-08 |  | start no earlier than 2026-02-28 | Sector-44 Noida(2) | 9362804 |
| 176 | 36900.37000.42500.42700.47100.119600.170500 | **12th Floor Slab** | 9d | 2026-02-28 | 2026-03-08 |  | start no earlier than 2026-02-28 | Sector-44 Noida(2) | 9364474 |
| 177 | 36900.37000.42500.42700.47100.119600.170500.585800 | Shuttering Work | 8d | 2026-02-28 | 2026-03-07 | 174 |  | Sector-44 Noida(2) | 9374114 |
| 178 | 36900.37000.42500.42700.47100.119600.170500.585900 | Reinforcement Work | 3d | 2026-03-05 | 2026-03-07 | 177FS-3d |  | Sector-44 Noida(2) | 9374124 |
| 179 | 36900.37000.42500.42700.47100.119600.170500.586000 | Conduiting work | 1d | 2026-03-07 | 2026-03-07 | 178FS-1d |  | Sector-44 Noida(2) | 9374134 |
| 180 | 36900.37000.42500.42700.47100.119600.170500.586100 | Concreteing work | 1d | 2026-03-08 | 2026-03-08 | 177FF, 178FF, 179 |  | Sector-44 Noida(2) | 9374144 |
| 181 | 36900.37000.42500.42700.47100.119500 | **13th Floor Slab** | 9d | 2026-03-09 | 2026-03-17 |  | start no earlier than 2026-03-09 | Sector-44 Noida(2) | 9362814 |
| 182 | 36900.37000.42500.42700.47100.119500.170600 | **13th Floor Slab** | 9d | 2026-03-09 | 2026-03-17 |  | start no earlier than 2026-03-09 | Sector-44 Noida(2) | 9364484 |
| 183 | 36900.37000.42500.42700.47100.119500.170600.586200 | Shuttering Work | 8d | 2026-03-09 | 2026-03-16 | 180 |  | Sector-44 Noida(2) | 9374154 |
| 184 | 36900.37000.42500.42700.47100.119500.170600.586300 | Reinforcement Work | 3d | 2026-03-14 | 2026-03-16 | 183FS-3d |  | Sector-44 Noida(2) | 9374164 |
| 185 | 36900.37000.42500.42700.47100.119500.170600.586400 | Conduiting work | 1d | 2026-03-16 | 2026-03-16 | 184FS-1d |  | Sector-44 Noida(2) | 9374174 |
| 186 | 36900.37000.42500.42700.47100.119500.170600.586500 | Concreteing work | 1d | 2026-03-17 | 2026-03-17 | 183FF, 184FF, 185 |  | Sector-44 Noida(2) | 9374184 |
| 187 | 36900.37000.42500.42700.47100.119400 | **14th Floor Slab** | 9d | 2026-03-18 | 2026-03-26 |  | start no earlier than 2026-03-18 | Sector-44 Noida(2) | 9362824 |
| 188 | 36900.37000.42500.42700.47100.119400.170700 | **14th Floor Slab** | 9d | 2026-03-18 | 2026-03-26 |  | start no earlier than 2026-03-18 | Sector-44 Noida(2) | 9364494 |
| 189 | 36900.37000.42500.42700.47100.119400.170700.586600 | Shuttering Work | 8d | 2026-03-18 | 2026-03-25 | 186 |  | Sector-44 Noida(2) | 9374194 |
| 190 | 36900.37000.42500.42700.47100.119400.170700.586700 | Reinforcement Work | 3d | 2026-03-23 | 2026-03-25 | 189FS-3d |  | Sector-44 Noida(2) | 9374204 |
| 191 | 36900.37000.42500.42700.47100.119400.170700.586800 | Conduiting work | 1d | 2026-03-25 | 2026-03-25 | 190FS-1d |  | Sector-44 Noida(2) | 9374214 |
| 192 | 36900.37000.42500.42700.47100.119400.170700.586900 | Concreteing work | 1d | 2026-03-26 | 2026-03-26 | 189FF, 190FF, 191 |  | Sector-44 Noida(2) | 9374224 |

| ID | WBS | Task | Duration | Start | Finish | Predecessors | Constraint | Calendar | Unique_Task_ID |
| --- | --- | --- | --- | --- | --- | --- | --- | --- | --- |
| 193 | 36900.37000.42500.42700.47100.119300 | **15th Floor Slab** | 9d | 2026-03-27 | 2026-04-04 |  | start no earlier than 2026-03-27 | Sector-44 Noida(2) | 9362834 |
| 194 | 36900.37000.42500.42700.47100.119300.170800 | **15th Floor Slab** | 9d | 2026-03-27 | 2026-04-04 |  | start no earlier than 2026-03-27 | Sector-44 Noida(2) | 9364504 |
| 195 | 36900.37000.42500.42700.47100.119300.170800.587000 | Shuttering Work | 8d | 2026-03-27 | 2026-04-03 | 192 |  | Sector-44 Noida(2) | 9374234 |
| 196 | 36900.37000.42500.42700.47100.119300.170800.587100 | Reinforcement Work | 3d | 2026-04-01 | 2026-04-03 | 195FS-3d |  | Sector-44 Noida(2) | 9374244 |
| 197 | 36900.37000.42500.42700.47100.119300.170800.587200 | Conduiting work | 1d | 2026-04-03 | 2026-04-03 | 196FS-1d |  | Sector-44 Noida(2) | 9374254 |
| 198 | 36900.37000.42500.42700.47100.119300.170800.587300 | Concreteing work | 1d | 2026-04-04 | 2026-04-04 | 195FF, 196FF, 197 |  | Sector-44 Noida(2) | 9374264 |
| 199 | 36900.37000.42500.42700.47100.119200 | **16th Floor Slab** | 9d | 2026-04-05 | 2026-04-13 |  | start no earlier than 2026-04-05 | Sector-44 Noida(2) | 9362844 |
| 200 | 36900.37000.42500.42700.47100.119200.170900 | **16th Floor Slab** | 9d | 2026-04-05 | 2026-04-13 |  | start no earlier than 2026-04-05 | Sector-44 Noida(2) | 9364514 |
| 201 | 36900.37000.42500.42700.47100.119200.170900.587400 | Shuttering Work | 8d | 2026-04-05 | 2026-04-12 | 198 |  | Sector-44 Noida(2) | 9374274 |
| 202 | 36900.37000.42500.42700.47100.119200.170900.587500 | Reinforcement Work | 3d | 2026-04-10 | 2026-04-12 | 201FS-3d |  | Sector-44 Noida(2) | 9374284 |
| 203 | 36900.37000.42500.42700.47100.119200.170900.587600 | Conduiting work | 1d | 2026-04-12 | 2026-04-12 | 202FS-1d |  | Sector-44 Noida(2) | 9374294 |
| 204 | 36900.37000.42500.42700.47100.119200.170900.587700 | Concreteing work | 1d | 2026-04-13 | 2026-04-13 | 201FF, 202FF, 203 |  | Sector-44 Noida(2) | 9374304 |
| 205 | 36900.37000.42500.42700.47100.121800 | **17th Floor Slab** | 9d | 2026-04-14 | 2026-04-22 |  | start no earlier than 2026-04-14 | Sector-44 Noida(2) | 9362854 |
| 206 | 36900.37000.42500.42700.47100.121800.171000 | **17th Floor Slab** | 9d | 2026-04-14 | 2026-04-22 |  | start no earlier than 2026-04-14 | Sector-44 Noida(2) | 9364524 |
| 207 | 36900.37000.42500.42700.47100.121800.171000.587800 | Shuttering Work | 8d | 2026-04-14 | 2026-04-21 | 204 |  | Sector-44 Noida(2) | 9374314 |
| 208 | 36900.37000.42500.42700.47100.121800.171000.587900 | Reinforcement Work | 3d | 2026-04-19 | 2026-04-21 | 207FS-3d |  | Sector-44 Noida(2) | 9374324 |
| 209 | 36900.37000.42500.42700.47100.121800.171000.588000 | Conduiting work | 1d | 2026-04-21 | 2026-04-21 | 208FS-1d |  | Sector-44 Noida(2) | 9374334 |
| 210 | 36900.37000.42500.42700.47100.121800.171000.588100 | Concreteing work | 1d | 2026-04-22 | 2026-04-22 | 207FF, 208FF, 209 |  | Sector-44 Noida(2) | 9374344 |
| 211 | 36900.37000.42500.42700.47100.121700 | **18th Floor Slab** | 9d | 2026-04-23 | 2026-05-01 |  | start no earlier than 2026-04-23 | Sector-44 Noida(2) | 9362864 |
| 212 | 36900.37000.42500.42700.47100.121700.171100 | **18th Floor Slab** | 9d | 2026-04-23 | 2026-05-01 |  | start no earlier than 2026-04-23 | Sector-44 Noida(2) | 9364534 |
| 213 | 36900.37000.42500.42700.47100.121700.171100.588200 | Shuttering Work | 8d | 2026-04-23 | 2026-04-30 | 210 |  | Sector-44 Noida(2) | 9374354 |
| 214 | 36900.37000.42500.42700.47100.121700.171100.588300 | Reinforcement Work | 3d | 2026-04-28 | 2026-04-30 | 213FS-3d |  | Sector-44 Noida(2) | 9374364 |
| 215 | 36900.37000.42500.42700.47100.121700.171100.588400 | Conduiting work | 1d | 2026-04-30 | 2026-04-30 | 214FS-1d |  | Sector-44 Noida(2) | 9374374 |
| 216 | 36900.37000.42500.42700.47100.121700.171100.588500 | Concreteing work | 1d | 2026-05-01 | 2026-05-01 | 213FF, 214FF, 215 |  | Sector-44 Noida(2) | 9374384 |

| ID | WBS | Task | Duration | Start | Finish | Predecessors | Constraint | Calendar | Unique_Task_ID |
| --- | --- | --- | --- | --- | --- | --- | --- | --- | --- |
| 217 | 36900.37000.42500.42700.47100.121600 | **19th Floor Slab** | 8d | 2026-05-02 | 2026-05-09 |  | start no earlier than 2026-05-02 | Sector-44 Noida(2) | 9362874 |
| 218 | 36900.37000.42500.42700.47100.121600.171200 | **19th Floor Slab** | 8d | 2026-05-02 | 2026-05-09 |  | start no earlier than 2026-05-02 | Sector-44 Noida(2) | 9364544 |
| 219 | 36900.37000.42500.42700.47100.121600.171200.588600 | Shuttering Work | 7d | 2026-05-02 | 2026-05-08 | 216 |  | Sector-44 Noida(2) | 9374394 |
| 220 | 36900.37000.42500.42700.47100.121600.171200.588700 | Reinforcement Work | 3d | 2026-05-06 | 2026-05-08 | 219FS-3d |  | Sector-44 Noida(2) | 9374404 |
| 221 | 36900.37000.42500.42700.47100.121600.171200.588800 | Conduiting work | 1d | 2026-05-08 | 2026-05-08 | 220FS-1d |  | Sector-44 Noida(2) | 9374414 |
| 222 | 36900.37000.42500.42700.47100.121600.171200.588900 | Concreteing work | 1d | 2026-05-09 | 2026-05-09 | 219FF, 220FF, 221 |  | Sector-44 Noida(2) | 9374424 |
| 223 | 36900.37000.42500.42700.47100.121500 | **20th Floor Slab** | 8d | 2026-05-10 | 2026-05-17 |  | start no earlier than 2026-05-10 | Sector-44 Noida(2) | 9362884 |
| 224 | 36900.37000.42500.42700.47100.121500.171300 | **20th Floor Slab** | 8d | 2026-05-10 | 2026-05-17 |  | start no earlier than 2026-05-10 | Sector-44 Noida(2) | 9364554 |
| 225 | 36900.37000.42500.42700.47100.121500.171300.589000 | Shuttering Work | 7d | 2026-05-10 | 2026-05-16 | 222 |  | Sector-44 Noida(2) | 9374434 |
| 226 | 36900.37000.42500.42700.47100.121500.171300.589100 | Reinforcement Work | 3d | 2026-05-14 | 2026-05-16 | 225FS-3d |  | Sector-44 Noida(2) | 9374444 |
| 227 | 36900.37000.42500.42700.47100.121500.171300.589200 | Conduiting work | 1d | 2026-05-16 | 2026-05-16 | 226FS-1d |  | Sector-44 Noida(2) | 9374454 |
| 228 | 36900.37000.42500.42700.47100.121500.171300.589300 | Concreteing work | 1d | 2026-05-17 | 2026-05-17 | 225FF, 226FF, 227 |  | Sector-44 Noida(2) | 9374464 |
| 229 | 36900.37000.42500.42700.47100.121400 | **21st Floor Slab** | 8d | 2026-05-18 | 2026-05-25 |  | start no earlier than 2026-05-18 | Sector-44 Noida(2) | 9362894 |
| 230 | 36900.37000.42500.42700.47100.121400.171400 | **21st Floor Slab** | 8d | 2026-05-18 | 2026-05-25 |  | start no earlier than 2026-05-18 | Sector-44 Noida(2) | 9364564 |
| 231 | 36900.37000.42500.42700.47100.121400.171400.589400 | Shuttering Work | 7d | 2026-05-18 | 2026-05-24 | 228 |  | Sector-44 Noida(2) | 9374474 |
| 232 | 36900.37000.42500.42700.47100.121400.171400.589500 | Reinforcement Work | 3d | 2026-05-22 | 2026-05-24 | 231FS-3d |  | Sector-44 Noida(2) | 9374484 |
| 233 | 36900.37000.42500.42700.47100.121400.171400.589600 | Conduiting work | 1d | 2026-05-24 | 2026-05-24 | 232FS-1d |  | Sector-44 Noida(2) | 9374494 |
| 234 | 36900.37000.42500.42700.47100.121400.171400.589700 | Concreteing work | 1d | 2026-05-25 | 2026-05-25 | 231FF, 232FF, 233 |  | Sector-44 Noida(2) | 9374504 |
| 235 | 36900.37000.42500.42700.47100.121300 | **22nd Floor Slab** | 8d | 2026-05-26 | 2026-06-02 |  | start no earlier than 2026-05-26 | Sector-44 Noida(2) | 9362904 |
| 236 | 36900.37000.42500.42700.47100.121300.171500 | **22nd Floor Slab** | 8d | 2026-05-26 | 2026-06-02 |  | start no earlier than 2026-05-26 | Sector-44 Noida(2) | 9364574 |
| 237 | 36900.37000.42500.42700.47100.121300.171500.589800 | Shuttering Work | 7d | 2026-05-26 | 2026-06-01 | 234 |  | Sector-44 Noida(2) | 9374514 |
| 238 | 36900.37000.42500.42700.47100.121300.171500.589900 | Reinforcement Work | 3d | 2026-05-30 | 2026-06-01 | 237FS-3d |  | Sector-44 Noida(2) | 9374524 |
| 239 | 36900.37000.42500.42700.47100.121300.171500.590000 | Conduiting work | 1d | 2026-06-01 | 2026-06-01 | 238FS-1d |  | Sector-44 Noida(2) | 9374534 |
| 240 | 36900.37000.42500.42700.47100.121300.171500.590100 | Concreteing work | 1d | 2026-06-02 | 2026-06-02 | 237FF, 238FF, 239 |  | Sector-44 Noida(2) | 9374544 |

| ID | WBS | Task | Duration | Start | Finish | Predecessors | Constraint | Calendar | Unique_Task_ID |
| --- | --- | --- | --- | --- | --- | --- | --- | --- | --- |
| 241 | 36900.37000.42500.42700.47100.121200 | **23rd Floor Slab** | 8d | 2026-06-03 | 2026-06-10 |  | start no earlier than 2026-06-03 | Sector-44 Noida(2) | 9362914 |
| 242 | 36900.37000.42500.42700.47100.121200.171600 | **23rd Floor Slab** | 8d | 2026-06-03 | 2026-06-10 |  | start no earlier than 2026-06-03 | Sector-44 Noida(2) | 9364584 |
| 243 | 36900.37000.42500.42700.47100.121200.171600.590200 | Shuttering Work | 7d | 2026-06-03 | 2026-06-09 | 240 |  | Sector-44 Noida(2) | 9374554 |
| 244 | 36900.37000.42500.42700.47100.121200.171600.590300 | Reinforcement Work | 3d | 2026-06-07 | 2026-06-09 | 243FS-3d |  | Sector-44 Noida(2) | 9374564 |
| 245 | 36900.37000.42500.42700.47100.121200.171600.590400 | Conduiting work | 1d | 2026-06-09 | 2026-06-09 | 244FS-1d |  | Sector-44 Noida(2) | 9374574 |
| 246 | 36900.37000.42500.42700.47100.121200.171600.590500 | Concreteing work | 1d | 2026-06-10 | 2026-06-10 | 243FF, 244FF, 245 |  | Sector-44 Noida(2) | 9374584 |
| 247 | 36900.37000.42500.42700.47100.121100 | **Terrace Slab** | 12d | 2026-06-11 | 2026-06-22 |  | start no earlier than 2026-06-11 | Sector-44 Noida(2) | 9362924 |
| 248 | 36900.37000.42500.42700.47100.121100.171700 | **Terrace Slab** | 12d | 2026-06-11 | 2026-06-22 |  | start no earlier than 2026-06-11 | Sector-44 Noida(2) | 9364594 |
| 249 | 36900.37000.42500.42700.47100.121100.171700.590600 | Shuttering Work | 10d | 2026-06-11 | 2026-06-20 | 246 |  | Sector-44 Noida(2) | 9374594 |
| 250 | 36900.37000.42500.42700.47100.121100.171700.590700 | Reinforcement Work | 5d | 2026-06-17 | 2026-06-21 | 249FS-4d |  | Sector-44 Noida(2) | 9374604 |
| 251 | 36900.37000.42500.42700.47100.121100.171700.590800 | Conduiting work | 1d | 2026-06-21 | 2026-06-21 | 250FS-1d |  | Sector-44 Noida(2) | 9374614 |
| 252 | 36900.37000.42500.42700.47100.121100.171700.590900 | Concreteing work | 1d | 2026-06-22 | 2026-06-22 | 249FF, 250FF, 251 |  | Sector-44 Noida(2) | 9374624 |
| 253 | 36900.37000.42500.42700.47100.121000 | **Terrace to LMR Floor** | 8d | 2026-06-23 | 2026-06-30 |  | start no earlier than 2026-06-23 | Sector-44 Noida(2) | 9362934 |
| 254 | 36900.37000.42500.42700.47100.121000.171800 | **LMR Floor Slab** | 8d | 2026-06-23 | 2026-06-30 |  | start no earlier than 2026-06-23 | Sector-44 Noida(2) | 9364604 |
| 255 | 36900.37000.42500.42700.47100.121000.171800.591000 | Shuttering Work | 6d | 2026-06-23 | 2026-06-28 | 252 |  | Sector-44 Noida(2) | 9374634 |
| 256 | 36900.37000.42500.42700.47100.121000.171800.591100 | Reinforcement Work | 3d | 2026-06-27 | 2026-06-29 | 255FS-2d |  | Sector-44 Noida(2) | 9374644 |
| 257 | 36900.37000.42500.42700.47100.121000.171800.591200 | Conduiting work | 1d | 2026-06-29 | 2026-06-29 | 256FS-1d |  | Sector-44 Noida(2) | 9374654 |
| 258 | 36900.37000.42500.42700.47100.121000.171800.591300 | Concreteing work | 1d | 2026-06-30 | 2026-06-30 | 255FF, 256FF, 257 |  | Sector-44 Noida(2) | 9374664 |
| 259 | 36900.37000.42500.42700.47100.120900 | **LMR Floor to LMR Roof** | 8d | 2026-07-01 | 2026-07-08 |  | start no earlier than 2026-07-01 | Sector-44 Noida(2) | 9362944 |
| 260 | 36900.37000.42500.42700.47100.120900.171900 | **LMR Roof Slab** | 8d | 2026-07-01 | 2026-07-08 |  | start no earlier than 2026-07-01 | Sector-44 Noida(2) | 9364614 |
| 261 | 36900.37000.42500.42700.47100.120900.171900.591400 | Shuttering Work | 6d | 2026-07-01 | 2026-07-06 | 258 |  | Sector-44 Noida(2) | 9374674 |
| 262 | 36900.37000.42500.42700.47100.120900.171900.591500 | Reinforcement Work | 3d | 2026-07-05 | 2026-07-07 | 261FS-2d |  | Sector-44 Noida(2) | 9374684 |
| 263 | 36900.37000.42500.42700.47100.120900.171900.591600 | Conduiting work | 1d | 2026-07-07 | 2026-07-07 | 262FS-1d |  | Sector-44 Noida(2) | 9374694 |
| 264 | 36900.37000.42500.42700.47100.120900.171900.591700 | Concreteing work | 1d | 2026-07-08 | 2026-07-08 | 261FF, 262FF, 263 |  | Sector-44 Noida(2) | 9374704 |

| ID | WBS | Task | Duration | Start | Finish | Predecessors | Constraint | Calendar | Unique_Task_ID |
| --- | --- | --- | --- | --- | --- | --- | --- | --- | --- |
| 265 | 36900.37000.42500.42700.47100.125000 | **OHT & Roof Features** | 19d | 2026-07-09 | 2026-07-27 |  | start no earlier than 2026-07-09 | Sector-44 Noida(2) | 9364194 |
| 266 | 36900.37000.42500.42700.47100.125000.182500 | **OHT & Roof Features** | 19d | 2026-07-09 | 2026-07-27 |  | start no earlier than 2026-07-09 | Sector-44 Noida(2) | 9365784 |
| 267 | 36900.37000.42500.42700.47100.125000.182500.591800 | Reinforcement Work | 12d | 2026-07-09 | 2026-07-20 | 264 |  | Sector-44 Noida(2) | 9374714 |
| 268 | 36900.37000.42500.42700.47100.125000.182500.591900 | Shuttering work | 9d | 2026-07-19 | 2026-07-27 | 267FS-2d |  | Sector-44 Noida(2) | 9374724 |
| 269 | 36900.37000.42500.42700.47100.125000.182500.592000 | Concreteing work | 7d | 2026-07-21 | 2026-07-27 | 267FF, 268FF |  | Sector-44 Noida(2) | 9374734 |
| 270 | 36900.37000.42500.42700.47500 | **Post Pour Works** | 223d | 2025-12-18 | 2026-07-28 |  | start no earlier than 2025-12-18 | Sector-44 Noida(2) | 9360864 |
| 271 | 36900.37000.42500.42700.47500.238100 | 1st Floor | 8d | 2025-12-18 | 2025-12-25 | 126 |  | Sector-44 Noida(2) | 9366624 |
| 272 | 36900.37000.42500.42700.47500.238200 | 2nd Floor | 8d | 2025-12-27 | 2026-01-03 | 271, 132 |  | Sector-44 Noida(2) | 9366634 |
| 273 | 36900.37000.42500.42700.47500.238300 | 3rd Floor | 8d | 2026-01-05 | 2026-01-12 | 272, 138 |  | Sector-44 Noida(2) | 9366644 |
| 274 | 36900.37000.42500.42700.47500.238400 | 4th Floor | 8d | 2026-01-14 | 2026-01-21 | 273, 144 |  | Sector-44 Noida(2) | 9366654 |
| 275 | 36900.37000.42500.42700.47500.238500 | 5th Floor | 8d | 2026-01-23 | 2026-01-30 | 274, 150 |  | Sector-44 Noida(2) | 9366664 |
| 276 | 36900.37000.42500.42700.47500.238600 | 6th Floor | 8d | 2026-02-01 | 2026-02-08 | 275, 156 |  | Sector-44 Noida(2) | 9366674 |
| 277 | 36900.37000.42500.42700.47500.238700 | 7th Floor | 8d | 2026-02-09 | 2026-02-16 | 276 |  | Sector-44 Noida(2) | 9366684 |
| 278 | 36900.37000.42500.42700.47500.238800 | 8th Floor | 8d | 2026-02-28 | 2026-03-07 | 277, 174 |  | Sector-44 Noida(2) | 9366694 |
| 279 | 36900.37000.42500.42700.47500.238900 | 9th Floor | 8d | 2026-03-09 | 2026-03-16 | 278, 180 |  | Sector-44 Noida(2) | 9366704 |
| 280 | 36900.37000.42500.42700.47500.239000 | 10th Floor | 8d | 2026-03-18 | 2026-03-25 | 279, 186 |  | Sector-44 Noida(2) | 9366714 |
| 281 | 36900.37000.42500.42700.47500.239100 | 11th Floor | 8d | 2026-03-27 | 2026-04-03 | 280, 192 |  | Sector-44 Noida(2) | 9366724 |
| 282 | 36900.37000.42500.42700.47500.239200 | 12th Floor | 8d | 2026-04-05 | 2026-04-12 | 281, 198 |  | Sector-44 Noida(2) | 9366734 |
| 283 | 36900.37000.42500.42700.47500.239300 | 13th Floor | 8d | 2026-04-14 | 2026-04-21 | 282, 204 |  | Sector-44 Noida(2) | 9366744 |
| 284 | 36900.37000.42500.42700.47500.239400 | 14th Floor | 8d | 2026-04-23 | 2026-04-30 | 283, 210 |  | Sector-44 Noida(2) | 9366754 |
| 285 | 36900.37000.42500.42700.47500.239500 | 15th Floor | 8d | 2026-05-02 | 2026-05-09 | 284, 216 |  | Sector-44 Noida(2) | 9366764 |
| 286 | 36900.37000.42500.42700.47500.239600 | 16th Floor | 8d | 2026-05-10 | 2026-05-17 | 285, 222 |  | Sector-44 Noida(2) | 9366774 |
| 287 | 36900.37000.42500.42700.47500.239700 | 17th Floor | 8d | 2026-05-18 | 2026-05-25 | 286, 228 |  | Sector-44 Noida(2) | 9366784 |
| 288 | 36900.37000.42500.42700.47500.239800 | 18th Floor | 8d | 2026-05-26 | 2026-06-02 | 287, 234 |  | Sector-44 Noida(2) | 9366794 |
| 289 | 36900.37000.42500.42700.47500.239900 | 19th Floor | 8d | 2026-06-03 | 2026-06-10 | 288, 240 |  | Sector-44 Noida(2) | 9366804 |
| 290 | 36900.37000.42500.42700.47500.240000 | 20th Floor | 7d | 2026-06-11 | 2026-06-17 | 289, 246 |  | Sector-44 Noida(2) | 9366814 |
| 291 | 36900.37000.42500.42700.47500.240100 | 21st Floor | 7d | 2026-06-18 | 2026-06-24 | 290 |  | Sector-44 Noida(2) | 9366824 |
| 292 | 36900.37000.42500.42700.47500.240200 | 22nd Floor | 7d | 2026-06-25 | 2026-07-01 | 291 |  | Sector-44 Noida(2) | 9366834 |
| 293 | 36900.37000.42500.42700.47500.240300 | 23rd Floor | 7d | 2026-07-02 | 2026-07-08 | 292 |  | Sector-44 Noida(2) | 9366844 |
| 294 | 36900.37000.42500.42700.47500.240400 | Terrace Floor | 10d | 2026-07-09 | 2026-07-18 | 293 |  | Sector-44 Noida(2) | 9366854 |
| 295 | 36900.37000.42500.42700.47500.240500 | LMR, OHT & Roof Feauters | 10d | 2026-07-19 | 2026-07-28 | 294 |  | Sector-44 Noida(2) | 9366864 |

| ID | WBS | Task | Duration | Start | Finish | Predecessors | Constraint | Calendar | Unique_Task_ID |
| --- | --- | --- | --- | --- | --- | --- | --- | --- | --- |
| 296 | 36900.37000.42500.42700.43000 | **Finishing works** | 369d | 2025-12-26 | 2027-02-12 |  | start no earlier than 2025-12-26 | Sector-44 Noida(2) | 9360744 |
| 297 | 36900.37000.42500.42700.43000.44400 | **Flat finishings** | 343d | 2025-12-26 | 2027-01-17 |  | start no earlier than 2025-12-26 | Sector-44 Noida(2) | 9360794 |
| 298 | 36900.37000.42500.42700.43000.44400.48500 | **1st Floor** | 54d | 2025-12-26 | 2026-02-17 |  | start no earlier than 2025-12-26 | Sector-44 Noida(2) | 9361164 |
| 299 | 36900.37000.42500.42700.43000.44400.48500.592100 | Block Work | 10d | 2025-12-26 | 2026-01-04 | 271 |  | Sector-44 Noida(2) | 9374744 |
| 300 | 36900.37000.42500.42700.43000.44400.48500.592200 | Installation of temporary Main door | 3d | 2026-01-05 | 2026-01-07 | 299 |  | Sector-44 Noida(2) | 9374754 |
| 301 | 36900.37000.42500.42700.43000.44400.48500.592300 | Fire sprinkler pipe fixing | 3d | 2026-01-05 | 2026-01-07 | 299 |  | Sector-44 Noida(2) | 9374764 |
| 302 | 36900.37000.42500.42700.43000.44400.48500.592400 | Internal Plumbing Works | 7d | 2026-01-05 | 2026-01-11 | 299 |  | Sector-44 Noida(2) | 9374774 |
| 303 | 36900.37000.42500.42700.43000.44400.48500.592500 | Waterproofing | 8d | 2026-01-10 | 2026-01-17 | 302SS+5d |  | Sector-44 Noida(2) | 9374784 |
| 304 | 36900.37000.42500.42700.43000.44400.48500.592600 | Internal Plaster | 10d | 2025-12-31 | 2026-01-09 | 299SS+5d |  | Sector-44 Noida(2) | 9374794 |
| 305 | 36900.37000.42500.42700.43000.44400.48500.592700 | IPS flooring work | 11d | 2026-01-05 | 2026-01-15 | 299 |  | Sector-44 Noida(2) | 9374804 |
| 306 | 36900.37000.42500.42700.43000.44400.48500.592800 | Toilet dado work | 10d | 2026-01-18 | 2026-01-27 | 302, 303, 304 |  | Sector-44 Noida(2) | 9374814 |
| 307 | 36900.37000.42500.42700.43000.44400.48500.592900 | Toilet flooring work | 10d | 2026-01-23 | 2026-02-01 | 306SS+5d |  | Sector-44 Noida(2) | 9374824 |
| 308 | 36900.37000.42500.42700.43000.44400.48500.593000 | Living dinning flooring | 16d | 2026-02-02 | 2026-02-17 | 305, 307 |  | Sector-44 Noida(2) | 9374834 |
| 309 | 36900.37000.42500.42700.43000.44400.48500.593100 | Electrical wiring work | 10d | 2026-02-08 | 2026-02-17 | 308FS-10d |  | Sector-44 Noida(2) | 9374844 |
| 310 | 36900.37000.42500.42700.43000.44400.48500.593200 | Aluminium door-window fixing | 5d | 2026-01-08 | 2026-01-12 | 300 |  | Sector-44 Noida(2) | 9374854 |
| 311 | 36900.37000.42500.42700.43000.44400.48500.593300 | Putty primer coat | 8d | 2026-01-05 | 2026-01-12 | 310FS-8d |  | Sector-44 Noida(2) | 9374864 |
| 312 | 36900.37000.42500.42700.43000.44400.48500.593400 | Prehung door fixing | 7d | 2026-01-08 | 2026-01-14 | 311FS-5d |  | Sector-44 Noida(2) | 9374874 |
| 313 | 36900.37000.42500.42700.43000.44400.48500.593500 | Painting 1st coat | 10d | 2026-01-15 | 2026-01-24 | 312 |  | Sector-44 Noida(2) | 9374884 |
| 314 | 36900.37000.42500.42700.43000.44400.48500.593600 | False Ceiling panel fixing | 8d | 2026-01-25 | 2026-02-01 | 313 |  | Sector-44 Noida(2) | 9374894 |
| 315 | 36900.37000.42500.42700.43000.44400.48600 | **2nd Floor** | 77d | 2026-01-04 | 2026-03-21 |  | start no earlier than 2026-01-04 | Sector-44 Noida(2) | 9361134 |
| 316 | 36900.37000.42500.42700.43000.44400.48600.593700 | Block Work | 10d | 2026-01-04 | 2026-01-13 | 272 |  | Sector-44 Noida(2) | 9374904 |
| 317 | 36900.37000.42500.42700.43000.44400.48600.593800 | Installation of temporary Main door | 7d | 2026-01-14 | 2026-01-20 | 316 |  | Sector-44 Noida(2) | 9374914 |
| 318 | 36900.37000.42500.42700.43000.44400.48600.593900 | Fire sprinkler pipe fixing | 3d | 2026-01-14 | 2026-01-16 | 301, 316 |  | Sector-44 Noida(2) | 9374924 |
| 319 | 36900.37000.42500.42700.43000.44400.48600.594000 | Internal Plumbing Works | 7d | 2026-01-14 | 2026-01-20 | 316 |  | Sector-44 Noida(2) | 9374934 |
| 320 | 36900.37000.42500.42700.43000.44400.48600.594100 | Waterproofing | 12d | 2026-01-21 | 2026-02-01 | 319 |  | Sector-44 Noida(2) | 9374944 |
| 321 | 36900.37000.42500.42700.43000.44400.48600.594200 | Internal Plaster | 10d | 2026-01-09 | 2026-01-18 | 316SS+5d |  | Sector-44 Noida(2) | 9374954 |
| 322 | 36900.37000.42500.42700.43000.44400.48600.594300 | IPS flooring work | 11d | 2026-01-14 | 2026-01-24 | 316 |  | Sector-44 Noida(2) | 9374964 |
| 323 | 36900.37000.42500.42700.43000.44400.48600.594400 | Toilet dado work | 16d | 2026-02-02 | 2026-02-17 | 319, 320, 321 |  | Sector-44 Noida(2) | 9374974 |
| 324 | 36900.37000.42500.42700.43000.44400.48600.594500 | Toilet flooring work | 16d | 2026-02-18 | 2026-03-05 | 323 |  | Sector-44 Noida(2) | 9374984 |
| 325 | 36900.37000.42500.42700.43000.44400.48600.594600 | Living dinning flooring | 16d | 2026-03-06 | 2026-03-21 | 322, 324 |  | Sector-44 Noida(2) | 9374994 |
| 326 | 36900.37000.42500.42700.43000.44400.48600.594700 | Electrical wiring work | 10d | 2026-03-12 | 2026-03-21 | 325FS-10d |  | Sector-44 Noida(2) | 9375004 |
| 327 | 36900.37000.42500.42700.43000.44400.48600.594800 | Aluminium door-window fixing | 5d | 2026-01-13 | 2026-01-17 | 311 |  | Sector-44 Noida(2) | 9375014 |
| 328 | 36900.37000.42500.42700.43000.44400.48600.594900 | Putty primer coat | 8d | 2026-01-10 | 2026-01-17 | 327FS-8d |  | Sector-44 Noida(2) | 9375024 |
| 329 | 36900.37000.42500.42700.43000.44400.48600.595000 | Prehung door fixing | 7d | 2026-01-13 | 2026-01-19 | 328FS-5d |  | Sector-44 Noida(2) | 9375034 |
| 330 | 36900.37000.42500.42700.43000.44400.48600.595100 | Painting 1st coat | 10d | 2026-01-20 | 2026-01-29 | 329 |  | Sector-44 Noida(2) | 9375044 |
| 331 | 36900.37000.42500.42700.43000.44400.48600.595200 | False Ceiling panel fixing | 8d | 2026-02-02 | 2026-02-09 | 314, 330 |  | Sector-44 Noida(2) | 9375054 |

| ID | WBS | Task | Duration | Start | Finish | Predecessors | Constraint | Calendar | Unique_Task_ID |
| --- | --- | --- | --- | --- | --- | --- | --- | --- | --- |
| 332 | 36900.37000.42500.42700.43000.44400.48700 | **3rd Floor** | 77d | 2026-01-13 | 2026-03-30 |  | start no earlier than 2026-01-13 | Sector-44 Noida(2) | 9361124 |
| 333 | 36900.37000.42500.42700.43000.44400.48700.595300 | Block Work | 10d | 2026-01-13 | 2026-01-22 | 273 |  | Sector-44 Noida(2) | 9375064 |
| 334 | 36900.37000.42500.42700.43000.44400.48700.595400 | Installation of temporary Main door | 7d | 2026-01-23 | 2026-01-29 | 333 |  | Sector-44 Noida(2) | 9375074 |
| 335 | 36900.37000.42500.42700.43000.44400.48700.595500 | Fire sprinkler pipe fixing | 3d | 2026-01-23 | 2026-01-25 | 318, 333 |  | Sector-44 Noida(2) | 9375084 |
| 336 | 36900.37000.42500.42700.43000.44400.48700.595600 | Internal Plumbing Works | 7d | 2026-01-23 | 2026-01-29 | 333 |  | Sector-44 Noida(2) | 9375094 |
| 337 | 36900.37000.42500.42700.43000.44400.48700.595700 | Waterproofing | 12d | 2026-01-30 | 2026-02-10 | 336 |  | Sector-44 Noida(2) | 9375104 |
| 338 | 36900.37000.42500.42700.43000.44400.48700.595800 | Internal Plaster | 10d | 2026-01-18 | 2026-01-27 | 333SS+5d |  | Sector-44 Noida(2) | 9375114 |
| 339 | 36900.37000.42500.42700.43000.44400.48700.595900 | IPS flooring work | 11d | 2026-01-23 | 2026-02-02 | 333 |  | Sector-44 Noida(2) | 9375124 |
| 340 | 36900.37000.42500.42700.43000.44400.48700.596000 | Toilet dado work | 16d | 2026-02-11 | 2026-02-26 | 336, 337, 338 |  | Sector-44 Noida(2) | 9375134 |
| 341 | 36900.37000.42500.42700.43000.44400.48700.596100 | Toilet flooring work | 16d | 2026-02-27 | 2026-03-14 | 340 |  | Sector-44 Noida(2) | 9375144 |
| 342 | 36900.37000.42500.42700.43000.44400.48700.596200 | Living dinning flooring | 16d | 2026-03-15 | 2026-03-30 | 339, 341 |  | Sector-44 Noida(2) | 9375154 |
| 343 | 36900.37000.42500.42700.43000.44400.48700.596300 | Electrical wiring work | 10d | 2026-03-21 | 2026-03-30 | 342FS-10d |  | Sector-44 Noida(2) | 9375164 |
| 344 | 36900.37000.42500.42700.43000.44400.48700.596400 | Aluminium door-window fixing | 7d | 2026-01-18 | 2026-01-24 | 327 |  | Sector-44 Noida(2) | 9375174 |
| 345 | 36900.37000.42500.42700.43000.44400.48700.596500 | Putty primer coat | 8d | 2026-01-17 | 2026-01-24 | 344FS-8d |  | Sector-44 Noida(2) | 9375184 |
| 346 | 36900.37000.42500.42700.43000.44400.48700.596600 | Prehung door fixing | 7d | 2026-01-20 | 2026-01-26 | 345FS-5d |  | Sector-44 Noida(2) | 9375194 |
| 347 | 36900.37000.42500.42700.43000.44400.48700.596700 | Painting 1st coat | 10d | 2026-01-27 | 2026-02-05 | 346 |  | Sector-44 Noida(2) | 9375204 |
| 348 | 36900.37000.42500.42700.43000.44400.48700.596800 | False Ceiling panel fixing | 8d | 2026-02-10 | 2026-02-17 | 331, 347 |  | Sector-44 Noida(2) | 9375214 |
| 349 | 36900.37000.42500.42700.43000.44400.48800 | **4th Floor** | 121d | 2026-01-22 | 2026-05-22 |  | start no earlier than 2026-01-22 | Sector-44 Noida(2) | 9361084 |
| 350 | 36900.37000.42500.42700.43000.44400.48800.596900 | Block Work | 10d | 2026-01-22 | 2026-01-31 | 274 |  | Sector-44 Noida(2) | 9375224 |
| 351 | 36900.37000.42500.42700.43000.44400.48800.597000 | Installation of temporary Main door | 7d | 2026-02-01 | 2026-02-07 | 350 |  | Sector-44 Noida(2) | 9375234 |
| 352 | 36900.37000.42500.42700.43000.44400.48800.597100 | Fire sprinkler pipe fixing | 3d | 2026-02-01 | 2026-02-03 | 335, 350 |  | Sector-44 Noida(2) | 9375244 |
| 353 | 36900.37000.42500.42700.43000.44400.48800.597200 | Internal Plumbing Works | 7d | 2026-02-01 | 2026-02-07 | 350 |  | Sector-44 Noida(2) | 9375254 |
| 354 | 36900.37000.42500.42700.43000.44400.48800.597300 | Waterproofing | 12d | 2026-02-08 | 2026-02-19 | 353 |  | Sector-44 Noida(2) | 9375264 |
| 355 | 36900.37000.42500.42700.43000.44400.48800.597400 | Internal Plaster | 15d | 2026-02-20 | 2026-03-06 | 353, 354 |  | Sector-44 Noida(2) | 9375274 |
| 356 | 36900.37000.42500.42700.43000.44400.48800.597500 | IPS flooring work | 11d | 2026-02-01 | 2026-02-11 | 350 |  | Sector-44 Noida(2) | 9375284 |
| 357 | 36900.37000.42500.42700.43000.44400.48800.597600 | Toilet dado work | 16d | 2026-03-07 | 2026-03-22 | 353, 354, 355 |  | Sector-44 Noida(2) | 9375294 |
| 358 | 36900.37000.42500.42700.43000.44400.48800.597700 | Toilet flooring work | 16d | 2026-03-23 | 2026-04-07 | 357 |  | Sector-44 Noida(2) | 9375304 |
| 359 | 36900.37000.42500.42700.43000.44400.48800.597800 | Living dinning flooring | 16d | 2026-04-08 | 2026-04-23 | 356, 358 |  | Sector-44 Noida(2) | 9375314 |
| 360 | 36900.37000.42500.42700.43000.44400.48800.597900 | Electrical wiring work | 10d | 2026-04-14 | 2026-04-23 | 359FS-10d |  | Sector-44 Noida(2) | 9375324 |
| 361 | 36900.37000.42500.42700.43000.44400.48800.598000 | Aluminium door-window fixing | 17d | 2026-04-16 | 2026-05-02 | 351, 360FS-8d |  | Sector-44 Noida(2) | 9375334 |
| 362 | 36900.37000.42500.42700.43000.44400.48800.598100 | Putty primer coat | 8d | 2026-04-25 | 2026-05-02 | 361FS-8d |  | Sector-44 Noida(2) | 9375344 |
| 363 | 36900.37000.42500.42700.43000.44400.48800.598200 | Prehung door fixing | 7d | 2026-04-28 | 2026-05-04 | 362FS-5d |  | Sector-44 Noida(2) | 9375354 |
| 364 | 36900.37000.42500.42700.43000.44400.48800.598300 | Painting 1st coat | 10d | 2026-05-05 | 2026-05-14 | 363 |  | Sector-44 Noida(2) | 9375364 |
| 365 | 36900.37000.42500.42700.43000.44400.48800.598400 | False Ceiling panel fixing | 8d | 2026-05-15 | 2026-05-22 | 348, 364 |  | Sector-44 Noida(2) | 9375374 |

| ID | WBS | Task | Duration | Start | Finish | Predecessors | Constraint | Calendar | Unique_Task_ID |
| --- | --- | --- | --- | --- | --- | --- | --- | --- | --- |
| 366 | 36900.37000.42500.42700.43000.44400.48900 | **5th Floor** | 121d | 2026-01-31 | 2026-05-31 |  | start no earlier than 2026-01-31 | Sector-44 Noida(2) | 9361074 |
| 367 | 36900.37000.42500.42700.43000.44400.48900.598500 | Block Work | 10d | 2026-01-31 | 2026-02-09 | 275 |  | Sector-44 Noida(2) | 9375384 |
| 368 | 36900.37000.42500.42700.43000.44400.48900.598600 | Installation of temporary Main door | 7d | 2026-02-10 | 2026-02-16 | 367 |  | Sector-44 Noida(2) | 9375394 |
| 369 | 36900.37000.42500.42700.43000.44400.48900.598700 | Fire sprinkler pipe fixing | 3d | 2026-02-10 | 2026-02-12 | 352, 367 |  | Sector-44 Noida(2) | 9375404 |
| 370 | 36900.37000.42500.42700.43000.44400.48900.598800 | Internal Plumbing Works | 7d | 2026-02-10 | 2026-02-16 | 367 |  | Sector-44 Noida(2) | 9375414 |
| 371 | 36900.37000.42500.42700.43000.44400.48900.598900 | Waterproofing | 12d | 2026-02-17 | 2026-02-28 | 370 |  | Sector-44 Noida(2) | 9375424 |
| 372 | 36900.37000.42500.42700.43000.44400.48900.599000 | Internal Plaster | 15d | 2026-03-01 | 2026-03-15 | 370, 371 |  | Sector-44 Noida(2) | 9375434 |
| 373 | 36900.37000.42500.42700.43000.44400.48900.599100 | IPS flooring work | 11d | 2026-02-10 | 2026-02-20 | 367 |  | Sector-44 Noida(2) | 9375444 |
| 374 | 36900.37000.42500.42700.43000.44400.48900.599200 | Toilet dado work | 16d | 2026-03-16 | 2026-03-31 | 370, 371, 372 |  | Sector-44 Noida(2) | 9375544 |
| 375 | 36900.37000.42500.42700.43000.44400.48900.599300 | Toilet flooring work | 16d | 2026-04-01 | 2026-04-16 | 374 |  | Sector-44 Noida(2) | 9375554 |
| 376 | 36900.37000.42500.42700.43000.44400.48900.599400 | Living dinning flooring | 16d | 2026-04-17 | 2026-05-02 | 373, 375 |  | Sector-44 Noida(2) | 9375564 |
| 377 | 36900.37000.42500.42700.43000.44400.48900.599500 | Electrical wiring work | 10d | 2026-04-23 | 2026-05-02 | 376FS-10d |  | Sector-44 Noida(2) | 9375574 |
| 378 | 36900.37000.42500.42700.43000.44400.48900.599600 | Aluminium door-window fixing | 17d | 2026-04-25 | 2026-05-11 | 368, 377FS-8d |  | Sector-44 Noida(2) | 9375584 |
| 379 | 36900.37000.42500.42700.43000.44400.48900.599700 | Putty primer coat | 8d | 2026-05-04 | 2026-05-11 | 378FS-8d |  | Sector-44 Noida(2) | 9375594 |
| 380 | 36900.37000.42500.42700.43000.44400.48900.599800 | Prehung door fixing | 7d | 2026-05-07 | 2026-05-13 | 379FS-5d |  | Sector-44 Noida(2) | 9375604 |
| 381 | 36900.37000.42500.42700.43000.44400.48900.599900 | Painting 1st coat | 10d | 2026-05-14 | 2026-05-23 | 380 |  | Sector-44 Noida(2) | 9375614 |
| 382 | 36900.37000.42500.42700.43000.44400.48900.600000 | False Ceiling panel fixing | 8d | 2026-05-24 | 2026-05-31 | 365, 381 |  | Sector-44 Noida(2) | 9375624 |
| 383 | 36900.37000.42500.42700.43000.44400.49000 | **6th Floor** | 121d | 2026-02-09 | 2026-06-09 |  | start no earlier than 2026-02-09 | Sector-44 Noida(2) | 9361064 |
| 384 | 36900.37000.42500.42700.43000.44400.49000.600100 | Block Work | 10d | 2026-02-09 | 2026-02-18 | 276 |  | Sector-44 Noida(2) | 9375634 |
| 385 | 36900.37000.42500.42700.43000.44400.49000.600200 | Installation of temporary Main door | 7d | 2026-02-19 | 2026-02-25 | 384 |  | Sector-44 Noida(2) | 9375644 |
| 386 | 36900.37000.42500.42700.43000.44400.49000.600300 | Fire sprinkler pipe fixing | 3d | 2026-02-19 | 2026-02-21 | 369, 384 |  | Sector-44 Noida(2) | 9375654 |
| 387 | 36900.37000.42500.42700.43000.44400.49000.600400 | Internal Plumbing Works | 7d | 2026-02-19 | 2026-02-25 | 384 |  | Sector-44 Noida(2) | 9375664 |
| 388 | 36900.37000.42500.42700.43000.44400.49000.600500 | Waterproofing | 12d | 2026-02-26 | 2026-03-09 | 387 |  | Sector-44 Noida(2) | 9375674 |
| 389 | 36900.37000.42500.42700.43000.44400.49000.600600 | Internal Plaster | 15d | 2026-03-10 | 2026-03-24 | 387, 388 |  | Sector-44 Noida(2) | 9375684 |
| 390 | 36900.37000.42500.42700.43000.44400.49000.600700 | IPS flooring work | 11d | 2026-02-19 | 2026-03-01 | 384 |  | Sector-44 Noida(2) | 9375694 |
| 391 | 36900.37000.42500.42700.43000.44400.49000.600800 | Toilet dado work | 16d | 2026-03-25 | 2026-04-09 | 387, 388, 389 |  | Sector-44 Noida(2) | 9375704 |
| 392 | 36900.37000.42500.42700.43000.44400.49000.600900 | Toilet flooring work | 16d | 2026-04-10 | 2026-04-25 | 391 |  | Sector-44 Noida(2) | 9375714 |
| 393 | 36900.37000.42500.42700.43000.44400.49000.601000 | Living dinning flooring | 16d | 2026-04-26 | 2026-05-11 | 390, 392 |  | Sector-44 Noida(2) | 9375724 |
| 394 | 36900.37000.42500.42700.43000.44400.49000.601100 | Electrical wiring work | 10d | 2026-05-02 | 2026-05-11 | 393FS-10d |  | Sector-44 Noida(2) | 9375734 |
| 395 | 36900.37000.42500.42700.43000.44400.49000.601200 | Aluminium door-window fixing | 17d | 2026-05-04 | 2026-05-20 | 385, 394FS-8d |  | Sector-44 Noida(2) | 9375744 |
| 396 | 36900.37000.42500.42700.43000.44400.49000.601300 | Putty primer coat | 8d | 2026-05-13 | 2026-05-20 | 395FS-8d |  | Sector-44 Noida(2) | 9375754 |
| 397 | 36900.37000.42500.42700.43000.44400.49000.601400 | Prehung door fixing | 7d | 2026-05-16 | 2026-05-22 | 396FS-5d |  | Sector-44 Noida(2) | 9375764 |
| 398 | 36900.37000.42500.42700.43000.44400.49000.601500 | Painting 1st coat | 10d | 2026-05-23 | 2026-06-01 | 397 |  | Sector-44 Noida(2) | 9375774 |
| 399 | 36900.37000.42500.42700.43000.44400.49000.601600 | False Ceiling panel fixing | 8d | 2026-06-02 | 2026-06-09 | 382, 398 |  | Sector-44 Noida(2) | 9375784 |

| ID | WBS | Task | Duration | Start | Finish | Predecessors | Constraint | Calendar | Unique_Task_ID |
| --- | --- | --- | --- | --- | --- | --- | --- | --- | --- |
| 400 | 36900.37000.42500.42700.43000.44400.49100 | **7th Floor** | 121d | 2026-02-17 | 2026-06-17 |  | start no earlier than 2026-02-17 | Sector-44 Noida(2) | 9361414 |
| 401 | 36900.37000.42500.42700.43000.44400.49100.601700 | Block Work | 10d | 2026-02-17 | 2026-02-26 | 277 |  | Sector-44 Noida(2) | 9375794 |
| 402 | 36900.37000.42500.42700.43000.44400.49100.601800 | Installation of temporary Main door | 7d | 2026-02-27 | 2026-03-05 | 401 |  | Sector-44 Noida(2) | 9375804 |
| 403 | 36900.37000.42500.42700.43000.44400.49100.601900 | Fire sprinkler pipe fixing | 3d | 2026-02-27 | 2026-03-01 | 386, 401 |  | Sector-44 Noida(2) | 9375814 |
| 404 | 36900.37000.42500.42700.43000.44400.49100.602000 | Internal Plumbing Works | 7d | 2026-02-27 | 2026-03-05 | 401 |  | Sector-44 Noida(2) | 9375824 |
| 405 | 36900.37000.42500.42700.43000.44400.49100.602100 | Waterproofing | 12d | 2026-03-06 | 2026-03-17 | 404 |  | Sector-44 Noida(2) | 9375834 |
| 406 | 36900.37000.42500.42700.43000.44400.49100.602200 | Internal Plaster | 15d | 2026-03-18 | 2026-04-01 | 404, 405 |  | Sector-44 Noida(2) | 9375844 |
| 407 | 36900.37000.42500.42700.43000.44400.49100.602300 | IPS flooring work | 11d | 2026-02-27 | 2026-03-09 | 401 |  | Sector-44 Noida(2) | 9375854 |
| 408 | 36900.37000.42500.42700.43000.44400.49100.602400 | Toilet dado work | 16d | 2026-04-02 | 2026-04-17 | 404, 405, 406 |  | Sector-44 Noida(2) | 9375864 |
| 409 | 36900.37000.42500.42700.43000.44400.49100.602500 | Toilet flooring work | 16d | 2026-04-18 | 2026-05-03 | 408 |  | Sector-44 Noida(2) | 9375874 |
| 410 | 36900.37000.42500.42700.43000.44400.49100.602600 | Living dinning flooring | 16d | 2026-05-04 | 2026-05-19 | 407, 409 |  | Sector-44 Noida(2) | 9375884 |
| 411 | 36900.37000.42500.42700.43000.44400.49100.602700 | Electrical wiring work | 10d | 2026-05-10 | 2026-05-19 | 410FS-10d |  | Sector-44 Noida(2) | 9375894 |
| 412 | 36900.37000.42500.42700.43000.44400.49100.602800 | Aluminium door-window fixing | 17d | 2026-05-12 | 2026-05-28 | 402, 411FS-8d |  | Sector-44 Noida(2) | 9375904 |
| 413 | 36900.37000.42500.42700.43000.44400.49100.602900 | Putty primer coat | 8d | 2026-05-21 | 2026-05-28 | 412FS-8d |  | Sector-44 Noida(2) | 9375914 |
| 414 | 36900.37000.42500.42700.43000.44400.49100.603000 | Prehung door fixing | 7d | 2026-05-24 | 2026-05-30 | 413FS-5d |  | Sector-44 Noida(2) | 9375924 |
| 415 | 36900.37000.42500.42700.43000.44400.49100.603100 | Painting 1st coat | 10d | 2026-05-31 | 2026-06-09 | 414 |  | Sector-44 Noida(2) | 9375934 |
| 416 | 36900.37000.42500.42700.43000.44400.49100.603200 | False Ceiling panel fixing | 8d | 2026-06-10 | 2026-06-17 | 399, 415 |  | Sector-44 Noida(2) | 9375944 |
| 417 | 36900.37000.42500.42700.43000.44400.49200 | **8th Floor** | 121d | 2026-03-08 | 2026-07-06 |  | start no earlier than 2026-03-08 | Sector-44 Noida(2) | 9361494 |
| 418 | 36900.37000.42500.42700.43000.44400.49200.603300 | Block Work | 10d | 2026-03-08 | 2026-03-17 | 278 |  | Sector-44 Noida(2) | 9375954 |
| 419 | 36900.37000.42500.42700.43000.44400.49200.603400 | Installation of temporary Main door | 7d | 2026-03-18 | 2026-03-24 | 418 |  | Sector-44 Noida(2) | 9375964 |
| 420 | 36900.37000.42500.42700.43000.44400.49200.603500 | Fire sprinkler pipe fixing | 3d | 2026-03-18 | 2026-03-20 | 403, 418 |  | Sector-44 Noida(2) | 9375974 |
| 421 | 36900.37000.42500.42700.43000.44400.49200.603600 | Internal Plumbing Works | 7d | 2026-03-18 | 2026-03-24 | 418 |  | Sector-44 Noida(2) | 9375984 |
| 422 | 36900.37000.42500.42700.43000.44400.49200.603700 | Waterproofing | 12d | 2026-03-25 | 2026-04-05 | 421 |  | Sector-44 Noida(2) | 9375994 |
| 423 | 36900.37000.42500.42700.43000.44400.49200.603800 | Internal Plaster | 15d | 2026-04-06 | 2026-04-20 | 421, 422 |  | Sector-44 Noida(2) | 9376004 |
| 424 | 36900.37000.42500.42700.43000.44400.49200.603900 | IPS flooring work | 11d | 2026-03-18 | 2026-03-28 | 418 |  | Sector-44 Noida(2) | 9376014 |
| 425 | 36900.37000.42500.42700.43000.44400.49200.604000 | Toilet dado work | 16d | 2026-04-21 | 2026-05-06 | 421, 422, 423 |  | Sector-44 Noida(2) | 9376024 |
| 426 | 36900.37000.42500.42700.43000.44400.49200.604100 | Toilet flooring work | 16d | 2026-05-07 | 2026-05-22 | 425 |  | Sector-44 Noida(2) | 9376034 |
| 427 | 36900.37000.42500.42700.43000.44400.49200.604200 | Living dinning flooring | 16d | 2026-05-23 | 2026-06-07 | 424, 426 |  | Sector-44 Noida(2) | 9376044 |
| 428 | 36900.37000.42500.42700.43000.44400.49200.604300 | Electrical wiring work | 10d | 2026-05-29 | 2026-06-07 | 427FS-10d |  | Sector-44 Noida(2) | 9376054 |
| 429 | 36900.37000.42500.42700.43000.44400.49200.604400 | Aluminium door-window fixing | 17d | 2026-05-31 | 2026-06-16 | 419, 428FS-8d |  | Sector-44 Noida(2) | 9376064 |
| 430 | 36900.37000.42500.42700.43000.44400.49200.604500 | Putty primer coat | 8d | 2026-06-09 | 2026-06-16 | 429FS-8d |  | Sector-44 Noida(2) | 9376074 |
| 431 | 36900.37000.42500.42700.43000.44400.49200.604600 | Prehung door fixing | 7d | 2026-06-12 | 2026-06-18 | 430FS-5d |  | Sector-44 Noida(2) | 9376084 |
| 432 | 36900.37000.42500.42700.43000.44400.49200.604700 | Painting 1st coat | 10d | 2026-06-19 | 2026-06-28 | 431 |  | Sector-44 Noida(2) | 9376094 |
| 433 | 36900.37000.42500.42700.43000.44400.49200.604800 | False Ceiling panel fixing | 8d | 2026-06-29 | 2026-07-06 | 416, 432 |  | Sector-44 Noida(2) | 9376104 |

| ID | WBS | Task | Duration | Start | Finish | Predecessors | Constraint | Calendar | Unique_Task_ID |
| --- | --- | --- | --- | --- | --- | --- | --- | --- | --- |
| 434 | 36900.37000.42500.42700.43000.44400.49300 | **9th Floor** | 121d | 2026-03-17 | 2026-07-15 |  | start no earlier than 2026-03-17 | Sector-44 Noida(2) | 9361544 |
| 435 | 36900.37000.42500.42700.43000.44400.49300.604900 | Block Work | 10d | 2026-03-17 | 2026-03-26 | 279 |  | Sector-44 Noida(2) | 9376114 |
| 436 | 36900.37000.42500.42700.43000.44400.49300.605000 | Installation of temporary Main door | 7d | 2026-03-27 | 2026-04-02 | 435 |  | Sector-44 Noida(2) | 9376124 |
| 437 | 36900.37000.42500.42700.43000.44400.49300.605100 | Fire sprinkler pipe fixing | 3d | 2026-03-27 | 2026-03-29 | 420, 435 |  | Sector-44 Noida(2) | 9376134 |
| 438 | 36900.37000.42500.42700.43000.44400.49300.605200 | Internal Plumbing Works | 7d | 2026-03-27 | 2026-04-02 | 435 |  | Sector-44 Noida(2) | 9376144 |
| 439 | 36900.37000.42500.42700.43000.44400.49300.605300 | Waterproofing | 12d | 2026-04-03 | 2026-04-14 | 438 |  | Sector-44 Noida(2) | 9376154 |
| 440 | 36900.37000.42500.42700.43000.44400.49300.605400 | Internal Plaster | 15d | 2026-04-15 | 2026-04-29 | 438, 439 |  | Sector-44 Noida(2) | 9376164 |
| 441 | 36900.37000.42500.42700.43000.44400.49300.605500 | IPS flooring work | 11d | 2026-03-27 | 2026-04-06 | 435 |  | Sector-44 Noida(2) | 9376174 |
| 442 | 36900.37000.42500.42700.43000.44400.49300.605600 | Toilet dado work | 16d | 2026-04-30 | 2026-05-15 | 438, 439, 440 |  | Sector-44 Noida(2) | 9376184 |
| 443 | 36900.37000.42500.42700.43000.44400.49300.605700 | Toilet flooring work | 16d | 2026-05-16 | 2026-05-31 | 442 |  | Sector-44 Noida(2) | 9376194 |
| 444 | 36900.37000.42500.42700.43000.44400.49300.605800 | Living dinning flooring | 16d | 2026-06-01 | 2026-06-16 | 441, 443 |  | Sector-44 Noida(2) | 9376204 |
| 445 | 36900.37000.42500.42700.43000.44400.49300.605900 | Electrical wiring work | 10d | 2026-06-07 | 2026-06-16 | 444FS-10d |  | Sector-44 Noida(2) | 9376214 |
| 446 | 36900.37000.42500.42700.43000.44400.49300.606000 | Aluminium door-window fixing | 17d | 2026-06-09 | 2026-06-25 | 436, 445FS-8d |  | Sector-44 Noida(2) | 9376224 |
| 447 | 36900.37000.42500.42700.43000.44400.49300.606100 | Putty primer coat | 8d | 2026-06-18 | 2026-06-25 | 446FS-8d |  | Sector-44 Noida(2) | 9376234 |
| 448 | 36900.37000.42500.42700.43000.44400.49300.606200 | Prehung door fixing | 7d | 2026-06-21 | 2026-06-27 | 447FS-5d |  | Sector-44 Noida(2) | 9376244 |
| 449 | 36900.37000.42500.42700.43000.44400.49300.606300 | Painting 1st coat | 10d | 2026-06-28 | 2026-07-07 | 448 |  | Sector-44 Noida(2) | 9376254 |
| 450 | 36900.37000.42500.42700.43000.44400.49300.606400 | False Ceiling panel fixing | 8d | 2026-07-08 | 2026-07-15 | 433, 449 |  | Sector-44 Noida(2) | 9376264 |
| 451 | 36900.37000.42500.42700.43000.44400.49400 | **10th Floor** | 121d | 2026-03-26 | 2026-07-24 |  | start no earlier than 2026-03-26 | Sector-44 Noida(2) | 9361554 |
| 452 | 36900.37000.42500.42700.43000.44400.49400.606500 | Block Work | 10d | 2026-03-26 | 2026-04-04 | 280 |  | Sector-44 Noida(2) | 9376274 |
| 453 | 36900.37000.42500.42700.43000.44400.49400.606600 | Installation of temporary Main door | 7d | 2026-04-05 | 2026-04-11 | 452 |  | Sector-44 Noida(2) | 9376284 |
| 454 | 36900.37000.42500.42700.43000.44400.49400.606700 | Fire sprinkler pipe fixing | 3d | 2026-04-05 | 2026-04-07 | 437, 452 |  | Sector-44 Noida(2) | 9376294 |
| 455 | 36900.37000.42500.42700.43000.44400.49400.606800 | Internal Plumbing Works | 7d | 2026-04-05 | 2026-04-11 | 452 |  | Sector-44 Noida(2) | 9376304 |
| 456 | 36900.37000.42500.42700.43000.44400.49400.606900 | Waterproofing | 12d | 2026-04-12 | 2026-04-23 | 455 |  | Sector-44 Noida(2) | 9376314 |
| 457 | 36900.37000.42500.42700.43000.44400.49400.607000 | Internal Plaster | 15d | 2026-04-24 | 2026-05-08 | 455, 456 |  | Sector-44 Noida(2) | 9376324 |
| 458 | 36900.37000.42500.42700.43000.44400.49400.607100 | IPS flooring work | 11d | 2026-04-05 | 2026-04-15 | 452 |  | Sector-44 Noida(2) | 9376334 |
| 459 | 36900.37000.42500.42700.43000.44400.49400.607200 | Toilet dado work | 16d | 2026-05-09 | 2026-05-24 | 455, 456, 457 |  | Sector-44 Noida(2) | 9376344 |
| 460 | 36900.37000.42500.42700.43000.44400.49400.607300 | Toilet flooring work | 16d | 2026-05-25 | 2026-06-09 | 459 |  | Sector-44 Noida(2) | 9376354 |
| 461 | 36900.37000.42500.42700.43000.44400.49400.607400 | Living dinning flooring | 16d | 2026-06-10 | 2026-06-25 | 458, 460 |  | Sector-44 Noida(2) | 9376364 |
| 462 | 36900.37000.42500.42700.43000.44400.49400.607500 | Electrical wiring work | 10d | 2026-06-16 | 2026-06-25 | 461FS-10d |  | Sector-44 Noida(2) | 9376374 |
| 463 | 36900.37000.42500.42700.43000.44400.49400.607600 | Aluminium door-window fixing | 17d | 2026-06-18 | 2026-07-04 | 453, 462FS-8d |  | Sector-44 Noida(2) | 9376384 |
| 464 | 36900.37000.42500.42700.43000.44400.49400.607700 | Putty primer coat | 8d | 2026-06-27 | 2026-07-04 | 463FS-8d |  | Sector-44 Noida(2) | 9376394 |
| 465 | 36900.37000.42500.42700.43000.44400.49400.607800 | Prehung door fixing | 7d | 2026-06-30 | 2026-07-06 | 464FS-5d |  | Sector-44 Noida(2) | 9376404 |
| 466 | 36900.37000.42500.42700.43000.44400.49400.607900 | Painting 1st coat | 10d | 2026-07-07 | 2026-07-16 | 465 |  | Sector-44 Noida(2) | 9376414 |
| 467 | 36900.37000.42500.42700.43000.44400.49400.608000 | False Ceiling panel fixing | 8d | 2026-07-17 | 2026-07-24 | 450, 466 |  | Sector-44 Noida(2) | 9376424 |

| ID | WBS | Task | Duration | Start | Finish | Predecessors | Constraint | Calendar | Unique_Task_ID |
| --- | --- | --- | --- | --- | --- | --- | --- | --- | --- |
| 468 | 36900.37000.42500.42700.43000.44400.49500 | **11th Floor** | 121d | 2026-04-04 | 2026-08-02 |  | start no earlier than 2026-04-04 | Sector-44 Noida(2) | 9361624 |
| 469 | 36900.37000.42500.42700.43000.44400.49500.608100 | Block Work | 10d | 2026-04-04 | 2026-04-13 | 281 |  | Sector-44 Noida(2) | 9376434 |
| 470 | 36900.37000.42500.42700.43000.44400.49500.608200 | Installation of temporary Main door | 7d | 2026-04-14 | 2026-04-20 | 469 |  | Sector-44 Noida(2) | 9376444 |
| 471 | 36900.37000.42500.42700.43000.44400.49500.608300 | Fire sprinkler pipe fixing | 3d | 2026-04-14 | 2026-04-16 | 454, 469 |  | Sector-44 Noida(2) | 9376454 |
| 472 | 36900.37000.42500.42700.43000.44400.49500.608400 | Internal Plumbing Works | 7d | 2026-04-14 | 2026-04-20 | 469 |  | Sector-44 Noida(2) | 9376464 |
| 473 | 36900.37000.42500.42700.43000.44400.49500.608500 | Waterproofing | 12d | 2026-04-21 | 2026-05-02 | 472 |  | Sector-44 Noida(2) | 9376474 |
| 474 | 36900.37000.42500.42700.43000.44400.49500.608600 | Internal Plaster | 15d | 2026-05-03 | 2026-05-17 | 472, 473 |  | Sector-44 Noida(2) | 9376484 |
| 475 | 36900.37000.42500.42700.43000.44400.49500.608700 | IPS flooring work | 11d | 2026-04-14 | 2026-04-24 | 469 |  | Sector-44 Noida(2) | 9376494 |
| 476 | 36900.37000.42500.42700.43000.44400.49500.608800 | Toilet dado work | 16d | 2026-05-18 | 2026-06-02 | 472, 473, 474 |  | Sector-44 Noida(2) | 9376504 |
| 477 | 36900.37000.42500.42700.43000.44400.49500.608900 | Toilet flooring work | 16d | 2026-06-03 | 2026-06-18 | 476 |  | Sector-44 Noida(2) | 9376514 |
| 478 | 36900.37000.42500.42700.43000.44400.49500.609000 | Living dinning flooring | 16d | 2026-06-19 | 2026-07-04 | 475, 477 |  | Sector-44 Noida(2) | 9376524 |
| 479 | 36900.37000.42500.42700.43000.44400.49500.609100 | Electrical wiring work | 10d | 2026-06-25 | 2026-07-04 | 478FS-10d |  | Sector-44 Noida(2) | 9376534 |
| 480 | 36900.37000.42500.42700.43000.44400.49500.609200 | Aluminium door-window fixing | 17d | 2026-06-27 | 2026-07-13 | 470, 479FS-8d |  | Sector-44 Noida(2) | 9376544 |
| 481 | 36900.37000.42500.42700.43000.44400.49500.609300 | Putty primer coat | 8d | 2026-07-06 | 2026-07-13 | 480FS-8d |  | Sector-44 Noida(2) | 9376554 |
| 482 | 36900.37000.42500.42700.43000.44400.49500.609400 | Prehung door fixing | 7d | 2026-07-09 | 2026-07-15 | 481FS-5d |  | Sector-44 Noida(2) | 9376564 |
| 483 | 36900.37000.42500.42700.43000.44400.49500.609500 | Painting 1st coat | 10d | 2026-07-16 | 2026-07-25 | 482 |  | Sector-44 Noida(2) | 9376574 |
| 484 | 36900.37000.42500.42700.43000.44400.49500.609600 | False Ceiling panel fixing | 8d | 2026-07-26 | 2026-08-02 | 467, 483 |  | Sector-44 Noida(2) | 9376584 |
| 485 | 36900.37000.42500.42700.43000.44400.49600 | **12th Floor** | 121d | 2026-04-13 | 2026-08-11 |  | start no earlier than 2026-04-13 | Sector-44 Noida(2) | 9361634 |
| 486 | 36900.37000.42500.42700.43000.44400.49600.609700 | Block Work | 10d | 2026-04-13 | 2026-04-22 | 282 |  | Sector-44 Noida(2) | 9376594 |
| 487 | 36900.37000.42500.42700.43000.44400.49600.609800 | Installation of temporary Main door | 7d | 2026-04-23 | 2026-04-29 | 486 |  | Sector-44 Noida(2) | 9376604 |
| 488 | 36900.37000.42500.42700.43000.44400.49600.609900 | Fire sprinkler pipe fixing | 3d | 2026-04-23 | 2026-04-25 | 471, 486 |  | Sector-44 Noida(2) | 9376614 |
| 489 | 36900.37000.42500.42700.43000.44400.49600.610000 | Internal Plumbing Works | 7d | 2026-04-23 | 2026-04-29 | 486 |  | Sector-44 Noida(2) | 9376624 |
| 490 | 36900.37000.42500.42700.43000.44400.49600.610100 | Waterproofing | 12d | 2026-04-30 | 2026-05-11 | 489 |  | Sector-44 Noida(2) | 9376634 |
| 491 | 36900.37000.42500.42700.43000.44400.49600.610200 | Internal Plaster | 15d | 2026-05-12 | 2026-05-26 | 489, 490 |  | Sector-44 Noida(2) | 9376644 |
| 492 | 36900.37000.42500.42700.43000.44400.49600.610300 | IPS flooring work | 11d | 2026-04-23 | 2026-05-03 | 486 |  | Sector-44 Noida(2) | 9376654 |
| 493 | 36900.37000.42500.42700.43000.44400.49600.610400 | Toilet dado work | 16d | 2026-05-27 | 2026-06-11 | 489, 490, 491 |  | Sector-44 Noida(2) | 9376664 |
| 494 | 36900.37000.42500.42700.43000.44400.49600.610500 | Toilet flooring work | 16d | 2026-06-12 | 2026-06-27 | 493 |  | Sector-44 Noida(2) | 9376674 |
| 495 | 36900.37000.42500.42700.43000.44400.49600.610600 | Living dinning flooring | 16d | 2026-06-28 | 2026-07-13 | 492, 494 |  | Sector-44 Noida(2) | 9376684 |
| 496 | 36900.37000.42500.42700.43000.44400.49600.610700 | Electrical wiring work | 10d | 2026-07-04 | 2026-07-13 | 495FS-10d |  | Sector-44 Noida(2) | 9376694 |
| 497 | 36900.37000.42500.42700.43000.44400.49600.610800 | Aluminium door-window fixing | 17d | 2026-07-06 | 2026-07-22 | 487, 496FS-8d |  | Sector-44 Noida(2) | 9376704 |
| 498 | 36900.37000.42500.42700.43000.44400.49600.610900 | Putty primer coat | 8d | 2026-07-15 | 2026-07-22 | 497FS-8d |  | Sector-44 Noida(2) | 9376714 |
| 499 | 36900.37000.42500.42700.43000.44400.49600.611000 | Prehung door fixing | 7d | 2026-07-18 | 2026-07-24 | 498FS-5d |  | Sector-44 Noida(2) | 9376724 |
| 500 | 36900.37000.42500.42700.43000.44400.49600.611100 | Painting 1st coat | 10d | 2026-07-25 | 2026-08-03 | 499 |  | Sector-44 Noida(2) | 9376734 |
| 501 | 36900.37000.42500.42700.43000.44400.49600.611200 | False Ceiling panel fixing | 8d | 2026-08-04 | 2026-08-11 | 484, 500 |  | Sector-44 Noida(2) | 9376744 |

| ID | WBS | Task | Duration | Start | Finish | Predecessors | Constraint | Calendar | Unique_Task_ID |
| --- | --- | --- | --- | --- | --- | --- | --- | --- | --- |
| 502 | 36900.37000.42500.42700.43000.44400.49700 | **13th Floor** | 121d | 2026-04-22 | 2026-08-20 |  | start no earlier than 2026-04-22 | Sector-44 Noida(2) | 9361684 |
| 503 | 36900.37000.42500.42700.43000.44400.49700.611300 | Block Work | 10d | 2026-04-22 | 2026-05-01 | 283 |  | Sector-44 Noida(2) | 9376754 |
| 504 | 36900.37000.42500.42700.43000.44400.49700.611400 | Installation of temporary Main door | 7d | 2026-05-02 | 2026-05-08 | 503 |  | Sector-44 Noida(2) | 9376764 |
| 505 | 36900.37000.42500.42700.43000.44400.49700.611500 | Fire sprinkler pipe fixing | 3d | 2026-05-02 | 2026-05-04 | 488, 503 |  | Sector-44 Noida(2) | 9376774 |
| 506 | 36900.37000.42500.42700.43000.44400.49700.611600 | Internal Plumbing Works | 7d | 2026-05-02 | 2026-05-08 | 503 |  | Sector-44 Noida(2) | 9376784 |
| 507 | 36900.37000.42500.42700.43000.44400.49700.611700 | Waterproofing | 12d | 2026-05-09 | 2026-05-20 | 506 |  | Sector-44 Noida(2) | 9376794 |
| 508 | 36900.37000.42500.42700.43000.44400.49700.611800 | Internal Plaster | 15d | 2026-05-21 | 2026-06-04 | 506, 507 |  | Sector-44 Noida(2) | 9376804 |
| 509 | 36900.37000.42500.42700.43000.44400.49700.611900 | IPS flooring work | 11d | 2026-05-02 | 2026-05-12 | 503 |  | Sector-44 Noida(2) | 9376814 |
| 510 | 36900.37000.42500.42700.43000.44400.49700.612000 | Toilet dado work | 16d | 2026-06-05 | 2026-06-20 | 506, 507, 508 |  | Sector-44 Noida(2) | 9376824 |
| 511 | 36900.37000.42500.42700.43000.44400.49700.612100 | Toilet flooring work | 16d | 2026-06-21 | 2026-07-06 | 510 |  | Sector-44 Noida(2) | 9376834 |
| 512 | 36900.37000.42500.42700.43000.44400.49700.612200 | Living dinning flooring | 16d | 2026-07-07 | 2026-07-22 | 509, 511 |  | Sector-44 Noida(2) | 9376844 |
| 513 | 36900.37000.42500.42700.43000.44400.49700.612300 | Electrical wiring work | 10d | 2026-07-13 | 2026-07-22 | 512FS-10d |  | Sector-44 Noida(2) | 9376854 |
| 514 | 36900.37000.42500.42700.43000.44400.49700.612400 | Aluminium door-window fixing | 17d | 2026-07-15 | 2026-07-31 | 504, 513FS-8d |  | Sector-44 Noida(2) | 9376864 |
| 515 | 36900.37000.42500.42700.43000.44400.49700.612500 | Putty primer coat | 8d | 2026-07-24 | 2026-07-31 | 514FS-8d |  | Sector-44 Noida(2) | 9376874 |
| 516 | 36900.37000.42500.42700.43000.44400.49700.612600 | Prehung door fixing | 7d | 2026-07-27 | 2026-08-02 | 515FS-5d |  | Sector-44 Noida(2) | 9376884 |
| 517 | 36900.37000.42500.42700.43000.44400.49700.612700 | Painting 1st coat | 10d | 2026-08-03 | 2026-08-12 | 516 |  | Sector-44 Noida(2) | 9376894 |
| 518 | 36900.37000.42500.42700.43000.44400.49700.612800 | False Ceiling panel fixing | 8d | 2026-08-13 | 2026-08-20 | 501, 517 |  | Sector-44 Noida(2) | 9376904 |
| 519 | 36900.37000.42500.42700.43000.44400.49800 | **14th Floor** | 121d | 2026-05-01 | 2026-08-29 |  | start no earlier than 2026-05-01 | Sector-44 Noida(2) | 9361724 |
| 520 | 36900.37000.42500.42700.43000.44400.49800.612900 | Block Work | 10d | 2026-05-01 | 2026-05-10 | 284 |  | Sector-44 Noida(2) | 9376914 |
| 521 | 36900.37000.42500.42700.43000.44400.49800.613000 | Installation of temporary Main door | 7d | 2026-05-11 | 2026-05-17 | 520 |  | Sector-44 Noida(2) | 9376924 |
| 522 | 36900.37000.42500.42700.43000.44400.49800.613100 | Fire sprinkler pipe fixing | 3d | 2026-05-11 | 2026-05-13 | 505, 520 |  | Sector-44 Noida(2) | 9376934 |
| 523 | 36900.37000.42500.42700.43000.44400.49800.613200 | Internal Plumbing Works | 7d | 2026-05-11 | 2026-05-17 | 520 |  | Sector-44 Noida(2) | 9376944 |
| 524 | 36900.37000.42500.42700.43000.44400.49800.613300 | Waterproofing | 12d | 2026-05-18 | 2026-05-29 | 523 |  | Sector-44 Noida(2) | 9376954 |
| 525 | 36900.37000.42500.42700.43000.44400.49800.613400 | Internal Plaster | 15d | 2026-05-30 | 2026-06-13 | 523, 524 |  | Sector-44 Noida(2) | 9376964 |
| 526 | 36900.37000.42500.42700.43000.44400.49800.613500 | IPS flooring work | 11d | 2026-05-11 | 2026-05-21 | 520 |  | Sector-44 Noida(2) | 9376974 |
| 527 | 36900.37000.42500.42700.43000.44400.49800.613600 | Toilet dado work | 16d | 2026-06-14 | 2026-06-29 | 523, 524, 525 |  | Sector-44 Noida(2) | 9376984 |
| 528 | 36900.37000.42500.42700.43000.44400.49800.613700 | Toilet flooring work | 16d | 2026-06-30 | 2026-07-15 | 527 |  | Sector-44 Noida(2) | 9376994 |
| 529 | 36900.37000.42500.42700.43000.44400.49800.613800 | Living dinning flooring | 16d | 2026-07-16 | 2026-07-31 | 526, 528 |  | Sector-44 Noida(2) | 9377004 |
| 530 | 36900.37000.42500.42700.43000.44400.49800.613900 | Electrical wiring work | 10d | 2026-07-22 | 2026-07-31 | 529FS-10d |  | Sector-44 Noida(2) | 9377014 |
| 531 | 36900.37000.42500.42700.43000.44400.49800.614000 | Aluminium door-window fixing | 17d | 2026-07-24 | 2026-08-09 | 521, 530FS-8d |  | Sector-44 Noida(2) | 9377024 |
| 532 | 36900.37000.42500.42700.43000.44400.49800.614100 | Putty primer coat | 8d | 2026-08-02 | 2026-08-09 | 531FS-8d |  | Sector-44 Noida(2) | 9377034 |
| 533 | 36900.37000.42500.42700.43000.44400.49800.614200 | Prehung door fixing | 7d | 2026-08-05 | 2026-08-11 | 532FS-5d |  | Sector-44 Noida(2) | 9377044 |
| 534 | 36900.37000.42500.42700.43000.44400.49800.614300 | Painting 1st coat | 10d | 2026-08-12 | 2026-08-21 | 533 |  | Sector-44 Noida(2) | 9377054 |
| 535 | 36900.37000.42500.42700.43000.44400.49800.614400 | False Ceiling panel fixing | 8d | 2026-08-22 | 2026-08-29 | 518, 534 |  | Sector-44 Noida(2) | 9377064 |

| ID | WBS | Task | Duration | Start | Finish | Predecessors | Constraint | Calendar | Unique_Task_ID |
| --- | --- | --- | --- | --- | --- | --- | --- | --- | --- |
| 536 | 36900.37000.42500.42700.43000.44400.49900 | **15th Floor** | 121d | 2026-05-10 | 2026-09-07 |  | start no earlier than 2026-05-10 | Sector-44 Noida(2) | 9361754 |
| 537 | 36900.37000.42500.42700.43000.44400.49900.614500 | Block Work | 10d | 2026-05-10 | 2026-05-19 | 285 |  | Sector-44 Noida(2) | 9377074 |
| 538 | 36900.37000.42500.42700.43000.44400.49900.614600 | Installation of temporary Main door | 7d | 2026-05-20 | 2026-05-26 | 537 |  | Sector-44 Noida(2) | 9377084 |
| 539 | 36900.37000.42500.42700.43000.44400.49900.614700 | Fire sprinkler pipe fixing | 3d | 2026-05-20 | 2026-05-22 | 522, 537 |  | Sector-44 Noida(2) | 9377094 |
| 540 | 36900.37000.42500.42700.43000.44400.49900.614800 | Internal Plumbing Works | 7d | 2026-05-20 | 2026-05-26 | 537 |  | Sector-44 Noida(2) | 9377104 |
| 541 | 36900.37000.42500.42700.43000.44400.49900.614900 | Waterproofing | 12d | 2026-05-27 | 2026-06-07 | 540 |  | Sector-44 Noida(2) | 9377114 |
| 542 | 36900.37000.42500.42700.43000.44400.49900.615000 | Internal Plaster | 15d | 2026-06-08 | 2026-06-22 | 540, 541 |  | Sector-44 Noida(2) | 9377124 |
| 543 | 36900.37000.42500.42700.43000.44400.49900.615100 | IPS flooring work | 11d | 2026-05-20 | 2026-05-30 | 537 |  | Sector-44 Noida(2) | 9377134 |
| 544 | 36900.37000.42500.42700.43000.44400.49900.615200 | Toilet dado work | 16d | 2026-06-23 | 2026-07-08 | 540, 541, 542 |  | Sector-44 Noida(2) | 9377144 |
| 545 | 36900.37000.42500.42700.43000.44400.49900.615300 | Toilet flooring work | 16d | 2026-07-09 | 2026-07-24 | 544 |  | Sector-44 Noida(2) | 9377154 |
| 546 | 36900.37000.42500.42700.43000.44400.49900.615400 | Living dinning flooring | 16d | 2026-07-25 | 2026-08-09 | 543, 545 |  | Sector-44 Noida(2) | 9377164 |
| 547 | 36900.37000.42500.42700.43000.44400.49900.615500 | Electrical wiring work | 10d | 2026-07-31 | 2026-08-09 | 546FS-10d |  | Sector-44 Noida(2) | 9377174 |
| 548 | 36900.37000.42500.42700.43000.44400.49900.615600 | Aluminium door-window fixing | 17d | 2026-08-02 | 2026-08-18 | 538, 547FS-8d |  | Sector-44 Noida(2) | 9377184 |
| 549 | 36900.37000.42500.42700.43000.44400.49900.615700 | Putty primer coat | 8d | 2026-08-11 | 2026-08-18 | 548FS-8d |  | Sector-44 Noida(2) | 9377194 |
| 550 | 36900.37000.42500.42700.43000.44400.49900.615800 | Prehung door fixing | 7d | 2026-08-14 | 2026-08-20 | 549FS-5d |  | Sector-44 Noida(2) | 9377204 |
| 551 | 36900.37000.42500.42700.43000.44400.49900.615900 | Painting 1st coat | 10d | 2026-08-21 | 2026-08-30 | 550 |  | Sector-44 Noida(2) | 9377214 |
| 552 | 36900.37000.42500.42700.43000.44400.49900.616000 | False Ceiling panel fixing | 8d | 2026-08-31 | 2026-09-07 | 535, 551 |  | Sector-44 Noida(2) | 9377224 |
| 553 | 36900.37000.42500.42700.43000.44400.50000 | **16th Floor** | 121d | 2026-05-18 | 2026-09-15 |  | start no earlier than 2026-05-18 | Sector-44 Noida(2) | 9361844 |
| 554 | 36900.37000.42500.42700.43000.44400.50000.616100 | Block Work | 10d | 2026-05-18 | 2026-05-27 | 286 |  | Sector-44 Noida(2) | 9377234 |
| 555 | 36900.37000.42500.42700.43000.44400.50000.616200 | Installation of temporary Main door | 7d | 2026-05-28 | 2026-06-03 | 554 |  | Sector-44 Noida(2) | 9377244 |
| 556 | 36900.37000.42500.42700.43000.44400.50000.616300 | Fire sprinkler pipe fixing | 3d | 2026-05-28 | 2026-05-30 | 539, 554 |  | Sector-44 Noida(2) | 9377254 |
| 557 | 36900.37000.42500.42700.43000.44400.50000.616400 | Internal Plumbing Works | 7d | 2026-05-28 | 2026-06-03 | 554 |  | Sector-44 Noida(2) | 9377264 |
| 558 | 36900.37000.42500.42700.43000.44400.50000.616500 | Waterproofing | 12d | 2026-06-04 | 2026-06-15 | 557 |  | Sector-44 Noida(2) | 9377274 |
| 559 | 36900.37000.42500.42700.43000.44400.50000.616600 | Internal Plaster | 15d | 2026-06-16 | 2026-06-30 | 557, 558 |  | Sector-44 Noida(2) | 9377284 |
| 560 | 36900.37000.42500.42700.43000.44400.50000.616700 | IPS flooring work | 11d | 2026-05-28 | 2026-06-07 | 554 |  | Sector-44 Noida(2) | 9377294 |
| 561 | 36900.37000.42500.42700.43000.44400.50000.616800 | Toilet dado work | 16d | 2026-07-01 | 2026-07-16 | 557, 558, 559 |  | Sector-44 Noida(2) | 9377304 |
| 562 | 36900.37000.42500.42700.43000.44400.50000.616900 | Toilet flooring work | 16d | 2026-07-17 | 2026-08-01 | 561 |  | Sector-44 Noida(2) | 9377314 |
| 563 | 36900.37000.42500.42700.43000.44400.50000.617000 | Living dinning flooring | 16d | 2026-08-02 | 2026-08-17 | 560, 562 |  | Sector-44 Noida(2) | 9377324 |
| 564 | 36900.37000.42500.42700.43000.44400.50000.617100 | Electrical wiring work | 10d | 2026-08-08 | 2026-08-17 | 563FS-10d |  | Sector-44 Noida(2) | 9377334 |
| 565 | 36900.37000.42500.42700.43000.44400.50000.617200 | Aluminium door-window fixing | 17d | 2026-08-10 | 2026-08-26 | 555, 564FS-8d |  | Sector-44 Noida(2) | 9377344 |
| 566 | 36900.37000.42500.42700.43000.44400.50000.617300 | Putty primer coat | 8d | 2026-08-19 | 2026-08-26 | 565FS-8d |  | Sector-44 Noida(2) | 9377354 |
| 567 | 36900.37000.42500.42700.43000.44400.50000.617400 | Prehung door fixing | 7d | 2026-08-22 | 2026-08-28 | 566FS-5d |  | Sector-44 Noida(2) | 9377364 |
| 568 | 36900.37000.42500.42700.43000.44400.50000.617500 | Painting 1st coat | 10d | 2026-08-29 | 2026-09-07 | 567 |  | Sector-44 Noida(2) | 9377374 |
| 569 | 36900.37000.42500.42700.43000.44400.50000.617600 | False Ceiling panel fixing | 8d | 2026-09-08 | 2026-09-15 | 552, 568 |  | Sector-44 Noida(2) | 9377384 |

| ID | WBS | Task | Duration | Start | Finish | Predecessors | Constraint | Calendar | Unique_Task_ID |
| --- | --- | --- | --- | --- | --- | --- | --- | --- | --- |
| 570 | 36900.37000.42500.42700.43000.44400.50100 | **17th Floor** | 121d | 2026-05-26 | 2026-09-23 |  | start no earlier than 2026-05-26 | Sector-44 Noida(2) | 9361904 |
| 571 | 36900.37000.42500.42700.43000.44400.50100.617700 | Block Work | 10d | 2026-05-26 | 2026-06-04 | 287 |  | Sector-44 Noida(2) | 9377394 |
| 572 | 36900.37000.42500.42700.43000.44400.50100.617800 | Installation of temporary Main door | 7d | 2026-06-05 | 2026-06-11 | 571 |  | Sector-44 Noida(2) | 9377404 |
| 573 | 36900.37000.42500.42700.43000.44400.50100.617900 | Fire sprinkler pipe fixing | 3d | 2026-06-05 | 2026-06-07 | 556, 571 |  | Sector-44 Noida(2) | 9377414 |
| 574 | 36900.37000.42500.42700.43000.44400.50100.618000 | Internal Plumbing Works | 7d | 2026-06-05 | 2026-06-11 | 571 |  | Sector-44 Noida(2) | 9377424 |
| 575 | 36900.37000.42500.42700.43000.44400.50100.618100 | Waterproofing | 12d | 2026-06-12 | 2026-06-23 | 574 |  | Sector-44 Noida(2) | 9377434 |
| 576 | 36900.37000.42500.42700.43000.44400.50100.618200 | Internal Plaster | 15d | 2026-06-24 | 2026-07-08 | 574, 575 |  | Sector-44 Noida(2) | 9377444 |
| 577 | 36900.37000.42500.42700.43000.44400.50100.618300 | IPS flooring work | 11d | 2026-06-05 | 2026-06-15 | 571 |  | Sector-44 Noida(2) | 9377454 |
| 578 | 36900.37000.42500.42700.43000.44400.50100.618400 | Toilet dado work | 16d | 2026-07-09 | 2026-07-24 | 574, 575, 576 |  | Sector-44 Noida(2) | 9377464 |
| 579 | 36900.37000.42500.42700.43000.44400.50100.618500 | Toilet flooring work | 16d | 2026-07-25 | 2026-08-09 | 578 |  | Sector-44 Noida(2) | 9377474 |
| 580 | 36900.37000.42500.42700.43000.44400.50100.618600 | Living dinning flooring | 16d | 2026-08-10 | 2026-08-25 | 577, 579 |  | Sector-44 Noida(2) | 9377484 |
| 581 | 36900.37000.42500.42700.43000.44400.50100.618700 | Electrical wiring work | 10d | 2026-08-16 | 2026-08-25 | 580FS-10d |  | Sector-44 Noida(2) | 9377494 |
| 582 | 36900.37000.42500.42700.43000.44400.50100.618800 | Aluminium door-window fixing | 17d | 2026-08-18 | 2026-09-03 | 572, 581FS-8d |  | Sector-44 Noida(2) | 9377504 |
| 583 | 36900.37000.42500.42700.43000.44400.50100.618900 | Putty primer coat | 8d | 2026-08-27 | 2026-09-03 | 582FS-8d |  | Sector-44 Noida(2) | 9377514 |
| 584 | 36900.37000.42500.42700.43000.44400.50100.619000 | Prehung door fixing | 7d | 2026-08-30 | 2026-09-05 | 583FS-5d |  | Sector-44 Noida(2) | 9377524 |
| 585 | 36900.37000.42500.42700.43000.44400.50100.619100 | Painting 1st coat | 10d | 2026-09-06 | 2026-09-15 | 584 |  | Sector-44 Noida(2) | 9377534 |
| 586 | 36900.37000.42500.42700.43000.44400.50100.619200 | False Ceiling panel fixing | 8d | 2026-09-16 | 2026-09-23 | 569, 585 |  | Sector-44 Noida(2) | 9377544 |
| 587 | 36900.37000.42500.42700.43000.44400.50200 | **18th Floor** | 121d | 2026-06-03 | 2026-10-01 |  | start no earlier than 2026-06-03 | Sector-44 Noida(2) | 9361914 |
| 588 | 36900.37000.42500.42700.43000.44400.50200.619300 | Block Work | 10d | 2026-06-03 | 2026-06-12 | 288 |  | Sector-44 Noida(2) | 9377554 |
| 589 | 36900.37000.42500.42700.43000.44400.50200.619400 | Installation of temporary Main door | 7d | 2026-06-13 | 2026-06-19 | 588 |  | Sector-44 Noida(2) | 9377564 |
| 590 | 36900.37000.42500.42700.43000.44400.50200.619500 | Fire sprinkler pipe fixing | 3d | 2026-06-13 | 2026-06-15 | 573, 588 |  | Sector-44 Noida(2) | 9377574 |
| 591 | 36900.37000.42500.42700.43000.44400.50200.619600 | Internal Plumbing Works | 7d | 2026-06-13 | 2026-06-19 | 588 |  | Sector-44 Noida(2) | 9377584 |
| 592 | 36900.37000.42500.42700.43000.44400.50200.619700 | Waterproofing | 12d | 2026-06-20 | 2026-07-01 | 591 |  | Sector-44 Noida(2) | 9377594 |
| 593 | 36900.37000.42500.42700.43000.44400.50200.619800 | Internal Plaster | 15d | 2026-07-02 | 2026-07-16 | 591, 592 |  | Sector-44 Noida(2) | 9377604 |
| 594 | 36900.37000.42500.42700.43000.44400.50200.619900 | IPS flooring work | 11d | 2026-06-13 | 2026-06-23 | 588 |  | Sector-44 Noida(2) | 9377614 |
| 595 | 36900.37000.42500.42700.43000.44400.50200.620000 | Toilet dado work | 16d | 2026-07-17 | 2026-08-01 | 591, 592, 593 |  | Sector-44 Noida(2) | 9377624 |
| 596 | 36900.37000.42500.42700.43000.44400.50200.620100 | Toilet flooring work | 16d | 2026-08-02 | 2026-08-17 | 595 |  | Sector-44 Noida(2) | 9377634 |
| 597 | 36900.37000.42500.42700.43000.44400.50200.620200 | Living dinning flooring | 16d | 2026-08-18 | 2026-09-02 | 594, 596 |  | Sector-44 Noida(2) | 9377644 |
| 598 | 36900.37000.42500.42700.43000.44400.50200.620300 | Electrical wiring work | 10d | 2026-08-24 | 2026-09-02 | 597FS-10d |  | Sector-44 Noida(2) | 9377654 |
| 599 | 36900.37000.42500.42700.43000.44400.50200.620400 | Aluminium door-window fixing | 17d | 2026-08-26 | 2026-09-11 | 589, 598FS-8d |  | Sector-44 Noida(2) | 9377664 |
| 600 | 36900.37000.42500.42700.43000.44400.50200.620500 | Putty primer coat | 8d | 2026-09-04 | 2026-09-11 | 599FS-8d |  | Sector-44 Noida(2) | 9377674 |
| 601 | 36900.37000.42500.42700.43000.44400.50200.620600 | Prehung door fixing | 7d | 2026-09-07 | 2026-09-13 | 600FS-5d |  | Sector-44 Noida(2) | 9377684 |
| 602 | 36900.37000.42500.42700.43000.44400.50200.620700 | Painting 1st coat | 10d | 2026-09-14 | 2026-09-23 | 601 |  | Sector-44 Noida(2) | 9377694 |
| 603 | 36900.37000.42500.42700.43000.44400.50200.620800 | False Ceiling panel fixing | 8d | 2026-09-24 | 2026-10-01 | 586, 602 |  | Sector-44 Noida(2) | 9377704 |

| ID | WBS | Task | Duration | Start | Finish | Predecessors | Constraint | Calendar | Unique_Task_ID |
| --- | --- | --- | --- | --- | --- | --- | --- | --- | --- |
| 604 | 36900.37000.42500.42700.43000.44400.50300 | **19th Floor** | 121d | 2026-06-11 | 2026-10-09 |  | start no earlier than 2026-06-11 | Sector-44 Noida(2) | 9361944 |
| 605 | 36900.37000.42500.42700.43000.44400.50300.620900 | Block Work | 10d | 2026-06-11 | 2026-06-20 | 289 |  | Sector-44 Noida(2) | 9377714 |
| 606 | 36900.37000.42500.42700.43000.44400.50300.621000 | Installation of temporary Main door | 7d | 2026-06-21 | 2026-06-27 | 605 |  | Sector-44 Noida(2) | 9377724 |
| 607 | 36900.37000.42500.42700.43000.44400.50300.621100 | Fire sprinkler pipe fixing | 3d | 2026-06-21 | 2026-06-23 | 590, 605 |  | Sector-44 Noida(2) | 9377734 |
| 608 | 36900.37000.42500.42700.43000.44400.50300.621200 | Internal Plumbing Works | 7d | 2026-06-21 | 2026-06-27 | 605 |  | Sector-44 Noida(2) | 9377744 |
| 609 | 36900.37000.42500.42700.43000.44400.50300.621300 | Waterproofing | 12d | 2026-06-28 | 2026-07-09 | 608 |  | Sector-44 Noida(2) | 9377754 |
| 610 | 36900.37000.42500.42700.43000.44400.50300.621400 | Internal Plaster | 15d | 2026-07-10 | 2026-07-24 | 608, 609 |  | Sector-44 Noida(2) | 9377764 |
| 611 | 36900.37000.42500.42700.43000.44400.50300.621500 | IPS flooring work | 11d | 2026-06-21 | 2026-07-01 | 605 |  | Sector-44 Noida(2) | 9377774 |
| 612 | 36900.37000.42500.42700.43000.44400.50300.621600 | Toilet dado work | 16d | 2026-07-25 | 2026-08-09 | 608, 609, 610 |  | Sector-44 Noida(2) | 9377784 |
| 613 | 36900.37000.42500.42700.43000.44400.50300.621700 | Toilet flooring work | 16d | 2026-08-10 | 2026-08-25 | 612 |  | Sector-44 Noida(2) | 9377794 |
| 614 | 36900.37000.42500.42700.43000.44400.50300.621800 | Living dinning flooring | 16d | 2026-08-26 | 2026-09-10 | 611, 613 |  | Sector-44 Noida(2) | 9377804 |
| 615 | 36900.37000.42500.42700.43000.44400.50300.621900 | Electrical wiring work | 10d | 2026-09-01 | 2026-09-10 | 614FS-10d |  | Sector-44 Noida(2) | 9377814 |
| 616 | 36900.37000.42500.42700.43000.44400.50300.622000 | Aluminium door-window fixing | 17d | 2026-09-03 | 2026-09-19 | 606, 615FS-8d |  | Sector-44 Noida(2) | 9377824 |
| 617 | 36900.37000.42500.42700.43000.44400.50300.622100 | Putty primer coat | 8d | 2026-09-12 | 2026-09-19 | 616FS-8d |  | Sector-44 Noida(2) | 9377834 |
| 618 | 36900.37000.42500.42700.43000.44400.50300.622200 | Prehung door fixing | 7d | 2026-09-15 | 2026-09-21 | 617FS-5d |  | Sector-44 Noida(2) | 9377844 |
| 619 | 36900.37000.42500.42700.43000.44400.50300.622300 | Painting 1st coat | 10d | 2026-09-22 | 2026-10-01 | 618 |  | Sector-44 Noida(2) | 9377854 |
| 620 | 36900.37000.42500.42700.43000.44400.50300.622400 | False Ceiling panel fixing | 8d | 2026-10-02 | 2026-10-09 | 603, 619 |  | Sector-44 Noida(2) | 9377864 |
| 621 | 36900.37000.42500.42700.43000.44400.50400 | **20th Floor** | 122d | 2026-06-18 | 2026-10-17 |  | start no earlier than 2026-06-18 | Sector-44 Noida(2) | 9361984 |
| 622 | 36900.37000.42500.42700.43000.44400.50400.622500 | Block Work | 10d | 2026-06-18 | 2026-06-27 | 290 |  | Sector-44 Noida(2) | 9377874 |
| 623 | 36900.37000.42500.42700.43000.44400.50400.622600 | Installation of temporary Main door | 7d | 2026-06-28 | 2026-07-04 | 622 |  | Sector-44 Noida(2) | 9377884 |
| 624 | 36900.37000.42500.42700.43000.44400.50400.622700 | Fire sprinkler pipe fixing | 3d | 2026-06-28 | 2026-06-30 | 607, 622 |  | Sector-44 Noida(2) | 9377894 |
| 625 | 36900.37000.42500.42700.43000.44400.50400.622800 | Internal Plumbing Works | 7d | 2026-06-28 | 2026-07-04 | 622 |  | Sector-44 Noida(2) | 9377904 |
| 626 | 36900.37000.42500.42700.43000.44400.50400.622900 | Waterproofing | 12d | 2026-07-05 | 2026-07-16 | 625 |  | Sector-44 Noida(2) | 9377914 |
| 627 | 36900.37000.42500.42700.43000.44400.50400.623000 | Internal Plaster | 15d | 2026-07-17 | 2026-07-31 | 625, 626 |  | Sector-44 Noida(2) | 9377924 |
| 628 | 36900.37000.42500.42700.43000.44400.50400.623100 | IPS flooring work | 11d | 2026-06-28 | 2026-07-08 | 622 |  | Sector-44 Noida(2) | 9377934 |
| 629 | 36900.37000.42500.42700.43000.44400.50400.623200 | Toilet dado work | 16d | 2026-08-01 | 2026-08-16 | 625, 626, 627 |  | Sector-44 Noida(2) | 9377944 |
| 630 | 36900.37000.42500.42700.43000.44400.50400.623300 | Toilet flooring work | 16d | 2026-08-17 | 2026-09-01 | 629 |  | Sector-44 Noida(2) | 9377954 |
| 631 | 36900.37000.42500.42700.43000.44400.50400.623400 | Living dinning flooring | 16d | 2026-09-02 | 2026-09-17 | 628, 630 |  | Sector-44 Noida(2) | 9377964 |
| 632 | 36900.37000.42500.42700.43000.44400.50400.623500 | Electrical wiring work | 10d | 2026-09-08 | 2026-09-17 | 631FS-10d |  | Sector-44 Noida(2) | 9377974 |
| 633 | 36900.37000.42500.42700.43000.44400.50400.623600 | Aluminium door-window fixing | 17d | 2026-09-10 | 2026-09-26 | 623, 632FS-8d |  | Sector-44 Noida(2) | 9377984 |
| 634 | 36900.37000.42500.42700.43000.44400.50400.623700 | Putty primer coat | 8d | 2026-09-19 | 2026-09-26 | 633FS-8d |  | Sector-44 Noida(2) | 9377994 |
| 635 | 36900.37000.42500.42700.43000.44400.50400.623800 | Prehung door fixing | 7d | 2026-09-22 | 2026-09-28 | 634FS-5d |  | Sector-44 Noida(2) | 9378004 |
| 636 | 36900.37000.42500.42700.43000.44400.50400.623900 | Painting 1st coat | 10d | 2026-09-29 | 2026-10-08 | 635 |  | Sector-44 Noida(2) | 9378014 |
| 637 | 36900.37000.42500.42700.43000.44400.50400.624000 | False Ceiling panel fixing | 8d | 2026-10-10 | 2026-10-17 | 620, 636 |  | Sector-44 Noida(2) | 9378024 |

| ID | WBS | Task | Duration | Start | Finish | Predecessors | Constraint | Calendar | Unique_Task_ID |
| --- | --- | --- | --- | --- | --- | --- | --- | --- | --- |
| 638 | 36900.37000.42500.42700.43000.44400.50500 | **21st Floor** | 123d | 2026-06-25 | 2026-10-25 |  | start no earlier than 2026-06-25 | Sector-44 Noida(2) | 9362044 |
| 639 | 36900.37000.42500.42700.43000.44400.50500.624100 | Block Work | 7d | 2026-06-25 | 2026-07-01 | 291 |  | Sector-44 Noida(2) | 9378034 |
| 640 | 36900.37000.42500.42700.43000.44400.50500.624200 | Installation of temporary Main door | 7d | 2026-07-02 | 2026-07-08 | 639 |  | Sector-44 Noida(2) | 9378044 |
| 641 | 36900.37000.42500.42700.43000.44400.50500.624300 | Fire sprinkler pipe fixing | 3d | 2026-07-02 | 2026-07-04 | 624, 639 |  | Sector-44 Noida(2) | 9378054 |
| 642 | 36900.37000.42500.42700.43000.44400.50500.624400 | Internal Plumbing Works | 7d | 2026-07-02 | 2026-07-08 | 639 |  | Sector-44 Noida(2) | 9378064 |
| 643 | 36900.37000.42500.42700.43000.44400.50500.624500 | Waterproofing | 12d | 2026-07-09 | 2026-07-20 | 642 |  | Sector-44 Noida(2) | 9378074 |
| 644 | 36900.37000.42500.42700.43000.44400.50500.624600 | Internal Plaster | 15d | 2026-07-21 | 2026-08-04 | 642, 643 |  | Sector-44 Noida(2) | 9378084 |
| 645 | 36900.37000.42500.42700.43000.44400.50500.624700 | IPS flooring work | 11d | 2026-07-02 | 2026-07-12 | 639 |  | Sector-44 Noida(2) | 9378094 |
| 646 | 36900.37000.42500.42700.43000.44400.50500.624800 | Toilet dado work | 16d | 2026-08-05 | 2026-08-20 | 642, 643, 644 |  | Sector-44 Noida(2) | 9378104 |
| 647 | 36900.37000.42500.42700.43000.44400.50500.624900 | Toilet flooring work | 16d | 2026-08-21 | 2026-09-05 | 646 |  | Sector-44 Noida(2) | 9378114 |
| 648 | 36900.37000.42500.42700.43000.44400.50500.625000 | Living dinning flooring | 16d | 2026-09-06 | 2026-09-21 | 645, 647 |  | Sector-44 Noida(2) | 9378124 |
| 649 | 36900.37000.42500.42700.43000.44400.50500.625100 | Electrical wiring work | 10d | 2026-09-12 | 2026-09-21 | 648FS-10d |  | Sector-44 Noida(2) | 9378134 |
| 650 | 36900.37000.42500.42700.43000.44400.50500.625200 | Aluminium door-window fixing | 17d | 2026-09-14 | 2026-09-30 | 640, 649FS-8d |  | Sector-44 Noida(2) | 9378144 |
| 651 | 36900.37000.42500.42700.43000.44400.50500.625300 | Putty primer coat | 8d | 2026-09-23 | 2026-09-30 | 650FS-8d |  | Sector-44 Noida(2) | 9378154 |
| 652 | 36900.37000.42500.42700.43000.44400.50500.625400 | Prehung door fixing | 7d | 2026-09-26 | 2026-10-02 | 651FS-5d |  | Sector-44 Noida(2) | 9378164 |
| 653 | 36900.37000.42500.42700.43000.44400.50500.625500 | Painting 1st coat | 10d | 2026-10-03 | 2026-10-12 | 652 |  | Sector-44 Noida(2) | 9378174 |
| 654 | 36900.37000.42500.42700.43000.44400.50500.625600 | False Ceiling panel fixing | 8d | 2026-10-18 | 2026-10-25 | 637, 653 |  | Sector-44 Noida(2) | 9378184 |
| 655 | 36900.37000.42500.42700.43000.44400.50600 | **22nd Floor** | 124d | 2026-07-02 | 2026-12-17 |  | start no earlier than 2026-07-02 | Sector-44 Noida(2) | 9362034 |
| 656 | 36900.37000.42500.42700.43000.44400.50600.625700 | Block Work | 7d | 2026-07-02 | 2026-07-08 | 292 |  | Sector-44 Noida(2) | 9378194 |
| 657 | 36900.37000.42500.42700.43000.44400.50600.625800 | Installation of temporary Main door | 7d | 2026-07-09 | 2026-07-15 | 656 |  | Sector-44 Noida(2) | 9378204 |
| 658 | 36900.37000.42500.42700.43000.44400.50600.625900 | Fire sprinkler pipe fixing | 3d | 2026-07-09 | 2026-07-11 | 641, 656 |  | Sector-44 Noida(2) | 9378214 |
| 659 | 36900.37000.42500.42700.43000.44400.50600.626000 | Internal Plumbing Works | 7d | 2026-07-09 | 2026-07-15 | 656 |  | Sector-44 Noida(2) | 9378224 |
| 660 | 36900.37000.42500.42700.43000.44400.50600.626100 | Waterproofing | 12d | 2026-07-16 | 2026-07-27 | 659 |  | Sector-44 Noida(2) | 9378234 |
| 661 | 36900.37000.42500.42700.43000.44400.50600.626200 | Internal Plaster | 15d | 2026-07-28 | 2026-08-11 | 659, 660 |  | Sector-44 Noida(2) | 9378244 |
| 662 | 36900.37000.42500.42700.43000.44400.50600.626300 | IPS flooring work | 11d | 2026-07-09 | 2026-07-19 | 656 |  | Sector-44 Noida(2) | 9378254 |
| 663 | 36900.37000.42500.42700.43000.44400.50600.626400 | Toilet dado work | 20d | 2026-08-12 | 2026-08-31 | 659, 660, 661 |  | Sector-44 Noida(2) | 9378264 |
| 664 | 36900.37000.42500.42700.43000.44400.50600.626500 | Toilet flooring work | 16d | 2026-09-01 | 2026-09-16 | 663 |  | Sector-44 Noida(2) | 9378274 |
| 665 | 36900.37000.42500.42700.43000.44400.50600.626600 | Living dinning flooring | 16d | 2026-09-17 | 2026-10-02 | 662, 664 |  | Sector-44 Noida(2) | 9378284 |
| 666 | 36900.37000.42500.42700.43000.44400.50600.626700 | Electrical wiring work | 10d | 2026-09-23 | 2026-10-02 | 665FS-10d |  | Sector-44 Noida(2) | 9378294 |
| 667 | 36900.37000.42500.42700.43000.44400.50600.626800 | Aluminium door-window fixing | 17d | 2026-09-25 | 2026-10-11 | 657, 666FS-8d |  | Sector-44 Noida(2) | 9378304 |
| 668 | 36900.37000.42500.42700.43000.44400.50600.626900 | Putty primer coat | 8d | 2026-10-04 | 2026-10-11 | 667FS-8d |  | Sector-44 Noida(2) | 9378314 |
| 669 | 36900.37000.42500.42700.43000.44400.50600.627000 | Prehung door fixing | 7d | 2026-10-07 | 2026-10-13 | 668FS-5d |  | Sector-44 Noida(2) | 9378324 |
| 670 | 36900.37000.42500.42700.43000.44400.50600.627100 | Painting 1st coat | 10d | 2026-10-14 | 2026-10-23 | 669 |  | Sector-44 Noida(2) | 9378334 |
| 671 | 36900.37000.42500.42700.43000.44400.50600.627200 | False Ceiling panel fixing | 8d | 2026-10-26 | 2026-12-17 | 654, 670 |  | Sector-44 Noida(2) | 9378344 |

| ID | WBS | Task | Duration | Start | Finish | Predecessors | Constraint | Calendar | Unique_Task_ID |
| --- | --- | --- | --- | --- | --- | --- | --- | --- | --- |
| 672 | 36900.37000.42500.42700.43000.44400.50700 | **23rd Floor** | 148d | 2026-07-09 | 2027-01-17 |  | start no earlier than 2026-07-09 | Sector-44 Noida(2) | 9362024 |
| 673 | 36900.37000.42500.42700.43000.44400.50700.627300 | Block Work | 24d | 2026-07-09 | 2026-08-01 | 293 |  | Sector-44 Noida(2) | 9378354 |
| 674 | 36900.37000.42500.42700.43000.44400.50700.627400 | Installation of temporary Main door | 7d | 2026-08-02 | 2026-08-08 | 673 |  | Sector-44 Noida(2) | 9378364 |
| 675 | 36900.37000.42500.42700.43000.44400.50700.627500 | Fire sprinkler pipe fixing | 3d | 2026-08-02 | 2026-08-04 | 658, 673 |  | Sector-44 Noida(2) | 9378374 |
| 676 | 36900.37000.42500.42700.43000.44400.50700.627600 | Internal Plumbing Works | 7d | 2026-08-02 | 2026-08-08 | 673 |  | Sector-44 Noida(2) | 9378384 |
| 677 | 36900.37000.42500.42700.43000.44400.50700.627700 | Waterproofing | 12d | 2026-08-09 | 2026-08-20 | 676 |  | Sector-44 Noida(2) | 9378394 |
| 678 | 36900.37000.42500.42700.43000.44400.50700.627800 | Internal Plaster | 11d | 2026-08-21 | 2026-08-31 | 676, 677 |  | Sector-44 Noida(2) | 9378404 |
| 679 | 36900.37000.42500.42700.43000.44400.50700.627900 | IPS flooring work | 11d | 2026-08-02 | 2026-08-12 | 673 |  | Sector-44 Noida(2) | 9378414 |
| 680 | 36900.37000.42500.42700.43000.44400.50700.628000 | Toilet dado work | 20d | 2026-09-01 | 2026-09-20 | 676, 677, 678 |  | Sector-44 Noida(2) | 9378424 |
| 681 | 36900.37000.42500.42700.43000.44400.50700.628100 | Toilet flooring work | 16d | 2026-09-21 | 2026-10-06 | 680 |  | Sector-44 Noida(2) | 9378434 |
| 682 | 36900.37000.42500.42700.43000.44400.50700.628200 | Living dinning flooring | 29d | 2026-10-07 | 2026-12-19 | 679, 681 |  | Sector-44 Noida(2) | 9378444 |
| 683 | 36900.37000.42500.42700.43000.44400.50700.628300 | Electrical wiring work | 10d | 2026-10-26 | 2026-12-19 | 682FS-10d |  | Sector-44 Noida(2) | 9378454 |
| 684 | 36900.37000.42500.42700.43000.44400.50700.628400 | Aluminium door-window fixing | 17d | 2026-10-28 | 2026-12-28 | 674, 683FS-8d |  | Sector-44 Noida(2) | 9378464 |
| 685 | 36900.37000.42500.42700.43000.44400.50700.628500 | Putty primer coat | 8d | 2026-12-21 | 2026-12-28 | 684FS-8d |  | Sector-44 Noida(2) | 9378474 |
| 686 | 36900.37000.42500.42700.43000.44400.50700.628600 | Prehung door fixing | 7d | 2026-12-24 | 2026-12-30 | 685FS-5d |  | Sector-44 Noida(2) | 9378484 |
| 687 | 36900.37000.42500.42700.43000.44400.50700.628700 | Painting 1st coat | 10d | 2026-12-31 | 2027-01-09 | 686 |  | Sector-44 Noida(2) | 9378494 |
| 688 | 36900.37000.42500.42700.43000.44400.50700.628800 | False Ceiling panel fixing | 8d | 2027-01-10 | 2027-01-17 | 671, 687 |  | Sector-44 Noida(2) | 9378504 |
| 689 | 36900.37000.42500.42700.43000.191900 | **Terrace finishing** | 70d | 2026-09-17 | 2027-01-09 |  | start no earlier than 2026-09-17 | Sector-44 Noida(2) | 9366114 |
| 690 | 36900.37000.42500.42700.43000.191900.336200 | Terrace waterproofing | 30d | 2026-09-17 | 2026-10-16 | 765FS+10d |  | Sector-44 Noida(2) | 9369724 |
| 691 | 36900.37000.42500.42700.43000.191900.336300 | Terrace Finishing | 40d | 2026-10-17 | 2027-01-09 | 690 |  | Sector-44 Noida(2) | 9369734 |
| 692 | 36900.37000.42500.42700.43000.96700 | **Common area finishing** | 190d | 2026-06-23 | 2027-02-12 |  | start no earlier than 2026-06-23 | Sector-44 Noida(2) | 9362164 |
| 693 | 36900.37000.42500.42700.43000.96700.336400 | Masonary Work | 40d | 2026-06-23 | 2026-08-01 | 252 |  | Sector-44 Noida(2) | 9369744 |
| 694 | 36900.37000.42500.42700.43000.96700.336500 | Fire sprinkler pipe fixing | 40d | 2026-06-28 | 2026-08-06 | 252FS+5d |  | Sector-44 Noida(2) | 9369754 |
| 695 | 36900.37000.42500.42700.43000.96700.336600 | Corridoor, staircase, shaft Plaster & whitewash | 80d | 2026-07-03 | 2026-09-20 | 693FS-30d |  | Sector-44 Noida(2) | 9369764 |
| 696 | 36900.37000.42500.42700.43000.96700.336700 | Staircase railing fixing | 80d | 2026-07-13 | 2026-09-30 | 693FS-20d |  | Sector-44 Noida(2) | 9369774 |
| 697 | 36900.37000.42500.42700.43000.96700.336800 | Fire staircase flooring | 100d | 2026-07-03 | 2026-10-10 | 696FS-90d |  | Sector-44 Noida(2) | 9369784 |
| 698 | 36900.37000.42500.42700.43000.96700.336900 | Main staircase flooring | 100d | 2026-07-03 | 2026-10-10 | 696FS-90d |  | Sector-44 Noida(2) | 9369794 |
| 699 | 36900.37000.42500.42700.43000.96700.337000 | Fire door work | 120d | 2026-08-12 | 2027-01-23 | 697FS-60d |  | Sector-44 Noida(2) | 9369804 |
| 700 | 36900.37000.42500.42700.43000.96700.337100 | Lobby flooring & Corridor | 170d | 2026-07-13 | 2027-02-12 | 698FS-90d |  | Sector-44 Noida(2) | 9369814 |
| 701 | 36900.37000.42500.42700.43000.96700.337200 | Ceiling & wall putty-primer | 80d | 2026-10-01 | 2027-02-02 | 700FS-90d |  | Sector-44 Noida(2) | 9369824 |
| 702 | 36900.37000.42500.42700.43000.96700.337300 | Ceiling & wall painting | 75d | 2026-09-11 | 2027-01-08 | 701FS-100d |  | Sector-44 Noida(2) | 9369834 |
| 703 | 36900.37000.42500.42700.43000.96700.337400 | Electrical wiring work | 70d | 2026-08-17 | 2026-10-25 | 702FS-100d |  | Sector-44 Noida(2) | 9369844 |
| 704 | 36900.37000.42500.42700.43000.96700.337500 | Light fixture supply & installation | 30d | 2026-09-11 | 2026-10-10 | 703FS-45d |  | Sector-44 Noida(2) | 9369854 |
| 705 | 36900.37000.42500.42700.43000.96700.337600 | Installation of fire signages including Basements | 20d | 2027-01-09 | 2027-01-28 | 702 |  | Sector-44 Noida(2) | 9369864 |

| ID | WBS | Task | Duration | Start | Finish | Predecessors | Constraint | Calendar | Unique_Task_ID |
| --- | --- | --- | --- | --- | --- | --- | --- | --- | --- |
| 706 | 36900.37000.42500.42700.43000.48000 | **Balcony Glass Railing** | 161d | 2026-01-05 | 2026-06-14 |  | start no earlier than 2026-01-05 | Sector-44 Noida(2) | 9360894 |
| 707 | 36900.37000.42500.42700.43000.48000.337700 | 1st Floor | 7d | 2026-01-05 | 2026-01-11 | 299 |  | Sector-44 Noida(2) | 9369874 |
| 708 | 36900.37000.42500.42700.43000.48000.337800 | 2nd Floor | 7d | 2026-01-12 | 2026-01-18 | 707 |  | Sector-44 Noida(2) | 9369884 |
| 709 | 36900.37000.42500.42700.43000.48000.337900 | 3rd Floor | 7d | 2026-01-19 | 2026-01-25 | 708 |  | Sector-44 Noida(2) | 9369894 |
| 710 | 36900.37000.42500.42700.43000.48000.338000 | 4th Floor | 7d | 2026-01-26 | 2026-02-01 | 709 |  | Sector-44 Noida(2) | 9369904 |
| 711 | 36900.37000.42500.42700.43000.48000.338100 | 5th Floor | 7d | 2026-02-02 | 2026-02-08 | 710 |  | Sector-44 Noida(2) | 9369914 |
| 712 | 36900.37000.42500.42700.43000.48000.338200 | 6th Floor | 7d | 2026-02-09 | 2026-02-15 | 711 |  | Sector-44 Noida(2) | 9369924 |
| 713 | 36900.37000.42500.42700.43000.48000.338300 | 7th Floor | 7d | 2026-02-16 | 2026-02-22 | 712 |  | Sector-44 Noida(2) | 9369934 |
| 714 | 36900.37000.42500.42700.43000.48000.338400 | 8th Floor | 7d | 2026-02-23 | 2026-03-01 | 713 |  | Sector-44 Noida(2) | 9369944 |
| 715 | 36900.37000.42500.42700.43000.48000.338500 | 9th Floor | 7d | 2026-03-02 | 2026-03-08 | 714 |  | Sector-44 Noida(2) | 9369954 |
| 716 | 36900.37000.42500.42700.43000.48000.338600 | 10th Floor | 7d | 2026-03-09 | 2026-03-15 | 715 |  | Sector-44 Noida(2) | 9369964 |
| 717 | 36900.37000.42500.42700.43000.48000.338700 | 11th Floor | 7d | 2026-03-16 | 2026-03-22 | 716 |  | Sector-44 Noida(2) | 9369974 |
| 718 | 36900.37000.42500.42700.43000.48000.338800 | 12th Floor | 7d | 2026-03-23 | 2026-03-29 | 717 |  | Sector-44 Noida(2) | 9369984 |
| 719 | 36900.37000.42500.42700.43000.48000.338900 | 13th Floor | 7d | 2026-03-30 | 2026-04-05 | 718 |  | Sector-44 Noida(2) | 9369994 |
| 720 | 36900.37000.42500.42700.43000.48000.339000 | 14th Floor | 7d | 2026-04-06 | 2026-04-12 | 719 |  | Sector-44 Noida(2) | 9370004 |
| 721 | 36900.37000.42500.42700.43000.48000.339100 | 15th Floor | 7d | 2026-04-13 | 2026-04-19 | 720 |  | Sector-44 Noida(2) | 9370014 |
| 722 | 36900.37000.42500.42700.43000.48000.339200 | 16th Floor | 7d | 2026-04-20 | 2026-04-26 | 721 |  | Sector-44 Noida(2) | 9370024 |
| 723 | 36900.37000.42500.42700.43000.48000.339300 | 17th Floor | 7d | 2026-04-27 | 2026-05-03 | 722 |  | Sector-44 Noida(2) | 9370034 |
| 724 | 36900.37000.42500.42700.43000.48000.339400 | 18th Floor | 7d | 2026-05-04 | 2026-05-10 | 723 |  | Sector-44 Noida(2) | 9370044 |
| 725 | 36900.37000.42500.42700.43000.48000.339500 | 19th Floor | 7d | 2026-05-11 | 2026-05-17 | 724 |  | Sector-44 Noida(2) | 9370054 |
| 726 | 36900.37000.42500.42700.43000.48000.339600 | 20th Floor | 7d | 2026-05-18 | 2026-05-24 | 725 |  | Sector-44 Noida(2) | 9370064 |
| 727 | 36900.37000.42500.42700.43000.48000.339700 | 21st Floor | 7d | 2026-05-25 | 2026-05-31 | 726 |  | Sector-44 Noida(2) | 9370074 |
| 728 | 36900.37000.42500.42700.43000.48000.339800 | 22nd Floor | 7d | 2026-06-01 | 2026-06-07 | 727 |  | Sector-44 Noida(2) | 9370084 |
| 729 | 36900.37000.42500.42700.43000.48000.339900 | 23rd Floor | 7d | 2026-06-08 | 2026-06-14 | 728 |  | Sector-44 Noida(2) | 9370094 |

| ID | WBS | Task | Duration | Start | Finish | Predecessors | Constraint | Calendar | Unique_Task_ID |
| --- | --- | --- | --- | --- | --- | --- | --- | --- | --- |
| 730 | 36900.37000.42500.42700.96100 | **MEP Work** | 282d | 2026-05-29 | 2027-04-20 |  | start no earlier than 2026-05-29 | Sector-44 Noida(2) | 9362114 |
| 731 | 36900.37000.42500.42700.96100.98400 | **Electrical Work** | 282d | 2026-05-29 | 2027-04-20 |  | start no earlier than 2026-05-29 | Sector-44 Noida(2) | 9362294 |
| 732 | 36900.37000.42500.42700.96100.98400.340000 | Cable Tray | 30d | 2026-07-28 | 2026-08-26 | 269 |  | Sector-44 Noida(2) | 9370104 |
| 733 | 36900.37000.42500.42700.96100.98400.340100 | Cable, main & sub main | 30d | 2026-05-29 | 2026-06-27 | 732FS-90d |  | Sector-44 Noida(2) | 9370114 |
| 734 | 36900.37000.42500.42700.96100.98400.340200 | LT panel & DB | 40d | 2026-06-28 | 2026-08-06 | 732FS-60d |  | Sector-44 Noida(2) | 9370124 |
| 735 | 36900.37000.42500.42700.96100.98400.340300 | Earthing Works | 15d | 2026-08-27 | 2026-09-10 | 732 |  | Sector-44 Noida(2) | 9370134 |
| 736 | 36900.37000.42500.42700.96100.98400.340400 | Advanced Lightening Protection system | 15d | 2026-08-17 | 2026-08-31 | 735FS-25d |  | Sector-44 Noida(2) | 9370144 |
| 737 | 36900.37000.42500.42700.96100.98400.340500 | Energy meter | 15d | 2026-06-28 | 2026-07-12 | 733 |  | Sector-44 Noida(2) | 9370154 |
| 738 | 36900.37000.42500.42700.96100.98400.340600 | Inverter / UPS | 10d | 2026-08-07 | 2026-08-16 | 733, 734, 737FS-5d |  | Sector-44 Noida(2) | 9370164 |
| 739 | 36900.37000.42500.42700.96100.98400.340700 | HVAC & Exhaust fan | 30d | 2026-07-28 | 2026-08-26 | 732FS-30d |  | Sector-44 Noida(2) | 9370174 |
| 740 | 36900.37000.42500.42700.96100.98400.340800 | FTTH | 10d | 2026-07-13 | 2026-07-22 | 734FS-25d |  | Sector-44 Noida(2) | 9370184 |
| 741 | 36900.37000.42500.42700.96100.98400.340900 | Security System - FA & PA | 10d | 2026-07-13 | 2026-07-22 | 734FS-25d |  | Sector-44 Noida(2) | 9370194 |
| 742 | 36900.37000.42500.42700.96100.98400.341000 | T&C of complete system | 59d | 2027-02-21 | 2027-04-20 | 704, 734, 736, 737, 738, 739, 740, 741, 3435FS-45d |  | Sector-44 Noida(2) | 9370204 |
| 743 | 36900.37000.42500.42700.96100.105200 | **Plumbing work** | 99d | 2026-07-19 | 2026-10-25 |  | start no earlier than 2026-07-19 | Sector-44 Noida(2) | 9362604 |
| 744 | 36900.37000.42500.42700.96100.105200.341100 | Terrace looping | 20d | 2026-07-19 | 2026-08-07 | 294 |  | Sector-44 Noida(2) | 9370214 |
| 745 | 36900.37000.42500.42700.96100.105200.341200 | Shaft Plumbing | 30d | 2026-08-22 | 2026-09-20 | 695FS-30d, 744 |  | Sector-44 Noida(2) | 9370224 |
| 746 | 36900.37000.42500.42700.96100.105200.341300 | CP sanitary fixture supply | 20d | 2026-09-21 | 2026-10-10 | 745 |  | Sector-44 Noida(2) | 9370234 |
| 747 | 36900.37000.42500.42700.96100.105200.341400 | Cold & flushing water supply | 20d | 2026-09-21 | 2026-10-10 | 745 |  | Sector-44 Noida(2) | 9370244 |
| 748 | 36900.37000.42500.42700.96100.105200.341500 | Misc work | 15d | 2026-09-26 | 2026-10-10 | 747FS-15d |  | Sector-44 Noida(2) | 9370254 |
| 749 | 36900.37000.42500.42700.96100.105200.341600 | Installation of PHE pumps | 25d | 2026-08-08 | 2026-09-01 | 744 |  | Sector-44 Noida(2) | 9370264 |
| 750 | 36900.37000.42500.42700.96100.105200.341700 | T&C of complete system | 15d | 2026-10-11 | 2026-10-25 | 3417, 3418, 3419, 744, 745, 747, 748, 749 |  | Sector-44 Noida(2) | 9370274 |
| 751 | 36900.37000.42500.42700.96100.119000 | **Fire fighting work** | 126d | 2026-08-22 | 2027-02-08 |  | start no earlier than 2026-08-22 | Sector-44 Noida(2) | 9362954 |
| 752 | 36900.37000.42500.42700.96100.119000.341800 | Fire hydrant work | 25d | 2026-08-22 | 2026-09-15 | 695FS-30d |  | Sector-44 Noida(2) | 9370284 |
| 753 | 36900.37000.42500.42700.96100.119000.341900 | Pipe connection & sprinkler installation | 15d | 2026-09-16 | 2026-09-30 | 752 |  | Sector-44 Noida(2) | 9370294 |
| 754 | 36900.37000.42500.42700.96100.119000.342000 | Shaft Downtake works | 25d | 2026-08-22 | 2026-09-15 | 294, 695FS-30d |  | Sector-44 Noida(2) | 9370304 |
| 755 | 36900.37000.42500.42700.96100.119000.342100 | Connection to pump room | 10d | 2026-09-16 | 2026-09-25 | 754 |  | Sector-44 Noida(2) | 9370314 |
| 756 | 36900.37000.42500.42700.96100.119000.342200 | Installation of FF pumps | 15d | 2026-09-16 | 2026-09-30 | 752, 754 |  | Sector-44 Noida(2) | 9370324 |
| 757 | 36900.37000.42500.42700.96100.119000.342300 | T&C of complete system | 16d | 2027-01-24 | 2027-02-08 | 3420, 694, 699, 705FS-21d, 753, 755, 756, 675 |  | Sector-44 Noida(2) | 9370334 |

| ID | WBS | Task | Duration | Start | Finish | Predecessors | Complete | Constraint | Calendar | Unique_Task_ID |
| --- | --- | --- | --- | --- | --- | --- | --- | --- | --- | --- |
| 758 | 36900.37000.42500.42700.96100.187800 | **Lift work** | 84d | 2026-07-29 | 2026-10-20 |  |  | start no earlier than 2026-07-29 | Sector-44 Noida(2) | 9365814 |
| 759 | 36900.37000.42500.42700.96100.187800.342400 | Lift Shaft/Pit Handover | 12d | 2026-07-29 | 2026-08-09 | 295 |  |  | Sector-44 Noida(2) | 9370344 |
| 760 | 36900.37000.42500.42700.96100.187800.342500 | Lift installation work | 55d | 2026-08-10 | 2026-10-03 | 759 |  |  | Sector-44 Noida(2) | 9370354 |
| 761 | 36900.37000.42500.42700.96100.187800.342600 | Lift testing and commissioning | 17d | 2026-10-04 | 2026-10-20 | 760 |  |  | Sector-44 Noida(2) | 9370364 |
| 762 | 36900.37000.42500.42700.127200 | **External Paint Works** | 80d | 2026-07-19 | 2026-10-06 |  |  | start no earlier than 2026-07-19 | Sector-44 Noida(2) | 9364264 |
| 763 | 36900.37000.42500.42700.127200.240600 | Surface prepration | 30d | 2026-07-19 | 2026-08-17 | 294 |  |  | Sector-44 Noida(2) | 9366874 |
| 764 | 36900.37000.42500.42700.127200.240700 | External Painting (Primer, texture & first coat) | 50d | 2026-08-18 | 2026-10-06 | 763 |  |  | Sector-44 Noida(2) | 9366884 |
| 765 | 36900.37000.42500.42700.127200.240800 | Final coat of painting | 40d | 2026-07-29 | 2026-09-06 | 764FS-70d |  |  | Sector-44 Noida(2) | 9366894 |
| 766 | 36900.37000.42500.42700.127200.240900 | Misc. work | 20d | 2026-08-18 | 2026-09-06 | 763 |  |  | Sector-44 Noida(2) | 9366904 |
| 767 | 36900.37000.42500.42700.220200 | OC Application/Readiness | 1d | 2027-04-21 | 2027-04-21 | 742, 750, 757, 761, 691, 729, 688, 697, 698, 700, 3421 |  |  | Sector-44 Noida(2) | 9366194 |
| 768 | 36900.37000.42500.42700.220300 | OC Receipt | 60d | 2027-08-11 | 2027-10-09 | 767, 85, 86, 94, 95, 3414, 3405, 3395 |  |  | Sector-44 Noida(2) | 9366204 |
| 769 | 36900.37000.42500.42700.108300 | **Post OC Activities** | 355d | 2027-09-10 | 2028-10-13 |  |  | start no earlier than 2027-09-10 | Sector-44 Noida(2) | 9364094 |
| 770 | 36900.37000.42500.42700.108300.241000 | CP & Sanitaryware installation | 120d | 2027-09-10 | 2028-02-21 | 768FS-30d, 746 |  |  | Sector-44 Noida(2) | 9366914 |
| 771 | 36900.37000.42500.42700.108300.241100 | Electrical Fixtures And Fittings installations | 120d | 2027-09-10 | 2028-02-21 | 768FS-30d |  |  | Sector-44 Noida(2) | 9366924 |
| 772 | 36900.37000.42500.42700.108300.241200 | Final Coat Paint Internal | 90d | 2027-09-10 | 2028-01-22 | 768FS-30d |  |  | Sector-44 Noida(2) | 9366934 |
| 773 | 36900.37000.42500.42700.108300.241300 | Split AC Units installation | 100d | 2028-02-07 | 2028-05-16 | 772FS+15d |  |  | Sector-44 Noida(2) | 9366944 |
| 774 | 36900.37000.42500.42700.108300.241400 | Wooden Flooring | 180d | 2027-09-10 | 2028-04-21 | 768FS-30d |  |  | Sector-44 Noida(2) | 9366954 |
| 775 | 36900.37000.42500.42700.108300.241500 | Offer to possession | 150d | 2028-05-17 | 2028-10-13 | 768FS+120d, 766, 770, 771, 773, 774 |  |  | Sector-44 Noida(2) | 9366214 |
| 776 | 36900.37000.42400 | **Tower-2 (2B+S+P+23)** | 1135d | 2025-01-18 | 2028-07-10 |  | 1% | start no earlier than 2025-01-18 | Sector-44 Noida(2) | 9360664 |
| 777 | 36900.37000.42400.109100 | **Soldier Piling & Excavation work** | 164d | 2025-01-18 | 2025-06-30 |  | 53% | start no earlier than 2025-01-18 | Sector-44 Noida(2) | 9362634 |
| 778 | 36900.37000.42400.109100.127300 | **Till 2.5 Mtr** | 70d | 2025-01-18 | 2025-03-28 |  | 100% | start no earlier than 2025-01-18 | Sector-44 Noida(2) | 9365964 |
| 779 | 36900.37000.42400.109100.127300.204100 | H beam pile driving - 12m | 32d | 2025-01-18 | 2025-03-02 | 47SS+357d | 100% | start no earlier than 2025-01-18 | Sector-44 Noida(2) | 9366964 |
| 780 | 36900.37000.42400.109100.127300.204200 | Excavation from NGL to 2.5m | 34d | 2025-01-18 | 2025-03-11 | 779FS-44d | 100% | start no earlier than 2025-01-18 | Sector-44 Noida(2) | 9366974 |
| 781 | 36900.37000.42400.109100.127300.204300 | Plank installation & anchoring till 2.5m | 32d | 2025-02-20 | 2025-03-28 | 780FS-28d | 100% | start no earlier than 2025-02-20 | Sector-44 Noida(2) | 9366984 |

| ID | WBS | Task | Duration | Start | Finish | Predecessors | Complete | Constraint | Calendar | Unique_Task_ID |
| --- | --- | --- | --- | --- | --- | --- | --- | --- | --- | --- |
| 782 | 36900.37000.42400.109100.185700 | **2.5 mtrs till 5 mtrs** | 67d | 2025-02-25 | 2025-05-02 |  | 42% | start no earlier than 2025-02-25 | Sector-44 Noida(2) | 9366034 |
| 783 | 36900.37000.42400.109100.185700.204400 | Excavation from 2.5m till 5m | 18d | 2025-02-25 | 2025-03-30 | 781FS-31d | 100% | start no earlier than 2025-02-25 | Sector-44 Noida(2) | 9366994 |
| 784 | 36900.37000.42400.109100.185700.204500 | Plank installation & anchoring till 2.5m till 5m | 38d | 2025-03-25 | 2025-05-02 | 783FS-7d | 15% |  | Sector-44 Noida(2) | 9367004 |
| 785 | 36900.37000.42400.109100.190300 | **12 mts till NTA fotting bottom** | 59d | 2025-05-03 | 2025-06-30 |  |  | start no earlier than 2025-05-03 | Sector-44 Noida(2) | 9366044 |
| 786 | 36900.37000.42400.109100.190300.241600 | Excavation from 5m to fotting PCC bottom | 26d | 2025-05-03 | 2025-05-28 | 784 |  |  | Sector-44 Noida(2) | 9367014 |
| 787 | 36900.37000.42400.109100.190300.241700 | Plank installation & anchoring from 12m to footing PCC bottom | 48d | 2025-05-14 | 2025-06-30 | 786FS-15d |  |  | Sector-44 Noida(2) | 9367024 |
| 788 | 36900.37000.42400.60100 | **Sub-Structure works** | 261d | 2025-05-17 | 2026-03-18 |  |  | start no earlier than 2025-05-17 | Sector-44 Noida(2) | 9362084 |
| 789 | 36900.37000.42400.60100.127400 | **Soil bed preparation** | 6d | 2025-05-17 | 2025-05-22 |  |  | start no earlier than 2025-05-17 | Sector-44 Noida(2) | 9364274 |
| 790 | 36900.37000.42400.60100.127400.241800 | Excavation completion | 2d | 2025-05-17 | 2025-05-18 | 787FS-45d |  |  | Sector-44 Noida(2) | 9367034 |
| 791 | 36900.37000.42400.60100.127400.241900 | Surface dressing | 2d | 2025-05-19 | 2025-05-20 | 790 |  |  | Sector-44 Noida(2) | 9367044 |
| 792 | 36900.37000.42400.60100.127400.242000 | ATT | 1d | 2025-05-21 | 2025-05-21 | 791 |  |  | Sector-44 Noida(2) | 9367054 |
| 793 | 36900.37000.42400.60100.127400.242100 | PCC | 1d | 2025-05-22 | 2025-05-22 | 790FF, 791SF, 792 |  |  | Sector-44 Noida(2) | 9367064 |
| 794 | 36900.37000.42400.60100.102100 | **RCC Works** | 70d | 2025-05-23 | 2025-07-31 |  |  | start no earlier than 2025-05-23 | Sector-44 Noida(2) | 9362384 |
| 795 | 36900.37000.42400.60100.102100.187900 | **Raft** | 20d | 2025-05-23 | 2025-06-11 |  |  | start no earlier than 2025-05-23 | Sector-44 Noida(2) | 9366004 |
| 796 | 36900.37000.42400.60100.102100.187900.342700 | Reinforcement Work | 18d | 2025-05-23 | 2025-06-09 | 793 |  |  | Sector-44 Noida(2) | 9370374 |
| 797 | 36900.37000.42400.60100.102100.187900.342800 | Shuttering work | 10d | 2025-05-31 | 2025-06-09 | 796FS-10d |  |  | Sector-44 Noida(2) | 9370384 |
| 798 | 36900.37000.42400.60100.102100.187900.342900 | Concreteing work | 2d | 2025-06-10 | 2025-06-11 | 796FF, 797 |  |  | Sector-44 Noida(2) | 9370394 |
| 799 | 36900.37000.42400.60100.102100.122700 | **Basement-2 Roof Slab** | 25d | 2025-06-12 | 2025-07-06 |  |  | start no earlier than 2025-06-12 | Sector-44 Noida(2) | 9364144 |
| 800 | 36900.37000.42400.60100.102100.122700.183500 | **B2 Roof Slab** | 25d | 2025-06-12 | 2025-07-06 |  |  | start no earlier than 2025-06-12 | Sector-44 Noida(2) | 9365754 |
| 801 | 36900.37000.42400.60100.102100.122700.183500.628900 | Shuttering Work | 17d | 2025-06-12 | 2025-06-28 | 798 |  |  | Sector-44 Noida(2) | 9378514 |
| 802 | 36900.37000.42400.60100.102100.122700.183500.629000 | Reinforcement Work | 12d | 2025-06-24 | 2025-07-05 | 801FS-5d |  |  | Sector-44 Noida(2) | 9378524 |
| 803 | 36900.37000.42400.60100.102100.122700.183500.629100 | Concreteing work | 1d | 2025-07-06 | 2025-07-06 | 801FF, 802 |  |  | Sector-44 Noida(2) | 9378534 |
| 804 | 36900.37000.42400.60100.102100.122600 | **Basement-1 Roof Slab** | 25d | 2025-07-07 | 2025-07-31 |  |  | start no earlier than 2025-07-07 | Sector-44 Noida(2) | 9364154 |
| 805 | 36900.37000.42400.60100.102100.122600.183900 | **B1 Roof Slab** | 25d | 2025-07-07 | 2025-07-31 |  |  | start no earlier than 2025-07-07 | Sector-44 Noida(2) | 9365744 |
| 806 | 36900.37000.42400.60100.102100.122600.183900.629200 | Shuttering Work | 17d | 2025-07-07 | 2025-07-23 | 803 |  |  | Sector-44 Noida(2) | 9378544 |
| 807 | 36900.37000.42400.60100.102100.122600.183900.629300 | Reinforcement Work | 12d | 2025-07-19 | 2025-07-30 | 806FS-5d |  |  | Sector-44 Noida(2) | 9378554 |
| 808 | 36900.37000.42400.60100.102100.122600.183900.629400 | Concreteing work | 1d | 2025-07-31 | 2025-07-31 | 806FF, 807 |  |  | Sector-44 Noida(2) | 9378564 |

| ID | WBS | Task | Duration | Start | Finish | Predecessors | Constraint | Calendar | Unique_Task_ID |
| --- | --- | --- | --- | --- | --- | --- | --- | --- | --- |
| 809 | 36900.37000.42400.60100.100900 | **Sub structure finishing works** | 140d | 2025-09-15 | 2026-03-18 |  | start no earlier than 2025-09-15 | Sector-44 Noida(2) | 9362254 |
| 810 | 36900.37000.42400.60100.100900.105100 | **Basement-2** | 110d | 2025-09-15 | 2026-02-16 |  | start no earlier than 2025-09-15 | Sector-44 Noida(2) | 9362524 |
| 811 | 36900.37000.42400.60100.100900.105100.343000 | Masonary | 30d | 2025-09-15 | 2025-10-14 | 808FS+45d |  | Sector-44 Noida(2) | 9370404 |
| 812 | 36900.37000.42400.60100.100900.105100.343100 | Structural Steel | 30d | 2025-09-15 | 2025-10-14 | 808FS+45d |  | Sector-44 Noida(2) | 9370414 |
| 813 | 36900.37000.42400.60100.100900.105100.343200 | Plaster | 30d | 2025-10-15 | 2025-12-28 | 811, 812 |  | Sector-44 Noida(2) | 9370424 |
| 814 | 36900.37000.42400.60100.100900.105100.343300 | White Wash | 30d | 2025-12-29 | 2026-01-27 | 813 |  | Sector-44 Noida(2) | 9370434 |
| 815 | 36900.37000.42400.60100.100900.105100.343400 | VDF | 60d | 2025-09-30 | 2026-01-12 | 813FS-45d |  | Sector-44 Noida(2) | 9370444 |
| 816 | 36900.37000.42400.60100.100900.105100.343500 | Drain & Sump (incl. gratings) | 60d | 2025-10-30 | 2026-02-11 | 815FS-30d |  | Sector-44 Noida(2) | 9370454 |
| 817 | 36900.37000.42400.60100.100900.105100.343600 | Car parking marking | 30d | 2026-01-13 | 2026-02-11 | 814FS-15d |  | Sector-44 Noida(2) | 9370464 |
| 818 | 36900.37000.42400.60100.100900.105100.343700 | Signages | 30d | 2026-01-18 | 2026-02-16 | 811FF, 812FF, 813FF, 814FS-10d, 815FF, 816FF, 817FF |  | Sector-44 Noida(2) | 9370474 |
| 819 | 36900.37000.42400.60100.100900.103700 | **Basement-1** | 110d | 2025-10-15 | 2026-03-18 |  | start no earlier than 2025-10-15 | Sector-44 Noida(2) | 9362514 |
| 820 | 36900.37000.42400.60100.100900.103700.343800 | Masonary | 30d | 2025-10-15 | 2025-12-28 | 811 |  | Sector-44 Noida(2) | 9370484 |
| 821 | 36900.37000.42400.60100.100900.103700.343900 | Structural Steel | 30d | 2025-10-15 | 2025-12-28 | 811 |  | Sector-44 Noida(2) | 9370494 |
| 822 | 36900.37000.42400.60100.100900.103700.344000 | Plaster | 30d | 2025-12-29 | 2026-01-27 | 820, 821 |  | Sector-44 Noida(2) | 9370504 |
| 823 | 36900.37000.42400.60100.100900.103700.344100 | White Wash | 30d | 2026-01-28 | 2026-02-26 | 822 |  | Sector-44 Noida(2) | 9370514 |
| 824 | 36900.37000.42400.60100.100900.103700.344200 | VDF | 60d | 2025-10-30 | 2026-02-11 | 822FS-45d |  | Sector-44 Noida(2) | 9370524 |
| 825 | 36900.37000.42400.60100.100900.103700.344300 | Drain & Sump (incl. gratings) | 60d | 2026-01-13 | 2026-03-13 | 824FS-30d |  | Sector-44 Noida(2) | 9370534 |
| 826 | 36900.37000.42400.60100.100900.103700.344400 | Car parking marking | 30d | 2026-02-12 | 2026-03-13 | 823FS-15d |  | Sector-44 Noida(2) | 9370544 |
| 827 | 36900.37000.42400.60100.100900.103700.344500 | Signages | 30d | 2026-02-17 | 2026-03-18 | 820FF, 821FF, 822FF, 823FS-10d, 824FF, 825FF, 826FF |  | Sector-44 Noida(2) | 9370554 |
| 828 | 36900.37000.42400.42800 | **Super structure works** | 940d | 2025-08-01 | 2028-07-10 |  | start no earlier than 2025-08-01 | Sector-44 Noida(2) | 9360724 |
| 829 | 36900.37000.42400.42800.46800 | **RCC Works** | 332d | 2025-08-01 | 2026-08-12 |  | start no earlier than 2025-08-01 | Sector-44 Noida(2) | 9360834 |
| 830 | 36900.37000.42400.42800.46800.122100 | **Stilt/GF Slab** | 25d | 2025-08-01 | 2025-08-25 |  | start no earlier than 2025-08-01 | Sector-44 Noida(2) | 9364164 |
| 831 | 36900.37000.42400.42800.46800.122100.186700 | **Stilt/GF Slab** | 25d | 2025-08-01 | 2025-08-25 |  | start no earlier than 2025-08-01 | Sector-44 Noida(2) | 9365734 |
| 832 | 36900.37000.42400.42800.46800.122100.186700.629500 | Shuttering Work | 17d | 2025-08-01 | 2025-08-17 | 808 |  | Sector-44 Noida(2) | 9378574 |
| 833 | 36900.37000.42400.42800.46800.122100.186700.629600 | Reinforcement Work | 12d | 2025-08-13 | 2025-08-24 | 832FS-5d |  | Sector-44 Noida(2) | 9378584 |
| 834 | 36900.37000.42400.42800.46800.122100.186700.629700 | Concreteing work | 1d | 2025-08-25 | 2025-08-25 | 832FF, 833 |  | Sector-44 Noida(2) | 9378594 |

| ID | WBS | Task | Duration | Start | Finish | Predecessors | Constraint | Calendar | Unique_Task_ID |
| --- | --- | --- | --- | --- | --- | --- | --- | --- | --- |
| 835 | 36900.37000.42400.42800.46800.112200 | **Podium-1 Slab** | 25d | 2025-08-26 | 2025-09-19 |  | start no earlier than 2025-08-26 | Sector-44 Noida(2) | 9362964 |
| 836 | 36900.37000.42400.42800.46800.112200.172000 | **Podium-1 Slab** | 25d | 2025-08-26 | 2025-09-19 |  | start no earlier than 2025-08-26 | Sector-44 Noida(2) | 9364624 |
| 837 | 36900.37000.42400.42800.46800.112200.172000.629800 | Shuttering Work | 17d | 2025-08-26 | 2025-09-11 | 834 |  | Sector-44 Noida(2) | 9378604 |
| 838 | 36900.37000.42400.42800.46800.112200.172000.629900 | Reinforcement Work | 12d | 2025-09-07 | 2025-09-18 | 837FS-5d |  | Sector-44 Noida(2) | 9378614 |
| 839 | 36900.37000.42400.42800.46800.112200.172000.630000 | Conduiting work | 1d | 2025-09-18 | 2025-09-18 | 838FS-1d |  | Sector-44 Noida(2) | 9378624 |
| 840 | 36900.37000.42400.42800.46800.112200.172000.630100 | Concreteing work | 1d | 2025-09-19 | 2025-09-19 | 837FF, 838FF, 839 |  | Sector-44 Noida(2) | 9378634 |
| 841 | 36900.37000.42400.42800.46800.112100 | **1st Floor Slab** | 24d | 2025-09-20 | 2025-10-13 |  | start no earlier than 2025-09-20 | Sector-44 Noida(2) | 9362974 |
| 842 | 36900.37000.42400.42800.46800.112100.172100 | **1st Floor Slab** | 24d | 2025-09-20 | 2025-10-13 |  | start no earlier than 2025-09-20 | Sector-44 Noida(2) | 9364634 |
| 843 | 36900.37000.42400.42800.46800.112100.172100.630200 | Shuttering Work | 16d | 2025-09-20 | 2025-10-05 | 840 |  | Sector-44 Noida(2) | 9378644 |
| 844 | 36900.37000.42400.42800.46800.112100.172100.630300 | Reinforcement Work | 12d | 2025-10-01 | 2025-10-12 | 843FS-5d |  | Sector-44 Noida(2) | 9378654 |
| 845 | 36900.37000.42400.42800.46800.112100.172100.630400 | Conduiting work | 1d | 2025-10-12 | 2025-10-12 | 844FS-1d |  | Sector-44 Noida(2) | 9378664 |
| 846 | 36900.37000.42400.42800.46800.112100.172100.630500 | Concreteing work | 1d | 2025-10-13 | 2025-10-13 | 843FF, 844FF, 845 |  | Sector-44 Noida(2) | 9378674 |
| 847 | 36900.37000.42400.42800.46800.112000 | **2nd Floor Slab (1st MIVAN Setup)** | 21d | 2025-10-14 | 2025-12-18 |  | start no earlier than 2025-10-14 | Sector-44 Noida(2) | 9362984 |
| 848 | 36900.37000.42400.42800.46800.112000.172200 | **2nd Floor Slab** | 21d | 2025-10-14 | 2025-12-18 |  | start no earlier than 2025-10-14 | Sector-44 Noida(2) | 9364644 |
| 849 | 36900.37000.42400.42800.46800.112000.172200.630600 | Shuttering Work | 13d | 2025-10-14 | 2025-10-26 | 846 |  | Sector-44 Noida(2) | 9378684 |
| 850 | 36900.37000.42400.42800.46800.112000.172200.630700 | Reinforcement Work | 10d | 2025-10-24 | 2025-12-17 | 849FS-3d |  | Sector-44 Noida(2) | 9378694 |
| 851 | 36900.37000.42400.42800.46800.112000.172200.630800 | Conduiting work | 1d | 2025-12-17 | 2025-12-17 | 850FS-1d |  | Sector-44 Noida(2) | 9378704 |
| 852 | 36900.37000.42400.42800.46800.112000.172200.630900 | Concreteing work | 1d | 2025-12-18 | 2025-12-18 | 849FF, 850FF, 851 |  | Sector-44 Noida(2) | 9378714 |
| 853 | 36900.37000.42400.42800.46800.111800 | **3rd Floor Slab** | 15d | 2025-12-19 | 2026-01-02 |  | start no earlier than 2025-12-19 | Sector-44 Noida(2) | 9362994 |
| 854 | 36900.37000.42400.42800.46800.111800.172300 | **3rd Floor Slab** | 15d | 2025-12-19 | 2026-01-02 |  | start no earlier than 2025-12-19 | Sector-44 Noida(2) | 9364654 |
| 855 | 36900.37000.42400.42800.46800.111800.172300.631000 | Shuttering Work | 11d | 2025-12-19 | 2025-12-29 | 852 |  | Sector-44 Noida(2) | 9378724 |
| 856 | 36900.37000.42400.42800.46800.111800.172300.631100 | Reinforcement Work | 6d | 2025-12-27 | 2026-01-01 | 855FS-3d |  | Sector-44 Noida(2) | 9378734 |
| 857 | 36900.37000.42400.42800.46800.111800.172300.631200 | Conduiting work | 1d | 2026-01-01 | 2026-01-01 | 856FS-1d |  | Sector-44 Noida(2) | 9378744 |
| 858 | 36900.37000.42400.42800.46800.111800.172300.631300 | Concreteing work | 1d | 2026-01-02 | 2026-01-02 | 855FF, 856FF, 857 |  | Sector-44 Noida(2) | 9378754 |

| ID | WBS | Task | Duration | Start | Finish | Predecessors | Constraint | Calendar | Unique_Task_ID |
| --- | --- | --- | --- | --- | --- | --- | --- | --- | --- |
| 859 | 36900.37000.42400.42800.46800.111700 | **4th Floor Slab** | 9d | 2026-01-03 | 2026-01-11 |  | start no earlier than 2026-01-03 | Sector-44 Noida(2) | 9363004 |
| 860 | 36900.37000.42400.42800.46800.111700.172400 | **4th Floor Slab** | 9d | 2026-01-03 | 2026-01-11 |  | start no earlier than 2026-01-03 | Sector-44 Noida(2) | 9364664 |
| 861 | 36900.37000.42400.42800.46800.111700.172400.631400 | Shuttering Work | 8d | 2026-01-03 | 2026-01-10 | 858 |  | Sector-44 Noida(2) | 9378764 |
| 862 | 36900.37000.42400.42800.46800.111700.172400.631500 | Reinforcement Work | 3d | 2026-01-08 | 2026-01-10 | 861FS-3d |  | Sector-44 Noida(2) | 9378774 |
| 863 | 36900.37000.42400.42800.46800.111700.172400.631600 | Conduiting work | 1d | 2026-01-10 | 2026-01-10 | 862FS-1d |  | Sector-44 Noida(2) | 9378784 |
| 864 | 36900.37000.42400.42800.46800.111700.172400.631700 | Concreteing work | 1d | 2026-01-11 | 2026-01-11 | 861FF, 862FF, 863 |  | Sector-44 Noida(2) | 9378794 |
| 865 | 36900.37000.42400.42800.46800.111300 | **5th Floor Slab** | 9d | 2026-01-12 | 2026-01-20 |  | start no earlier than 2026-01-12 | Sector-44 Noida(2) | 9363014 |
| 866 | 36900.37000.42400.42800.46800.111300.172500 | **5th Floor Slab** | 9d | 2026-01-12 | 2026-01-20 |  | start no earlier than 2026-01-12 | Sector-44 Noida(2) | 9364674 |
| 867 | 36900.37000.42400.42800.46800.111300.172500.631800 | Shuttering Work | 8d | 2026-01-12 | 2026-01-19 | 864 |  | Sector-44 Noida(2) | 9378804 |
| 868 | 36900.37000.42400.42800.46800.111300.172500.631900 | Reinforcement Work | 3d | 2026-01-17 | 2026-01-19 | 867FS-3d |  | Sector-44 Noida(2) | 9378814 |
| 869 | 36900.37000.42400.42800.46800.111300.172500.632000 | Conduiting work | 1d | 2026-01-19 | 2026-01-19 | 868FS-1d |  | Sector-44 Noida(2) | 9378824 |
| 870 | 36900.37000.42400.42800.46800.111300.172500.632100 | Concreteing work | 1d | 2026-01-20 | 2026-01-20 | 867FF, 868FF, 869 |  | Sector-44 Noida(2) | 9378834 |
| 871 | 36900.37000.42400.42800.46800.111200 | **6th Floor Slab** | 9d | 2026-01-21 | 2026-01-29 |  | start no earlier than 2026-01-21 | Sector-44 Noida(2) | 9363024 |
| 872 | 36900.37000.42400.42800.46800.111200.172600 | **6th Floor Slab** | 9d | 2026-01-21 | 2026-01-29 |  | start no earlier than 2026-01-21 | Sector-44 Noida(2) | 9364684 |
| 873 | 36900.37000.42400.42800.46800.111200.172600.632200 | Shuttering Work | 8d | 2026-01-21 | 2026-01-28 | 870 |  | Sector-44 Noida(2) | 9378844 |
| 874 | 36900.37000.42400.42800.46800.111200.172600.632300 | Reinforcement Work | 3d | 2026-01-26 | 2026-01-28 | 873FS-3d |  | Sector-44 Noida(2) | 9378854 |
| 875 | 36900.37000.42400.42800.46800.111200.172600.632400 | Conduiting work | 1d | 2026-01-28 | 2026-01-28 | 874FS-1d |  | Sector-44 Noida(2) | 9378864 |
| 876 | 36900.37000.42400.42800.46800.111200.172600.632500 | Concreteing work | 1d | 2026-01-29 | 2026-01-29 | 873FF, 874FF, 875 |  | Sector-44 Noida(2) | 9378874 |
| 877 | 36900.37000.42400.42800.46800.111000 | **7th Floor Slab** | 9d | 2026-01-30 | 2026-02-07 |  | start no earlier than 2026-01-30 | Sector-44 Noida(2) | 9363034 |
| 878 | 36900.37000.42400.42800.46800.111000.172700 | **7th Floor Slab** | 9d | 2026-01-30 | 2026-02-07 |  | start no earlier than 2026-01-30 | Sector-44 Noida(2) | 9364694 |
| 879 | 36900.37000.42400.42800.46800.111000.172700.632600 | Shuttering Work | 8d | 2026-01-30 | 2026-02-06 | 876 |  | Sector-44 Noida(2) | 9378884 |
| 880 | 36900.37000.42400.42800.46800.111000.172700.632700 | Reinforcement Work | 3d | 2026-02-04 | 2026-02-06 | 879FS-3d |  | Sector-44 Noida(2) | 9378894 |
| 881 | 36900.37000.42400.42800.46800.111000.172700.632800 | Conduiting work | 1d | 2026-02-06 | 2026-02-06 | 880FS-1d |  | Sector-44 Noida(2) | 9378904 |
| 882 | 36900.37000.42400.42800.46800.111000.172700.632900 | Concreteing work | 1d | 2026-02-07 | 2026-02-07 | 879FF, 880FF, 881 |  | Sector-44 Noida(2) | 9378914 |

| ID | WBS | Task | Duration | Start | Finish | Predecessors | Constraint | Calendar | Unique_Task_ID |
| --- | --- | --- | --- | --- | --- | --- | --- | --- | --- |
| 883 | 36900.37000.42400.42800.46800.110600 | **8th Floor Slab** | 9d | 2026-02-08 | 2026-02-16 |  | start no earlier than 2026-02-08 | Sector-44 Noida(2) | 9363044 |
| 884 | 36900.37000.42400.42800.46800.110600.172800 | **8th Floor Slab** | 9d | 2026-02-08 | 2026-02-16 |  | start no earlier than 2026-02-08 | Sector-44 Noida(2) | 9364704 |
| 885 | 36900.37000.42400.42800.46800.110600.172800.633000 | Shuttering Work | 8d | 2026-02-08 | 2026-02-15 | 882 |  | Sector-44 Noida(2) | 9378924 |
| 886 | 36900.37000.42400.42800.46800.110600.172800.633100 | Reinforcement Work | 3d | 2026-02-13 | 2026-02-15 | 885FS-3d |  | Sector-44 Noida(2) | 9378934 |
| 887 | 36900.37000.42400.42800.46800.110600.172800.633200 | Conduiting work | 1d | 2026-02-15 | 2026-02-15 | 886FS-1d |  | Sector-44 Noida(2) | 9378944 |
| 888 | 36900.37000.42400.42800.46800.110600.172800.633300 | Concreteing work | 1d | 2026-02-16 | 2026-02-16 | 885FF, 886FF, 887 |  | Sector-44 Noida(2) | 9378954 |
| 889 | 36900.37000.42400.42800.46800.110500 | **9th Floor Slab** | 9d | 2026-02-17 | 2026-02-25 |  | start no earlier than 2026-02-17 | Sector-44 Noida(2) | 9363054 |
| 890 | 36900.37000.42400.42800.46800.110500.172900 | **9th Floor Slab** | 9d | 2026-02-17 | 2026-02-25 |  | start no earlier than 2026-02-17 | Sector-44 Noida(2) | 9364714 |
| 891 | 36900.37000.42400.42800.46800.110500.172900.633400 | Shuttering Work | 8d | 2026-02-17 | 2026-02-24 | 888 |  | Sector-44 Noida(2) | 9378964 |
| 892 | 36900.37000.42400.42800.46800.110500.172900.633500 | Reinforcement Work | 3d | 2026-02-22 | 2026-02-24 | 891FS-3d |  | Sector-44 Noida(2) | 9378974 |
| 893 | 36900.37000.42400.42800.46800.110500.172900.633600 | Conduiting work | 1d | 2026-02-24 | 2026-02-24 | 892FS-1d |  | Sector-44 Noida(2) | 9378984 |
| 894 | 36900.37000.42400.42800.46800.110500.172900.633700 | Concreteing work | 1d | 2026-02-25 | 2026-02-25 | 891FF, 892FF, 893 |  | Sector-44 Noida(2) | 9378994 |
| 895 | 36900.37000.42400.42800.46800.110400 | **10th Floor Slab** | 9d | 2026-02-26 | 2026-03-06 |  | start no earlier than 2026-02-26 | Sector-44 Noida(2) | 9363064 |
| 896 | 36900.37000.42400.42800.46800.110400.173000 | **10th Floor Slab** | 9d | 2026-02-26 | 2026-03-06 |  | start no earlier than 2026-02-26 | Sector-44 Noida(2) | 9364724 |
| 897 | 36900.37000.42400.42800.46800.110400.173000.633800 | Shuttering Work | 8d | 2026-02-26 | 2026-03-05 | 894 |  | Sector-44 Noida(2) | 9379004 |
| 898 | 36900.37000.42400.42800.46800.110400.173000.633900 | Reinforcement Work | 3d | 2026-03-03 | 2026-03-05 | 897FS-3d |  | Sector-44 Noida(2) | 9379014 |
| 899 | 36900.37000.42400.42800.46800.110400.173000.634000 | Conduiting work | 1d | 2026-03-05 | 2026-03-05 | 898FS-1d |  | Sector-44 Noida(2) | 9379024 |
| 900 | 36900.37000.42400.42800.46800.110400.173000.634100 | Concreteing work | 1d | 2026-03-06 | 2026-03-06 | 897FF, 898FF, 899 |  | Sector-44 Noida(2) | 9379034 |
| 901 | 36900.37000.42400.42800.46800.110300 | **11th Floor Slab** | 9d | 2026-03-07 | 2026-03-15 |  | start no earlier than 2026-03-07 | Sector-44 Noida(2) | 9363074 |
| 902 | 36900.37000.42400.42800.46800.110300.173100 | **11th Floor Slab** | 9d | 2026-03-07 | 2026-03-15 |  | start no earlier than 2026-03-07 | Sector-44 Noida(2) | 9364734 |
| 903 | 36900.37000.42400.42800.46800.110300.173100.634200 | Shuttering Work | 8d | 2026-03-07 | 2026-03-14 | 900 |  | Sector-44 Noida(2) | 9379044 |
| 904 | 36900.37000.42400.42800.46800.110300.173100.634300 | Reinforcement Work | 3d | 2026-03-12 | 2026-03-14 | 903FS-3d |  | Sector-44 Noida(2) | 9379054 |
| 905 | 36900.37000.42400.42800.46800.110300.173100.634400 | Conduiting work | 1d | 2026-03-14 | 2026-03-14 | 904FS-1d |  | Sector-44 Noida(2) | 9379064 |
| 906 | 36900.37000.42400.42800.46800.110300.173100.634500 | Concreteing work | 1d | 2026-03-15 | 2026-03-15 | 903FF, 904FF, 905 |  | Sector-44 Noida(2) | 9379074 |

| ID | WBS | Task | Duration | Start | Finish | Predecessors | Constraint | Calendar | Unique_Task_ID |
| --- | --- | --- | --- | --- | --- | --- | --- | --- | --- |
| 907 | 36900.37000.42400.42800.46800.110200 | **12th Floor Slab** | 9d | 2026-03-16 | 2026-03-24 |  | start no earlier than 2026-03-16 | Sector-44 Noida(2) | 9363084 |
| 908 | 36900.37000.42400.42800.46800.110200.173200 | **12th Floor Slab** | 9d | 2026-03-16 | 2026-03-24 |  | start no earlier than 2026-03-16 | Sector-44 Noida(2) | 9364744 |
| 909 | 36900.37000.42400.42800.46800.110200.173200.634600 | Shuttering Work | 8d | 2026-03-16 | 2026-03-23 | 906 |  | Sector-44 Noida(2) | 9379084 |
| 910 | 36900.37000.42400.42800.46800.110200.173200.634700 | Reinforcement Work | 3d | 2026-03-21 | 2026-03-23 | 909FS-3d |  | Sector-44 Noida(2) | 9379094 |
| 911 | 36900.37000.42400.42800.46800.110200.173200.634800 | Conduiting work | 1d | 2026-03-23 | 2026-03-23 | 910FS-1d |  | Sector-44 Noida(2) | 9379104 |
| 912 | 36900.37000.42400.42800.46800.110200.173200.634900 | Concreteing work | 1d | 2026-03-24 | 2026-03-24 | 909FF, 910FF, 911 |  | Sector-44 Noida(2) | 9379114 |
| 913 | 36900.37000.42400.42800.46800.110100 | **13th Floor Slab** | 9d | 2026-03-25 | 2026-04-02 |  | start no earlier than 2026-03-25 | Sector-44 Noida(2) | 9363094 |
| 914 | 36900.37000.42400.42800.46800.110100.173300 | **13th Floor Slab** | 9d | 2026-03-25 | 2026-04-02 |  | start no earlier than 2026-03-25 | Sector-44 Noida(2) | 9364754 |
| 915 | 36900.37000.42400.42800.46800.110100.173300.635000 | Shuttering Work | 8d | 2026-03-25 | 2026-04-01 | 912 |  | Sector-44 Noida(2) | 9379124 |
| 916 | 36900.37000.42400.42800.46800.110100.173300.635100 | Reinforcement Work | 3d | 2026-03-30 | 2026-04-01 | 915FS-3d |  | Sector-44 Noida(2) | 9379134 |
| 917 | 36900.37000.42400.42800.46800.110100.173300.635200 | Conduiting work | 1d | 2026-04-01 | 2026-04-01 | 916FS-1d |  | Sector-44 Noida(2) | 9379144 |
| 918 | 36900.37000.42400.42800.46800.110100.173300.635300 | Concreteing work | 1d | 2026-04-02 | 2026-04-02 | 915FF, 916FF, 917 |  | Sector-44 Noida(2) | 9379154 |
| 919 | 36900.37000.42400.42800.46800.109800 | **14th Floor Slab** | 9d | 2026-04-03 | 2026-04-11 |  | start no earlier than 2026-04-03 | Sector-44 Noida(2) | 9363104 |
| 920 | 36900.37000.42400.42800.46800.109800.173400 | **14th Floor Slab** | 9d | 2026-04-03 | 2026-04-11 |  | start no earlier than 2026-04-03 | Sector-44 Noida(2) | 9364764 |
| 921 | 36900.37000.42400.42800.46800.109800.173400.635400 | Shuttering Work | 8d | 2026-04-03 | 2026-04-10 | 918 |  | Sector-44 Noida(2) | 9379164 |
| 922 | 36900.37000.42400.42800.46800.109800.173400.635500 | Reinforcement Work | 3d | 2026-04-08 | 2026-04-10 | 921FS-3d |  | Sector-44 Noida(2) | 9379174 |
| 923 | 36900.37000.42400.42800.46800.109800.173400.635600 | Conduiting work | 1d | 2026-04-10 | 2026-04-10 | 922FS-1d |  | Sector-44 Noida(2) | 9379184 |
| 924 | 36900.37000.42400.42800.46800.109800.173400.635700 | Concreteing work | 1d | 2026-04-11 | 2026-04-11 | 921FF, 922FF, 923 |  | Sector-44 Noida(2) | 9379194 |
| 925 | 36900.37000.42400.42800.46800.109700 | **15th Floor Slab** | 9d | 2026-04-12 | 2026-04-20 |  | start no earlier than 2026-04-12 | Sector-44 Noida(2) | 9363114 |
| 926 | 36900.37000.42400.42800.46800.109700.173500 | **15th Floor Slab** | 9d | 2026-04-12 | 2026-04-20 |  | start no earlier than 2026-04-12 | Sector-44 Noida(2) | 9364774 |
| 927 | 36900.37000.42400.42800.46800.109700.173500.635800 | Shuttering Work | 8d | 2026-04-12 | 2026-04-19 | 924 |  | Sector-44 Noida(2) | 9379204 |
| 928 | 36900.37000.42400.42800.46800.109700.173500.635900 | Reinforcement Work | 3d | 2026-04-17 | 2026-04-19 | 927FS-3d |  | Sector-44 Noida(2) | 9379214 |
| 929 | 36900.37000.42400.42800.46800.109700.173500.636000 | Conduiting work | 1d | 2026-04-19 | 2026-04-19 | 928FS-1d |  | Sector-44 Noida(2) | 9379224 |
| 930 | 36900.37000.42400.42800.46800.109700.173500.636100 | Concreteing work | 1d | 2026-04-20 | 2026-04-20 | 927FF, 928FF, 929 |  | Sector-44 Noida(2) | 9379234 |

| ID | WBS | Task | Duration | Start | Finish | Predecessors | Constraint | Calendar | Unique_Task_ID |
| --- | --- | --- | --- | --- | --- | --- | --- | --- | --- |
| 931 | 36900.37000.42400.42800.46800.109400 | **16th Floor Slab** | 9d | 2026-04-21 | 2026-04-29 |  | start no earlier than 2026-04-21 | Sector-44 Noida(2) | 9363124 |
| 932 | 36900.37000.42400.42800.46800.109400.173600 | **16th Floor Slab** | 9d | 2026-04-21 | 2026-04-29 |  | start no earlier than 2026-04-21 | Sector-44 Noida(2) | 9364784 |
| 933 | 36900.37000.42400.42800.46800.109400.173600.636200 | Shuttering Work | 8d | 2026-04-21 | 2026-04-28 | 930 |  | Sector-44 Noida(2) | 9379244 |
| 934 | 36900.37000.42400.42800.46800.109400.173600.636300 | Reinforcement Work | 3d | 2026-04-26 | 2026-04-28 | 933FS-3d |  | Sector-44 Noida(2) | 9379254 |
| 935 | 36900.37000.42400.42800.46800.109400.173600.636400 | Conduiting work | 1d | 2026-04-28 | 2026-04-28 | 934FS-1d |  | Sector-44 Noida(2) | 9379264 |
| 936 | 36900.37000.42400.42800.46800.109400.173600.636500 | Concreteing work | 1d | 2026-04-29 | 2026-04-29 | 933FF, 934FF, 935 |  | Sector-44 Noida(2) | 9379274 |
| 937 | 36900.37000.42400.42800.46800.109000 | **17th Floor Slab** | 9d | 2026-04-30 | 2026-05-08 |  | start no earlier than 2026-04-30 | Sector-44 Noida(2) | 9363134 |
| 938 | 36900.37000.42400.42800.46800.109000.173700 | **17th Floor Slab** | 9d | 2026-04-30 | 2026-05-08 |  | start no earlier than 2026-04-30 | Sector-44 Noida(2) | 9364794 |
| 939 | 36900.37000.42400.42800.46800.109000.173700.636600 | Shuttering Work | 8d | 2026-04-30 | 2026-05-07 | 936 |  | Sector-44 Noida(2) | 9379284 |
| 940 | 36900.37000.42400.42800.46800.109000.173700.636700 | Reinforcement Work | 3d | 2026-05-05 | 2026-05-07 | 939FS-3d |  | Sector-44 Noida(2) | 9379294 |
| 941 | 36900.37000.42400.42800.46800.109000.173700.636800 | Conduiting work | 1d | 2026-05-07 | 2026-05-07 | 940FS-1d |  | Sector-44 Noida(2) | 9379304 |
| 942 | 36900.37000.42400.42800.46800.109000.173700.636900 | Concreteing work | 1d | 2026-05-08 | 2026-05-08 | 939FF, 940FF, 941 |  | Sector-44 Noida(2) | 9379314 |
| 943 | 36900.37000.42400.42800.46800.108800 | **18th Floor Slab** | 9d | 2026-05-09 | 2026-05-17 |  | start no earlier than 2026-05-09 | Sector-44 Noida(2) | 9363144 |
| 944 | 36900.37000.42400.42800.46800.108800.173800 | **18th Floor Slab** | 9d | 2026-05-09 | 2026-05-17 |  | start no earlier than 2026-05-09 | Sector-44 Noida(2) | 9364804 |
| 945 | 36900.37000.42400.42800.46800.108800.173800.637000 | Shuttering Work | 8d | 2026-05-09 | 2026-05-16 | 942 |  | Sector-44 Noida(2) | 9379324 |
| 946 | 36900.37000.42400.42800.46800.108800.173800.637100 | Reinforcement Work | 3d | 2026-05-14 | 2026-05-16 | 945FS-3d |  | Sector-44 Noida(2) | 9379334 |
| 947 | 36900.37000.42400.42800.46800.108800.173800.637200 | Conduiting work | 1d | 2026-05-16 | 2026-05-16 | 946FS-1d |  | Sector-44 Noida(2) | 9379344 |
| 948 | 36900.37000.42400.42800.46800.108800.173800.637300 | Concreteing work | 1d | 2026-05-17 | 2026-05-17 | 945FF, 946FF, 947 |  | Sector-44 Noida(2) | 9379354 |
| 949 | 36900.37000.42400.42800.46800.108700 | **19th Floor Slab** | 8d | 2026-05-18 | 2026-05-25 |  | start no earlier than 2026-05-18 | Sector-44 Noida(2) | 9363154 |
| 950 | 36900.37000.42400.42800.46800.108700.173900 | **19th Floor Slab** | 8d | 2026-05-18 | 2026-05-25 |  | start no earlier than 2026-05-18 | Sector-44 Noida(2) | 9364814 |
| 951 | 36900.37000.42400.42800.46800.108700.173900.637400 | Shuttering Work | 7d | 2026-05-18 | 2026-05-24 | 948 |  | Sector-44 Noida(2) | 9379364 |
| 952 | 36900.37000.42400.42800.46800.108700.173900.637500 | Reinforcement Work | 3d | 2026-05-22 | 2026-05-24 | 951FS-3d |  | Sector-44 Noida(2) | 9379374 |
| 953 | 36900.37000.42400.42800.46800.108700.173900.637600 | Conduiting work | 1d | 2026-05-24 | 2026-05-24 | 952FS-1d |  | Sector-44 Noida(2) | 9379384 |
| 954 | 36900.37000.42400.42800.46800.108700.173900.637700 | Concreteing work | 1d | 2026-05-25 | 2026-05-25 | 951FF, 952FF, 953 |  | Sector-44 Noida(2) | 9379394 |

| ID | WBS | Task | Duration | Start | Finish | Predecessors | Constraint | Calendar | Unique_Task_ID |
| --- | --- | --- | --- | --- | --- | --- | --- | --- | --- |
| 955 | 36900.37000.42400.42800.46800.108600 | **20th Floor Slab** | 8d | 2026-05-26 | 2026-06-02 |  | start no earlier than 2026-05-26 | Sector-44 Noida(2) | 9363164 |
| 956 | 36900.37000.42400.42800.46800.108600.174000 | **20th Floor Slab** | 8d | 2026-05-26 | 2026-06-02 |  | start no earlier than 2026-05-26 | Sector-44 Noida(2) | 9364824 |
| 957 | 36900.37000.42400.42800.46800.108600.174000.637800 | Shuttering Work | 7d | 2026-05-26 | 2026-06-01 | 954 |  | Sector-44 Noida(2) | 9379404 |
| 958 | 36900.37000.42400.42800.46800.108600.174000.637900 | Reinforcement Work | 3d | 2026-05-30 | 2026-06-01 | 957FS-3d |  | Sector-44 Noida(2) | 9379414 |
| 959 | 36900.37000.42400.42800.46800.108600.174000.638000 | Conduiting work | 1d | 2026-06-01 | 2026-06-01 | 958FS-1d |  | Sector-44 Noida(2) | 9379424 |
| 960 | 36900.37000.42400.42800.46800.108600.174000.638100 | Concreteing work | 1d | 2026-06-02 | 2026-06-02 | 957FF, 958FF, 959 |  | Sector-44 Noida(2) | 9379434 |
| 961 | 36900.37000.42400.42800.46800.108200 | **21st Floor Slab** | 8d | 2026-06-03 | 2026-06-10 |  | start no earlier than 2026-06-03 | Sector-44 Noida(2) | 9363174 |
| 962 | 36900.37000.42400.42800.46800.108200.174100 | **21st Floor Slab** | 8d | 2026-06-03 | 2026-06-10 |  | start no earlier than 2026-06-03 | Sector-44 Noida(2) | 9364834 |
| 963 | 36900.37000.42400.42800.46800.108200.174100.638200 | Shuttering Work | 7d | 2026-06-03 | 2026-06-09 | 960 |  | Sector-44 Noida(2) | 9379444 |
| 964 | 36900.37000.42400.42800.46800.108200.174100.638300 | Reinforcement Work | 3d | 2026-06-07 | 2026-06-09 | 963FS-3d |  | Sector-44 Noida(2) | 9379454 |
| 965 | 36900.37000.42400.42800.46800.108200.174100.638400 | Conduiting work | 1d | 2026-06-09 | 2026-06-09 | 964FS-1d |  | Sector-44 Noida(2) | 9379464 |
| 966 | 36900.37000.42400.42800.46800.108200.174100.638500 | Concreteing work | 1d | 2026-06-10 | 2026-06-10 | 963FF, 964FF, 965 |  | Sector-44 Noida(2) | 9379474 |
| 967 | 36900.37000.42400.42800.46800.108100 | **22nd Floor Slab** | 8d | 2026-06-11 | 2026-06-18 |  | start no earlier than 2026-06-11 | Sector-44 Noida(2) | 9363184 |
| 968 | 36900.37000.42400.42800.46800.108100.174200 | **22nd Floor Slab** | 8d | 2026-06-11 | 2026-06-18 |  | start no earlier than 2026-06-11 | Sector-44 Noida(2) | 9364844 |
| 969 | 36900.37000.42400.42800.46800.108100.174200.638600 | Shuttering Work | 7d | 2026-06-11 | 2026-06-17 | 966 |  | Sector-44 Noida(2) | 9379484 |
| 970 | 36900.37000.42400.42800.46800.108100.174200.638700 | Reinforcement Work | 3d | 2026-06-15 | 2026-06-17 | 969FS-3d |  | Sector-44 Noida(2) | 9379494 |
| 971 | 36900.37000.42400.42800.46800.108100.174200.638800 | Conduiting work | 1d | 2026-06-17 | 2026-06-17 | 970FS-1d |  | Sector-44 Noida(2) | 9379504 |
| 972 | 36900.37000.42400.42800.46800.108100.174200.638900 | Concreteing work | 1d | 2026-06-18 | 2026-06-18 | 969FF, 970FF, 971 |  | Sector-44 Noida(2) | 9379514 |
| 973 | 36900.37000.42400.42800.46800.108000 | **23rd Floor Slab** | 8d | 2026-06-19 | 2026-06-26 |  | start no earlier than 2026-06-19 | Sector-44 Noida(2) | 9363194 |
| 974 | 36900.37000.42400.42800.46800.108000.174300 | **23rd Floor Slab** | 8d | 2026-06-19 | 2026-06-26 |  | start no earlier than 2026-06-19 | Sector-44 Noida(2) | 9364854 |
| 975 | 36900.37000.42400.42800.46800.108000.174300.639000 | Shuttering Work | 7d | 2026-06-19 | 2026-06-25 | 972 |  | Sector-44 Noida(2) | 9379524 |
| 976 | 36900.37000.42400.42800.46800.108000.174300.639100 | Reinforcement Work | 3d | 2026-06-23 | 2026-06-25 | 975FS-3d |  | Sector-44 Noida(2) | 9379534 |
| 977 | 36900.37000.42400.42800.46800.108000.174300.639200 | Conduiting work | 1d | 2026-06-25 | 2026-06-25 | 976FS-1d |  | Sector-44 Noida(2) | 9379544 |
| 978 | 36900.37000.42400.42800.46800.108000.174300.639300 | Concreteing work | 1d | 2026-06-26 | 2026-06-26 | 975FF, 976FF, 977 |  | Sector-44 Noida(2) | 9379554 |

| ID | WBS | Task | Duration | Start | Finish | Predecessors | Constraint | Calendar | Unique_Task_ID |
| --- | --- | --- | --- | --- | --- | --- | --- | --- | --- |
| 979 | 36900.37000.42400.42800.46800.107800 | **Terrace Slab** | 12d | 2026-06-27 | 2026-07-08 |  | start no earlier than 2026-06-27 | Sector-44 Noida(2) | 9363204 |
| 980 | 36900.37000.42400.42800.46800.107800.174400 | **Terrace Slab** | 12d | 2026-06-27 | 2026-07-08 |  | start no earlier than 2026-06-27 | Sector-44 Noida(2) | 9364864 |
| 981 | 36900.37000.42400.42800.46800.107800.174400.639400 | Shuttering Work | 10d | 2026-06-27 | 2026-07-06 | 978 |  | Sector-44 Noida(2) | 9379564 |
| 982 | 36900.37000.42400.42800.46800.107800.174400.639500 | Reinforcement Work | 5d | 2026-07-03 | 2026-07-07 | 981FS-4d |  | Sector-44 Noida(2) | 9379574 |
| 983 | 36900.37000.42400.42800.46800.107800.174400.639600 | Conduiting work | 1d | 2026-07-07 | 2026-07-07 | 982FS-1d |  | Sector-44 Noida(2) | 9379584 |
| 984 | 36900.37000.42400.42800.46800.107800.174400.639700 | Concreteing work | 1d | 2026-07-08 | 2026-07-08 | 981FF, 982FF, 983 |  | Sector-44 Noida(2) | 9379594 |
| 985 | 36900.37000.42400.42800.46800.107600 | **Terrace to LMR Floor** | 8d | 2026-07-09 | 2026-07-16 |  | start no earlier than 2026-07-09 | Sector-44 Noida(2) | 9363214 |
| 986 | 36900.37000.42400.42800.46800.107600.174500 | **LMR Floor Slab** | 8d | 2026-07-09 | 2026-07-16 |  | start no earlier than 2026-07-09 | Sector-44 Noida(2) | 9364874 |
| 987 | 36900.37000.42400.42800.46800.107600.174500.639800 | Shuttering Work | 6d | 2026-07-09 | 2026-07-14 | 984 |  | Sector-44 Noida(2) | 9379604 |
| 988 | 36900.37000.42400.42800.46800.107600.174500.639900 | Reinforcement Work | 3d | 2026-07-13 | 2026-07-15 | 987FS-2d |  | Sector-44 Noida(2) | 9379614 |
| 989 | 36900.37000.42400.42800.46800.107600.174500.640000 | Conduiting work | 1d | 2026-07-15 | 2026-07-15 | 988FS-1d |  | Sector-44 Noida(2) | 9379624 |
| 990 | 36900.37000.42400.42800.46800.107600.174500.640100 | Concreteing work | 1d | 2026-07-16 | 2026-07-16 | 987FF, 988FF, 989 |  | Sector-44 Noida(2) | 9379634 |
| 991 | 36900.37000.42400.42800.46800.107500 | **LMR Floor to LMR Roof** | 8d | 2026-07-17 | 2026-07-24 |  | start no earlier than 2026-07-17 | Sector-44 Noida(2) | 9363224 |
| 992 | 36900.37000.42400.42800.46800.107500.174600 | **LMR Roof Slab** | 8d | 2026-07-17 | 2026-07-24 |  | start no earlier than 2026-07-17 | Sector-44 Noida(2) | 9364884 |
| 993 | 36900.37000.42400.42800.46800.107500.174600.640200 | Shuttering Work | 6d | 2026-07-17 | 2026-07-22 | 990 |  | Sector-44 Noida(2) | 9379644 |
| 994 | 36900.37000.42400.42800.46800.107500.174600.640300 | Reinforcement Work | 3d | 2026-07-21 | 2026-07-23 | 993FS-2d |  | Sector-44 Noida(2) | 9379654 |
| 995 | 36900.37000.42400.42800.46800.107500.174600.640400 | Conduiting work | 1d | 2026-07-23 | 2026-07-23 | 994FS-1d |  | Sector-44 Noida(2) | 9379664 |
| 996 | 36900.37000.42400.42800.46800.107500.174600.640500 | Concreteing work | 1d | 2026-07-24 | 2026-07-24 | 993FF, 994FF, 995 |  | Sector-44 Noida(2) | 9379674 |
| 997 | 36900.37000.42400.42800.46800.124200 | **OHT & Roof Features** | 19d | 2026-07-25 | 2026-08-12 |  | start no earlier than 2026-07-25 | Sector-44 Noida(2) | 9364224 |
| 998 | 36900.37000.42400.42800.46800.124200.189300 | **OHT & Roof Features** | 19d | 2026-07-25 | 2026-08-12 |  | start no earlier than 2026-07-25 | Sector-44 Noida(2) | 9365714 |
| 999 | 36900.37000.42400.42800.46800.124200.189300.640600 | Reinforcement Work | 12d | 2026-07-25 | 2026-08-05 | 996 |  | Sector-44 Noida(2) | 9379684 |
| 1000 | 36900.37000.42400.42800.46800.124200.189300.640700 | Shuttering work | 9d | 2026-08-04 | 2026-08-12 | 999FS-2d |  | Sector-44 Noida(2) | 9379694 |
| 1001 | 36900.37000.42400.42800.46800.124200.189300.640800 | Concreteing work | 7d | 2026-08-06 | 2026-08-12 | 999FF, 1000FF |  | Sector-44 Noida(2) | 9379704 |
| 1002 | 36900.37000.42400.42800.47600 | **Post Pour Works** | 220d | 2026-01-03 | 2026-08-10 |  | start no earlier than 2026-01-03 | Sector-44 Noida(2) | 9360874 |
| 1003 | 36900.37000.42400.42800.47600.242200 | 1st Floor | 8d | 2026-01-03 | 2026-01-10 | 858 |  | Sector-44 Noida(2) | 9367074 |
| 1004 | 36900.37000.42400.42800.47600.242300 | 2nd Floor | 8d | 2026-01-12 | 2026-01-19 | 1003, 864 |  | Sector-44 Noida(2) | 9367084 |
| 1005 | 36900.37000.42400.42800.47600.242400 | 3rd Floor | 8d | 2026-01-21 | 2026-01-28 | 1004, 870 |  | Sector-44 Noida(2) | 9367094 |
| 1006 | 36900.37000.42400.42800.47600.242500 | 4th Floor | 8d | 2026-01-30 | 2026-02-06 | 1005, 876 |  | Sector-44 Noida(2) | 9367104 |
| 1007 | 36900.37000.42400.42800.47600.242600 | 5th Floor | 8d | 2026-02-08 | 2026-02-15 | 1006, 882 |  | Sector-44 Noida(2) | 9367114 |
| 1008 | 36900.37000.42400.42800.47600.242700 | 6th Floor | 8d | 2026-02-26 | 2026-03-05 | 1007, 894 |  | Sector-44 Noida(2) | 9367124 |
| 1009 | 36900.37000.42400.42800.47600.242800 | 7th Floor | 8d | 2026-03-06 | 2026-03-13 | 1008 |  | Sector-44 Noida(2) | 9367134 |
| 1010 | 36900.37000.42400.42800.47600.242900 | 8th Floor | 8d | 2026-03-16 | 2026-03-23 | 1009, 906 |  | Sector-44 Noida(2) | 9367144 |
| 1011 | 36900.37000.42400.42800.47600.243000 | 9th Floor | 8d | 2026-03-25 | 2026-04-01 | 1010, 912 |  | Sector-44 Noida(2) | 9367154 |
| 1012 | 36900.37000.42400.42800.47600.243100 | 10th Floor | 8d | 2026-04-03 | 2026-04-10 | 1011, 918 |  | Sector-44 Noida(2) | 9367164 |
| 1013 | 36900.37000.42400.42800.47600.243200 | 11th Floor | 8d | 2026-04-12 | 2026-04-19 | 1012, 924 |  | Sector-44 Noida(2) | 9367174 |
| 1014 | 36900.37000.42400.42800.47600.243300 | 12th Floor | 8d | 2026-04-21 | 2026-04-28 | 1013, 930 |  | Sector-44 Noida(2) | 9367184 |
| 1015 | 36900.37000.42400.42800.47600.243400 | 13th Floor | 8d | 2026-04-30 | 2026-05-07 | 1014, 936 |  | Sector-44 Noida(2) | 9367194 |
| 1016 | 36900.37000.42400.42800.47600.243500 | 14th Floor | 8d | 2026-05-09 | 2026-05-16 | 1015, 942 |  | Sector-44 Noida(2) | 9367204 |
| 1017 | 36900.37000.42400.42800.47600.243600 | 15th Floor | 8d | 2026-05-18 | 2026-05-25 | 1016, 948 |  | Sector-44 Noida(2) | 9367214 |
| 1018 | 36900.37000.42400.42800.47600.243700 | 16th Floor | 8d | 2026-05-26 | 2026-06-02 | 1017, 954 |  | Sector-44 Noida(2) | 9367224 |
| 1019 | 36900.37000.42400.42800.47600.243800 | 17th Floor | 8d | 2026-06-03 | 2026-06-10 | 1018, 960 |  | Sector-44 Noida(2) | 9367234 |
| 1020 | 36900.37000.42400.42800.47600.243900 | 18th Floor | 8d | 2026-06-11 | 2026-06-18 | 1019, 966 |  | Sector-44 Noida(2) | 9367244 |
| 1021 | 36900.37000.42400.42800.47600.244000 | 19th Floor | 8d | 2026-06-19 | 2026-06-26 | 1020, 972 |  | Sector-44 Noida(2) | 9367254 |
| 1022 | 36900.37000.42400.42800.47600.244100 | 20th Floor | 7d | 2026-06-27 | 2026-07-03 | 1021, 978 |  | Sector-44 Noida(2) | 9367264 |
| 1023 | 36900.37000.42400.42800.47600.244200 | 21st Floor | 7d | 2026-07-04 | 2026-07-10 | 1022 |  | Sector-44 Noida(2) | 9367274 |
| 1024 | 36900.37000.42400.42800.47600.244300 | 22nd Floor | 7d | 2026-07-11 | 2026-07-17 | 1023 |  | Sector-44 Noida(2) | 9367284 |
| 1025 | 36900.37000.42400.42800.47600.244400 | 23rd Floor | 7d | 2026-07-18 | 2026-07-24 | 1024 |  | Sector-44 Noida(2) | 9367294 |
| 1026 | 36900.37000.42400.42800.47600.244500 | Terrace Floor | 7d | 2026-07-25 | 2026-07-31 | 1025 |  | Sector-44 Noida(2) | 9367304 |
| 1027 | 36900.37000.42400.42800.47600.244600 | LMR, OHT & Roof Feauters | 10d | 2026-08-01 | 2026-08-10 | 1026 |  | Sector-44 Noida(2) | 9367314 |

| ID | WBS | Task | Duration | Start | Finish | Predecessors | Constraint | Calendar | Unique_Task_ID |
| --- | --- | --- | --- | --- | --- | --- | --- | --- | --- |
| 1028 | 36900.37000.42400.42800.43100 | **Finishing works** | 369d | 2026-01-11 | 2027-02-28 |  | start no earlier than 2026-01-11 | Sector-44 Noida(2) | 9360754 |
| 1029 | 36900.37000.42400.42800.43100.44300 | **Flat finishings** | 343d | 2026-01-11 | 2027-02-02 |  | start no earlier than 2026-01-11 | Sector-44 Noida(2) | 9360784 |
| 1030 | 36900.37000.42400.42800.43100.44300.50800 | **1st Floor** | 54d | 2026-01-11 | 2026-03-05 |  | start no earlier than 2026-01-11 | Sector-44 Noida(2) | 9362004 |
| 1031 | 36900.37000.42400.42800.43100.44300.50800.640900 | Block Work | 10d | 2026-01-11 | 2026-01-20 | 1003 |  | Sector-44 Noida(2) | 9379714 |
| 1032 | 36900.37000.42400.42800.43100.44300.50800.641000 | Installation of temporary Main door | 3d | 2026-01-21 | 2026-01-23 | 1031 |  | Sector-44 Noida(2) | 9379724 |
| 1033 | 36900.37000.42400.42800.43100.44300.50800.641100 | Fire sprinkler pipe fixing | 3d | 2026-01-21 | 2026-01-23 | 1031 |  | Sector-44 Noida(2) | 9379734 |
| 1034 | 36900.37000.42400.42800.43100.44300.50800.641200 | Internal Plumbing Works | 7d | 2026-01-21 | 2026-01-27 | 1031 |  | Sector-44 Noida(2) | 9379744 |
| 1035 | 36900.37000.42400.42800.43100.44300.50800.641300 | Waterproofing | 8d | 2026-01-26 | 2026-02-02 | 1034SS+5d |  | Sector-44 Noida(2) | 9379754 |
| 1036 | 36900.37000.42400.42800.43100.44300.50800.641400 | Internal Plaster | 10d | 2026-01-16 | 2026-01-25 | 1031SS+5d |  | Sector-44 Noida(2) | 9379764 |
| 1037 | 36900.37000.42400.42800.43100.44300.50800.641500 | IPS flooring work | 11d | 2026-01-16 | 2026-01-26 | 1031SS+5d |  | Sector-44 Noida(2) | 9379774 |
| 1038 | 36900.37000.42400.42800.43100.44300.50800.641600 | Toilet dado work | 10d | 2026-02-03 | 2026-02-12 | 1034, 1035, 1036 |  | Sector-44 Noida(2) | 9379784 |
| 1039 | 36900.37000.42400.42800.43100.44300.50800.641700 | Toilet flooring work | 10d | 2026-02-08 | 2026-02-17 | 1038SS+5d |  | Sector-44 Noida(2) | 9379794 |
| 1040 | 36900.37000.42400.42800.43100.44300.50800.641800 | Living dinning flooring | 16d | 2026-02-18 | 2026-03-05 | 1037, 1039 |  | Sector-44 Noida(2) | 9379804 |
| 1041 | 36900.37000.42400.42800.43100.44300.50800.641900 | Electrical wiring work | 10d | 2026-02-24 | 2026-03-05 | 1040FS-10d |  | Sector-44 Noida(2) | 9379814 |
| 1042 | 36900.37000.42400.42800.43100.44300.50800.642000 | Aluminium door-window fixing | 5d | 2026-01-24 | 2026-01-28 | 1034SS+3d |  | Sector-44 Noida(2) | 9379824 |
| 1043 | 36900.37000.42400.42800.43100.44300.50800.642100 | Putty primer coat | 8d | 2026-01-21 | 2026-01-28 | 1042FS-8d |  | Sector-44 Noida(2) | 9379834 |
| 1044 | 36900.37000.42400.42800.43100.44300.50800.642200 | Prehung door fixing | 7d | 2026-01-24 | 2026-01-30 | 1043FS-5d |  | Sector-44 Noida(2) | 9379844 |
| 1045 | 36900.37000.42400.42800.43100.44300.50800.642300 | Painting 1st coat | 10d | 2026-01-31 | 2026-02-09 | 1044 |  | Sector-44 Noida(2) | 9379854 |
| 1046 | 36900.37000.42400.42800.43100.44300.50800.642400 | False Ceiling panel fixing | 8d | 2026-02-10 | 2026-02-17 | 1045 |  | Sector-44 Noida(2) | 9379864 |
| 1047 | 36900.37000.42400.42800.43100.44300.50900 | **2nd Floor** | 77d | 2026-01-20 | 2026-04-06 |  | start no earlier than 2026-01-20 | Sector-44 Noida(2) | 9361994 |
| 1048 | 36900.37000.42400.42800.43100.44300.50900.642500 | Block Work | 10d | 2026-01-20 | 2026-01-29 | 1004 |  | Sector-44 Noida(2) | 9379874 |
| 1049 | 36900.37000.42400.42800.43100.44300.50900.642600 | Installation of temporary Main door | 7d | 2026-01-30 | 2026-02-05 | 1048 |  | Sector-44 Noida(2) | 9379884 |
| 1050 | 36900.37000.42400.42800.43100.44300.50900.642700 | Fire sprinkler pipe fixing | 3d | 2026-01-30 | 2026-02-01 | 1033, 1048 |  | Sector-44 Noida(2) | 9379894 |
| 1051 | 36900.37000.42400.42800.43100.44300.50900.642800 | Internal Plumbing Works | 7d | 2026-01-30 | 2026-02-05 | 1048 |  | Sector-44 Noida(2) | 9379904 |
| 1052 | 36900.37000.42400.42800.43100.44300.50900.642900 | Waterproofing | 12d | 2026-02-06 | 2026-02-17 | 1051 |  | Sector-44 Noida(2) | 9379914 |
| 1053 | 36900.37000.42400.42800.43100.44300.50900.643000 | Internal Plaster | 9d | 2026-01-25 | 2026-02-02 | 1048SS+5d |  | Sector-44 Noida(2) | 9379924 |
| 1054 | 36900.37000.42400.42800.43100.44300.50900.643100 | IPS flooring work | 11d | 2026-01-30 | 2026-02-09 | 1048 |  | Sector-44 Noida(2) | 9379934 |
| 1055 | 36900.37000.42400.42800.43100.44300.50900.643200 | Toilet dado work | 16d | 2026-02-18 | 2026-03-05 | 1051, 1052, 1053 |  | Sector-44 Noida(2) | 9379944 |
| 1056 | 36900.37000.42400.42800.43100.44300.50900.643300 | Toilet flooring work | 16d | 2026-03-06 | 2026-03-21 | 1055 |  | Sector-44 Noida(2) | 9379954 |
| 1057 | 36900.37000.42400.42800.43100.44300.50900.643400 | Living dinning flooring | 16d | 2026-03-22 | 2026-04-06 | 1054, 1056 |  | Sector-44 Noida(2) | 9379964 |
| 1058 | 36900.37000.42400.42800.43100.44300.50900.643500 | Electrical wiring work | 10d | 2026-03-28 | 2026-04-06 | 1057FS-10d |  | Sector-44 Noida(2) | 9379974 |
| 1059 | 36900.37000.42400.42800.43100.44300.50900.643600 | Aluminium door-window fixing | 5d | 2026-01-29 | 2026-02-02 | 1042 |  | Sector-44 Noida(2) | 9379984 |
| 1060 | 36900.37000.42400.42800.43100.44300.50900.643700 | Putty primer coat | 8d | 2026-01-26 | 2026-02-02 | 1059FS-8d |  | Sector-44 Noida(2) | 9379994 |
| 1061 | 36900.37000.42400.42800.43100.44300.50900.643800 | Prehung door fixing | 7d | 2026-01-29 | 2026-02-04 | 1060FS-5d |  | Sector-44 Noida(2) | 9380004 |
| 1062 | 36900.37000.42400.42800.43100.44300.50900.643900 | Painting 1st coat | 10d | 2026-02-05 | 2026-02-14 | 1061 |  | Sector-44 Noida(2) | 9380014 |
| 1063 | 36900.37000.42400.42800.43100.44300.50900.644000 | False Ceiling panel fixing | 8d | 2026-02-18 | 2026-02-25 | 1046, 1062 |  | Sector-44 Noida(2) | 9380024 |

| ID | WBS | Task | Duration | Start | Finish | Predecessors | Constraint | Calendar | Unique_Task_ID |
| --- | --- | --- | --- | --- | --- | --- | --- | --- | --- |
| 1064 | 36900.37000.42400.42800.43100.44300.51000 | **3rd Floor** | 121d | 2026-01-29 | 2026-05-29 |  | start no earlier than 2026-01-29 | Sector-44 Noida(2) | 9361974 |
| 1065 | 36900.37000.42400.42800.43100.44300.51000.644100 | Block Work | 10d | 2026-01-29 | 2026-02-07 | 1005 |  | Sector-44 Noida(2) | 9380034 |
| 1066 | 36900.37000.42400.42800.43100.44300.51000.644200 | Installation of temporary Main door | 7d | 2026-02-08 | 2026-02-14 | 1065 |  | Sector-44 Noida(2) | 9380044 |
| 1067 | 36900.37000.42400.42800.43100.44300.51000.644300 | Fire sprinkler pipe fixing | 3d | 2026-02-08 | 2026-02-10 | 1050, 1065 |  | Sector-44 Noida(2) | 9380054 |
| 1068 | 36900.37000.42400.42800.43100.44300.51000.644400 | Internal Plumbing Works | 7d | 2026-02-08 | 2026-02-14 | 1065 |  | Sector-44 Noida(2) | 9380064 |
| 1069 | 36900.37000.42400.42800.43100.44300.51000.644500 | Waterproofing | 12d | 2026-02-15 | 2026-02-26 | 1068 |  | Sector-44 Noida(2) | 9380074 |
| 1070 | 36900.37000.42400.42800.43100.44300.51000.644600 | Internal Plaster | 15d | 2026-02-27 | 2026-03-13 | 1068, 1069 |  | Sector-44 Noida(2) | 9380084 |
| 1071 | 36900.37000.42400.42800.43100.44300.51000.644700 | IPS flooring work | 11d | 2026-02-08 | 2026-02-18 | 1065 |  | Sector-44 Noida(2) | 9380094 |
| 1072 | 36900.37000.42400.42800.43100.44300.51000.644800 | Toilet dado work | 16d | 2026-03-14 | 2026-03-29 | 1068, 1069, 1070 |  | Sector-44 Noida(2) | 9380104 |
| 1073 | 36900.37000.42400.42800.43100.44300.51000.644900 | Toilet flooring work | 16d | 2026-03-30 | 2026-04-14 | 1072 |  | Sector-44 Noida(2) | 9380114 |
| 1074 | 36900.37000.42400.42800.43100.44300.51000.645000 | Living dinning flooring | 16d | 2026-04-15 | 2026-04-30 | 1071, 1073 |  | Sector-44 Noida(2) | 9380124 |
| 1075 | 36900.37000.42400.42800.43100.44300.51000.645100 | Electrical wiring work | 10d | 2026-04-21 | 2026-04-30 | 1074FS-10d |  | Sector-44 Noida(2) | 9380134 |
| 1076 | 36900.37000.42400.42800.43100.44300.51000.645200 | Aluminium door-window fixing | 17d | 2026-04-23 | 2026-05-09 | 1066, 1075FS-8d |  | Sector-44 Noida(2) | 9380144 |
| 1077 | 36900.37000.42400.42800.43100.44300.51000.645300 | Putty primer coat | 8d | 2026-05-02 | 2026-05-09 | 1076FS-8d |  | Sector-44 Noida(2) | 9380154 |
| 1078 | 36900.37000.42400.42800.43100.44300.51000.645400 | Prehung door fixing | 7d | 2026-05-05 | 2026-05-11 | 1077FS-5d |  | Sector-44 Noida(2) | 9380164 |
| 1079 | 36900.37000.42400.42800.43100.44300.51000.645500 | Painting 1st coat | 10d | 2026-05-12 | 2026-05-21 | 1078 |  | Sector-44 Noida(2) | 9380174 |
| 1080 | 36900.37000.42400.42800.43100.44300.51000.645600 | False Ceiling panel fixing | 8d | 2026-05-22 | 2026-05-29 | 1063, 1079 |  | Sector-44 Noida(2) | 9380184 |
| 1081 | 36900.37000.42400.42800.43100.44300.51100 | **4th Floor** | 121d | 2026-02-07 | 2026-06-07 |  | start no earlier than 2026-02-07 | Sector-44 Noida(2) | 9361964 |
| 1082 | 36900.37000.42400.42800.43100.44300.51100.645700 | Block Work | 10d | 2026-02-07 | 2026-02-16 | 1006 |  | Sector-44 Noida(2) | 9380194 |
| 1083 | 36900.37000.42400.42800.43100.44300.51100.645800 | Installation of temporary Main door | 7d | 2026-02-17 | 2026-02-23 | 1082 |  | Sector-44 Noida(2) | 9380204 |
| 1084 | 36900.37000.42400.42800.43100.44300.51100.645900 | Fire sprinkler pipe fixing | 3d | 2026-02-17 | 2026-02-19 | 1067, 1082 |  | Sector-44 Noida(2) | 9380214 |
| 1085 | 36900.37000.42400.42800.43100.44300.51100.646000 | Internal Plumbing Works | 7d | 2026-02-17 | 2026-02-23 | 1082 |  | Sector-44 Noida(2) | 9380224 |
| 1086 | 36900.37000.42400.42800.43100.44300.51100.646100 | Waterproofing | 12d | 2026-02-24 | 2026-03-07 | 1085 |  | Sector-44 Noida(2) | 9380234 |
| 1087 | 36900.37000.42400.42800.43100.44300.51100.646200 | Internal Plaster | 15d | 2026-03-08 | 2026-03-22 | 1085, 1086 |  | Sector-44 Noida(2) | 9380244 |
| 1088 | 36900.37000.42400.42800.43100.44300.51100.646300 | IPS flooring work | 11d | 2026-02-17 | 2026-02-27 | 1082 |  | Sector-44 Noida(2) | 9380254 |
| 1089 | 36900.37000.42400.42800.43100.44300.51100.646400 | Toilet dado work | 16d | 2026-03-23 | 2026-04-07 | 1085, 1086, 1087 |  | Sector-44 Noida(2) | 9380264 |
| 1090 | 36900.37000.42400.42800.43100.44300.51100.646500 | Toilet flooring work | 16d | 2026-04-08 | 2026-04-23 | 1089 |  | Sector-44 Noida(2) | 9380274 |
| 1091 | 36900.37000.42400.42800.43100.44300.51100.646600 | Living dinning flooring | 16d | 2026-04-24 | 2026-05-09 | 1088, 1090 |  | Sector-44 Noida(2) | 9380284 |
| 1092 | 36900.37000.42400.42800.43100.44300.51100.646700 | Electrical wiring work | 10d | 2026-04-30 | 2026-05-09 | 1091FS-10d |  | Sector-44 Noida(2) | 9380294 |
| 1093 | 36900.37000.42400.42800.43100.44300.51100.646800 | Aluminium door-window fixing | 17d | 2026-05-02 | 2026-05-18 | 1083, 1092FS-8d |  | Sector-44 Noida(2) | 9380304 |
| 1094 | 36900.37000.42400.42800.43100.44300.51100.646900 | Putty primer coat | 8d | 2026-05-11 | 2026-05-18 | 1093FS-8d |  | Sector-44 Noida(2) | 9380314 |
| 1095 | 36900.37000.42400.42800.43100.44300.51100.647000 | Prehung door fixing | 7d | 2026-05-14 | 2026-05-20 | 1094FS-5d |  | Sector-44 Noida(2) | 9380324 |
| 1096 | 36900.37000.42400.42800.43100.44300.51100.647100 | Painting 1st coat | 10d | 2026-05-21 | 2026-05-30 | 1095 |  | Sector-44 Noida(2) | 9380334 |
| 1097 | 36900.37000.42400.42800.43100.44300.51100.647200 | False Ceiling panel fixing | 8d | 2026-05-31 | 2026-06-07 | 1080, 1096 |  | Sector-44 Noida(2) | 9380344 |

| ID | WBS | Task | Duration | Start | Finish | Predecessors | Constraint | Calendar | Unique_Task_ID |
| --- | --- | --- | --- | --- | --- | --- | --- | --- | --- |
| 1098 | 36900.37000.42400.42800.43100.44300.51200 | **5th Floor** | 121d | 2026-02-16 | 2026-06-16 |  | start no earlier than 2026-02-16 | Sector-44 Noida(2) | 9361954 |
| 1099 | 36900.37000.42400.42800.43100.44300.51200.647300 | Block Work | 10d | 2026-02-16 | 2026-02-25 | 1007 |  | Sector-44 Noida(2) | 9380354 |
| 1100 | 36900.37000.42400.42800.43100.44300.51200.647400 | Installation of temporary Main door | 7d | 2026-02-26 | 2026-03-04 | 1099 |  | Sector-44 Noida(2) | 9380364 |
| 1101 | 36900.37000.42400.42800.43100.44300.51200.647500 | Fire sprinkler pipe fixing | 3d | 2026-02-26 | 2026-02-28 | 1084, 1099 |  | Sector-44 Noida(2) | 9380374 |
| 1102 | 36900.37000.42400.42800.43100.44300.51200.647600 | Internal Plumbing Works | 7d | 2026-02-26 | 2026-03-04 | 1099 |  | Sector-44 Noida(2) | 9380384 |
| 1103 | 36900.37000.42400.42800.43100.44300.51200.647700 | Waterproofing | 12d | 2026-03-05 | 2026-03-16 | 1102 |  | Sector-44 Noida(2) | 9380394 |
| 1104 | 36900.37000.42400.42800.43100.44300.51200.647800 | Internal Plaster | 15d | 2026-03-17 | 2026-03-31 | 1102, 1103 |  | Sector-44 Noida(2) | 9380404 |
| 1105 | 36900.37000.42400.42800.43100.44300.51200.647900 | IPS flooring work | 11d | 2026-02-26 | 2026-03-08 | 1099 |  | Sector-44 Noida(2) | 9380414 |
| 1106 | 36900.37000.42400.42800.43100.44300.51200.648000 | Toilet dado work | 16d | 2026-04-01 | 2026-04-16 | 1102, 1103, 1104 |  | Sector-44 Noida(2) | 9380424 |
| 1107 | 36900.37000.42400.42800.43100.44300.51200.648100 | Toilet flooring work | 16d | 2026-04-17 | 2026-05-02 | 1106 |  | Sector-44 Noida(2) | 9380434 |
| 1108 | 36900.37000.42400.42800.43100.44300.51200.648200 | Living dinning flooring | 16d | 2026-05-03 | 2026-05-18 | 1105, 1107 |  | Sector-44 Noida(2) | 9380444 |
| 1109 | 36900.37000.42400.42800.43100.44300.51200.648300 | Electrical wiring work | 10d | 2026-05-09 | 2026-05-18 | 1108FS-10d |  | Sector-44 Noida(2) | 9380454 |
| 1110 | 36900.37000.42400.42800.43100.44300.51200.648400 | Aluminium door-window fixing | 17d | 2026-05-11 | 2026-05-27 | 1100, 1109FS-8d |  | Sector-44 Noida(2) | 9380464 |
| 1111 | 36900.37000.42400.42800.43100.44300.51200.648500 | Putty primer coat | 8d | 2026-05-20 | 2026-05-27 | 1110FS-8d |  | Sector-44 Noida(2) | 9380474 |
| 1112 | 36900.37000.42400.42800.43100.44300.51200.648600 | Prehung door fixing | 7d | 2026-05-23 | 2026-05-29 | 1111FS-5d |  | Sector-44 Noida(2) | 9380484 |
| 1113 | 36900.37000.42400.42800.43100.44300.51200.648700 | Painting 1st coat | 10d | 2026-05-30 | 2026-06-08 | 1112 |  | Sector-44 Noida(2) | 9380494 |
| 1114 | 36900.37000.42400.42800.43100.44300.51200.648800 | False Ceiling panel fixing | 8d | 2026-06-09 | 2026-06-16 | 1097, 1113 |  | Sector-44 Noida(2) | 9380504 |
| 1115 | 36900.37000.42400.42800.43100.44300.51300 | **6th Floor** | 121d | 2026-03-06 | 2026-07-04 |  | start no earlier than 2026-03-06 | Sector-44 Noida(2) | 9361934 |
| 1116 | 36900.37000.42400.42800.43100.44300.51300.648900 | Block Work | 10d | 2026-03-06 | 2026-03-15 | 1008 |  | Sector-44 Noida(2) | 9380514 |
| 1117 | 36900.37000.42400.42800.43100.44300.51300.649000 | Installation of temporary Main door | 7d | 2026-03-16 | 2026-03-22 | 1116 |  | Sector-44 Noida(2) | 9380524 |
| 1118 | 36900.37000.42400.42800.43100.44300.51300.649100 | Fire sprinkler pipe fixing | 3d | 2026-03-16 | 2026-03-18 | 1101, 1116 |  | Sector-44 Noida(2) | 9380534 |
| 1119 | 36900.37000.42400.42800.43100.44300.51300.649200 | Internal Plumbing Works | 7d | 2026-03-16 | 2026-03-22 | 1116 |  | Sector-44 Noida(2) | 9380544 |
| 1120 | 36900.37000.42400.42800.43100.44300.51300.649300 | Waterproofing | 12d | 2026-03-23 | 2026-04-03 | 1119 |  | Sector-44 Noida(2) | 9380554 |
| 1121 | 36900.37000.42400.42800.43100.44300.51300.649400 | Internal Plaster | 15d | 2026-04-04 | 2026-04-18 | 1119, 1120 |  | Sector-44 Noida(2) | 9380564 |
| 1122 | 36900.37000.42400.42800.43100.44300.51300.649500 | IPS flooring work | 11d | 2026-03-16 | 2026-03-26 | 1116 |  | Sector-44 Noida(2) | 9380574 |
| 1123 | 36900.37000.42400.42800.43100.44300.51300.649600 | Toilet dado work | 16d | 2026-04-19 | 2026-05-04 | 1119, 1120, 1121 |  | Sector-44 Noida(2) | 9380584 |
| 1124 | 36900.37000.42400.42800.43100.44300.51300.649700 | Toilet flooring work | 16d | 2026-05-05 | 2026-05-20 | 1123 |  | Sector-44 Noida(2) | 9380594 |
| 1125 | 36900.37000.42400.42800.43100.44300.51300.649800 | Living dinning flooring | 16d | 2026-05-21 | 2026-06-05 | 1122, 1124 |  | Sector-44 Noida(2) | 9380604 |
| 1126 | 36900.37000.42400.42800.43100.44300.51300.649900 | Electrical wiring work | 10d | 2026-05-27 | 2026-06-05 | 1125FS-10d |  | Sector-44 Noida(2) | 9380614 |
| 1127 | 36900.37000.42400.42800.43100.44300.51300.650000 | Aluminium door-window fixing | 17d | 2026-05-29 | 2026-06-14 | 1117, 1126FS-8d |  | Sector-44 Noida(2) | 9380624 |
| 1128 | 36900.37000.42400.42800.43100.44300.51300.650100 | Putty primer coat | 8d | 2026-06-07 | 2026-06-14 | 1127FS-8d |  | Sector-44 Noida(2) | 9380634 |
| 1129 | 36900.37000.42400.42800.43100.44300.51300.650200 | Prehung door fixing | 7d | 2026-06-10 | 2026-06-16 | 1128FS-5d |  | Sector-44 Noida(2) | 9380644 |
| 1130 | 36900.37000.42400.42800.43100.44300.51300.650300 | Painting 1st coat | 10d | 2026-06-17 | 2026-06-26 | 1129 |  | Sector-44 Noida(2) | 9380654 |
| 1131 | 36900.37000.42400.42800.43100.44300.51300.650400 | False Ceiling panel fixing | 8d | 2026-06-27 | 2026-07-04 | 1114, 1130 |  | Sector-44 Noida(2) | 9380664 |

| ID | WBS | Task | Duration | Start | Finish | Predecessors | Constraint | Calendar | Unique_Task_ID |
| --- | --- | --- | --- | --- | --- | --- | --- | --- | --- |
| 1132 | 36900.37000.42400.42800.43100.44300.51400 | **7th Floor** | 121d | 2026-03-14 | 2026-07-12 |  | start no earlier than 2026-03-14 | Sector-44 Noida(2) | 9361924 |
| 1133 | 36900.37000.42400.42800.43100.44300.51400.650500 | Block Work | 10d | 2026-03-14 | 2026-03-23 | 1009 |  | Sector-44 Noida(2) | 9380674 |
| 1134 | 36900.37000.42400.42800.43100.44300.51400.650600 | Installation of temporary Main door | 7d | 2026-03-24 | 2026-03-30 | 1133 |  | Sector-44 Noida(2) | 9380684 |
| 1135 | 36900.37000.42400.42800.43100.44300.51400.650700 | Fire sprinkler pipe fixing | 3d | 2026-03-24 | 2026-03-26 | 1118, 1133 |  | Sector-44 Noida(2) | 9380694 |
| 1136 | 36900.37000.42400.42800.43100.44300.51400.650800 | Internal Plumbing Works | 7d | 2026-03-24 | 2026-03-30 | 1133 |  | Sector-44 Noida(2) | 9380704 |
| 1137 | 36900.37000.42400.42800.43100.44300.51400.650900 | Waterproofing | 12d | 2026-03-31 | 2026-04-11 | 1136 |  | Sector-44 Noida(2) | 9380714 |
| 1138 | 36900.37000.42400.42800.43100.44300.51400.651000 | Internal Plaster | 15d | 2026-04-12 | 2026-04-26 | 1136, 1137 |  | Sector-44 Noida(2) | 9380724 |
| 1139 | 36900.37000.42400.42800.43100.44300.51400.651100 | IPS flooring work | 11d | 2026-03-24 | 2026-04-03 | 1133 |  | Sector-44 Noida(2) | 9380734 |
| 1140 | 36900.37000.42400.42800.43100.44300.51400.651200 | Toilet dado work | 16d | 2026-04-27 | 2026-05-12 | 1136, 1137, 1138 |  | Sector-44 Noida(2) | 9380744 |
| 1141 | 36900.37000.42400.42800.43100.44300.51400.651300 | Toilet flooring work | 16d | 2026-05-13 | 2026-05-28 | 1140 |  | Sector-44 Noida(2) | 9380754 |
| 1142 | 36900.37000.42400.42800.43100.44300.51400.651400 | Living dinning flooring | 16d | 2026-05-29 | 2026-06-13 | 1139, 1141 |  | Sector-44 Noida(2) | 9380764 |
| 1143 | 36900.37000.42400.42800.43100.44300.51400.651500 | Electrical wiring work | 10d | 2026-06-04 | 2026-06-13 | 1142FS-10d |  | Sector-44 Noida(2) | 9380774 |
| 1144 | 36900.37000.42400.42800.43100.44300.51400.651600 | Aluminium door-window fixing | 17d | 2026-06-06 | 2026-06-22 | 1134, 1143FS-8d |  | Sector-44 Noida(2) | 9380784 |
| 1145 | 36900.37000.42400.42800.43100.44300.51400.651700 | Putty primer coat | 8d | 2026-06-15 | 2026-06-22 | 1144FS-8d |  | Sector-44 Noida(2) | 9380794 |
| 1146 | 36900.37000.42400.42800.43100.44300.51400.651800 | Prehung door fixing | 7d | 2026-06-18 | 2026-06-24 | 1145FS-5d |  | Sector-44 Noida(2) | 9380804 |
| 1147 | 36900.37000.42400.42800.43100.44300.51400.651900 | Painting 1st coat | 10d | 2026-06-25 | 2026-07-04 | 1146 |  | Sector-44 Noida(2) | 9380814 |
| 1148 | 36900.37000.42400.42800.43100.44300.51400.652000 | False Ceiling panel fixing | 8d | 2026-07-05 | 2026-07-12 | 1131, 1147 |  | Sector-44 Noida(2) | 9380824 |
| 1149 | 36900.37000.42400.42800.43100.44300.51500 | **8th Floor** | 121d | 2026-03-24 | 2026-07-22 |  | start no earlier than 2026-03-24 | Sector-44 Noida(2) | 9361894 |
| 1150 | 36900.37000.42400.42800.43100.44300.51500.652100 | Block Work | 10d | 2026-03-24 | 2026-04-02 | 1010 |  | Sector-44 Noida(2) | 9380834 |
| 1151 | 36900.37000.42400.42800.43100.44300.51500.652200 | Installation of temporary Main door | 7d | 2026-04-03 | 2026-04-09 | 1150 |  | Sector-44 Noida(2) | 9380844 |
| 1152 | 36900.37000.42400.42800.43100.44300.51500.652300 | Fire sprinkler pipe fixing | 3d | 2026-04-03 | 2026-04-05 | 1135, 1150 |  | Sector-44 Noida(2) | 9380854 |
| 1153 | 36900.37000.42400.42800.43100.44300.51500.652400 | Internal Plumbing Works | 7d | 2026-04-03 | 2026-04-09 | 1150 |  | Sector-44 Noida(2) | 9380864 |
| 1154 | 36900.37000.42400.42800.43100.44300.51500.652500 | Waterproofing | 12d | 2026-04-10 | 2026-04-21 | 1153 |  | Sector-44 Noida(2) | 9380874 |
| 1155 | 36900.37000.42400.42800.43100.44300.51500.652600 | Internal Plaster | 15d | 2026-04-22 | 2026-05-06 | 1153, 1154 |  | Sector-44 Noida(2) | 9380884 |
| 1156 | 36900.37000.42400.42800.43100.44300.51500.652700 | IPS flooring work | 11d | 2026-04-03 | 2026-04-13 | 1150 |  | Sector-44 Noida(2) | 9380894 |
| 1157 | 36900.37000.42400.42800.43100.44300.51500.652800 | Toilet dado work | 16d | 2026-05-07 | 2026-05-22 | 1153, 1154, 1155 |  | Sector-44 Noida(2) | 9380904 |
| 1158 | 36900.37000.42400.42800.43100.44300.51500.652900 | Toilet flooring work | 16d | 2026-05-23 | 2026-06-07 | 1157 |  | Sector-44 Noida(2) | 9380914 |
| 1159 | 36900.37000.42400.42800.43100.44300.51500.653000 | Living dinning flooring | 16d | 2026-06-08 | 2026-06-23 | 1156, 1158 |  | Sector-44 Noida(2) | 9380924 |
| 1160 | 36900.37000.42400.42800.43100.44300.51500.653100 | Electrical wiring work | 10d | 2026-06-14 | 2026-06-23 | 1159FS-10d |  | Sector-44 Noida(2) | 9380934 |
| 1161 | 36900.37000.42400.42800.43100.44300.51500.653200 | Aluminium door-window fixing | 17d | 2026-06-16 | 2026-07-02 | 1151, 1160FS-8d |  | Sector-44 Noida(2) | 9380944 |
| 1162 | 36900.37000.42400.42800.43100.44300.51500.653300 | Putty primer coat | 8d | 2026-06-25 | 2026-07-02 | 1161FS-8d |  | Sector-44 Noida(2) | 9380954 |
| 1163 | 36900.37000.42400.42800.43100.44300.51500.653400 | Prehung door fixing | 7d | 2026-06-28 | 2026-07-04 | 1162FS-5d |  | Sector-44 Noida(2) | 9380964 |
| 1164 | 36900.37000.42400.42800.43100.44300.51500.653500 | Painting 1st coat | 10d | 2026-07-05 | 2026-07-14 | 1163 |  | Sector-44 Noida(2) | 9380974 |
| 1165 | 36900.37000.42400.42800.43100.44300.51500.653600 | False Ceiling panel fixing | 8d | 2026-07-15 | 2026-07-22 | 1148, 1164 |  | Sector-44 Noida(2) | 9380984 |

| ID | WBS | Task | Duration | Start | Finish | Predecessors | Constraint | Calendar | Unique_Task_ID |
| --- | --- | --- | --- | --- | --- | --- | --- | --- | --- |
| 1166 | 36900.37000.42400.42800.43100.44300.51600 | **9th Floor** | 121d | 2026-04-02 | 2026-07-31 |  | start no earlier than 2026-04-02 | Sector-44 Noida(2) | 9361884 |
| 1167 | 36900.37000.42400.42800.43100.44300.51600.653700 | Block Work | 10d | 2026-04-02 | 2026-04-11 | 1011 |  | Sector-44 Noida(2) | 9380994 |
| 1168 | 36900.37000.42400.42800.43100.44300.51600.653800 | Installation of temporary Main door | 7d | 2026-04-12 | 2026-04-18 | 1167 |  | Sector-44 Noida(2) | 9381004 |
| 1169 | 36900.37000.42400.42800.43100.44300.51600.653900 | Fire sprinkler pipe fixing | 3d | 2026-04-12 | 2026-04-14 | 1152, 1167 |  | Sector-44 Noida(2) | 9381014 |
| 1170 | 36900.37000.42400.42800.43100.44300.51600.654000 | Internal Plumbing Works | 7d | 2026-04-12 | 2026-04-18 | 1167 |  | Sector-44 Noida(2) | 9381024 |
| 1171 | 36900.37000.42400.42800.43100.44300.51600.654100 | Waterproofing | 12d | 2026-04-19 | 2026-04-30 | 1170 |  | Sector-44 Noida(2) | 9381034 |
| 1172 | 36900.37000.42400.42800.43100.44300.51600.654200 | Internal Plaster | 15d | 2026-05-01 | 2026-05-15 | 1170, 1171 |  | Sector-44 Noida(2) | 9381044 |
| 1173 | 36900.37000.42400.42800.43100.44300.51600.654300 | IPS flooring work | 11d | 2026-04-12 | 2026-04-22 | 1167 |  | Sector-44 Noida(2) | 9381054 |
| 1174 | 36900.37000.42400.42800.43100.44300.51600.654400 | Toilet dado work | 16d | 2026-05-16 | 2026-05-31 | 1170, 1171, 1172 |  | Sector-44 Noida(2) | 9381064 |
| 1175 | 36900.37000.42400.42800.43100.44300.51600.654500 | Toilet flooring work | 16d | 2026-06-01 | 2026-06-16 | 1174 |  | Sector-44 Noida(2) | 9381074 |
| 1176 | 36900.37000.42400.42800.43100.44300.51600.654600 | Living dinning flooring | 16d | 2026-06-17 | 2026-07-02 | 1173, 1175 |  | Sector-44 Noida(2) | 9381084 |
| 1177 | 36900.37000.42400.42800.43100.44300.51600.654700 | Electrical wiring work | 10d | 2026-06-23 | 2026-07-02 | 1176FS-10d |  | Sector-44 Noida(2) | 9381094 |
| 1178 | 36900.37000.42400.42800.43100.44300.51600.654800 | Aluminium door-window fixing | 17d | 2026-06-25 | 2026-07-11 | 1168, 1177FS-8d |  | Sector-44 Noida(2) | 9381104 |
| 1179 | 36900.37000.42400.42800.43100.44300.51600.654900 | Putty primer coat | 8d | 2026-07-04 | 2026-07-11 | 1178FS-8d |  | Sector-44 Noida(2) | 9381114 |
| 1180 | 36900.37000.42400.42800.43100.44300.51600.655000 | Prehung door fixing | 7d | 2026-07-07 | 2026-07-13 | 1179FS-5d |  | Sector-44 Noida(2) | 9381124 |
| 1181 | 36900.37000.42400.42800.43100.44300.51600.655100 | Painting 1st coat | 10d | 2026-07-14 | 2026-07-23 | 1180 |  | Sector-44 Noida(2) | 9381134 |
| 1182 | 36900.37000.42400.42800.43100.44300.51600.655200 | False Ceiling panel fixing | 8d | 2026-07-24 | 2026-07-31 | 1165, 1181 |  | Sector-44 Noida(2) | 9381144 |
| 1183 | 36900.37000.42400.42800.43100.44300.51700 | **10th Floor** | 121d | 2026-04-11 | 2026-08-09 |  | start no earlier than 2026-04-11 | Sector-44 Noida(2) | 9361874 |
| 1184 | 36900.37000.42400.42800.43100.44300.51700.655300 | Block Work | 10d | 2026-04-11 | 2026-04-20 | 1012 |  | Sector-44 Noida(2) | 9381154 |
| 1185 | 36900.37000.42400.42800.43100.44300.51700.655400 | Installation of temporary Main door | 7d | 2026-04-21 | 2026-04-27 | 1184 |  | Sector-44 Noida(2) | 9381164 |
| 1186 | 36900.37000.42400.42800.43100.44300.51700.655500 | Fire sprinkler pipe fixing | 3d | 2026-04-21 | 2026-04-23 | 1169, 1184 |  | Sector-44 Noida(2) | 9381174 |
| 1187 | 36900.37000.42400.42800.43100.44300.51700.655600 | Internal Plumbing Works | 7d | 2026-04-21 | 2026-04-27 | 1184 |  | Sector-44 Noida(2) | 9381184 |
| 1188 | 36900.37000.42400.42800.43100.44300.51700.655700 | Waterproofing | 12d | 2026-04-28 | 2026-05-09 | 1187 |  | Sector-44 Noida(2) | 9381194 |
| 1189 | 36900.37000.42400.42800.43100.44300.51700.655800 | Internal Plaster | 15d | 2026-05-10 | 2026-05-24 | 1187, 1188 |  | Sector-44 Noida(2) | 9381204 |
| 1190 | 36900.37000.42400.42800.43100.44300.51700.655900 | IPS flooring work | 11d | 2026-04-21 | 2026-05-01 | 1184 |  | Sector-44 Noida(2) | 9381214 |
| 1191 | 36900.37000.42400.42800.43100.44300.51700.656000 | Toilet dado work | 16d | 2026-05-25 | 2026-06-09 | 1187, 1188, 1189 |  | Sector-44 Noida(2) | 9381224 |
| 1192 | 36900.37000.42400.42800.43100.44300.51700.656100 | Toilet flooring work | 16d | 2026-06-10 | 2026-06-25 | 1191 |  | Sector-44 Noida(2) | 9381234 |
| 1193 | 36900.37000.42400.42800.43100.44300.51700.656200 | Living dinning flooring | 16d | 2026-06-26 | 2026-07-11 | 1190, 1192 |  | Sector-44 Noida(2) | 9381244 |
| 1194 | 36900.37000.42400.42800.43100.44300.51700.656300 | Electrical wiring work | 10d | 2026-07-02 | 2026-07-11 | 1193FS-10d |  | Sector-44 Noida(2) | 9381254 |
| 1195 | 36900.37000.42400.42800.43100.44300.51700.656400 | Aluminium door-window fixing | 17d | 2026-07-04 | 2026-07-20 | 1185, 1194FS-8d |  | Sector-44 Noida(2) | 9381264 |
| 1196 | 36900.37000.42400.42800.43100.44300.51700.656500 | Putty primer coat | 8d | 2026-07-13 | 2026-07-20 | 1195FS-8d |  | Sector-44 Noida(2) | 9381274 |
| 1197 | 36900.37000.42400.42800.43100.44300.51700.656600 | Prehung door fixing | 7d | 2026-07-16 | 2026-07-22 | 1196FS-5d |  | Sector-44 Noida(2) | 9381284 |
| 1198 | 36900.37000.42400.42800.43100.44300.51700.656700 | Painting 1st coat | 10d | 2026-07-23 | 2026-08-01 | 1197 |  | Sector-44 Noida(2) | 9381294 |
| 1199 | 36900.37000.42400.42800.43100.44300.51700.656800 | False Ceiling panel fixing | 8d | 2026-08-02 | 2026-08-09 | 1182, 1198 |  | Sector-44 Noida(2) | 9381304 |

| ID | WBS | Task | Duration | Start | Finish | Predecessors | Constraint | Calendar | Unique_Task_ID |
| --- | --- | --- | --- | --- | --- | --- | --- | --- | --- |
| 1200 | 36900.37000.42400.42800.43100.44300.51800 | **11th Floor** | 121d | 2026-04-20 | 2026-08-18 |  | start no earlier than 2026-04-20 | Sector-44 Noida(2) | 9361864 |
| 1201 | 36900.37000.42400.42800.43100.44300.51800.656900 | Block Work | 10d | 2026-04-20 | 2026-04-29 | 1013 |  | Sector-44 Noida(2) | 9381314 |
| 1202 | 36900.37000.42400.42800.43100.44300.51800.657000 | Installation of temporary Main door | 7d | 2026-04-30 | 2026-05-06 | 1201 |  | Sector-44 Noida(2) | 9381324 |
| 1203 | 36900.37000.42400.42800.43100.44300.51800.657100 | Fire sprinkler pipe fixing | 3d | 2026-04-30 | 2026-05-02 | 1186, 1201 |  | Sector-44 Noida(2) | 9381334 |
| 1204 | 36900.37000.42400.42800.43100.44300.51800.657200 | Internal Plumbing Works | 7d | 2026-04-30 | 2026-05-06 | 1201 |  | Sector-44 Noida(2) | 9381344 |
| 1205 | 36900.37000.42400.42800.43100.44300.51800.657300 | Waterproofing | 12d | 2026-05-07 | 2026-05-18 | 1204 |  | Sector-44 Noida(2) | 9381354 |
| 1206 | 36900.37000.42400.42800.43100.44300.51800.657400 | Internal Plaster | 15d | 2026-05-19 | 2026-06-02 | 1204, 1205 |  | Sector-44 Noida(2) | 9381364 |
| 1207 | 36900.37000.42400.42800.43100.44300.51800.657500 | IPS flooring work | 11d | 2026-04-30 | 2026-05-10 | 1201 |  | Sector-44 Noida(2) | 9381374 |
| 1208 | 36900.37000.42400.42800.43100.44300.51800.657600 | Toilet dado work | 16d | 2026-06-03 | 2026-06-18 | 1204, 1205, 1206 |  | Sector-44 Noida(2) | 9381384 |
| 1209 | 36900.37000.42400.42800.43100.44300.51800.657700 | Toilet flooring work | 16d | 2026-06-19 | 2026-07-04 | 1208 |  | Sector-44 Noida(2) | 9381394 |
| 1210 | 36900.37000.42400.42800.43100.44300.51800.657800 | Living dinning flooring | 16d | 2026-07-05 | 2026-07-20 | 1207, 1209 |  | Sector-44 Noida(2) | 9381404 |
| 1211 | 36900.37000.42400.42800.43100.44300.51800.657900 | Electrical wiring work | 10d | 2026-07-11 | 2026-07-20 | 1210FS-10d |  | Sector-44 Noida(2) | 9381414 |
| 1212 | 36900.37000.42400.42800.43100.44300.51800.658000 | Aluminium door-window fixing | 17d | 2026-07-13 | 2026-07-29 | 1202, 1211FS-8d |  | Sector-44 Noida(2) | 9381424 |
| 1213 | 36900.37000.42400.42800.43100.44300.51800.658100 | Putty primer coat | 8d | 2026-07-22 | 2026-07-29 | 1212FS-8d |  | Sector-44 Noida(2) | 9381434 |
| 1214 | 36900.37000.42400.42800.43100.44300.51800.658200 | Prehung door fixing | 7d | 2026-07-25 | 2026-07-31 | 1213FS-5d |  | Sector-44 Noida(2) | 9381444 |
| 1215 | 36900.37000.42400.42800.43100.44300.51800.658300 | Painting 1st coat | 10d | 2026-08-01 | 2026-08-10 | 1214 |  | Sector-44 Noida(2) | 9381454 |
| 1216 | 36900.37000.42400.42800.43100.44300.51800.658400 | False Ceiling panel fixing | 8d | 2026-08-11 | 2026-08-18 | 1199, 1215 |  | Sector-44 Noida(2) | 9381464 |
| 1217 | 36900.37000.42400.42800.43100.44300.51900 | **12th Floor** | 121d | 2026-04-29 | 2026-08-27 |  | start no earlier than 2026-04-29 | Sector-44 Noida(2) | 9361854 |
| 1218 | 36900.37000.42400.42800.43100.44300.51900.658500 | Block Work | 10d | 2026-04-29 | 2026-05-08 | 1014 |  | Sector-44 Noida(2) | 9381474 |
| 1219 | 36900.37000.42400.42800.43100.44300.51900.658600 | Installation of temporary Main door | 7d | 2026-05-09 | 2026-05-15 | 1218 |  | Sector-44 Noida(2) | 9381484 |
| 1220 | 36900.37000.42400.42800.43100.44300.51900.658700 | Fire sprinkler pipe fixing | 3d | 2026-05-09 | 2026-05-11 | 1203, 1218 |  | Sector-44 Noida(2) | 9381494 |
| 1221 | 36900.37000.42400.42800.43100.44300.51900.658800 | Internal Plumbing Works | 7d | 2026-05-09 | 2026-05-15 | 1218 |  | Sector-44 Noida(2) | 9381504 |
| 1222 | 36900.37000.42400.42800.43100.44300.51900.658900 | Waterproofing | 12d | 2026-05-16 | 2026-05-27 | 1221 |  | Sector-44 Noida(2) | 9381514 |
| 1223 | 36900.37000.42400.42800.43100.44300.51900.659000 | Internal Plaster | 15d | 2026-05-28 | 2026-06-11 | 1221, 1222 |  | Sector-44 Noida(2) | 9381524 |
| 1224 | 36900.37000.42400.42800.43100.44300.51900.659100 | IPS flooring work | 11d | 2026-05-09 | 2026-05-19 | 1218 |  | Sector-44 Noida(2) | 9381534 |
| 1225 | 36900.37000.42400.42800.43100.44300.51900.659200 | Toilet dado work | 16d | 2026-06-12 | 2026-06-27 | 1221, 1222, 1223 |  | Sector-44 Noida(2) | 9381544 |
| 1226 | 36900.37000.42400.42800.43100.44300.51900.659300 | Toilet flooring work | 16d | 2026-06-28 | 2026-07-13 | 1225 |  | Sector-44 Noida(2) | 9381554 |
| 1227 | 36900.37000.42400.42800.43100.44300.51900.659400 | Living dinning flooring | 16d | 2026-07-14 | 2026-07-29 | 1224, 1226 |  | Sector-44 Noida(2) | 9381564 |
| 1228 | 36900.37000.42400.42800.43100.44300.51900.659500 | Electrical wiring work | 10d | 2026-07-20 | 2026-07-29 | 1227FS-10d |  | Sector-44 Noida(2) | 9381574 |
| 1229 | 36900.37000.42400.42800.43100.44300.51900.659600 | Aluminium door-window fixing | 17d | 2026-07-22 | 2026-08-07 | 1219, 1228FS-8d |  | Sector-44 Noida(2) | 9381584 |
| 1230 | 36900.37000.42400.42800.43100.44300.51900.659700 | Putty primer coat | 8d | 2026-07-31 | 2026-08-07 | 1229FS-8d |  | Sector-44 Noida(2) | 9381594 |
| 1231 | 36900.37000.42400.42800.43100.44300.51900.659800 | Prehung door fixing | 7d | 2026-08-03 | 2026-08-09 | 1230FS-5d |  | Sector-44 Noida(2) | 9381604 |
| 1232 | 36900.37000.42400.42800.43100.44300.51900.659900 | Painting 1st coat | 10d | 2026-08-10 | 2026-08-19 | 1231 |  | Sector-44 Noida(2) | 9381614 |
| 1233 | 36900.37000.42400.42800.43100.44300.51900.660000 | False Ceiling panel fixing | 8d | 2026-08-20 | 2026-08-27 | 1216, 1232 |  | Sector-44 Noida(2) | 9381624 |

| ID | WBS | Task | Duration | Start | Finish | Predecessors | Constraint | Calendar | Unique_Task_ID |
| --- | --- | --- | --- | --- | --- | --- | --- | --- | --- |
| 1234 | 36900.37000.42400.42800.43100.44300.52000 | **13th Floor** | 121d | 2026-05-08 | 2026-09-05 |  | start no earlier than 2026-05-08 | Sector-44 Noida(2) | 9361834 |
| 1235 | 36900.37000.42400.42800.43100.44300.52000.660100 | Block Work | 10d | 2026-05-08 | 2026-05-17 | 1015 |  | Sector-44 Noida(2) | 9381634 |
| 1236 | 36900.37000.42400.42800.43100.44300.52000.660200 | Installation of temporary Main door | 7d | 2026-05-18 | 2026-05-24 | 1235 |  | Sector-44 Noida(2) | 9381644 |
| 1237 | 36900.37000.42400.42800.43100.44300.52000.660300 | Fire sprinkler pipe fixing | 3d | 2026-05-18 | 2026-05-20 | 1220, 1235 |  | Sector-44 Noida(2) | 9381654 |
| 1238 | 36900.37000.42400.42800.43100.44300.52000.660400 | Internal Plumbing Works | 7d | 2026-05-18 | 2026-05-24 | 1235 |  | Sector-44 Noida(2) | 9381664 |
| 1239 | 36900.37000.42400.42800.43100.44300.52000.660500 | Waterproofing | 12d | 2026-05-25 | 2026-06-05 | 1238 |  | Sector-44 Noida(2) | 9381674 |
| 1240 | 36900.37000.42400.42800.43100.44300.52000.660600 | Internal Plaster | 15d | 2026-06-06 | 2026-06-20 | 1238, 1239 |  | Sector-44 Noida(2) | 9381684 |
| 1241 | 36900.37000.42400.42800.43100.44300.52000.660700 | IPS flooring work | 11d | 2026-05-18 | 2026-05-28 | 1235 |  | Sector-44 Noida(2) | 9381694 |
| 1242 | 36900.37000.42400.42800.43100.44300.52000.660800 | Toilet dado work | 16d | 2026-06-21 | 2026-07-06 | 1238, 1239, 1240 |  | Sector-44 Noida(2) | 9381704 |
| 1243 | 36900.37000.42400.42800.43100.44300.52000.660900 | Toilet flooring work | 16d | 2026-07-07 | 2026-07-22 | 1242 |  | Sector-44 Noida(2) | 9381714 |
| 1244 | 36900.37000.42400.42800.43100.44300.52000.661000 | Living dinning flooring | 16d | 2026-07-23 | 2026-08-07 | 1241, 1243 |  | Sector-44 Noida(2) | 9381724 |
| 1245 | 36900.37000.42400.42800.43100.44300.52000.661100 | Electrical wiring work | 10d | 2026-07-29 | 2026-08-07 | 1244FS-10d |  | Sector-44 Noida(2) | 9381734 |
| 1246 | 36900.37000.42400.42800.43100.44300.52000.661200 | Aluminium door-window fixing | 17d | 2026-07-31 | 2026-08-16 | 1236, 1245FS-8d |  | Sector-44 Noida(2) | 9381744 |
| 1247 | 36900.37000.42400.42800.43100.44300.52000.661300 | Putty primer coat | 8d | 2026-08-09 | 2026-08-16 | 1246FS-8d |  | Sector-44 Noida(2) | 9381754 |
| 1248 | 36900.37000.42400.42800.43100.44300.52000.661400 | Prehung door fixing | 7d | 2026-08-12 | 2026-08-18 | 1247FS-5d |  | Sector-44 Noida(2) | 9381764 |
| 1249 | 36900.37000.42400.42800.43100.44300.52000.661500 | Painting 1st coat | 10d | 2026-08-19 | 2026-08-28 | 1248 |  | Sector-44 Noida(2) | 9381774 |
| 1250 | 36900.37000.42400.42800.43100.44300.52000.661600 | False Ceiling panel fixing | 8d | 2026-08-29 | 2026-09-05 | 1233, 1249 |  | Sector-44 Noida(2) | 9381784 |
| 1251 | 36900.37000.42400.42800.43100.44300.52100 | **14th Floor** | 121d | 2026-05-17 | 2026-09-14 |  | start no earlier than 2026-05-17 | Sector-44 Noida(2) | 9361824 |
| 1252 | 36900.37000.42400.42800.43100.44300.52100.661700 | Block Work | 10d | 2026-05-17 | 2026-05-26 | 1016 |  | Sector-44 Noida(2) | 9381794 |
| 1253 | 36900.37000.42400.42800.43100.44300.52100.661800 | Installation of temporary Main door | 7d | 2026-05-27 | 2026-06-02 | 1252 |  | Sector-44 Noida(2) | 9381804 |
| 1254 | 36900.37000.42400.42800.43100.44300.52100.661900 | Fire sprinkler pipe fixing | 3d | 2026-05-27 | 2026-05-29 | 1237, 1252 |  | Sector-44 Noida(2) | 9381814 |
| 1255 | 36900.37000.42400.42800.43100.44300.52100.662000 | Internal Plumbing Works | 7d | 2026-05-27 | 2026-06-02 | 1252 |  | Sector-44 Noida(2) | 9381824 |
| 1256 | 36900.37000.42400.42800.43100.44300.52100.662100 | Waterproofing | 12d | 2026-06-03 | 2026-06-14 | 1255 |  | Sector-44 Noida(2) | 9381834 |
| 1257 | 36900.37000.42400.42800.43100.44300.52100.662200 | Internal Plaster | 15d | 2026-06-15 | 2026-06-29 | 1255, 1256 |  | Sector-44 Noida(2) | 9381844 |
| 1258 | 36900.37000.42400.42800.43100.44300.52100.662300 | IPS flooring work | 11d | 2026-05-27 | 2026-06-06 | 1252 |  | Sector-44 Noida(2) | 9381854 |
| 1259 | 36900.37000.42400.42800.43100.44300.52100.662400 | Toilet dado work | 16d | 2026-06-30 | 2026-07-15 | 1255, 1256, 1257 |  | Sector-44 Noida(2) | 9381864 |
| 1260 | 36900.37000.42400.42800.43100.44300.52100.662500 | Toilet flooring work | 16d | 2026-07-16 | 2026-07-31 | 1259 |  | Sector-44 Noida(2) | 9381874 |
| 1261 | 36900.37000.42400.42800.43100.44300.52100.662600 | Living dinning flooring | 16d | 2026-08-01 | 2026-08-16 | 1258, 1260 |  | Sector-44 Noida(2) | 9381884 |
| 1262 | 36900.37000.42400.42800.43100.44300.52100.662700 | Electrical wiring work | 10d | 2026-08-07 | 2026-08-16 | 1261FS-10d |  | Sector-44 Noida(2) | 9381894 |
| 1263 | 36900.37000.42400.42800.43100.44300.52100.662800 | Aluminium door-window fixing | 17d | 2026-08-09 | 2026-08-25 | 1253, 1262FS-8d |  | Sector-44 Noida(2) | 9381904 |
| 1264 | 36900.37000.42400.42800.43100.44300.52100.662900 | Putty primer coat | 8d | 2026-08-18 | 2026-08-25 | 1263FS-8d |  | Sector-44 Noida(2) | 9381914 |
| 1265 | 36900.37000.42400.42800.43100.44300.52100.663000 | Prehung door fixing | 7d | 2026-08-21 | 2026-08-27 | 1264FS-5d |  | Sector-44 Noida(2) | 9381924 |
| 1266 | 36900.37000.42400.42800.43100.44300.52100.663100 | Painting 1st coat | 10d | 2026-08-28 | 2026-09-06 | 1265 |  | Sector-44 Noida(2) | 9381934 |
| 1267 | 36900.37000.42400.42800.43100.44300.52100.663200 | False Ceiling panel fixing | 8d | 2026-09-07 | 2026-09-14 | 1250, 1266 |  | Sector-44 Noida(2) | 9381944 |

| ID | WBS | Task | Duration | Start | Finish | Predecessors | Constraint | Calendar | Unique_Task_ID |
| --- | --- | --- | --- | --- | --- | --- | --- | --- | --- |
| 1268 | 36900.37000.42400.42800.43100.44300.52200 | **15th Floor** | 121d | 2026-05-26 | 2026-09-23 |  | start no earlier than 2026-05-26 | Sector-44 Noida(2) | 9361814 |
| 1269 | 36900.37000.42400.42800.43100.44300.52200.663300 | Block Work | 10d | 2026-05-26 | 2026-06-04 | 1017 |  | Sector-44 Noida(2) | 9381954 |
| 1270 | 36900.37000.42400.42800.43100.44300.52200.663400 | Installation of temporary Main door | 7d | 2026-06-05 | 2026-06-11 | 1269 |  | Sector-44 Noida(2) | 9381964 |
| 1271 | 36900.37000.42400.42800.43100.44300.52200.663500 | Fire sprinkler pipe fixing | 3d | 2026-06-05 | 2026-06-07 | 1254, 1269 |  | Sector-44 Noida(2) | 9381974 |
| 1272 | 36900.37000.42400.42800.43100.44300.52200.663600 | Internal Plumbing Works | 7d | 2026-06-05 | 2026-06-11 | 1269 |  | Sector-44 Noida(2) | 9381984 |
| 1273 | 36900.37000.42400.42800.43100.44300.52200.663700 | Waterproofing | 12d | 2026-06-12 | 2026-06-23 | 1272 |  | Sector-44 Noida(2) | 9381994 |
| 1274 | 36900.37000.42400.42800.43100.44300.52200.663800 | Internal Plaster | 15d | 2026-06-24 | 2026-07-08 | 1272, 1273 |  | Sector-44 Noida(2) | 9382004 |
| 1275 | 36900.37000.42400.42800.43100.44300.52200.663900 | IPS flooring work | 11d | 2026-06-05 | 2026-06-15 | 1269 |  | Sector-44 Noida(2) | 9382014 |
| 1276 | 36900.37000.42400.42800.43100.44300.52200.664000 | Toilet dado work | 16d | 2026-07-09 | 2026-07-24 | 1272, 1273, 1274 |  | Sector-44 Noida(2) | 9382024 |
| 1277 | 36900.37000.42400.42800.43100.44300.52200.664100 | Toilet flooring work | 16d | 2026-07-25 | 2026-08-09 | 1276 |  | Sector-44 Noida(2) | 9382034 |
| 1278 | 36900.37000.42400.42800.43100.44300.52200.664200 | Living dinning flooring | 16d | 2026-08-10 | 2026-08-25 | 1275, 1277 |  | Sector-44 Noida(2) | 9382044 |
| 1279 | 36900.37000.42400.42800.43100.44300.52200.664300 | Electrical wiring work | 10d | 2026-08-16 | 2026-08-25 | 1278FS-10d |  | Sector-44 Noida(2) | 9382054 |
| 1280 | 36900.37000.42400.42800.43100.44300.52200.664400 | Aluminium door-window fixing | 17d | 2026-08-18 | 2026-09-03 | 1270, 1279FS-8d |  | Sector-44 Noida(2) | 9382064 |
| 1281 | 36900.37000.42400.42800.43100.44300.52200.664500 | Putty primer coat | 8d | 2026-08-27 | 2026-09-03 | 1280FS-8d |  | Sector-44 Noida(2) | 9382074 |
| 1282 | 36900.37000.42400.42800.43100.44300.52200.664600 | Prehung door fixing | 7d | 2026-08-30 | 2026-09-05 | 1281FS-5d |  | Sector-44 Noida(2) | 9382084 |
| 1283 | 36900.37000.42400.42800.43100.44300.52200.664700 | Painting 1st coat | 10d | 2026-09-06 | 2026-09-15 | 1282 |  | Sector-44 Noida(2) | 9382094 |
| 1284 | 36900.37000.42400.42800.43100.44300.52200.664800 | False Ceiling panel fixing | 8d | 2026-09-16 | 2026-09-23 | 1267, 1283 |  | Sector-44 Noida(2) | 9382104 |
| 1285 | 36900.37000.42400.42800.43100.44300.52300 | **16th Floor** | 121d | 2026-06-03 | 2026-10-01 |  | start no earlier than 2026-06-03 | Sector-44 Noida(2) | 9361804 |
| 1286 | 36900.37000.42400.42800.43100.44300.52300.664900 | Block Work | 10d | 2026-06-03 | 2026-06-12 | 1018 |  | Sector-44 Noida(2) | 9382114 |
| 1287 | 36900.37000.42400.42800.43100.44300.52300.665000 | Installation of temporary Main door | 7d | 2026-06-13 | 2026-06-19 | 1286 |  | Sector-44 Noida(2) | 9382124 |
| 1288 | 36900.37000.42400.42800.43100.44300.52300.665100 | Fire sprinkler pipe fixing | 3d | 2026-06-13 | 2026-06-15 | 1271, 1286 |  | Sector-44 Noida(2) | 9382134 |
| 1289 | 36900.37000.42400.42800.43100.44300.52300.665200 | Internal Plumbing Works | 7d | 2026-06-13 | 2026-06-19 | 1286 |  | Sector-44 Noida(2) | 9382144 |
| 1290 | 36900.37000.42400.42800.43100.44300.52300.665300 | Waterproofing | 12d | 2026-06-20 | 2026-07-01 | 1289 |  | Sector-44 Noida(2) | 9382154 |
| 1291 | 36900.37000.42400.42800.43100.44300.52300.665400 | Internal Plaster | 15d | 2026-07-02 | 2026-07-16 | 1289, 1290 |  | Sector-44 Noida(2) | 9382164 |
| 1292 | 36900.37000.42400.42800.43100.44300.52300.665500 | IPS flooring work | 11d | 2026-06-13 | 2026-06-23 | 1286 |  | Sector-44 Noida(2) | 9382174 |
| 1293 | 36900.37000.42400.42800.43100.44300.52300.665600 | Toilet dado work | 16d | 2026-07-17 | 2026-08-01 | 1289, 1290, 1291 |  | Sector-44 Noida(2) | 9382184 |
| 1294 | 36900.37000.42400.42800.43100.44300.52300.665700 | Toilet flooring work | 16d | 2026-08-02 | 2026-08-17 | 1293 |  | Sector-44 Noida(2) | 9382194 |
| 1295 | 36900.37000.42400.42800.43100.44300.52300.665800 | Living dinning flooring | 16d | 2026-08-18 | 2026-09-02 | 1292, 1294 |  | Sector-44 Noida(2) | 9382204 |
| 1296 | 36900.37000.42400.42800.43100.44300.52300.665900 | Electrical wiring work | 10d | 2026-08-24 | 2026-09-02 | 1295FS-10d |  | Sector-44 Noida(2) | 9382214 |
| 1297 | 36900.37000.42400.42800.43100.44300.52300.666000 | Aluminium door-window fixing | 17d | 2026-08-26 | 2026-09-11 | 1287, 1296FS-8d |  | Sector-44 Noida(2) | 9382224 |
| 1298 | 36900.37000.42400.42800.43100.44300.52300.666100 | Putty primer coat | 8d | 2026-09-04 | 2026-09-11 | 1297FS-8d |  | Sector-44 Noida(2) | 9382234 |
| 1299 | 36900.37000.42400.42800.43100.44300.52300.666200 | Prehung door fixing | 7d | 2026-09-07 | 2026-09-13 | 1298FS-5d |  | Sector-44 Noida(2) | 9382244 |
| 1300 | 36900.37000.42400.42800.43100.44300.52300.666300 | Painting 1st coat | 10d | 2026-09-14 | 2026-09-23 | 1299 |  | Sector-44 Noida(2) | 9382254 |
| 1301 | 36900.37000.42400.42800.43100.44300.52300.666400 | False Ceiling panel fixing | 8d | 2026-09-24 | 2026-10-01 | 1284, 1300 |  | Sector-44 Noida(2) | 9382264 |

| ID | WBS | Task | Duration | Start | Finish | Predecessors | Constraint | Calendar | Unique_Task_ID |
| --- | --- | --- | --- | --- | --- | --- | --- | --- | --- |
| 1302 | 36900.37000.42400.42800.43100.44300.52400 | **17th Floor** | 121d | 2026-06-11 | 2026-10-09 |  | start no earlier than 2026-06-11 | Sector-44 Noida(2) | 9361794 |
| 1303 | 36900.37000.42400.42800.43100.44300.52400.666500 | Block Work | 10d | 2026-06-11 | 2026-06-20 | 1019 |  | Sector-44 Noida(2) | 9382274 |
| 1304 | 36900.37000.42400.42800.43100.44300.52400.666600 | Installation of temporary Main door | 7d | 2026-06-21 | 2026-06-27 | 1303 |  | Sector-44 Noida(2) | 9382284 |
| 1305 | 36900.37000.42400.42800.43100.44300.52400.666700 | Fire sprinkler pipe fixing | 3d | 2026-06-21 | 2026-06-23 | 1288, 1303 |  | Sector-44 Noida(2) | 9382294 |
| 1306 | 36900.37000.42400.42800.43100.44300.52400.666800 | Internal Plumbing Works | 7d | 2026-06-21 | 2026-06-27 | 1303 |  | Sector-44 Noida(2) | 9382304 |
| 1307 | 36900.37000.42400.42800.43100.44300.52400.666900 | Waterproofing | 12d | 2026-06-28 | 2026-07-09 | 1306 |  | Sector-44 Noida(2) | 9382314 |
| 1308 | 36900.37000.42400.42800.43100.44300.52400.667000 | Internal Plaster | 15d | 2026-07-10 | 2026-07-24 | 1306, 1307 |  | Sector-44 Noida(2) | 9382324 |
| 1309 | 36900.37000.42400.42800.43100.44300.52400.667100 | IPS flooring work | 11d | 2026-06-21 | 2026-07-01 | 1303 |  | Sector-44 Noida(2) | 9382334 |
| 1310 | 36900.37000.42400.42800.43100.44300.52400.667200 | Toilet dado work | 16d | 2026-07-25 | 2026-08-09 | 1306, 1307, 1308 |  | Sector-44 Noida(2) | 9382344 |
| 1311 | 36900.37000.42400.42800.43100.44300.52400.667300 | Toilet flooring work | 16d | 2026-08-10 | 2026-08-25 | 1310 |  | Sector-44 Noida(2) | 9382354 |
| 1312 | 36900.37000.42400.42800.43100.44300.52400.667400 | Living dinning flooring | 16d | 2026-08-26 | 2026-09-10 | 1309, 1311 |  | Sector-44 Noida(2) | 9382364 |
| 1313 | 36900.37000.42400.42800.43100.44300.52400.667500 | Electrical wiring work | 10d | 2026-09-01 | 2026-09-10 | 1312FS-10d |  | Sector-44 Noida(2) | 9382374 |
| 1314 | 36900.37000.42400.42800.43100.44300.52400.667600 | Aluminium door-window fixing | 17d | 2026-09-03 | 2026-09-19 | 1304, 1313FS-8d |  | Sector-44 Noida(2) | 9382384 |
| 1315 | 36900.37000.42400.42800.43100.44300.52400.667700 | Putty primer coat | 8d | 2026-09-12 | 2026-09-19 | 1314FS-8d |  | Sector-44 Noida(2) | 9382394 |
| 1316 | 36900.37000.42400.42800.43100.44300.52400.667800 | Prehung door fixing | 7d | 2026-09-15 | 2026-09-21 | 1315FS-5d |  | Sector-44 Noida(2) | 9382404 |
| 1317 | 36900.37000.42400.42800.43100.44300.52400.667900 | Painting 1st coat | 10d | 2026-09-22 | 2026-10-01 | 1316 |  | Sector-44 Noida(2) | 9382414 |
| 1318 | 36900.37000.42400.42800.43100.44300.52400.668000 | False Ceiling panel fixing | 8d | 2026-10-02 | 2026-10-09 | 1301, 1317 |  | Sector-44 Noida(2) | 9382424 |
| 1319 | 36900.37000.42400.42800.43100.44300.52500 | **18th Floor** | 121d | 2026-06-19 | 2026-10-17 |  | start no earlier than 2026-06-19 | Sector-44 Noida(2) | 9361784 |
| 1320 | 36900.37000.42400.42800.43100.44300.52500.668100 | Block Work | 10d | 2026-06-19 | 2026-06-28 | 1020 |  | Sector-44 Noida(2) | 9382434 |
| 1321 | 36900.37000.42400.42800.43100.44300.52500.668200 | Installation of temporary Main door | 7d | 2026-06-29 | 2026-07-05 | 1320 |  | Sector-44 Noida(2) | 9382444 |
| 1322 | 36900.37000.42400.42800.43100.44300.52500.668300 | Fire sprinkler pipe fixing | 3d | 2026-06-29 | 2026-07-01 | 1305, 1320 |  | Sector-44 Noida(2) | 9382454 |
| 1323 | 36900.37000.42400.42800.43100.44300.52500.668400 | Internal Plumbing Works | 7d | 2026-06-29 | 2026-07-05 | 1320 |  | Sector-44 Noida(2) | 9382464 |
| 1324 | 36900.37000.42400.42800.43100.44300.52500.668500 | Waterproofing | 12d | 2026-07-06 | 2026-07-17 | 1323 |  | Sector-44 Noida(2) | 9382474 |
| 1325 | 36900.37000.42400.42800.43100.44300.52500.668600 | Internal Plaster | 15d | 2026-07-18 | 2026-08-01 | 1323, 1324 |  | Sector-44 Noida(2) | 9382484 |
| 1326 | 36900.37000.42400.42800.43100.44300.52500.668700 | IPS flooring work | 11d | 2026-06-29 | 2026-07-09 | 1320 |  | Sector-44 Noida(2) | 9382494 |
| 1327 | 36900.37000.42400.42800.43100.44300.52500.668800 | Toilet dado work | 16d | 2026-08-02 | 2026-08-17 | 1323, 1324, 1325 |  | Sector-44 Noida(2) | 9382504 |
| 1328 | 36900.37000.42400.42800.43100.44300.52500.668900 | Toilet flooring work | 16d | 2026-08-18 | 2026-09-02 | 1327 |  | Sector-44 Noida(2) | 9382514 |
| 1329 | 36900.37000.42400.42800.43100.44300.52500.669000 | Living dinning flooring | 16d | 2026-09-03 | 2026-09-18 | 1326, 1328 |  | Sector-44 Noida(2) | 9382524 |
| 1330 | 36900.37000.42400.42800.43100.44300.52500.669100 | Electrical wiring work | 10d | 2026-09-09 | 2026-09-18 | 1329FS-10d |  | Sector-44 Noida(2) | 9382534 |
| 1331 | 36900.37000.42400.42800.43100.44300.52500.669200 | Aluminium door-window fixing | 17d | 2026-09-11 | 2026-09-27 | 1321, 1330FS-8d |  | Sector-44 Noida(2) | 9382544 |
| 1332 | 36900.37000.42400.42800.43100.44300.52500.669300 | Putty primer coat | 8d | 2026-09-20 | 2026-09-27 | 1331FS-8d |  | Sector-44 Noida(2) | 9382554 |
| 1333 | 36900.37000.42400.42800.43100.44300.52500.669400 | Prehung door fixing | 7d | 2026-09-23 | 2026-09-29 | 1332FS-5d |  | Sector-44 Noida(2) | 9382564 |
| 1334 | 36900.37000.42400.42800.43100.44300.52500.669500 | Painting 1st coat | 10d | 2026-09-30 | 2026-10-09 | 1333 |  | Sector-44 Noida(2) | 9382574 |
| 1335 | 36900.37000.42400.42800.43100.44300.52500.669600 | False Ceiling panel fixing | 8d | 2026-10-10 | 2026-10-17 | 1318, 1334 |  | Sector-44 Noida(2) | 9382584 |

| ID | WBS | Task | Duration | Start | Finish | Predecessors | Constraint | Calendar | Unique_Task_ID |
| --- | --- | --- | --- | --- | --- | --- | --- | --- | --- |
| 1336 | 36900.37000.42400.42800.43100.44300.52600 | **19th Floor** | 121d | 2026-06-27 | 2026-10-25 |  | start no earlier than 2026-06-27 | Sector-44 Noida(2) | 9361774 |
| 1337 | 36900.37000.42400.42800.43100.44300.52600.669700 | Block Work | 10d | 2026-06-27 | 2026-07-06 | 1021 |  | Sector-44 Noida(2) | 9382594 |
| 1338 | 36900.37000.42400.42800.43100.44300.52600.669800 | Installation of temporary Main door | 7d | 2026-07-07 | 2026-07-13 | 1337 |  | Sector-44 Noida(2) | 9382604 |
| 1339 | 36900.37000.42400.42800.43100.44300.52600.669900 | Fire sprinkler pipe fixing | 3d | 2026-07-07 | 2026-07-09 | 1322, 1337 |  | Sector-44 Noida(2) | 9382614 |
| 1340 | 36900.37000.42400.42800.43100.44300.52600.670000 | Internal Plumbing Works | 7d | 2026-07-07 | 2026-07-13 | 1337 |  | Sector-44 Noida(2) | 9382624 |
| 1341 | 36900.37000.42400.42800.43100.44300.52600.670100 | Waterproofing | 12d | 2026-07-14 | 2026-07-25 | 1340 |  | Sector-44 Noida(2) | 9382634 |
| 1342 | 36900.37000.42400.42800.43100.44300.52600.670200 | Internal Plaster | 15d | 2026-07-26 | 2026-08-09 | 1340, 1341 |  | Sector-44 Noida(2) | 9382644 |
| 1343 | 36900.37000.42400.42800.43100.44300.52600.670300 | IPS flooring work | 11d | 2026-07-07 | 2026-07-17 | 1337 |  | Sector-44 Noida(2) | 9382654 |
| 1344 | 36900.37000.42400.42800.43100.44300.52600.670400 | Toilet dado work | 16d | 2026-08-10 | 2026-08-25 | 1340, 1341, 1342 |  | Sector-44 Noida(2) | 9382664 |
| 1345 | 36900.37000.42400.42800.43100.44300.52600.670500 | Toilet flooring work | 16d | 2026-08-26 | 2026-09-10 | 1344 |  | Sector-44 Noida(2) | 9382674 |
| 1346 | 36900.37000.42400.42800.43100.44300.52600.670600 | Living dinning flooring | 16d | 2026-09-11 | 2026-09-26 | 1343, 1345 |  | Sector-44 Noida(2) | 9382684 |
| 1347 | 36900.37000.42400.42800.43100.44300.52600.670700 | Electrical wiring work | 10d | 2026-09-17 | 2026-09-26 | 1346FS-10d |  | Sector-44 Noida(2) | 9382694 |
| 1348 | 36900.37000.42400.42800.43100.44300.52600.670800 | Aluminium door-window fixing | 17d | 2026-09-19 | 2026-10-05 | 1338, 1347FS-8d |  | Sector-44 Noida(2) | 9382704 |
| 1349 | 36900.37000.42400.42800.43100.44300.52600.670900 | Putty primer coat | 8d | 2026-09-28 | 2026-10-05 | 1348FS-8d |  | Sector-44 Noida(2) | 9382714 |
| 1350 | 36900.37000.42400.42800.43100.44300.52600.671000 | Prehung door fixing | 7d | 2026-10-01 | 2026-10-07 | 1349FS-5d |  | Sector-44 Noida(2) | 9382724 |
| 1351 | 36900.37000.42400.42800.43100.44300.52600.671100 | Painting 1st coat | 10d | 2026-10-08 | 2026-10-17 | 1350 |  | Sector-44 Noida(2) | 9382734 |
| 1352 | 36900.37000.42400.42800.43100.44300.52600.671200 | False Ceiling panel fixing | 8d | 2026-10-18 | 2026-10-25 | 1335, 1351 |  | Sector-44 Noida(2) | 9382744 |
| 1353 | 36900.37000.42400.42800.43100.44300.52700 | **20th Floor** | 122d | 2026-07-04 | 2026-12-17 |  | start no earlier than 2026-07-04 | Sector-44 Noida(2) | 9361764 |
| 1354 | 36900.37000.42400.42800.43100.44300.52700.671300 | Block Work | 10d | 2026-07-04 | 2026-07-13 | 1022 |  | Sector-44 Noida(2) | 9382754 |
| 1355 | 36900.37000.42400.42800.43100.44300.52700.671400 | Installation of temporary Main door | 7d | 2026-07-14 | 2026-07-20 | 1354 |  | Sector-44 Noida(2) | 9382764 |
| 1356 | 36900.37000.42400.42800.43100.44300.52700.671500 | Fire sprinkler pipe fixing | 3d | 2026-07-14 | 2026-07-16 | 1339, 1354 |  | Sector-44 Noida(2) | 9382774 |
| 1357 | 36900.37000.42400.42800.43100.44300.52700.671600 | Internal Plumbing Works | 7d | 2026-07-14 | 2026-07-20 | 1354 |  | Sector-44 Noida(2) | 9382784 |
| 1358 | 36900.37000.42400.42800.43100.44300.52700.671700 | Waterproofing | 12d | 2026-07-21 | 2026-08-01 | 1357 |  | Sector-44 Noida(2) | 9382794 |
| 1359 | 36900.37000.42400.42800.43100.44300.52700.671800 | Internal Plaster | 15d | 2026-08-02 | 2026-08-16 | 1357, 1358 |  | Sector-44 Noida(2) | 9382804 |
| 1360 | 36900.37000.42400.42800.43100.44300.52700.671900 | IPS flooring work | 11d | 2026-07-14 | 2026-07-24 | 1354 |  | Sector-44 Noida(2) | 9382814 |
| 1361 | 36900.37000.42400.42800.43100.44300.52700.672000 | Toilet dado work | 16d | 2026-08-17 | 2026-09-01 | 1357, 1358, 1359 |  | Sector-44 Noida(2) | 9382824 |
| 1362 | 36900.37000.42400.42800.43100.44300.52700.672100 | Toilet flooring work | 16d | 2026-09-02 | 2026-09-17 | 1361 |  | Sector-44 Noida(2) | 9382834 |
| 1363 | 36900.37000.42400.42800.43100.44300.52700.672200 | Living dinning flooring | 16d | 2026-09-18 | 2026-10-03 | 1360, 1362 |  | Sector-44 Noida(2) | 9382844 |
| 1364 | 36900.37000.42400.42800.43100.44300.52700.672300 | Electrical wiring work | 10d | 2026-09-24 | 2026-10-03 | 1363FS-10d |  | Sector-44 Noida(2) | 9382854 |
| 1365 | 36900.37000.42400.42800.43100.44300.52700.672400 | Aluminium door-window fixing | 17d | 2026-09-26 | 2026-10-12 | 1355, 1364FS-8d |  | Sector-44 Noida(2) | 9382864 |
| 1366 | 36900.37000.42400.42800.43100.44300.52700.672500 | Putty primer coat | 8d | 2026-10-05 | 2026-10-12 | 1365FS-8d |  | Sector-44 Noida(2) | 9382874 |
| 1367 | 36900.37000.42400.42800.43100.44300.52700.672600 | Prehung door fixing | 7d | 2026-10-08 | 2026-10-14 | 1366FS-5d |  | Sector-44 Noida(2) | 9382884 |
| 1368 | 36900.37000.42400.42800.43100.44300.52700.672700 | Painting 1st coat | 10d | 2026-10-15 | 2026-10-24 | 1367 |  | Sector-44 Noida(2) | 9382894 |
| 1369 | 36900.37000.42400.42800.43100.44300.52700.672800 | False Ceiling panel fixing | 8d | 2026-10-26 | 2026-12-17 | 1352, 1368 |  | Sector-44 Noida(2) | 9382904 |

| ID | WBS | Task | Duration | Start | Finish | Predecessors | Constraint | Calendar | Unique_Task_ID |
| --- | --- | --- | --- | --- | --- | --- | --- | --- | --- |
| 1370 | 36900.37000.42400.42800.43100.44300.52800 | **21st Floor** | 123d | 2026-07-11 | 2026-12-25 |  | start no earlier than 2026-07-11 | Sector-44 Noida(2) | 9361744 |
| 1371 | 36900.37000.42400.42800.43100.44300.52800.672900 | Block Work | 7d | 2026-07-11 | 2026-07-17 | 1023 |  | Sector-44 Noida(2) | 9382914 |
| 1372 | 36900.37000.42400.42800.43100.44300.52800.673000 | Installation of temporary Main door | 7d | 2026-07-18 | 2026-07-24 | 1371 |  | Sector-44 Noida(2) | 9382924 |
| 1373 | 36900.37000.42400.42800.43100.44300.52800.673100 | Fire sprinkler pipe fixing | 3d | 2026-07-18 | 2026-07-20 | 1356, 1371 |  | Sector-44 Noida(2) | 9382934 |
| 1374 | 36900.37000.42400.42800.43100.44300.52800.673200 | Internal Plumbing Works | 7d | 2026-07-18 | 2026-07-24 | 1371 |  | Sector-44 Noida(2) | 9382944 |
| 1375 | 36900.37000.42400.42800.43100.44300.52800.673300 | Waterproofing | 12d | 2026-07-25 | 2026-08-05 | 1374 |  | Sector-44 Noida(2) | 9382954 |
| 1376 | 36900.37000.42400.42800.43100.44300.52800.673400 | Internal Plaster | 15d | 2026-08-06 | 2026-08-20 | 1374, 1375 |  | Sector-44 Noida(2) | 9382964 |
| 1377 | 36900.37000.42400.42800.43100.44300.52800.673500 | IPS flooring work | 11d | 2026-07-18 | 2026-07-28 | 1371 |  | Sector-44 Noida(2) | 9382974 |
| 1378 | 36900.37000.42400.42800.43100.44300.52800.673600 | Toilet dado work | 16d | 2026-08-21 | 2026-09-05 | 1374, 1375, 1376 |  | Sector-44 Noida(2) | 9382984 |
| 1379 | 36900.37000.42400.42800.43100.44300.52800.673700 | Toilet flooring work | 16d | 2026-09-06 | 2026-09-21 | 1378 |  | Sector-44 Noida(2) | 9382994 |
| 1380 | 36900.37000.42400.42800.43100.44300.52800.673800 | Living dinning flooring | 16d | 2026-09-22 | 2026-10-07 | 1377, 1379 |  | Sector-44 Noida(2) | 9383004 |
| 1381 | 36900.37000.42400.42800.43100.44300.52800.673900 | Electrical wiring work | 10d | 2026-09-28 | 2026-10-07 | 1380FS-10d |  | Sector-44 Noida(2) | 9383014 |
| 1382 | 36900.37000.42400.42800.43100.44300.52800.674000 | Aluminium door-window fixing | 17d | 2026-09-30 | 2026-10-16 | 1372, 1381FS-8d |  | Sector-44 Noida(2) | 9383024 |
| 1383 | 36900.37000.42400.42800.43100.44300.52800.674100 | Putty primer coat | 8d | 2026-10-09 | 2026-10-16 | 1382FS-8d |  | Sector-44 Noida(2) | 9383034 |
| 1384 | 36900.37000.42400.42800.43100.44300.52800.674200 | Prehung door fixing | 7d | 2026-10-12 | 2026-10-18 | 1383FS-5d |  | Sector-44 Noida(2) | 9383044 |
| 1385 | 36900.37000.42400.42800.43100.44300.52800.674300 | Painting 1st coat | 10d | 2026-10-19 | 2026-10-28 | 1384 |  | Sector-44 Noida(2) | 9383054 |
| 1386 | 36900.37000.42400.42800.43100.44300.52800.674400 | False Ceiling panel fixing | 8d | 2026-12-18 | 2026-12-25 | 1369, 1385 |  | Sector-44 Noida(2) | 9383064 |
| 1387 | 36900.37000.42400.42800.43100.44300.52900 | **22nd Floor** | 124d | 2026-07-18 | 2027-01-02 |  | start no earlier than 2026-07-18 | Sector-44 Noida(2) | 9361734 |
| 1388 | 36900.37000.42400.42800.43100.44300.52900.674500 | Block Work | 7d | 2026-07-18 | 2026-07-24 | 1024 |  | Sector-44 Noida(2) | 9383074 |
| 1389 | 36900.37000.42400.42800.43100.44300.52900.674600 | Installation of temporary Main door | 7d | 2026-07-25 | 2026-07-31 | 1388 |  | Sector-44 Noida(2) | 9383084 |
| 1390 | 36900.37000.42400.42800.43100.44300.52900.674700 | Fire sprinkler pipe fixing | 3d | 2026-07-25 | 2026-07-27 | 1373, 1388 |  | Sector-44 Noida(2) | 9383094 |
| 1391 | 36900.37000.42400.42800.43100.44300.52900.674800 | Internal Plumbing Works | 7d | 2026-07-25 | 2026-07-31 | 1388 |  | Sector-44 Noida(2) | 9383104 |
| 1392 | 36900.37000.42400.42800.43100.44300.52900.674900 | Waterproofing | 12d | 2026-08-01 | 2026-08-12 | 1391 |  | Sector-44 Noida(2) | 9383114 |
| 1393 | 36900.37000.42400.42800.43100.44300.52900.675000 | Internal Plaster | 15d | 2026-08-13 | 2026-08-27 | 1391, 1392 |  | Sector-44 Noida(2) | 9383124 |
| 1394 | 36900.37000.42400.42800.43100.44300.52900.675100 | IPS flooring work | 11d | 2026-07-25 | 2026-08-04 | 1388 |  | Sector-44 Noida(2) | 9383134 |
| 1395 | 36900.37000.42400.42800.43100.44300.52900.675200 | Toilet dado work | 20d | 2026-08-28 | 2026-09-16 | 1391, 1392, 1393 |  | Sector-44 Noida(2) | 9383144 |
| 1396 | 36900.37000.42400.42800.43100.44300.52900.675300 | Toilet flooring work | 16d | 2026-09-17 | 2026-10-02 | 1395 |  | Sector-44 Noida(2) | 9383154 |
| 1397 | 36900.37000.42400.42800.43100.44300.52900.675400 | Living dinning flooring | 16d | 2026-10-03 | 2026-10-18 | 1394, 1396 |  | Sector-44 Noida(2) | 9383164 |
| 1398 | 36900.37000.42400.42800.43100.44300.52900.675500 | Electrical wiring work | 10d | 2026-10-09 | 2026-10-18 | 1397FS-10d |  | Sector-44 Noida(2) | 9383174 |
| 1399 | 36900.37000.42400.42800.43100.44300.52900.675600 | Aluminium door-window fixing | 17d | 2026-10-11 | 2026-10-27 | 1389, 1398FS-8d |  | Sector-44 Noida(2) | 9383184 |
| 1400 | 36900.37000.42400.42800.43100.44300.52900.675700 | Putty primer coat | 8d | 2026-10-20 | 2026-10-27 | 1399FS-8d |  | Sector-44 Noida(2) | 9383194 |
| 1401 | 36900.37000.42400.42800.43100.44300.52900.675800 | Prehung door fixing | 7d | 2026-10-23 | 2026-10-29 | 1400FS-5d |  | Sector-44 Noida(2) | 9383204 |
| 1402 | 36900.37000.42400.42800.43100.44300.52900.675900 | Painting 1st coat | 10d | 2026-10-30 | 2026-12-23 | 1401 |  | Sector-44 Noida(2) | 9383214 |
| 1403 | 36900.37000.42400.42800.43100.44300.52900.676000 | False Ceiling panel fixing | 8d | 2026-12-26 | 2027-01-02 | 1386, 1402 |  | Sector-44 Noida(2) | 9383224 |

| ID | WBS | Task | Duration | Start | Finish | Predecessors | Constraint | Calendar | Unique_Task_ID |
| --- | --- | --- | --- | --- | --- | --- | --- | --- | --- |
| 1404 | 36900.37000.42400.42800.43100.44300.53000 | **23rd Floor** | 148d | 2026-07-25 | 2027-02-02 |  | start no earlier than 2026-07-25 | Sector-44 Noida(2) | 9361714 |
| 1405 | 36900.37000.42400.42800.43100.44300.53000.676100 | Block Work | 24d | 2026-07-25 | 2026-08-17 | 1025 |  | Sector-44 Noida(2) | 9383234 |
| 1406 | 36900.37000.42400.42800.43100.44300.53000.676200 | Installation of temporary Main door | 7d | 2026-08-18 | 2026-08-24 | 1405 |  | Sector-44 Noida(2) | 9383244 |
| 1407 | 36900.37000.42400.42800.43100.44300.53000.676300 | Fire sprinkler pipe fixing | 3d | 2026-08-18 | 2026-08-20 | 1390, 1405 |  | Sector-44 Noida(2) | 9383254 |
| 1408 | 36900.37000.42400.42800.43100.44300.53000.676400 | Internal Plumbing Works | 7d | 2026-08-18 | 2026-08-24 | 1405 |  | Sector-44 Noida(2) | 9383264 |
| 1409 | 36900.37000.42400.42800.43100.44300.53000.676500 | Waterproofing | 12d | 2026-08-25 | 2026-09-05 | 1408 |  | Sector-44 Noida(2) | 9383274 |
| 1410 | 36900.37000.42400.42800.43100.44300.53000.676600 | Internal Plaster | 11d | 2026-09-06 | 2026-09-16 | 1408, 1409 |  | Sector-44 Noida(2) | 9383284 |
| 1411 | 36900.37000.42400.42800.43100.44300.53000.676700 | IPS flooring work | 11d | 2026-08-18 | 2026-08-28 | 1405 |  | Sector-44 Noida(2) | 9383294 |
| 1412 | 36900.37000.42400.42800.43100.44300.53000.676800 | Toilet dado work | 20d | 2026-09-17 | 2026-10-06 | 1408, 1409, 1410 |  | Sector-44 Noida(2) | 9383304 |
| 1413 | 36900.37000.42400.42800.43100.44300.53000.676900 | Toilet flooring work | 16d | 2026-10-07 | 2026-10-22 | 1412 |  | Sector-44 Noida(2) | 9383314 |
| 1414 | 36900.37000.42400.42800.43100.44300.53000.677000 | Living dinning flooring | 29d | 2026-10-23 | 2027-01-04 | 1411, 1413 |  | Sector-44 Noida(2) | 9383324 |
| 1415 | 36900.37000.42400.42800.43100.44300.53000.677100 | Electrical wiring work | 10d | 2026-12-26 | 2027-01-04 | 1414FS-10d |  | Sector-44 Noida(2) | 9383334 |
| 1416 | 36900.37000.42400.42800.43100.44300.53000.677200 | Aluminium door-window fixing | 17d | 2026-12-28 | 2027-01-13 | 1406, 1415FS-8d |  | Sector-44 Noida(2) | 9383344 |
| 1417 | 36900.37000.42400.42800.43100.44300.53000.677300 | Putty primer coat | 8d | 2027-01-06 | 2027-01-13 | 1416FS-8d |  | Sector-44 Noida(2) | 9383354 |
| 1418 | 36900.37000.42400.42800.43100.44300.53000.677400 | Prehung door fixing | 7d | 2027-01-09 | 2027-01-15 | 1417FS-5d |  | Sector-44 Noida(2) | 9383364 |
| 1419 | 36900.37000.42400.42800.43100.44300.53000.677500 | Painting 1st coat | 10d | 2027-01-16 | 2027-01-25 | 1418 |  | Sector-44 Noida(2) | 9383374 |
| 1420 | 36900.37000.42400.42800.43100.44300.53000.677600 | False Ceiling panel fixing | 8d | 2027-01-26 | 2027-02-02 | 1403, 1419 |  | Sector-44 Noida(2) | 9383384 |
| 1421 | 36900.37000.42400.42800.43100.192000 | **Terrace finishing** | 70d | 2026-09-30 | 2027-01-22 |  | start no earlier than 2026-09-30 | Sector-44 Noida(2) | 9366164 |
| 1422 | 36900.37000.42400.42800.43100.192000.344600 | Terrace waterproofing | 30d | 2026-09-30 | 2026-10-29 | 1497FS+10d |  | Sector-44 Noida(2) | 9370564 |
| 1423 | 36900.37000.42400.42800.43100.192000.344700 | Terrace Finishing | 40d | 2026-10-30 | 2027-01-22 | 1422 |  | Sector-44 Noida(2) | 9370574 |
| 1424 | 36900.37000.42400.42800.43100.96800 | **Common area finishing** | 190d | 2026-07-09 | 2027-02-28 |  | start no earlier than 2026-07-09 | Sector-44 Noida(2) | 9362184 |
| 1425 | 36900.37000.42400.42800.43100.96800.344800 | Masonary Work | 40d | 2026-07-09 | 2026-08-17 | 984 |  | Sector-44 Noida(2) | 9370584 |
| 1426 | 36900.37000.42400.42800.43100.96800.344900 | Fire sprinkler pipe fixing | 40d | 2026-07-14 | 2026-08-22 | 984FS+5d |  | Sector-44 Noida(2) | 9370594 |
| 1427 | 36900.37000.42400.42800.43100.96800.345000 | Corridoor, staircase, shaft Plaster & whitewash | 80d | 2026-07-19 | 2026-10-06 | 1425FS-30d |  | Sector-44 Noida(2) | 9370604 |
| 1428 | 36900.37000.42400.42800.43100.96800.345100 | Staircase railing fixing | 80d | 2026-07-29 | 2026-10-16 | 1425FS-20d |  | Sector-44 Noida(2) | 9370614 |
| 1429 | 36900.37000.42400.42800.43100.96800.345200 | Fire staircase flooring | 100d | 2026-07-19 | 2026-10-26 | 1428FS-90d |  | Sector-44 Noida(2) | 9370624 |
| 1430 | 36900.37000.42400.42800.43100.96800.345300 | Main staircase flooring | 100d | 2026-07-19 | 2026-10-26 | 1428FS-90d |  | Sector-44 Noida(2) | 9370634 |
| 1431 | 36900.37000.42400.42800.43100.96800.345400 | Fire door work | 120d | 2026-08-28 | 2027-02-08 | 1429FS-60d |  | Sector-44 Noida(2) | 9370644 |
| 1432 | 36900.37000.42400.42800.43100.96800.345500 | Lobby flooring & Corridor | 170d | 2026-07-29 | 2027-02-28 | 1430FS-90d |  | Sector-44 Noida(2) | 9370654 |
| 1433 | 36900.37000.42400.42800.43100.96800.345600 | Ceiling & wall putty-primer | 80d | 2026-10-17 | 2027-02-18 | 1432FS-90d |  | Sector-44 Noida(2) | 9370664 |
| 1434 | 36900.37000.42400.42800.43100.96800.345700 | Ceiling & wall painting | 75d | 2026-09-27 | 2027-01-24 | 1433FS-100d |  | Sector-44 Noida(2) | 9370674 |
| 1435 | 36900.37000.42400.42800.43100.96800.345800 | Electrical wiring work | 70d | 2026-09-02 | 2026-12-25 | 1434FS-100d |  | Sector-44 Noida(2) | 9370684 |
| 1436 | 36900.37000.42400.42800.43100.96800.345900 | Light fixture supply & installation | 30d | 2026-09-27 | 2026-10-26 | 1435FS-45d |  | Sector-44 Noida(2) | 9370694 |
| 1437 | 36900.37000.42400.42800.43100.96800.346000 | Installation of fire signages including Basements | 20d | 2027-01-25 | 2027-02-13 | 1434 |  | Sector-44 Noida(2) | 9370704 |

| ID | WBS | Task | Duration | Start | Finish | Predecessors | Constraint | Calendar | Unique_Task_ID |
| --- | --- | --- | --- | --- | --- | --- | --- | --- | --- |
| 1438 | 36900.37000.42400.42800.43100.47900 | **Balcony Glass Railing** | 161d | 2026-01-21 | 2026-06-30 |  | start no earlier than 2026-01-21 | Sector-44 Noida(2) | 9360914 |
| 1439 | 36900.37000.42400.42800.43100.47900.346100 | 1st Floor | 7d | 2026-01-21 | 2026-01-27 | 1031 |  | Sector-44 Noida(2) | 9370714 |
| 1440 | 36900.37000.42400.42800.43100.47900.346200 | 2nd Floor | 7d | 2026-01-28 | 2026-02-03 | 1439 |  | Sector-44 Noida(2) | 9370724 |
| 1441 | 36900.37000.42400.42800.43100.47900.346300 | 3rd Floor | 7d | 2026-02-04 | 2026-02-10 | 1440 |  | Sector-44 Noida(2) | 9370734 |
| 1442 | 36900.37000.42400.42800.43100.47900.346400 | 4th Floor | 7d | 2026-02-11 | 2026-02-17 | 1441 |  | Sector-44 Noida(2) | 9370744 |
| 1443 | 36900.37000.42400.42800.43100.47900.346500 | 5th Floor | 7d | 2026-02-18 | 2026-02-24 | 1442 |  | Sector-44 Noida(2) | 9370754 |
| 1444 | 36900.37000.42400.42800.43100.47900.346600 | 6th Floor | 7d | 2026-02-25 | 2026-03-03 | 1443 |  | Sector-44 Noida(2) | 9370764 |
| 1445 | 36900.37000.42400.42800.43100.47900.346700 | 7th Floor | 7d | 2026-03-04 | 2026-03-10 | 1444 |  | Sector-44 Noida(2) | 9370774 |
| 1446 | 36900.37000.42400.42800.43100.47900.346800 | 8th Floor | 7d | 2026-03-11 | 2026-03-17 | 1445 |  | Sector-44 Noida(2) | 9370784 |
| 1447 | 36900.37000.42400.42800.43100.47900.346900 | 9th Floor | 7d | 2026-03-18 | 2026-03-24 | 1446 |  | Sector-44 Noida(2) | 9370794 |
| 1448 | 36900.37000.42400.42800.43100.47900.347000 | 10th Floor | 7d | 2026-03-25 | 2026-03-31 | 1447 |  | Sector-44 Noida(2) | 9370804 |
| 1449 | 36900.37000.42400.42800.43100.47900.347100 | 11th Floor | 7d | 2026-04-01 | 2026-04-07 | 1448 |  | Sector-44 Noida(2) | 9370814 |
| 1450 | 36900.37000.42400.42800.43100.47900.347200 | 12th Floor | 7d | 2026-04-08 | 2026-04-14 | 1449 |  | Sector-44 Noida(2) | 9370824 |
| 1451 | 36900.37000.42400.42800.43100.47900.347300 | 13th Floor | 7d | 2026-04-15 | 2026-04-21 | 1450 |  | Sector-44 Noida(2) | 9370834 |
| 1452 | 36900.37000.42400.42800.43100.47900.347400 | 14th Floor | 7d | 2026-04-22 | 2026-04-28 | 1451 |  | Sector-44 Noida(2) | 9370844 |
| 1453 | 36900.37000.42400.42800.43100.47900.347500 | 15th Floor | 7d | 2026-04-29 | 2026-05-05 | 1452 |  | Sector-44 Noida(2) | 9370854 |
| 1454 | 36900.37000.42400.42800.43100.47900.347600 | 16th Floor | 7d | 2026-05-06 | 2026-05-12 | 1453 |  | Sector-44 Noida(2) | 9370864 |
| 1455 | 36900.37000.42400.42800.43100.47900.347700 | 17th Floor | 7d | 2026-05-13 | 2026-05-19 | 1454 |  | Sector-44 Noida(2) | 9370874 |
| 1456 | 36900.37000.42400.42800.43100.47900.347800 | 18th Floor | 7d | 2026-05-20 | 2026-05-26 | 1455 |  | Sector-44 Noida(2) | 9370884 |
| 1457 | 36900.37000.42400.42800.43100.47900.347900 | 19th Floor | 7d | 2026-05-27 | 2026-06-02 | 1456 |  | Sector-44 Noida(2) | 9370894 |
| 1458 | 36900.37000.42400.42800.43100.47900.348000 | 20th Floor | 7d | 2026-06-03 | 2026-06-09 | 1457 |  | Sector-44 Noida(2) | 9370904 |
| 1459 | 36900.37000.42400.42800.43100.47900.348100 | 21st Floor | 7d | 2026-06-10 | 2026-06-16 | 1458 |  | Sector-44 Noida(2) | 9370914 |
| 1460 | 36900.37000.42400.42800.43100.47900.348200 | 22nd Floor | 7d | 2026-06-17 | 2026-06-23 | 1459 |  | Sector-44 Noida(2) | 9370924 |
| 1461 | 36900.37000.42400.42800.43100.47900.348300 | 23rd Floor | 7d | 2026-06-24 | 2026-06-30 | 1460 |  | Sector-44 Noida(2) | 9370934 |

| ID | WBS | Task | Duration | Start | Finish | Predecessors | Constraint | Calendar | Unique_Task_ID |
| --- | --- | --- | --- | --- | --- | --- | --- | --- | --- |
| 1462 | 36900.37000.42400.42800.96200 | **MEP Work** | 282d | 2026-06-14 | 2027-05-06 |  | start no earlier than 2026-06-14 | Sector-44 Noida(2) | 9362124 |
| 1463 | 36900.37000.42400.42800.96200.98300 | **Electrical Work** | 150d | 2026-06-14 | 2026-12-25 |  | start no earlier than 2026-06-14 | Sector-44 Noida(2) | 9362314 |
| 1464 | 36900.37000.42400.42800.96200.98300.348400 | Cable Tray | 30d | 2026-08-13 | 2026-09-11 | 1001 |  | Sector-44 Noida(2) | 9370944 |
| 1465 | 36900.37000.42400.42800.96200.98300.348500 | Cable, main & sub main | 30d | 2026-06-14 | 2026-07-13 | 1464FS-90d |  | Sector-44 Noida(2) | 9370954 |
| 1466 | 36900.37000.42400.42800.96200.98300.348600 | LT panel & DB | 40d | 2026-07-14 | 2026-08-22 | 1464FS-60d |  | Sector-44 Noida(2) | 9370964 |
| 1467 | 36900.37000.42400.42800.96200.98300.348700 | Earthing Works | 15d | 2026-09-12 | 2026-09-26 | 1464 |  | Sector-44 Noida(2) | 9370974 |
| 1468 | 36900.37000.42400.42800.96200.98300.348800 | Advanced Lightening Protection system | 15d | 2026-09-02 | 2026-09-16 | 1467FS-25d |  | Sector-44 Noida(2) | 9370984 |
| 1469 | 36900.37000.42400.42800.96200.98300.348900 | Energy meter | 15d | 2026-07-14 | 2026-07-28 | 1465 |  | Sector-44 Noida(2) | 9370994 |
| 1470 | 36900.37000.42400.42800.96200.98300.349000 | Inverter / UPS | 10d | 2026-08-23 | 2026-09-01 | 1465, 1466, 1469FS-5d |  | Sector-44 Noida(2) | 9371004 |
| 1471 | 36900.37000.42400.42800.96200.98300.349100 | HVAC & Exhaust fan | 30d | 2026-08-13 | 2026-09-11 | 1464FS-30d |  | Sector-44 Noida(2) | 9371014 |
| 1472 | 36900.37000.42400.42800.96200.98300.349200 | FTTH | 10d | 2026-07-29 | 2026-08-07 | 1466FS-25d |  | Sector-44 Noida(2) | 9371024 |
| 1473 | 36900.37000.42400.42800.96200.98300.349300 | Security System - FA & PA | 10d | 2026-07-29 | 2026-08-07 | 1466FS-25d |  | Sector-44 Noida(2) | 9371034 |
| 1474 | 36900.37000.42400.42800.96200.98300.349400 | T&C of complete system | 15d | 2026-10-27 | 2026-12-25 | 1436, 1466, 1468, 1469, 1470, 1471, 1472, 1473 |  | Sector-44 Noida(2) | 9371044 |
| 1475 | 36900.37000.42400.42800.96200.105400 | **Plumbing work** | 102d | 2026-08-01 | 2026-12-25 |  | start no earlier than 2026-08-01 | Sector-44 Noida(2) | 9362574 |
| 1476 | 36900.37000.42400.42800.96200.105400.349500 | Terrace looping | 20d | 2026-08-01 | 2026-08-20 | 1026 |  | Sector-44 Noida(2) | 9371054 |
| 1477 | 36900.37000.42400.42800.96200.105400.349600 | Shaft Plumbing | 30d | 2026-09-07 | 2026-10-06 | 1427FS-30d, 1476 |  | Sector-44 Noida(2) | 9371064 |
| 1478 | 36900.37000.42400.42800.96200.105400.349700 | CP sanitary fixture supply | 20d | 2026-10-07 | 2026-10-26 | 1477 |  | Sector-44 Noida(2) | 9371074 |
| 1479 | 36900.37000.42400.42800.96200.105400.349800 | Cold & flushing water supply | 20d | 2026-10-07 | 2026-10-26 | 1477 |  | Sector-44 Noida(2) | 9371084 |
| 1480 | 36900.37000.42400.42800.96200.105400.349900 | Misc work | 15d | 2026-10-12 | 2026-10-26 | 1479FS-15d |  | Sector-44 Noida(2) | 9371094 |
| 1481 | 36900.37000.42400.42800.96200.105400.350000 | Installation of PHE pumps | 25d | 2026-08-21 | 2026-09-14 | 1476 |  | Sector-44 Noida(2) | 9371104 |
| 1482 | 36900.37000.42400.42800.96200.105400.350100 | T&C of complete system | 15d | 2026-10-27 | 2026-12-25 | 3417, 3419, 1476, 1477, 1479, 1480, 1481 |  | Sector-44 Noida(2) | 9371114 |
| 1483 | 36900.37000.42400.42800.96200.106600 | **Fire fighting work** | 197d | 2026-09-07 | 2027-05-06 |  | start no earlier than 2026-09-07 | Sector-44 Noida(2) | 9363234 |
| 1484 | 36900.37000.42400.42800.96200.106600.350200 | Fire hydrant work | 25d | 2026-09-07 | 2026-10-01 | 1427FS-30d |  | Sector-44 Noida(2) | 9371124 |
| 1485 | 36900.37000.42400.42800.96200.106600.350300 | Pipe connection & sprinkler installation | 15d | 2026-10-02 | 2026-10-16 | 1484 |  | Sector-44 Noida(2) | 9371134 |
| 1486 | 36900.37000.42400.42800.96200.106600.350400 | Shaft Downtake works | 25d | 2026-09-07 | 2026-10-01 | 1026, 1427FS-30d |  | Sector-44 Noida(2) | 9371144 |
| 1487 | 36900.37000.42400.42800.96200.106600.350500 | Connection to pump room | 10d | 2026-10-02 | 2026-10-11 | 1486 |  | Sector-44 Noida(2) | 9371154 |
| 1488 | 36900.37000.42400.42800.96200.106600.350600 | Installation of FF pumps | 15d | 2026-10-02 | 2026-10-16 | 1484, 1486 |  | Sector-44 Noida(2) | 9371164 |
| 1489 | 36900.37000.42400.42800.96200.106600.350700 | T&C of complete system | 87d | 2027-02-09 | 2027-05-06 | 3420, 1426, 1431, 1437FS-21d, 1485, 1487, 1488, 1407 |  | Sector-44 Noida(2) | 9371174 |

| ID | WBS | Task | Duration | Start | Finish | Predecessors | Complete | Constraint | Calendar | Unique_Task_ID |
| --- | --- | --- | --- | --- | --- | --- | --- | --- | --- | --- |
| 1490 | 36900.37000.42400.42800.96200.188000 | **Lift work** | 87d | 2026-08-11 | 2026-12-20 |  |  | start no earlier than 2026-08-11 | Sector-44 Noida(2) | 9365934 |
| 1491 | 36900.37000.42400.42800.96200.188000.350800 | Lift Shaft/Pit Handover | 12d | 2026-08-11 | 2026-08-22 | 1027 |  |  | Sector-44 Noida(2) | 9371184 |
| 1492 | 36900.37000.42400.42800.96200.188000.350900 | Lift installation work | 55d | 2026-08-23 | 2026-10-16 | 1491 |  |  | Sector-44 Noida(2) | 9371194 |
| 1493 | 36900.37000.42400.42800.96200.188000.351000 | Lift testing and commissioning | 20d | 2026-10-17 | 2026-12-20 | 1492 |  |  | Sector-44 Noida(2) | 9371204 |
| 1494 | 36900.37000.42400.42800.127500 | **External Paint Works** | 80d | 2026-08-01 | 2026-10-19 |  |  | start no earlier than 2026-08-01 | Sector-44 Noida(2) | 9364284 |
| 1495 | 36900.37000.42400.42800.127500.244700 | Surface prepration | 30d | 2026-08-01 | 2026-08-30 | 1026 |  |  | Sector-44 Noida(2) | 9367324 |
| 1496 | 36900.37000.42400.42800.127500.244800 | External Painting (Primer, texture & first coat) | 50d | 2026-08-31 | 2026-10-19 | 1495 |  |  | Sector-44 Noida(2) | 9367334 |
| 1497 | 36900.37000.42400.42800.127500.244900 | Final coat of painting | 40d | 2026-08-11 | 2026-09-19 | 1496FS-70d |  |  | Sector-44 Noida(2) | 9367344 |
| 1498 | 36900.37000.42400.42800.127500.245000 | Misc. work | 20d | 2026-08-31 | 2026-09-19 | 1495 |  |  | Sector-44 Noida(2) | 9367354 |
| 1499 | 36900.37000.42400.42800.220400 | OC Application/Readiness | 1d | 2027-05-07 | 2027-05-07 | 1474, 1482, 1489, 1493, 1423, 1461, 1420, 1429, 1430, 1432 |  |  | Sector-44 Noida(2) | 9366224 |
| 1500 | 36900.37000.42400.42800.220500 | OC Receipt | 60d | 2027-05-08 | 2027-07-06 | 1499, 817, 818, 826, 827 |  |  | Sector-44 Noida(2) | 9366234 |
| 1501 | 36900.37000.42400.42800.124000 | **Post OC Activities** | 205d | 2027-06-07 | 2028-02-11 |  |  | start no earlier than 2027-06-07 | Sector-44 Noida(2) | 9364214 |
| 1502 | 36900.37000.42400.42800.124000.245100 | CP & Sanitaryware installation | 120d | 2027-06-07 | 2027-10-04 | 1500FS-30d, 1478 |  |  | Sector-44 Noida(2) | 9367364 |
| 1503 | 36900.37000.42400.42800.124000.245200 | Electrical Fixtures And Fittings installations | 120d | 2027-06-07 | 2027-10-04 | 1500FS-30d |  |  | Sector-44 Noida(2) | 9367374 |
| 1504 | 36900.37000.42400.42800.124000.245300 | Final Coat Paint Internal | 90d | 2027-06-07 | 2027-09-04 | 1500FS-30d |  |  | Sector-44 Noida(2) | 9367384 |
| 1505 | 36900.37000.42400.42800.124000.245400 | Split AC Units installation | 100d | 2027-09-20 | 2028-02-11 | 1504FS+15d |  |  | Sector-44 Noida(2) | 9367394 |
| 1506 | 36900.37000.42400.42800.124000.245500 | Wooden Flooring | 180d | 2027-06-07 | 2028-01-17 | 1500FS-30d |  |  | Sector-44 Noida(2) | 9367404 |
| 1507 | 36900.37000.42400.42800.220600 | Offer to possession | 150d | 2028-02-12 | 2028-07-10 | 1500FS+120d, 1498, 1502, 1503, 1505, 1506 |  |  | Sector-44 Noida(2) | 9366244 |
| 1508 | 36900.37000.42300 | **Tower-3 (2B+S+P+23)** | 1144d | 2025-01-18 | 2028-07-19 |  | 1% | start no earlier than 2025-01-18 | Sector-44 Noida(2) | 9360674 |
| 1509 | 36900.37000.42300.109300 | **Soldier Piling & Excavation work** | 163d | 2025-01-18 | 2025-06-29 |  | 52% | start no earlier than 2025-01-18 | Sector-44 Noida(2) | 9362644 |
| 1510 | 36900.37000.42300.109300.127600 | **Till 2.5 Mtr** | 72d | 2025-01-18 | 2025-03-30 |  | 100% | start no earlier than 2025-01-18 | Sector-44 Noida(2) | 9365674 |
| 1511 | 36900.37000.42300.109300.127600.205100 | H beam pile driving - 12m | 40d | 2025-01-18 | 2025-03-02 | 779SS+10d | 100% | start no earlier than 2025-01-18 | Sector-44 Noida(2) | 9367414 |
| 1512 | 36900.37000.42300.109300.127600.205200 | Excavation from NGL to 2.5m | 34d | 2025-01-18 | 2025-03-11 | 1511FS-40d | 100% | start no earlier than 2025-01-18 | Sector-44 Noida(2) | 9367424 |
| 1513 | 36900.37000.42300.109300.127600.205300 | Plank installation & anchoring till 2.5m | 25d | 2025-02-20 | 2025-03-30 | 1512FS-37d | 100% | start no earlier than 2025-02-20 | Sector-44 Noida(2) | 9367434 |

| ID | WBS | Task | Duration | Start | Finish | Predecessors | Complete | Constraint | Calendar | Unique_Task_ID |
| --- | --- | --- | --- | --- | --- | --- | --- | --- | --- | --- |
| 1514 | 36900.37000.42300.109300.186900 | **2.5 mtrs till 5 mtrs** | 104d | 2025-01-26 | 2025-05-09 |  | 37% | start no earlier than 2025-01-26 | Sector-44 Noida(2) | 9366064 |
| 1515 | 36900.37000.42300.109300.186900.205400 | Excavation from 2.5m till 5m | 30d | 2025-01-26 | 2025-04-08 | 1513FS-37d | 73% | start no earlier than 2025-01-26 | Sector-44 Noida(2) | 9367444 |
| 1516 | 36900.37000.42300.109300.186900.205500 | Plank installation & anchoring till 2.5m till 5m | 45d | 2025-03-25 | 2025-05-09 | 1515FS-37d | 13% |  | Sector-44 Noida(2) | 9367454 |
| 1517 | 36900.37000.42300.109300.190000 | **12 mts till NTA fotting bottom** | 51d | 2025-05-10 | 2025-06-29 |  |  | start no earlier than 2025-05-10 | Sector-44 Noida(2) | 9366084 |
| 1518 | 36900.37000.42300.109300.190000.245600 | Excavation from 5m to fotting PCC bottom | 26d | 2025-05-10 | 2025-06-04 | 1516 |  |  | Sector-44 Noida(2) | 9367464 |
| 1519 | 36900.37000.42300.109300.190000.245700 | Plank installation & anchoring from 12m to footing PCC bottom | 40d | 2025-05-21 | 2025-06-29 | 1518FS-15d |  |  | Sector-44 Noida(2) | 9367474 |
| 1520 | 36900.37000.42300.60300 | **Sub-Structure works** | 261d | 2025-05-26 | 2026-03-27 |  |  | start no earlier than 2025-05-26 | Sector-44 Noida(2) | 9362074 |
| 1521 | 36900.37000.42300.60300.127700 | **Soil bed preparation** | 6d | 2025-05-26 | 2025-05-31 |  |  | start no earlier than 2025-05-26 | Sector-44 Noida(2) | 9364294 |
| 1522 | 36900.37000.42300.60300.127700.245800 | Excavation completion | 2d | 2025-05-26 | 2025-05-27 | 1519FS-35d |  |  | Sector-44 Noida(2) | 9367484 |
| 1523 | 36900.37000.42300.60300.127700.245900 | Surface dressing | 2d | 2025-05-28 | 2025-05-29 | 1522 |  |  | Sector-44 Noida(2) | 9367494 |
| 1524 | 36900.37000.42300.60300.127700.246000 | ATT | 1d | 2025-05-30 | 2025-05-30 | 1523 |  |  | Sector-44 Noida(2) | 9367504 |
| 1525 | 36900.37000.42300.60300.127700.246100 | PCC | 1d | 2025-05-31 | 2025-05-31 | 1522FF, 1523SF, 1524 |  |  | Sector-44 Noida(2) | 9367514 |
| 1526 | 36900.37000.42300.60300.102300 | **RCC Works** | 70d | 2025-06-01 | 2025-08-09 |  |  | start no earlier than 2025-06-01 | Sector-44 Noida(2) | 9362414 |
| 1527 | 36900.37000.42300.60300.102300.188300 | **Raft** | 20d | 2025-06-01 | 2025-06-20 |  |  | start no earlier than 2025-06-01 | Sector-44 Noida(2) | 9365914 |
| 1528 | 36900.37000.42300.60300.102300.188300.351100 | Reinforcement Work | 18d | 2025-06-01 | 2025-06-18 | 1525 |  |  | Sector-44 Noida(2) | 9371214 |
| 1529 | 36900.37000.42300.60300.102300.188300.351200 | Shuttering work | 10d | 2025-06-09 | 2025-06-18 | 1528FS-10d |  |  | Sector-44 Noida(2) | 9371224 |
| 1530 | 36900.37000.42300.60300.102300.188300.351300 | Concreteing work | 2d | 2025-06-19 | 2025-06-20 | 1528FF, 1529 |  |  | Sector-44 Noida(2) | 9371234 |
| 1531 | 36900.37000.42300.60300.102300.125700 | **Basement-2 Roof Slab** | 25d | 2025-06-21 | 2025-07-15 |  |  | start no earlier than 2025-06-21 | Sector-44 Noida(2) | 9364014 |
| 1532 | 36900.37000.42300.60300.102300.125700.187600 | **B2 Roof Slab** | 25d | 2025-06-21 | 2025-07-15 |  |  | start no earlier than 2025-06-21 | Sector-44 Noida(2) | 9365654 |
| 1533 | 36900.37000.42300.60300.102300.125700.187600.677700 | Shuttering Work | 17d | 2025-06-21 | 2025-07-07 | 1530 |  |  | Sector-44 Noida(2) | 9383394 |
| 1534 | 36900.37000.42300.60300.102300.125700.187600.677800 | Reinforcement Work | 12d | 2025-07-03 | 2025-07-14 | 1533FS-5d |  |  | Sector-44 Noida(2) | 9383404 |
| 1535 | 36900.37000.42300.60300.102300.125700.187600.677900 | Concreteing work | 1d | 2025-07-15 | 2025-07-15 | 1533FF, 1534 |  |  | Sector-44 Noida(2) | 9383414 |
| 1536 | 36900.37000.42300.60300.102300.125600 | **Basement-1 Roof Slab** | 25d | 2025-07-16 | 2025-08-09 |  |  | start no earlier than 2025-07-16 | Sector-44 Noida(2) | 9364004 |
| 1537 | 36900.37000.42300.60300.102300.125600.187500 | **B1 Roof Slab** | 25d | 2025-07-16 | 2025-08-09 |  |  | start no earlier than 2025-07-16 | Sector-44 Noida(2) | 9365644 |
| 1538 | 36900.37000.42300.60300.102300.125600.187500.678000 | Shuttering Work | 17d | 2025-07-16 | 2025-08-01 | 1535 |  |  | Sector-44 Noida(2) | 9383424 |
| 1539 | 36900.37000.42300.60300.102300.125600.187500.678100 | Reinforcement Work | 12d | 2025-07-28 | 2025-08-08 | 1538FS-5d |  |  | Sector-44 Noida(2) | 9383434 |
| 1540 | 36900.37000.42300.60300.102300.125600.187500.678200 | Concreteing work | 1d | 2025-08-09 | 2025-08-09 | 1538FF, 1539 |  |  | Sector-44 Noida(2) | 9383444 |

| ID | WBS | Task | Duration | Start | Finish | Predecessors | Constraint | Calendar | Unique_Task_ID |
| --- | --- | --- | --- | --- | --- | --- | --- | --- | --- |
| 1541 | 36900.37000.42300.60300.101000 | **Sub structure finishing works** | 140d | 2025-09-24 | 2026-03-27 |  | start no earlier than 2025-09-24 | Sector-44 Noida(2) | 9362304 |
| 1542 | 36900.37000.42300.60300.101000.104600 | **Basement-2** | 110d | 2025-09-24 | 2026-02-25 |  | start no earlier than 2025-09-24 | Sector-44 Noida(2) | 9362474 |
| 1543 | 36900.37000.42300.60300.101000.104600.351400 | Masonary | 30d | 2025-09-24 | 2025-10-23 | 1540FS+45d |  | Sector-44 Noida(2) | 9371244 |
| 1544 | 36900.37000.42300.60300.101000.104600.351500 | Structural Steel | 30d | 2025-09-24 | 2025-10-23 | 1540FS+45d |  | Sector-44 Noida(2) | 9371254 |
| 1545 | 36900.37000.42300.60300.101000.104600.351600 | Plaster | 30d | 2025-10-24 | 2026-01-06 | 1543, 1544 |  | Sector-44 Noida(2) | 9371264 |
| 1546 | 36900.37000.42300.60300.101000.104600.351700 | White Wash | 30d | 2026-01-07 | 2026-02-05 | 1545 |  | Sector-44 Noida(2) | 9371274 |
| 1547 | 36900.37000.42300.60300.101000.104600.351800 | VDF | 60d | 2025-10-09 | 2026-01-21 | 1545FS-45d |  | Sector-44 Noida(2) | 9371284 |
| 1548 | 36900.37000.42300.60300.101000.104600.351900 | Drain & Sump (incl. gratings) | 60d | 2025-12-23 | 2026-02-20 | 1547FS-30d |  | Sector-44 Noida(2) | 9371294 |
| 1549 | 36900.37000.42300.60300.101000.104600.352000 | Car parking marking | 30d | 2026-01-22 | 2026-02-20 | 1546FS-15d |  | Sector-44 Noida(2) | 9371304 |
| 1550 | 36900.37000.42300.60300.101000.104600.352100 | Signages | 30d | 2026-01-27 | 2026-02-25 | 1543FF, 1544FF, 1545FF, 1546FS-10d, 1547FF, 1548FF, 1549FF |  | Sector-44 Noida(2) | 9371314 |
| 1551 | 36900.37000.42300.60300.101000.105000 | **Basement-1** | 110d | 2025-10-24 | 2026-03-27 |  | start no earlier than 2025-10-24 | Sector-44 Noida(2) | 9362464 |
| 1552 | 36900.37000.42300.60300.101000.105000.352200 | Masonary | 30d | 2025-10-24 | 2026-01-06 | 1543 |  | Sector-44 Noida(2) | 9371324 |
| 1553 | 36900.37000.42300.60300.101000.105000.352300 | Structural Steel | 30d | 2025-10-24 | 2026-01-06 | 1543 |  | Sector-44 Noida(2) | 9371334 |
| 1554 | 36900.37000.42300.60300.101000.105000.352400 | Plaster | 30d | 2026-01-07 | 2026-02-05 | 1552, 1553 |  | Sector-44 Noida(2) | 9371344 |
| 1555 | 36900.37000.42300.60300.101000.105000.352500 | White Wash | 30d | 2026-02-06 | 2026-03-07 | 1554 |  | Sector-44 Noida(2) | 9371354 |
| 1556 | 36900.37000.42300.60300.101000.105000.352600 | VDF | 60d | 2025-12-23 | 2026-02-20 | 1554FS-45d |  | Sector-44 Noida(2) | 9371364 |
| 1557 | 36900.37000.42300.60300.101000.105000.352700 | Drain & Sump (incl. gratings) | 60d | 2026-01-22 | 2026-03-22 | 1556FS-30d |  | Sector-44 Noida(2) | 9371374 |
| 1558 | 36900.37000.42300.60300.101000.105000.352800 | Car parking marking | 30d | 2026-02-21 | 2026-03-22 | 1555FS-15d |  | Sector-44 Noida(2) | 9371384 |
| 1559 | 36900.37000.42300.60300.101000.105000.352900 | Signages | 30d | 2026-02-26 | 2026-03-27 | 1552FF, 1553FF, 1554FF, 1555FS-10d, 1556FF, 1557FF, 1558FF |  | Sector-44 Noida(2) | 9371394 |
| 1560 | 36900.37000.42300.42900 | **Super structure works** | 940d | 2025-08-10 | 2028-07-19 |  | start no earlier than 2025-08-10 | Sector-44 Noida(2) | 9360734 |
| 1561 | 36900.37000.42300.42900.46400 | **RCC Works** | 332d | 2025-08-10 | 2026-08-21 |  | start no earlier than 2025-08-10 | Sector-44 Noida(2) | 9360844 |
| 1562 | 36900.37000.42300.42900.46400.125500 | **Stilt/GF Slab** | 25d | 2025-08-10 | 2025-09-03 |  | start no earlier than 2025-08-10 | Sector-44 Noida(2) | 9363994 |
| 1563 | 36900.37000.42300.42900.46400.125500.187400 | **Stilt/GF Slab** | 25d | 2025-08-10 | 2025-09-03 |  | start no earlier than 2025-08-10 | Sector-44 Noida(2) | 9365624 |
| 1564 | 36900.37000.42300.42900.46400.125500.187400.678300 | Shuttering Work | 17d | 2025-08-10 | 2025-08-26 | 1540 |  | Sector-44 Noida(2) | 9383454 |
| 1565 | 36900.37000.42300.42900.46400.125500.187400.678400 | Reinforcement Work | 12d | 2025-08-22 | 2025-09-02 | 1564FS-5d |  | Sector-44 Noida(2) | 9383464 |
| 1566 | 36900.37000.42300.42900.46400.125500.187400.678500 | Concreteing work | 1d | 2025-09-03 | 2025-09-03 | 1564FF, 1565 |  | Sector-44 Noida(2) | 9383474 |

| ID | WBS | Task | Duration | Start | Finish | Predecessors | Constraint | Calendar | Unique_Task_ID |
| --- | --- | --- | --- | --- | --- | --- | --- | --- | --- |
| 1567 | 36900.37000.42300.42900.46400.105600 | **Podium-1 Slab** | 25d | 2025-09-04 | 2025-09-28 |  | start no earlier than 2025-09-04 | Sector-44 Noida(2) | 9363244 |
| 1568 | 36900.37000.42300.42900.46400.105600.174700 | **Podium-1 Slab** | 25d | 2025-09-04 | 2025-09-28 |  | start no earlier than 2025-09-04 | Sector-44 Noida(2) | 9364894 |
| 1569 | 36900.37000.42300.42900.46400.105600.174700.678600 | Shuttering Work | 17d | 2025-09-04 | 2025-09-20 | 1566 |  | Sector-44 Noida(2) | 9383484 |
| 1570 | 36900.37000.42300.42900.46400.105600.174700.678700 | Reinforcement Work | 12d | 2025-09-16 | 2025-09-27 | 1569FS-5d |  | Sector-44 Noida(2) | 9383494 |
| 1571 | 36900.37000.42300.42900.46400.105600.174700.678800 | Conduiting work | 1d | 2025-09-27 | 2025-09-27 | 1570FS-1d |  | Sector-44 Noida(2) | 9383504 |
| 1572 | 36900.37000.42300.42900.46400.105600.174700.678900 | Concreteing work | 1d | 2025-09-28 | 2025-09-28 | 1569FF, 1570FF, 1571 |  | Sector-44 Noida(2) | 9383514 |
| 1573 | 36900.37000.42300.42900.46400.105700 | **1st Floor Slab** | 24d | 2025-09-29 | 2025-10-22 |  | start no earlier than 2025-09-29 | Sector-44 Noida(2) | 9363254 |
| 1574 | 36900.37000.42300.42900.46400.105700.174800 | **1st Floor Slab** | 24d | 2025-09-29 | 2025-10-22 |  | start no earlier than 2025-09-29 | Sector-44 Noida(2) | 9364904 |
| 1575 | 36900.37000.42300.42900.46400.105700.174800.679000 | Shuttering Work | 16d | 2025-09-29 | 2025-10-14 | 1572 |  | Sector-44 Noida(2) | 9383524 |
| 1576 | 36900.37000.42300.42900.46400.105700.174800.679100 | Reinforcement Work | 12d | 2025-10-10 | 2025-10-21 | 1575FS-5d |  | Sector-44 Noida(2) | 9383534 |
| 1577 | 36900.37000.42300.42900.46400.105700.174800.679200 | Conduiting work | 1d | 2025-10-21 | 2025-10-21 | 1576FS-1d |  | Sector-44 Noida(2) | 9383544 |
| 1578 | 36900.37000.42300.42900.46400.105700.174800.679300 | Concreteing work | 1d | 2025-10-22 | 2025-10-22 | 1575FF, 1576FF, 1577 |  | Sector-44 Noida(2) | 9383554 |
| 1579 | 36900.37000.42300.42900.46400.105800 | **2nd Floor Slab (1st MIVAN Setup)** | 21d | 2025-10-23 | 2025-12-27 |  | start no earlier than 2025-10-23 | Sector-44 Noida(2) | 9363264 |
| 1580 | 36900.37000.42300.42900.46400.105800.174900 | **2nd Floor Slab** | 21d | 2025-10-23 | 2025-12-27 |  | start no earlier than 2025-10-23 | Sector-44 Noida(2) | 9364914 |
| 1581 | 36900.37000.42300.42900.46400.105800.174900.679400 | Shuttering Work | 13d | 2025-10-23 | 2025-12-19 | 1578 |  | Sector-44 Noida(2) | 9383564 |
| 1582 | 36900.37000.42300.42900.46400.105800.174900.679500 | Reinforcement Work | 10d | 2025-12-17 | 2025-12-26 | 1581FS-3d |  | Sector-44 Noida(2) | 9383574 |
| 1583 | 36900.37000.42300.42900.46400.105800.174900.679600 | Conduiting work | 1d | 2025-12-26 | 2025-12-26 | 1582FS-1d |  | Sector-44 Noida(2) | 9383584 |
| 1584 | 36900.37000.42300.42900.46400.105800.174900.679700 | Concreteing work | 1d | 2025-12-27 | 2025-12-27 | 1581FF, 1582FF, 1583 |  | Sector-44 Noida(2) | 9383594 |
| 1585 | 36900.37000.42300.42900.46400.105900 | **3rd Floor Slab** | 15d | 2025-12-28 | 2026-01-11 |  | start no earlier than 2025-12-28 | Sector-44 Noida(2) | 9363274 |
| 1586 | 36900.37000.42300.42900.46400.105900.175000 | **3rd Floor Slab** | 15d | 2025-12-28 | 2026-01-11 |  | start no earlier than 2025-12-28 | Sector-44 Noida(2) | 9364924 |
| 1587 | 36900.37000.42300.42900.46400.105900.175000.679800 | Shuttering Work | 11d | 2025-12-28 | 2026-01-07 | 1584 |  | Sector-44 Noida(2) | 9383604 |
| 1588 | 36900.37000.42300.42900.46400.105900.175000.679900 | Reinforcement Work | 6d | 2026-01-05 | 2026-01-10 | 1587FS-3d |  | Sector-44 Noida(2) | 9383614 |
| 1589 | 36900.37000.42300.42900.46400.105900.175000.680000 | Conduiting work | 1d | 2026-01-10 | 2026-01-10 | 1588FS-1d |  | Sector-44 Noida(2) | 9383624 |
| 1590 | 36900.37000.42300.42900.46400.105900.175000.680100 | Concreteing work | 1d | 2026-01-11 | 2026-01-11 | 1587FF, 1588FF, 1589 |  | Sector-44 Noida(2) | 9383634 |

| ID | WBS | Task | Duration | Start | Finish | Predecessors | Constraint | Calendar | Unique_Task_ID |
| --- | --- | --- | --- | --- | --- | --- | --- | --- | --- |
| 1591 | 36900.37000.42300.42900.46400.106000 | **4th Floor Slab** | 9d | 2026-01-12 | 2026-01-20 |  | start no earlier than 2026-01-12 | Sector-44 Noida(2) | 9363284 |
| 1592 | 36900.37000.42300.42900.46400.106000.175100 | **4th Floor Slab** | 9d | 2026-01-12 | 2026-01-20 |  | start no earlier than 2026-01-12 | Sector-44 Noida(2) | 9364934 |
| 1593 | 36900.37000.42300.42900.46400.106000.175100.680200 | Shuttering Work | 8d | 2026-01-12 | 2026-01-19 | 1590 |  | Sector-44 Noida(2) | 9383644 |
| 1594 | 36900.37000.42300.42900.46400.106000.175100.680300 | Reinforcement Work | 3d | 2026-01-17 | 2026-01-19 | 1593FS-3d |  | Sector-44 Noida(2) | 9383654 |
| 1595 | 36900.37000.42300.42900.46400.106000.175100.680400 | Conduiting work | 1d | 2026-01-19 | 2026-01-19 | 1594FS-1d |  | Sector-44 Noida(2) | 9383664 |
| 1596 | 36900.37000.42300.42900.46400.106000.175100.680500 | Concreteing work | 1d | 2026-01-20 | 2026-01-20 | 1593FF, 1594FF, 1595 |  | Sector-44 Noida(2) | 9383674 |
| 1597 | 36900.37000.42300.42900.46400.106100 | **5th Floor Slab** | 9d | 2026-01-21 | 2026-01-29 |  | start no earlier than 2026-01-21 | Sector-44 Noida(2) | 9363294 |
| 1598 | 36900.37000.42300.42900.46400.106100.175200 | **5th Floor Slab** | 9d | 2026-01-21 | 2026-01-29 |  | start no earlier than 2026-01-21 | Sector-44 Noida(2) | 9364944 |
| 1599 | 36900.37000.42300.42900.46400.106100.175200.680600 | Shuttering Work | 8d | 2026-01-21 | 2026-01-28 | 1596 |  | Sector-44 Noida(2) | 9383684 |
| 1600 | 36900.37000.42300.42900.46400.106100.175200.680700 | Reinforcement Work | 3d | 2026-01-26 | 2026-01-28 | 1599FS-3d |  | Sector-44 Noida(2) | 9383694 |
| 1601 | 36900.37000.42300.42900.46400.106100.175200.680800 | Conduiting work | 1d | 2026-01-28 | 2026-01-28 | 1600FS-1d |  | Sector-44 Noida(2) | 9383704 |
| 1602 | 36900.37000.42300.42900.46400.106100.175200.680900 | Concreteing work | 1d | 2026-01-29 | 2026-01-29 | 1599FF, 1600FF, 1601 |  | Sector-44 Noida(2) | 9383714 |
| 1603 | 36900.37000.42300.42900.46400.106200 | **6th Floor Slab** | 9d | 2026-01-30 | 2026-02-07 |  | start no earlier than 2026-01-30 | Sector-44 Noida(2) | 9363304 |
| 1604 | 36900.37000.42300.42900.46400.106200.175300 | **6th Floor Slab** | 9d | 2026-01-30 | 2026-02-07 |  | start no earlier than 2026-01-30 | Sector-44 Noida(2) | 9364954 |
| 1605 | 36900.37000.42300.42900.46400.106200.175300.681000 | Shuttering Work | 8d | 2026-01-30 | 2026-02-06 | 1602 |  | Sector-44 Noida(2) | 9383724 |
| 1606 | 36900.37000.42300.42900.46400.106200.175300.681100 | Reinforcement Work | 3d | 2026-02-04 | 2026-02-06 | 1605FS-3d |  | Sector-44 Noida(2) | 9383734 |
| 1607 | 36900.37000.42300.42900.46400.106200.175300.681200 | Conduiting work | 1d | 2026-02-06 | 2026-02-06 | 1606FS-1d |  | Sector-44 Noida(2) | 9383744 |
| 1608 | 36900.37000.42300.42900.46400.106200.175300.681300 | Concreteing work | 1d | 2026-02-07 | 2026-02-07 | 1605FF, 1606FF, 1607 |  | Sector-44 Noida(2) | 9383754 |
| 1609 | 36900.37000.42300.42900.46400.106300 | **7th Floor Slab** | 9d | 2026-02-08 | 2026-02-16 |  | start no earlier than 2026-02-08 | Sector-44 Noida(2) | 9363314 |
| 1610 | 36900.37000.42300.42900.46400.106300.175400 | **7th Floor Slab** | 9d | 2026-02-08 | 2026-02-16 |  | start no earlier than 2026-02-08 | Sector-44 Noida(2) | 9364964 |
| 1611 | 36900.37000.42300.42900.46400.106300.175400.681400 | Shuttering Work | 8d | 2026-02-08 | 2026-02-15 | 1608 |  | Sector-44 Noida(2) | 9383764 |
| 1612 | 36900.37000.42300.42900.46400.106300.175400.681500 | Reinforcement Work | 3d | 2026-02-13 | 2026-02-15 | 1611FS-3d |  | Sector-44 Noida(2) | 9383774 |
| 1613 | 36900.37000.42300.42900.46400.106300.175400.681600 | Conduiting work | 1d | 2026-02-15 | 2026-02-15 | 1612FS-1d |  | Sector-44 Noida(2) | 9383784 |
| 1614 | 36900.37000.42300.42900.46400.106300.175400.681700 | Concreteing work | 1d | 2026-02-16 | 2026-02-16 | 1611FF, 1612FF, 1613 |  | Sector-44 Noida(2) | 9383794 |

| ID | WBS | Task | Duration | Start | Finish | Predecessors | Constraint | Calendar | Unique_Task_ID |
| --- | --- | --- | --- | --- | --- | --- | --- | --- | --- |
| 1615 | 36900.37000.42300.42900.46400.106400 | **8th Floor Slab** | 9d | 2026-02-17 | 2026-02-25 |  | start no earlier than 2026-02-17 | Sector-44 Noida(2) | 9363324 |
| 1616 | 36900.37000.42300.42900.46400.106400.175500 | **8th Floor Slab** | 9d | 2026-02-17 | 2026-02-25 |  | start no earlier than 2026-02-17 | Sector-44 Noida(2) | 9364974 |
| 1617 | 36900.37000.42300.42900.46400.106400.175500.681800 | Shuttering Work | 8d | 2026-02-17 | 2026-02-24 | 1614 |  | Sector-44 Noida(2) | 9383804 |
| 1618 | 36900.37000.42300.42900.46400.106400.175500.681900 | Reinforcement Work | 3d | 2026-02-22 | 2026-02-24 | 1617FS-3d |  | Sector-44 Noida(2) | 9383814 |
| 1619 | 36900.37000.42300.42900.46400.106400.175500.682000 | Conduiting work | 1d | 2026-02-24 | 2026-02-24 | 1618FS-1d |  | Sector-44 Noida(2) | 9383824 |
| 1620 | 36900.37000.42300.42900.46400.106400.175500.682100 | Concreteing work | 1d | 2026-02-25 | 2026-02-25 | 1617FF, 1618FF, 1619 |  | Sector-44 Noida(2) | 9383834 |
| 1621 | 36900.37000.42300.42900.46400.106500 | **9th Floor Slab** | 9d | 2026-02-26 | 2026-03-06 |  | start no earlier than 2026-02-26 | Sector-44 Noida(2) | 9363334 |
| 1622 | 36900.37000.42300.42900.46400.106500.175600 | **9th Floor Slab** | 9d | 2026-02-26 | 2026-03-06 |  | start no earlier than 2026-02-26 | Sector-44 Noida(2) | 9364984 |
| 1623 | 36900.37000.42300.42900.46400.106500.175600.682200 | Shuttering Work | 8d | 2026-02-26 | 2026-03-05 | 1620 |  | Sector-44 Noida(2) | 9383844 |
| 1624 | 36900.37000.42300.42900.46400.106500.175600.682300 | Reinforcement Work | 3d | 2026-03-03 | 2026-03-05 | 1623FS-3d |  | Sector-44 Noida(2) | 9383854 |
| 1625 | 36900.37000.42300.42900.46400.106500.175600.682400 | Conduiting work | 1d | 2026-03-05 | 2026-03-05 | 1624FS-1d |  | Sector-44 Noida(2) | 9383864 |
| 1626 | 36900.37000.42300.42900.46400.106500.175600.682500 | Concreteing work | 1d | 2026-03-06 | 2026-03-06 | 1623FF, 1624FF, 1625 |  | Sector-44 Noida(2) | 9383874 |
| 1627 | 36900.37000.42300.42900.46400.106700 | **10th Floor Slab** | 9d | 2026-03-07 | 2026-03-15 |  | start no earlier than 2026-03-07 | Sector-44 Noida(2) | 9363344 |
| 1628 | 36900.37000.42300.42900.46400.106700.175700 | **10th Floor Slab** | 9d | 2026-03-07 | 2026-03-15 |  | start no earlier than 2026-03-07 | Sector-44 Noida(2) | 9364994 |
| 1629 | 36900.37000.42300.42900.46400.106700.175700.682600 | Shuttering Work | 8d | 2026-03-07 | 2026-03-14 | 1626 |  | Sector-44 Noida(2) | 9383884 |
| 1630 | 36900.37000.42300.42900.46400.106700.175700.682700 | Reinforcement Work | 3d | 2026-03-12 | 2026-03-14 | 1629FS-3d |  | Sector-44 Noida(2) | 9383894 |
| 1631 | 36900.37000.42300.42900.46400.106700.175700.682800 | Conduiting work | 1d | 2026-03-14 | 2026-03-14 | 1630FS-1d |  | Sector-44 Noida(2) | 9383904 |
| 1632 | 36900.37000.42300.42900.46400.106700.175700.682900 | Concreteing work | 1d | 2026-03-15 | 2026-03-15 | 1629FF, 1630FF, 1631 |  | Sector-44 Noida(2) | 9383914 |
| 1633 | 36900.37000.42300.42900.46400.106800 | **11th Floor Slab** | 9d | 2026-03-16 | 2026-03-24 |  | start no earlier than 2026-03-16 | Sector-44 Noida(2) | 9363354 |
| 1634 | 36900.37000.42300.42900.46400.106800.175800 | **11th Floor Slab** | 9d | 2026-03-16 | 2026-03-24 |  | start no earlier than 2026-03-16 | Sector-44 Noida(2) | 9365004 |
| 1635 | 36900.37000.42300.42900.46400.106800.175800.683000 | Shuttering Work | 8d | 2026-03-16 | 2026-03-23 | 1632 |  | Sector-44 Noida(2) | 9383924 |
| 1636 | 36900.37000.42300.42900.46400.106800.175800.683100 | Reinforcement Work | 3d | 2026-03-21 | 2026-03-23 | 1635FS-3d |  | Sector-44 Noida(2) | 9383934 |
| 1637 | 36900.37000.42300.42900.46400.106800.175800.683200 | Conduiting work | 1d | 2026-03-23 | 2026-03-23 | 1636FS-1d |  | Sector-44 Noida(2) | 9383944 |
| 1638 | 36900.37000.42300.42900.46400.106800.175800.683300 | Concreteing work | 1d | 2026-03-24 | 2026-03-24 | 1635FF, 1636FF, 1637 |  | Sector-44 Noida(2) | 9383954 |

| ID | WBS | Task | Duration | Start | Finish | Predecessors | Constraint | Calendar | Unique_Task_ID |
| --- | --- | --- | --- | --- | --- | --- | --- | --- | --- |
| 1639 | 36900.37000.42300.42900.46400.106900 | **12th Floor Slab** | 9d | 2026-03-25 | 2026-04-02 |  | start no earlier than 2026-03-25 | Sector-44 Noida(2) | 9363364 |
| 1640 | 36900.37000.42300.42900.46400.106900.175900 | **12th Floor Slab** | 9d | 2026-03-25 | 2026-04-02 |  | start no earlier than 2026-03-25 | Sector-44 Noida(2) | 9365014 |
| 1641 | 36900.37000.42300.42900.46400.106900.175900.683400 | Shuttering Work | 8d | 2026-03-25 | 2026-04-01 | 1638 |  | Sector-44 Noida(2) | 9383964 |
| 1642 | 36900.37000.42300.42900.46400.106900.175900.683500 | Reinforcement Work | 3d | 2026-03-30 | 2026-04-01 | 1641FS-3d |  | Sector-44 Noida(2) | 9383974 |
| 1643 | 36900.37000.42300.42900.46400.106900.175900.683600 | Conduiting work | 1d | 2026-04-01 | 2026-04-01 | 1642FS-1d |  | Sector-44 Noida(2) | 9383984 |
| 1644 | 36900.37000.42300.42900.46400.106900.175900.683700 | Concreteing work | 1d | 2026-04-02 | 2026-04-02 | 1641FF, 1642FF, 1643 |  | Sector-44 Noida(2) | 9383994 |
| 1645 | 36900.37000.42300.42900.46400.107000 | **13th Floor Slab** | 9d | 2026-04-03 | 2026-04-11 |  | start no earlier than 2026-04-03 | Sector-44 Noida(2) | 9363374 |
| 1646 | 36900.37000.42300.42900.46400.107000.176000 | **13th Floor Slab** | 9d | 2026-04-03 | 2026-04-11 |  | start no earlier than 2026-04-03 | Sector-44 Noida(2) | 9365024 |
| 1647 | 36900.37000.42300.42900.46400.107000.176000.683800 | Shuttering Work | 8d | 2026-04-03 | 2026-04-10 | 1644 |  | Sector-44 Noida(2) | 9384004 |
| 1648 | 36900.37000.42300.42900.46400.107000.176000.683900 | Reinforcement Work | 3d | 2026-04-08 | 2026-04-10 | 1647FS-3d |  | Sector-44 Noida(2) | 9384014 |
| 1649 | 36900.37000.42300.42900.46400.107000.176000.684000 | Conduiting work | 1d | 2026-04-10 | 2026-04-10 | 1648FS-1d |  | Sector-44 Noida(2) | 9384024 |
| 1650 | 36900.37000.42300.42900.46400.107000.176000.684100 | Concreteing work | 1d | 2026-04-11 | 2026-04-11 | 1647FF, 1648FF, 1649 |  | Sector-44 Noida(2) | 9384034 |
| 1651 | 36900.37000.42300.42900.46400.107300 | **14th Floor Slab** | 9d | 2026-04-12 | 2026-04-20 |  | start no earlier than 2026-04-12 | Sector-44 Noida(2) | 9363384 |
| 1652 | 36900.37000.42300.42900.46400.107300.176100 | **14th Floor Slab** | 9d | 2026-04-12 | 2026-04-20 |  | start no earlier than 2026-04-12 | Sector-44 Noida(2) | 9365034 |
| 1653 | 36900.37000.42300.42900.46400.107300.176100.684200 | Shuttering Work | 8d | 2026-04-12 | 2026-04-19 | 1650 |  | Sector-44 Noida(2) | 9384044 |
| 1654 | 36900.37000.42300.42900.46400.107300.176100.684300 | Reinforcement Work | 3d | 2026-04-17 | 2026-04-19 | 1653FS-3d |  | Sector-44 Noida(2) | 9384054 |
| 1655 | 36900.37000.42300.42900.46400.107300.176100.684400 | Conduiting work | 1d | 2026-04-19 | 2026-04-19 | 1654FS-1d |  | Sector-44 Noida(2) | 9384064 |
| 1656 | 36900.37000.42300.42900.46400.107300.176100.684500 | Concreteing work | 1d | 2026-04-20 | 2026-04-20 | 1653FF, 1654FF, 1655 |  | Sector-44 Noida(2) | 9384074 |
| 1657 | 36900.37000.42300.42900.46400.107400 | **15th Floor Slab** | 9d | 2026-04-21 | 2026-04-29 |  | start no earlier than 2026-04-21 | Sector-44 Noida(2) | 9363394 |
| 1658 | 36900.37000.42300.42900.46400.107400.176200 | **15th Floor Slab** | 9d | 2026-04-21 | 2026-04-29 |  | start no earlier than 2026-04-21 | Sector-44 Noida(2) | 9365044 |
| 1659 | 36900.37000.42300.42900.46400.107400.176200.684600 | Shuttering Work | 8d | 2026-04-21 | 2026-04-28 | 1656 |  | Sector-44 Noida(2) | 9384084 |
| 1660 | 36900.37000.42300.42900.46400.107400.176200.684700 | Reinforcement Work | 3d | 2026-04-26 | 2026-04-28 | 1659FS-3d |  | Sector-44 Noida(2) | 9384094 |
| 1661 | 36900.37000.42300.42900.46400.107400.176200.684800 | Conduiting work | 1d | 2026-04-28 | 2026-04-28 | 1660FS-1d |  | Sector-44 Noida(2) | 9384104 |
| 1662 | 36900.37000.42300.42900.46400.107400.176200.684900 | Concreteing work | 1d | 2026-04-29 | 2026-04-29 | 1659FF, 1660FF, 1661 |  | Sector-44 Noida(2) | 9384114 |

| ID | WBS | Task | Duration | Start | Finish | Predecessors | Constraint | Calendar | Unique_Task_ID |
| --- | --- | --- | --- | --- | --- | --- | --- | --- | --- |
| 1663 | 36900.37000.42300.42900.46400.107900 | **16th Floor Slab** | 9d | 2026-04-30 | 2026-05-08 |  | start no earlier than 2026-04-30 | Sector-44 Noida(2) | 9363404 |
| 1664 | 36900.37000.42300.42900.46400.107900.176300 | **16th Floor Slab** | 9d | 2026-04-30 | 2026-05-08 |  | start no earlier than 2026-04-30 | Sector-44 Noida(2) | 9365054 |
| 1665 | 36900.37000.42300.42900.46400.107900.176300.685000 | Shuttering Work | 8d | 2026-04-30 | 2026-05-07 | 1662 |  | Sector-44 Noida(2) | 9384124 |
| 1666 | 36900.37000.42300.42900.46400.107900.176300.685100 | Reinforcement Work | 3d | 2026-05-05 | 2026-05-07 | 1665FS-3d |  | Sector-44 Noida(2) | 9384134 |
| 1667 | 36900.37000.42300.42900.46400.107900.176300.685200 | Conduiting work | 1d | 2026-05-07 | 2026-05-07 | 1666FS-1d |  | Sector-44 Noida(2) | 9384144 |
| 1668 | 36900.37000.42300.42900.46400.107900.176300.685300 | Concreteing work | 1d | 2026-05-08 | 2026-05-08 | 1665FF, 1666FF, 1667 |  | Sector-44 Noida(2) | 9384154 |
| 1669 | 36900.37000.42300.42900.46400.108400 | **17th Floor Slab** | 9d | 2026-05-09 | 2026-05-17 |  | start no earlier than 2026-05-09 | Sector-44 Noida(2) | 9363414 |
| 1670 | 36900.37000.42300.42900.46400.108400.176400 | **17th Floor Slab** | 9d | 2026-05-09 | 2026-05-17 |  | start no earlier than 2026-05-09 | Sector-44 Noida(2) | 9365064 |
| 1671 | 36900.37000.42300.42900.46400.108400.176400.685400 | Shuttering Work | 8d | 2026-05-09 | 2026-05-16 | 1668 |  | Sector-44 Noida(2) | 9384164 |
| 1672 | 36900.37000.42300.42900.46400.108400.176400.685500 | Reinforcement Work | 3d | 2026-05-14 | 2026-05-16 | 1671FS-3d |  | Sector-44 Noida(2) | 9384174 |
| 1673 | 36900.37000.42300.42900.46400.108400.176400.685600 | Conduiting work | 1d | 2026-05-16 | 2026-05-16 | 1672FS-1d |  | Sector-44 Noida(2) | 9384184 |
| 1674 | 36900.37000.42300.42900.46400.108400.176400.685700 | Concreteing work | 1d | 2026-05-17 | 2026-05-17 | 1671FF, 1672FF, 1673 |  | Sector-44 Noida(2) | 9384194 |
| 1675 | 36900.37000.42300.42900.46400.109200 | **18th Floor Slab** | 9d | 2026-05-18 | 2026-05-26 |  | start no earlier than 2026-05-18 | Sector-44 Noida(2) | 9363424 |
| 1676 | 36900.37000.42300.42900.46400.109200.176500 | **18th Floor Slab** | 9d | 2026-05-18 | 2026-05-26 |  | start no earlier than 2026-05-18 | Sector-44 Noida(2) | 9365074 |
| 1677 | 36900.37000.42300.42900.46400.109200.176500.685800 | Shuttering Work | 8d | 2026-05-18 | 2026-05-25 | 1674 |  | Sector-44 Noida(2) | 9384204 |
| 1678 | 36900.37000.42300.42900.46400.109200.176500.685900 | Reinforcement Work | 3d | 2026-05-23 | 2026-05-25 | 1677FS-3d |  | Sector-44 Noida(2) | 9384214 |
| 1679 | 36900.37000.42300.42900.46400.109200.176500.686000 | Conduiting work | 1d | 2026-05-25 | 2026-05-25 | 1678FS-1d |  | Sector-44 Noida(2) | 9384224 |
| 1680 | 36900.37000.42300.42900.46400.109200.176500.686100 | Concreteing work | 1d | 2026-05-26 | 2026-05-26 | 1677FF, 1678FF, 1679 |  | Sector-44 Noida(2) | 9384234 |
| 1681 | 36900.37000.42300.42900.46400.110700 | **19th Floor Slab** | 8d | 2026-05-27 | 2026-06-03 |  | start no earlier than 2026-05-27 | Sector-44 Noida(2) | 9363434 |
| 1682 | 36900.37000.42300.42900.46400.110700.176600 | **19th Floor Slab** | 8d | 2026-05-27 | 2026-06-03 |  | start no earlier than 2026-05-27 | Sector-44 Noida(2) | 9365084 |
| 1683 | 36900.37000.42300.42900.46400.110700.176600.686200 | Shuttering Work | 7d | 2026-05-27 | 2026-06-02 | 1680 |  | Sector-44 Noida(2) | 9384244 |
| 1684 | 36900.37000.42300.42900.46400.110700.176600.686300 | Reinforcement Work | 3d | 2026-05-31 | 2026-06-02 | 1683FS-3d |  | Sector-44 Noida(2) | 9384254 |
| 1685 | 36900.37000.42300.42900.46400.110700.176600.686400 | Conduiting work | 1d | 2026-06-02 | 2026-06-02 | 1684FS-1d |  | Sector-44 Noida(2) | 9384264 |
| 1686 | 36900.37000.42300.42900.46400.110700.176600.686500 | Concreteing work | 1d | 2026-06-03 | 2026-06-03 | 1683FF, 1684FF, 1685 |  | Sector-44 Noida(2) | 9384274 |

| ID | WBS | Task | Duration | Start | Finish | Predecessors | Constraint | Calendar | Unique_Task_ID |
| --- | --- | --- | --- | --- | --- | --- | --- | --- | --- |
| 1687 | 36900.37000.42300.42900.46400.111600 | **20th Floor Slab** | 8d | 2026-06-04 | 2026-06-11 |  | start no earlier than 2026-06-04 | Sector-44 Noida(2) | 9363444 |
| 1688 | 36900.37000.42300.42900.46400.111600.176700 | **20th Floor Slab** | 8d | 2026-06-04 | 2026-06-11 |  | start no earlier than 2026-06-04 | Sector-44 Noida(2) | 9365094 |
| 1689 | 36900.37000.42300.42900.46400.111600.176700.686600 | Shuttering Work | 7d | 2026-06-04 | 2026-06-10 | 1686 |  | Sector-44 Noida(2) | 9384284 |
| 1690 | 36900.37000.42300.42900.46400.111600.176700.686700 | Reinforcement Work | 3d | 2026-06-08 | 2026-06-10 | 1689FS-3d |  | Sector-44 Noida(2) | 9384294 |
| 1691 | 36900.37000.42300.42900.46400.111600.176700.686800 | Conduiting work | 1d | 2026-06-10 | 2026-06-10 | 1690FS-1d |  | Sector-44 Noida(2) | 9384304 |
| 1692 | 36900.37000.42300.42900.46400.111600.176700.686900 | Concreteing work | 1d | 2026-06-11 | 2026-06-11 | 1689FF, 1690FF, 1691 |  | Sector-44 Noida(2) | 9384314 |
| 1693 | 36900.37000.42300.42900.46400.112600 | **21st Floor Slab** | 8d | 2026-06-12 | 2026-06-19 |  | start no earlier than 2026-06-12 | Sector-44 Noida(2) | 9363454 |
| 1694 | 36900.37000.42300.42900.46400.112600.176800 | **21st Floor Slab** | 8d | 2026-06-12 | 2026-06-19 |  | start no earlier than 2026-06-12 | Sector-44 Noida(2) | 9365104 |
| 1695 | 36900.37000.42300.42900.46400.112600.176800.687000 | Shuttering Work | 7d | 2026-06-12 | 2026-06-18 | 1692 |  | Sector-44 Noida(2) | 9384324 |
| 1696 | 36900.37000.42300.42900.46400.112600.176800.687100 | Reinforcement Work | 3d | 2026-06-16 | 2026-06-18 | 1695FS-3d |  | Sector-44 Noida(2) | 9384334 |
| 1697 | 36900.37000.42300.42900.46400.112600.176800.687200 | Conduiting work | 1d | 2026-06-18 | 2026-06-18 | 1696FS-1d |  | Sector-44 Noida(2) | 9384344 |
| 1698 | 36900.37000.42300.42900.46400.112600.176800.687300 | Concreteing work | 1d | 2026-06-19 | 2026-06-19 | 1695FF, 1696FF, 1697 |  | Sector-44 Noida(2) | 9384354 |
| 1699 | 36900.37000.42300.42900.46400.116600 | **22nd Floor Slab** | 8d | 2026-06-20 | 2026-06-27 |  | start no earlier than 2026-06-20 | Sector-44 Noida(2) | 9363464 |
| 1700 | 36900.37000.42300.42900.46400.116600.176900 | **22nd Floor Slab** | 8d | 2026-06-20 | 2026-06-27 |  | start no earlier than 2026-06-20 | Sector-44 Noida(2) | 9365114 |
| 1701 | 36900.37000.42300.42900.46400.116600.176900.687400 | Shuttering Work | 7d | 2026-06-20 | 2026-06-26 | 1698 |  | Sector-44 Noida(2) | 9384364 |
| 1702 | 36900.37000.42300.42900.46400.116600.176900.687500 | Reinforcement Work | 3d | 2026-06-24 | 2026-06-26 | 1701FS-3d |  | Sector-44 Noida(2) | 9384374 |
| 1703 | 36900.37000.42300.42900.46400.116600.176900.687600 | Conduiting work | 1d | 2026-06-26 | 2026-06-26 | 1702FS-1d |  | Sector-44 Noida(2) | 9384384 |
| 1704 | 36900.37000.42300.42900.46400.116600.176900.687700 | Concreteing work | 1d | 2026-06-27 | 2026-06-27 | 1701FF, 1702FF, 1703 |  | Sector-44 Noida(2) | 9384394 |
| 1705 | 36900.37000.42300.42900.46400.118500 | **23rd Floor Slab** | 8d | 2026-06-28 | 2026-07-05 |  | start no earlier than 2026-06-28 | Sector-44 Noida(2) | 9363474 |
| 1706 | 36900.37000.42300.42900.46400.118500.177000 | **23rd Floor Slab** | 8d | 2026-06-28 | 2026-07-05 |  | start no earlier than 2026-06-28 | Sector-44 Noida(2) | 9365124 |
| 1707 | 36900.37000.42300.42900.46400.118500.177000.687800 | Shuttering Work | 7d | 2026-06-28 | 2026-07-04 | 1704 |  | Sector-44 Noida(2) | 9384404 |
| 1708 | 36900.37000.42300.42900.46400.118500.177000.687900 | Reinforcement Work | 3d | 2026-07-02 | 2026-07-04 | 1707FS-3d |  | Sector-44 Noida(2) | 9384414 |
| 1709 | 36900.37000.42300.42900.46400.118500.177000.688000 | Conduiting work | 1d | 2026-07-04 | 2026-07-04 | 1708FS-1d |  | Sector-44 Noida(2) | 9384424 |
| 1710 | 36900.37000.42300.42900.46400.118500.177000.688100 | Concreteing work | 1d | 2026-07-05 | 2026-07-05 | 1707FF, 1708FF, 1709 |  | Sector-44 Noida(2) | 9384434 |

| ID | WBS | Task | Duration | Start | Finish | Predecessors | Constraint | Calendar | Unique_Task_ID |
| --- | --- | --- | --- | --- | --- | --- | --- | --- | --- |
| 1711 | 36900.37000.42300.42900.46400.118700 | **Terrace Slab** | 12d | 2026-07-06 | 2026-07-17 |  | start no earlier than 2026-07-06 | Sector-44 Noida(2) | 9363484 |
| 1712 | 36900.37000.42300.42900.46400.118700.177100 | **Terrace Slab** | 12d | 2026-07-06 | 2026-07-17 |  | start no earlier than 2026-07-06 | Sector-44 Noida(2) | 9365134 |
| 1713 | 36900.37000.42300.42900.46400.118700.177100.688200 | Shuttering Work | 10d | 2026-07-06 | 2026-07-15 | 1710 |  | Sector-44 Noida(2) | 9384444 |
| 1714 | 36900.37000.42300.42900.46400.118700.177100.688300 | Reinforcement Work | 5d | 2026-07-12 | 2026-07-16 | 1713FS-4d |  | Sector-44 Noida(2) | 9384454 |
| 1715 | 36900.37000.42300.42900.46400.118700.177100.688400 | Conduiting work | 1d | 2026-07-16 | 2026-07-16 | 1714FS-1d |  | Sector-44 Noida(2) | 9384464 |
| 1716 | 36900.37000.42300.42900.46400.118700.177100.688500 | Concreteing work | 1d | 2026-07-17 | 2026-07-17 | 1713FF, 1714FF, 1715 |  | Sector-44 Noida(2) | 9384474 |
| 1717 | 36900.37000.42300.42900.46400.118900 | **Terrace to LMR Floor** | 8d | 2026-07-18 | 2026-07-25 |  | start no earlier than 2026-07-18 | Sector-44 Noida(2) | 9363494 |
| 1718 | 36900.37000.42300.42900.46400.118900.177200 | **LMR Floor Slab** | 8d | 2026-07-18 | 2026-07-25 |  | start no earlier than 2026-07-18 | Sector-44 Noida(2) | 9365144 |
| 1719 | 36900.37000.42300.42900.46400.118900.177200.688600 | Shuttering Work | 6d | 2026-07-18 | 2026-07-23 | 1716 |  | Sector-44 Noida(2) | 9384484 |
| 1720 | 36900.37000.42300.42900.46400.118900.177200.688700 | Reinforcement Work | 3d | 2026-07-22 | 2026-07-24 | 1719FS-2d |  | Sector-44 Noida(2) | 9384494 |
| 1721 | 36900.37000.42300.42900.46400.118900.177200.688800 | Conduiting work | 1d | 2026-07-24 | 2026-07-24 | 1720FS-1d |  | Sector-44 Noida(2) | 9384504 |
| 1722 | 36900.37000.42300.42900.46400.118900.177200.688900 | Concreteing work | 1d | 2026-07-25 | 2026-07-25 | 1719FF, 1720FF, 1721 |  | Sector-44 Noida(2) | 9384514 |
| 1723 | 36900.37000.42300.42900.46400.119100 | **LMR Floor to LMR Roof** | 8d | 2026-07-26 | 2026-08-02 |  | start no earlier than 2026-07-26 | Sector-44 Noida(2) | 9363504 |
| 1724 | 36900.37000.42300.42900.46400.119100.177300 | **LMR Roof Slab** | 8d | 2026-07-26 | 2026-08-02 |  | start no earlier than 2026-07-26 | Sector-44 Noida(2) | 9365154 |
| 1725 | 36900.37000.42300.42900.46400.119100.177300.689000 | Shuttering Work | 6d | 2026-07-26 | 2026-07-31 | 1722 |  | Sector-44 Noida(2) | 9384524 |
| 1726 | 36900.37000.42300.42900.46400.119100.177300.689100 | Reinforcement Work | 3d | 2026-07-30 | 2026-08-01 | 1725FS-2d |  | Sector-44 Noida(2) | 9384534 |
| 1727 | 36900.37000.42300.42900.46400.119100.177300.689200 | Conduiting work | 1d | 2026-08-01 | 2026-08-01 | 1726FS-1d |  | Sector-44 Noida(2) | 9384544 |
| 1728 | 36900.37000.42300.42900.46400.119100.177300.689300 | Concreteing work | 1d | 2026-08-02 | 2026-08-02 | 1725FF, 1726FF, 1727 |  | Sector-44 Noida(2) | 9384554 |
| 1729 | 36900.37000.42300.42900.46400.124700 | **OHT & Roof Features** | 19d | 2026-08-03 | 2026-08-21 |  | start no earlier than 2026-08-03 | Sector-44 Noida(2) | 9364204 |
| 1730 | 36900.37000.42300.42900.46400.124700.186800 | **OHT & Roof Features** | 19d | 2026-08-03 | 2026-08-21 |  | start no earlier than 2026-08-03 | Sector-44 Noida(2) | 9365614 |
| 1731 | 36900.37000.42300.42900.46400.124700.186800.689400 | Reinforcement Work | 12d | 2026-08-03 | 2026-08-14 | 1728 |  | Sector-44 Noida(2) | 9384564 |
| 1732 | 36900.37000.42300.42900.46400.124700.186800.689500 | Shuttering work | 9d | 2026-08-13 | 2026-08-21 | 1731FS-2d |  | Sector-44 Noida(2) | 9384574 |
| 1733 | 36900.37000.42300.42900.46400.124700.186800.689600 | Concreteing work | 7d | 2026-08-15 | 2026-08-21 | 1731FF, 1732FF |  | Sector-44 Noida(2) | 9384584 |
| 1734 | 36900.37000.42300.42900.47400 | **Post Pour Works** | 220d | 2026-01-12 | 2026-08-19 |  | start no earlier than 2026-01-12 | Sector-44 Noida(2) | 9360884 |
| 1735 | 36900.37000.42300.42900.47400.246200 | 1st Floor | 8d | 2026-01-12 | 2026-01-19 | 1590 |  | Sector-44 Noida(2) | 9367524 |
| 1736 | 36900.37000.42300.42900.47400.246300 | 2nd Floor | 8d | 2026-01-21 | 2026-01-28 | 1735, 1596 |  | Sector-44 Noida(2) | 9367534 |
| 1737 | 36900.37000.42300.42900.47400.246400 | 3rd Floor | 8d | 2026-01-30 | 2026-02-06 | 1736, 1602 |  | Sector-44 Noida(2) | 9367544 |
| 1738 | 36900.37000.42300.42900.47400.246500 | 4th Floor | 8d | 2026-02-17 | 2026-02-24 | 1737, 1614 |  | Sector-44 Noida(2) | 9367554 |
| 1739 | 36900.37000.42300.42900.47400.246600 | 5th Floor | 8d | 2026-02-26 | 2026-03-05 | 1738, 1620 |  | Sector-44 Noida(2) | 9367564 |
| 1740 | 36900.37000.42300.42900.47400.246700 | 6th Floor | 8d | 2026-03-07 | 2026-03-14 | 1739, 1626 |  | Sector-44 Noida(2) | 9367574 |
| 1741 | 36900.37000.42300.42900.47400.246800 | 7th Floor | 8d | 2026-03-15 | 2026-03-22 | 1740 |  | Sector-44 Noida(2) | 9367584 |
| 1742 | 36900.37000.42300.42900.47400.246900 | 8th Floor | 8d | 2026-03-25 | 2026-04-01 | 1741, 1638 |  | Sector-44 Noida(2) | 9367594 |
| 1743 | 36900.37000.42300.42900.47400.247000 | 9th Floor | 8d | 2026-04-03 | 2026-04-10 | 1742, 1644 |  | Sector-44 Noida(2) | 9367604 |
| 1744 | 36900.37000.42300.42900.47400.247100 | 10th Floor | 8d | 2026-04-12 | 2026-04-19 | 1743, 1650 |  | Sector-44 Noida(2) | 9367614 |
| 1745 | 36900.37000.42300.42900.47400.247200 | 11th Floor | 8d | 2026-04-21 | 2026-04-28 | 1744, 1656 |  | Sector-44 Noida(2) | 9367624 |
| 1746 | 36900.37000.42300.42900.47400.247300 | 12th Floor | 8d | 2026-04-30 | 2026-05-07 | 1745, 1662 |  | Sector-44 Noida(2) | 9367634 |
| 1747 | 36900.37000.42300.42900.47400.247400 | 13th Floor | 8d | 2026-05-09 | 2026-05-16 | 1746, 1668 |  | Sector-44 Noida(2) | 9367644 |
| 1748 | 36900.37000.42300.42900.47400.247500 | 14th Floor | 8d | 2026-05-18 | 2026-05-25 | 1747, 1674 |  | Sector-44 Noida(2) | 9367654 |
| 1749 | 36900.37000.42300.42900.47400.247600 | 15th Floor | 8d | 2026-05-27 | 2026-06-03 | 1748, 1680 |  | Sector-44 Noida(2) | 9367664 |
| 1750 | 36900.37000.42300.42900.47400.247700 | 16th Floor | 8d | 2026-06-04 | 2026-06-11 | 1749, 1686 |  | Sector-44 Noida(2) | 9367674 |
| 1751 | 36900.37000.42300.42900.47400.247800 | 17th Floor | 8d | 2026-06-12 | 2026-06-19 | 1750, 1692 |  | Sector-44 Noida(2) | 9367684 |
| 1752 | 36900.37000.42300.42900.47400.247900 | 18th Floor | 8d | 2026-06-20 | 2026-06-27 | 1751, 1698 |  | Sector-44 Noida(2) | 9367694 |
| 1753 | 36900.37000.42300.42900.47400.248000 | 19th Floor | 8d | 2026-06-28 | 2026-07-05 | 1752, 1704 |  | Sector-44 Noida(2) | 9367704 |
| 1754 | 36900.37000.42300.42900.47400.248100 | 20th Floor | 7d | 2026-07-06 | 2026-07-12 | 1753, 1710 |  | Sector-44 Noida(2) | 9367714 |
| 1755 | 36900.37000.42300.42900.47400.248200 | 21st Floor | 7d | 2026-07-13 | 2026-07-19 | 1754 |  | Sector-44 Noida(2) | 9367724 |
| 1756 | 36900.37000.42300.42900.47400.248300 | 22nd Floor | 7d | 2026-07-20 | 2026-07-26 | 1755 |  | Sector-44 Noida(2) | 9367734 |
| 1757 | 36900.37000.42300.42900.47400.248400 | 23rd Floor | 7d | 2026-07-27 | 2026-08-02 | 1756 |  | Sector-44 Noida(2) | 9367744 |
| 1758 | 36900.37000.42300.42900.47400.248500 | Terrace Floor | 7d | 2026-08-03 | 2026-08-09 | 1757 |  | Sector-44 Noida(2) | 9367754 |
| 1759 | 36900.37000.42300.42900.47400.248600 | LMR, OHT & Roof Feauters | 10d | 2026-08-10 | 2026-08-19 | 1758 |  | Sector-44 Noida(2) | 9367764 |

| ID | WBS | Task | Duration | Start | Finish | Predecessors | Constraint | Calendar | Unique_Task_ID |
| --- | --- | --- | --- | --- | --- | --- | --- | --- | --- |
| 1760 | 36900.37000.42300.42900.43200 | **Finishing works** | 369d | 2026-01-20 | 2027-03-09 |  | start no earlier than 2026-01-20 | Sector-44 Noida(2) | 9360764 |
| 1761 | 36900.37000.42300.42900.43200.44500 | **Flat finishings** | 343d | 2026-01-20 | 2027-02-11 |  | start no earlier than 2026-01-20 | Sector-44 Noida(2) | 9360804 |
| 1762 | 36900.37000.42300.42900.43200.44500.53100 | **1st Floor** | 77d | 2026-01-20 | 2026-04-06 |  | start no earlier than 2026-01-20 | Sector-44 Noida(2) | 9361704 |
| 1763 | 36900.37000.42300.42900.43200.44500.53100.689700 | Block Work | 10d | 2026-01-20 | 2026-01-29 | 1735 |  | Sector-44 Noida(2) | 9384594 |
| 1764 | 36900.37000.42300.42900.43200.44500.53100.689800 | Installation of temporary Main door | 7d | 2026-01-30 | 2026-02-05 | 1763 |  | Sector-44 Noida(2) | 9384604 |
| 1765 | 36900.37000.42300.42900.43200.44500.53100.689900 | Fire sprinkler pipe fixing | 3d | 2026-01-30 | 2026-02-01 | 1763 |  | Sector-44 Noida(2) | 9384614 |
| 1766 | 36900.37000.42300.42900.43200.44500.53100.690000 | Internal Plumbing Works | 7d | 2026-01-30 | 2026-02-05 | 1763 |  | Sector-44 Noida(2) | 9384624 |
| 1767 | 36900.37000.42300.42900.43200.44500.53100.690100 | Waterproofing | 12d | 2026-02-06 | 2026-02-17 | 1766 |  | Sector-44 Noida(2) | 9384634 |
| 1768 | 36900.37000.42300.42900.43200.44500.53100.690200 | Internal Plaster | 8d | 2026-01-25 | 2026-02-01 | 1763SS+5d |  | Sector-44 Noida(2) | 9384644 |
| 1769 | 36900.37000.42300.42900.43200.44500.53100.690300 | IPS flooring work | 11d | 2026-01-30 | 2026-02-09 | 1763 |  | Sector-44 Noida(2) | 9384654 |
| 1770 | 36900.37000.42300.42900.43200.44500.53100.690400 | Toilet dado work | 16d | 2026-02-18 | 2026-03-05 | 1766, 1767, 1768 |  | Sector-44 Noida(2) | 9384664 |
| 1771 | 36900.37000.42300.42900.43200.44500.53100.690500 | Toilet flooring work | 16d | 2026-03-06 | 2026-03-21 | 1770 |  | Sector-44 Noida(2) | 9384674 |
| 1772 | 36900.37000.42300.42900.43200.44500.53100.690600 | Living dinning flooring | 16d | 2026-03-22 | 2026-04-06 | 1769, 1771 |  | Sector-44 Noida(2) | 9384684 |
| 1773 | 36900.37000.42300.42900.43200.44500.53100.690700 | Electrical wiring work | 10d | 2026-03-28 | 2026-04-06 | 1772FS-10d |  | Sector-44 Noida(2) | 9384694 |
| 1774 | 36900.37000.42300.42900.43200.44500.53100.690800 | Aluminium door-window fixing | 7d | 2026-01-22 | 2026-01-28 | 1763FS-8d |  | Sector-44 Noida(2) | 9384704 |
| 1775 | 36900.37000.42300.42900.43200.44500.53100.690900 | Putty primer coat | 8d | 2026-01-21 | 2026-01-28 | 1774FS-8d |  | Sector-44 Noida(2) | 9384714 |
| 1776 | 36900.37000.42300.42900.43200.44500.53100.691000 | Prehung door fixing | 7d | 2026-01-24 | 2026-01-30 | 1775FS-5d |  | Sector-44 Noida(2) | 9384724 |
| 1777 | 36900.37000.42300.42900.43200.44500.53100.691100 | Painting 1st coat | 10d | 2026-01-31 | 2026-02-09 | 1776 |  | Sector-44 Noida(2) | 9384734 |
| 1778 | 36900.37000.42300.42900.43200.44500.53100.691200 | False Ceiling panel fixing | 8d | 2026-02-10 | 2026-02-17 | 1777 |  | Sector-44 Noida(2) | 9384744 |
| 1779 | 36900.37000.42300.42900.43200.44500.53200 | **2nd Floor** | 121d | 2026-01-29 | 2026-05-29 |  | start no earlier than 2026-01-29 | Sector-44 Noida(2) | 9361694 |
| 1780 | 36900.37000.42300.42900.43200.44500.53200.691300 | Block Work | 10d | 2026-01-29 | 2026-02-07 | 1736 |  | Sector-44 Noida(2) | 9384754 |
| 1781 | 36900.37000.42300.42900.43200.44500.53200.691400 | Installation of temporary Main door | 7d | 2026-02-08 | 2026-02-14 | 1780 |  | Sector-44 Noida(2) | 9384764 |
| 1782 | 36900.37000.42300.42900.43200.44500.53200.691500 | Fire sprinkler pipe fixing | 3d | 2026-02-08 | 2026-02-10 | 1765, 1780 |  | Sector-44 Noida(2) | 9384774 |
| 1783 | 36900.37000.42300.42900.43200.44500.53200.691600 | Internal Plumbing Works | 7d | 2026-02-08 | 2026-02-14 | 1780 |  | Sector-44 Noida(2) | 9384784 |
| 1784 | 36900.37000.42300.42900.43200.44500.53200.691700 | Waterproofing | 12d | 2026-02-15 | 2026-02-26 | 1783 |  | Sector-44 Noida(2) | 9384794 |
| 1785 | 36900.37000.42300.42900.43200.44500.53200.691800 | Internal Plaster | 15d | 2026-02-27 | 2026-03-13 | 1783, 1784 |  | Sector-44 Noida(2) | 9384804 |
| 1786 | 36900.37000.42300.42900.43200.44500.53200.691900 | IPS flooring work | 11d | 2026-02-08 | 2026-02-18 | 1780 |  | Sector-44 Noida(2) | 9384814 |
| 1787 | 36900.37000.42300.42900.43200.44500.53200.692000 | Toilet dado work | 16d | 2026-03-14 | 2026-03-29 | 1783, 1784, 1785 |  | Sector-44 Noida(2) | 9384824 |
| 1788 | 36900.37000.42300.42900.43200.44500.53200.692100 | Toilet flooring work | 16d | 2026-03-30 | 2026-04-14 | 1787 |  | Sector-44 Noida(2) | 9384834 |
| 1789 | 36900.37000.42300.42900.43200.44500.53200.692200 | Living dinning flooring | 16d | 2026-04-15 | 2026-04-30 | 1786, 1788 |  | Sector-44 Noida(2) | 9384844 |
| 1790 | 36900.37000.42300.42900.43200.44500.53200.692300 | Electrical wiring work | 10d | 2026-04-21 | 2026-04-30 | 1789FS-10d |  | Sector-44 Noida(2) | 9384854 |
| 1791 | 36900.37000.42300.42900.43200.44500.53200.692400 | Aluminium door-window fixing | 17d | 2026-04-23 | 2026-05-09 | 1781, 1790FS-8d |  | Sector-44 Noida(2) | 9384864 |
| 1792 | 36900.37000.42300.42900.43200.44500.53200.692500 | Putty primer coat | 8d | 2026-05-02 | 2026-05-09 | 1791FS-8d |  | Sector-44 Noida(2) | 9384874 |
| 1793 | 36900.37000.42300.42900.43200.44500.53200.692600 | Prehung door fixing | 7d | 2026-05-05 | 2026-05-11 | 1792FS-5d |  | Sector-44 Noida(2) | 9384884 |
| 1794 | 36900.37000.42300.42900.43200.44500.53200.692700 | Painting 1st coat | 10d | 2026-05-12 | 2026-05-21 | 1793 |  | Sector-44 Noida(2) | 9384894 |
| 1795 | 36900.37000.42300.42900.43200.44500.53200.692800 | False Ceiling panel fixing | 8d | 2026-05-22 | 2026-05-29 | 1778, 1794 |  | Sector-44 Noida(2) | 9384904 |

| ID | WBS | Task | Duration | Start | Finish | Predecessors | Constraint | Calendar | Unique_Task_ID |
| --- | --- | --- | --- | --- | --- | --- | --- | --- | --- |
| 1796 | 36900.37000.42300.42900.43200.44500.53300 | **3rd Floor** | 121d | 2026-02-07 | 2026-06-07 |  | start no earlier than 2026-02-07 | Sector-44 Noida(2) | 9361674 |
| 1797 | 36900.37000.42300.42900.43200.44500.53300.692900 | Block Work | 10d | 2026-02-07 | 2026-02-16 | 1737 |  | Sector-44 Noida(2) | 9384914 |
| 1798 | 36900.37000.42300.42900.43200.44500.53300.693000 | Installation of temporary Main door | 7d | 2026-02-17 | 2026-02-23 | 1797 |  | Sector-44 Noida(2) | 9384924 |
| 1799 | 36900.37000.42300.42900.43200.44500.53300.693100 | Fire sprinkler pipe fixing | 3d | 2026-02-17 | 2026-02-19 | 1782, 1797 |  | Sector-44 Noida(2) | 9384934 |
| 1800 | 36900.37000.42300.42900.43200.44500.53300.693200 | Internal Plumbing Works | 7d | 2026-02-17 | 2026-02-23 | 1797 |  | Sector-44 Noida(2) | 9384944 |
| 1801 | 36900.37000.42300.42900.43200.44500.53300.693300 | Waterproofing | 12d | 2026-02-24 | 2026-03-07 | 1800 |  | Sector-44 Noida(2) | 9384954 |
| 1802 | 36900.37000.42300.42900.43200.44500.53300.693400 | Internal Plaster | 15d | 2026-03-08 | 2026-03-22 | 1800, 1801 |  | Sector-44 Noida(2) | 9384964 |
| 1803 | 36900.37000.42300.42900.43200.44500.53300.693500 | IPS flooring work | 11d | 2026-02-17 | 2026-02-27 | 1797 |  | Sector-44 Noida(2) | 9384974 |
| 1804 | 36900.37000.42300.42900.43200.44500.53300.693600 | Toilet dado work | 16d | 2026-03-23 | 2026-04-07 | 1800, 1801, 1802 |  | Sector-44 Noida(2) | 9384984 |
| 1805 | 36900.37000.42300.42900.43200.44500.53300.693700 | Toilet flooring work | 16d | 2026-04-08 | 2026-04-23 | 1804 |  | Sector-44 Noida(2) | 9384994 |
| 1806 | 36900.37000.42300.42900.43200.44500.53300.693800 | Living dinning flooring | 16d | 2026-04-24 | 2026-05-09 | 1803, 1805 |  | Sector-44 Noida(2) | 9385004 |
| 1807 | 36900.37000.42300.42900.43200.44500.53300.693900 | Electrical wiring work | 10d | 2026-04-30 | 2026-05-09 | 1806FS-10d |  | Sector-44 Noida(2) | 9385014 |
| 1808 | 36900.37000.42300.42900.43200.44500.53300.694000 | Aluminium door-window fixing | 17d | 2026-05-02 | 2026-05-18 | 1798, 1807FS-8d |  | Sector-44 Noida(2) | 9385024 |
| 1809 | 36900.37000.42300.42900.43200.44500.53300.694100 | Putty primer coat | 8d | 2026-05-11 | 2026-05-18 | 1808FS-8d |  | Sector-44 Noida(2) | 9385034 |
| 1810 | 36900.37000.42300.42900.43200.44500.53300.694200 | Prehung door fixing | 7d | 2026-05-14 | 2026-05-20 | 1809FS-5d |  | Sector-44 Noida(2) | 9385044 |
| 1811 | 36900.37000.42300.42900.43200.44500.53300.694300 | Painting 1st coat | 10d | 2026-05-21 | 2026-05-30 | 1810 |  | Sector-44 Noida(2) | 9385054 |
| 1812 | 36900.37000.42300.42900.43200.44500.53300.694400 | False Ceiling panel fixing | 8d | 2026-05-31 | 2026-06-07 | 1795, 1811 |  | Sector-44 Noida(2) | 9385064 |
| 1813 | 36900.37000.42300.42900.43200.44500.53400 | **4th Floor** | 121d | 2026-02-25 | 2026-06-25 |  | start no earlier than 2026-02-25 | Sector-44 Noida(2) | 9361664 |
| 1814 | 36900.37000.42300.42900.43200.44500.53400.694500 | Block Work | 10d | 2026-02-25 | 2026-03-06 | 1738 |  | Sector-44 Noida(2) | 9385074 |
| 1815 | 36900.37000.42300.42900.43200.44500.53400.694600 | Installation of temporary Main door | 7d | 2026-03-07 | 2026-03-13 | 1814 |  | Sector-44 Noida(2) | 9385084 |
| 1816 | 36900.37000.42300.42900.43200.44500.53400.694700 | Fire sprinkler pipe fixing | 3d | 2026-03-07 | 2026-03-09 | 1799, 1814 |  | Sector-44 Noida(2) | 9385094 |
| 1817 | 36900.37000.42300.42900.43200.44500.53400.694800 | Internal Plumbing Works | 7d | 2026-03-07 | 2026-03-13 | 1814 |  | Sector-44 Noida(2) | 9385104 |
| 1818 | 36900.37000.42300.42900.43200.44500.53400.694900 | Waterproofing | 12d | 2026-03-14 | 2026-03-25 | 1817 |  | Sector-44 Noida(2) | 9385114 |
| 1819 | 36900.37000.42300.42900.43200.44500.53400.695000 | Internal Plaster | 15d | 2026-03-26 | 2026-04-09 | 1817, 1818 |  | Sector-44 Noida(2) | 9385124 |
| 1820 | 36900.37000.42300.42900.43200.44500.53400.695100 | IPS flooring work | 11d | 2026-03-07 | 2026-03-17 | 1814 |  | Sector-44 Noida(2) | 9385134 |
| 1821 | 36900.37000.42300.42900.43200.44500.53400.695200 | Toilet dado work | 16d | 2026-04-10 | 2026-04-25 | 1817, 1818, 1819 |  | Sector-44 Noida(2) | 9385144 |
| 1822 | 36900.37000.42300.42900.43200.44500.53400.695300 | Toilet flooring work | 16d | 2026-04-26 | 2026-05-11 | 1821 |  | Sector-44 Noida(2) | 9385154 |
| 1823 | 36900.37000.42300.42900.43200.44500.53400.695400 | Living dinning flooring | 16d | 2026-05-12 | 2026-05-27 | 1820, 1822 |  | Sector-44 Noida(2) | 9385164 |
| 1824 | 36900.37000.42300.42900.43200.44500.53400.695500 | Electrical wiring work | 10d | 2026-05-18 | 2026-05-27 | 1823FS-10d |  | Sector-44 Noida(2) | 9385174 |
| 1825 | 36900.37000.42300.42900.43200.44500.53400.695600 | Aluminium door-window fixing | 17d | 2026-05-20 | 2026-06-05 | 1815, 1824FS-8d |  | Sector-44 Noida(2) | 9385184 |
| 1826 | 36900.37000.42300.42900.43200.44500.53400.695700 | Putty primer coat | 8d | 2026-05-29 | 2026-06-05 | 1825FS-8d |  | Sector-44 Noida(2) | 9385194 |
| 1827 | 36900.37000.42300.42900.43200.44500.53400.695800 | Prehung door fixing | 7d | 2026-06-01 | 2026-06-07 | 1826FS-5d |  | Sector-44 Noida(2) | 9385204 |
| 1828 | 36900.37000.42300.42900.43200.44500.53400.695900 | Painting 1st coat | 10d | 2026-06-08 | 2026-06-17 | 1827 |  | Sector-44 Noida(2) | 9385214 |
| 1829 | 36900.37000.42300.42900.43200.44500.53400.696000 | False Ceiling panel fixing | 8d | 2026-06-18 | 2026-06-25 | 1812, 1828 |  | Sector-44 Noida(2) | 9385224 |

| ID | WBS | Task | Duration | Start | Finish | Predecessors | Constraint | Calendar | Unique_Task_ID |
| --- | --- | --- | --- | --- | --- | --- | --- | --- | --- |
| 1830 | 36900.37000.42300.42900.43200.44500.53500 | **5th Floor** | 121d | 2026-03-06 | 2026-07-04 |  | start no earlier than 2026-03-06 | Sector-44 Noida(2) | 9361644 |
| 1831 | 36900.37000.42300.42900.43200.44500.53500.696100 | Block Work | 10d | 2026-03-06 | 2026-03-15 | 1739 |  | Sector-44 Noida(2) | 9385234 |
| 1832 | 36900.37000.42300.42900.43200.44500.53500.696200 | Installation of temporary Main door | 7d | 2026-03-16 | 2026-03-22 | 1831 |  | Sector-44 Noida(2) | 9385244 |
| 1833 | 36900.37000.42300.42900.43200.44500.53500.696300 | Fire sprinkler pipe fixing | 3d | 2026-03-16 | 2026-03-18 | 1816, 1831 |  | Sector-44 Noida(2) | 9385254 |
| 1834 | 36900.37000.42300.42900.43200.44500.53500.696400 | Internal Plumbing Works | 7d | 2026-03-16 | 2026-03-22 | 1831 |  | Sector-44 Noida(2) | 9385264 |
| 1835 | 36900.37000.42300.42900.43200.44500.53500.696500 | Waterproofing | 12d | 2026-03-23 | 2026-04-03 | 1834 |  | Sector-44 Noida(2) | 9385274 |
| 1836 | 36900.37000.42300.42900.43200.44500.53500.696600 | Internal Plaster | 15d | 2026-04-04 | 2026-04-18 | 1834, 1835 |  | Sector-44 Noida(2) | 9385284 |
| 1837 | 36900.37000.42300.42900.43200.44500.53500.696700 | IPS flooring work | 11d | 2026-03-16 | 2026-03-26 | 1831 |  | Sector-44 Noida(2) | 9385294 |
| 1838 | 36900.37000.42300.42900.43200.44500.53500.696800 | Toilet dado work | 16d | 2026-04-19 | 2026-05-04 | 1834, 1835, 1836 |  | Sector-44 Noida(2) | 9385304 |
| 1839 | 36900.37000.42300.42900.43200.44500.53500.696900 | Toilet flooring work | 16d | 2026-05-05 | 2026-05-20 | 1838 |  | Sector-44 Noida(2) | 9385314 |
| 1840 | 36900.37000.42300.42900.43200.44500.53500.697000 | Living dinning flooring | 16d | 2026-05-21 | 2026-06-05 | 1837, 1839 |  | Sector-44 Noida(2) | 9385324 |
| 1841 | 36900.37000.42300.42900.43200.44500.53500.697100 | Electrical wiring work | 10d | 2026-05-27 | 2026-06-05 | 1840FS-10d |  | Sector-44 Noida(2) | 9385334 |
| 1842 | 36900.37000.42300.42900.43200.44500.53500.697200 | Aluminium door-window fixing | 17d | 2026-05-29 | 2026-06-14 | 1832, 1841FS-8d |  | Sector-44 Noida(2) | 9385344 |
| 1843 | 36900.37000.42300.42900.43200.44500.53500.697300 | Putty primer coat | 8d | 2026-06-07 | 2026-06-14 | 1842FS-8d |  | Sector-44 Noida(2) | 9385354 |
| 1844 | 36900.37000.42300.42900.43200.44500.53500.697400 | Prehung door fixing | 7d | 2026-06-10 | 2026-06-16 | 1843FS-5d |  | Sector-44 Noida(2) | 9385364 |
| 1845 | 36900.37000.42300.42900.43200.44500.53500.697500 | Painting 1st coat | 10d | 2026-06-17 | 2026-06-26 | 1844 |  | Sector-44 Noida(2) | 9385374 |
| 1846 | 36900.37000.42300.42900.43200.44500.53500.697600 | False Ceiling panel fixing | 8d | 2026-06-27 | 2026-07-04 | 1829, 1845 |  | Sector-44 Noida(2) | 9385384 |
| 1847 | 36900.37000.42300.42900.43200.44500.53600 | **6th Floor** | 121d | 2026-03-15 | 2026-07-13 |  | start no earlier than 2026-03-15 | Sector-44 Noida(2) | 9361614 |
| 1848 | 36900.37000.42300.42900.43200.44500.53600.697700 | Block Work | 10d | 2026-03-15 | 2026-03-24 | 1740 |  | Sector-44 Noida(2) | 9385394 |
| 1849 | 36900.37000.42300.42900.43200.44500.53600.697800 | Installation of temporary Main door | 7d | 2026-03-25 | 2026-03-31 | 1848 |  | Sector-44 Noida(2) | 9385404 |
| 1850 | 36900.37000.42300.42900.43200.44500.53600.697900 | Fire sprinkler pipe fixing | 3d | 2026-03-25 | 2026-03-27 | 1833, 1848 |  | Sector-44 Noida(2) | 9385414 |
| 1851 | 36900.37000.42300.42900.43200.44500.53600.698000 | Internal Plumbing Works | 7d | 2026-03-25 | 2026-03-31 | 1848 |  | Sector-44 Noida(2) | 9385424 |
| 1852 | 36900.37000.42300.42900.43200.44500.53600.698100 | Waterproofing | 12d | 2026-04-01 | 2026-04-12 | 1851 |  | Sector-44 Noida(2) | 9385434 |
| 1853 | 36900.37000.42300.42900.43200.44500.53600.698200 | Internal Plaster | 15d | 2026-04-13 | 2026-04-27 | 1851, 1852 |  | Sector-44 Noida(2) | 9385444 |
| 1854 | 36900.37000.42300.42900.43200.44500.53600.698300 | IPS flooring work | 11d | 2026-03-25 | 2026-04-04 | 1848 |  | Sector-44 Noida(2) | 9385454 |
| 1855 | 36900.37000.42300.42900.43200.44500.53600.698400 | Toilet dado work | 16d | 2026-04-28 | 2026-05-13 | 1851, 1852, 1853 |  | Sector-44 Noida(2) | 9385464 |
| 1856 | 36900.37000.42300.42900.43200.44500.53600.698500 | Toilet flooring work | 16d | 2026-05-14 | 2026-05-29 | 1855 |  | Sector-44 Noida(2) | 9385474 |
| 1857 | 36900.37000.42300.42900.43200.44500.53600.698600 | Living dinning flooring | 16d | 2026-05-30 | 2026-06-14 | 1854, 1856 |  | Sector-44 Noida(2) | 9385484 |
| 1858 | 36900.37000.42300.42900.43200.44500.53600.698700 | Electrical wiring work | 10d | 2026-06-05 | 2026-06-14 | 1857FS-10d |  | Sector-44 Noida(2) | 9385494 |
| 1859 | 36900.37000.42300.42900.43200.44500.53600.698800 | Aluminium door-window fixing | 17d | 2026-06-07 | 2026-06-23 | 1849, 1858FS-8d |  | Sector-44 Noida(2) | 9385504 |
| 1860 | 36900.37000.42300.42900.43200.44500.53600.698900 | Putty primer coat | 8d | 2026-06-16 | 2026-06-23 | 1859FS-8d |  | Sector-44 Noida(2) | 9385514 |
| 1861 | 36900.37000.42300.42900.43200.44500.53600.699000 | Prehung door fixing | 7d | 2026-06-19 | 2026-06-25 | 1860FS-5d |  | Sector-44 Noida(2) | 9385524 |
| 1862 | 36900.37000.42300.42900.43200.44500.53600.699100 | Painting 1st coat | 10d | 2026-06-26 | 2026-07-05 | 1861 |  | Sector-44 Noida(2) | 9385534 |
| 1863 | 36900.37000.42300.42900.43200.44500.53600.699200 | False Ceiling panel fixing | 8d | 2026-07-06 | 2026-07-13 | 1846, 1862 |  | Sector-44 Noida(2) | 9385544 |

| ID | WBS | Task | Duration | Start | Finish | Predecessors | Constraint | Calendar | Unique_Task_ID |
| --- | --- | --- | --- | --- | --- | --- | --- | --- | --- |
| 1864 | 36900.37000.42300.42900.43200.44500.53700 | **7th Floor** | 121d | 2026-03-23 | 2026-07-21 |  | start no earlier than 2026-03-23 | Sector-44 Noida(2) | 9361604 |
| 1865 | 36900.37000.42300.42900.43200.44500.53700.699300 | Block Work | 10d | 2026-03-23 | 2026-04-01 | 1741 |  | Sector-44 Noida(2) | 9385554 |
| 1866 | 36900.37000.42300.42900.43200.44500.53700.699400 | Installation of temporary Main door | 7d | 2026-04-02 | 2026-04-08 | 1865 |  | Sector-44 Noida(2) | 9385564 |
| 1867 | 36900.37000.42300.42900.43200.44500.53700.699500 | Fire sprinkler pipe fixing | 3d | 2026-04-02 | 2026-04-04 | 1850, 1865 |  | Sector-44 Noida(2) | 9385574 |
| 1868 | 36900.37000.42300.42900.43200.44500.53700.699600 | Internal Plumbing Works | 7d | 2026-04-02 | 2026-04-08 | 1865 |  | Sector-44 Noida(2) | 9385584 |
| 1869 | 36900.37000.42300.42900.43200.44500.53700.699700 | Waterproofing | 12d | 2026-04-09 | 2026-04-20 | 1868 |  | Sector-44 Noida(2) | 9385594 |
| 1870 | 36900.37000.42300.42900.43200.44500.53700.699800 | Internal Plaster | 15d | 2026-04-21 | 2026-05-05 | 1868, 1869 |  | Sector-44 Noida(2) | 9385604 |
| 1871 | 36900.37000.42300.42900.43200.44500.53700.699900 | IPS flooring work | 11d | 2026-04-02 | 2026-04-12 | 1865 |  | Sector-44 Noida(2) | 9385614 |
| 1872 | 36900.37000.42300.42900.43200.44500.53700.700000 | Toilet dado work | 16d | 2026-05-06 | 2026-05-21 | 1868, 1869, 1870 |  | Sector-44 Noida(2) | 9385624 |
| 1873 | 36900.37000.42300.42900.43200.44500.53700.700100 | Toilet flooring work | 16d | 2026-05-22 | 2026-06-06 | 1872 |  | Sector-44 Noida(2) | 9385634 |
| 1874 | 36900.37000.42300.42900.43200.44500.53700.700200 | Living dinning flooring | 16d | 2026-06-07 | 2026-06-22 | 1871, 1873 |  | Sector-44 Noida(2) | 9385644 |
| 1875 | 36900.37000.42300.42900.43200.44500.53700.700300 | Electrical wiring work | 10d | 2026-06-13 | 2026-06-22 | 1874FS-10d |  | Sector-44 Noida(2) | 9385654 |
| 1876 | 36900.37000.42300.42900.43200.44500.53700.700400 | Aluminium door-window fixing | 17d | 2026-06-15 | 2026-07-01 | 1866, 1875FS-8d |  | Sector-44 Noida(2) | 9385664 |
| 1877 | 36900.37000.42300.42900.43200.44500.53700.700500 | Putty primer coat | 8d | 2026-06-24 | 2026-07-01 | 1876FS-8d |  | Sector-44 Noida(2) | 9385674 |
| 1878 | 36900.37000.42300.42900.43200.44500.53700.700600 | Prehung door fixing | 7d | 2026-06-27 | 2026-07-03 | 1877FS-5d |  | Sector-44 Noida(2) | 9385684 |
| 1879 | 36900.37000.42300.42900.43200.44500.53700.700700 | Painting 1st coat | 10d | 2026-07-04 | 2026-07-13 | 1878 |  | Sector-44 Noida(2) | 9385694 |
| 1880 | 36900.37000.42300.42900.43200.44500.53700.700800 | False Ceiling panel fixing | 8d | 2026-07-14 | 2026-07-21 | 1863, 1879 |  | Sector-44 Noida(2) | 9385704 |
| 1881 | 36900.37000.42300.42900.43200.44500.53800 | **8th Floor** | 121d | 2026-04-02 | 2026-07-31 |  | start no earlier than 2026-04-02 | Sector-44 Noida(2) | 9361594 |
| 1882 | 36900.37000.42300.42900.43200.44500.53800.700900 | Block Work | 10d | 2026-04-02 | 2026-04-11 | 1742 |  | Sector-44 Noida(2) | 9385714 |
| 1883 | 36900.37000.42300.42900.43200.44500.53800.701000 | Installation of temporary Main door | 7d | 2026-04-12 | 2026-04-18 | 1882 |  | Sector-44 Noida(2) | 9385724 |
| 1884 | 36900.37000.42300.42900.43200.44500.53800.701100 | Fire sprinkler pipe fixing | 3d | 2026-04-12 | 2026-04-14 | 1867, 1882 |  | Sector-44 Noida(2) | 9385734 |
| 1885 | 36900.37000.42300.42900.43200.44500.53800.701200 | Internal Plumbing Works | 7d | 2026-04-12 | 2026-04-18 | 1882 |  | Sector-44 Noida(2) | 9385744 |
| 1886 | 36900.37000.42300.42900.43200.44500.53800.701300 | Waterproofing | 12d | 2026-04-19 | 2026-04-30 | 1885 |  | Sector-44 Noida(2) | 9385754 |
| 1887 | 36900.37000.42300.42900.43200.44500.53800.701400 | Internal Plaster | 15d | 2026-05-01 | 2026-05-15 | 1885, 1886 |  | Sector-44 Noida(2) | 9385764 |
| 1888 | 36900.37000.42300.42900.43200.44500.53800.701500 | IPS flooring work | 11d | 2026-04-12 | 2026-04-22 | 1882 |  | Sector-44 Noida(2) | 9385774 |
| 1889 | 36900.37000.42300.42900.43200.44500.53800.701600 | Toilet dado work | 16d | 2026-05-16 | 2026-05-31 | 1885, 1886, 1887 |  | Sector-44 Noida(2) | 9385784 |
| 1890 | 36900.37000.42300.42900.43200.44500.53800.701700 | Toilet flooring work | 16d | 2026-06-01 | 2026-06-16 | 1889 |  | Sector-44 Noida(2) | 9385794 |
| 1891 | 36900.37000.42300.42900.43200.44500.53800.701800 | Living dinning flooring | 16d | 2026-06-17 | 2026-07-02 | 1888, 1890 |  | Sector-44 Noida(2) | 9385804 |
| 1892 | 36900.37000.42300.42900.43200.44500.53800.701900 | Electrical wiring work | 10d | 2026-06-23 | 2026-07-02 | 1891FS-10d |  | Sector-44 Noida(2) | 9385814 |
| 1893 | 36900.37000.42300.42900.43200.44500.53800.702000 | Aluminium door-window fixing | 17d | 2026-06-25 | 2026-07-11 | 1883, 1892FS-8d |  | Sector-44 Noida(2) | 9385824 |
| 1894 | 36900.37000.42300.42900.43200.44500.53800.702100 | Putty primer coat | 8d | 2026-07-04 | 2026-07-11 | 1893FS-8d |  | Sector-44 Noida(2) | 9385834 |
| 1895 | 36900.37000.42300.42900.43200.44500.53800.702200 | Prehung door fixing | 7d | 2026-07-07 | 2026-07-13 | 1894FS-5d |  | Sector-44 Noida(2) | 9385844 |
| 1896 | 36900.37000.42300.42900.43200.44500.53800.702300 | Painting 1st coat | 10d | 2026-07-14 | 2026-07-23 | 1895 |  | Sector-44 Noida(2) | 9385854 |
| 1897 | 36900.37000.42300.42900.43200.44500.53800.702400 | False Ceiling panel fixing | 8d | 2026-07-24 | 2026-07-31 | 1880, 1896 |  | Sector-44 Noida(2) | 9385864 |

| ID | WBS | Task | Duration | Start | Finish | Predecessors | Constraint | Calendar | Unique_Task_ID |
| --- | --- | --- | --- | --- | --- | --- | --- | --- | --- |
| 1898 | 36900.37000.42300.42900.43200.44500.53900 | **9th Floor** | 121d | 2026-04-11 | 2026-08-09 |  | start no earlier than 2026-04-11 | Sector-44 Noida(2) | 9361584 |
| 1899 | 36900.37000.42300.42900.43200.44500.53900.702500 | Block Work | 10d | 2026-04-11 | 2026-04-20 | 1743 |  | Sector-44 Noida(2) | 9385874 |
| 1900 | 36900.37000.42300.42900.43200.44500.53900.702600 | Installation of temporary Main door | 7d | 2026-04-21 | 2026-04-27 | 1899 |  | Sector-44 Noida(2) | 9385884 |
| 1901 | 36900.37000.42300.42900.43200.44500.53900.702700 | Fire sprinkler pipe fixing | 3d | 2026-04-21 | 2026-04-23 | 1884, 1899 |  | Sector-44 Noida(2) | 9385894 |
| 1902 | 36900.37000.42300.42900.43200.44500.53900.702800 | Internal Plumbing Works | 7d | 2026-04-21 | 2026-04-27 | 1899 |  | Sector-44 Noida(2) | 9385904 |
| 1903 | 36900.37000.42300.42900.43200.44500.53900.702900 | Waterproofing | 12d | 2026-04-28 | 2026-05-09 | 1902 |  | Sector-44 Noida(2) | 9385914 |
| 1904 | 36900.37000.42300.42900.43200.44500.53900.703000 | Internal Plaster | 15d | 2026-05-10 | 2026-05-24 | 1902, 1903 |  | Sector-44 Noida(2) | 9385924 |
| 1905 | 36900.37000.42300.42900.43200.44500.53900.703100 | IPS flooring work | 11d | 2026-04-21 | 2026-05-01 | 1899 |  | Sector-44 Noida(2) | 9385934 |
| 1906 | 36900.37000.42300.42900.43200.44500.53900.703200 | Toilet dado work | 16d | 2026-05-25 | 2026-06-09 | 1902, 1903, 1904 |  | Sector-44 Noida(2) | 9385944 |
| 1907 | 36900.37000.42300.42900.43200.44500.53900.703300 | Toilet flooring work | 16d | 2026-06-10 | 2026-06-25 | 1906 |  | Sector-44 Noida(2) | 9385954 |
| 1908 | 36900.37000.42300.42900.43200.44500.53900.703400 | Living dinning flooring | 16d | 2026-06-26 | 2026-07-11 | 1905, 1907 |  | Sector-44 Noida(2) | 9385964 |
| 1909 | 36900.37000.42300.42900.43200.44500.53900.703500 | Electrical wiring work | 10d | 2026-07-02 | 2026-07-11 | 1908FS-10d |  | Sector-44 Noida(2) | 9385974 |
| 1910 | 36900.37000.42300.42900.43200.44500.53900.703600 | Aluminium door-window fixing | 17d | 2026-07-04 | 2026-07-20 | 1900, 1909FS-8d |  | Sector-44 Noida(2) | 9385984 |
| 1911 | 36900.37000.42300.42900.43200.44500.53900.703700 | Putty primer coat | 8d | 2026-07-13 | 2026-07-20 | 1910FS-8d |  | Sector-44 Noida(2) | 9385994 |
| 1912 | 36900.37000.42300.42900.43200.44500.53900.703800 | Prehung door fixing | 7d | 2026-07-16 | 2026-07-22 | 1911FS-5d |  | Sector-44 Noida(2) | 9386004 |
| 1913 | 36900.37000.42300.42900.43200.44500.53900.703900 | Painting 1st coat | 10d | 2026-07-23 | 2026-08-01 | 1912 |  | Sector-44 Noida(2) | 9386014 |
| 1914 | 36900.37000.42300.42900.43200.44500.53900.704000 | False Ceiling panel fixing | 8d | 2026-08-02 | 2026-08-09 | 1897, 1913 |  | Sector-44 Noida(2) | 9386024 |
| 1915 | 36900.37000.42300.42900.43200.44500.54000 | **10th Floor** | 121d | 2026-04-20 | 2026-08-18 |  | start no earlier than 2026-04-20 | Sector-44 Noida(2) | 9361564 |
| 1916 | 36900.37000.42300.42900.43200.44500.54000.704100 | Block Work | 10d | 2026-04-20 | 2026-04-29 | 1744 |  | Sector-44 Noida(2) | 9386034 |
| 1917 | 36900.37000.42300.42900.43200.44500.54000.704200 | Installation of temporary Main door | 7d | 2026-04-30 | 2026-05-06 | 1916 |  | Sector-44 Noida(2) | 9386044 |
| 1918 | 36900.37000.42300.42900.43200.44500.54000.704300 | Fire sprinkler pipe fixing | 3d | 2026-04-30 | 2026-05-02 | 1901, 1916 |  | Sector-44 Noida(2) | 9386054 |
| 1919 | 36900.37000.42300.42900.43200.44500.54000.704400 | Internal Plumbing Works | 7d | 2026-04-30 | 2026-05-06 | 1916 |  | Sector-44 Noida(2) | 9386064 |
| 1920 | 36900.37000.42300.42900.43200.44500.54000.704500 | Waterproofing | 12d | 2026-05-07 | 2026-05-18 | 1919 |  | Sector-44 Noida(2) | 9386074 |
| 1921 | 36900.37000.42300.42900.43200.44500.54000.704600 | Internal Plaster | 15d | 2026-05-19 | 2026-06-02 | 1919, 1920 |  | Sector-44 Noida(2) | 9386084 |
| 1922 | 36900.37000.42300.42900.43200.44500.54000.704700 | IPS flooring work | 11d | 2026-04-30 | 2026-05-10 | 1916 |  | Sector-44 Noida(2) | 9386094 |
| 1923 | 36900.37000.42300.42900.43200.44500.54000.704800 | Toilet dado work | 16d | 2026-06-03 | 2026-06-18 | 1919, 1920, 1921 |  | Sector-44 Noida(2) | 9386104 |
| 1924 | 36900.37000.42300.42900.43200.44500.54000.704900 | Toilet flooring work | 16d | 2026-06-19 | 2026-07-04 | 1923 |  | Sector-44 Noida(2) | 9386114 |
| 1925 | 36900.37000.42300.42900.43200.44500.54000.705000 | Living dinning flooring | 16d | 2026-07-05 | 2026-07-20 | 1922, 1924 |  | Sector-44 Noida(2) | 9386124 |
| 1926 | 36900.37000.42300.42900.43200.44500.54000.705100 | Electrical wiring work | 10d | 2026-07-11 | 2026-07-20 | 1925FS-10d |  | Sector-44 Noida(2) | 9386134 |
| 1927 | 36900.37000.42300.42900.43200.44500.54000.705200 | Aluminium door-window fixing | 17d | 2026-07-13 | 2026-07-29 | 1917, 1926FS-8d |  | Sector-44 Noida(2) | 9386144 |
| 1928 | 36900.37000.42300.42900.43200.44500.54000.705300 | Putty primer coat | 8d | 2026-07-22 | 2026-07-29 | 1927FS-8d |  | Sector-44 Noida(2) | 9386154 |
| 1929 | 36900.37000.42300.42900.43200.44500.54000.705400 | Prehung door fixing | 7d | 2026-07-25 | 2026-07-31 | 1928FS-5d |  | Sector-44 Noida(2) | 9386164 |
| 1930 | 36900.37000.42300.42900.43200.44500.54000.705500 | Painting 1st coat | 10d | 2026-08-01 | 2026-08-10 | 1929 |  | Sector-44 Noida(2) | 9386174 |
| 1931 | 36900.37000.42300.42900.43200.44500.54000.705600 | False Ceiling panel fixing | 8d | 2026-08-11 | 2026-08-18 | 1914, 1930 |  | Sector-44 Noida(2) | 9386184 |

| ID | WBS | Task | Duration | Start | Finish | Predecessors | Constraint | Calendar | Unique_Task_ID |
| --- | --- | --- | --- | --- | --- | --- | --- | --- | --- |
| 1932 | 36900.37000.42300.42900.43200.44500.54100 | **11th Floor** | 121d | 2026-04-29 | 2026-08-27 |  | start no earlier than 2026-04-29 | Sector-44 Noida(2) | 9361524 |
| 1933 | 36900.37000.42300.42900.43200.44500.54100.705700 | Block Work | 10d | 2026-04-29 | 2026-05-08 | 1745 |  | Sector-44 Noida(2) | 9386194 |
| 1934 | 36900.37000.42300.42900.43200.44500.54100.705800 | Installation of temporary Main door | 7d | 2026-05-09 | 2026-05-15 | 1933 |  | Sector-44 Noida(2) | 9386204 |
| 1935 | 36900.37000.42300.42900.43200.44500.54100.705900 | Fire sprinkler pipe fixing | 3d | 2026-05-09 | 2026-05-11 | 1918, 1933 |  | Sector-44 Noida(2) | 9386214 |
| 1936 | 36900.37000.42300.42900.43200.44500.54100.706000 | Internal Plumbing Works | 7d | 2026-05-09 | 2026-05-15 | 1933 |  | Sector-44 Noida(2) | 9386224 |
| 1937 | 36900.37000.42300.42900.43200.44500.54100.706100 | Waterproofing | 12d | 2026-05-16 | 2026-05-27 | 1936 |  | Sector-44 Noida(2) | 9386234 |
| 1938 | 36900.37000.42300.42900.43200.44500.54100.706200 | Internal Plaster | 15d | 2026-05-28 | 2026-06-11 | 1936, 1937 |  | Sector-44 Noida(2) | 9386244 |
| 1939 | 36900.37000.42300.42900.43200.44500.54100.706300 | IPS flooring work | 11d | 2026-05-09 | 2026-05-19 | 1933 |  | Sector-44 Noida(2) | 9386254 |
| 1940 | 36900.37000.42300.42900.43200.44500.54100.706400 | Toilet dado work | 16d | 2026-06-12 | 2026-06-27 | 1936, 1937, 1938 |  | Sector-44 Noida(2) | 9386264 |
| 1941 | 36900.37000.42300.42900.43200.44500.54100.706500 | Toilet flooring work | 16d | 2026-06-28 | 2026-07-13 | 1940 |  | Sector-44 Noida(2) | 9386274 |
| 1942 | 36900.37000.42300.42900.43200.44500.54100.706600 | Living dinning flooring | 16d | 2026-07-14 | 2026-07-29 | 1939, 1941 |  | Sector-44 Noida(2) | 9386284 |
| 1943 | 36900.37000.42300.42900.43200.44500.54100.706700 | Electrical wiring work | 10d | 2026-07-20 | 2026-07-29 | 1942FS-10d |  | Sector-44 Noida(2) | 9386294 |
| 1944 | 36900.37000.42300.42900.43200.44500.54100.706800 | Aluminium door-window fixing | 17d | 2026-07-22 | 2026-08-07 | 1934, 1943FS-8d |  | Sector-44 Noida(2) | 9386304 |
| 1945 | 36900.37000.42300.42900.43200.44500.54100.706900 | Putty primer coat | 8d | 2026-07-31 | 2026-08-07 | 1944FS-8d |  | Sector-44 Noida(2) | 9386314 |
| 1946 | 36900.37000.42300.42900.43200.44500.54100.707000 | Prehung door fixing | 7d | 2026-08-03 | 2026-08-09 | 1945FS-5d |  | Sector-44 Noida(2) | 9386324 |
| 1947 | 36900.37000.42300.42900.43200.44500.54100.707100 | Painting 1st coat | 10d | 2026-08-10 | 2026-08-19 | 1946 |  | Sector-44 Noida(2) | 9386334 |
| 1948 | 36900.37000.42300.42900.43200.44500.54100.707200 | False Ceiling panel fixing | 8d | 2026-08-20 | 2026-08-27 | 1931, 1947 |  | Sector-44 Noida(2) | 9386344 |
| 1949 | 36900.37000.42300.42900.43200.44500.54200 | **12th Floor** | 121d | 2026-05-08 | 2026-09-05 |  | start no earlier than 2026-05-08 | Sector-44 Noida(2) | 9361514 |
| 1950 | 36900.37000.42300.42900.43200.44500.54200.707300 | Block Work | 10d | 2026-05-08 | 2026-05-17 | 1746 |  | Sector-44 Noida(2) | 9386354 |
| 1951 | 36900.37000.42300.42900.43200.44500.54200.707400 | Installation of temporary Main door | 7d | 2026-05-18 | 2026-05-24 | 1950 |  | Sector-44 Noida(2) | 9386364 |
| 1952 | 36900.37000.42300.42900.43200.44500.54200.707500 | Fire sprinkler pipe fixing | 3d | 2026-05-18 | 2026-05-20 | 1935, 1950 |  | Sector-44 Noida(2) | 9386374 |
| 1953 | 36900.37000.42300.42900.43200.44500.54200.707600 | Internal Plumbing Works | 7d | 2026-05-18 | 2026-05-24 | 1950 |  | Sector-44 Noida(2) | 9386384 |
| 1954 | 36900.37000.42300.42900.43200.44500.54200.707700 | Waterproofing | 12d | 2026-05-25 | 2026-06-05 | 1953 |  | Sector-44 Noida(2) | 9386394 |
| 1955 | 36900.37000.42300.42900.43200.44500.54200.707800 | Internal Plaster | 15d | 2026-06-06 | 2026-06-20 | 1953, 1954 |  | Sector-44 Noida(2) | 9386404 |
| 1956 | 36900.37000.42300.42900.43200.44500.54200.707900 | IPS flooring work | 11d | 2026-05-18 | 2026-05-28 | 1950 |  | Sector-44 Noida(2) | 9386414 |
| 1957 | 36900.37000.42300.42900.43200.44500.54200.708000 | Toilet dado work | 16d | 2026-06-21 | 2026-07-06 | 1953, 1954, 1955 |  | Sector-44 Noida(2) | 9386424 |
| 1958 | 36900.37000.42300.42900.43200.44500.54200.708100 | Toilet flooring work | 16d | 2026-07-07 | 2026-07-22 | 1957 |  | Sector-44 Noida(2) | 9386434 |
| 1959 | 36900.37000.42300.42900.43200.44500.54200.708200 | Living dinning flooring | 16d | 2026-07-23 | 2026-08-07 | 1956, 1958 |  | Sector-44 Noida(2) | 9386444 |
| 1960 | 36900.37000.42300.42900.43200.44500.54200.708300 | Electrical wiring work | 10d | 2026-07-29 | 2026-08-07 | 1959FS-10d |  | Sector-44 Noida(2) | 9386454 |
| 1961 | 36900.37000.42300.42900.43200.44500.54200.708400 | Aluminium door-window fixing | 17d | 2026-07-31 | 2026-08-16 | 1951, 1960FS-8d |  | Sector-44 Noida(2) | 9386464 |
| 1962 | 36900.37000.42300.42900.43200.44500.54200.708500 | Putty primer coat | 8d | 2026-08-09 | 2026-08-16 | 1961FS-8d |  | Sector-44 Noida(2) | 9386474 |
| 1963 | 36900.37000.42300.42900.43200.44500.54200.708600 | Prehung door fixing | 7d | 2026-08-12 | 2026-08-18 | 1962FS-5d |  | Sector-44 Noida(2) | 9386484 |
| 1964 | 36900.37000.42300.42900.43200.44500.54200.708700 | Painting 1st coat | 10d | 2026-08-19 | 2026-08-28 | 1963 |  | Sector-44 Noida(2) | 9386494 |
| 1965 | 36900.37000.42300.42900.43200.44500.54200.708800 | False Ceiling panel fixing | 8d | 2026-08-29 | 2026-09-05 | 1948, 1964 |  | Sector-44 Noida(2) | 9386504 |

| ID | WBS | Task | Duration | Start | Finish | Predecessors | Constraint | Calendar | Unique_Task_ID |
| --- | --- | --- | --- | --- | --- | --- | --- | --- | --- |
| 1966 | 36900.37000.42300.42900.43200.44500.54300 | **13th Floor** | 121d | 2026-05-17 | 2026-09-14 |  | start no earlier than 2026-05-17 | Sector-44 Noida(2) | 9361504 |
| 1967 | 36900.37000.42300.42900.43200.44500.54300.708900 | Block Work | 10d | 2026-05-17 | 2026-05-26 | 1747 |  | Sector-44 Noida(2) | 9386514 |
| 1968 | 36900.37000.42300.42900.43200.44500.54300.709000 | Installation of temporary Main door | 7d | 2026-05-27 | 2026-06-02 | 1967 |  | Sector-44 Noida(2) | 9386524 |
| 1969 | 36900.37000.42300.42900.43200.44500.54300.709100 | Fire sprinkler pipe fixing | 3d | 2026-05-27 | 2026-05-29 | 1952, 1967 |  | Sector-44 Noida(2) | 9386534 |
| 1970 | 36900.37000.42300.42900.43200.44500.54300.709200 | Internal Plumbing Works | 7d | 2026-05-27 | 2026-06-02 | 1967 |  | Sector-44 Noida(2) | 9386544 |
| 1971 | 36900.37000.42300.42900.43200.44500.54300.709300 | Waterproofing | 12d | 2026-06-03 | 2026-06-14 | 1970 |  | Sector-44 Noida(2) | 9386554 |
| 1972 | 36900.37000.42300.42900.43200.44500.54300.709400 | Internal Plaster | 15d | 2026-06-15 | 2026-06-29 | 1970, 1971 |  | Sector-44 Noida(2) | 9386564 |
| 1973 | 36900.37000.42300.42900.43200.44500.54300.709500 | IPS flooring work | 11d | 2026-05-27 | 2026-06-06 | 1967 |  | Sector-44 Noida(2) | 9386574 |
| 1974 | 36900.37000.42300.42900.43200.44500.54300.709600 | Toilet dado work | 16d | 2026-06-30 | 2026-07-15 | 1970, 1971, 1972 |  | Sector-44 Noida(2) | 9386584 |
| 1975 | 36900.37000.42300.42900.43200.44500.54300.709700 | Toilet flooring work | 16d | 2026-07-16 | 2026-07-31 | 1974 |  | Sector-44 Noida(2) | 9386594 |
| 1976 | 36900.37000.42300.42900.43200.44500.54300.709800 | Living dinning flooring | 16d | 2026-08-01 | 2026-08-16 | 1973, 1975 |  | Sector-44 Noida(2) | 9386604 |
| 1977 | 36900.37000.42300.42900.43200.44500.54300.709900 | Electrical wiring work | 10d | 2026-08-07 | 2026-08-16 | 1976FS-10d |  | Sector-44 Noida(2) | 9386614 |
| 1978 | 36900.37000.42300.42900.43200.44500.54300.710000 | Aluminium door-window fixing | 17d | 2026-08-09 | 2026-08-25 | 1968, 1977FS-8d |  | Sector-44 Noida(2) | 9386624 |
| 1979 | 36900.37000.42300.42900.43200.44500.54300.710100 | Putty primer coat | 8d | 2026-08-18 | 2026-08-25 | 1978FS-8d |  | Sector-44 Noida(2) | 9386634 |
| 1980 | 36900.37000.42300.42900.43200.44500.54300.710200 | Prehung door fixing | 7d | 2026-08-21 | 2026-08-27 | 1979FS-5d |  | Sector-44 Noida(2) | 9386644 |
| 1981 | 36900.37000.42300.42900.43200.44500.54300.710300 | Painting 1st coat | 10d | 2026-08-28 | 2026-09-06 | 1980 |  | Sector-44 Noida(2) | 9386654 |
| 1982 | 36900.37000.42300.42900.43200.44500.54300.710400 | False Ceiling panel fixing | 8d | 2026-09-07 | 2026-09-14 | 1965, 1981 |  | Sector-44 Noida(2) | 9386664 |
| 1983 | 36900.37000.42300.42900.43200.44500.54400 | **14th Floor** | 121d | 2026-05-26 | 2026-09-23 |  | start no earlier than 2026-05-26 | Sector-44 Noida(2) | 9361484 |
| 1984 | 36900.37000.42300.42900.43200.44500.54400.710500 | Block Work | 10d | 2026-05-26 | 2026-06-04 | 1748 |  | Sector-44 Noida(2) | 9386674 |
| 1985 | 36900.37000.42300.42900.43200.44500.54400.710600 | Installation of temporary Main door | 7d | 2026-06-05 | 2026-06-11 | 1984 |  | Sector-44 Noida(2) | 9386684 |
| 1986 | 36900.37000.42300.42900.43200.44500.54400.710700 | Fire sprinkler pipe fixing | 3d | 2026-06-05 | 2026-06-07 | 1969, 1984 |  | Sector-44 Noida(2) | 9386694 |
| 1987 | 36900.37000.42300.42900.43200.44500.54400.710800 | Internal Plumbing Works | 7d | 2026-06-05 | 2026-06-11 | 1984 |  | Sector-44 Noida(2) | 9386704 |
| 1988 | 36900.37000.42300.42900.43200.44500.54400.710900 | Waterproofing | 12d | 2026-06-12 | 2026-06-23 | 1987 |  | Sector-44 Noida(2) | 9386714 |
| 1989 | 36900.37000.42300.42900.43200.44500.54400.711000 | Internal Plaster | 15d | 2026-06-24 | 2026-07-08 | 1987, 1988 |  | Sector-44 Noida(2) | 9386724 |
| 1990 | 36900.37000.42300.42900.43200.44500.54400.711100 | IPS flooring work | 11d | 2026-06-05 | 2026-06-15 | 1984 |  | Sector-44 Noida(2) | 9386734 |
| 1991 | 36900.37000.42300.42900.43200.44500.54400.711200 | Toilet dado work | 16d | 2026-07-09 | 2026-07-24 | 1987, 1988, 1989 |  | Sector-44 Noida(2) | 9386744 |
| 1992 | 36900.37000.42300.42900.43200.44500.54400.711300 | Toilet flooring work | 16d | 2026-07-25 | 2026-08-09 | 1991 |  | Sector-44 Noida(2) | 9386754 |
| 1993 | 36900.37000.42300.42900.43200.44500.54400.711400 | Living dinning flooring | 16d | 2026-08-10 | 2026-08-25 | 1990, 1992 |  | Sector-44 Noida(2) | 9386764 |
| 1994 | 36900.37000.42300.42900.43200.44500.54400.711500 | Electrical wiring work | 10d | 2026-08-16 | 2026-08-25 | 1993FS-10d |  | Sector-44 Noida(2) | 9386774 |
| 1995 | 36900.37000.42300.42900.43200.44500.54400.711600 | Aluminium door-window fixing | 17d | 2026-08-18 | 2026-09-03 | 1985, 1994FS-8d |  | Sector-44 Noida(2) | 9386784 |
| 1996 | 36900.37000.42300.42900.43200.44500.54400.711700 | Putty primer coat | 8d | 2026-08-27 | 2026-09-03 | 1995FS-8d |  | Sector-44 Noida(2) | 9386794 |
| 1997 | 36900.37000.42300.42900.43200.44500.54400.711800 | Prehung door fixing | 7d | 2026-08-30 | 2026-09-05 | 1996FS-5d |  | Sector-44 Noida(2) | 9386804 |
| 1998 | 36900.37000.42300.42900.43200.44500.54400.711900 | Painting 1st coat | 10d | 2026-09-06 | 2026-09-15 | 1997 |  | Sector-44 Noida(2) | 9386814 |
| 1999 | 36900.37000.42300.42900.43200.44500.54400.712000 | False Ceiling panel fixing | 8d | 2026-09-16 | 2026-09-23 | 1982, 1998 |  | Sector-44 Noida(2) | 9386824 |

| ID | WBS | Task | Duration | Start | Finish | Predecessors | Constraint | Calendar | Unique_Task_ID |
| --- | --- | --- | --- | --- | --- | --- | --- | --- | --- |
| 2000 | 36900.37000.42300.42900.43200.44500.54500 | **15th Floor** | 121d | 2026-06-04 | 2026-10-02 |  | start no earlier than 2026-06-04 | Sector-44 Noida(2) | 9361474 |
| 2001 | 36900.37000.42300.42900.43200.44500.54500.712100 | Block Work | 10d | 2026-06-04 | 2026-06-13 | 1749 |  | Sector-44 Noida(2) | 9386834 |
| 2002 | 36900.37000.42300.42900.43200.44500.54500.712200 | Installation of temporary Main door | 7d | 2026-06-14 | 2026-06-20 | 2001 |  | Sector-44 Noida(2) | 9386844 |
| 2003 | 36900.37000.42300.42900.43200.44500.54500.712300 | Fire sprinkler pipe fixing | 3d | 2026-06-14 | 2026-06-16 | 1986, 2001 |  | Sector-44 Noida(2) | 9386854 |
| 2004 | 36900.37000.42300.42900.43200.44500.54500.712400 | Internal Plumbing Works | 7d | 2026-06-14 | 2026-06-20 | 2001 |  | Sector-44 Noida(2) | 9386864 |
| 2005 | 36900.37000.42300.42900.43200.44500.54500.712500 | Waterproofing | 12d | 2026-06-21 | 2026-07-02 | 2004 |  | Sector-44 Noida(2) | 9386874 |
| 2006 | 36900.37000.42300.42900.43200.44500.54500.712600 | Internal Plaster | 15d | 2026-07-03 | 2026-07-17 | 2004, 2005 |  | Sector-44 Noida(2) | 9386884 |
| 2007 | 36900.37000.42300.42900.43200.44500.54500.712700 | IPS flooring work | 11d | 2026-06-14 | 2026-06-24 | 2001 |  | Sector-44 Noida(2) | 9386894 |
| 2008 | 36900.37000.42300.42900.43200.44500.54500.712800 | Toilet dado work | 16d | 2026-07-18 | 2026-08-02 | 2004, 2005, 2006 |  | Sector-44 Noida(2) | 9386904 |
| 2009 | 36900.37000.42300.42900.43200.44500.54500.712900 | Toilet flooring work | 16d | 2026-08-03 | 2026-08-18 | 2008 |  | Sector-44 Noida(2) | 9386914 |
| 2010 | 36900.37000.42300.42900.43200.44500.54500.713000 | Living dinning flooring | 16d | 2026-08-19 | 2026-09-03 | 2007, 2009 |  | Sector-44 Noida(2) | 9386924 |
| 2011 | 36900.37000.42300.42900.43200.44500.54500.713100 | Electrical wiring work | 10d | 2026-08-25 | 2026-09-03 | 2010FS-10d |  | Sector-44 Noida(2) | 9386934 |
| 2012 | 36900.37000.42300.42900.43200.44500.54500.713200 | Aluminium door-window fixing | 17d | 2026-08-27 | 2026-09-12 | 2002, 2011FS-8d |  | Sector-44 Noida(2) | 9386944 |
| 2013 | 36900.37000.42300.42900.43200.44500.54500.713300 | Putty primer coat | 8d | 2026-09-05 | 2026-09-12 | 2012FS-8d |  | Sector-44 Noida(2) | 9386954 |
| 2014 | 36900.37000.42300.42900.43200.44500.54500.713400 | Prehung door fixing | 7d | 2026-09-08 | 2026-09-14 | 2013FS-5d |  | Sector-44 Noida(2) | 9386964 |
| 2015 | 36900.37000.42300.42900.43200.44500.54500.713500 | Painting 1st coat | 10d | 2026-09-15 | 2026-09-24 | 2014 |  | Sector-44 Noida(2) | 9386974 |
| 2016 | 36900.37000.42300.42900.43200.44500.54500.713600 | False Ceiling panel fixing | 8d | 2026-09-25 | 2026-10-02 | 1999, 2015 |  | Sector-44 Noida(2) | 9386984 |
| 2017 | 36900.37000.42300.42900.43200.44500.54600 | **16th Floor** | 121d | 2026-06-12 | 2026-10-10 |  | start no earlier than 2026-06-12 | Sector-44 Noida(2) | 9361454 |
| 2018 | 36900.37000.42300.42900.43200.44500.54600.713700 | Block Work | 10d | 2026-06-12 | 2026-06-21 | 1750 |  | Sector-44 Noida(2) | 9386994 |
| 2019 | 36900.37000.42300.42900.43200.44500.54600.713800 | Installation of temporary Main door | 7d | 2026-06-22 | 2026-06-28 | 2018 |  | Sector-44 Noida(2) | 9387004 |
| 2020 | 36900.37000.42300.42900.43200.44500.54600.713900 | Fire sprinkler pipe fixing | 3d | 2026-06-22 | 2026-06-24 | 2003, 2018 |  | Sector-44 Noida(2) | 9387014 |
| 2021 | 36900.37000.42300.42900.43200.44500.54600.714000 | Internal Plumbing Works | 7d | 2026-06-22 | 2026-06-28 | 2018 |  | Sector-44 Noida(2) | 9387024 |
| 2022 | 36900.37000.42300.42900.43200.44500.54600.714100 | Waterproofing | 12d | 2026-06-29 | 2026-07-10 | 2021 |  | Sector-44 Noida(2) | 9387034 |
| 2023 | 36900.37000.42300.42900.43200.44500.54600.714200 | Internal Plaster | 15d | 2026-07-11 | 2026-07-25 | 2021, 2022 |  | Sector-44 Noida(2) | 9387044 |
| 2024 | 36900.37000.42300.42900.43200.44500.54600.714300 | IPS flooring work | 11d | 2026-06-22 | 2026-07-02 | 2018 |  | Sector-44 Noida(2) | 9387054 |
| 2025 | 36900.37000.42300.42900.43200.44500.54600.714400 | Toilet dado work | 16d | 2026-07-26 | 2026-08-10 | 2021, 2022, 2023 |  | Sector-44 Noida(2) | 9387064 |
| 2026 | 36900.37000.42300.42900.43200.44500.54600.714500 | Toilet flooring work | 16d | 2026-08-11 | 2026-08-26 | 2025 |  | Sector-44 Noida(2) | 9387074 |
| 2027 | 36900.37000.42300.42900.43200.44500.54600.714600 | Living dinning flooring | 16d | 2026-08-27 | 2026-09-11 | 2024, 2026 |  | Sector-44 Noida(2) | 9387084 |
| 2028 | 36900.37000.42300.42900.43200.44500.54600.714700 | Electrical wiring work | 10d | 2026-09-02 | 2026-09-11 | 2027FS-10d |  | Sector-44 Noida(2) | 9387094 |
| 2029 | 36900.37000.42300.42900.43200.44500.54600.714800 | Aluminium door-window fixing | 17d | 2026-09-04 | 2026-09-20 | 2019, 2028FS-8d |  | Sector-44 Noida(2) | 9387104 |
| 2030 | 36900.37000.42300.42900.43200.44500.54600.714900 | Putty primer coat | 8d | 2026-09-13 | 2026-09-20 | 2029FS-8d |  | Sector-44 Noida(2) | 9387114 |
| 2031 | 36900.37000.42300.42900.43200.44500.54600.715000 | Prehung door fixing | 7d | 2026-09-16 | 2026-09-22 | 2030FS-5d |  | Sector-44 Noida(2) | 9387124 |
| 2032 | 36900.37000.42300.42900.43200.44500.54600.715100 | Painting 1st coat | 10d | 2026-09-23 | 2026-10-02 | 2031 |  | Sector-44 Noida(2) | 9387134 |
| 2033 | 36900.37000.42300.42900.43200.44500.54600.715200 | False Ceiling panel fixing | 8d | 2026-10-03 | 2026-10-10 | 2016, 2032 |  | Sector-44 Noida(2) | 9387144 |

| ID | WBS | Task | Duration | Start | Finish | Predecessors | Constraint | Calendar | Unique_Task_ID |
| --- | --- | --- | --- | --- | --- | --- | --- | --- | --- |
| 2034 | 36900.37000.42300.42900.43200.44500.54700 | **17th Floor** | 121d | 2026-06-20 | 2026-10-18 |  | start no earlier than 2026-06-20 | Sector-44 Noida(2) | 9361444 |
| 2035 | 36900.37000.42300.42900.43200.44500.54700.715300 | Block Work | 10d | 2026-06-20 | 2026-06-29 | 1751 |  | Sector-44 Noida(2) | 9387154 |
| 2036 | 36900.37000.42300.42900.43200.44500.54700.715400 | Installation of temporary Main door | 7d | 2026-06-30 | 2026-07-06 | 2035 |  | Sector-44 Noida(2) | 9387164 |
| 2037 | 36900.37000.42300.42900.43200.44500.54700.715500 | Fire sprinkler pipe fixing | 3d | 2026-06-30 | 2026-07-02 | 2020, 2035 |  | Sector-44 Noida(2) | 9387174 |
| 2038 | 36900.37000.42300.42900.43200.44500.54700.715600 | Internal Plumbing Works | 7d | 2026-06-30 | 2026-07-06 | 2035 |  | Sector-44 Noida(2) | 9387184 |
| 2039 | 36900.37000.42300.42900.43200.44500.54700.715700 | Waterproofing | 12d | 2026-07-07 | 2026-07-18 | 2038 |  | Sector-44 Noida(2) | 9387194 |
| 2040 | 36900.37000.42300.42900.43200.44500.54700.715800 | Internal Plaster | 15d | 2026-07-19 | 2026-08-02 | 2038, 2039 |  | Sector-44 Noida(2) | 9387204 |
| 2041 | 36900.37000.42300.42900.43200.44500.54700.715900 | IPS flooring work | 11d | 2026-06-30 | 2026-07-10 | 2035 |  | Sector-44 Noida(2) | 9387214 |
| 2042 | 36900.37000.42300.42900.43200.44500.54700.716000 | Toilet dado work | 16d | 2026-08-03 | 2026-08-18 | 2038, 2039, 2040 |  | Sector-44 Noida(2) | 9387224 |
| 2043 | 36900.37000.42300.42900.43200.44500.54700.716100 | Toilet flooring work | 16d | 2026-08-19 | 2026-09-03 | 2042 |  | Sector-44 Noida(2) | 9387234 |
| 2044 | 36900.37000.42300.42900.43200.44500.54700.716200 | Living dinning flooring | 16d | 2026-09-04 | 2026-09-19 | 2041, 2043 |  | Sector-44 Noida(2) | 9387244 |
| 2045 | 36900.37000.42300.42900.43200.44500.54700.716300 | Electrical wiring work | 10d | 2026-09-10 | 2026-09-19 | 2044FS-10d |  | Sector-44 Noida(2) | 9387254 |
| 2046 | 36900.37000.42300.42900.43200.44500.54700.716400 | Aluminium door-window fixing | 17d | 2026-09-12 | 2026-09-28 | 2036, 2045FS-8d |  | Sector-44 Noida(2) | 9387264 |
| 2047 | 36900.37000.42300.42900.43200.44500.54700.716500 | Putty primer coat | 8d | 2026-09-21 | 2026-09-28 | 2046FS-8d |  | Sector-44 Noida(2) | 9387274 |
| 2048 | 36900.37000.42300.42900.43200.44500.54700.716600 | Prehung door fixing | 7d | 2026-09-24 | 2026-09-30 | 2047FS-5d |  | Sector-44 Noida(2) | 9387284 |
| 2049 | 36900.37000.42300.42900.43200.44500.54700.716700 | Painting 1st coat | 10d | 2026-10-01 | 2026-10-10 | 2048 |  | Sector-44 Noida(2) | 9387294 |
| 2050 | 36900.37000.42300.42900.43200.44500.54700.716800 | False Ceiling panel fixing | 8d | 2026-10-11 | 2026-10-18 | 2033, 2049 |  | Sector-44 Noida(2) | 9387304 |
| 2051 | 36900.37000.42300.42900.43200.44500.54800 | **18th Floor** | 124d | 2026-06-28 | 2026-10-29 |  | start no earlier than 2026-06-28 | Sector-44 Noida(2) | 9361424 |
| 2052 | 36900.37000.42300.42900.43200.44500.54800.716900 | Block Work | 10d | 2026-06-28 | 2026-07-07 | 1752 |  | Sector-44 Noida(2) | 9387314 |
| 2053 | 36900.37000.42300.42900.43200.44500.54800.717000 | Installation of temporary Main door | 7d | 2026-07-08 | 2026-07-14 | 2052 |  | Sector-44 Noida(2) | 9387324 |
| 2054 | 36900.37000.42300.42900.43200.44500.54800.717100 | Fire sprinkler pipe fixing | 3d | 2026-07-08 | 2026-07-10 | 2037, 2052 |  | Sector-44 Noida(2) | 9387334 |
| 2055 | 36900.37000.42300.42900.43200.44500.54800.717200 | Internal Plumbing Works | 10d | 2026-07-08 | 2026-07-17 | 2052 |  | Sector-44 Noida(2) | 9387344 |
| 2056 | 36900.37000.42300.42900.43200.44500.54800.717300 | Waterproofing | 12d | 2026-07-18 | 2026-07-29 | 2055 |  | Sector-44 Noida(2) | 9387354 |
| 2057 | 36900.37000.42300.42900.43200.44500.54800.717400 | Internal Plaster | 15d | 2026-07-30 | 2026-08-13 | 2055, 2056 |  | Sector-44 Noida(2) | 9387364 |
| 2058 | 36900.37000.42300.42900.43200.44500.54800.717500 | IPS flooring work | 11d | 2026-07-08 | 2026-07-18 | 2052 |  | Sector-44 Noida(2) | 9387374 |
| 2059 | 36900.37000.42300.42900.43200.44500.54800.717600 | Toilet dado work | 16d | 2026-08-14 | 2026-08-29 | 2055, 2056, 2057 |  | Sector-44 Noida(2) | 9387384 |
| 2060 | 36900.37000.42300.42900.43200.44500.54800.717700 | Toilet flooring work | 16d | 2026-08-30 | 2026-09-14 | 2059 |  | Sector-44 Noida(2) | 9387394 |
| 2061 | 36900.37000.42300.42900.43200.44500.54800.717800 | Living dinning flooring | 16d | 2026-09-15 | 2026-09-30 | 2058, 2060 |  | Sector-44 Noida(2) | 9387404 |
| 2062 | 36900.37000.42300.42900.43200.44500.54800.717900 | Electrical wiring work | 10d | 2026-09-21 | 2026-09-30 | 2061FS-10d |  | Sector-44 Noida(2) | 9387414 |
| 2063 | 36900.37000.42300.42900.43200.44500.54800.718000 | Aluminium door-window fixing | 17d | 2026-09-23 | 2026-10-09 | 2053, 2062FS-8d |  | Sector-44 Noida(2) | 9387424 |
| 2064 | 36900.37000.42300.42900.43200.44500.54800.718100 | Putty primer coat | 8d | 2026-10-02 | 2026-10-09 | 2063FS-8d |  | Sector-44 Noida(2) | 9387434 |
| 2065 | 36900.37000.42300.42900.43200.44500.54800.718200 | Prehung door fixing | 7d | 2026-10-05 | 2026-10-11 | 2064FS-5d |  | Sector-44 Noida(2) | 9387444 |
| 2066 | 36900.37000.42300.42900.43200.44500.54800.718300 | Painting 1st coat | 10d | 2026-10-12 | 2026-10-21 | 2065 |  | Sector-44 Noida(2) | 9387454 |
| 2067 | 36900.37000.42300.42900.43200.44500.54800.718400 | False Ceiling panel fixing | 8d | 2026-10-22 | 2026-10-29 | 2050, 2066 |  | Sector-44 Noida(2) | 9387464 |

| ID | WBS | Task | Duration | Start | Finish | Predecessors | Constraint | Calendar | Unique_Task_ID |
| --- | --- | --- | --- | --- | --- | --- | --- | --- | --- |
| 2068 | 36900.37000.42300.42900.43200.44500.54900 | **19th Floor** | 124d | 2026-07-06 | 2026-12-21 |  | start no earlier than 2026-07-06 | Sector-44 Noida(2) | 9361394 |
| 2069 | 36900.37000.42300.42900.43200.44500.54900.718500 | Block Work | 10d | 2026-07-06 | 2026-07-15 | 1753 |  | Sector-44 Noida(2) | 9387474 |
| 2070 | 36900.37000.42300.42900.43200.44500.54900.718600 | Installation of temporary Main door | 7d | 2026-07-16 | 2026-07-22 | 2069 |  | Sector-44 Noida(2) | 9387484 |
| 2071 | 36900.37000.42300.42900.43200.44500.54900.718700 | Fire sprinkler pipe fixing | 3d | 2026-07-16 | 2026-07-18 | 2054, 2069 |  | Sector-44 Noida(2) | 9387494 |
| 2072 | 36900.37000.42300.42900.43200.44500.54900.718800 | Internal Plumbing Works | 7d | 2026-07-16 | 2026-07-22 | 2069 |  | Sector-44 Noida(2) | 9387504 |
| 2073 | 36900.37000.42300.42900.43200.44500.54900.718900 | Waterproofing | 12d | 2026-07-23 | 2026-08-03 | 2072 |  | Sector-44 Noida(2) | 9387514 |
| 2074 | 36900.37000.42300.42900.43200.44500.54900.719000 | Internal Plaster | 15d | 2026-08-04 | 2026-08-18 | 2072, 2073 |  | Sector-44 Noida(2) | 9387524 |
| 2075 | 36900.37000.42300.42900.43200.44500.54900.719100 | IPS flooring work | 11d | 2026-07-16 | 2026-07-26 | 2069 |  | Sector-44 Noida(2) | 9387534 |
| 2076 | 36900.37000.42300.42900.43200.44500.54900.719200 | Toilet dado work | 16d | 2026-08-19 | 2026-09-03 | 2072, 2073, 2074 |  | Sector-44 Noida(2) | 9387544 |
| 2077 | 36900.37000.42300.42900.43200.44500.54900.719300 | Toilet flooring work | 16d | 2026-09-04 | 2026-09-19 | 2076 |  | Sector-44 Noida(2) | 9387554 |
| 2078 | 36900.37000.42300.42900.43200.44500.54900.719400 | Living dinning flooring | 16d | 2026-09-20 | 2026-10-05 | 2075, 2077 |  | Sector-44 Noida(2) | 9387564 |
| 2079 | 36900.37000.42300.42900.43200.44500.54900.719500 | Electrical wiring work | 10d | 2026-09-26 | 2026-10-05 | 2078FS-10d |  | Sector-44 Noida(2) | 9387574 |
| 2080 | 36900.37000.42300.42900.43200.44500.54900.719600 | Aluminium door-window fixing | 17d | 2026-09-28 | 2026-10-14 | 2070, 2079FS-8d |  | Sector-44 Noida(2) | 9387584 |
| 2081 | 36900.37000.42300.42900.43200.44500.54900.719700 | Putty primer coat | 8d | 2026-10-07 | 2026-10-14 | 2080FS-8d |  | Sector-44 Noida(2) | 9387594 |
| 2082 | 36900.37000.42300.42900.43200.44500.54900.719800 | Prehung door fixing | 7d | 2026-10-10 | 2026-10-16 | 2081FS-5d |  | Sector-44 Noida(2) | 9387604 |
| 2083 | 36900.37000.42300.42900.43200.44500.54900.719900 | Painting 1st coat | 10d | 2026-10-17 | 2026-10-26 | 2082 |  | Sector-44 Noida(2) | 9387614 |
| 2084 | 36900.37000.42300.42900.43200.44500.54900.720000 | False Ceiling panel fixing | 8d | 2026-10-30 | 2026-12-21 | 2067, 2083 |  | Sector-44 Noida(2) | 9387624 |
| 2085 | 36900.37000.42300.42900.43200.44500.55000 | **20th Floor** | 125d | 2026-07-13 | 2026-12-29 |  | start no earlier than 2026-07-13 | Sector-44 Noida(2) | 9361384 |
| 2086 | 36900.37000.42300.42900.43200.44500.55000.720100 | Block Work | 10d | 2026-07-13 | 2026-07-22 | 1754 |  | Sector-44 Noida(2) | 9387634 |
| 2087 | 36900.37000.42300.42900.43200.44500.55000.720200 | Installation of temporary Main door | 7d | 2026-07-23 | 2026-07-29 | 2086 |  | Sector-44 Noida(2) | 9387644 |
| 2088 | 36900.37000.42300.42900.43200.44500.55000.720300 | Fire sprinkler pipe fixing | 3d | 2026-07-23 | 2026-07-25 | 2071, 2086 |  | Sector-44 Noida(2) | 9387654 |
| 2089 | 36900.37000.42300.42900.43200.44500.55000.720400 | Internal Plumbing Works | 7d | 2026-07-23 | 2026-07-29 | 2086 |  | Sector-44 Noida(2) | 9387664 |
| 2090 | 36900.37000.42300.42900.43200.44500.55000.720500 | Waterproofing | 12d | 2026-07-30 | 2026-08-10 | 2089 |  | Sector-44 Noida(2) | 9387674 |
| 2091 | 36900.37000.42300.42900.43200.44500.55000.720600 | Internal Plaster | 5d | 2026-08-11 | 2026-08-15 | 2089, 2090 |  | Sector-44 Noida(2) | 9387684 |
| 2092 | 36900.37000.42300.42900.43200.44500.55000.720700 | IPS flooring work | 1d | 2026-07-23 | 2026-07-23 | 2086 |  | Sector-44 Noida(2) | 9387694 |
| 2093 | 36900.37000.42300.42900.43200.44500.55000.720800 | Toilet dado work | 16d | 2026-08-16 | 2026-08-31 | 2089, 2090, 2091 |  | Sector-44 Noida(2) | 9387704 |
| 2094 | 36900.37000.42300.42900.43200.44500.55000.720900 | Toilet flooring work | 16d | 2026-09-01 | 2026-09-16 | 2093 |  | Sector-44 Noida(2) | 9387714 |
| 2095 | 36900.37000.42300.42900.43200.44500.55000.721000 | Living dinning flooring | 16d | 2026-09-17 | 2026-10-02 | 2092, 2094 |  | Sector-44 Noida(2) | 9387724 |
| 2096 | 36900.37000.42300.42900.43200.44500.55000.721100 | Electrical wiring work | 10d | 2026-09-23 | 2026-10-02 | 2095FS-10d |  | Sector-44 Noida(2) | 9387734 |
| 2097 | 36900.37000.42300.42900.43200.44500.55000.721200 | Aluminium door-window fixing | 17d | 2026-09-25 | 2026-10-11 | 2087, 2096FS-8d |  | Sector-44 Noida(2) | 9387744 |
| 2098 | 36900.37000.42300.42900.43200.44500.55000.721300 | Putty primer coat | 8d | 2026-10-04 | 2026-10-11 | 2097FS-8d |  | Sector-44 Noida(2) | 9387754 |
| 2099 | 36900.37000.42300.42900.43200.44500.55000.721400 | Prehung door fixing | 7d | 2026-10-07 | 2026-10-13 | 2098FS-5d |  | Sector-44 Noida(2) | 9387764 |
| 2100 | 36900.37000.42300.42900.43200.44500.55000.721500 | Painting 1st coat | 10d | 2026-10-14 | 2026-10-23 | 2099 |  | Sector-44 Noida(2) | 9387774 |
| 2101 | 36900.37000.42300.42900.43200.44500.55000.721600 | False Ceiling panel fixing | 8d | 2026-12-22 | 2026-12-29 | 2084, 2100 |  | Sector-44 Noida(2) | 9387784 |

| ID | WBS | Task | Duration | Start | Finish | Predecessors | Constraint | Calendar | Unique_Task_ID |
| --- | --- | --- | --- | --- | --- | --- | --- | --- | --- |
| 2102 | 36900.37000.42300.42900.43200.44500.55100 | **21st Floor** | 126d | 2026-07-20 | 2027-01-06 |  | start no earlier than 2026-07-20 | Sector-44 Noida(2) | 9361364 |
| 2103 | 36900.37000.42300.42900.43200.44500.55100.721700 | Block Work | 7d | 2026-07-20 | 2026-07-26 | 1755 |  | Sector-44 Noida(2) | 9387794 |
| 2104 | 36900.37000.42300.42900.43200.44500.55100.721800 | Installation of temporary Main door | 7d | 2026-07-27 | 2026-08-02 | 2103 |  | Sector-44 Noida(2) | 9387804 |
| 2105 | 36900.37000.42300.42900.43200.44500.55100.721900 | Fire sprinkler pipe fixing | 3d | 2026-07-27 | 2026-07-29 | 2088, 2103 |  | Sector-44 Noida(2) | 9387814 |
| 2106 | 36900.37000.42300.42900.43200.44500.55100.722000 | Internal Plumbing Works | 7d | 2026-07-27 | 2026-08-02 | 2103 |  | Sector-44 Noida(2) | 9387824 |
| 2107 | 36900.37000.42300.42900.43200.44500.55100.722100 | Waterproofing | 12d | 2026-08-03 | 2026-08-14 | 2106 |  | Sector-44 Noida(2) | 9387834 |
| 2108 | 36900.37000.42300.42900.43200.44500.55100.722200 | Internal Plaster | 15d | 2026-08-15 | 2026-08-29 | 2106, 2107 |  | Sector-44 Noida(2) | 9387844 |
| 2109 | 36900.37000.42300.42900.43200.44500.55100.722300 | IPS flooring work | 11d | 2026-07-27 | 2026-08-06 | 2103 |  | Sector-44 Noida(2) | 9387854 |
| 2110 | 36900.37000.42300.42900.43200.44500.55100.722400 | Toilet dado work | 16d | 2026-08-30 | 2026-09-14 | 2106, 2107, 2108 |  | Sector-44 Noida(2) | 9387864 |
| 2111 | 36900.37000.42300.42900.43200.44500.55100.722500 | Toilet flooring work | 16d | 2026-09-15 | 2026-09-30 | 2110 |  | Sector-44 Noida(2) | 9387874 |
| 2112 | 36900.37000.42300.42900.43200.44500.55100.722600 | Living dinning flooring | 16d | 2026-10-01 | 2026-10-16 | 2109, 2111 |  | Sector-44 Noida(2) | 9387884 |
| 2113 | 36900.37000.42300.42900.43200.44500.55100.722700 | Electrical wiring work | 10d | 2026-10-07 | 2026-10-16 | 2112FS-10d |  | Sector-44 Noida(2) | 9387894 |
| 2114 | 36900.37000.42300.42900.43200.44500.55100.722800 | Aluminium door-window fixing | 17d | 2026-10-09 | 2026-10-25 | 2104, 2113FS-8d |  | Sector-44 Noida(2) | 9387904 |
| 2115 | 36900.37000.42300.42900.43200.44500.55100.722900 | Putty primer coat | 8d | 2026-10-18 | 2026-10-25 | 2114FS-8d |  | Sector-44 Noida(2) | 9387914 |
| 2116 | 36900.37000.42300.42900.43200.44500.55100.723000 | Prehung door fixing | 7d | 2026-10-21 | 2026-10-27 | 2115FS-5d |  | Sector-44 Noida(2) | 9387924 |
| 2117 | 36900.37000.42300.42900.43200.44500.55100.723100 | Painting 1st coat | 10d | 2026-10-28 | 2026-12-21 | 2116 |  | Sector-44 Noida(2) | 9387934 |
| 2118 | 36900.37000.42300.42900.43200.44500.55100.723200 | False Ceiling panel fixing | 8d | 2026-12-30 | 2027-01-06 | 2101, 2117 |  | Sector-44 Noida(2) | 9387944 |
| 2119 | 36900.37000.42300.42900.43200.44500.55200 | **22nd Floor** | 127d | 2026-07-27 | 2027-01-14 |  | start no earlier than 2026-07-27 | Sector-44 Noida(2) | 9361344 |
| 2120 | 36900.37000.42300.42900.43200.44500.55200.723300 | Block Work | 7d | 2026-07-27 | 2026-08-02 | 1756 |  | Sector-44 Noida(2) | 9387954 |
| 2121 | 36900.37000.42300.42900.43200.44500.55200.723400 | Installation of temporary Main door | 7d | 2026-08-03 | 2026-08-09 | 2120 |  | Sector-44 Noida(2) | 9387964 |
| 2122 | 36900.37000.42300.42900.43200.44500.55200.723500 | Fire sprinkler pipe fixing | 3d | 2026-08-03 | 2026-08-05 | 2105, 2120 |  | Sector-44 Noida(2) | 9387974 |
| 2123 | 36900.37000.42300.42900.43200.44500.55200.723600 | Internal Plumbing Works | 7d | 2026-08-03 | 2026-08-09 | 2120 |  | Sector-44 Noida(2) | 9387984 |
| 2124 | 36900.37000.42300.42900.43200.44500.55200.723700 | Waterproofing | 12d | 2026-08-10 | 2026-08-21 | 2123 |  | Sector-44 Noida(2) | 9387994 |
| 2125 | 36900.37000.42300.42900.43200.44500.55200.723800 | Internal Plaster | 15d | 2026-08-22 | 2026-09-05 | 2123, 2124 |  | Sector-44 Noida(2) | 9388004 |
| 2126 | 36900.37000.42300.42900.43200.44500.55200.723900 | IPS flooring work | 11d | 2026-08-03 | 2026-08-13 | 2120 |  | Sector-44 Noida(2) | 9388014 |
| 2127 | 36900.37000.42300.42900.43200.44500.55200.724000 | Toilet dado work | 20d | 2026-09-06 | 2026-09-25 | 2123, 2124, 2125 |  | Sector-44 Noida(2) | 9388024 |
| 2128 | 36900.37000.42300.42900.43200.44500.55200.724100 | Toilet flooring work | 16d | 2026-09-26 | 2026-10-11 | 2127 |  | Sector-44 Noida(2) | 9388034 |
| 2129 | 36900.37000.42300.42900.43200.44500.55200.724200 | Living dinning flooring | 16d | 2026-10-12 | 2026-10-27 | 2126, 2128 |  | Sector-44 Noida(2) | 9388044 |
| 2130 | 36900.37000.42300.42900.43200.44500.55200.724300 | Electrical wiring work | 10d | 2026-10-18 | 2026-10-27 | 2129FS-10d |  | Sector-44 Noida(2) | 9388054 |
| 2131 | 36900.37000.42300.42900.43200.44500.55200.724400 | Aluminium door-window fixing | 17d | 2026-10-20 | 2026-12-20 | 2121, 2130FS-8d |  | Sector-44 Noida(2) | 9388064 |
| 2132 | 36900.37000.42300.42900.43200.44500.55200.724500 | Putty primer coat | 8d | 2026-10-29 | 2026-12-20 | 2131FS-8d |  | Sector-44 Noida(2) | 9388074 |
| 2133 | 36900.37000.42300.42900.43200.44500.55200.724600 | Prehung door fixing | 7d | 2026-12-16 | 2026-12-22 | 2132FS-5d |  | Sector-44 Noida(2) | 9388084 |
| 2134 | 36900.37000.42300.42900.43200.44500.55200.724700 | Painting 1st coat | 10d | 2026-12-23 | 2027-01-01 | 2133 |  | Sector-44 Noida(2) | 9388094 |
| 2135 | 36900.37000.42300.42900.43200.44500.55200.724800 | False Ceiling panel fixing | 8d | 2027-01-07 | 2027-01-14 | 2118, 2134 |  | Sector-44 Noida(2) | 9388104 |

| ID | WBS | Task | Duration | Start | Finish | Predecessors | Constraint | Calendar | Unique_Task_ID |
| --- | --- | --- | --- | --- | --- | --- | --- | --- | --- |
| 2136 | 36900.37000.42300.42900.43200.44500.55300 | **23rd Floor** | 148d | 2026-08-03 | 2027-02-11 |  | start no earlier than 2026-08-03 | Sector-44 Noida(2) | 9361334 |
| 2137 | 36900.37000.42300.42900.43200.44500.55300.724900 | Block Work | 24d | 2026-08-03 | 2026-08-26 | 1757 |  | Sector-44 Noida(2) | 9388114 |
| 2138 | 36900.37000.42300.42900.43200.44500.55300.725000 | Installation of temporary Main door | 7d | 2026-08-27 | 2026-09-02 | 2137 |  | Sector-44 Noida(2) | 9388124 |
| 2139 | 36900.37000.42300.42900.43200.44500.55300.725100 | Fire sprinkler pipe fixing | 3d | 2026-08-27 | 2026-08-29 | 2122, 2137 |  | Sector-44 Noida(2) | 9388134 |
| 2140 | 36900.37000.42300.42900.43200.44500.55300.725200 | Internal Plumbing Works | 7d | 2026-08-27 | 2026-09-02 | 2137 |  | Sector-44 Noida(2) | 9388144 |
| 2141 | 36900.37000.42300.42900.43200.44500.55300.725300 | Waterproofing | 12d | 2026-09-03 | 2026-09-14 | 2140 |  | Sector-44 Noida(2) | 9388154 |
| 2142 | 36900.37000.42300.42900.43200.44500.55300.725400 | Internal Plaster | 11d | 2026-09-15 | 2026-09-25 | 2140, 2141 |  | Sector-44 Noida(2) | 9388164 |
| 2143 | 36900.37000.42300.42900.43200.44500.55300.725500 | IPS flooring work | 11d | 2026-08-27 | 2026-09-06 | 2137 |  | Sector-44 Noida(2) | 9388174 |
| 2144 | 36900.37000.42300.42900.43200.44500.55300.725600 | Toilet dado work | 20d | 2026-09-26 | 2026-10-15 | 2140, 2141, 2142 |  | Sector-44 Noida(2) | 9388184 |
| 2145 | 36900.37000.42300.42900.43200.44500.55300.725700 | Toilet flooring work | 16d | 2026-10-16 | 2026-10-31 | 2144 |  | Sector-44 Noida(2) | 9388194 |
| 2146 | 36900.37000.42300.42900.43200.44500.55300.725800 | Living dinning flooring | 29d | 2026-12-16 | 2027-01-13 | 2143, 2145 |  | Sector-44 Noida(2) | 9388204 |
| 2147 | 36900.37000.42300.42900.43200.44500.55300.725900 | Electrical wiring work | 10d | 2027-01-04 | 2027-01-13 | 2146FS-10d |  | Sector-44 Noida(2) | 9388214 |
| 2148 | 36900.37000.42300.42900.43200.44500.55300.726000 | Aluminium door-window fixing | 17d | 2027-01-06 | 2027-01-22 | 2138, 2147FS-8d |  | Sector-44 Noida(2) | 9388224 |
| 2149 | 36900.37000.42300.42900.43200.44500.55300.726100 | Putty primer coat | 8d | 2027-01-15 | 2027-01-22 | 2148FS-8d |  | Sector-44 Noida(2) | 9388234 |
| 2150 | 36900.37000.42300.42900.43200.44500.55300.726200 | Prehung door fixing | 7d | 2027-01-18 | 2027-01-24 | 2149FS-5d |  | Sector-44 Noida(2) | 9388244 |
| 2151 | 36900.37000.42300.42900.43200.44500.55300.726300 | Painting 1st coat | 10d | 2027-01-25 | 2027-02-03 | 2150 |  | Sector-44 Noida(2) | 9388254 |
| 2152 | 36900.37000.42300.42900.43200.44500.55300.726400 | False Ceiling panel fixing | 8d | 2027-02-04 | 2027-02-11 | 2135, 2151 |  | Sector-44 Noida(2) | 9388264 |
| 2153 | 36900.37000.42300.42900.43200.191700 | **Terrace finishing** | 70d | 2026-10-09 | 2027-01-31 |  | start no earlier than 2026-10-09 | Sector-44 Noida(2) | 9366134 |
| 2154 | 36900.37000.42300.42900.43200.191700.353000 | Terrace waterproofing | 30d | 2026-10-09 | 2026-12-22 | 2229FS+10d |  | Sector-44 Noida(2) | 9371404 |
| 2155 | 36900.37000.42300.42900.43200.191700.353100 | Terrace Finishing | 40d | 2026-12-23 | 2027-01-31 | 2154 |  | Sector-44 Noida(2) | 9371414 |
| 2156 | 36900.37000.42300.42900.43200.96600 | **Common area finishing** | 190d | 2026-07-18 | 2027-03-09 |  | start no earlier than 2026-07-18 | Sector-44 Noida(2) | 9362154 |
| 2157 | 36900.37000.42300.42900.43200.96600.353200 | Masonary Work | 40d | 2026-07-18 | 2026-08-26 | 1716 |  | Sector-44 Noida(2) | 9371424 |
| 2158 | 36900.37000.42300.42900.43200.96600.353300 | Fire sprinkler pipe fixing | 40d | 2026-07-23 | 2026-08-31 | 1716FS+5d |  | Sector-44 Noida(2) | 9371434 |
| 2159 | 36900.37000.42300.42900.43200.96600.353400 | Corridoor, staircase, shaft Plaster & whitewash | 80d | 2026-07-28 | 2026-10-15 | 2157FS-30d |  | Sector-44 Noida(2) | 9371444 |
| 2160 | 36900.37000.42300.42900.43200.96600.353500 | Staircase railing fixing | 80d | 2026-08-07 | 2026-10-25 | 2157FS-20d |  | Sector-44 Noida(2) | 9371454 |
| 2161 | 36900.37000.42300.42900.43200.96600.353600 | Fire staircase flooring | 100d | 2026-07-28 | 2026-12-19 | 2160FS-90d |  | Sector-44 Noida(2) | 9371464 |
| 2162 | 36900.37000.42300.42900.43200.96600.353700 | Main staircase flooring | 100d | 2026-07-28 | 2026-12-19 | 2160FS-90d |  | Sector-44 Noida(2) | 9371474 |
| 2163 | 36900.37000.42300.42900.43200.96600.353800 | Fire door work | 120d | 2026-09-06 | 2027-02-17 | 2161FS-60d |  | Sector-44 Noida(2) | 9371484 |
| 2164 | 36900.37000.42300.42900.43200.96600.353900 | Lobby flooring & Corridor | 170d | 2026-08-07 | 2027-03-09 | 2162FS-90d |  | Sector-44 Noida(2) | 9371494 |
| 2165 | 36900.37000.42300.42900.43200.96600.354000 | Ceiling & wall putty-primer | 80d | 2026-10-26 | 2027-02-27 | 2164FS-90d |  | Sector-44 Noida(2) | 9371504 |
| 2166 | 36900.37000.42300.42900.43200.96600.354100 | Ceiling & wall painting | 75d | 2026-10-06 | 2027-02-02 | 2165FS-100d |  | Sector-44 Noida(2) | 9371514 |
| 2167 | 36900.37000.42300.42900.43200.96600.354200 | Electrical wiring work | 70d | 2026-09-11 | 2027-01-03 | 2166FS-100d |  | Sector-44 Noida(2) | 9371524 |
| 2168 | 36900.37000.42300.42900.43200.96600.354300 | Light fixture supply & installation | 30d | 2026-10-06 | 2026-12-19 | 2167FS-45d |  | Sector-44 Noida(2) | 9371534 |
| 2169 | 36900.37000.42300.42900.43200.96600.354400 | Installation of fire signages including Basements | 20d | 2027-02-03 | 2027-02-22 | 2166 |  | Sector-44 Noida(2) | 9371544 |

| ID | WBS | Task | Duration | Start | Finish | Predecessors | Constraint | Calendar | Unique_Task_ID |
| --- | --- | --- | --- | --- | --- | --- | --- | --- | --- |
| 2170 | 36900.37000.42300.42900.43200.47800 | **Balcony Glass Railing** | 161d | 2026-01-30 | 2026-07-09 |  | start no earlier than 2026-01-30 | Sector-44 Noida(2) | 9360904 |
| 2171 | 36900.37000.42300.42900.43200.47800.354500 | 1st Floor | 7d | 2026-01-30 | 2026-02-05 | 1763 |  | Sector-44 Noida(2) | 9371554 |
| 2172 | 36900.37000.42300.42900.43200.47800.354600 | 2nd Floor | 7d | 2026-02-06 | 2026-02-12 | 2171 |  | Sector-44 Noida(2) | 9371564 |
| 2173 | 36900.37000.42300.42900.43200.47800.354700 | 3rd Floor | 7d | 2026-02-13 | 2026-02-19 | 2172 |  | Sector-44 Noida(2) | 9371574 |
| 2174 | 36900.37000.42300.42900.43200.47800.354800 | 4th Floor | 7d | 2026-02-20 | 2026-02-26 | 2173 |  | Sector-44 Noida(2) | 9371584 |
| 2175 | 36900.37000.42300.42900.43200.47800.354900 | 5th Floor | 7d | 2026-02-27 | 2026-03-05 | 2174 |  | Sector-44 Noida(2) | 9371594 |
| 2176 | 36900.37000.42300.42900.43200.47800.355000 | 6th Floor | 7d | 2026-03-06 | 2026-03-12 | 2175 |  | Sector-44 Noida(2) | 9371604 |
| 2177 | 36900.37000.42300.42900.43200.47800.355100 | 7th Floor | 7d | 2026-03-13 | 2026-03-19 | 2176 |  | Sector-44 Noida(2) | 9371614 |
| 2178 | 36900.37000.42300.42900.43200.47800.355200 | 8th Floor | 7d | 2026-03-20 | 2026-03-26 | 2177 |  | Sector-44 Noida(2) | 9371624 |
| 2179 | 36900.37000.42300.42900.43200.47800.355300 | 9th Floor | 7d | 2026-03-27 | 2026-04-02 | 2178 |  | Sector-44 Noida(2) | 9371634 |
| 2180 | 36900.37000.42300.42900.43200.47800.355400 | 10th Floor | 7d | 2026-04-03 | 2026-04-09 | 2179 |  | Sector-44 Noida(2) | 9371644 |
| 2181 | 36900.37000.42300.42900.43200.47800.355500 | 11th Floor | 7d | 2026-04-10 | 2026-04-16 | 2180 |  | Sector-44 Noida(2) | 9371654 |
| 2182 | 36900.37000.42300.42900.43200.47800.355600 | 12th Floor | 7d | 2026-04-17 | 2026-04-23 | 2181 |  | Sector-44 Noida(2) | 9371664 |
| 2183 | 36900.37000.42300.42900.43200.47800.355700 | 13th Floor | 7d | 2026-04-24 | 2026-04-30 | 2182 |  | Sector-44 Noida(2) | 9371674 |
| 2184 | 36900.37000.42300.42900.43200.47800.355800 | 14th Floor | 7d | 2026-05-01 | 2026-05-07 | 2183 |  | Sector-44 Noida(2) | 9371684 |
| 2185 | 36900.37000.42300.42900.43200.47800.355900 | 15th Floor | 7d | 2026-05-08 | 2026-05-14 | 2184 |  | Sector-44 Noida(2) | 9371694 |
| 2186 | 36900.37000.42300.42900.43200.47800.356000 | 16th Floor | 7d | 2026-05-15 | 2026-05-21 | 2185 |  | Sector-44 Noida(2) | 9371704 |
| 2187 | 36900.37000.42300.42900.43200.47800.356100 | 17th Floor | 7d | 2026-05-22 | 2026-05-28 | 2186 |  | Sector-44 Noida(2) | 9371714 |
| 2188 | 36900.37000.42300.42900.43200.47800.356200 | 18th Floor | 7d | 2026-05-29 | 2026-06-04 | 2187 |  | Sector-44 Noida(2) | 9371724 |
| 2189 | 36900.37000.42300.42900.43200.47800.356300 | 19th Floor | 7d | 2026-06-05 | 2026-06-11 | 2188 |  | Sector-44 Noida(2) | 9371734 |
| 2190 | 36900.37000.42300.42900.43200.47800.356400 | 20th Floor | 7d | 2026-06-12 | 2026-06-18 | 2189 |  | Sector-44 Noida(2) | 9371744 |
| 2191 | 36900.37000.42300.42900.43200.47800.356500 | 21st Floor | 7d | 2026-06-19 | 2026-06-25 | 2190 |  | Sector-44 Noida(2) | 9371754 |
| 2192 | 36900.37000.42300.42900.43200.47800.356600 | 22nd Floor | 7d | 2026-06-26 | 2026-07-02 | 2191 |  | Sector-44 Noida(2) | 9371764 |
| 2193 | 36900.37000.42300.42900.43200.47800.356700 | 23rd Floor | 7d | 2026-07-03 | 2026-07-09 | 2192 |  | Sector-44 Noida(2) | 9371774 |

| ID | WBS | Task | Duration | Start | Finish | Predecessors | Constraint | Calendar | Unique_Task_ID |
| --- | --- | --- | --- | --- | --- | --- | --- | --- | --- |
| 2194 | 36900.37000.42300.42900.96300 | **MEP Work** | 282d | 2026-06-23 | 2027-05-15 |  | start no earlier than 2026-06-23 | Sector-44 Noida(2) | 9362174 |
| 2195 | 36900.37000.42300.42900.96300.98500 | **Electrical Work** | 150d | 2026-06-23 | 2027-01-03 |  | start no earlier than 2026-06-23 | Sector-44 Noida(2) | 9362284 |
| 2196 | 36900.37000.42300.42900.96300.98500.356800 | Cable Tray | 30d | 2026-08-22 | 2026-09-20 | 1733 |  | Sector-44 Noida(2) | 9371784 |
| 2197 | 36900.37000.42300.42900.96300.98500.356900 | Cable, main & sub main | 30d | 2026-06-23 | 2026-07-22 | 2196FS-90d |  | Sector-44 Noida(2) | 9371794 |
| 2198 | 36900.37000.42300.42900.96300.98500.357000 | LT panel & DB | 40d | 2026-07-23 | 2026-08-31 | 2196FS-60d |  | Sector-44 Noida(2) | 9371804 |
| 2199 | 36900.37000.42300.42900.96300.98500.357100 | Earthing Works | 15d | 2026-09-21 | 2026-10-05 | 2196 |  | Sector-44 Noida(2) | 9371814 |
| 2200 | 36900.37000.42300.42900.96300.98500.357200 | Advanced Lightening Protection system | 15d | 2026-09-11 | 2026-09-25 | 2199FS-25d |  | Sector-44 Noida(2) | 9371824 |
| 2201 | 36900.37000.42300.42900.96300.98500.357300 | Energy meter | 15d | 2026-07-23 | 2026-08-06 | 2197 |  | Sector-44 Noida(2) | 9371834 |
| 2202 | 36900.37000.42300.42900.96300.98500.357400 | Inverter / UPS | 10d | 2026-09-01 | 2026-09-10 | 2197, 2198, 2201FS-5d |  | Sector-44 Noida(2) | 9371844 |
| 2203 | 36900.37000.42300.42900.96300.98500.357500 | HVAC & Exhaust fan | 30d | 2026-08-22 | 2026-09-20 | 2196FS-30d |  | Sector-44 Noida(2) | 9371854 |
| 2204 | 36900.37000.42300.42900.96300.98500.357600 | FTTH | 10d | 2026-08-07 | 2026-08-16 | 2198FS-25d |  | Sector-44 Noida(2) | 9371864 |
| 2205 | 36900.37000.42300.42900.96300.98500.357700 | Security System - FA & PA | 10d | 2026-08-07 | 2026-08-16 | 2198FS-25d |  | Sector-44 Noida(2) | 9371874 |
| 2206 | 36900.37000.42300.42900.96300.98500.357800 | T&C of complete system | 15d | 2026-12-20 | 2027-01-03 | 2168, 2198, 2200, 2201, 2202, 2203, 2204, 2205 |  | Sector-44 Noida(2) | 9371884 |
| 2207 | 36900.37000.42300.42900.96300.105300 | **Plumbing work** | 102d | 2026-08-10 | 2027-01-03 |  | start no earlier than 2026-08-10 | Sector-44 Noida(2) | 9362614 |
| 2208 | 36900.37000.42300.42900.96300.105300.357900 | Terrace looping | 20d | 2026-08-10 | 2026-08-29 | 1758 |  | Sector-44 Noida(2) | 9371894 |
| 2209 | 36900.37000.42300.42900.96300.105300.358000 | Shaft Plumbing | 30d | 2026-09-16 | 2026-10-15 | 2159FS-30d, 2208 |  | Sector-44 Noida(2) | 9371904 |
| 2210 | 36900.37000.42300.42900.96300.105300.358100 | CP sanitary fixture supply | 20d | 2026-10-16 | 2026-12-19 | 2209 |  | Sector-44 Noida(2) | 9371914 |
| 2211 | 36900.37000.42300.42900.96300.105300.358200 | Cold & flushing water supply | 20d | 2026-10-16 | 2026-12-19 | 2209 |  | Sector-44 Noida(2) | 9371924 |
| 2212 | 36900.37000.42300.42900.96300.105300.358300 | Misc work | 15d | 2026-10-21 | 2026-12-19 | 2211FS-15d |  | Sector-44 Noida(2) | 9371934 |
| 2213 | 36900.37000.42300.42900.96300.105300.358400 | Installation of PHE pumps | 25d | 2026-08-30 | 2026-09-23 | 2208 |  | Sector-44 Noida(2) | 9371944 |
| 2214 | 36900.37000.42300.42900.96300.105300.358500 | T&C of complete system | 15d | 2026-12-20 | 2027-01-03 | 3417, 3418, 3419, 2208, 2209, 2211, 2212, 2213 |  | Sector-44 Noida(2) | 9371954 |
| 2215 | 36900.37000.42300.42900.96300.118600 | **Fire fighting work** | 197d | 2026-09-16 | 2027-05-15 |  | start no earlier than 2026-09-16 | Sector-44 Noida(2) | 9363514 |
| 2216 | 36900.37000.42300.42900.96300.118600.358600 | Fire hydrant work | 25d | 2026-09-16 | 2026-10-10 | 2159FS-30d |  | Sector-44 Noida(2) | 9371964 |
| 2217 | 36900.37000.42300.42900.96300.118600.358700 | Pipe connection & sprinkler installation | 15d | 2026-10-11 | 2026-10-25 | 2216 |  | Sector-44 Noida(2) | 9371974 |
| 2218 | 36900.37000.42300.42900.96300.118600.358800 | Shaft Downtake works | 25d | 2026-09-16 | 2026-10-10 | 1758, 2159FS-30d |  | Sector-44 Noida(2) | 9371984 |
| 2219 | 36900.37000.42300.42900.96300.118600.358900 | Connection to pump room | 10d | 2026-10-11 | 2026-10-20 | 2218 |  | Sector-44 Noida(2) | 9371994 |
| 2220 | 36900.37000.42300.42900.96300.118600.359000 | Installation of FF pumps | 25d | 2026-10-11 | 2026-12-19 | 2216, 2218 |  | Sector-44 Noida(2) | 9372004 |
| 2221 | 36900.37000.42300.42900.96300.118600.359100 | T&C of complete system | 87d | 2027-02-18 | 2027-05-15 | 3420, 2158, 2163, 2169FS-21d, 2217, 2219, 2220, 2139 |  | Sector-44 Noida(2) | 9372014 |

| ID | WBS | Task | Duration | Start | Finish | Predecessors | Complete | Constraint | Calendar | Unique_Task_ID |
| --- | --- | --- | --- | --- | --- | --- | --- | --- | --- | --- |
| 2222 | 36900.37000.42300.42900.96300.186200 | **Lift work** | 87d | 2026-08-20 | 2026-12-29 |  |  | start no earlier than 2026-08-20 | Sector-44 Noida(2) | 9365884 |
| 2223 | 36900.37000.42300.42900.96300.186200.359200 | Lift Shaft/Pit Handover | 12d | 2026-08-20 | 2026-08-31 | 1759 |  |  | Sector-44 Noida(2) | 9372024 |
| 2224 | 36900.37000.42300.42900.96300.186200.359300 | Lift installation work | 55d | 2026-09-01 | 2026-10-25 | 2223 |  |  | Sector-44 Noida(2) | 9372034 |
| 2225 | 36900.37000.42300.42900.96300.186200.359400 | Lift testing and commissioning | 20d | 2026-10-26 | 2026-12-29 | 2224 |  |  | Sector-44 Noida(2) | 9372044 |
| 2226 | 36900.37000.42300.42900.127800 | **External Paint Works** | 80d | 2026-08-10 | 2026-10-28 |  |  | start no earlier than 2026-08-10 | Sector-44 Noida(2) | 9364304 |
| 2227 | 36900.37000.42300.42900.127800.248700 | Surface prepration | 30d | 2026-08-10 | 2026-09-08 | 1758 |  |  | Sector-44 Noida(2) | 9367774 |
| 2228 | 36900.37000.42300.42900.127800.248800 | External Painting (Primer, texture & first coat) | 50d | 2026-09-09 | 2026-10-28 | 2227 |  |  | Sector-44 Noida(2) | 9367784 |
| 2229 | 36900.37000.42300.42900.127800.248900 | Final coat of painting | 40d | 2026-08-20 | 2026-09-28 | 2228FS-70d |  |  | Sector-44 Noida(2) | 9367794 |
| 2230 | 36900.37000.42300.42900.127800.249000 | Misc. work | 20d | 2026-09-09 | 2026-09-28 | 2227 |  |  | Sector-44 Noida(2) | 9367804 |
| 2231 | 36900.37000.42300.42900.220700 | OC Application/Readiness | 1d | 2027-05-16 | 2027-05-16 | 2206, 2214, 2221, 2225, 2155, 2193, 2152, 2161, 2162, 2164, 3421 |  |  | Sector-44 Noida(2) | 9366254 |
| 2232 | 36900.37000.42300.42900.220800 | OC Receipt | 60d | 2027-05-17 | 2027-07-15 | 2231, 1549, 1550, 1558, 1559 |  |  | Sector-44 Noida(2) | 9366264 |
| 2233 | 36900.37000.42300.42900.124400 | **Post OC Activities** | 205d | 2027-06-16 | 2028-02-20 |  |  | start no earlier than 2027-06-16 | Sector-44 Noida(2) | 9364244 |
| 2234 | 36900.37000.42300.42900.124400.249100 | CP & Sanitaryware installation | 120d | 2027-06-16 | 2027-10-13 | 2232FS-30d, 2210 |  |  | Sector-44 Noida(2) | 9367814 |
| 2235 | 36900.37000.42300.42900.124400.249200 | Electrical Fixtures And Fittings installations | 120d | 2027-06-16 | 2027-10-13 | 2232FS-30d |  |  | Sector-44 Noida(2) | 9367824 |
| 2236 | 36900.37000.42300.42900.124400.249300 | Final Coat Paint Internal | 90d | 2027-06-16 | 2027-09-13 | 2232FS-30d |  |  | Sector-44 Noida(2) | 9367834 |
| 2237 | 36900.37000.42300.42900.124400.249400 | Split AC Units installation | 100d | 2027-09-29 | 2028-02-20 | 2236FS+15d |  |  | Sector-44 Noida(2) | 9367844 |
| 2238 | 36900.37000.42300.42900.124400.249500 | Wooden Flooring | 180d | 2027-06-16 | 2028-01-26 | 2232FS-30d |  |  | Sector-44 Noida(2) | 9367854 |
| 2239 | 36900.37000.42300.42900.220900 | Offer to possession | 150d | 2028-02-21 | 2028-07-19 | 2232FS+120d, 2230, 2234, 2235, 2237, 2238 |  |  | Sector-44 Noida(2) | 9366274 |
| 2240 | 36900.37000.37700 | **Tower-4 (2B+S+P+38)** | 1354d | 2025-01-24 | 2029-04-06 |  |  | start no earlier than 2025-01-24 | Sector-44 Noida(2) | 9323554 |
| 2241 | 36900.37000.37700.118800 | **Soldier Piling,RCC Piling & Excavation work** | 171d | 2025-01-24 | 2025-07-13 |  | 34% | start no earlier than 2025-01-24 | Sector-44 Noida(2) | 9362654 |
| 2242 | 36900.37000.37700.118800.127900 | **Till 2.5 Mtr** | 88d | 2025-01-24 | 2025-04-21 |  | 77% | start no earlier than 2025-01-24 | Sector-44 Noida(2) | 9365634 |
| 2243 | 36900.37000.37700.118800.127900.197000 | H beam pile driving - 12m | 26d | 2025-01-24 | 2025-03-11 | 41 | 100% | start no earlier than 2025-01-24 | Sector-44 Noida(2) | 9367864 |
| 2244 | 36900.37000.37700.118800.127900.196900 | Excavation from NGL to 2.5m | 36d | 2025-01-24 | 2025-03-23 | 2243FS-47d | 100% | start no earlier than 2025-01-24 | Sector-44 Noida(2) | 9367874 |
| 2245 | 36900.37000.37700.118800.127900.196800 | Plank installation & anchoring till 2.5m | 30d | 2025-03-20 | 2025-04-21 | 2244FS-15d | 30% |  | Sector-44 Noida(2) | 9367884 |

| ID | WBS | Task | Duration | Start | Finish | Predecessors | Constraint | Calendar | Unique_Task_ID |
| --- | --- | --- | --- | --- | --- | --- | --- | --- | --- |
| 2246 | 36900.37000.37700.118800.189900 | **2.5 mtrs till 5 mtrs** | 36d | 2025-04-22 | 2025-05-27 |  | start no earlier than 2025-04-22 | Sector-44 Noida(2) | 9366094 |
| 2247 | 36900.37000.37700.118800.189900.249600 | Excavation from 2.5m till 5m | 26d | 2025-04-22 | 2025-05-17 | 2245 |  | Sector-44 Noida(2) | 9367894 |
| 2248 | 36900.37000.37700.118800.189900.249700 | Plank installation & anchoring till 2.5m till 5m | 25d | 2025-05-03 | 2025-05-27 | 2247FS-15d |  | Sector-44 Noida(2) | 9367904 |
| 2249 | 36900.37000.37700.118800.189800 | **12 mts till NTA fotting bottom** | 23d | 2025-05-26 | 2025-06-17 |  | start no earlier than 2025-05-26 | Sector-44 Noida(2) | 9366104 |
| 2250 | 36900.37000.37700.118800.189800.249800 | Excavation from 12m to fotting PCC bottom | 13d | 2025-05-28 | 2025-06-09 | 2248 |  | Sector-44 Noida(2) | 9367914 |
| 2251 | 36900.37000.37700.118800.189800.249900 | Plank installation & anchoring from 12m to footing PCC bottom | 23d | 2025-05-26 | 2025-06-17 | 2250FS-15d |  | Sector-44 Noida(2) | 9367924 |
| 2252 | 36900.37000.37700.118800.195300 | **Dummy Basement** | 25d | 2025-06-19 | 2025-07-13 |  | start no earlier than 2025-06-19 | Sector-44 Noida(2) | 9366174 |
| 2253 | 36900.37000.37700.118800.195300.250000 | Dummy Basement | 25d | 2025-06-19 | 2025-07-13 | 2251FS+1d |  | Sector-44 Noida(2) | 9367934 |
| 2254 | 36900.37000.37700.87700 | **Sub-Structure works** | 261d | 2025-07-14 | 2026-05-15 |  | start no earlier than 2025-07-14 | Sector-44 Noida(2) | 9362064 |
| 2255 | 36900.37000.37700.87700.128000 | **Soil bed preparation** | 6d | 2025-07-14 | 2025-07-19 |  | start no earlier than 2025-07-14 | Sector-44 Noida(2) | 9364314 |
| 2256 | 36900.37000.37700.87700.128000.250100 | Excavation completion | 2d | 2025-07-14 | 2025-07-15 | 2253 |  | Sector-44 Noida(2) | 9367944 |
| 2257 | 36900.37000.37700.87700.128000.250200 | Surface dressing | 2d | 2025-07-16 | 2025-07-17 | 2256 |  | Sector-44 Noida(2) | 9367954 |
| 2258 | 36900.37000.37700.87700.128000.250300 | ATT | 1d | 2025-07-18 | 2025-07-18 | 2257 |  | Sector-44 Noida(2) | 9367964 |
| 2259 | 36900.37000.37700.87700.128000.250400 | PCC | 1d | 2025-07-19 | 2025-07-19 | 2256FF, 2257SF, 2258 |  | Sector-44 Noida(2) | 9367974 |
| 2260 | 36900.37000.37700.87700.102400 | **RCC Works** | 70d | 2025-07-20 | 2025-09-27 |  | start no earlier than 2025-07-20 | Sector-44 Noida(2) | 9362374 |
| 2261 | 36900.37000.37700.87700.102400.185200 | **Raft** | 20d | 2025-07-20 | 2025-08-08 |  | start no earlier than 2025-07-20 | Sector-44 Noida(2) | 9365824 |
| 2262 | 36900.37000.37700.87700.102400.185200.359500 | Reinforcement Work | 18d | 2025-07-20 | 2025-08-06 | 2259 |  | Sector-44 Noida(2) | 9372054 |
| 2263 | 36900.37000.37700.87700.102400.185200.359600 | Shuttering work | 10d | 2025-07-28 | 2025-08-06 | 2262FS-10d |  | Sector-44 Noida(2) | 9372064 |
| 2264 | 36900.37000.37700.87700.102400.185200.359700 | Concreteing work | 2d | 2025-08-07 | 2025-08-08 | 2262FF, 2263 |  | Sector-44 Noida(2) | 9372074 |
| 2265 | 36900.37000.37700.87700.102400.123400 | **Basement-2 Roof Slab** | 25d | 2025-08-09 | 2025-09-02 |  | start no earlier than 2025-08-09 | Sector-44 Noida(2) | 9364064 |
| 2266 | 36900.37000.37700.87700.102400.123400.186600 | **B2 Roof Slab** | 25d | 2025-08-09 | 2025-09-02 |  | start no earlier than 2025-08-09 | Sector-44 Noida(2) | 9365694 |
| 2267 | 36900.37000.37700.87700.102400.123400.186600.726500 | Shuttering Work | 17d | 2025-08-09 | 2025-08-25 | 2264 |  | Sector-44 Noida(2) | 9388274 |
| 2268 | 36900.37000.37700.87700.102400.123400.186600.726600 | Reinforcement Work | 12d | 2025-08-21 | 2025-09-01 | 2267FS-5d |  | Sector-44 Noida(2) | 9388284 |
| 2269 | 36900.37000.37700.87700.102400.123400.186600.726700 | Concreteing work | 1d | 2025-09-02 | 2025-09-02 | 2267FF, 2268 |  | Sector-44 Noida(2) | 9388294 |

| ID | WBS | Task | Duration | Start | Finish | Predecessors | Constraint | Calendar | Unique_Task_ID |
| --- | --- | --- | --- | --- | --- | --- | --- | --- | --- |
| 2270 | 36900.37000.37700.87700.102400.123300 | **Basement-1 Roof Slab** | 25d | 2025-09-03 | 2025-09-27 |  | start no earlier than 2025-09-03 | Sector-44 Noida(2) | 9364034 |
| 2271 | 36900.37000.37700.87700.102400.123300.186500 | **B1 Roof Slab** | 25d | 2025-09-03 | 2025-09-27 |  | start no earlier than 2025-09-03 | Sector-44 Noida(2) | 9365704 |
| 2272 | 36900.37000.37700.87700.102400.123300.186500.726800 | Shuttering Work | 17d | 2025-09-03 | 2025-09-19 | 2269 |  | Sector-44 Noida(2) | 9388304 |
| 2273 | 36900.37000.37700.87700.102400.123300.186500.726900 | Reinforcement Work | 12d | 2025-09-15 | 2025-09-26 | 2272FS-5d |  | Sector-44 Noida(2) | 9388314 |
| 2274 | 36900.37000.37700.87700.102400.123300.186500.727000 | Concreteing work | 1d | 2025-09-27 | 2025-09-27 | 2272FF, 2273 |  | Sector-44 Noida(2) | 9388324 |
| 2275 | 36900.37000.37700.87700.101100 | **Sub structure finishing works** | 140d | 2025-12-27 | 2026-05-15 |  | start no earlier than 2025-12-27 | Sector-44 Noida(2) | 9362274 |
| 2276 | 36900.37000.37700.87700.101100.104100 | **Basement-2** | 110d | 2025-12-27 | 2026-04-15 |  | start no earlier than 2025-12-27 | Sector-44 Noida(2) | 9362434 |
| 2277 | 36900.37000.37700.87700.101100.104100.359800 | Masonary | 30d | 2025-12-27 | 2026-01-25 | 2274FS+45d |  | Sector-44 Noida(2) | 9372084 |
| 2278 | 36900.37000.37700.87700.101100.104100.359900 | Structural Steel | 30d | 2025-12-27 | 2026-01-25 | 2274FS+45d |  | Sector-44 Noida(2) | 9372094 |
| 2279 | 36900.37000.37700.87700.101100.104100.360000 | Plaster | 30d | 2026-01-26 | 2026-02-24 | 2277, 2278 |  | Sector-44 Noida(2) | 9372104 |
| 2280 | 36900.37000.37700.87700.101100.104100.360100 | White Wash | 30d | 2026-02-25 | 2026-03-26 | 2279 |  | Sector-44 Noida(2) | 9372114 |
| 2281 | 36900.37000.37700.87700.101100.104100.360200 | VDF | 60d | 2026-01-11 | 2026-03-11 | 2279FS-45d |  | Sector-44 Noida(2) | 9372124 |
| 2282 | 36900.37000.37700.87700.101100.104100.360300 | Drain & Sump (incl. gratings) | 60d | 2026-02-10 | 2026-04-10 | 2281FS-30d |  | Sector-44 Noida(2) | 9372134 |
| 2283 | 36900.37000.37700.87700.101100.104100.360400 | Car parking marking | 30d | 2026-03-12 | 2026-04-10 | 2280FS-15d |  | Sector-44 Noida(2) | 9372144 |
| 2284 | 36900.37000.37700.87700.101100.104100.360500 | Signages | 30d | 2026-03-17 | 2026-04-15 | 2277FF, 2278FF, 2279FF, 2280FS-10d, 2281FF, 2282FF, 2283FF |  | Sector-44 Noida(2) | 9372154 |
| 2285 | 36900.37000.37700.87700.101100.104200 | **Basement-1** | 110d | 2026-01-26 | 2026-05-15 |  | start no earlier than 2026-01-26 | Sector-44 Noida(2) | 9362424 |
| 2286 | 36900.37000.37700.87700.101100.104200.360600 | Masonary | 30d | 2026-01-26 | 2026-02-24 | 2277 |  | Sector-44 Noida(2) | 9372164 |
| 2287 | 36900.37000.37700.87700.101100.104200.360700 | Structural Steel | 30d | 2026-01-26 | 2026-02-24 | 2277 |  | Sector-44 Noida(2) | 9372174 |
| 2288 | 36900.37000.37700.87700.101100.104200.360800 | Plaster | 30d | 2026-02-25 | 2026-03-26 | 2286, 2287 |  | Sector-44 Noida(2) | 9372184 |
| 2289 | 36900.37000.37700.87700.101100.104200.360900 | White Wash | 30d | 2026-03-27 | 2026-04-25 | 2288 |  | Sector-44 Noida(2) | 9372194 |
| 2290 | 36900.37000.37700.87700.101100.104200.361000 | VDF | 60d | 2026-02-10 | 2026-04-10 | 2288FS-45d |  | Sector-44 Noida(2) | 9372204 |
| 2291 | 36900.37000.37700.87700.101100.104200.361100 | Drain & Sump (incl. gratings) | 60d | 2026-03-12 | 2026-05-10 | 2290FS-30d |  | Sector-44 Noida(2) | 9372214 |
| 2292 | 36900.37000.37700.87700.101100.104200.361200 | Car parking marking | 30d | 2026-04-11 | 2026-05-10 | 2289FS-15d |  | Sector-44 Noida(2) | 9372224 |
| 2293 | 36900.37000.37700.87700.101100.104200.361300 | Signages | 30d | 2026-04-16 | 2026-05-15 | 2286FF, 2287FF, 2288FF, 2289FS-10d, 2290FF, 2291FF, 2292FF |  | Sector-44 Noida(2) | 9372234 |

| ID | WBS | Task | Duration | Start | Finish | Predecessors | Constraint | Calendar | Unique_Task_ID |
| --- | --- | --- | --- | --- | --- | --- | --- | --- | --- |
| 2294 | 36900.37000.37700.37800 | **Super structure works** | 1107d | 2025-09-28 | 2029-04-06 |  | start no earlier than 2025-09-28 | Sector-44 Noida(2) | 9323564 |
| 2295 | 36900.37000.37700.37800.42600 | **RCC Works** | 468d | 2025-09-28 | 2027-04-08 |  | start no earlier than 2025-09-28 | Sector-44 Noida(2) | 9360704 |
| 2296 | 36900.37000.37700.37800.42600.123200 | **Stilt/GF Slab** | 25d | 2025-09-28 | 2025-10-22 |  | start no earlier than 2025-09-28 | Sector-44 Noida(2) | 9364024 |
| 2297 | 36900.37000.37700.37800.42600.123200.186000 | **Stilt/GF Slab** | 25d | 2025-09-28 | 2025-10-22 |  | start no earlier than 2025-09-28 | Sector-44 Noida(2) | 9365724 |
| 2298 | 36900.37000.37700.37800.42600.123200.186000.727100 | Shuttering Work | 17d | 2025-09-28 | 2025-10-14 | 2274 |  | Sector-44 Noida(2) | 9388334 |
| 2299 | 36900.37000.37700.37800.42600.123200.186000.727200 | Reinforcement Work | 12d | 2025-10-10 | 2025-10-21 | 2298FS-5d |  | Sector-44 Noida(2) | 9388344 |
| 2300 | 36900.37000.37700.37800.42600.123200.186000.727300 | Concreteing work | 1d | 2025-10-22 | 2025-10-22 | 2298FF, 2299 |  | Sector-44 Noida(2) | 9388354 |
| 2301 | 36900.37000.37700.37800.42600.118200 | **Podium-1 Slab** | 25d | 2025-10-23 | 2025-12-31 |  | start no earlier than 2025-10-23 | Sector-44 Noida(2) | 9363524 |
| 2302 | 36900.37000.37700.37800.42600.118200.177400 | **Podium-1 Slab** | 25d | 2025-10-23 | 2025-12-31 |  | start no earlier than 2025-10-23 | Sector-44 Noida(2) | 9365164 |
| 2303 | 36900.37000.37700.37800.42600.118200.177400.727400 | Shuttering Work | 17d | 2025-10-23 | 2025-12-23 | 2300 |  | Sector-44 Noida(2) | 9388364 |
| 2304 | 36900.37000.37700.37800.42600.118200.177400.727500 | Reinforcement Work | 12d | 2025-12-19 | 2025-12-30 | 2303FS-5d |  | Sector-44 Noida(2) | 9388374 |
| 2305 | 36900.37000.37700.37800.42600.118200.177400.727600 | Conduiting work | 1d | 2025-12-30 | 2025-12-30 | 2304FS-1d |  | Sector-44 Noida(2) | 9388384 |
| 2306 | 36900.37000.37700.37800.42600.118200.177400.727700 | Concreteing work | 1d | 2025-12-31 | 2025-12-31 | 2303FF, 2304FF, 2305 |  | Sector-44 Noida(2) | 9388394 |
| 2307 | 36900.37000.37700.37800.42600.118100 | **1st Floor Slab** | 24d | 2026-01-01 | 2026-01-24 |  | start no earlier than 2026-01-01 | Sector-44 Noida(2) | 9363534 |
| 2308 | 36900.37000.37700.37800.42600.118100.177500 | **1st Floor Slab** | 24d | 2026-01-01 | 2026-01-24 |  | start no earlier than 2026-01-01 | Sector-44 Noida(2) | 9365174 |
| 2309 | 36900.37000.37700.37800.42600.118100.177500.727800 | Shuttering Work | 16d | 2026-01-01 | 2026-01-16 | 2306 |  | Sector-44 Noida(2) | 9388404 |
| 2310 | 36900.37000.37700.37800.42600.118100.177500.727900 | Reinforcement Work | 12d | 2026-01-12 | 2026-01-23 | 2309FS-5d |  | Sector-44 Noida(2) | 9388414 |
| 2311 | 36900.37000.37700.37800.42600.118100.177500.728000 | Conduiting work | 1d | 2026-01-23 | 2026-01-23 | 2310FS-1d |  | Sector-44 Noida(2) | 9388424 |
| 2312 | 36900.37000.37700.37800.42600.118100.177500.728100 | Concreteing work | 1d | 2026-01-24 | 2026-01-24 | 2309FF, 2310FF, 2311 |  | Sector-44 Noida(2) | 9388434 |
| 2313 | 36900.37000.37700.37800.42600.118000 | **2nd Floor Slab (1st MIVAN Setup)** | 21d | 2026-01-25 | 2026-02-14 |  | start no earlier than 2026-01-25 | Sector-44 Noida(2) | 9363544 |
| 2314 | 36900.37000.37700.37800.42600.118000.177600 | **2nd Floor Slab** | 21d | 2026-01-25 | 2026-02-14 |  | start no earlier than 2026-01-25 | Sector-44 Noida(2) | 9365184 |
| 2315 | 36900.37000.37700.37800.42600.118000.177600.728200 | Shuttering Work | 13d | 2026-01-25 | 2026-02-06 | 2312 |  | Sector-44 Noida(2) | 9388444 |
| 2316 | 36900.37000.37700.37800.42600.118000.177600.728300 | Reinforcement Work | 10d | 2026-02-04 | 2026-02-13 | 2315FS-3d |  | Sector-44 Noida(2) | 9388454 |
| 2317 | 36900.37000.37700.37800.42600.118000.177600.728400 | Conduiting work | 1d | 2026-02-13 | 2026-02-13 | 2316FS-1d |  | Sector-44 Noida(2) | 9388464 |
| 2318 | 36900.37000.37700.37800.42600.118000.177600.728500 | Concreteing work | 1d | 2026-02-14 | 2026-02-14 | 2315FF, 2316FF, 2317 |  | Sector-44 Noida(2) | 9388474 |

| ID | WBS | Task | Duration | Start | Finish | Predecessors | Constraint | Calendar | Unique_Task_ID |
| --- | --- | --- | --- | --- | --- | --- | --- | --- | --- |
| 2319 | 36900.37000.37700.37800.42600.117900 | **3rd Floor Slab** | 15d | 2026-02-15 | 2026-03-01 |  | start no earlier than 2026-02-15 | Sector-44 Noida(2) | 9363554 |
| 2320 | 36900.37000.37700.37800.42600.117900.177700 | **3rd Floor Slab** | 15d | 2026-02-15 | 2026-03-01 |  | start no earlier than 2026-02-15 | Sector-44 Noida(2) | 9365194 |
| 2321 | 36900.37000.37700.37800.42600.117900.177700.728600 | Shuttering Work | 11d | 2026-02-15 | 2026-02-25 | 2318 |  | Sector-44 Noida(2) | 9388484 |
| 2322 | 36900.37000.37700.37800.42600.117900.177700.728700 | Reinforcement Work | 6d | 2026-02-23 | 2026-02-28 | 2321FS-3d |  | Sector-44 Noida(2) | 9388494 |
| 2323 | 36900.37000.37700.37800.42600.117900.177700.728800 | Conduiting work | 1d | 2026-02-28 | 2026-02-28 | 2322FS-1d |  | Sector-44 Noida(2) | 9388504 |
| 2324 | 36900.37000.37700.37800.42600.117900.177700.728900 | Concreteing work | 1d | 2026-03-01 | 2026-03-01 | 2321FF, 2322FF, 2323 |  | Sector-44 Noida(2) | 9388514 |
| 2325 | 36900.37000.37700.37800.42600.117800 | **4th Floor Slab** | 9d | 2026-03-02 | 2026-03-10 |  | start no earlier than 2026-03-02 | Sector-44 Noida(2) | 9363564 |
| 2326 | 36900.37000.37700.37800.42600.117800.177800 | **4th Floor Slab** | 9d | 2026-03-02 | 2026-03-10 |  | start no earlier than 2026-03-02 | Sector-44 Noida(2) | 9365204 |
| 2327 | 36900.37000.37700.37800.42600.117800.177800.729000 | Shuttering Work | 8d | 2026-03-02 | 2026-03-09 | 2324 |  | Sector-44 Noida(2) | 9388524 |
| 2328 | 36900.37000.37700.37800.42600.117800.177800.729100 | Reinforcement Work | 3d | 2026-03-07 | 2026-03-09 | 2327FS-3d |  | Sector-44 Noida(2) | 9388534 |
| 2329 | 36900.37000.37700.37800.42600.117800.177800.729200 | Conduiting work | 1d | 2026-03-09 | 2026-03-09 | 2328FS-1d |  | Sector-44 Noida(2) | 9388544 |
| 2330 | 36900.37000.37700.37800.42600.117800.177800.729300 | Concreteing work | 1d | 2026-03-10 | 2026-03-10 | 2327FF, 2328FF, 2329 |  | Sector-44 Noida(2) | 9388554 |
| 2331 | 36900.37000.37700.37800.42600.117700 | **5th Floor Slab** | 9d | 2026-03-11 | 2026-03-19 |  | start no earlier than 2026-03-11 | Sector-44 Noida(2) | 9363574 |
| 2332 | 36900.37000.37700.37800.42600.117700.177900 | **5th Floor Slab** | 9d | 2026-03-11 | 2026-03-19 |  | start no earlier than 2026-03-11 | Sector-44 Noida(2) | 9365214 |
| 2333 | 36900.37000.37700.37800.42600.117700.177900.729400 | Shuttering Work | 8d | 2026-03-11 | 2026-03-18 | 2330 |  | Sector-44 Noida(2) | 9388564 |
| 2334 | 36900.37000.37700.37800.42600.117700.177900.729500 | Reinforcement Work | 3d | 2026-03-16 | 2026-03-18 | 2333FS-3d |  | Sector-44 Noida(2) | 9388574 |
| 2335 | 36900.37000.37700.37800.42600.117700.177900.729600 | Conduiting work | 1d | 2026-03-18 | 2026-03-18 | 2334FS-1d |  | Sector-44 Noida(2) | 9388584 |
| 2336 | 36900.37000.37700.37800.42600.117700.177900.729700 | Concreteing work | 1d | 2026-03-19 | 2026-03-19 | 2333FF, 2334FF, 2335 |  | Sector-44 Noida(2) | 9388594 |
| 2337 | 36900.37000.37700.37800.42600.117600 | **6th Floor Slab** | 9d | 2026-03-20 | 2026-03-28 |  | start no earlier than 2026-03-20 | Sector-44 Noida(2) | 9363584 |
| 2338 | 36900.37000.37700.37800.42600.117600.178000 | **6th Floor Slab** | 9d | 2026-03-20 | 2026-03-28 |  | start no earlier than 2026-03-20 | Sector-44 Noida(2) | 9365224 |
| 2339 | 36900.37000.37700.37800.42600.117600.178000.729800 | Shuttering Work | 8d | 2026-03-20 | 2026-03-27 | 2336 |  | Sector-44 Noida(2) | 9388604 |
| 2340 | 36900.37000.37700.37800.42600.117600.178000.729900 | Reinforcement Work | 3d | 2026-03-25 | 2026-03-27 | 2339FS-3d |  | Sector-44 Noida(2) | 9388614 |
| 2341 | 36900.37000.37700.37800.42600.117600.178000.730000 | Conduiting work | 1d | 2026-03-27 | 2026-03-27 | 2340FS-1d |  | Sector-44 Noida(2) | 9388624 |
| 2342 | 36900.37000.37700.37800.42600.117600.178000.730100 | Concreteing work | 1d | 2026-03-28 | 2026-03-28 | 2339FF, 2340FF, 2341 |  | Sector-44 Noida(2) | 9388634 |

| ID | WBS | Task | Duration | Start | Finish | Predecessors | Constraint | Calendar | Unique_Task_ID |
| --- | --- | --- | --- | --- | --- | --- | --- | --- | --- |
| 2343 | 36900.37000.37700.37800.42600.117500 | **7th Floor Slab** | 9d | 2026-03-29 | 2026-04-06 |  | start no earlier than 2026-03-29 | Sector-44 Noida(2) | 9363594 |
| 2344 | 36900.37000.37700.37800.42600.117500.178100 | **7th Floor Slab** | 9d | 2026-03-29 | 2026-04-06 |  | start no earlier than 2026-03-29 | Sector-44 Noida(2) | 9365234 |
| 2345 | 36900.37000.37700.37800.42600.117500.178100.730200 | Shuttering Work | 8d | 2026-03-29 | 2026-04-05 | 2342 |  | Sector-44 Noida(2) | 9388644 |
| 2346 | 36900.37000.37700.37800.42600.117500.178100.730300 | Reinforcement Work | 3d | 2026-04-03 | 2026-04-05 | 2345FS-3d |  | Sector-44 Noida(2) | 9388654 |
| 2347 | 36900.37000.37700.37800.42600.117500.178100.730400 | Conduiting work | 1d | 2026-04-05 | 2026-04-05 | 2346FS-1d |  | Sector-44 Noida(2) | 9388664 |
| 2348 | 36900.37000.37700.37800.42600.117500.178100.730500 | Concreteing work | 1d | 2026-04-06 | 2026-04-06 | 2345FF, 2346FF, 2347 |  | Sector-44 Noida(2) | 9388674 |
| 2349 | 36900.37000.37700.37800.42600.117400 | **8th Floor Slab** | 9d | 2026-04-07 | 2026-04-15 |  | start no earlier than 2026-04-07 | Sector-44 Noida(2) | 9363604 |
| 2350 | 36900.37000.37700.37800.42600.117400.178200 | **8th Floor Slab** | 9d | 2026-04-07 | 2026-04-15 |  | start no earlier than 2026-04-07 | Sector-44 Noida(2) | 9365244 |
| 2351 | 36900.37000.37700.37800.42600.117400.178200.730600 | Shuttering Work | 8d | 2026-04-07 | 2026-04-14 | 2348 |  | Sector-44 Noida(2) | 9388684 |
| 2352 | 36900.37000.37700.37800.42600.117400.178200.730700 | Reinforcement Work | 3d | 2026-04-12 | 2026-04-14 | 2351FS-3d |  | Sector-44 Noida(2) | 9388694 |
| 2353 | 36900.37000.37700.37800.42600.117400.178200.730800 | Conduiting work | 1d | 2026-04-14 | 2026-04-14 | 2352FS-1d |  | Sector-44 Noida(2) | 9388704 |
| 2354 | 36900.37000.37700.37800.42600.117400.178200.730900 | Concreteing work | 1d | 2026-04-15 | 2026-04-15 | 2351FF, 2352FF, 2353 |  | Sector-44 Noida(2) | 9388714 |
| 2355 | 36900.37000.37700.37800.42600.117300 | **9th Floor Slab** | 9d | 2026-04-16 | 2026-04-24 |  | start no earlier than 2026-04-16 | Sector-44 Noida(2) | 9363614 |
| 2356 | 36900.37000.37700.37800.42600.117300.178300 | **9th Floor Slab** | 9d | 2026-04-16 | 2026-04-24 |  | start no earlier than 2026-04-16 | Sector-44 Noida(2) | 9365254 |
| 2357 | 36900.37000.37700.37800.42600.117300.178300.731000 | Shuttering Work | 8d | 2026-04-16 | 2026-04-23 | 2354 |  | Sector-44 Noida(2) | 9388724 |
| 2358 | 36900.37000.37700.37800.42600.117300.178300.731100 | Reinforcement Work | 3d | 2026-04-21 | 2026-04-23 | 2357FS-3d |  | Sector-44 Noida(2) | 9388734 |
| 2359 | 36900.37000.37700.37800.42600.117300.178300.731200 | Conduiting work | 1d | 2026-04-23 | 2026-04-23 | 2358FS-1d |  | Sector-44 Noida(2) | 9388744 |
| 2360 | 36900.37000.37700.37800.42600.117300.178300.731300 | Concreteing work | 1d | 2026-04-24 | 2026-04-24 | 2357FF, 2358FF, 2359 |  | Sector-44 Noida(2) | 9388754 |
| 2361 | 36900.37000.37700.37800.42600.117100 | **10th Floor Slab** | 9d | 2026-04-25 | 2026-05-03 |  | start no earlier than 2026-04-25 | Sector-44 Noida(2) | 9363624 |
| 2362 | 36900.37000.37700.37800.42600.117100.178400 | **10th Floor Slab** | 9d | 2026-04-25 | 2026-05-03 |  | start no earlier than 2026-04-25 | Sector-44 Noida(2) | 9365264 |
| 2363 | 36900.37000.37700.37800.42600.117100.178400.731400 | Shuttering Work | 8d | 2026-04-25 | 2026-05-02 | 2360 |  | Sector-44 Noida(2) | 9388764 |
| 2364 | 36900.37000.37700.37800.42600.117100.178400.731500 | Reinforcement Work | 3d | 2026-04-30 | 2026-05-02 | 2363FS-3d |  | Sector-44 Noida(2) | 9388774 |
| 2365 | 36900.37000.37700.37800.42600.117100.178400.731600 | Conduiting work | 1d | 2026-05-02 | 2026-05-02 | 2364FS-1d |  | Sector-44 Noida(2) | 9388784 |
| 2366 | 36900.37000.37700.37800.42600.117100.178400.731700 | Concreteing work | 1d | 2026-05-03 | 2026-05-03 | 2363FF, 2364FF, 2365 |  | Sector-44 Noida(2) | 9388794 |

| ID | WBS | Task | Duration | Start | Finish | Predecessors | Constraint | Calendar | Unique_Task_ID |
| --- | --- | --- | --- | --- | --- | --- | --- | --- | --- |
| 2367 | 36900.37000.37700.37800.42600.117000 | **11th Floor Slab** | 9d | 2026-05-04 | 2026-05-12 |  | start no earlier than 2026-05-04 | Sector-44 Noida(2) | 9363634 |
| 2368 | 36900.37000.37700.37800.42600.117000.178500 | **11th Floor Slab** | 9d | 2026-05-04 | 2026-05-12 |  | start no earlier than 2026-05-04 | Sector-44 Noida(2) | 9365274 |
| 2369 | 36900.37000.37700.37800.42600.117000.178500.731800 | Shuttering Work | 8d | 2026-05-04 | 2026-05-11 | 2366 |  | Sector-44 Noida(2) | 9388804 |
| 2370 | 36900.37000.37700.37800.42600.117000.178500.731900 | Reinforcement Work | 3d | 2026-05-09 | 2026-05-11 | 2369FS-3d |  | Sector-44 Noida(2) | 9388814 |
| 2371 | 36900.37000.37700.37800.42600.117000.178500.732000 | Conduiting work | 1d | 2026-05-11 | 2026-05-11 | 2370FS-1d |  | Sector-44 Noida(2) | 9388824 |
| 2372 | 36900.37000.37700.37800.42600.117000.178500.732100 | Concreteing work | 1d | 2026-05-12 | 2026-05-12 | 2369FF, 2370FF, 2371 |  | Sector-44 Noida(2) | 9388834 |
| 2373 | 36900.37000.37700.37800.42600.116900 | **12th Floor Slab** | 9d | 2026-05-13 | 2026-05-21 |  | start no earlier than 2026-05-13 | Sector-44 Noida(2) | 9363644 |
| 2374 | 36900.37000.37700.37800.42600.116900.178600 | **12th Floor Slab** | 9d | 2026-05-13 | 2026-05-21 |  | start no earlier than 2026-05-13 | Sector-44 Noida(2) | 9365284 |
| 2375 | 36900.37000.37700.37800.42600.116900.178600.732200 | Shuttering Work | 8d | 2026-05-13 | 2026-05-20 | 2372 |  | Sector-44 Noida(2) | 9388844 |
| 2376 | 36900.37000.37700.37800.42600.116900.178600.732300 | Reinforcement Work | 3d | 2026-05-18 | 2026-05-20 | 2375FS-3d |  | Sector-44 Noida(2) | 9388854 |
| 2377 | 36900.37000.37700.37800.42600.116900.178600.732400 | Conduiting work | 1d | 2026-05-20 | 2026-05-20 | 2376FS-1d |  | Sector-44 Noida(2) | 9388864 |
| 2378 | 36900.37000.37700.37800.42600.116900.178600.732500 | Concreteing work | 1d | 2026-05-21 | 2026-05-21 | 2375FF, 2376FF, 2377 |  | Sector-44 Noida(2) | 9388874 |
| 2379 | 36900.37000.37700.37800.42600.116800 | **13th Floor Slab** | 9d | 2026-05-22 | 2026-05-30 |  | start no earlier than 2026-05-22 | Sector-44 Noida(2) | 9363654 |
| 2380 | 36900.37000.37700.37800.42600.116800.178700 | **13th Floor Slab** | 9d | 2026-05-22 | 2026-05-30 |  | start no earlier than 2026-05-22 | Sector-44 Noida(2) | 9365294 |
| 2381 | 36900.37000.37700.37800.42600.116800.178700.732600 | Shuttering Work | 8d | 2026-05-22 | 2026-05-29 | 2378 |  | Sector-44 Noida(2) | 9388884 |
| 2382 | 36900.37000.37700.37800.42600.116800.178700.732700 | Reinforcement Work | 3d | 2026-05-27 | 2026-05-29 | 2381FS-3d |  | Sector-44 Noida(2) | 9388894 |
| 2383 | 36900.37000.37700.37800.42600.116800.178700.732800 | Conduiting work | 1d | 2026-05-29 | 2026-05-29 | 2382FS-1d |  | Sector-44 Noida(2) | 9388904 |
| 2384 | 36900.37000.37700.37800.42600.116800.178700.732900 | Concreteing work | 1d | 2026-05-30 | 2026-05-30 | 2381FF, 2382FF, 2383 |  | Sector-44 Noida(2) | 9388914 |
| 2385 | 36900.37000.37700.37800.42600.116500 | **14th Floor Slab** | 9d | 2026-05-31 | 2026-06-08 |  | start no earlier than 2026-05-31 | Sector-44 Noida(2) | 9363664 |
| 2386 | 36900.37000.37700.37800.42600.116500.178800 | **14th Floor Slab** | 9d | 2026-05-31 | 2026-06-08 |  | start no earlier than 2026-05-31 | Sector-44 Noida(2) | 9365304 |
| 2387 | 36900.37000.37700.37800.42600.116500.178800.733000 | Shuttering Work | 8d | 2026-05-31 | 2026-06-07 | 2384 |  | Sector-44 Noida(2) | 9388924 |
| 2388 | 36900.37000.37700.37800.42600.116500.178800.733100 | Reinforcement Work | 3d | 2026-06-05 | 2026-06-07 | 2387FS-3d |  | Sector-44 Noida(2) | 9388934 |
| 2389 | 36900.37000.37700.37800.42600.116500.178800.733200 | Conduiting work | 1d | 2026-06-07 | 2026-06-07 | 2388FS-1d |  | Sector-44 Noida(2) | 9388944 |
| 2390 | 36900.37000.37700.37800.42600.116500.178800.733300 | Concreteing work | 1d | 2026-06-08 | 2026-06-08 | 2387FF, 2388FF, 2389 |  | Sector-44 Noida(2) | 9388954 |

| ID | WBS | Task | Duration | Start | Finish | Predecessors | Constraint | Calendar | Unique_Task_ID |
| --- | --- | --- | --- | --- | --- | --- | --- | --- | --- |
| 2391 | 36900.37000.37700.37800.42600.116400 | **15th Floor Slab** | 9d | 2026-06-09 | 2026-06-17 |  | start no earlier than 2026-06-09 | Sector-44 Noida(2) | 9363674 |
| 2392 | 36900.37000.37700.37800.42600.116400.178900 | **15th Floor Slab** | 9d | 2026-06-09 | 2026-06-17 |  | start no earlier than 2026-06-09 | Sector-44 Noida(2) | 9365314 |
| 2393 | 36900.37000.37700.37800.42600.116400.178900.733400 | Shuttering Work | 8d | 2026-06-09 | 2026-06-16 | 2390 |  | Sector-44 Noida(2) | 9388964 |
| 2394 | 36900.37000.37700.37800.42600.116400.178900.733500 | Reinforcement Work | 3d | 2026-06-14 | 2026-06-16 | 2393FS-3d |  | Sector-44 Noida(2) | 9388974 |
| 2395 | 36900.37000.37700.37800.42600.116400.178900.733600 | Conduiting work | 1d | 2026-06-16 | 2026-06-16 | 2394FS-1d |  | Sector-44 Noida(2) | 9388984 |
| 2396 | 36900.37000.37700.37800.42600.116400.178900.733700 | Concreteing work | 1d | 2026-06-17 | 2026-06-17 | 2393FF, 2394FF, 2395 |  | Sector-44 Noida(2) | 9388994 |
| 2397 | 36900.37000.37700.37800.42600.116300 | **16th Floor Slab** | 9d | 2026-06-18 | 2026-06-26 |  | start no earlier than 2026-06-18 | Sector-44 Noida(2) | 9363684 |
| 2398 | 36900.37000.37700.37800.42600.116300.179000 | **16th Floor Slab** | 9d | 2026-06-18 | 2026-06-26 |  | start no earlier than 2026-06-18 | Sector-44 Noida(2) | 9365324 |
| 2399 | 36900.37000.37700.37800.42600.116300.179000.733800 | Shuttering Work | 8d | 2026-06-18 | 2026-06-25 | 2396 |  | Sector-44 Noida(2) | 9389004 |
| 2400 | 36900.37000.37700.37800.42600.116300.179000.733900 | Reinforcement Work | 3d | 2026-06-23 | 2026-06-25 | 2399FS-3d |  | Sector-44 Noida(2) | 9389014 |
| 2401 | 36900.37000.37700.37800.42600.116300.179000.734000 | Conduiting work | 1d | 2026-06-25 | 2026-06-25 | 2400FS-1d |  | Sector-44 Noida(2) | 9389024 |
| 2402 | 36900.37000.37700.37800.42600.116300.179000.734100 | Concreteing work | 1d | 2026-06-26 | 2026-06-26 | 2399FF, 2400FF, 2401 |  | Sector-44 Noida(2) | 9389034 |
| 2403 | 36900.37000.37700.37800.42600.116200 | **17th Floor Slab** | 9d | 2026-06-27 | 2026-07-05 |  | start no earlier than 2026-06-27 | Sector-44 Noida(2) | 9363694 |
| 2404 | 36900.37000.37700.37800.42600.116200.179100 | **17th Floor Slab** | 9d | 2026-06-27 | 2026-07-05 |  | start no earlier than 2026-06-27 | Sector-44 Noida(2) | 9365334 |
| 2405 | 36900.37000.37700.37800.42600.116200.179100.734200 | Shuttering Work | 8d | 2026-06-27 | 2026-07-04 | 2402 |  | Sector-44 Noida(2) | 9389044 |
| 2406 | 36900.37000.37700.37800.42600.116200.179100.734300 | Reinforcement Work | 3d | 2026-07-02 | 2026-07-04 | 2405FS-3d |  | Sector-44 Noida(2) | 9389054 |
| 2407 | 36900.37000.37700.37800.42600.116200.179100.734400 | Conduiting work | 1d | 2026-07-04 | 2026-07-04 | 2406FS-1d |  | Sector-44 Noida(2) | 9389064 |
| 2408 | 36900.37000.37700.37800.42600.116200.179100.734500 | Concreteing work | 1d | 2026-07-05 | 2026-07-05 | 2405FF, 2406FF, 2407 |  | Sector-44 Noida(2) | 9389074 |
| 2409 | 36900.37000.37700.37800.42600.116000 | **18th Floor Slab** | 9d | 2026-07-06 | 2026-07-14 |  | start no earlier than 2026-07-06 | Sector-44 Noida(2) | 9363704 |
| 2410 | 36900.37000.37700.37800.42600.116000.179200 | **18th Floor Slab** | 9d | 2026-07-06 | 2026-07-14 |  | start no earlier than 2026-07-06 | Sector-44 Noida(2) | 9365344 |
| 2411 | 36900.37000.37700.37800.42600.116000.179200.734600 | Shuttering Work | 8d | 2026-07-06 | 2026-07-13 | 2408 |  | Sector-44 Noida(2) | 9389084 |
| 2412 | 36900.37000.37700.37800.42600.116000.179200.734700 | Reinforcement Work | 3d | 2026-07-11 | 2026-07-13 | 2411FS-3d |  | Sector-44 Noida(2) | 9389094 |
| 2413 | 36900.37000.37700.37800.42600.116000.179200.734800 | Conduiting work | 1d | 2026-07-13 | 2026-07-13 | 2412FS-1d |  | Sector-44 Noida(2) | 9389104 |
| 2414 | 36900.37000.37700.37800.42600.116000.179200.734900 | Concreteing work | 1d | 2026-07-14 | 2026-07-14 | 2411FF, 2412FF, 2413 |  | Sector-44 Noida(2) | 9389114 |

| ID | WBS | Task | Duration | Start | Finish | Predecessors | Constraint | Calendar | Unique_Task_ID |
| --- | --- | --- | --- | --- | --- | --- | --- | --- | --- |
| 2415 | 36900.37000.37700.37800.42600.115900 | **19th Floor Slab** | 8d | 2026-07-15 | 2026-07-22 |  | start no earlier than 2026-07-15 | Sector-44 Noida(2) | 9363714 |
| 2416 | 36900.37000.37700.37800.42600.115900.179300 | **19th Floor Slab** | 8d | 2026-07-15 | 2026-07-22 |  | start no earlier than 2026-07-15 | Sector-44 Noida(2) | 9365354 |
| 2417 | 36900.37000.37700.37800.42600.115900.179300.735000 | Shuttering Work | 7d | 2026-07-15 | 2026-07-21 | 2414 |  | Sector-44 Noida(2) | 9389124 |
| 2418 | 36900.37000.37700.37800.42600.115900.179300.735100 | Reinforcement Work | 3d | 2026-07-19 | 2026-07-21 | 2417FS-3d |  | Sector-44 Noida(2) | 9389134 |
| 2419 | 36900.37000.37700.37800.42600.115900.179300.735200 | Conduiting work | 1d | 2026-07-21 | 2026-07-21 | 2418FS-1d |  | Sector-44 Noida(2) | 9389144 |
| 2420 | 36900.37000.37700.37800.42600.115900.179300.735300 | Concreteing work | 1d | 2026-07-22 | 2026-07-22 | 2417FF, 2418FF, 2419 |  | Sector-44 Noida(2) | 9389154 |
| 2421 | 36900.37000.37700.37800.42600.115800 | **20th Floor Slab** | 8d | 2026-07-23 | 2026-07-30 |  | start no earlier than 2026-07-23 | Sector-44 Noida(2) | 9363724 |
| 2422 | 36900.37000.37700.37800.42600.115800.179400 | **20th Floor Slab** | 8d | 2026-07-23 | 2026-07-30 |  | start no earlier than 2026-07-23 | Sector-44 Noida(2) | 9365364 |
| 2423 | 36900.37000.37700.37800.42600.115800.179400.735400 | Shuttering Work | 7d | 2026-07-23 | 2026-07-29 | 2420 |  | Sector-44 Noida(2) | 9389164 |
| 2424 | 36900.37000.37700.37800.42600.115800.179400.735500 | Reinforcement Work | 3d | 2026-07-27 | 2026-07-29 | 2423FS-3d |  | Sector-44 Noida(2) | 9389174 |
| 2425 | 36900.37000.37700.37800.42600.115800.179400.735600 | Conduiting work | 1d | 2026-07-29 | 2026-07-29 | 2424FS-1d |  | Sector-44 Noida(2) | 9389184 |
| 2426 | 36900.37000.37700.37800.42600.115800.179400.735700 | Concreteing work | 1d | 2026-07-30 | 2026-07-30 | 2423FF, 2424FF, 2425 |  | Sector-44 Noida(2) | 9389194 |
| 2427 | 36900.37000.37700.37800.42600.115700 | **21st Floor Slab** | 8d | 2026-07-31 | 2026-08-07 |  | start no earlier than 2026-07-31 | Sector-44 Noida(2) | 9363734 |
| 2428 | 36900.37000.37700.37800.42600.115700.179500 | **21st Floor Slab** | 8d | 2026-07-31 | 2026-08-07 |  | start no earlier than 2026-07-31 | Sector-44 Noida(2) | 9365374 |
| 2429 | 36900.37000.37700.37800.42600.115700.179500.735800 | Shuttering Work | 7d | 2026-07-31 | 2026-08-06 | 2426 |  | Sector-44 Noida(2) | 9389204 |
| 2430 | 36900.37000.37700.37800.42600.115700.179500.735900 | Reinforcement Work | 3d | 2026-08-04 | 2026-08-06 | 2429FS-3d |  | Sector-44 Noida(2) | 9389214 |
| 2431 | 36900.37000.37700.37800.42600.115700.179500.736000 | Conduiting work | 1d | 2026-08-06 | 2026-08-06 | 2430FS-1d |  | Sector-44 Noida(2) | 9389224 |
| 2432 | 36900.37000.37700.37800.42600.115700.179500.736100 | Concreteing work | 1d | 2026-08-07 | 2026-08-07 | 2429FF, 2430FF, 2431 |  | Sector-44 Noida(2) | 9389234 |
| 2433 | 36900.37000.37700.37800.42600.115500 | **22nd Floor Slab** | 8d | 2026-08-08 | 2026-08-15 |  | start no earlier than 2026-08-08 | Sector-44 Noida(2) | 9363744 |
| 2434 | 36900.37000.37700.37800.42600.115500.179600 | **22nd Floor Slab** | 8d | 2026-08-08 | 2026-08-15 |  | start no earlier than 2026-08-08 | Sector-44 Noida(2) | 9365384 |
| 2435 | 36900.37000.37700.37800.42600.115500.179600.736200 | Shuttering Work | 7d | 2026-08-08 | 2026-08-14 | 2432 |  | Sector-44 Noida(2) | 9389244 |
| 2436 | 36900.37000.37700.37800.42600.115500.179600.736300 | Reinforcement Work | 3d | 2026-08-12 | 2026-08-14 | 2435FS-3d |  | Sector-44 Noida(2) | 9389254 |
| 2437 | 36900.37000.37700.37800.42600.115500.179600.736400 | Conduiting work | 1d | 2026-08-14 | 2026-08-14 | 2436FS-1d |  | Sector-44 Noida(2) | 9389264 |
| 2438 | 36900.37000.37700.37800.42600.115500.179600.736500 | Concreteing work | 1d | 2026-08-15 | 2026-08-15 | 2435FF, 2436FF, 2437 |  | Sector-44 Noida(2) | 9389274 |

| ID | WBS | Task | Duration | Start | Finish | Predecessors | Constraint | Calendar | Unique_Task_ID |
| --- | --- | --- | --- | --- | --- | --- | --- | --- | --- |
| 2439 | 36900.37000.37700.37800.42600.115400 | **23rd Floor Slab** | 8d | 2026-08-16 | 2026-08-23 |  | start no earlier than 2026-08-16 | Sector-44 Noida(2) | 9363754 |
| 2440 | 36900.37000.37700.37800.42600.115400.179700 | **23rd Floor Slab** | 8d | 2026-08-16 | 2026-08-23 |  | start no earlier than 2026-08-16 | Sector-44 Noida(2) | 9365394 |
| 2441 | 36900.37000.37700.37800.42600.115400.179700.736600 | Shuttering Work | 7d | 2026-08-16 | 2026-08-22 | 2438 |  | Sector-44 Noida(2) | 9389284 |
| 2442 | 36900.37000.37700.37800.42600.115400.179700.736700 | Reinforcement Work | 3d | 2026-08-20 | 2026-08-22 | 2441FS-3d |  | Sector-44 Noida(2) | 9389294 |
| 2443 | 36900.37000.37700.37800.42600.115400.179700.736800 | Conduiting work | 1d | 2026-08-22 | 2026-08-22 | 2442FS-1d |  | Sector-44 Noida(2) | 9389304 |
| 2444 | 36900.37000.37700.37800.42600.115400.179700.736900 | Concreteing work | 1d | 2026-08-23 | 2026-08-23 | 2441FF, 2442FF, 2443 |  | Sector-44 Noida(2) | 9389314 |
| 2445 | 36900.37000.37700.37800.42600.115300 | **24th Floor Slab** | 8d | 2026-08-24 | 2026-08-31 |  | start no earlier than 2026-08-24 | Sector-44 Noida(2) | 9363764 |
| 2446 | 36900.37000.37700.37800.42600.115300.179800 | **24th Floor Slab** | 8d | 2026-08-24 | 2026-08-31 |  | start no earlier than 2026-08-24 | Sector-44 Noida(2) | 9365404 |
| 2447 | 36900.37000.37700.37800.42600.115300.179800.737000 | Shuttering Work | 7d | 2026-08-24 | 2026-08-30 | 2444 |  | Sector-44 Noida(2) | 9389324 |
| 2448 | 36900.37000.37700.37800.42600.115300.179800.737100 | Reinforcement Work | 3d | 2026-08-28 | 2026-08-30 | 2447FS-3d |  | Sector-44 Noida(2) | 9389334 |
| 2449 | 36900.37000.37700.37800.42600.115300.179800.737200 | Conduiting work | 1d | 2026-08-30 | 2026-08-30 | 2448FS-1d |  | Sector-44 Noida(2) | 9389344 |
| 2450 | 36900.37000.37700.37800.42600.115300.179800.737300 | Concreteing work | 1d | 2026-08-31 | 2026-08-31 | 2447FF, 2448FF, 2449 |  | Sector-44 Noida(2) | 9389354 |
| 2451 | 36900.37000.37700.37800.42600.115200 | **25th Floor Slab** | 8d | 2026-09-01 | 2026-09-08 |  | start no earlier than 2026-09-01 | Sector-44 Noida(2) | 9363774 |
| 2452 | 36900.37000.37700.37800.42600.115200.179900 | **25th Floor Slab** | 8d | 2026-09-01 | 2026-09-08 |  | start no earlier than 2026-09-01 | Sector-44 Noida(2) | 9365414 |
| 2453 | 36900.37000.37700.37800.42600.115200.179900.737400 | Shuttering Work | 7d | 2026-09-01 | 2026-09-07 | 2450 |  | Sector-44 Noida(2) | 9389364 |
| 2454 | 36900.37000.37700.37800.42600.115200.179900.737500 | Reinforcement Work | 3d | 2026-09-05 | 2026-09-07 | 2453FS-3d |  | Sector-44 Noida(2) | 9389374 |
| 2455 | 36900.37000.37700.37800.42600.115200.179900.737600 | Conduiting work | 1d | 2026-09-07 | 2026-09-07 | 2454FS-1d |  | Sector-44 Noida(2) | 9389384 |
| 2456 | 36900.37000.37700.37800.42600.115200.179900.737700 | Concreteing work | 1d | 2026-09-08 | 2026-09-08 | 2453FF, 2454FF, 2455 |  | Sector-44 Noida(2) | 9389394 |
| 2457 | 36900.37000.37700.37800.42600.114900 | **26th Floor Slab** | 8d | 2026-09-09 | 2026-09-16 |  | start no earlier than 2026-09-09 | Sector-44 Noida(2) | 9363784 |
| 2458 | 36900.37000.37700.37800.42600.114900.180000 | **26th Floor Slab** | 8d | 2026-09-09 | 2026-09-16 |  | start no earlier than 2026-09-09 | Sector-44 Noida(2) | 9365424 |
| 2459 | 36900.37000.37700.37800.42600.114900.180000.737800 | Shuttering Work | 7d | 2026-09-09 | 2026-09-15 | 2456 |  | Sector-44 Noida(2) | 9389404 |
| 2460 | 36900.37000.37700.37800.42600.114900.180000.737900 | Reinforcement Work | 3d | 2026-09-13 | 2026-09-15 | 2459FS-3d |  | Sector-44 Noida(2) | 9389414 |
| 2461 | 36900.37000.37700.37800.42600.114900.180000.738000 | Conduiting work | 1d | 2026-09-15 | 2026-09-15 | 2460FS-1d |  | Sector-44 Noida(2) | 9389424 |
| 2462 | 36900.37000.37700.37800.42600.114900.180000.738100 | Concreteing work | 1d | 2026-09-16 | 2026-09-16 | 2459FF, 2460FF, 2461 |  | Sector-44 Noida(2) | 9389434 |

| ID | WBS | Task | Duration | Start | Finish | Predecessors | Constraint | Calendar | Unique_Task_ID |
| --- | --- | --- | --- | --- | --- | --- | --- | --- | --- |
| 2463 | 36900.37000.37700.37800.42600.114600 | **27th Floor Slab** | 8d | 2026-09-17 | 2026-09-24 |  | start no earlier than 2026-09-17 | Sector-44 Noida(2) | 9363794 |
| 2464 | 36900.37000.37700.37800.42600.114600.180100 | **27th Floor Slab** | 8d | 2026-09-17 | 2026-09-24 |  | start no earlier than 2026-09-17 | Sector-44 Noida(2) | 9365434 |
| 2465 | 36900.37000.37700.37800.42600.114600.180100.738200 | Shuttering Work | 7d | 2026-09-17 | 2026-09-23 | 2462 |  | Sector-44 Noida(2) | 9389444 |
| 2466 | 36900.37000.37700.37800.42600.114600.180100.738300 | Reinforcement Work | 3d | 2026-09-21 | 2026-09-23 | 2465FS-3d |  | Sector-44 Noida(2) | 9389454 |
| 2467 | 36900.37000.37700.37800.42600.114600.180100.738400 | Conduiting work | 1d | 2026-09-23 | 2026-09-23 | 2466FS-1d |  | Sector-44 Noida(2) | 9389464 |
| 2468 | 36900.37000.37700.37800.42600.114600.180100.738500 | Concreteing work | 1d | 2026-09-24 | 2026-09-24 | 2465FF, 2466FF, 2467 |  | Sector-44 Noida(2) | 9389474 |
| 2469 | 36900.37000.37700.37800.42600.114500 | **28th Floor Slab** | 8d | 2026-09-25 | 2026-10-02 |  | start no earlier than 2026-09-25 | Sector-44 Noida(2) | 9363804 |
| 2470 | 36900.37000.37700.37800.42600.114500.180200 | **28th Floor Slab** | 8d | 2026-09-25 | 2026-10-02 |  | start no earlier than 2026-09-25 | Sector-44 Noida(2) | 9365444 |
| 2471 | 36900.37000.37700.37800.42600.114500.180200.738600 | Shuttering Work | 7d | 2026-09-25 | 2026-10-01 | 2468 |  | Sector-44 Noida(2) | 9389484 |
| 2472 | 36900.37000.37700.37800.42600.114500.180200.738700 | Reinforcement Work | 3d | 2026-09-29 | 2026-10-01 | 2471FS-3d |  | Sector-44 Noida(2) | 9389494 |
| 2473 | 36900.37000.37700.37800.42600.114500.180200.738800 | Conduiting work | 1d | 2026-10-01 | 2026-10-01 | 2472FS-1d |  | Sector-44 Noida(2) | 9389504 |
| 2474 | 36900.37000.37700.37800.42600.114500.180200.738900 | Concreteing work | 1d | 2026-10-02 | 2026-10-02 | 2471FF, 2472FF, 2473 |  | Sector-44 Noida(2) | 9389514 |
| 2475 | 36900.37000.37700.37800.42600.114400 | **29th Floor Slab** | 8d | 2026-10-03 | 2026-10-10 |  | start no earlier than 2026-10-03 | Sector-44 Noida(2) | 9363814 |
| 2476 | 36900.37000.37700.37800.42600.114400.180300 | **29th Floor Slab** | 8d | 2026-10-03 | 2026-10-10 |  | start no earlier than 2026-10-03 | Sector-44 Noida(2) | 9365454 |
| 2477 | 36900.37000.37700.37800.42600.114400.180300.739000 | Shuttering Work | 7d | 2026-10-03 | 2026-10-09 | 2474 |  | Sector-44 Noida(2) | 9389524 |
| 2478 | 36900.37000.37700.37800.42600.114400.180300.739100 | Reinforcement Work | 3d | 2026-10-07 | 2026-10-09 | 2477FS-3d |  | Sector-44 Noida(2) | 9389534 |
| 2479 | 36900.37000.37700.37800.42600.114400.180300.739200 | Conduiting work | 1d | 2026-10-09 | 2026-10-09 | 2478FS-1d |  | Sector-44 Noida(2) | 9389544 |
| 2480 | 36900.37000.37700.37800.42600.114400.180300.739300 | Concreteing work | 1d | 2026-10-10 | 2026-10-10 | 2477FF, 2478FF, 2479 |  | Sector-44 Noida(2) | 9389554 |
| 2481 | 36900.37000.37700.37800.42600.114300 | **30th Floor Slab** | 8d | 2026-10-11 | 2026-10-18 |  | start no earlier than 2026-10-11 | Sector-44 Noida(2) | 9363824 |
| 2482 | 36900.37000.37700.37800.42600.114300.180400 | **30th Floor Slab** | 8d | 2026-10-11 | 2026-10-18 |  | start no earlier than 2026-10-11 | Sector-44 Noida(2) | 9365464 |
| 2483 | 36900.37000.37700.37800.42600.114300.180400.739400 | Shuttering Work | 7d | 2026-10-11 | 2026-10-17 | 2480 |  | Sector-44 Noida(2) | 9389564 |
| 2484 | 36900.37000.37700.37800.42600.114300.180400.739500 | Reinforcement Work | 3d | 2026-10-15 | 2026-10-17 | 2483FS-3d |  | Sector-44 Noida(2) | 9389574 |
| 2485 | 36900.37000.37700.37800.42600.114300.180400.739600 | Conduiting work | 1d | 2026-10-17 | 2026-10-17 | 2484FS-1d |  | Sector-44 Noida(2) | 9389584 |
| 2486 | 36900.37000.37700.37800.42600.114300.180400.739700 | Concreteing work | 1d | 2026-10-18 | 2026-10-18 | 2483FF, 2484FF, 2485 |  | Sector-44 Noida(2) | 9389594 |

| ID | WBS | Task | Duration | Start | Finish | Predecessors | Constraint | Calendar | Unique_Task_ID |
| --- | --- | --- | --- | --- | --- | --- | --- | --- | --- |
| 2487 | 36900.37000.37700.37800.42600.113800 | **31st Floor Slab** | 10d | 2026-10-19 | 2026-10-28 |  | start no earlier than 2026-10-19 | Sector-44 Noida(2) | 9363834 |
| 2488 | 36900.37000.37700.37800.42600.113800.180500 | **31st Floor Slab** | 10d | 2026-10-19 | 2026-10-28 |  | start no earlier than 2026-10-19 | Sector-44 Noida(2) | 9365474 |
| 2489 | 36900.37000.37700.37800.42600.113800.180500.739800 | Shuttering Work | 9d | 2026-10-19 | 2026-10-27 | 2486 |  | Sector-44 Noida(2) | 9389604 |
| 2490 | 36900.37000.37700.37800.42600.113800.180500.739900 | Reinforcement Work | 3d | 2026-10-25 | 2026-10-27 | 2489FS-3d |  | Sector-44 Noida(2) | 9389614 |
| 2491 | 36900.37000.37700.37800.42600.113800.180500.740000 | Conduiting work | 1d | 2026-10-27 | 2026-10-27 | 2490FS-1d |  | Sector-44 Noida(2) | 9389624 |
| 2492 | 36900.37000.37700.37800.42600.113800.180500.740100 | Concreteing work | 1d | 2026-10-28 | 2026-10-28 | 2489FF, 2490FF, 2491 |  | Sector-44 Noida(2) | 9389634 |
| 2493 | 36900.37000.37700.37800.42600.113700 | **32nd Floor Slab** | 10d | 2026-10-29 | 2026-12-22 |  | start no earlier than 2026-10-29 | Sector-44 Noida(2) | 9363844 |
| 2494 | 36900.37000.37700.37800.42600.113700.180600 | **32nd Floor Slab** | 10d | 2026-10-29 | 2026-12-22 |  | start no earlier than 2026-10-29 | Sector-44 Noida(2) | 9365484 |
| 2495 | 36900.37000.37700.37800.42600.113700.180600.740200 | Shuttering Work | 9d | 2026-10-29 | 2026-12-21 | 2492 |  | Sector-44 Noida(2) | 9389644 |
| 2496 | 36900.37000.37700.37800.42600.113700.180600.740300 | Reinforcement Work | 3d | 2026-12-19 | 2026-12-21 | 2495FS-3d |  | Sector-44 Noida(2) | 9389654 |
| 2497 | 36900.37000.37700.37800.42600.113700.180600.740400 | Conduiting work | 1d | 2026-12-21 | 2026-12-21 | 2496FS-1d |  | Sector-44 Noida(2) | 9389664 |
| 2498 | 36900.37000.37700.37800.42600.113700.180600.740500 | Concreteing work | 1d | 2026-12-22 | 2026-12-22 | 2495FF, 2496FF, 2497 |  | Sector-44 Noida(2) | 9389674 |
| 2499 | 36900.37000.37700.37800.42600.113600 | **33rd Floor Slab** | 10d | 2026-12-23 | 2027-01-01 |  | start no earlier than 2026-12-23 | Sector-44 Noida(2) | 9363854 |
| 2500 | 36900.37000.37700.37800.42600.113600.180700 | **33rd Floor Slab** | 10d | 2026-12-23 | 2027-01-01 |  | start no earlier than 2026-12-23 | Sector-44 Noida(2) | 9365494 |
| 2501 | 36900.37000.37700.37800.42600.113600.180700.740600 | Shuttering Work | 9d | 2026-12-23 | 2026-12-31 | 2498 |  | Sector-44 Noida(2) | 9389684 |
| 2502 | 36900.37000.37700.37800.42600.113600.180700.740700 | Reinforcement Work | 3d | 2026-12-29 | 2026-12-31 | 2501FS-3d |  | Sector-44 Noida(2) | 9389694 |
| 2503 | 36900.37000.37700.37800.42600.113600.180700.740800 | Conduiting work | 1d | 2026-12-31 | 2026-12-31 | 2502FS-1d |  | Sector-44 Noida(2) | 9389704 |
| 2504 | 36900.37000.37700.37800.42600.113600.180700.740900 | Concreteing work | 1d | 2027-01-01 | 2027-01-01 | 2501FF, 2502FF, 2503 |  | Sector-44 Noida(2) | 9389714 |
| 2505 | 36900.37000.37700.37800.42600.113500 | **34th Floor Slab** | 10d | 2027-01-02 | 2027-01-11 |  | start no earlier than 2027-01-02 | Sector-44 Noida(2) | 9363864 |
| 2506 | 36900.37000.37700.37800.42600.113500.180800 | **34th Floor Slab** | 10d | 2027-01-02 | 2027-01-11 |  | start no earlier than 2027-01-02 | Sector-44 Noida(2) | 9365504 |
| 2507 | 36900.37000.37700.37800.42600.113500.180800.741000 | Shuttering Work | 9d | 2027-01-02 | 2027-01-10 | 2504 |  | Sector-44 Noida(2) | 9389724 |
| 2508 | 36900.37000.37700.37800.42600.113500.180800.741100 | Reinforcement Work | 3d | 2027-01-08 | 2027-01-10 | 2507FS-3d |  | Sector-44 Noida(2) | 9389734 |
| 2509 | 36900.37000.37700.37800.42600.113500.180800.741200 | Conduiting work | 1d | 2027-01-10 | 2027-01-10 | 2508FS-1d |  | Sector-44 Noida(2) | 9389744 |
| 2510 | 36900.37000.37700.37800.42600.113500.180800.741300 | Concreteing work | 1d | 2027-01-11 | 2027-01-11 | 2507FF, 2508FF, 2509 |  | Sector-44 Noida(2) | 9389754 |

| ID | WBS | Task | Duration | Start | Finish | Predecessors | Constraint | Calendar | Unique_Task_ID |
| --- | --- | --- | --- | --- | --- | --- | --- | --- | --- |
| 2511 | 36900.37000.37700.37800.42600.113300 | **35th Floor Slab** | 10d | 2027-01-12 | 2027-01-21 |  | start no earlier than 2027-01-12 | Sector-44 Noida(2) | 9363874 |
| 2512 | 36900.37000.37700.37800.42600.113300.180900 | **35th Floor Slab** | 10d | 2027-01-12 | 2027-01-21 |  | start no earlier than 2027-01-12 | Sector-44 Noida(2) | 9365514 |
| 2513 | 36900.37000.37700.37800.42600.113300.180900.741400 | Shuttering Work | 9d | 2027-01-12 | 2027-01-20 | 2510 |  | Sector-44 Noida(2) | 9389764 |
| 2514 | 36900.37000.37700.37800.42600.113300.180900.741500 | Reinforcement Work | 3d | 2027-01-18 | 2027-01-20 | 2513FS-3d |  | Sector-44 Noida(2) | 9389774 |
| 2515 | 36900.37000.37700.37800.42600.113300.180900.741600 | Conduiting work | 1d | 2027-01-20 | 2027-01-20 | 2514FS-1d |  | Sector-44 Noida(2) | 9389784 |
| 2516 | 36900.37000.37700.37800.42600.113300.180900.741700 | Concreteing work | 1d | 2027-01-21 | 2027-01-21 | 2513FF, 2514FF, 2515 |  | Sector-44 Noida(2) | 9389794 |
| 2517 | 36900.37000.37700.37800.42600.113200 | **36th Floor Slab** | 10d | 2027-01-22 | 2027-01-31 |  | start no earlier than 2027-01-22 | Sector-44 Noida(2) | 9363884 |
| 2518 | 36900.37000.37700.37800.42600.113200.181000 | **36th Floor Slab** | 10d | 2027-01-22 | 2027-01-31 |  | start no earlier than 2027-01-22 | Sector-44 Noida(2) | 9365524 |
| 2519 | 36900.37000.37700.37800.42600.113200.181000.741800 | Shuttering Work | 9d | 2027-01-22 | 2027-01-30 | 2516 |  | Sector-44 Noida(2) | 9389804 |
| 2520 | 36900.37000.37700.37800.42600.113200.181000.741900 | Reinforcement Work | 3d | 2027-01-28 | 2027-01-30 | 2519FS-3d |  | Sector-44 Noida(2) | 9389814 |
| 2521 | 36900.37000.37700.37800.42600.113200.181000.742000 | Conduiting work | 1d | 2027-01-30 | 2027-01-30 | 2520FS-1d |  | Sector-44 Noida(2) | 9389824 |
| 2522 | 36900.37000.37700.37800.42600.113200.181000.742100 | Concreteing work | 1d | 2027-01-31 | 2027-01-31 | 2519FF, 2520FF, 2521 |  | Sector-44 Noida(2) | 9389834 |
| 2523 | 36900.37000.37700.37800.42600.113100 | **37th Floor Slab** | 10d | 2027-02-01 | 2027-02-10 |  | start no earlier than 2027-02-01 | Sector-44 Noida(2) | 9363894 |
| 2524 | 36900.37000.37700.37800.42600.113100.181100 | **37th Floor Slab** | 10d | 2027-02-01 | 2027-02-10 |  | start no earlier than 2027-02-01 | Sector-44 Noida(2) | 9365534 |
| 2525 | 36900.37000.37700.37800.42600.113100.181100.742200 | Shuttering Work | 9d | 2027-02-01 | 2027-02-09 | 2522 |  | Sector-44 Noida(2) | 9389844 |
| 2526 | 36900.37000.37700.37800.42600.113100.181100.742300 | Reinforcement Work | 3d | 2027-02-07 | 2027-02-09 | 2525FS-3d |  | Sector-44 Noida(2) | 9389854 |
| 2527 | 36900.37000.37700.37800.42600.113100.181100.742400 | Conduiting work | 1d | 2027-02-09 | 2027-02-09 | 2526FS-1d |  | Sector-44 Noida(2) | 9389864 |
| 2528 | 36900.37000.37700.37800.42600.113100.181100.742500 | Concreteing work | 1d | 2027-02-10 | 2027-02-10 | 2525FF, 2526FF, 2527 |  | Sector-44 Noida(2) | 9389874 |
| 2529 | 36900.37000.37700.37800.42600.113000 | **38th Floor Slab** | 10d | 2027-02-11 | 2027-02-20 |  | start no earlier than 2027-02-11 | Sector-44 Noida(2) | 9363904 |
| 2530 | 36900.37000.37700.37800.42600.113000.181200 | **38th Floor Slab** | 10d | 2027-02-11 | 2027-02-20 |  | start no earlier than 2027-02-11 | Sector-44 Noida(2) | 9365544 |
| 2531 | 36900.37000.37700.37800.42600.113000.181200.742600 | Shuttering Work | 9d | 2027-02-11 | 2027-02-19 | 2528 |  | Sector-44 Noida(2) | 9389884 |
| 2532 | 36900.37000.37700.37800.42600.113000.181200.742700 | Reinforcement Work | 3d | 2027-02-17 | 2027-02-19 | 2531FS-3d |  | Sector-44 Noida(2) | 9389894 |
| 2533 | 36900.37000.37700.37800.42600.113000.181200.742800 | Conduiting work | 1d | 2027-02-19 | 2027-02-19 | 2532FS-1d |  | Sector-44 Noida(2) | 9389904 |
| 2534 | 36900.37000.37700.37800.42600.113000.181200.742900 | Concreteing work | 1d | 2027-02-20 | 2027-02-20 | 2531FF, 2532FF, 2533 |  | Sector-44 Noida(2) | 9389914 |

| ID | WBS | Task | Duration | Start | Finish | Predecessors | Constraint | Calendar | Unique_Task_ID |
| --- | --- | --- | --- | --- | --- | --- | --- | --- | --- |
| 2535 | 36900.37000.37700.37800.42600.112500 | **Terrace Slab** | 12d | 2027-02-21 | 2027-03-04 |  | start no earlier than 2027-02-21 | Sector-44 Noida(2) | 9363914 |
| 2536 | 36900.37000.37700.37800.42600.112500.181300 | **Terrace Slab** | 12d | 2027-02-21 | 2027-03-04 |  | start no earlier than 2027-02-21 | Sector-44 Noida(2) | 9365554 |
| 2537 | 36900.37000.37700.37800.42600.112500.181300.743000 | Shuttering Work | 10d | 2027-02-21 | 2027-03-02 | 2534 |  | Sector-44 Noida(2) | 9389924 |
| 2538 | 36900.37000.37700.37800.42600.112500.181300.743100 | Reinforcement Work | 5d | 2027-02-27 | 2027-03-03 | 2537FS-4d |  | Sector-44 Noida(2) | 9389934 |
| 2539 | 36900.37000.37700.37800.42600.112500.181300.743200 | Conduiting work | 1d | 2027-03-03 | 2027-03-03 | 2538FS-1d |  | Sector-44 Noida(2) | 9389944 |
| 2540 | 36900.37000.37700.37800.42600.112500.181300.743300 | Concreteing work | 1d | 2027-03-04 | 2027-03-04 | 2537FF, 2538FF, 2539 |  | Sector-44 Noida(2) | 9389954 |
| 2541 | 36900.37000.37700.37800.42600.112400 | **Terrace to LMR Floor** | 8d | 2027-03-05 | 2027-03-12 |  | start no earlier than 2027-03-05 | Sector-44 Noida(2) | 9363924 |
| 2542 | 36900.37000.37700.37800.42600.112400.181400 | **LMR Floor Slab** | 8d | 2027-03-05 | 2027-03-12 |  | start no earlier than 2027-03-05 | Sector-44 Noida(2) | 9365564 |
| 2543 | 36900.37000.37700.37800.42600.112400.181400.743400 | Shuttering Work | 6d | 2027-03-05 | 2027-03-10 | 2540 |  | Sector-44 Noida(2) | 9389964 |
| 2544 | 36900.37000.37700.37800.42600.112400.181400.743500 | Reinforcement Work | 3d | 2027-03-09 | 2027-03-11 | 2543FS-2d |  | Sector-44 Noida(2) | 9389974 |
| 2545 | 36900.37000.37700.37800.42600.112400.181400.743600 | Conduiting work | 1d | 2027-03-11 | 2027-03-11 | 2544FS-1d |  | Sector-44 Noida(2) | 9389984 |
| 2546 | 36900.37000.37700.37800.42600.112400.181400.743700 | Concreteing work | 1d | 2027-03-12 | 2027-03-12 | 2543FF, 2544FF, 2545 |  | Sector-44 Noida(2) | 9389994 |
| 2547 | 36900.37000.37700.37800.42600.112300 | **LMR Floor to LMR Roof** | 8d | 2027-03-13 | 2027-03-20 |  | start no earlier than 2027-03-13 | Sector-44 Noida(2) | 9363934 |
| 2548 | 36900.37000.37700.37800.42600.112300.181500 | **LMR Roof Slab** | 8d | 2027-03-13 | 2027-03-20 |  | start no earlier than 2027-03-13 | Sector-44 Noida(2) | 9365574 |
| 2549 | 36900.37000.37700.37800.42600.112300.181500.743800 | Shuttering Work | 6d | 2027-03-13 | 2027-03-18 | 2546 |  | Sector-44 Noida(2) | 9390004 |
| 2550 | 36900.37000.37700.37800.42600.112300.181500.743900 | Reinforcement Work | 3d | 2027-03-17 | 2027-03-19 | 2549FS-2d |  | Sector-44 Noida(2) | 9390014 |
| 2551 | 36900.37000.37700.37800.42600.112300.181500.744000 | Conduiting work | 1d | 2027-03-19 | 2027-03-19 | 2550FS-1d |  | Sector-44 Noida(2) | 9390024 |
| 2552 | 36900.37000.37700.37800.42600.112300.181500.744100 | Concreteing work | 1d | 2027-03-20 | 2027-03-20 | 2549FF, 2550FF, 2551 |  | Sector-44 Noida(2) | 9390034 |
| 2553 | 36900.37000.37700.37800.42600.122000 | **OHT & Roof Features** | 19d | 2027-03-21 | 2027-04-08 |  | start no earlier than 2027-03-21 | Sector-44 Noida(2) | 9364044 |
| 2554 | 36900.37000.37700.37800.42600.122000.183200 | **OHT & Roof Features** | 19d | 2027-03-21 | 2027-04-08 |  | start no earlier than 2027-03-21 | Sector-44 Noida(2) | 9365774 |
| 2555 | 36900.37000.37700.37800.42600.122000.183200.744200 | Reinforcement Work | 12d | 2027-03-21 | 2027-04-01 | 2552 |  | Sector-44 Noida(2) | 9390044 |
| 2556 | 36900.37000.37700.37800.42600.122000.183200.744300 | Shuttering work | 9d | 2027-03-31 | 2027-04-08 | 2555FS-2d |  | Sector-44 Noida(2) | 9390054 |
| 2557 | 36900.37000.37700.37800.42600.122000.183200.744400 | Concreteing work | 7d | 2027-04-02 | 2027-04-08 | 2555FF, 2556FF |  | Sector-44 Noida(2) | 9390064 |
| 2558 | 36900.37000.37700.37800.44600 | **Post Pour Works** | 360d | 2026-03-11 | 2027-04-19 |  | start no earlier than 2026-03-11 | Sector-44 Noida(2) | 9360774 |
| 2559 | 36900.37000.37700.37800.44600.250500 | 1st Floor | 8d | 2026-03-11 | 2026-03-18 | 2330 |  | Sector-44 Noida(2) | 9367984 |
| 2560 | 36900.37000.37700.37800.44600.250600 | 2nd Floor | 8d | 2026-03-20 | 2026-03-27 | 2559, 2336 |  | Sector-44 Noida(2) | 9367994 |
| 2561 | 36900.37000.37700.37800.44600.250700 | 3rd Floor | 8d | 2026-03-28 | 2026-04-04 | 2560 |  | Sector-44 Noida(2) | 9368004 |
| 2562 | 36900.37000.37700.37800.44600.250800 | 4th Floor | 8d | 2026-04-07 | 2026-04-14 | 2561, 2348 |  | Sector-44 Noida(2) | 9368014 |
| 2563 | 36900.37000.37700.37800.44600.250900 | 5th Floor | 8d | 2026-04-16 | 2026-04-23 | 2562, 2354 |  | Sector-44 Noida(2) | 9368024 |
| 2564 | 36900.37000.37700.37800.44600.251000 | 6th Floor | 8d | 2026-04-25 | 2026-05-02 | 2563, 2360 |  | Sector-44 Noida(2) | 9368034 |
| 2565 | 36900.37000.37700.37800.44600.251100 | 7th Floor | 8d | 2026-05-03 | 2026-05-10 | 2564 |  | Sector-44 Noida(2) | 9368044 |
| 2566 | 36900.37000.37700.37800.44600.251200 | 8th Floor | 8d | 2026-05-13 | 2026-05-20 | 2565, 2372 |  | Sector-44 Noida(2) | 9368054 |
| 2567 | 36900.37000.37700.37800.44600.251300 | 9th Floor | 8d | 2026-05-22 | 2026-05-29 | 2566, 2378 |  | Sector-44 Noida(2) | 9368064 |
| 2568 | 36900.37000.37700.37800.44600.251400 | 10th Floor | 8d | 2026-05-31 | 2026-06-07 | 2567, 2384 |  | Sector-44 Noida(2) | 9368074 |
| 2569 | 36900.37000.37700.37800.44600.251500 | 11th Floor | 8d | 2026-06-09 | 2026-06-16 | 2568, 2390 |  | Sector-44 Noida(2) | 9368084 |
| 2570 | 36900.37000.37700.37800.44600.251600 | 12th Floor | 8d | 2026-06-18 | 2026-06-25 | 2569, 2396 |  | Sector-44 Noida(2) | 9368094 |
| 2571 | 36900.37000.37700.37800.44600.251700 | 13th Floor | 8d | 2026-06-27 | 2026-07-04 | 2570, 2402 |  | Sector-44 Noida(2) | 9368104 |
| 2572 | 36900.37000.37700.37800.44600.251800 | 14th Floor | 8d | 2026-07-06 | 2026-07-13 | 2571, 2408 |  | Sector-44 Noida(2) | 9368114 |
| 2573 | 36900.37000.37700.37800.44600.251900 | 15th Floor | 8d | 2026-07-15 | 2026-07-22 | 2572, 2414 |  | Sector-44 Noida(2) | 9368124 |
| 2574 | 36900.37000.37700.37800.44600.252000 | 16th Floor | 8d | 2026-07-23 | 2026-07-30 | 2573, 2420 |  | Sector-44 Noida(2) | 9368134 |
| 2575 | 36900.37000.37700.37800.44600.252100 | 17th Floor | 8d | 2026-07-31 | 2026-08-07 | 2574, 2426 |  | Sector-44 Noida(2) | 9368144 |
| 2576 | 36900.37000.37700.37800.44600.252200 | 18th Floor | 8d | 2026-08-08 | 2026-08-15 | 2575, 2432 |  | Sector-44 Noida(2) | 9368154 |
| 2577 | 36900.37000.37700.37800.44600.252300 | 19th Floor | 8d | 2026-08-16 | 2026-08-23 | 2576, 2438 |  | Sector-44 Noida(2) | 9368164 |
| 2578 | 36900.37000.37700.37800.44600.252400 | 20th Floor | 7d | 2026-08-24 | 2026-08-30 | 2577, 2444 |  | Sector-44 Noida(2) | 9368174 |
| 2579 | 36900.37000.37700.37800.44600.252500 | 21st Floor | 7d | 2026-09-01 | 2026-09-07 | 2578, 2450 |  | Sector-44 Noida(2) | 9368184 |
| 2580 | 36900.37000.37700.37800.44600.252600 | 22nd Floor | 7d | 2026-09-09 | 2026-09-15 | 2579, 2456 |  | Sector-44 Noida(2) | 9368194 |
| 2581 | 36900.37000.37700.37800.44600.252700 | 23rd Floor | 7d | 2026-09-17 | 2026-09-23 | 2580, 2462 |  | Sector-44 Noida(2) | 9368204 |
| 2582 | 36900.37000.37700.37800.44600.252800 | 24th Floor | 7d | 2026-09-25 | 2026-10-01 | 2581, 2468 |  | Sector-44 Noida(2) | 9368214 |
| 2583 | 36900.37000.37700.37800.44600.252900 | 25th Floor | 7d | 2026-10-03 | 2026-10-09 | 2582, 2474 |  | Sector-44 Noida(2) | 9368224 |
| 2584 | 36900.37000.37700.37800.44600.253000 | 26th Floor | 7d | 2026-10-11 | 2026-10-17 | 2583, 2480 |  | Sector-44 Noida(2) | 9368234 |
| 2585 | 36900.37000.37700.37800.44600.253100 | 27th Floor | 7d | 2026-10-19 | 2026-10-25 | 2584, 2486 |  | Sector-44 Noida(2) | 9368244 |
| 2586 | 36900.37000.37700.37800.44600.253200 | 28th Floor | 9d | 2026-10-29 | 2026-12-21 | 2585, 2492 |  | Sector-44 Noida(2) | 9368254 |
| 2587 | 36900.37000.37700.37800.44600.253300 | 29st Floor | 9d | 2026-12-23 | 2026-12-31 | 2586, 2498 |  | Sector-44 Noida(2) | 9368264 |
| 2588 | 36900.37000.37700.37800.44600.253400 | 30th Floor | 9d | 2027-01-02 | 2027-01-10 | 2587, 2504 |  | Sector-44 Noida(2) | 9368274 |
| 2589 | 36900.37000.37700.37800.44600.253500 | 31st Floor | 9d | 2027-01-12 | 2027-01-20 | 2588, 2510 |  | Sector-44 Noida(2) | 9368284 |
| 2590 | 36900.37000.37700.37800.44600.253600 | 32nd Floor | 9d | 2027-01-22 | 2027-01-30 | 2589, 2516 |  | Sector-44 Noida(2) | 9368294 |
| 2591 | 36900.37000.37700.37800.44600.253700 | 33rd Floor | 9d | 2027-02-01 | 2027-02-09 | 2590, 2522 |  | Sector-44 Noida(2) | 9368304 |
| 2592 | 36900.37000.37700.37800.44600.253800 | 34th Floor | 9d | 2027-02-11 | 2027-02-19 | 2591, 2528 |  | Sector-44 Noida(2) | 9368314 |
| 2593 | 36900.37000.37700.37800.44600.253900 | 35th Floor | 9d | 2027-02-21 | 2027-03-01 | 2592, 2534 |  | Sector-44 Noida(2) | 9368324 |
| 2594 | 36900.37000.37700.37800.44600.254000 | 36th Floor | 9d | 2027-03-05 | 2027-03-13 | 2593, 2540 |  | Sector-44 Noida(2) | 9368334 |
| 2595 | 36900.37000.37700.37800.44600.254100 | 37th Floor | 9d | 2027-03-14 | 2027-03-22 | 2594 |  | Sector-44 Noida(2) | 9368344 |
| 2596 | 36900.37000.37700.37800.44600.254200 | 38th Floor | 9d | 2027-03-23 | 2027-03-31 | 2595 |  | Sector-44 Noida(2) | 9368354 |
| 2597 | 36900.37000.37700.37800.44600.254300 | Terrace Floor | 9d | 2027-04-01 | 2027-04-09 | 2596 |  | Sector-44 Noida(2) | 9368364 |
| 2598 | 36900.37000.37700.37800.44600.254400 | LMR, OHT & Roof Feauters | 10d | 2027-04-10 | 2027-04-19 | 2597 |  | Sector-44 Noida(2) | 9368374 |

| ID | WBS | Task | Duration | Start | Finish | Predecessors | Constraint | Calendar | Unique_Task_ID |
| --- | --- | --- | --- | --- | --- | --- | --- | --- | --- |
| 2599 | 36900.37000.37700.37800.39900 | **Finishing works** | 496d | 2026-03-19 | 2027-09-10 |  | start no earlier than 2026-03-19 | Sector-44 Noida(2) | 9323914 |
| 2600 | 36900.37000.37700.37800.39900.40000 | **Flat finishings** | 470d | 2026-03-19 | 2027-08-15 |  | start no earlier than 2026-03-19 | Sector-44 Noida(2) | 9356604 |
| 2601 | 36900.37000.37700.37800.39900.40000.55400 | **1st Floor** | 106d | 2026-03-19 | 2026-07-02 |  | start no earlier than 2026-03-19 | Sector-44 Noida(2) | 9361314 |
| 2602 | 36900.37000.37700.37800.39900.40000.55400.744500 | Block Work | 10d | 2026-03-19 | 2026-03-28 | 2559 |  | Sector-44 Noida(2) | 9390074 |
| 2603 | 36900.37000.37700.37800.39900.40000.55400.744600 | Installation of temporary Main door | 7d | 2026-03-29 | 2026-04-04 | 2602 |  | Sector-44 Noida(2) | 9390084 |
| 2604 | 36900.37000.37700.37800.39900.40000.55400.744700 | Fire sprinkler pipe fixing | 3d | 2026-03-29 | 2026-03-31 | 2602 |  | Sector-44 Noida(2) | 9390094 |
| 2605 | 36900.37000.37700.37800.39900.40000.55400.744800 | Internal Plumbing Works | 7d | 2026-03-29 | 2026-04-04 | 2602 |  | Sector-44 Noida(2) | 9390104 |
| 2606 | 36900.37000.37700.37800.39900.40000.55400.744900 | Waterproofing | 12d | 2026-04-05 | 2026-04-16 | 2605 |  | Sector-44 Noida(2) | 9390114 |
| 2607 | 36900.37000.37700.37800.39900.40000.55400.745000 | Internal Plaster | 15d | 2026-03-29 | 2026-04-12 | 2602 |  | Sector-44 Noida(2) | 9390124 |
| 2608 | 36900.37000.37700.37800.39900.40000.55400.745100 | IPS flooring work | 11d | 2026-03-29 | 2026-04-08 | 2602 |  | Sector-44 Noida(2) | 9390134 |
| 2609 | 36900.37000.37700.37800.39900.40000.55400.745200 | Toilet dado work | 16d | 2026-04-17 | 2026-05-02 | 2605, 2606, 2607 |  | Sector-44 Noida(2) | 9390144 |
| 2610 | 36900.37000.37700.37800.39900.40000.55400.745300 | Toilet flooring work | 16d | 2026-05-03 | 2026-05-18 | 2609 |  | Sector-44 Noida(2) | 9390154 |
| 2611 | 36900.37000.37700.37800.39900.40000.55400.745400 | Living dinning flooring | 16d | 2026-05-19 | 2026-06-03 | 2608, 2610 |  | Sector-44 Noida(2) | 9390164 |
| 2612 | 36900.37000.37700.37800.39900.40000.55400.745500 | Electrical wiring work | 10d | 2026-05-25 | 2026-06-03 | 2611FS-10d |  | Sector-44 Noida(2) | 9390174 |
| 2613 | 36900.37000.37700.37800.39900.40000.55400.745600 | Aluminium door-window fixing | 17d | 2026-05-27 | 2026-06-12 | 2603, 2612FS-8d |  | Sector-44 Noida(2) | 9390184 |
| 2614 | 36900.37000.37700.37800.39900.40000.55400.745700 | Putty primer coat | 8d | 2026-06-05 | 2026-06-12 | 2613FS-8d |  | Sector-44 Noida(2) | 9390194 |
| 2615 | 36900.37000.37700.37800.39900.40000.55400.745800 | Prehung door fixing | 7d | 2026-06-08 | 2026-06-14 | 2614FS-5d |  | Sector-44 Noida(2) | 9390204 |
| 2616 | 36900.37000.37700.37800.39900.40000.55400.745900 | Painting 1st coat | 10d | 2026-06-15 | 2026-06-24 | 2615 |  | Sector-44 Noida(2) | 9390214 |
| 2617 | 36900.37000.37700.37800.39900.40000.55400.746000 | False Ceiling panel fixing | 8d | 2026-06-25 | 2026-07-02 | 2616 |  | Sector-44 Noida(2) | 9390224 |
| 2618 | 36900.37000.37700.37800.39900.40000.55500 | **2nd Floor** | 121d | 2026-03-28 | 2026-07-26 |  | start no earlier than 2026-03-28 | Sector-44 Noida(2) | 9361304 |
| 2619 | 36900.37000.37700.37800.39900.40000.55500.746100 | Block Work | 10d | 2026-03-28 | 2026-04-06 | 2560 |  | Sector-44 Noida(2) | 9390234 |
| 2620 | 36900.37000.37700.37800.39900.40000.55500.746200 | Installation of temporary Main door | 7d | 2026-04-07 | 2026-04-13 | 2619 |  | Sector-44 Noida(2) | 9390244 |
| 2621 | 36900.37000.37700.37800.39900.40000.55500.746300 | Fire sprinkler pipe fixing | 3d | 2026-04-07 | 2026-04-09 | 2604, 2619 |  | Sector-44 Noida(2) | 9390254 |
| 2622 | 36900.37000.37700.37800.39900.40000.55500.746400 | Internal Plumbing Works | 7d | 2026-04-07 | 2026-04-13 | 2619 |  | Sector-44 Noida(2) | 9390264 |
| 2623 | 36900.37000.37700.37800.39900.40000.55500.746500 | Waterproofing | 12d | 2026-04-14 | 2026-04-25 | 2622 |  | Sector-44 Noida(2) | 9390274 |
| 2624 | 36900.37000.37700.37800.39900.40000.55500.746600 | Internal Plaster | 15d | 2026-04-26 | 2026-05-10 | 2622, 2623 |  | Sector-44 Noida(2) | 9390284 |
| 2625 | 36900.37000.37700.37800.39900.40000.55500.746700 | IPS flooring work | 11d | 2026-04-07 | 2026-04-17 | 2619 |  | Sector-44 Noida(2) | 9390294 |
| 2626 | 36900.37000.37700.37800.39900.40000.55500.746800 | Toilet dado work | 16d | 2026-05-11 | 2026-05-26 | 2622, 2623, 2624 |  | Sector-44 Noida(2) | 9390304 |
| 2627 | 36900.37000.37700.37800.39900.40000.55500.746900 | Toilet flooring work | 16d | 2026-05-27 | 2026-06-11 | 2626 |  | Sector-44 Noida(2) | 9390314 |
| 2628 | 36900.37000.37700.37800.39900.40000.55500.747000 | Living dinning flooring | 16d | 2026-06-12 | 2026-06-27 | 2625, 2627 |  | Sector-44 Noida(2) | 9390324 |
| 2629 | 36900.37000.37700.37800.39900.40000.55500.747100 | Electrical wiring work | 10d | 2026-06-18 | 2026-06-27 | 2628FS-10d |  | Sector-44 Noida(2) | 9390334 |
| 2630 | 36900.37000.37700.37800.39900.40000.55500.747200 | Aluminium door-window fixing | 17d | 2026-06-20 | 2026-07-06 | 2620, 2629FS-8d |  | Sector-44 Noida(2) | 9390344 |
| 2631 | 36900.37000.37700.37800.39900.40000.55500.747300 | Putty primer coat | 8d | 2026-06-29 | 2026-07-06 | 2630FS-8d |  | Sector-44 Noida(2) | 9390354 |
| 2632 | 36900.37000.37700.37800.39900.40000.55500.747400 | Prehung door fixing | 7d | 2026-07-02 | 2026-07-08 | 2631FS-5d |  | Sector-44 Noida(2) | 9390364 |
| 2633 | 36900.37000.37700.37800.39900.40000.55500.747500 | Painting 1st coat | 10d | 2026-07-09 | 2026-07-18 | 2632 |  | Sector-44 Noida(2) | 9390374 |
| 2634 | 36900.37000.37700.37800.39900.40000.55500.747600 | False Ceiling panel fixing | 8d | 2026-07-19 | 2026-07-26 | 2617, 2633 |  | Sector-44 Noida(2) | 9390384 |

| ID | WBS | Task | Duration | Start | Finish | Predecessors | Constraint | Calendar | Unique_Task_ID |
| --- | --- | --- | --- | --- | --- | --- | --- | --- | --- |
| 2635 | 36900.37000.37700.37800.39900.40000.55600 | **3rd Floor** | 121d | 2026-04-05 | 2026-08-03 |  | start no earlier than 2026-04-05 | Sector-44 Noida(2) | 9361294 |
| 2636 | 36900.37000.37700.37800.39900.40000.55600.747700 | Block Work | 10d | 2026-04-05 | 2026-04-14 | 2561 |  | Sector-44 Noida(2) | 9390394 |
| 2637 | 36900.37000.37700.37800.39900.40000.55600.747800 | Installation of temporary Main door | 7d | 2026-04-15 | 2026-04-21 | 2636 |  | Sector-44 Noida(2) | 9390404 |
| 2638 | 36900.37000.37700.37800.39900.40000.55600.747900 | Fire sprinkler pipe fixing | 3d | 2026-04-15 | 2026-04-17 | 2621, 2636 |  | Sector-44 Noida(2) | 9390414 |
| 2639 | 36900.37000.37700.37800.39900.40000.55600.748000 | Internal Plumbing Works | 7d | 2026-04-15 | 2026-04-21 | 2636 |  | Sector-44 Noida(2) | 9390424 |
| 2640 | 36900.37000.37700.37800.39900.40000.55600.748100 | Waterproofing | 12d | 2026-04-22 | 2026-05-03 | 2639 |  | Sector-44 Noida(2) | 9390434 |
| 2641 | 36900.37000.37700.37800.39900.40000.55600.748200 | Internal Plaster | 15d | 2026-05-04 | 2026-05-18 | 2639, 2640 |  | Sector-44 Noida(2) | 9390444 |
| 2642 | 36900.37000.37700.37800.39900.40000.55600.748300 | IPS flooring work | 11d | 2026-04-15 | 2026-04-25 | 2636 |  | Sector-44 Noida(2) | 9390454 |
| 2643 | 36900.37000.37700.37800.39900.40000.55600.748400 | Toilet dado work | 16d | 2026-05-19 | 2026-06-03 | 2639, 2640, 2641 |  | Sector-44 Noida(2) | 9390464 |
| 2644 | 36900.37000.37700.37800.39900.40000.55600.748500 | Toilet flooring work | 16d | 2026-06-04 | 2026-06-19 | 2643 |  | Sector-44 Noida(2) | 9390474 |
| 2645 | 36900.37000.37700.37800.39900.40000.55600.748600 | Living dinning flooring | 16d | 2026-06-20 | 2026-07-05 | 2642, 2644 |  | Sector-44 Noida(2) | 9390484 |
| 2646 | 36900.37000.37700.37800.39900.40000.55600.748700 | Electrical wiring work | 10d | 2026-06-26 | 2026-07-05 | 2645FS-10d |  | Sector-44 Noida(2) | 9390494 |
| 2647 | 36900.37000.37700.37800.39900.40000.55600.748800 | Aluminium door-window fixing | 17d | 2026-06-28 | 2026-07-14 | 2637, 2646FS-8d |  | Sector-44 Noida(2) | 9390504 |
| 2648 | 36900.37000.37700.37800.39900.40000.55600.748900 | Putty primer coat | 8d | 2026-07-07 | 2026-07-14 | 2647FS-8d |  | Sector-44 Noida(2) | 9390514 |
| 2649 | 36900.37000.37700.37800.39900.40000.55600.749000 | Prehung door fixing | 7d | 2026-07-10 | 2026-07-16 | 2648FS-5d |  | Sector-44 Noida(2) | 9390524 |
| 2650 | 36900.37000.37700.37800.39900.40000.55600.749100 | Painting 1st coat | 10d | 2026-07-17 | 2026-07-26 | 2649 |  | Sector-44 Noida(2) | 9390534 |
| 2651 | 36900.37000.37700.37800.39900.40000.55600.749200 | False Ceiling panel fixing | 8d | 2026-07-27 | 2026-08-03 | 2634, 2650 |  | Sector-44 Noida(2) | 9390544 |
| 2652 | 36900.37000.37700.37800.39900.40000.55700 | **4th Floor** | 121d | 2026-04-15 | 2026-08-13 |  | start no earlier than 2026-04-15 | Sector-44 Noida(2) | 9361284 |
| 2653 | 36900.37000.37700.37800.39900.40000.55700.749300 | Block Work | 10d | 2026-04-15 | 2026-04-24 | 2562 |  | Sector-44 Noida(2) | 9390554 |
| 2654 | 36900.37000.37700.37800.39900.40000.55700.749400 | Installation of temporary Main door | 7d | 2026-04-25 | 2026-05-01 | 2653 |  | Sector-44 Noida(2) | 9390564 |
| 2655 | 36900.37000.37700.37800.39900.40000.55700.749500 | Fire sprinkler pipe fixing | 3d | 2026-04-25 | 2026-04-27 | 2638, 2653 |  | Sector-44 Noida(2) | 9390574 |
| 2656 | 36900.37000.37700.37800.39900.40000.55700.749600 | Internal Plumbing Works | 7d | 2026-04-25 | 2026-05-01 | 2653 |  | Sector-44 Noida(2) | 9390584 |
| 2657 | 36900.37000.37700.37800.39900.40000.55700.749700 | Waterproofing | 12d | 2026-05-02 | 2026-05-13 | 2656 |  | Sector-44 Noida(2) | 9390594 |
| 2658 | 36900.37000.37700.37800.39900.40000.55700.749800 | Internal Plaster | 15d | 2026-05-14 | 2026-05-28 | 2656, 2657 |  | Sector-44 Noida(2) | 9390604 |
| 2659 | 36900.37000.37700.37800.39900.40000.55700.749900 | IPS flooring work | 11d | 2026-04-25 | 2026-05-05 | 2653 |  | Sector-44 Noida(2) | 9390614 |
| 2660 | 36900.37000.37700.37800.39900.40000.55700.750000 | Toilet dado work | 16d | 2026-05-29 | 2026-06-13 | 2656, 2657, 2658 |  | Sector-44 Noida(2) | 9390624 |
| 2661 | 36900.37000.37700.37800.39900.40000.55700.750100 | Toilet flooring work | 16d | 2026-06-14 | 2026-06-29 | 2660 |  | Sector-44 Noida(2) | 9390634 |
| 2662 | 36900.37000.37700.37800.39900.40000.55700.750200 | Living dinning flooring | 16d | 2026-06-30 | 2026-07-15 | 2659, 2661 |  | Sector-44 Noida(2) | 9390644 |
| 2663 | 36900.37000.37700.37800.39900.40000.55700.750300 | Electrical wiring work | 10d | 2026-07-06 | 2026-07-15 | 2662FS-10d |  | Sector-44 Noida(2) | 9390654 |
| 2664 | 36900.37000.37700.37800.39900.40000.55700.750400 | Aluminium door-window fixing | 17d | 2026-07-08 | 2026-07-24 | 2654, 2663FS-8d |  | Sector-44 Noida(2) | 9390664 |
| 2665 | 36900.37000.37700.37800.39900.40000.55700.750500 | Putty primer coat | 8d | 2026-07-17 | 2026-07-24 | 2664FS-8d |  | Sector-44 Noida(2) | 9390674 |
| 2666 | 36900.37000.37700.37800.39900.40000.55700.750600 | Prehung door fixing | 7d | 2026-07-20 | 2026-07-26 | 2665FS-5d |  | Sector-44 Noida(2) | 9390684 |
| 2667 | 36900.37000.37700.37800.39900.40000.55700.750700 | Painting 1st coat | 10d | 2026-07-27 | 2026-08-05 | 2666 |  | Sector-44 Noida(2) | 9390694 |
| 2668 | 36900.37000.37700.37800.39900.40000.55700.750800 | False Ceiling panel fixing | 8d | 2026-08-06 | 2026-08-13 | 2651, 2667 |  | Sector-44 Noida(2) | 9390704 |

| ID | WBS | Task | Duration | Start | Finish | Predecessors | Constraint | Calendar | Unique_Task_ID |
| --- | --- | --- | --- | --- | --- | --- | --- | --- | --- |
| 2669 | 36900.37000.37700.37800.39900.40000.55800 | **5th Floor** | 121d | 2026-04-24 | 2026-08-22 |  | start no earlier than 2026-04-24 | Sector-44 Noida(2) | 9361274 |
| 2670 | 36900.37000.37700.37800.39900.40000.55800.750900 | Block Work | 10d | 2026-04-24 | 2026-05-03 | 2563 |  | Sector-44 Noida(2) | 9390714 |
| 2671 | 36900.37000.37700.37800.39900.40000.55800.751000 | Installation of temporary Main door | 7d | 2026-05-04 | 2026-05-10 | 2670 |  | Sector-44 Noida(2) | 9390724 |
| 2672 | 36900.37000.37700.37800.39900.40000.55800.751100 | Fire sprinkler pipe fixing | 3d | 2026-05-04 | 2026-05-06 | 2655, 2670 |  | Sector-44 Noida(2) | 9390734 |
| 2673 | 36900.37000.37700.37800.39900.40000.55800.751200 | Internal Plumbing Works | 7d | 2026-05-04 | 2026-05-10 | 2670 |  | Sector-44 Noida(2) | 9390744 |
| 2674 | 36900.37000.37700.37800.39900.40000.55800.751300 | Waterproofing | 12d | 2026-05-11 | 2026-05-22 | 2673 |  | Sector-44 Noida(2) | 9390754 |
| 2675 | 36900.37000.37700.37800.39900.40000.55800.751400 | Internal Plaster | 15d | 2026-05-23 | 2026-06-06 | 2673, 2674 |  | Sector-44 Noida(2) | 9390764 |
| 2676 | 36900.37000.37700.37800.39900.40000.55800.751500 | IPS flooring work | 11d | 2026-05-04 | 2026-05-14 | 2670 |  | Sector-44 Noida(2) | 9390774 |
| 2677 | 36900.37000.37700.37800.39900.40000.55800.751600 | Toilet dado work | 16d | 2026-06-07 | 2026-06-22 | 2673, 2674, 2675 |  | Sector-44 Noida(2) | 9390784 |
| 2678 | 36900.37000.37700.37800.39900.40000.55800.751700 | Toilet flooring work | 16d | 2026-06-23 | 2026-07-08 | 2677 |  | Sector-44 Noida(2) | 9390794 |
| 2679 | 36900.37000.37700.37800.39900.40000.55800.751800 | Living dinning flooring | 16d | 2026-07-09 | 2026-07-24 | 2676, 2678 |  | Sector-44 Noida(2) | 9390804 |
| 2680 | 36900.37000.37700.37800.39900.40000.55800.751900 | Electrical wiring work | 10d | 2026-07-15 | 2026-07-24 | 2679FS-10d |  | Sector-44 Noida(2) | 9390814 |
| 2681 | 36900.37000.37700.37800.39900.40000.55800.752000 | Aluminium door-window fixing | 17d | 2026-07-17 | 2026-08-02 | 2671, 2680FS-8d |  | Sector-44 Noida(2) | 9390824 |
| 2682 | 36900.37000.37700.37800.39900.40000.55800.752100 | Putty primer coat | 8d | 2026-07-26 | 2026-08-02 | 2681FS-8d |  | Sector-44 Noida(2) | 9390834 |
| 2683 | 36900.37000.37700.37800.39900.40000.55800.752200 | Prehung door fixing | 7d | 2026-07-29 | 2026-08-04 | 2682FS-5d |  | Sector-44 Noida(2) | 9390844 |
| 2684 | 36900.37000.37700.37800.39900.40000.55800.752300 | Painting 1st coat | 10d | 2026-08-05 | 2026-08-14 | 2683 |  | Sector-44 Noida(2) | 9390854 |
| 2685 | 36900.37000.37700.37800.39900.40000.55800.752400 | False Ceiling panel fixing | 8d | 2026-08-15 | 2026-08-22 | 2668, 2684 |  | Sector-44 Noida(2) | 9390864 |
| 2686 | 36900.37000.37700.37800.39900.40000.55900 | **6th Floor** | 121d | 2026-05-03 | 2026-08-31 |  | start no earlier than 2026-05-03 | Sector-44 Noida(2) | 9361254 |
| 2687 | 36900.37000.37700.37800.39900.40000.55900.752500 | Block Work | 10d | 2026-05-03 | 2026-05-12 | 2564 |  | Sector-44 Noida(2) | 9390874 |
| 2688 | 36900.37000.37700.37800.39900.40000.55900.752600 | Installation of temporary Main door | 7d | 2026-05-13 | 2026-05-19 | 2687 |  | Sector-44 Noida(2) | 9390884 |
| 2689 | 36900.37000.37700.37800.39900.40000.55900.752700 | Fire sprinkler pipe fixing | 3d | 2026-05-13 | 2026-05-15 | 2672, 2687 |  | Sector-44 Noida(2) | 9390894 |
| 2690 | 36900.37000.37700.37800.39900.40000.55900.752800 | Internal Plumbing Works | 7d | 2026-05-13 | 2026-05-19 | 2687 |  | Sector-44 Noida(2) | 9390904 |
| 2691 | 36900.37000.37700.37800.39900.40000.55900.752900 | Waterproofing | 12d | 2026-05-20 | 2026-05-31 | 2690 |  | Sector-44 Noida(2) | 9390914 |
| 2692 | 36900.37000.37700.37800.39900.40000.55900.753000 | Internal Plaster | 15d | 2026-06-01 | 2026-06-15 | 2690, 2691 |  | Sector-44 Noida(2) | 9390924 |
| 2693 | 36900.37000.37700.37800.39900.40000.55900.753100 | IPS flooring work | 11d | 2026-05-13 | 2026-05-23 | 2687 |  | Sector-44 Noida(2) | 9390934 |
| 2694 | 36900.37000.37700.37800.39900.40000.55900.753200 | Toilet dado work | 16d | 2026-06-16 | 2026-07-01 | 2690, 2691, 2692 |  | Sector-44 Noida(2) | 9390944 |
| 2695 | 36900.37000.37700.37800.39900.40000.55900.753300 | Toilet flooring work | 16d | 2026-07-02 | 2026-07-17 | 2694 |  | Sector-44 Noida(2) | 9390954 |
| 2696 | 36900.37000.37700.37800.39900.40000.55900.753400 | Living dinning flooring | 16d | 2026-07-18 | 2026-08-02 | 2693, 2695 |  | Sector-44 Noida(2) | 9390964 |
| 2697 | 36900.37000.37700.37800.39900.40000.55900.753500 | Electrical wiring work | 10d | 2026-07-24 | 2026-08-02 | 2696FS-10d |  | Sector-44 Noida(2) | 9390974 |
| 2698 | 36900.37000.37700.37800.39900.40000.55900.753600 | Aluminium door-window fixing | 17d | 2026-07-26 | 2026-08-11 | 2688, 2697FS-8d |  | Sector-44 Noida(2) | 9390984 |
| 2699 | 36900.37000.37700.37800.39900.40000.55900.753700 | Putty primer coat | 8d | 2026-08-04 | 2026-08-11 | 2698FS-8d |  | Sector-44 Noida(2) | 9390994 |
| 2700 | 36900.37000.37700.37800.39900.40000.55900.753800 | Prehung door fixing | 7d | 2026-08-07 | 2026-08-13 | 2699FS-5d |  | Sector-44 Noida(2) | 9391004 |
| 2701 | 36900.37000.37700.37800.39900.40000.55900.753900 | Painting 1st coat | 10d | 2026-08-14 | 2026-08-23 | 2700 |  | Sector-44 Noida(2) | 9391014 |
| 2702 | 36900.37000.37700.37800.39900.40000.55900.754000 | False Ceiling panel fixing | 8d | 2026-08-24 | 2026-08-31 | 2685, 2701 |  | Sector-44 Noida(2) | 9391024 |

| ID | WBS | Task | Duration | Start | Finish | Predecessors | Constraint | Calendar | Unique_Task_ID |
| --- | --- | --- | --- | --- | --- | --- | --- | --- | --- |
| 2703 | 36900.37000.37700.37800.39900.40000.56000 | **7th Floor** | 121d | 2026-05-11 | 2026-09-08 |  | start no earlier than 2026-05-11 | Sector-44 Noida(2) | 9360964 |
| 2704 | 36900.37000.37700.37800.39900.40000.56000.754100 | Block Work | 10d | 2026-05-11 | 2026-05-20 | 2565 |  | Sector-44 Noida(2) | 9391034 |
| 2705 | 36900.37000.37700.37800.39900.40000.56000.754200 | Installation of temporary Main door | 7d | 2026-05-21 | 2026-05-27 | 2704 |  | Sector-44 Noida(2) | 9391044 |
| 2706 | 36900.37000.37700.37800.39900.40000.56000.754300 | Fire sprinkler pipe fixing | 3d | 2026-05-21 | 2026-05-23 | 2689, 2704 |  | Sector-44 Noida(2) | 9391054 |
| 2707 | 36900.37000.37700.37800.39900.40000.56000.754400 | Internal Plumbing Works | 7d | 2026-05-21 | 2026-05-27 | 2704 |  | Sector-44 Noida(2) | 9391064 |
| 2708 | 36900.37000.37700.37800.39900.40000.56000.754500 | Waterproofing | 12d | 2026-05-28 | 2026-06-08 | 2707 |  | Sector-44 Noida(2) | 9391074 |
| 2709 | 36900.37000.37700.37800.39900.40000.56000.754600 | Internal Plaster | 15d | 2026-06-09 | 2026-06-23 | 2707, 2708 |  | Sector-44 Noida(2) | 9391084 |
| 2710 | 36900.37000.37700.37800.39900.40000.56000.754700 | IPS flooring work | 11d | 2026-05-21 | 2026-05-31 | 2704 |  | Sector-44 Noida(2) | 9391094 |
| 2711 | 36900.37000.37700.37800.39900.40000.56000.754800 | Toilet dado work | 16d | 2026-06-24 | 2026-07-09 | 2707, 2708, 2709 |  | Sector-44 Noida(2) | 9391104 |
| 2712 | 36900.37000.37700.37800.39900.40000.56000.754900 | Toilet flooring work | 16d | 2026-07-10 | 2026-07-25 | 2711 |  | Sector-44 Noida(2) | 9391114 |
| 2713 | 36900.37000.37700.37800.39900.40000.56000.755000 | Living dinning flooring | 16d | 2026-07-26 | 2026-08-10 | 2710, 2712 |  | Sector-44 Noida(2) | 9391124 |
| 2714 | 36900.37000.37700.37800.39900.40000.56000.755100 | Electrical wiring work | 10d | 2026-08-01 | 2026-08-10 | 2713FS-10d |  | Sector-44 Noida(2) | 9391134 |
| 2715 | 36900.37000.37700.37800.39900.40000.56000.755200 | Aluminium door-window fixing | 17d | 2026-08-03 | 2026-08-19 | 2705, 2714FS-8d |  | Sector-44 Noida(2) | 9391144 |
| 2716 | 36900.37000.37700.37800.39900.40000.56000.755300 | Putty primer coat | 8d | 2026-08-12 | 2026-08-19 | 2715FS-8d |  | Sector-44 Noida(2) | 9391154 |
| 2717 | 36900.37000.37700.37800.39900.40000.56000.755400 | Prehung door fixing | 7d | 2026-08-15 | 2026-08-21 | 2716FS-5d |  | Sector-44 Noida(2) | 9391164 |
| 2718 | 36900.37000.37700.37800.39900.40000.56000.755500 | Painting 1st coat | 10d | 2026-08-22 | 2026-08-31 | 2717 |  | Sector-44 Noida(2) | 9391174 |
| 2719 | 36900.37000.37700.37800.39900.40000.56000.755600 | False Ceiling panel fixing | 8d | 2026-09-01 | 2026-09-08 | 2702, 2718 |  | Sector-44 Noida(2) | 9391184 |
| 2720 | 36900.37000.37700.37800.39900.40000.56100 | **8th Floor** | 119d | 2026-05-21 | 2026-09-16 |  | start no earlier than 2026-05-21 | Sector-44 Noida(2) | 9360974 |
| 2721 | 36900.37000.37700.37800.39900.40000.56100.755700 | Block Work | 10d | 2026-05-21 | 2026-05-30 | 2566 |  | Sector-44 Noida(2) | 9391194 |
| 2722 | 36900.37000.37700.37800.39900.40000.56100.755800 | Installation of temporary Main door | 7d | 2026-05-31 | 2026-06-06 | 2721 |  | Sector-44 Noida(2) | 9391204 |
| 2723 | 36900.37000.37700.37800.39900.40000.56100.755900 | Fire sprinkler pipe fixing | 3d | 2026-05-31 | 2026-06-02 | 2706, 2721 |  | Sector-44 Noida(2) | 9391214 |
| 2724 | 36900.37000.37700.37800.39900.40000.56100.756000 | Internal Plumbing Works | 7d | 2026-05-31 | 2026-06-06 | 2721 |  | Sector-44 Noida(2) | 9391224 |
| 2725 | 36900.37000.37700.37800.39900.40000.56100.756100 | Waterproofing | 12d | 2026-06-07 | 2026-06-18 | 2724 |  | Sector-44 Noida(2) | 9391234 |
| 2726 | 36900.37000.37700.37800.39900.40000.56100.756200 | Internal Plaster | 5d | 2026-06-19 | 2026-06-23 | 2724, 2725 |  | Sector-44 Noida(2) | 9391244 |
| 2727 | 36900.37000.37700.37800.39900.40000.56100.756300 | IPS flooring work | 11d | 2026-05-31 | 2026-06-10 | 2721 |  | Sector-44 Noida(2) | 9391254 |
| 2728 | 36900.37000.37700.37800.39900.40000.56100.756400 | Toilet dado work | 6d | 2026-06-24 | 2026-06-29 | 2724, 2725, 2726 |  | Sector-44 Noida(2) | 9391264 |
| 2729 | 36900.37000.37700.37800.39900.40000.56100.756500 | Toilet flooring work | 6d | 2026-06-30 | 2026-07-05 | 2728 |  | Sector-44 Noida(2) | 9391274 |
| 2730 | 36900.37000.37700.37800.39900.40000.56100.756600 | Living dinning flooring | 16d | 2026-07-06 | 2026-07-21 | 2727, 2729 |  | Sector-44 Noida(2) | 9391284 |
| 2731 | 36900.37000.37700.37800.39900.40000.56100.756700 | Electrical wiring work | 10d | 2026-07-12 | 2026-07-21 | 2730FS-10d |  | Sector-44 Noida(2) | 9391294 |
| 2732 | 36900.37000.37700.37800.39900.40000.56100.756800 | Aluminium door-window fixing | 17d | 2026-07-14 | 2026-07-30 | 2722, 2731FS-8d |  | Sector-44 Noida(2) | 9391304 |
| 2733 | 36900.37000.37700.37800.39900.40000.56100.756900 | Putty primer coat | 8d | 2026-07-23 | 2026-07-30 | 2732FS-8d |  | Sector-44 Noida(2) | 9391314 |
| 2734 | 36900.37000.37700.37800.39900.40000.56100.757000 | Prehung door fixing | 7d | 2026-07-26 | 2026-08-01 | 2733FS-5d |  | Sector-44 Noida(2) | 9391324 |
| 2735 | 36900.37000.37700.37800.39900.40000.56100.757100 | Painting 1st coat | 10d | 2026-08-02 | 2026-08-11 | 2734 |  | Sector-44 Noida(2) | 9391334 |
| 2736 | 36900.37000.37700.37800.39900.40000.56100.757200 | False Ceiling panel fixing | 8d | 2026-09-09 | 2026-09-16 | 2719, 2735 |  | Sector-44 Noida(2) | 9391344 |

| ID | WBS | Task | Duration | Start | Finish | Predecessors | Constraint | Calendar | Unique_Task_ID |
| --- | --- | --- | --- | --- | --- | --- | --- | --- | --- |
| 2737 | 36900.37000.37700.37800.39900.40000.56200 | **9th Floor** | 121d | 2026-05-30 | 2026-09-27 |  | start no earlier than 2026-05-30 | Sector-44 Noida(2) | 9361004 |
| 2738 | 36900.37000.37700.37800.39900.40000.56200.757300 | Block Work | 10d | 2026-05-30 | 2026-06-08 | 2567 |  | Sector-44 Noida(2) | 9391354 |
| 2739 | 36900.37000.37700.37800.39900.40000.56200.757400 | Installation of temporary Main door | 7d | 2026-06-09 | 2026-06-15 | 2738 |  | Sector-44 Noida(2) | 9391364 |
| 2740 | 36900.37000.37700.37800.39900.40000.56200.757500 | Fire sprinkler pipe fixing | 3d | 2026-06-09 | 2026-06-11 | 2723, 2738 |  | Sector-44 Noida(2) | 9391374 |
| 2741 | 36900.37000.37700.37800.39900.40000.56200.757600 | Internal Plumbing Works | 7d | 2026-06-09 | 2026-06-15 | 2738 |  | Sector-44 Noida(2) | 9391384 |
| 2742 | 36900.37000.37700.37800.39900.40000.56200.757700 | Waterproofing | 12d | 2026-06-16 | 2026-06-27 | 2741 |  | Sector-44 Noida(2) | 9391394 |
| 2743 | 36900.37000.37700.37800.39900.40000.56200.757800 | Internal Plaster | 15d | 2026-06-28 | 2026-07-12 | 2741, 2742 |  | Sector-44 Noida(2) | 9391404 |
| 2744 | 36900.37000.37700.37800.39900.40000.56200.757900 | IPS flooring work | 11d | 2026-06-09 | 2026-06-19 | 2738 |  | Sector-44 Noida(2) | 9391414 |
| 2745 | 36900.37000.37700.37800.39900.40000.56200.758000 | Toilet dado work | 16d | 2026-07-13 | 2026-07-28 | 2741, 2742, 2743 |  | Sector-44 Noida(2) | 9391424 |
| 2746 | 36900.37000.37700.37800.39900.40000.56200.758100 | Toilet flooring work | 16d | 2026-07-29 | 2026-08-13 | 2745 |  | Sector-44 Noida(2) | 9391434 |
| 2747 | 36900.37000.37700.37800.39900.40000.56200.758200 | Living dinning flooring | 16d | 2026-08-14 | 2026-08-29 | 2744, 2746 |  | Sector-44 Noida(2) | 9391444 |
| 2748 | 36900.37000.37700.37800.39900.40000.56200.758300 | Electrical wiring work | 10d | 2026-08-20 | 2026-08-29 | 2747FS-10d |  | Sector-44 Noida(2) | 9391454 |
| 2749 | 36900.37000.37700.37800.39900.40000.56200.758400 | Aluminium door-window fixing | 17d | 2026-08-22 | 2026-09-07 | 2739, 2748FS-8d |  | Sector-44 Noida(2) | 9391464 |
| 2750 | 36900.37000.37700.37800.39900.40000.56200.758500 | Putty primer coat | 8d | 2026-08-31 | 2026-09-07 | 2749FS-8d |  | Sector-44 Noida(2) | 9391474 |
| 2751 | 36900.37000.37700.37800.39900.40000.56200.758600 | Prehung door fixing | 7d | 2026-09-03 | 2026-09-09 | 2750FS-5d |  | Sector-44 Noida(2) | 9391484 |
| 2752 | 36900.37000.37700.37800.39900.40000.56200.758700 | Painting 1st coat | 10d | 2026-09-10 | 2026-09-19 | 2751 |  | Sector-44 Noida(2) | 9391494 |
| 2753 | 36900.37000.37700.37800.39900.40000.56200.758800 | False Ceiling panel fixing | 8d | 2026-09-20 | 2026-09-27 | 2736, 2752 |  | Sector-44 Noida(2) | 9391504 |
| 2754 | 36900.37000.37700.37800.39900.40000.56300 | **10th Floor** | 120d | 2026-06-08 | 2026-10-05 |  | start no earlier than 2026-06-08 | Sector-44 Noida(2) | 9361194 |
| 2755 | 36900.37000.37700.37800.39900.40000.56300.758900 | Block Work | 10d | 2026-06-08 | 2026-06-17 | 2568 |  | Sector-44 Noida(2) | 9391514 |
| 2756 | 36900.37000.37700.37800.39900.40000.56300.759000 | Installation of temporary Main door | 7d | 2026-06-18 | 2026-06-24 | 2755 |  | Sector-44 Noida(2) | 9391524 |
| 2757 | 36900.37000.37700.37800.39900.40000.56300.759100 | Fire sprinkler pipe fixing | 3d | 2026-06-18 | 2026-06-20 | 2740, 2755 |  | Sector-44 Noida(2) | 9391534 |
| 2758 | 36900.37000.37700.37800.39900.40000.56300.759200 | Internal Plumbing Works | 7d | 2026-06-18 | 2026-06-24 | 2755 |  | Sector-44 Noida(2) | 9391544 |
| 2759 | 36900.37000.37700.37800.39900.40000.56300.759300 | Waterproofing | 12d | 2026-06-25 | 2026-07-06 | 2758 |  | Sector-44 Noida(2) | 9391554 |
| 2760 | 36900.37000.37700.37800.39900.40000.56300.759400 | Internal Plaster | 5d | 2026-07-07 | 2026-07-11 | 2758, 2759 |  | Sector-44 Noida(2) | 9391564 |
| 2761 | 36900.37000.37700.37800.39900.40000.56300.759500 | IPS flooring work | 1d | 2026-06-18 | 2026-06-18 | 2755 |  | Sector-44 Noida(2) | 9391574 |
| 2762 | 36900.37000.37700.37800.39900.40000.56300.759600 | Toilet dado work | 16d | 2026-07-12 | 2026-07-27 | 2758, 2759, 2760 |  | Sector-44 Noida(2) | 9391584 |
| 2763 | 36900.37000.37700.37800.39900.40000.56300.759700 | Toilet flooring work | 16d | 2026-07-28 | 2026-08-12 | 2762 |  | Sector-44 Noida(2) | 9391594 |
| 2764 | 36900.37000.37700.37800.39900.40000.56300.759800 | Living dinning flooring | 16d | 2026-08-13 | 2026-08-28 | 2761, 2763 |  | Sector-44 Noida(2) | 9391604 |
| 2765 | 36900.37000.37700.37800.39900.40000.56300.759900 | Electrical wiring work | 10d | 2026-08-19 | 2026-08-28 | 2764FS-10d |  | Sector-44 Noida(2) | 9391614 |
| 2766 | 36900.37000.37700.37800.39900.40000.56300.760000 | Aluminium door-window fixing | 17d | 2026-08-21 | 2026-09-06 | 2756, 2765FS-8d |  | Sector-44 Noida(2) | 9391624 |
| 2767 | 36900.37000.37700.37800.39900.40000.56300.760100 | Putty primer coat | 8d | 2026-08-30 | 2026-09-06 | 2766FS-8d |  | Sector-44 Noida(2) | 9391634 |
| 2768 | 36900.37000.37700.37800.39900.40000.56300.760200 | Prehung door fixing | 7d | 2026-09-02 | 2026-09-08 | 2767FS-5d |  | Sector-44 Noida(2) | 9391644 |
| 2769 | 36900.37000.37700.37800.39900.40000.56300.760300 | Painting 1st coat | 10d | 2026-09-09 | 2026-09-18 | 2768 |  | Sector-44 Noida(2) | 9391654 |
| 2770 | 36900.37000.37700.37800.39900.40000.56300.760400 | False Ceiling panel fixing | 8d | 2026-09-28 | 2026-10-05 | 2753, 2769 |  | Sector-44 Noida(2) | 9391664 |

| ID | WBS | Task | Duration | Start | Finish | Predecessors | Constraint | Calendar | Unique_Task_ID |
| --- | --- | --- | --- | --- | --- | --- | --- | --- | --- |
| 2771 | 36900.37000.37700.37800.39900.40000.56400 | **11th Floor** | 121d | 2026-06-17 | 2026-10-15 |  | start no earlier than 2026-06-17 | Sector-44 Noida(2) | 9361204 |
| 2772 | 36900.37000.37700.37800.39900.40000.56400.760500 | Block Work | 10d | 2026-06-17 | 2026-06-26 | 2569 |  | Sector-44 Noida(2) | 9391674 |
| 2773 | 36900.37000.37700.37800.39900.40000.56400.760600 | Installation of temporary Main door | 7d | 2026-06-27 | 2026-07-03 | 2772 |  | Sector-44 Noida(2) | 9391684 |
| 2774 | 36900.37000.37700.37800.39900.40000.56400.760700 | Fire sprinkler pipe fixing | 3d | 2026-06-27 | 2026-06-29 | 2757, 2772 |  | Sector-44 Noida(2) | 9391694 |
| 2775 | 36900.37000.37700.37800.39900.40000.56400.760800 | Internal Plumbing Works | 7d | 2026-06-27 | 2026-07-03 | 2772 |  | Sector-44 Noida(2) | 9391704 |
| 2776 | 36900.37000.37700.37800.39900.40000.56400.760900 | Waterproofing | 12d | 2026-07-04 | 2026-07-15 | 2775 |  | Sector-44 Noida(2) | 9391714 |
| 2777 | 36900.37000.37700.37800.39900.40000.56400.761000 | Internal Plaster | 15d | 2026-07-16 | 2026-07-30 | 2775, 2776 |  | Sector-44 Noida(2) | 9391724 |
| 2778 | 36900.37000.37700.37800.39900.40000.56400.761100 | IPS flooring work | 11d | 2026-06-27 | 2026-07-07 | 2772 |  | Sector-44 Noida(2) | 9391734 |
| 2779 | 36900.37000.37700.37800.39900.40000.56400.761200 | Toilet dado work | 16d | 2026-07-31 | 2026-08-15 | 2775, 2776, 2777 |  | Sector-44 Noida(2) | 9391744 |
| 2780 | 36900.37000.37700.37800.39900.40000.56400.761300 | Toilet flooring work | 16d | 2026-08-16 | 2026-08-31 | 2779 |  | Sector-44 Noida(2) | 9391754 |
| 2781 | 36900.37000.37700.37800.39900.40000.56400.761400 | Living dinning flooring | 16d | 2026-09-01 | 2026-09-16 | 2778, 2780 |  | Sector-44 Noida(2) | 9391764 |
| 2782 | 36900.37000.37700.37800.39900.40000.56400.761500 | Electrical wiring work | 10d | 2026-09-07 | 2026-09-16 | 2781FS-10d |  | Sector-44 Noida(2) | 9391774 |
| 2783 | 36900.37000.37700.37800.39900.40000.56400.761600 | Aluminium door-window fixing | 17d | 2026-09-09 | 2026-09-25 | 2773, 2782FS-8d |  | Sector-44 Noida(2) | 9391784 |
| 2784 | 36900.37000.37700.37800.39900.40000.56400.761700 | Putty primer coat | 8d | 2026-09-18 | 2026-09-25 | 2783FS-8d |  | Sector-44 Noida(2) | 9391794 |
| 2785 | 36900.37000.37700.37800.39900.40000.56400.761800 | Prehung door fixing | 7d | 2026-09-21 | 2026-09-27 | 2784FS-5d |  | Sector-44 Noida(2) | 9391804 |
| 2786 | 36900.37000.37700.37800.39900.40000.56400.761900 | Painting 1st coat | 10d | 2026-09-28 | 2026-10-07 | 2785 |  | Sector-44 Noida(2) | 9391814 |
| 2787 | 36900.37000.37700.37800.39900.40000.56400.762000 | False Ceiling panel fixing | 8d | 2026-10-08 | 2026-10-15 | 2770, 2786 |  | Sector-44 Noida(2) | 9391824 |
| 2788 | 36900.37000.37700.37800.39900.40000.56500 | **12th Floor** | 121d | 2026-06-26 | 2026-10-24 |  | start no earlier than 2026-06-26 | Sector-44 Noida(2) | 9361214 |
| 2789 | 36900.37000.37700.37800.39900.40000.56500.762100 | Block Work | 10d | 2026-06-26 | 2026-07-05 | 2570 |  | Sector-44 Noida(2) | 9391834 |
| 2790 | 36900.37000.37700.37800.39900.40000.56500.762200 | Installation of temporary Main door | 7d | 2026-07-06 | 2026-07-12 | 2789 |  | Sector-44 Noida(2) | 9391844 |
| 2791 | 36900.37000.37700.37800.39900.40000.56500.762300 | Fire sprinkler pipe fixing | 3d | 2026-07-06 | 2026-07-08 | 2774, 2789 |  | Sector-44 Noida(2) | 9391854 |
| 2792 | 36900.37000.37700.37800.39900.40000.56500.762400 | Internal Plumbing Works | 7d | 2026-07-06 | 2026-07-12 | 2789 |  | Sector-44 Noida(2) | 9391864 |
| 2793 | 36900.37000.37700.37800.39900.40000.56500.762500 | Waterproofing | 12d | 2026-07-13 | 2026-07-24 | 2792 |  | Sector-44 Noida(2) | 9391874 |
| 2794 | 36900.37000.37700.37800.39900.40000.56500.762600 | Internal Plaster | 15d | 2026-07-25 | 2026-08-08 | 2792, 2793 |  | Sector-44 Noida(2) | 9391884 |
| 2795 | 36900.37000.37700.37800.39900.40000.56500.762700 | IPS flooring work | 11d | 2026-07-06 | 2026-07-16 | 2789 |  | Sector-44 Noida(2) | 9391894 |
| 2796 | 36900.37000.37700.37800.39900.40000.56500.762800 | Toilet dado work | 16d | 2026-08-09 | 2026-08-24 | 2792, 2793, 2794 |  | Sector-44 Noida(2) | 9391904 |
| 2797 | 36900.37000.37700.37800.39900.40000.56500.762900 | Toilet flooring work | 16d | 2026-08-25 | 2026-09-09 | 2796 |  | Sector-44 Noida(2) | 9391914 |
| 2798 | 36900.37000.37700.37800.39900.40000.56500.763000 | Living dinning flooring | 16d | 2026-09-10 | 2026-09-25 | 2795, 2797 |  | Sector-44 Noida(2) | 9391924 |
| 2799 | 36900.37000.37700.37800.39900.40000.56500.763100 | Electrical wiring work | 10d | 2026-09-16 | 2026-09-25 | 2798FS-10d |  | Sector-44 Noida(2) | 9391934 |
| 2800 | 36900.37000.37700.37800.39900.40000.56500.763200 | Aluminium door-window fixing | 17d | 2026-09-18 | 2026-10-04 | 2790, 2799FS-8d |  | Sector-44 Noida(2) | 9391944 |
| 2801 | 36900.37000.37700.37800.39900.40000.56500.763300 | Putty primer coat | 8d | 2026-09-27 | 2026-10-04 | 2800FS-8d |  | Sector-44 Noida(2) | 9391954 |
| 2802 | 36900.37000.37700.37800.39900.40000.56500.763400 | Prehung door fixing | 7d | 2026-09-30 | 2026-10-06 | 2801FS-5d |  | Sector-44 Noida(2) | 9391964 |
| 2803 | 36900.37000.37700.37800.39900.40000.56500.763500 | Painting 1st coat | 10d | 2026-10-07 | 2026-10-16 | 2802 |  | Sector-44 Noida(2) | 9391974 |
| 2804 | 36900.37000.37700.37800.39900.40000.56500.763600 | False Ceiling panel fixing | 8d | 2026-10-17 | 2026-10-24 | 2787, 2803 |  | Sector-44 Noida(2) | 9391984 |

| ID | WBS | Task | Duration | Start | Finish | Predecessors | Constraint | Calendar | Unique_Task_ID |
| --- | --- | --- | --- | --- | --- | --- | --- | --- | --- |
| 2805 | 36900.37000.37700.37800.39900.40000.56600 | **13th Floor** | 121d | 2026-07-05 | 2026-12-17 |  | start no earlier than 2026-07-05 | Sector-44 Noida(2) | 9361224 |
| 2806 | 36900.37000.37700.37800.39900.40000.56600.763700 | Block Work | 10d | 2026-07-05 | 2026-07-14 | 2571 |  | Sector-44 Noida(2) | 9391994 |
| 2807 | 36900.37000.37700.37800.39900.40000.56600.763800 | Installation of temporary Main door | 7d | 2026-07-15 | 2026-07-21 | 2806 |  | Sector-44 Noida(2) | 9392004 |
| 2808 | 36900.37000.37700.37800.39900.40000.56600.763900 | Fire sprinkler pipe fixing | 3d | 2026-07-15 | 2026-07-17 | 2791, 2806 |  | Sector-44 Noida(2) | 9392014 |
| 2809 | 36900.37000.37700.37800.39900.40000.56600.764000 | Internal Plumbing Works | 7d | 2026-07-15 | 2026-07-21 | 2806 |  | Sector-44 Noida(2) | 9392024 |
| 2810 | 36900.37000.37700.37800.39900.40000.56600.764100 | Waterproofing | 12d | 2026-07-22 | 2026-08-02 | 2809 |  | Sector-44 Noida(2) | 9392034 |
| 2811 | 36900.37000.37700.37800.39900.40000.56600.764200 | Internal Plaster | 15d | 2026-08-03 | 2026-08-17 | 2809, 2810 |  | Sector-44 Noida(2) | 9392044 |
| 2812 | 36900.37000.37700.37800.39900.40000.56600.764300 | IPS flooring work | 11d | 2026-07-15 | 2026-07-25 | 2806 |  | Sector-44 Noida(2) | 9392054 |
| 2813 | 36900.37000.37700.37800.39900.40000.56600.764400 | Toilet dado work | 16d | 2026-08-18 | 2026-09-02 | 2809, 2810, 2811 |  | Sector-44 Noida(2) | 9392064 |
| 2814 | 36900.37000.37700.37800.39900.40000.56600.764500 | Toilet flooring work | 16d | 2026-09-03 | 2026-09-18 | 2813 |  | Sector-44 Noida(2) | 9392074 |
| 2815 | 36900.37000.37700.37800.39900.40000.56600.764600 | Living dinning flooring | 16d | 2026-09-19 | 2026-10-04 | 2812, 2814 |  | Sector-44 Noida(2) | 9392084 |
| 2816 | 36900.37000.37700.37800.39900.40000.56600.764700 | Electrical wiring work | 10d | 2026-09-25 | 2026-10-04 | 2815FS-10d |  | Sector-44 Noida(2) | 9392094 |
| 2817 | 36900.37000.37700.37800.39900.40000.56600.764800 | Aluminium door-window fixing | 17d | 2026-09-27 | 2026-10-13 | 2807, 2816FS-8d |  | Sector-44 Noida(2) | 9392104 |
| 2818 | 36900.37000.37700.37800.39900.40000.56600.764900 | Putty primer coat | 8d | 2026-10-06 | 2026-10-13 | 2817FS-8d |  | Sector-44 Noida(2) | 9392114 |
| 2819 | 36900.37000.37700.37800.39900.40000.56600.765000 | Prehung door fixing | 7d | 2026-10-09 | 2026-10-15 | 2818FS-5d |  | Sector-44 Noida(2) | 9392124 |
| 2820 | 36900.37000.37700.37800.39900.40000.56600.765100 | Painting 1st coat | 10d | 2026-10-16 | 2026-10-25 | 2819 |  | Sector-44 Noida(2) | 9392134 |
| 2821 | 36900.37000.37700.37800.39900.40000.56600.765200 | False Ceiling panel fixing | 8d | 2026-10-26 | 2026-12-17 | 2804, 2820 |  | Sector-44 Noida(2) | 9392144 |
| 2822 | 36900.37000.37700.37800.39900.40000.56700 | **14th Floor** | 121d | 2026-07-14 | 2026-12-26 |  | start no earlier than 2026-07-14 | Sector-44 Noida(2) | 9361234 |
| 2823 | 36900.37000.37700.37800.39900.40000.56700.765300 | Block Work | 10d | 2026-07-14 | 2026-07-23 | 2572 |  | Sector-44 Noida(2) | 9392154 |
| 2824 | 36900.37000.37700.37800.39900.40000.56700.765400 | Installation of temporary Main door | 7d | 2026-07-24 | 2026-07-30 | 2823 |  | Sector-44 Noida(2) | 9392164 |
| 2825 | 36900.37000.37700.37800.39900.40000.56700.765500 | Fire sprinkler pipe fixing | 3d | 2026-07-24 | 2026-07-26 | 2808, 2823 |  | Sector-44 Noida(2) | 9392174 |
| 2826 | 36900.37000.37700.37800.39900.40000.56700.765600 | Internal Plumbing Works | 7d | 2026-07-24 | 2026-07-30 | 2823 |  | Sector-44 Noida(2) | 9392184 |
| 2827 | 36900.37000.37700.37800.39900.40000.56700.765700 | Waterproofing | 12d | 2026-07-31 | 2026-08-11 | 2826 |  | Sector-44 Noida(2) | 9392194 |
| 2828 | 36900.37000.37700.37800.39900.40000.56700.765800 | Internal Plaster | 15d | 2026-08-12 | 2026-08-26 | 2826, 2827 |  | Sector-44 Noida(2) | 9392204 |
| 2829 | 36900.37000.37700.37800.39900.40000.56700.765900 | IPS flooring work | 11d | 2026-07-24 | 2026-08-03 | 2823 |  | Sector-44 Noida(2) | 9392214 |
| 2830 | 36900.37000.37700.37800.39900.40000.56700.766000 | Toilet dado work | 16d | 2026-08-27 | 2026-09-11 | 2826, 2827, 2828 |  | Sector-44 Noida(2) | 9392224 |
| 2831 | 36900.37000.37700.37800.39900.40000.56700.766100 | Toilet flooring work | 16d | 2026-09-12 | 2026-09-27 | 2830 |  | Sector-44 Noida(2) | 9392234 |
| 2832 | 36900.37000.37700.37800.39900.40000.56700.766200 | Living dinning flooring | 16d | 2026-09-28 | 2026-10-13 | 2829, 2831 |  | Sector-44 Noida(2) | 9392244 |
| 2833 | 36900.37000.37700.37800.39900.40000.56700.766300 | Electrical wiring work | 10d | 2026-10-04 | 2026-10-13 | 2832FS-10d |  | Sector-44 Noida(2) | 9392254 |
| 2834 | 36900.37000.37700.37800.39900.40000.56700.766400 | Aluminium door-window fixing | 17d | 2026-10-06 | 2026-10-22 | 2824, 2833FS-8d |  | Sector-44 Noida(2) | 9392264 |
| 2835 | 36900.37000.37700.37800.39900.40000.56700.766500 | Putty primer coat | 8d | 2026-10-15 | 2026-10-22 | 2834FS-8d |  | Sector-44 Noida(2) | 9392274 |
| 2836 | 36900.37000.37700.37800.39900.40000.56700.766600 | Prehung door fixing | 7d | 2026-10-18 | 2026-10-24 | 2835FS-5d |  | Sector-44 Noida(2) | 9392284 |
| 2837 | 36900.37000.37700.37800.39900.40000.56700.766700 | Painting 1st coat | 10d | 2026-10-25 | 2026-12-18 | 2836 |  | Sector-44 Noida(2) | 9392294 |
| 2838 | 36900.37000.37700.37800.39900.40000.56700.766800 | False Ceiling panel fixing | 8d | 2026-12-19 | 2026-12-26 | 2821, 2837 |  | Sector-44 Noida(2) | 9392304 |

| ID | WBS | Task | Duration | Start | Finish | Predecessors | Constraint | Calendar | Unique_Task_ID |
| --- | --- | --- | --- | --- | --- | --- | --- | --- | --- |
| 2839 | 36900.37000.37700.37800.39900.40000.56800 | **15th Floor** | 121d | 2026-07-23 | 2027-01-04 |  | start no earlier than 2026-07-23 | Sector-44 Noida(2) | 9361244 |
| 2840 | 36900.37000.37700.37800.39900.40000.56800.766900 | Block Work | 10d | 2026-07-23 | 2026-08-01 | 2573 |  | Sector-44 Noida(2) | 9392314 |
| 2841 | 36900.37000.37700.37800.39900.40000.56800.767000 | Installation of temporary Main door | 7d | 2026-08-02 | 2026-08-08 | 2840 |  | Sector-44 Noida(2) | 9392324 |
| 2842 | 36900.37000.37700.37800.39900.40000.56800.767100 | Fire sprinkler pipe fixing | 3d | 2026-08-02 | 2026-08-04 | 2825, 2840 |  | Sector-44 Noida(2) | 9392334 |
| 2843 | 36900.37000.37700.37800.39900.40000.56800.767200 | Internal Plumbing Works | 7d | 2026-08-02 | 2026-08-08 | 2840 |  | Sector-44 Noida(2) | 9392344 |
| 2844 | 36900.37000.37700.37800.39900.40000.56800.767300 | Waterproofing | 12d | 2026-08-09 | 2026-08-20 | 2843 |  | Sector-44 Noida(2) | 9392354 |
| 2845 | 36900.37000.37700.37800.39900.40000.56800.767400 | Internal Plaster | 15d | 2026-08-21 | 2026-09-04 | 2843, 2844 |  | Sector-44 Noida(2) | 9392364 |
| 2846 | 36900.37000.37700.37800.39900.40000.56800.767500 | IPS flooring work | 1d | 2026-08-02 | 2026-08-02 | 2840 |  | Sector-44 Noida(2) | 9392374 |
| 2847 | 36900.37000.37700.37800.39900.40000.56800.767600 | Toilet dado work | 16d | 2026-09-05 | 2026-09-20 | 2843, 2844, 2845 |  | Sector-44 Noida(2) | 9392384 |
| 2848 | 36900.37000.37700.37800.39900.40000.56800.767700 | Toilet flooring work | 16d | 2026-09-21 | 2026-10-06 | 2847 |  | Sector-44 Noida(2) | 9392394 |
| 2849 | 36900.37000.37700.37800.39900.40000.56800.767800 | Living dinning flooring | 16d | 2026-10-07 | 2026-10-22 | 2846, 2848 |  | Sector-44 Noida(2) | 9392404 |
| 2850 | 36900.37000.37700.37800.39900.40000.56800.767900 | Electrical wiring work | 10d | 2026-10-13 | 2026-10-22 | 2849FS-10d |  | Sector-44 Noida(2) | 9392414 |
| 2851 | 36900.37000.37700.37800.39900.40000.56800.768000 | Aluminium door-window fixing | 17d | 2026-10-15 | 2026-10-31 | 2841, 2850FS-8d |  | Sector-44 Noida(2) | 9392424 |
| 2852 | 36900.37000.37700.37800.39900.40000.56800.768100 | Putty primer coat | 8d | 2026-10-24 | 2026-10-31 | 2851FS-8d |  | Sector-44 Noida(2) | 9392434 |
| 2853 | 36900.37000.37700.37800.39900.40000.56800.768200 | Prehung door fixing | 7d | 2026-10-27 | 2026-12-17 | 2852FS-5d |  | Sector-44 Noida(2) | 9392444 |
| 2854 | 36900.37000.37700.37800.39900.40000.56800.768300 | Painting 1st coat | 10d | 2026-12-18 | 2026-12-27 | 2853 |  | Sector-44 Noida(2) | 9392454 |
| 2855 | 36900.37000.37700.37800.39900.40000.56800.768400 | False Ceiling panel fixing | 8d | 2026-12-28 | 2027-01-04 | 2838, 2854 |  | Sector-44 Noida(2) | 9392464 |
| 2856 | 36900.37000.37700.37800.39900.40000.56900 | **16th Floor** | 124d | 2026-07-31 | 2027-01-15 |  | start no earlier than 2026-07-31 | Sector-44 Noida(2) | 9361184 |
| 2857 | 36900.37000.37700.37800.39900.40000.56900.768500 | Block Work | 10d | 2026-07-31 | 2026-08-09 | 2574 |  | Sector-44 Noida(2) | 9392474 |
| 2858 | 36900.37000.37700.37800.39900.40000.56900.768600 | Installation of temporary Main door | 7d | 2026-08-10 | 2026-08-16 | 2857 |  | Sector-44 Noida(2) | 9392484 |
| 2859 | 36900.37000.37700.37800.39900.40000.56900.768700 | Fire sprinkler pipe fixing | 3d | 2026-08-10 | 2026-08-12 | 2842, 2857 |  | Sector-44 Noida(2) | 9392494 |
| 2860 | 36900.37000.37700.37800.39900.40000.56900.768800 | Internal Plumbing Works | 10d | 2026-08-10 | 2026-08-19 | 2857 |  | Sector-44 Noida(2) | 9392504 |
| 2861 | 36900.37000.37700.37800.39900.40000.56900.768900 | Waterproofing | 12d | 2026-08-20 | 2026-08-31 | 2860 |  | Sector-44 Noida(2) | 9392514 |
| 2862 | 36900.37000.37700.37800.39900.40000.56900.769000 | Internal Plaster | 15d | 2026-09-01 | 2026-09-15 | 2860, 2861 |  | Sector-44 Noida(2) | 9392524 |
| 2863 | 36900.37000.37700.37800.39900.40000.56900.769100 | IPS flooring work | 11d | 2026-08-10 | 2026-08-20 | 2857 |  | Sector-44 Noida(2) | 9392534 |
| 2864 | 36900.37000.37700.37800.39900.40000.56900.769200 | Toilet dado work | 16d | 2026-09-16 | 2026-10-01 | 2860, 2861, 2862 |  | Sector-44 Noida(2) | 9392544 |
| 2865 | 36900.37000.37700.37800.39900.40000.56900.769300 | Toilet flooring work | 16d | 2026-10-02 | 2026-10-17 | 2864 |  | Sector-44 Noida(2) | 9392554 |
| 2866 | 36900.37000.37700.37800.39900.40000.56900.769400 | Living dinning flooring | 16d | 2026-10-18 | 2026-12-17 | 2863, 2865 |  | Sector-44 Noida(2) | 9392564 |
| 2867 | 36900.37000.37700.37800.39900.40000.56900.769500 | Electrical wiring work | 10d | 2026-10-24 | 2026-12-17 | 2866FS-10d |  | Sector-44 Noida(2) | 9392574 |
| 2868 | 36900.37000.37700.37800.39900.40000.56900.769600 | Aluminium door-window fixing | 17d | 2026-10-26 | 2026-12-26 | 2858, 2867FS-8d |  | Sector-44 Noida(2) | 9392584 |
| 2869 | 36900.37000.37700.37800.39900.40000.56900.769700 | Putty primer coat | 8d | 2026-12-19 | 2026-12-26 | 2868FS-8d |  | Sector-44 Noida(2) | 9392594 |
| 2870 | 36900.37000.37700.37800.39900.40000.56900.769800 | Prehung door fixing | 7d | 2026-12-22 | 2026-12-28 | 2869FS-5d |  | Sector-44 Noida(2) | 9392604 |
| 2871 | 36900.37000.37700.37800.39900.40000.56900.769900 | Painting 1st coat | 10d | 2026-12-29 | 2027-01-07 | 2870 |  | Sector-44 Noida(2) | 9392614 |
| 2872 | 36900.37000.37700.37800.39900.40000.56900.770000 | False Ceiling panel fixing | 8d | 2027-01-08 | 2027-01-15 | 2855, 2871 |  | Sector-44 Noida(2) | 9392624 |

| ID | WBS | Task | Duration | Start | Finish | Predecessors | Constraint | Calendar | Unique_Task_ID |
| --- | --- | --- | --- | --- | --- | --- | --- | --- | --- |
| 2873 | 36900.37000.37700.37800.39900.40000.57000 | **17th Floor** | 124d | 2026-08-08 | 2027-01-23 |  | start no earlier than 2026-08-08 | Sector-44 Noida(2) | 9361174 |
| 2874 | 36900.37000.37700.37800.39900.40000.57000.770100 | Block Work | 10d | 2026-08-08 | 2026-08-17 | 2575 |  | Sector-44 Noida(2) | 9392634 |
| 2875 | 36900.37000.37700.37800.39900.40000.57000.770200 | Installation of temporary Main door | 7d | 2026-08-18 | 2026-08-24 | 2874 |  | Sector-44 Noida(2) | 9392644 |
| 2876 | 36900.37000.37700.37800.39900.40000.57000.770300 | Fire sprinkler pipe fixing | 3d | 2026-08-18 | 2026-08-20 | 2859, 2874 |  | Sector-44 Noida(2) | 9392654 |
| 2877 | 36900.37000.37700.37800.39900.40000.57000.770400 | Internal Plumbing Works | 7d | 2026-08-18 | 2026-08-24 | 2874 |  | Sector-44 Noida(2) | 9392664 |
| 2878 | 36900.37000.37700.37800.39900.40000.57000.770500 | Waterproofing | 12d | 2026-08-25 | 2026-09-05 | 2877 |  | Sector-44 Noida(2) | 9392674 |
| 2879 | 36900.37000.37700.37800.39900.40000.57000.770600 | Internal Plaster | 15d | 2026-09-06 | 2026-09-20 | 2877, 2878 |  | Sector-44 Noida(2) | 9392684 |
| 2880 | 36900.37000.37700.37800.39900.40000.57000.770700 | IPS flooring work | 11d | 2026-08-18 | 2026-08-28 | 2874 |  | Sector-44 Noida(2) | 9392694 |
| 2881 | 36900.37000.37700.37800.39900.40000.57000.770800 | Toilet dado work | 16d | 2026-09-21 | 2026-10-06 | 2877, 2878, 2879 |  | Sector-44 Noida(2) | 9392704 |
| 2882 | 36900.37000.37700.37800.39900.40000.57000.770900 | Toilet flooring work | 16d | 2026-10-07 | 2026-10-22 | 2881 |  | Sector-44 Noida(2) | 9392714 |
| 2883 | 36900.37000.37700.37800.39900.40000.57000.771000 | Living dinning flooring | 16d | 2026-10-23 | 2026-12-22 | 2880, 2882 |  | Sector-44 Noida(2) | 9392724 |
| 2884 | 36900.37000.37700.37800.39900.40000.57000.771100 | Electrical wiring work | 10d | 2026-10-29 | 2026-12-22 | 2883FS-10d |  | Sector-44 Noida(2) | 9392734 |
| 2885 | 36900.37000.37700.37800.39900.40000.57000.771200 | Aluminium door-window fixing | 17d | 2026-10-31 | 2026-12-31 | 2875, 2884FS-8d |  | Sector-44 Noida(2) | 9392744 |
| 2886 | 36900.37000.37700.37800.39900.40000.57000.771300 | Putty primer coat | 8d | 2026-12-24 | 2026-12-31 | 2885FS-8d |  | Sector-44 Noida(2) | 9392754 |
| 2887 | 36900.37000.37700.37800.39900.40000.57000.771400 | Prehung door fixing | 7d | 2026-12-27 | 2027-01-02 | 2886FS-5d |  | Sector-44 Noida(2) | 9392764 |
| 2888 | 36900.37000.37700.37800.39900.40000.57000.771500 | Painting 1st coat | 10d | 2027-01-03 | 2027-01-12 | 2887 |  | Sector-44 Noida(2) | 9392774 |
| 2889 | 36900.37000.37700.37800.39900.40000.57000.771600 | False Ceiling panel fixing | 8d | 2027-01-16 | 2027-01-23 | 2872, 2888 |  | Sector-44 Noida(2) | 9392784 |
| 2890 | 36900.37000.37700.37800.39900.40000.57100 | **18th Floor** | 124d | 2026-08-16 | 2027-01-31 |  | start no earlier than 2026-08-16 | Sector-44 Noida(2) | 9361154 |
| 2891 | 36900.37000.37700.37800.39900.40000.57100.771700 | Block Work | 10d | 2026-08-16 | 2026-08-25 | 2576 |  | Sector-44 Noida(2) | 9392794 |
| 2892 | 36900.37000.37700.37800.39900.40000.57100.771800 | Installation of temporary Main door | 7d | 2026-08-26 | 2026-09-01 | 2891 |  | Sector-44 Noida(2) | 9392804 |
| 2893 | 36900.37000.37700.37800.39900.40000.57100.771900 | Fire sprinkler pipe fixing | 3d | 2026-08-26 | 2026-08-28 | 2876, 2891 |  | Sector-44 Noida(2) | 9392814 |
| 2894 | 36900.37000.37700.37800.39900.40000.57100.772000 | Internal Plumbing Works | 7d | 2026-08-26 | 2026-09-01 | 2891 |  | Sector-44 Noida(2) | 9392824 |
| 2895 | 36900.37000.37700.37800.39900.40000.57100.772100 | Waterproofing | 12d | 2026-09-02 | 2026-09-13 | 2894 |  | Sector-44 Noida(2) | 9392834 |
| 2896 | 36900.37000.37700.37800.39900.40000.57100.772200 | Internal Plaster | 15d | 2026-09-14 | 2026-09-28 | 2894, 2895 |  | Sector-44 Noida(2) | 9392844 |
| 2897 | 36900.37000.37700.37800.39900.40000.57100.772300 | IPS flooring work | 11d | 2026-08-26 | 2026-09-05 | 2891 |  | Sector-44 Noida(2) | 9392854 |
| 2898 | 36900.37000.37700.37800.39900.40000.57100.772400 | Toilet dado work | 16d | 2026-09-29 | 2026-10-14 | 2894, 2895, 2896 |  | Sector-44 Noida(2) | 9392864 |
| 2899 | 36900.37000.37700.37800.39900.40000.57100.772500 | Toilet flooring work | 16d | 2026-10-15 | 2026-10-30 | 2898 |  | Sector-44 Noida(2) | 9392874 |
| 2900 | 36900.37000.37700.37800.39900.40000.57100.772600 | Living dinning flooring | 16d | 2026-10-31 | 2026-12-30 | 2897, 2899 |  | Sector-44 Noida(2) | 9392884 |
| 2901 | 36900.37000.37700.37800.39900.40000.57100.772700 | Electrical wiring work | 10d | 2026-12-21 | 2026-12-30 | 2900FS-10d |  | Sector-44 Noida(2) | 9392894 |
| 2902 | 36900.37000.37700.37800.39900.40000.57100.772800 | Aluminium door-window fixing | 7d | 2026-12-23 | 2026-12-29 | 2892, 2901FS-8d |  | Sector-44 Noida(2) | 9392904 |
| 2903 | 36900.37000.37700.37800.39900.40000.57100.772900 | Putty primer coat | 8d | 2026-12-22 | 2026-12-29 | 2902FS-8d |  | Sector-44 Noida(2) | 9392914 |
| 2904 | 36900.37000.37700.37800.39900.40000.57100.773000 | Prehung door fixing | 7d | 2026-12-25 | 2026-12-31 | 2903FS-5d |  | Sector-44 Noida(2) | 9392924 |
| 2905 | 36900.37000.37700.37800.39900.40000.57100.773100 | Painting 1st coat | 10d | 2027-01-01 | 2027-01-10 | 2904 |  | Sector-44 Noida(2) | 9392934 |
| 2906 | 36900.37000.37700.37800.39900.40000.57100.773200 | False Ceiling panel fixing | 8d | 2027-01-24 | 2027-01-31 | 2889, 2905 |  | Sector-44 Noida(2) | 9392944 |

| ID | WBS | Task | Duration | Start | Finish | Predecessors | Constraint | Calendar | Unique_Task_ID |
| --- | --- | --- | --- | --- | --- | --- | --- | --- | --- |
| 2907 | 36900.37000.37700.37800.39900.40000.57200 | **19th Floor** | 124d | 2026-08-24 | 2027-02-08 |  | start no earlier than 2026-08-24 | Sector-44 Noida(2) | 9361144 |
| 2908 | 36900.37000.37700.37800.39900.40000.57200.773300 | Block Work | 10d | 2026-08-24 | 2026-09-02 | 2577 |  | Sector-44 Noida(2) | 9392954 |
| 2909 | 36900.37000.37700.37800.39900.40000.57200.773400 | Installation of temporary Main door | 7d | 2026-09-03 | 2026-09-09 | 2908 |  | Sector-44 Noida(2) | 9392964 |
| 2910 | 36900.37000.37700.37800.39900.40000.57200.773500 | Fire sprinkler pipe fixing | 3d | 2026-09-03 | 2026-09-05 | 2893, 2908 |  | Sector-44 Noida(2) | 9392974 |
| 2911 | 36900.37000.37700.37800.39900.40000.57200.773600 | Internal Plumbing Works | 7d | 2026-09-03 | 2026-09-09 | 2908 |  | Sector-44 Noida(2) | 9392984 |
| 2912 | 36900.37000.37700.37800.39900.40000.57200.773700 | Waterproofing | 12d | 2026-09-10 | 2026-09-21 | 2911 |  | Sector-44 Noida(2) | 9392994 |
| 2913 | 36900.37000.37700.37800.39900.40000.57200.773800 | Internal Plaster | 15d | 2026-09-22 | 2026-10-06 | 2911, 2912 |  | Sector-44 Noida(2) | 9393004 |
| 2914 | 36900.37000.37700.37800.39900.40000.57200.773900 | IPS flooring work | 11d | 2026-09-03 | 2026-09-13 | 2908 |  | Sector-44 Noida(2) | 9393014 |
| 2915 | 36900.37000.37700.37800.39900.40000.57200.774000 | Toilet dado work | 16d | 2026-10-07 | 2026-10-22 | 2911, 2912, 2913 |  | Sector-44 Noida(2) | 9393024 |
| 2916 | 36900.37000.37700.37800.39900.40000.57200.774100 | Toilet flooring work | 16d | 2026-10-23 | 2026-12-22 | 2915 |  | Sector-44 Noida(2) | 9393034 |
| 2917 | 36900.37000.37700.37800.39900.40000.57200.774200 | Living dinning flooring | 16d | 2026-12-23 | 2027-01-07 | 2914, 2916 |  | Sector-44 Noida(2) | 9393044 |
| 2918 | 36900.37000.37700.37800.39900.40000.57200.774300 | Electrical wiring work | 10d | 2026-12-29 | 2027-01-07 | 2917FS-10d |  | Sector-44 Noida(2) | 9393054 |
| 2919 | 36900.37000.37700.37800.39900.40000.57200.774400 | Aluminium door-window fixing | 17d | 2026-12-31 | 2027-01-16 | 2909, 2918FS-8d |  | Sector-44 Noida(2) | 9393064 |
| 2920 | 36900.37000.37700.37800.39900.40000.57200.774500 | Putty primer coat | 8d | 2027-01-09 | 2027-01-16 | 2919FS-8d |  | Sector-44 Noida(2) | 9393074 |
| 2921 | 36900.37000.37700.37800.39900.40000.57200.774600 | Prehung door fixing | 7d | 2027-01-12 | 2027-01-18 | 2920FS-5d |  | Sector-44 Noida(2) | 9393084 |
| 2922 | 36900.37000.37700.37800.39900.40000.57200.774700 | Painting 1st coat | 10d | 2027-01-19 | 2027-01-28 | 2921 |  | Sector-44 Noida(2) | 9393094 |
| 2923 | 36900.37000.37700.37800.39900.40000.57200.774800 | False Ceiling panel fixing | 8d | 2027-02-01 | 2027-02-08 | 2906, 2922 |  | Sector-44 Noida(2) | 9393104 |
| 2924 | 36900.37000.37700.37800.39900.40000.57300 | **20th Floor** | 125d | 2026-08-31 | 2027-02-16 |  | start no earlier than 2026-08-31 | Sector-44 Noida(2) | 9361114 |
| 2925 | 36900.37000.37700.37800.39900.40000.57300.774900 | Block Work | 10d | 2026-08-31 | 2026-09-09 | 2578 |  | Sector-44 Noida(2) | 9393114 |
| 2926 | 36900.37000.37700.37800.39900.40000.57300.775000 | Installation of temporary Main door | 7d | 2026-09-10 | 2026-09-16 | 2925 |  | Sector-44 Noida(2) | 9393124 |
| 2927 | 36900.37000.37700.37800.39900.40000.57300.775100 | Fire sprinkler pipe fixing | 3d | 2026-09-10 | 2026-09-12 | 2910, 2925 |  | Sector-44 Noida(2) | 9393134 |
| 2928 | 36900.37000.37700.37800.39900.40000.57300.775200 | Internal Plumbing Works | 7d | 2026-09-10 | 2026-09-16 | 2925 |  | Sector-44 Noida(2) | 9393144 |
| 2929 | 36900.37000.37700.37800.39900.40000.57300.775300 | Waterproofing | 12d | 2026-09-17 | 2026-09-28 | 2928 |  | Sector-44 Noida(2) | 9393154 |
| 2930 | 36900.37000.37700.37800.39900.40000.57300.775400 | Internal Plaster | 15d | 2026-09-29 | 2026-10-13 | 2928, 2929 |  | Sector-44 Noida(2) | 9393164 |
| 2931 | 36900.37000.37700.37800.39900.40000.57300.775500 | IPS flooring work | 11d | 2026-09-10 | 2026-09-20 | 2925 |  | Sector-44 Noida(2) | 9393174 |
| 2932 | 36900.37000.37700.37800.39900.40000.57300.775600 | Toilet dado work | 16d | 2026-10-14 | 2026-10-29 | 2928, 2929, 2930 |  | Sector-44 Noida(2) | 9393184 |
| 2933 | 36900.37000.37700.37800.39900.40000.57300.775700 | Toilet flooring work | 16d | 2026-10-30 | 2026-12-29 | 2932 |  | Sector-44 Noida(2) | 9393194 |
| 2934 | 36900.37000.37700.37800.39900.40000.57300.775800 | Living dinning flooring | 16d | 2026-12-30 | 2027-01-14 | 2931, 2933 |  | Sector-44 Noida(2) | 9393204 |
| 2935 | 36900.37000.37700.37800.39900.40000.57300.775900 | Electrical wiring work | 10d | 2027-01-05 | 2027-01-14 | 2934FS-10d |  | Sector-44 Noida(2) | 9393214 |
| 2936 | 36900.37000.37700.37800.39900.40000.57300.776000 | Aluminium door-window fixing | 17d | 2027-01-07 | 2027-01-23 | 2926, 2935FS-8d |  | Sector-44 Noida(2) | 9393224 |
| 2937 | 36900.37000.37700.37800.39900.40000.57300.776100 | Putty primer coat | 8d | 2027-01-16 | 2027-01-23 | 2936FS-8d |  | Sector-44 Noida(2) | 9393234 |
| 2938 | 36900.37000.37700.37800.39900.40000.57300.776200 | Prehung door fixing | 7d | 2027-01-19 | 2027-01-25 | 2937FS-5d |  | Sector-44 Noida(2) | 9393244 |
| 2939 | 36900.37000.37700.37800.39900.40000.57300.776300 | Painting 1st coat | 10d | 2027-01-26 | 2027-02-04 | 2938 |  | Sector-44 Noida(2) | 9393254 |
| 2940 | 36900.37000.37700.37800.39900.40000.57300.776400 | False Ceiling panel fixing | 8d | 2027-02-09 | 2027-02-16 | 2923, 2939 |  | Sector-44 Noida(2) | 9393264 |

| ID | WBS | Task | Duration | Start | Finish | Predecessors | Constraint | Calendar | Unique_Task_ID |
| --- | --- | --- | --- | --- | --- | --- | --- | --- | --- |
| 2941 | 36900.37000.37700.37800.39900.40000.57400 | **21st Floor** | 125d | 2026-09-08 | 2027-02-24 |  | start no earlier than 2026-09-08 | Sector-44 Noida(2) | 9361104 |
| 2942 | 36900.37000.37700.37800.39900.40000.57400.776500 | Block Work | 10d | 2026-09-08 | 2026-09-17 | 2579 |  | Sector-44 Noida(2) | 9393274 |
| 2943 | 36900.37000.37700.37800.39900.40000.57400.776600 | Installation of temporary Main door | 7d | 2026-09-18 | 2026-09-24 | 2942 |  | Sector-44 Noida(2) | 9393284 |
| 2944 | 36900.37000.37700.37800.39900.40000.57400.776700 | Fire sprinkler pipe fixing | 3d | 2026-09-18 | 2026-09-20 | 2927, 2942 |  | Sector-44 Noida(2) | 9393294 |
| 2945 | 36900.37000.37700.37800.39900.40000.57400.776800 | Internal Plumbing Works | 7d | 2026-09-18 | 2026-09-24 | 2942 |  | Sector-44 Noida(2) | 9393304 |
| 2946 | 36900.37000.37700.37800.39900.40000.57400.776900 | Waterproofing | 12d | 2026-09-25 | 2026-10-06 | 2945 |  | Sector-44 Noida(2) | 9393314 |
| 2947 | 36900.37000.37700.37800.39900.40000.57400.777000 | Internal Plaster | 15d | 2026-10-07 | 2026-10-21 | 2945, 2946 |  | Sector-44 Noida(2) | 9393324 |
| 2948 | 36900.37000.37700.37800.39900.40000.57400.777100 | IPS flooring work | 11d | 2026-09-18 | 2026-09-28 | 2942 |  | Sector-44 Noida(2) | 9393334 |
| 2949 | 36900.37000.37700.37800.39900.40000.57400.777200 | Toilet dado work | 16d | 2026-10-22 | 2026-12-21 | 2945, 2946, 2947 |  | Sector-44 Noida(2) | 9393344 |
| 2950 | 36900.37000.37700.37800.39900.40000.57400.777300 | Toilet flooring work | 16d | 2026-12-22 | 2027-01-06 | 2949 |  | Sector-44 Noida(2) | 9393354 |
| 2951 | 36900.37000.37700.37800.39900.40000.57400.777400 | Living dinning flooring | 16d | 2027-01-07 | 2027-01-22 | 2948, 2950 |  | Sector-44 Noida(2) | 9393364 |
| 2952 | 36900.37000.37700.37800.39900.40000.57400.777500 | Electrical wiring work | 10d | 2027-01-13 | 2027-01-22 | 2951FS-10d |  | Sector-44 Noida(2) | 9393374 |
| 2953 | 36900.37000.37700.37800.39900.40000.57400.777600 | Aluminium door-window fixing | 17d | 2027-01-15 | 2027-01-31 | 2943, 2952FS-8d |  | Sector-44 Noida(2) | 9393384 |
| 2954 | 36900.37000.37700.37800.39900.40000.57400.777700 | Putty primer coat | 8d | 2027-01-24 | 2027-01-31 | 2953FS-8d |  | Sector-44 Noida(2) | 9393394 |
| 2955 | 36900.37000.37700.37800.39900.40000.57400.777800 | Prehung door fixing | 7d | 2027-01-27 | 2027-02-02 | 2954FS-5d |  | Sector-44 Noida(2) | 9393404 |
| 2956 | 36900.37000.37700.37800.39900.40000.57400.777900 | Painting 1st coat | 10d | 2027-02-03 | 2027-02-12 | 2955 |  | Sector-44 Noida(2) | 9393414 |
| 2957 | 36900.37000.37700.37800.39900.40000.57400.778000 | False Ceiling panel fixing | 8d | 2027-02-17 | 2027-02-24 | 2940, 2956 |  | Sector-44 Noida(2) | 9393424 |
| 2958 | 36900.37000.37700.37800.39900.40000.57500 | **22nd Floor** | 125d | 2026-09-16 | 2027-03-04 |  | start no earlier than 2026-09-16 | Sector-44 Noida(2) | 9361094 |
| 2959 | 36900.37000.37700.37800.39900.40000.57500.778100 | Block Work | 10d | 2026-09-16 | 2026-09-25 | 2580 |  | Sector-44 Noida(2) | 9393434 |
| 2960 | 36900.37000.37700.37800.39900.40000.57500.778200 | Installation of temporary Main door | 7d | 2026-09-26 | 2026-10-02 | 2959 |  | Sector-44 Noida(2) | 9393444 |
| 2961 | 36900.37000.37700.37800.39900.40000.57500.778300 | Fire sprinkler pipe fixing | 3d | 2026-09-26 | 2026-09-28 | 2944, 2959 |  | Sector-44 Noida(2) | 9393454 |
| 2962 | 36900.37000.37700.37800.39900.40000.57500.778400 | Internal Plumbing Works | 7d | 2026-09-26 | 2026-10-02 | 2959 |  | Sector-44 Noida(2) | 9393464 |
| 2963 | 36900.37000.37700.37800.39900.40000.57500.778500 | Waterproofing | 12d | 2026-10-03 | 2026-10-14 | 2962 |  | Sector-44 Noida(2) | 9393474 |
| 2964 | 36900.37000.37700.37800.39900.40000.57500.778600 | Internal Plaster | 15d | 2026-10-15 | 2026-10-29 | 2962, 2963 |  | Sector-44 Noida(2) | 9393484 |
| 2965 | 36900.37000.37700.37800.39900.40000.57500.778700 | IPS flooring work | 11d | 2026-09-26 | 2026-10-06 | 2959 |  | Sector-44 Noida(2) | 9393494 |
| 2966 | 36900.37000.37700.37800.39900.40000.57500.778800 | Toilet dado work | 16d | 2026-10-30 | 2026-12-29 | 2962, 2963, 2964 |  | Sector-44 Noida(2) | 9393504 |
| 2967 | 36900.37000.37700.37800.39900.40000.57500.778900 | Toilet flooring work | 16d | 2026-12-30 | 2027-01-14 | 2966 |  | Sector-44 Noida(2) | 9393514 |
| 2968 | 36900.37000.37700.37800.39900.40000.57500.779000 | Living dinning flooring | 16d | 2027-01-15 | 2027-01-30 | 2965, 2967 |  | Sector-44 Noida(2) | 9393524 |
| 2969 | 36900.37000.37700.37800.39900.40000.57500.779100 | Electrical wiring work | 10d | 2027-01-21 | 2027-01-30 | 2968FS-10d |  | Sector-44 Noida(2) | 9393534 |
| 2970 | 36900.37000.37700.37800.39900.40000.57500.779200 | Aluminium door-window fixing | 17d | 2027-01-23 | 2027-02-08 | 2960, 2969FS-8d |  | Sector-44 Noida(2) | 9393544 |
| 2971 | 36900.37000.37700.37800.39900.40000.57500.779300 | Putty primer coat | 8d | 2027-02-01 | 2027-02-08 | 2970FS-8d |  | Sector-44 Noida(2) | 9393554 |
| 2972 | 36900.37000.37700.37800.39900.40000.57500.779400 | Prehung door fixing | 7d | 2027-02-04 | 2027-02-10 | 2971FS-5d |  | Sector-44 Noida(2) | 9393564 |
| 2973 | 36900.37000.37700.37800.39900.40000.57500.779500 | Painting 1st coat | 10d | 2027-02-11 | 2027-02-20 | 2972 |  | Sector-44 Noida(2) | 9393574 |
| 2974 | 36900.37000.37700.37800.39900.40000.57500.779600 | False Ceiling panel fixing | 8d | 2027-02-25 | 2027-03-04 | 2957, 2973 |  | Sector-44 Noida(2) | 9393584 |

| ID | WBS | Task | Duration | Start | Finish | Predecessors | Constraint | Calendar | Unique_Task_ID |
| --- | --- | --- | --- | --- | --- | --- | --- | --- | --- |
| 2975 | 36900.37000.37700.37800.39900.40000.57600 | **23rd Floor** | 125d | 2026-09-24 | 2027-03-12 |  | start no earlier than 2026-09-24 | Sector-44 Noida(2) | 9361054 |
| 2976 | 36900.37000.37700.37800.39900.40000.57600.779700 | Block Work | 10d | 2026-09-24 | 2026-10-03 | 2581 |  | Sector-44 Noida(2) | 9393594 |
| 2977 | 36900.37000.37700.37800.39900.40000.57600.779800 | Installation of temporary Main door | 7d | 2026-10-04 | 2026-10-10 | 2976 |  | Sector-44 Noida(2) | 9393604 |
| 2978 | 36900.37000.37700.37800.39900.40000.57600.779900 | Fire sprinkler pipe fixing | 3d | 2026-10-04 | 2026-10-06 | 2961, 2976 |  | Sector-44 Noida(2) | 9393614 |
| 2979 | 36900.37000.37700.37800.39900.40000.57600.780000 | Internal Plumbing Works | 7d | 2026-10-04 | 2026-10-10 | 2976 |  | Sector-44 Noida(2) | 9393624 |
| 2980 | 36900.37000.37700.37800.39900.40000.57600.780100 | Waterproofing | 12d | 2026-10-11 | 2026-10-22 | 2979 |  | Sector-44 Noida(2) | 9393634 |
| 2981 | 36900.37000.37700.37800.39900.40000.57600.780200 | Internal Plaster | 15d | 2026-10-23 | 2026-12-21 | 2979, 2980 |  | Sector-44 Noida(2) | 9393644 |
| 2982 | 36900.37000.37700.37800.39900.40000.57600.780300 | IPS flooring work | 11d | 2026-10-04 | 2026-10-14 | 2976 |  | Sector-44 Noida(2) | 9393654 |
| 2983 | 36900.37000.37700.37800.39900.40000.57600.780400 | Toilet dado work | 16d | 2026-12-22 | 2027-01-06 | 2979, 2980, 2981 |  | Sector-44 Noida(2) | 9393664 |
| 2984 | 36900.37000.37700.37800.39900.40000.57600.780500 | Toilet flooring work | 16d | 2027-01-07 | 2027-01-22 | 2983 |  | Sector-44 Noida(2) | 9393674 |
| 2985 | 36900.37000.37700.37800.39900.40000.57600.780600 | Living dinning flooring | 16d | 2027-01-23 | 2027-02-07 | 2982, 2984 |  | Sector-44 Noida(2) | 9393684 |
| 2986 | 36900.37000.37700.37800.39900.40000.57600.780700 | Electrical wiring work | 10d | 2027-01-29 | 2027-02-07 | 2985FS-10d |  | Sector-44 Noida(2) | 9393694 |
| 2987 | 36900.37000.37700.37800.39900.40000.57600.780800 | Aluminium door-window fixing | 17d | 2027-01-31 | 2027-02-16 | 2977, 2986FS-8d |  | Sector-44 Noida(2) | 9393704 |
| 2988 | 36900.37000.37700.37800.39900.40000.57600.780900 | Putty primer coat | 8d | 2027-02-09 | 2027-02-16 | 2987FS-8d |  | Sector-44 Noida(2) | 9393714 |
| 2989 | 36900.37000.37700.37800.39900.40000.57600.781000 | Prehung door fixing | 7d | 2027-02-12 | 2027-02-18 | 2988FS-5d |  | Sector-44 Noida(2) | 9393724 |
| 2990 | 36900.37000.37700.37800.39900.40000.57600.781100 | Painting 1st coat | 10d | 2027-02-19 | 2027-02-28 | 2989 |  | Sector-44 Noida(2) | 9393734 |
| 2991 | 36900.37000.37700.37800.39900.40000.57600.781200 | False Ceiling panel fixing | 8d | 2027-03-05 | 2027-03-12 | 2974, 2990 |  | Sector-44 Noida(2) | 9393744 |
| 2992 | 36900.37000.37700.37800.39900.40000.57700 | **24th Floor** | 125d | 2026-10-02 | 2027-03-20 |  | start no earlier than 2026-10-02 | Sector-44 Noida(2) | 9361044 |
| 2993 | 36900.37000.37700.37800.39900.40000.57700.781300 | Block Work | 10d | 2026-10-02 | 2026-10-11 | 2582 |  | Sector-44 Noida(2) | 9393754 |
| 2994 | 36900.37000.37700.37800.39900.40000.57700.781400 | Installation of temporary Main door | 7d | 2026-10-12 | 2026-10-18 | 2993 |  | Sector-44 Noida(2) | 9393764 |
| 2995 | 36900.37000.37700.37800.39900.40000.57700.781500 | Fire sprinkler pipe fixing | 3d | 2026-10-12 | 2026-10-14 | 2978, 2993 |  | Sector-44 Noida(2) | 9393774 |
| 2996 | 36900.37000.37700.37800.39900.40000.57700.781600 | Internal Plumbing Works | 7d | 2026-10-12 | 2026-10-18 | 2993 |  | Sector-44 Noida(2) | 9393784 |
| 2997 | 36900.37000.37700.37800.39900.40000.57700.781700 | Waterproofing | 12d | 2026-10-19 | 2026-10-30 | 2996 |  | Sector-44 Noida(2) | 9393794 |
| 2998 | 36900.37000.37700.37800.39900.40000.57700.781800 | Internal Plaster | 15d | 2026-10-31 | 2026-12-29 | 2996, 2997 |  | Sector-44 Noida(2) | 9393804 |
| 2999 | 36900.37000.37700.37800.39900.40000.57700.781900 | IPS flooring work | 11d | 2026-10-12 | 2026-10-22 | 2993 |  | Sector-44 Noida(2) | 9393814 |
| 3000 | 36900.37000.37700.37800.39900.40000.57700.782000 | Toilet dado work | 16d | 2026-12-30 | 2027-01-14 | 2996, 2997, 2998 |  | Sector-44 Noida(2) | 9393824 |
| 3001 | 36900.37000.37700.37800.39900.40000.57700.782100 | Toilet flooring work | 16d | 2027-01-15 | 2027-01-30 | 3000 |  | Sector-44 Noida(2) | 9393834 |
| 3002 | 36900.37000.37700.37800.39900.40000.57700.782200 | Living dinning flooring | 16d | 2027-01-31 | 2027-02-15 | 2999, 3001 |  | Sector-44 Noida(2) | 9393844 |
| 3003 | 36900.37000.37700.37800.39900.40000.57700.782300 | Electrical wiring work | 10d | 2027-02-06 | 2027-02-15 | 3002FS-10d |  | Sector-44 Noida(2) | 9393854 |
| 3004 | 36900.37000.37700.37800.39900.40000.57700.782400 | Aluminium door-window fixing | 17d | 2027-02-08 | 2027-02-24 | 2994, 3003FS-8d |  | Sector-44 Noida(2) | 9393864 |
| 3005 | 36900.37000.37700.37800.39900.40000.57700.782500 | Putty primer coat | 8d | 2027-02-17 | 2027-02-24 | 3004FS-8d |  | Sector-44 Noida(2) | 9393874 |
| 3006 | 36900.37000.37700.37800.39900.40000.57700.782600 | Prehung door fixing | 7d | 2027-02-20 | 2027-02-26 | 3005FS-5d |  | Sector-44 Noida(2) | 9393884 |
| 3007 | 36900.37000.37700.37800.39900.40000.57700.782700 | Painting 1st coat | 10d | 2027-02-27 | 2027-03-08 | 3006 |  | Sector-44 Noida(2) | 9393894 |
| 3008 | 36900.37000.37700.37800.39900.40000.57700.782800 | False Ceiling panel fixing | 8d | 2027-03-13 | 2027-03-20 | 2991, 3007 |  | Sector-44 Noida(2) | 9393904 |

| ID | WBS | Task | Duration | Start | Finish | Predecessors | Constraint | Calendar | Unique_Task_ID |
| --- | --- | --- | --- | --- | --- | --- | --- | --- | --- |
| 3009 | 36900.37000.37700.37800.39900.40000.57800 | **25th Floor** | 125d | 2026-10-10 | 2027-03-28 |  | start no earlier than 2026-10-10 | Sector-44 Noida(2) | 9361034 |
| 3010 | 36900.37000.37700.37800.39900.40000.57800.782900 | Block Work | 10d | 2026-10-10 | 2026-10-19 | 2583 |  | Sector-44 Noida(2) | 9393914 |
| 3011 | 36900.37000.37700.37800.39900.40000.57800.783000 | Installation of temporary Main door | 7d | 2026-10-20 | 2026-10-26 | 3010 |  | Sector-44 Noida(2) | 9393924 |
| 3012 | 36900.37000.37700.37800.39900.40000.57800.783100 | Fire sprinkler pipe fixing | 3d | 2026-10-20 | 2026-10-22 | 2995, 3010 |  | Sector-44 Noida(2) | 9393934 |
| 3013 | 36900.37000.37700.37800.39900.40000.57800.783200 | Internal Plumbing Works | 7d | 2026-10-20 | 2026-10-26 | 3010 |  | Sector-44 Noida(2) | 9393944 |
| 3014 | 36900.37000.37700.37800.39900.40000.57800.783300 | Waterproofing | 12d | 2026-10-27 | 2026-12-22 | 3013 |  | Sector-44 Noida(2) | 9393954 |
| 3015 | 36900.37000.37700.37800.39900.40000.57800.783400 | Internal Plaster | 15d | 2026-12-23 | 2027-01-06 | 3013, 3014 |  | Sector-44 Noida(2) | 9393964 |
| 3016 | 36900.37000.37700.37800.39900.40000.57800.783500 | IPS flooring work | 11d | 2026-10-20 | 2026-10-30 | 3010 |  | Sector-44 Noida(2) | 9393974 |
| 3017 | 36900.37000.37700.37800.39900.40000.57800.783600 | Toilet dado work | 16d | 2027-01-07 | 2027-01-22 | 3013, 3014, 3015 |  | Sector-44 Noida(2) | 9393984 |
| 3018 | 36900.37000.37700.37800.39900.40000.57800.783700 | Toilet flooring work | 16d | 2027-01-23 | 2027-02-07 | 3017 |  | Sector-44 Noida(2) | 9393994 |
| 3019 | 36900.37000.37700.37800.39900.40000.57800.783800 | Living dinning flooring | 16d | 2027-02-08 | 2027-02-23 | 3016, 3018 |  | Sector-44 Noida(2) | 9394004 |
| 3020 | 36900.37000.37700.37800.39900.40000.57800.783900 | Electrical wiring work | 10d | 2027-02-14 | 2027-02-23 | 3019FS-10d |  | Sector-44 Noida(2) | 9394014 |
| 3021 | 36900.37000.37700.37800.39900.40000.57800.784000 | Aluminium door-window fixing | 17d | 2027-02-16 | 2027-03-04 | 3011, 3020FS-8d |  | Sector-44 Noida(2) | 9394024 |
| 3022 | 36900.37000.37700.37800.39900.40000.57800.784100 | Putty primer coat | 8d | 2027-02-25 | 2027-03-04 | 3021FS-8d |  | Sector-44 Noida(2) | 9394034 |
| 3023 | 36900.37000.37700.37800.39900.40000.57800.784200 | Prehung door fixing | 7d | 2027-02-28 | 2027-03-06 | 3022FS-5d |  | Sector-44 Noida(2) | 9394044 |
| 3024 | 36900.37000.37700.37800.39900.40000.57800.784300 | Painting 1st coat | 10d | 2027-03-07 | 2027-03-16 | 3023 |  | Sector-44 Noida(2) | 9394054 |
| 3025 | 36900.37000.37700.37800.39900.40000.57800.784400 | False Ceiling panel fixing | 8d | 2027-03-21 | 2027-03-28 | 3008, 3024 |  | Sector-44 Noida(2) | 9394064 |
| 3026 | 36900.37000.37700.37800.39900.40000.57900 | **26th Floor** | 125d | 2026-10-18 | 2027-04-05 |  | start no earlier than 2026-10-18 | Sector-44 Noida(2) | 9361014 |
| 3027 | 36900.37000.37700.37800.39900.40000.57900.784500 | Block Work | 10d | 2026-10-18 | 2026-10-27 | 2584 |  | Sector-44 Noida(2) | 9394074 |
| 3028 | 36900.37000.37700.37800.39900.40000.57900.784600 | Installation of temporary Main door | 7d | 2026-10-28 | 2026-12-18 | 3027 |  | Sector-44 Noida(2) | 9394084 |
| 3029 | 36900.37000.37700.37800.39900.40000.57900.784700 | Fire sprinkler pipe fixing | 3d | 2026-10-28 | 2026-10-30 | 3012, 3027 |  | Sector-44 Noida(2) | 9394094 |
| 3030 | 36900.37000.37700.37800.39900.40000.57900.784800 | Internal Plumbing Works | 7d | 2026-10-28 | 2026-12-18 | 3027 |  | Sector-44 Noida(2) | 9394104 |
| 3031 | 36900.37000.37700.37800.39900.40000.57900.784900 | Waterproofing | 12d | 2026-12-19 | 2026-12-30 | 3030 |  | Sector-44 Noida(2) | 9394114 |
| 3032 | 36900.37000.37700.37800.39900.40000.57900.785000 | Internal Plaster | 15d | 2026-12-31 | 2027-01-14 | 3030, 3031 |  | Sector-44 Noida(2) | 9394124 |
| 3033 | 36900.37000.37700.37800.39900.40000.57900.785100 | IPS flooring work | 11d | 2026-10-28 | 2026-12-22 | 3027 |  | Sector-44 Noida(2) | 9394134 |
| 3034 | 36900.37000.37700.37800.39900.40000.57900.785200 | Toilet dado work | 16d | 2027-01-15 | 2027-01-30 | 3030, 3031, 3032 |  | Sector-44 Noida(2) | 9394144 |
| 3035 | 36900.37000.37700.37800.39900.40000.57900.785300 | Toilet flooring work | 16d | 2027-01-31 | 2027-02-15 | 3034 |  | Sector-44 Noida(2) | 9394154 |
| 3036 | 36900.37000.37700.37800.39900.40000.57900.785400 | Living dinning flooring | 16d | 2027-02-16 | 2027-03-03 | 3033, 3035 |  | Sector-44 Noida(2) | 9394164 |
| 3037 | 36900.37000.37700.37800.39900.40000.57900.785500 | Electrical wiring work | 10d | 2027-02-22 | 2027-03-03 | 3036FS-10d |  | Sector-44 Noida(2) | 9394174 |
| 3038 | 36900.37000.37700.37800.39900.40000.57900.785600 | Aluminium door-window fixing | 17d | 2027-02-24 | 2027-03-12 | 3028, 3037FS-8d |  | Sector-44 Noida(2) | 9394184 |
| 3039 | 36900.37000.37700.37800.39900.40000.57900.785700 | Putty primer coat | 8d | 2027-03-05 | 2027-03-12 | 3038FS-8d |  | Sector-44 Noida(2) | 9394194 |
| 3040 | 36900.37000.37700.37800.39900.40000.57900.785800 | Prehung door fixing | 7d | 2027-03-08 | 2027-03-14 | 3039FS-5d |  | Sector-44 Noida(2) | 9394204 |
| 3041 | 36900.37000.37700.37800.39900.40000.57900.785900 | Painting 1st coat | 10d | 2027-03-15 | 2027-03-24 | 3040 |  | Sector-44 Noida(2) | 9394214 |
| 3042 | 36900.37000.37700.37800.39900.40000.57900.786000 | False Ceiling panel fixing | 8d | 2027-03-29 | 2027-04-05 | 3025, 3041 |  | Sector-44 Noida(2) | 9394224 |

| ID | WBS | Task | Duration | Start | Finish | Predecessors | Constraint | Calendar | Unique_Task_ID |
| --- | --- | --- | --- | --- | --- | --- | --- | --- | --- |
| 3043 | 36900.37000.37700.37800.39900.40000.58000 | **27th Floor** | 125d | 2026-10-26 | 2027-04-13 |  | start no earlier than 2026-10-26 | Sector-44 Noida(2) | 9360994 |
| 3044 | 36900.37000.37700.37800.39900.40000.58000.786100 | Block Work | 10d | 2026-10-26 | 2026-12-19 | 2585 |  | Sector-44 Noida(2) | 9394234 |
| 3045 | 36900.37000.37700.37800.39900.40000.58000.786200 | Installation of temporary Main door | 7d | 2026-12-20 | 2026-12-26 | 3044 |  | Sector-44 Noida(2) | 9394244 |
| 3046 | 36900.37000.37700.37800.39900.40000.58000.786300 | Fire sprinkler pipe fixing | 3d | 2026-12-20 | 2026-12-22 | 3029, 3044 |  | Sector-44 Noida(2) | 9394254 |
| 3047 | 36900.37000.37700.37800.39900.40000.58000.786400 | Internal Plumbing Works | 7d | 2026-12-20 | 2026-12-26 | 3044 |  | Sector-44 Noida(2) | 9394264 |
| 3048 | 36900.37000.37700.37800.39900.40000.58000.786500 | Waterproofing | 12d | 2026-12-27 | 2027-01-07 | 3047 |  | Sector-44 Noida(2) | 9394274 |
| 3049 | 36900.37000.37700.37800.39900.40000.58000.786600 | Internal Plaster | 15d | 2027-01-08 | 2027-01-22 | 3047, 3048 |  | Sector-44 Noida(2) | 9394284 |
| 3050 | 36900.37000.37700.37800.39900.40000.58000.786700 | IPS flooring work | 11d | 2026-12-20 | 2026-12-30 | 3044 |  | Sector-44 Noida(2) | 9394294 |
| 3051 | 36900.37000.37700.37800.39900.40000.58000.786800 | Toilet dado work | 16d | 2027-01-23 | 2027-02-07 | 3047, 3048, 3049 |  | Sector-44 Noida(2) | 9394304 |
| 3052 | 36900.37000.37700.37800.39900.40000.58000.786900 | Toilet flooring work | 16d | 2027-02-08 | 2027-02-23 | 3051 |  | Sector-44 Noida(2) | 9394314 |
| 3053 | 36900.37000.37700.37800.39900.40000.58000.787000 | Living dinning flooring | 16d | 2027-02-24 | 2027-03-11 | 3050, 3052 |  | Sector-44 Noida(2) | 9394324 |
| 3054 | 36900.37000.37700.37800.39900.40000.58000.787100 | Electrical wiring work | 10d | 2027-03-02 | 2027-03-11 | 3053FS-10d |  | Sector-44 Noida(2) | 9394334 |
| 3055 | 36900.37000.37700.37800.39900.40000.58000.787200 | Aluminium door-window fixing | 17d | 2027-03-04 | 2027-03-20 | 3045, 3054FS-8d |  | Sector-44 Noida(2) | 9394344 |
| 3056 | 36900.37000.37700.37800.39900.40000.58000.787300 | Putty primer coat | 8d | 2027-03-13 | 2027-03-20 | 3055FS-8d |  | Sector-44 Noida(2) | 9394354 |
| 3057 | 36900.37000.37700.37800.39900.40000.58000.787400 | Prehung door fixing | 7d | 2027-03-16 | 2027-03-22 | 3056FS-5d |  | Sector-44 Noida(2) | 9394364 |
| 3058 | 36900.37000.37700.37800.39900.40000.58000.787500 | Painting 1st coat | 10d | 2027-03-23 | 2027-04-01 | 3057 |  | Sector-44 Noida(2) | 9394374 |
| 3059 | 36900.37000.37700.37800.39900.40000.58000.787600 | False Ceiling panel fixing | 8d | 2027-04-06 | 2027-04-13 | 3042, 3058 |  | Sector-44 Noida(2) | 9394384 |
| 3060 | 36900.37000.37700.37800.39900.40000.58100 | **28th Floor** | 121d | 2026-12-22 | 2027-04-21 |  | start no earlier than 2026-12-22 | Sector-44 Noida(2) | 9360984 |
| 3061 | 36900.37000.37700.37800.39900.40000.58100.787700 | Block Work | 10d | 2026-12-22 | 2026-12-31 | 2586 |  | Sector-44 Noida(2) | 9394394 |
| 3062 | 36900.37000.37700.37800.39900.40000.58100.787800 | Installation of temporary Main door | 7d | 2027-01-01 | 2027-01-07 | 3061 |  | Sector-44 Noida(2) | 9394404 |
| 3063 | 36900.37000.37700.37800.39900.40000.58100.787900 | Fire sprinkler pipe fixing | 3d | 2027-01-01 | 2027-01-03 | 3046, 3061 |  | Sector-44 Noida(2) | 9394414 |
| 3064 | 36900.37000.37700.37800.39900.40000.58100.788000 | Internal Plumbing Works | 7d | 2027-01-01 | 2027-01-07 | 3061 |  | Sector-44 Noida(2) | 9394424 |
| 3065 | 36900.37000.37700.37800.39900.40000.58100.788100 | Waterproofing | 12d | 2027-01-08 | 2027-01-19 | 3064 |  | Sector-44 Noida(2) | 9394434 |
| 3066 | 36900.37000.37700.37800.39900.40000.58100.788200 | Internal Plaster | 15d | 2027-01-20 | 2027-02-03 | 3064, 3065 |  | Sector-44 Noida(2) | 9394444 |
| 3067 | 36900.37000.37700.37800.39900.40000.58100.788300 | IPS flooring work | 11d | 2027-01-01 | 2027-01-11 | 3061 |  | Sector-44 Noida(2) | 9394454 |
| 3068 | 36900.37000.37700.37800.39900.40000.58100.788400 | Toilet dado work | 16d | 2027-02-04 | 2027-02-19 | 3064, 3065, 3066 |  | Sector-44 Noida(2) | 9394464 |
| 3069 | 36900.37000.37700.37800.39900.40000.58100.788500 | Toilet flooring work | 16d | 2027-02-20 | 2027-03-07 | 3068 |  | Sector-44 Noida(2) | 9394474 |
| 3070 | 36900.37000.37700.37800.39900.40000.58100.788600 | Living dinning flooring | 16d | 2027-03-08 | 2027-03-23 | 3067, 3069 |  | Sector-44 Noida(2) | 9394484 |
| 3071 | 36900.37000.37700.37800.39900.40000.58100.788700 | Electrical wiring work | 10d | 2027-03-14 | 2027-03-23 | 3070FS-10d |  | Sector-44 Noida(2) | 9394494 |
| 3072 | 36900.37000.37700.37800.39900.40000.58100.788800 | Aluminium door-window fixing | 17d | 2027-03-16 | 2027-04-01 | 3062, 3071FS-8d |  | Sector-44 Noida(2) | 9394504 |
| 3073 | 36900.37000.37700.37800.39900.40000.58100.788900 | Putty primer coat | 8d | 2027-03-25 | 2027-04-01 | 3072FS-8d |  | Sector-44 Noida(2) | 9394514 |
| 3074 | 36900.37000.37700.37800.39900.40000.58100.789000 | Prehung door fixing | 7d | 2027-03-28 | 2027-04-03 | 3073FS-5d |  | Sector-44 Noida(2) | 9394524 |
| 3075 | 36900.37000.37700.37800.39900.40000.58100.789100 | Painting 1st coat | 10d | 2027-04-04 | 2027-04-13 | 3074 |  | Sector-44 Noida(2) | 9394534 |
| 3076 | 36900.37000.37700.37800.39900.40000.58100.789200 | False Ceiling panel fixing | 8d | 2027-04-14 | 2027-04-21 | 3059, 3075 |  | Sector-44 Noida(2) | 9394544 |

| ID | WBS | Task | Duration | Start | Finish | Predecessors | Constraint | Calendar | Unique_Task_ID |
| --- | --- | --- | --- | --- | --- | --- | --- | --- | --- |
| 3077 | 36900.37000.37700.37800.39900.40000.58200 | **29th Floor** | 121d | 2027-01-01 | 2027-05-01 |  | start no earlier than 2027-01-01 | Sector-44 Noida(2) | 9361264 |
| 3078 | 36900.37000.37700.37800.39900.40000.58200.789300 | Block Work | 10d | 2027-01-01 | 2027-01-10 | 2587 |  | Sector-44 Noida(2) | 9394554 |
| 3079 | 36900.37000.37700.37800.39900.40000.58200.789400 | Installation of temporary Main door | 7d | 2027-01-11 | 2027-01-17 | 3078 |  | Sector-44 Noida(2) | 9394564 |
| 3080 | 36900.37000.37700.37800.39900.40000.58200.789500 | Fire sprinkler pipe fixing | 3d | 2027-01-11 | 2027-01-13 | 3063, 3078 |  | Sector-44 Noida(2) | 9394574 |
| 3081 | 36900.37000.37700.37800.39900.40000.58200.789600 | Internal Plumbing Works | 7d | 2027-01-11 | 2027-01-17 | 3078 |  | Sector-44 Noida(2) | 9394584 |
| 3082 | 36900.37000.37700.37800.39900.40000.58200.789700 | Waterproofing | 12d | 2027-01-18 | 2027-01-29 | 3081 |  | Sector-44 Noida(2) | 9394594 |
| 3083 | 36900.37000.37700.37800.39900.40000.58200.789800 | Internal Plaster | 15d | 2027-01-30 | 2027-02-13 | 3081, 3082 |  | Sector-44 Noida(2) | 9394604 |
| 3084 | 36900.37000.37700.37800.39900.40000.58200.789900 | IPS flooring work | 11d | 2027-01-11 | 2027-01-21 | 3078 |  | Sector-44 Noida(2) | 9394614 |
| 3085 | 36900.37000.37700.37800.39900.40000.58200.790000 | Toilet dado work | 16d | 2027-02-14 | 2027-03-01 | 3081, 3082, 3083 |  | Sector-44 Noida(2) | 9394624 |
| 3086 | 36900.37000.37700.37800.39900.40000.58200.790100 | Toilet flooring work | 16d | 2027-03-02 | 2027-03-17 | 3085 |  | Sector-44 Noida(2) | 9394634 |
| 3087 | 36900.37000.37700.37800.39900.40000.58200.790200 | Living dinning flooring | 16d | 2027-03-18 | 2027-04-02 | 3084, 3086 |  | Sector-44 Noida(2) | 9394644 |
| 3088 | 36900.37000.37700.37800.39900.40000.58200.790300 | Electrical wiring work | 10d | 2027-03-24 | 2027-04-02 | 3087FS-10d |  | Sector-44 Noida(2) | 9394654 |
| 3089 | 36900.37000.37700.37800.39900.40000.58200.790400 | Aluminium door-window fixing | 17d | 2027-03-26 | 2027-04-11 | 3079, 3088FS-8d |  | Sector-44 Noida(2) | 9394664 |
| 3090 | 36900.37000.37700.37800.39900.40000.58200.790500 | Putty primer coat | 8d | 2027-04-04 | 2027-04-11 | 3089FS-8d |  | Sector-44 Noida(2) | 9394674 |
| 3091 | 36900.37000.37700.37800.39900.40000.58200.790600 | Prehung door fixing | 7d | 2027-04-07 | 2027-04-13 | 3090FS-5d |  | Sector-44 Noida(2) | 9394684 |
| 3092 | 36900.37000.37700.37800.39900.40000.58200.790700 | Painting 1st coat | 10d | 2027-04-14 | 2027-04-23 | 3091 |  | Sector-44 Noida(2) | 9394694 |
| 3093 | 36900.37000.37700.37800.39900.40000.58200.790800 | False Ceiling panel fixing | 8d | 2027-04-24 | 2027-05-01 | 3076, 3092 |  | Sector-44 Noida(2) | 9394704 |
| 3094 | 36900.37000.37700.37800.39900.40000.58300 | **30th Floor** | 121d | 2027-01-11 | 2027-05-11 |  | start no earlier than 2027-01-11 | Sector-44 Noida(2) | 9361324 |
| 3095 | 36900.37000.37700.37800.39900.40000.58300.790900 | Block Work | 10d | 2027-01-11 | 2027-01-20 | 2588 |  | Sector-44 Noida(2) | 9394714 |
| 3096 | 36900.37000.37700.37800.39900.40000.58300.791000 | Installation of temporary Main door | 7d | 2027-01-21 | 2027-01-27 | 3095 |  | Sector-44 Noida(2) | 9394724 |
| 3097 | 36900.37000.37700.37800.39900.40000.58300.791100 | Fire sprinkler pipe fixing | 3d | 2027-01-21 | 2027-01-23 | 3080, 3095 |  | Sector-44 Noida(2) | 9394734 |
| 3098 | 36900.37000.37700.37800.39900.40000.58300.791200 | Internal Plumbing Works | 7d | 2027-01-21 | 2027-01-27 | 3095 |  | Sector-44 Noida(2) | 9394744 |
| 3099 | 36900.37000.37700.37800.39900.40000.58300.791300 | Waterproofing | 12d | 2027-01-28 | 2027-02-08 | 3098 |  | Sector-44 Noida(2) | 9394754 |
| 3100 | 36900.37000.37700.37800.39900.40000.58300.791400 | Internal Plaster | 15d | 2027-02-09 | 2027-02-23 | 3098, 3099 |  | Sector-44 Noida(2) | 9394764 |
| 3101 | 36900.37000.37700.37800.39900.40000.58300.791500 | IPS flooring work | 11d | 2027-01-21 | 2027-01-31 | 3095 |  | Sector-44 Noida(2) | 9394774 |
| 3102 | 36900.37000.37700.37800.39900.40000.58300.791600 | Toilet dado work | 16d | 2027-02-24 | 2027-03-11 | 3098, 3099, 3100 |  | Sector-44 Noida(2) | 9394784 |
| 3103 | 36900.37000.37700.37800.39900.40000.58300.791700 | Toilet flooring work | 16d | 2027-03-12 | 2027-03-27 | 3102 |  | Sector-44 Noida(2) | 9394794 |
| 3104 | 36900.37000.37700.37800.39900.40000.58300.791800 | Living dinning flooring | 16d | 2027-03-28 | 2027-04-12 | 3101, 3103 |  | Sector-44 Noida(2) | 9394804 |
| 3105 | 36900.37000.37700.37800.39900.40000.58300.791900 | Electrical wiring work | 10d | 2027-04-03 | 2027-04-12 | 3104FS-10d |  | Sector-44 Noida(2) | 9394814 |
| 3106 | 36900.37000.37700.37800.39900.40000.58300.792000 | Aluminium door-window fixing | 17d | 2027-04-05 | 2027-04-21 | 3096, 3105FS-8d |  | Sector-44 Noida(2) | 9394824 |
| 3107 | 36900.37000.37700.37800.39900.40000.58300.792100 | Putty primer coat | 8d | 2027-04-14 | 2027-04-21 | 3106FS-8d |  | Sector-44 Noida(2) | 9394834 |
| 3108 | 36900.37000.37700.37800.39900.40000.58300.792200 | Prehung door fixing | 7d | 2027-04-17 | 2027-04-23 | 3107FS-5d |  | Sector-44 Noida(2) | 9394844 |
| 3109 | 36900.37000.37700.37800.39900.40000.58300.792300 | Painting 1st coat | 10d | 2027-04-24 | 2027-05-03 | 3108 |  | Sector-44 Noida(2) | 9394854 |
| 3110 | 36900.37000.37700.37800.39900.40000.58300.792400 | False Ceiling panel fixing | 8d | 2027-05-04 | 2027-05-11 | 3093, 3109 |  | Sector-44 Noida(2) | 9394864 |

| ID | WBS | Task | Duration | Start | Finish | Predecessors | Constraint | Calendar | Unique_Task_ID |
| --- | --- | --- | --- | --- | --- | --- | --- | --- | --- |
| 3111 | 36900.37000.37700.37800.39900.40000.58400 | **31st Floor** | 121d | 2027-01-21 | 2027-05-21 |  | start no earlier than 2027-01-21 | Sector-44 Noida(2) | 9361354 |
| 3112 | 36900.37000.37700.37800.39900.40000.58400.792500 | Block Work | 10d | 2027-01-21 | 2027-01-30 | 2589 |  | Sector-44 Noida(2) | 9394874 |
| 3113 | 36900.37000.37700.37800.39900.40000.58400.792600 | Installation of temporary Main door | 7d | 2027-01-31 | 2027-02-06 | 3112 |  | Sector-44 Noida(2) | 9394884 |
| 3114 | 36900.37000.37700.37800.39900.40000.58400.792700 | Fire sprinkler pipe fixing | 3d | 2027-01-31 | 2027-02-02 | 3097, 3112 |  | Sector-44 Noida(2) | 9394894 |
| 3115 | 36900.37000.37700.37800.39900.40000.58400.792800 | Internal Plumbing Works | 7d | 2027-01-31 | 2027-02-06 | 3112 |  | Sector-44 Noida(2) | 9394904 |
| 3116 | 36900.37000.37700.37800.39900.40000.58400.792900 | Waterproofing | 12d | 2027-02-07 | 2027-02-18 | 3115 |  | Sector-44 Noida(2) | 9394914 |
| 3117 | 36900.37000.37700.37800.39900.40000.58400.793000 | Internal Plaster | 15d | 2027-02-19 | 2027-03-05 | 3115, 3116 |  | Sector-44 Noida(2) | 9394924 |
| 3118 | 36900.37000.37700.37800.39900.40000.58400.793100 | IPS flooring work | 11d | 2027-01-31 | 2027-02-10 | 3112 |  | Sector-44 Noida(2) | 9394934 |
| 3119 | 36900.37000.37700.37800.39900.40000.58400.793200 | Toilet dado work | 16d | 2027-03-06 | 2027-03-21 | 3115, 3116, 3117 |  | Sector-44 Noida(2) | 9394944 |
| 3120 | 36900.37000.37700.37800.39900.40000.58400.793300 | Toilet flooring work | 16d | 2027-03-22 | 2027-04-06 | 3119 |  | Sector-44 Noida(2) | 9394954 |
| 3121 | 36900.37000.37700.37800.39900.40000.58400.793400 | Living dinning flooring | 16d | 2027-04-07 | 2027-04-22 | 3118, 3120 |  | Sector-44 Noida(2) | 9394964 |
| 3122 | 36900.37000.37700.37800.39900.40000.58400.793500 | Electrical wiring work | 10d | 2027-04-13 | 2027-04-22 | 3121FS-10d |  | Sector-44 Noida(2) | 9394974 |
| 3123 | 36900.37000.37700.37800.39900.40000.58400.793600 | Aluminium door-window fixing | 17d | 2027-04-15 | 2027-05-01 | 3113, 3122FS-8d |  | Sector-44 Noida(2) | 9394984 |
| 3124 | 36900.37000.37700.37800.39900.40000.58400.793700 | Putty primer coat | 8d | 2027-04-24 | 2027-05-01 | 3123FS-8d |  | Sector-44 Noida(2) | 9394994 |
| 3125 | 36900.37000.37700.37800.39900.40000.58400.793800 | Prehung door fixing | 7d | 2027-04-27 | 2027-05-03 | 3124FS-5d |  | Sector-44 Noida(2) | 9395004 |
| 3126 | 36900.37000.37700.37800.39900.40000.58400.793900 | Painting 1st coat | 10d | 2027-05-04 | 2027-05-13 | 3125 |  | Sector-44 Noida(2) | 9395014 |
| 3127 | 36900.37000.37700.37800.39900.40000.58400.794000 | False Ceiling panel fixing | 8d | 2027-05-14 | 2027-05-21 | 3110, 3126 |  | Sector-44 Noida(2) | 9395024 |
| 3128 | 36900.37000.37700.37800.39900.40000.58500 | **32nd Floor** | 121d | 2027-01-31 | 2027-05-31 |  | start no earlier than 2027-01-31 | Sector-44 Noida(2) | 9361374 |
| 3129 | 36900.37000.37700.37800.39900.40000.58500.794100 | Block Work | 10d | 2027-01-31 | 2027-02-09 | 2590 |  | Sector-44 Noida(2) | 9395034 |
| 3130 | 36900.37000.37700.37800.39900.40000.58500.794200 | Installation of temporary Main door | 7d | 2027-02-10 | 2027-02-16 | 3129 |  | Sector-44 Noida(2) | 9395044 |
| 3131 | 36900.37000.37700.37800.39900.40000.58500.794300 | Fire sprinkler pipe fixing | 3d | 2027-02-10 | 2027-02-12 | 3114, 3129 |  | Sector-44 Noida(2) | 9395054 |
| 3132 | 36900.37000.37700.37800.39900.40000.58500.794400 | Internal Plumbing Works | 7d | 2027-02-10 | 2027-02-16 | 3129 |  | Sector-44 Noida(2) | 9395064 |
| 3133 | 36900.37000.37700.37800.39900.40000.58500.794500 | Waterproofing | 12d | 2027-02-17 | 2027-02-28 | 3132 |  | Sector-44 Noida(2) | 9395074 |
| 3134 | 36900.37000.37700.37800.39900.40000.58500.794600 | Internal Plaster | 15d | 2027-03-01 | 2027-03-15 | 3132, 3133 |  | Sector-44 Noida(2) | 9395084 |
| 3135 | 36900.37000.37700.37800.39900.40000.58500.794700 | IPS flooring work | 11d | 2027-02-10 | 2027-02-20 | 3129 |  | Sector-44 Noida(2) | 9395094 |
| 3136 | 36900.37000.37700.37800.39900.40000.58500.794800 | Toilet dado work | 16d | 2027-03-16 | 2027-03-31 | 3132, 3133, 3134 |  | Sector-44 Noida(2) | 9395104 |
| 3137 | 36900.37000.37700.37800.39900.40000.58500.794900 | Toilet flooring work | 16d | 2027-04-01 | 2027-04-16 | 3136 |  | Sector-44 Noida(2) | 9395114 |
| 3138 | 36900.37000.37700.37800.39900.40000.58500.795000 | Living dinning flooring | 16d | 2027-04-17 | 2027-05-02 | 3135, 3137 |  | Sector-44 Noida(2) | 9395124 |
| 3139 | 36900.37000.37700.37800.39900.40000.58500.795100 | Electrical wiring work | 10d | 2027-04-23 | 2027-05-02 | 3138FS-10d |  | Sector-44 Noida(2) | 9395134 |
| 3140 | 36900.37000.37700.37800.39900.40000.58500.795200 | Aluminium door-window fixing | 17d | 2027-04-25 | 2027-05-11 | 3130, 3139FS-8d |  | Sector-44 Noida(2) | 9395144 |
| 3141 | 36900.37000.37700.37800.39900.40000.58500.795300 | Putty primer coat | 8d | 2027-05-04 | 2027-05-11 | 3140FS-8d |  | Sector-44 Noida(2) | 9395154 |
| 3142 | 36900.37000.37700.37800.39900.40000.58500.795400 | Prehung door fixing | 7d | 2027-05-07 | 2027-05-13 | 3141FS-5d |  | Sector-44 Noida(2) | 9395164 |
| 3143 | 36900.37000.37700.37800.39900.40000.58500.795500 | Painting 1st coat | 10d | 2027-05-14 | 2027-05-23 | 3142 |  | Sector-44 Noida(2) | 9395174 |
| 3144 | 36900.37000.37700.37800.39900.40000.58500.795600 | False Ceiling panel fixing | 8d | 2027-05-24 | 2027-05-31 | 3127, 3143 |  | Sector-44 Noida(2) | 9395184 |

| ID | WBS | Task | Duration | Start | Finish | Predecessors | Constraint | Calendar | Unique_Task_ID |
| --- | --- | --- | --- | --- | --- | --- | --- | --- | --- |
| 3145 | 36900.37000.37700.37800.39900.40000.58600 | **33rd Floor** | 121d | 2027-02-10 | 2027-06-10 |  | start no earlier than 2027-02-10 | Sector-44 Noida(2) | 9362014 |
| 3146 | 36900.37000.37700.37800.39900.40000.58600.795700 | Block Work | 10d | 2027-02-10 | 2027-02-19 | 2591 |  | Sector-44 Noida(2) | 9395194 |
| 3147 | 36900.37000.37700.37800.39900.40000.58600.795800 | Installation of temporary Main door | 7d | 2027-02-20 | 2027-02-26 | 3146 |  | Sector-44 Noida(2) | 9395204 |
| 3148 | 36900.37000.37700.37800.39900.40000.58600.795900 | Fire sprinkler pipe fixing | 3d | 2027-02-20 | 2027-02-22 | 3131, 3146 |  | Sector-44 Noida(2) | 9395214 |
| 3149 | 36900.37000.37700.37800.39900.40000.58600.796000 | Internal Plumbing Works | 7d | 2027-02-20 | 2027-02-26 | 3146 |  | Sector-44 Noida(2) | 9395224 |
| 3150 | 36900.37000.37700.37800.39900.40000.58600.796100 | Waterproofing | 12d | 2027-02-27 | 2027-03-10 | 3149 |  | Sector-44 Noida(2) | 9395234 |
| 3151 | 36900.37000.37700.37800.39900.40000.58600.796200 | Internal Plaster | 15d | 2027-03-11 | 2027-03-25 | 3149, 3150 |  | Sector-44 Noida(2) | 9395244 |
| 3152 | 36900.37000.37700.37800.39900.40000.58600.796300 | IPS flooring work | 11d | 2027-02-20 | 2027-03-02 | 3146 |  | Sector-44 Noida(2) | 9395254 |
| 3153 | 36900.37000.37700.37800.39900.40000.58600.796400 | Toilet dado work | 16d | 2027-03-26 | 2027-04-10 | 3149, 3150, 3151 |  | Sector-44 Noida(2) | 9395264 |
| 3154 | 36900.37000.37700.37800.39900.40000.58600.796500 | Toilet flooring work | 16d | 2027-04-11 | 2027-04-26 | 3153 |  | Sector-44 Noida(2) | 9395274 |
| 3155 | 36900.37000.37700.37800.39900.40000.58600.796600 | Living dinning flooring | 16d | 2027-04-27 | 2027-05-12 | 3152, 3154 |  | Sector-44 Noida(2) | 9395284 |
| 3156 | 36900.37000.37700.37800.39900.40000.58600.796700 | Electrical wiring work | 10d | 2027-05-03 | 2027-05-12 | 3155FS-10d |  | Sector-44 Noida(2) | 9395294 |
| 3157 | 36900.37000.37700.37800.39900.40000.58600.796800 | Aluminium door-window fixing | 17d | 2027-05-05 | 2027-05-21 | 3147, 3156FS-8d |  | Sector-44 Noida(2) | 9395304 |
| 3158 | 36900.37000.37700.37800.39900.40000.58600.796900 | Putty primer coat | 8d | 2027-05-14 | 2027-05-21 | 3157FS-8d |  | Sector-44 Noida(2) | 9395314 |
| 3159 | 36900.37000.37700.37800.39900.40000.58600.797000 | Prehung door fixing | 7d | 2027-05-17 | 2027-05-23 | 3158FS-5d |  | Sector-44 Noida(2) | 9395324 |
| 3160 | 36900.37000.37700.37800.39900.40000.58600.797100 | Painting 1st coat | 10d | 2027-05-24 | 2027-06-02 | 3159 |  | Sector-44 Noida(2) | 9395334 |
| 3161 | 36900.37000.37700.37800.39900.40000.58600.797200 | False Ceiling panel fixing | 8d | 2027-06-03 | 2027-06-10 | 3144, 3160 |  | Sector-44 Noida(2) | 9395344 |
| 3162 | 36900.37000.37700.37800.39900.40000.58700 | **34th Floor** | 121d | 2027-02-20 | 2027-06-20 |  | start no earlier than 2027-02-20 | Sector-44 Noida(2) | 9361404 |
| 3163 | 36900.37000.37700.37800.39900.40000.58700.797300 | Block Work | 10d | 2027-02-20 | 2027-03-01 | 2592 |  | Sector-44 Noida(2) | 9395354 |
| 3164 | 36900.37000.37700.37800.39900.40000.58700.797400 | Installation of temporary Main door | 7d | 2027-03-02 | 2027-03-08 | 3163 |  | Sector-44 Noida(2) | 9395364 |
| 3165 | 36900.37000.37700.37800.39900.40000.58700.797500 | Fire sprinkler pipe fixing | 3d | 2027-03-02 | 2027-03-04 | 3148, 3163 |  | Sector-44 Noida(2) | 9395374 |
| 3166 | 36900.37000.37700.37800.39900.40000.58700.797600 | Internal Plumbing Works | 7d | 2027-03-02 | 2027-03-08 | 3163 |  | Sector-44 Noida(2) | 9395384 |
| 3167 | 36900.37000.37700.37800.39900.40000.58700.797700 | Waterproofing | 12d | 2027-03-09 | 2027-03-20 | 3166 |  | Sector-44 Noida(2) | 9395394 |
| 3168 | 36900.37000.37700.37800.39900.40000.58700.797800 | Internal Plaster | 15d | 2027-03-21 | 2027-04-04 | 3166, 3167 |  | Sector-44 Noida(2) | 9395404 |
| 3169 | 36900.37000.37700.37800.39900.40000.58700.797900 | IPS flooring work | 11d | 2027-03-02 | 2027-03-12 | 3163 |  | Sector-44 Noida(2) | 9395414 |
| 3170 | 36900.37000.37700.37800.39900.40000.58700.798000 | Toilet dado work | 16d | 2027-04-05 | 2027-04-20 | 3166, 3167, 3168 |  | Sector-44 Noida(2) | 9395424 |
| 3171 | 36900.37000.37700.37800.39900.40000.58700.798100 | Toilet flooring work | 16d | 2027-04-21 | 2027-05-06 | 3170 |  | Sector-44 Noida(2) | 9395434 |
| 3172 | 36900.37000.37700.37800.39900.40000.58700.798200 | Living dinning flooring | 16d | 2027-05-07 | 2027-05-22 | 3169, 3171 |  | Sector-44 Noida(2) | 9395444 |
| 3173 | 36900.37000.37700.37800.39900.40000.58700.798300 | Electrical wiring work | 10d | 2027-05-13 | 2027-05-22 | 3172FS-10d |  | Sector-44 Noida(2) | 9395454 |
| 3174 | 36900.37000.37700.37800.39900.40000.58700.798400 | Aluminium door-window fixing | 17d | 2027-05-15 | 2027-05-31 | 3164, 3173FS-8d |  | Sector-44 Noida(2) | 9395464 |
| 3175 | 36900.37000.37700.37800.39900.40000.58700.798500 | Putty primer coat | 8d | 2027-05-24 | 2027-05-31 | 3174FS-8d |  | Sector-44 Noida(2) | 9395474 |
| 3176 | 36900.37000.37700.37800.39900.40000.58700.798600 | Prehung door fixing | 7d | 2027-05-27 | 2027-06-02 | 3175FS-5d |  | Sector-44 Noida(2) | 9395484 |
| 3177 | 36900.37000.37700.37800.39900.40000.58700.798700 | Painting 1st coat | 10d | 2027-06-03 | 2027-06-12 | 3176 |  | Sector-44 Noida(2) | 9395494 |
| 3178 | 36900.37000.37700.37800.39900.40000.58700.798800 | False Ceiling panel fixing | 8d | 2027-06-13 | 2027-06-20 | 3161, 3177 |  | Sector-44 Noida(2) | 9395504 |

| ID | WBS | Task | Duration | Start | Finish | Predecessors | Constraint | Calendar | Unique_Task_ID |
| --- | --- | --- | --- | --- | --- | --- | --- | --- | --- |
| 3179 | 36900.37000.37700.37800.39900.40000.58800 | **35th Floor** | 121d | 2027-03-02 | 2027-06-30 |  | start no earlier than 2027-03-02 | Sector-44 Noida(2) | 9361434 |
| 3180 | 36900.37000.37700.37800.39900.40000.58800.798900 | Block Work | 10d | 2027-03-02 | 2027-03-11 | 2593 |  | Sector-44 Noida(2) | 9395514 |
| 3181 | 36900.37000.37700.37800.39900.40000.58800.799000 | Installation of temporary Main door | 7d | 2027-03-12 | 2027-03-18 | 3180 |  | Sector-44 Noida(2) | 9395524 |
| 3182 | 36900.37000.37700.37800.39900.40000.58800.799100 | Fire sprinkler pipe fixing | 3d | 2027-03-12 | 2027-03-14 | 3165, 3180 |  | Sector-44 Noida(2) | 9395534 |
| 3183 | 36900.37000.37700.37800.39900.40000.58800.799200 | Internal Plumbing Works | 7d | 2027-03-12 | 2027-03-18 | 3180 |  | Sector-44 Noida(2) | 9395544 |
| 3184 | 36900.37000.37700.37800.39900.40000.58800.799300 | Waterproofing | 12d | 2027-03-19 | 2027-03-30 | 3183 |  | Sector-44 Noida(2) | 9395554 |
| 3185 | 36900.37000.37700.37800.39900.40000.58800.799400 | Internal Plaster | 15d | 2027-03-31 | 2027-04-14 | 3183, 3184 |  | Sector-44 Noida(2) | 9395564 |
| 3186 | 36900.37000.37700.37800.39900.40000.58800.799500 | IPS flooring work | 11d | 2027-03-12 | 2027-03-22 | 3180 |  | Sector-44 Noida(2) | 9395574 |
| 3187 | 36900.37000.37700.37800.39900.40000.58800.799600 | Toilet dado work | 16d | 2027-04-15 | 2027-04-30 | 3183, 3184, 3185 |  | Sector-44 Noida(2) | 9395584 |
| 3188 | 36900.37000.37700.37800.39900.40000.58800.799700 | Toilet flooring work | 16d | 2027-05-01 | 2027-05-16 | 3187 |  | Sector-44 Noida(2) | 9395594 |
| 3189 | 36900.37000.37700.37800.39900.40000.58800.799800 | Living dinning flooring | 16d | 2027-05-17 | 2027-06-01 | 3186, 3188 |  | Sector-44 Noida(2) | 9395604 |
| 3190 | 36900.37000.37700.37800.39900.40000.58800.799900 | Electrical wiring work | 10d | 2027-05-23 | 2027-06-01 | 3189FS-10d |  | Sector-44 Noida(2) | 9395614 |
| 3191 | 36900.37000.37700.37800.39900.40000.58800.800000 | Aluminium door-window fixing | 17d | 2027-05-25 | 2027-06-10 | 3181, 3190FS-8d |  | Sector-44 Noida(2) | 9395624 |
| 3192 | 36900.37000.37700.37800.39900.40000.58800.800100 | Putty primer coat | 8d | 2027-06-03 | 2027-06-10 | 3191FS-8d |  | Sector-44 Noida(2) | 9395634 |
| 3193 | 36900.37000.37700.37800.39900.40000.58800.800200 | Prehung door fixing | 7d | 2027-06-06 | 2027-06-12 | 3192FS-5d |  | Sector-44 Noida(2) | 9395644 |
| 3194 | 36900.37000.37700.37800.39900.40000.58800.800300 | Painting 1st coat | 10d | 2027-06-13 | 2027-06-22 | 3193 |  | Sector-44 Noida(2) | 9395654 |
| 3195 | 36900.37000.37700.37800.39900.40000.58800.800400 | False Ceiling panel fixing | 8d | 2027-06-23 | 2027-06-30 | 3178, 3194 |  | Sector-44 Noida(2) | 9395664 |
| 3196 | 36900.37000.37700.37800.39900.40000.58900 | **36th Floor** | 118d | 2027-03-14 | 2027-07-09 |  | start no earlier than 2027-03-14 | Sector-44 Noida(2) | 9361464 |
| 3197 | 36900.37000.37700.37800.39900.40000.58900.800500 | Block Work | 7d | 2027-03-14 | 2027-03-20 | 2594 |  | Sector-44 Noida(2) | 9395674 |
| 3198 | 36900.37000.37700.37800.39900.40000.58900.800600 | Installation of temporary Main door | 7d | 2027-03-21 | 2027-03-27 | 3197 |  | Sector-44 Noida(2) | 9395684 |
| 3199 | 36900.37000.37700.37800.39900.40000.58900.800700 | Fire sprinkler pipe fixing | 3d | 2027-03-21 | 2027-03-23 | 3182, 3197 |  | Sector-44 Noida(2) | 9395694 |
| 3200 | 36900.37000.37700.37800.39900.40000.58900.800800 | Internal Plumbing Works | 7d | 2027-03-21 | 2027-03-27 | 3197 |  | Sector-44 Noida(2) | 9395704 |
| 3201 | 36900.37000.37700.37800.39900.40000.58900.800900 | Waterproofing | 12d | 2027-03-28 | 2027-04-08 | 3200 |  | Sector-44 Noida(2) | 9395714 |
| 3202 | 36900.37000.37700.37800.39900.40000.58900.801000 | Internal Plaster | 15d | 2027-04-09 | 2027-04-23 | 3200, 3201 |  | Sector-44 Noida(2) | 9395724 |
| 3203 | 36900.37000.37700.37800.39900.40000.58900.801100 | IPS flooring work | 11d | 2027-03-21 | 2027-03-31 | 3197 |  | Sector-44 Noida(2) | 9395734 |
| 3204 | 36900.37000.37700.37800.39900.40000.58900.801200 | Toilet dado work | 16d | 2027-04-24 | 2027-05-09 | 3200, 3201, 3202 |  | Sector-44 Noida(2) | 9395744 |
| 3205 | 36900.37000.37700.37800.39900.40000.58900.801300 | Toilet flooring work | 16d | 2027-05-10 | 2027-05-25 | 3204 |  | Sector-44 Noida(2) | 9395754 |
| 3206 | 36900.37000.37700.37800.39900.40000.58900.801400 | Living dinning flooring | 16d | 2027-05-26 | 2027-06-10 | 3203, 3205 |  | Sector-44 Noida(2) | 9395764 |
| 3207 | 36900.37000.37700.37800.39900.40000.58900.801500 | Electrical wiring work | 10d | 2027-06-01 | 2027-06-10 | 3206FS-10d |  | Sector-44 Noida(2) | 9395774 |
| 3208 | 36900.37000.37700.37800.39900.40000.58900.801600 | Aluminium door-window fixing | 17d | 2027-06-03 | 2027-06-19 | 3198, 3207FS-8d |  | Sector-44 Noida(2) | 9395784 |
| 3209 | 36900.37000.37700.37800.39900.40000.58900.801700 | Putty primer coat | 8d | 2027-06-12 | 2027-06-19 | 3208FS-8d |  | Sector-44 Noida(2) | 9395794 |
| 3210 | 36900.37000.37700.37800.39900.40000.58900.801800 | Prehung door fixing | 7d | 2027-06-15 | 2027-06-21 | 3209FS-5d |  | Sector-44 Noida(2) | 9395804 |
| 3211 | 36900.37000.37700.37800.39900.40000.58900.801900 | Painting 1st coat | 10d | 2027-06-22 | 2027-07-01 | 3210 |  | Sector-44 Noida(2) | 9395814 |
| 3212 | 36900.37000.37700.37800.39900.40000.58900.802000 | False Ceiling panel fixing | 8d | 2027-07-02 | 2027-07-09 | 3195, 3211 |  | Sector-44 Noida(2) | 9395824 |

| ID | WBS | Task | Duration | Start | Finish | Predecessors | Constraint | Calendar | Unique_Task_ID |
| --- | --- | --- | --- | --- | --- | --- | --- | --- | --- |
| 3213 | 36900.37000.37700.37800.39900.40000.59000 | **37th Floor** | 122d | 2027-03-23 | 2027-07-22 |  | start no earlier than 2027-03-23 | Sector-44 Noida(2) | 9361574 |
| 3214 | 36900.37000.37700.37800.39900.40000.59000.802100 | Block Work | 7d | 2027-03-23 | 2027-03-29 | 2595 |  | Sector-44 Noida(2) | 9395834 |
| 3215 | 36900.37000.37700.37800.39900.40000.59000.802200 | Installation of temporary Main door | 7d | 2027-03-30 | 2027-04-05 | 3214 |  | Sector-44 Noida(2) | 9395844 |
| 3216 | 36900.37000.37700.37800.39900.40000.59000.802300 | Fire sprinkler pipe fixing | 3d | 2027-03-30 | 2027-04-01 | 3199, 3214 |  | Sector-44 Noida(2) | 9395854 |
| 3217 | 36900.37000.37700.37800.39900.40000.59000.802400 | Internal Plumbing Works | 7d | 2027-03-30 | 2027-04-05 | 3214 |  | Sector-44 Noida(2) | 9395864 |
| 3218 | 36900.37000.37700.37800.39900.40000.59000.802500 | Waterproofing | 12d | 2027-04-06 | 2027-04-17 | 3217 |  | Sector-44 Noida(2) | 9395874 |
| 3219 | 36900.37000.37700.37800.39900.40000.59000.802600 | Internal Plaster | 15d | 2027-04-18 | 2027-05-02 | 3217, 3218 |  | Sector-44 Noida(2) | 9395884 |
| 3220 | 36900.37000.37700.37800.39900.40000.59000.802700 | IPS flooring work | 11d | 2027-03-30 | 2027-04-09 | 3214 |  | Sector-44 Noida(2) | 9395894 |
| 3221 | 36900.37000.37700.37800.39900.40000.59000.802800 | Toilet dado work | 20d | 2027-05-03 | 2027-05-22 | 3217, 3218, 3219 |  | Sector-44 Noida(2) | 9395904 |
| 3222 | 36900.37000.37700.37800.39900.40000.59000.802900 | Toilet flooring work | 16d | 2027-05-23 | 2027-06-07 | 3221 |  | Sector-44 Noida(2) | 9395914 |
| 3223 | 36900.37000.37700.37800.39900.40000.59000.803000 | Living dinning flooring | 16d | 2027-06-08 | 2027-06-23 | 3220, 3222 |  | Sector-44 Noida(2) | 9395924 |
| 3224 | 36900.37000.37700.37800.39900.40000.59000.803100 | Electrical wiring work | 10d | 2027-06-14 | 2027-06-23 | 3223FS-10d |  | Sector-44 Noida(2) | 9395934 |
| 3225 | 36900.37000.37700.37800.39900.40000.59000.803200 | Aluminium door-window fixing | 17d | 2027-06-16 | 2027-07-02 | 3215, 3224FS-8d |  | Sector-44 Noida(2) | 9395944 |
| 3226 | 36900.37000.37700.37800.39900.40000.59000.803300 | Putty primer coat | 8d | 2027-06-25 | 2027-07-02 | 3225FS-8d |  | Sector-44 Noida(2) | 9395954 |
| 3227 | 36900.37000.37700.37800.39900.40000.59000.803400 | Prehung door fixing | 7d | 2027-06-28 | 2027-07-04 | 3226FS-5d |  | Sector-44 Noida(2) | 9395964 |
| 3228 | 36900.37000.37700.37800.39900.40000.59000.803500 | Painting 1st coat | 10d | 2027-07-05 | 2027-07-14 | 3227 |  | Sector-44 Noida(2) | 9395974 |
| 3229 | 36900.37000.37700.37800.39900.40000.59000.803600 | False Ceiling panel fixing | 8d | 2027-07-15 | 2027-07-22 | 3212, 3228 |  | Sector-44 Noida(2) | 9395984 |
| 3230 | 36900.37000.37700.37800.39900.40000.59100 | **38th Floor** | 137d | 2027-04-01 | 2027-08-15 |  | start no earlier than 2027-04-01 | Sector-44 Noida(2) | 9361654 |
| 3231 | 36900.37000.37700.37800.39900.40000.59100.803700 | Block Work | 13d | 2027-04-01 | 2027-04-13 | 2596 |  | Sector-44 Noida(2) | 9395994 |
| 3232 | 36900.37000.37700.37800.39900.40000.59100.803800 | Installation of temporary Main door | 7d | 2027-04-14 | 2027-04-20 | 3231 |  | Sector-44 Noida(2) | 9396004 |
| 3233 | 36900.37000.37700.37800.39900.40000.59100.803900 | Fire sprinkler pipe fixing | 3d | 2027-04-14 | 2027-04-16 | 3216, 3231 |  | Sector-44 Noida(2) | 9396014 |
| 3234 | 36900.37000.37700.37800.39900.40000.59100.804000 | Internal Plumbing Works | 7d | 2027-04-14 | 2027-04-20 | 3231 |  | Sector-44 Noida(2) | 9396024 |
| 3235 | 36900.37000.37700.37800.39900.40000.59100.804100 | Waterproofing | 12d | 2027-04-21 | 2027-05-02 | 3234 |  | Sector-44 Noida(2) | 9396034 |
| 3236 | 36900.37000.37700.37800.39900.40000.59100.804200 | Internal Plaster | 11d | 2027-05-03 | 2027-05-13 | 3234, 3235 |  | Sector-44 Noida(2) | 9396044 |
| 3237 | 36900.37000.37700.37800.39900.40000.59100.804300 | IPS flooring work | 11d | 2027-04-14 | 2027-04-24 | 3231 |  | Sector-44 Noida(2) | 9396054 |
| 3238 | 36900.37000.37700.37800.39900.40000.59100.804400 | Toilet dado work | 20d | 2027-05-14 | 2027-06-02 | 3234, 3235, 3236 |  | Sector-44 Noida(2) | 9396064 |
| 3239 | 36900.37000.37700.37800.39900.40000.59100.804500 | Toilet flooring work | 16d | 2027-06-03 | 2027-06-18 | 3238 |  | Sector-44 Noida(2) | 9396074 |
| 3240 | 36900.37000.37700.37800.39900.40000.59100.804600 | Living dinning flooring | 29d | 2027-06-19 | 2027-07-17 | 3237, 3239 |  | Sector-44 Noida(2) | 9396084 |
| 3241 | 36900.37000.37700.37800.39900.40000.59100.804700 | Electrical wiring work | 10d | 2027-07-08 | 2027-07-17 | 3240FS-10d |  | Sector-44 Noida(2) | 9396094 |
| 3242 | 36900.37000.37700.37800.39900.40000.59100.804800 | Aluminium door-window fixing | 17d | 2027-07-10 | 2027-07-26 | 3232, 3241FS-8d |  | Sector-44 Noida(2) | 9396104 |
| 3243 | 36900.37000.37700.37800.39900.40000.59100.804900 | Putty primer coat | 8d | 2027-07-19 | 2027-07-26 | 3242FS-8d |  | Sector-44 Noida(2) | 9396114 |
| 3244 | 36900.37000.37700.37800.39900.40000.59100.805000 | Prehung door fixing | 7d | 2027-07-22 | 2027-07-28 | 3243FS-5d |  | Sector-44 Noida(2) | 9396124 |
| 3245 | 36900.37000.37700.37800.39900.40000.59100.805100 | Painting 1st coat | 10d | 2027-07-29 | 2027-08-07 | 3244 |  | Sector-44 Noida(2) | 9396134 |
| 3246 | 36900.37000.37700.37800.39900.40000.59100.805200 | False Ceiling panel fixing | 8d | 2027-08-08 | 2027-08-15 | 3229, 3245 |  | Sector-44 Noida(2) | 9396144 |

| ID | WBS | Task | Duration | Start | Finish | Predecessors | Constraint | Calendar | Unique_Task_ID |
| --- | --- | --- | --- | --- | --- | --- | --- | --- | --- |
| 3247 | 36900.37000.37700.37800.39900.191400 | **Terrace finishing** | 70d | 2027-06-09 | 2027-08-17 |  | start no earlier than 2027-06-09 | Sector-44 Noida(2) | 9366124 |
| 3248 | 36900.37000.37700.37800.39900.191400.361400 | Terrace waterproofing | 30d | 2027-06-09 | 2027-07-08 | 3337FS+10d |  | Sector-44 Noida(2) | 9372244 |
| 3249 | 36900.37000.37700.37800.39900.191400.361500 | Terrace Finishing | 40d | 2027-07-09 | 2027-08-17 | 3248 |  | Sector-44 Noida(2) | 9372254 |
| 3250 | 36900.37000.37700.37800.39900.96500 | **Common area finishing** | 190d | 2027-03-05 | 2027-09-10 |  | start no earlier than 2027-03-05 | Sector-44 Noida(2) | 9362134 |
| 3251 | 36900.37000.37700.37800.39900.96500.361600 | Masonary Work | 40d | 2027-03-05 | 2027-04-13 | 2540 |  | Sector-44 Noida(2) | 9372264 |
| 3252 | 36900.37000.37700.37800.39900.96500.361700 | Fire sprinkler pipe fixing | 40d | 2027-03-10 | 2027-04-18 | 2540FS+5d |  | Sector-44 Noida(2) | 9372274 |
| 3253 | 36900.37000.37700.37800.39900.96500.361800 | Corridoor, staircase, shaft Plaster & whitewash | 80d | 2027-03-15 | 2027-06-02 | 3251FS-30d |  | Sector-44 Noida(2) | 9372284 |
| 3254 | 36900.37000.37700.37800.39900.96500.361900 | Staircase railing fixing | 80d | 2027-03-25 | 2027-06-12 | 3251FS-20d |  | Sector-44 Noida(2) | 9372294 |
| 3255 | 36900.37000.37700.37800.39900.96500.362000 | Fire staircase flooring | 100d | 2027-03-15 | 2027-06-22 | 3254FS-90d |  | Sector-44 Noida(2) | 9372304 |
| 3256 | 36900.37000.37700.37800.39900.96500.362100 | Main staircase flooring | 100d | 2027-03-15 | 2027-06-22 | 3254FS-90d |  | Sector-44 Noida(2) | 9372314 |
| 3257 | 36900.37000.37700.37800.39900.96500.362200 | Fire door work | 120d | 2027-04-24 | 2027-08-21 | 3255FS-60d |  | Sector-44 Noida(2) | 9372324 |
| 3258 | 36900.37000.37700.37800.39900.96500.362300 | Lobby flooring & Corridor | 170d | 2027-03-25 | 2027-09-10 | 3256FS-90d |  | Sector-44 Noida(2) | 9372334 |
| 3259 | 36900.37000.37700.37800.39900.96500.362400 | Ceiling & wall putty-primer | 80d | 2027-06-13 | 2027-08-31 | 3258FS-90d |  | Sector-44 Noida(2) | 9372344 |
| 3260 | 36900.37000.37700.37800.39900.96500.362500 | Ceiling & wall painting | 75d | 2027-05-24 | 2027-08-06 | 3259FS-100d |  | Sector-44 Noida(2) | 9372354 |
| 3261 | 36900.37000.37700.37800.39900.96500.362600 | Electrical wiring work | 70d | 2027-04-29 | 2027-07-07 | 3260FS-100d |  | Sector-44 Noida(2) | 9372364 |
| 3262 | 36900.37000.37700.37800.39900.96500.362700 | Light fixture supply & installation | 30d | 2027-05-24 | 2027-06-22 | 3261FS-45d |  | Sector-44 Noida(2) | 9372374 |
| 3263 | 36900.37000.37700.37800.39900.96500.362800 | Installation of fire signages including Basements | 20d | 2027-08-07 | 2027-08-26 | 3260 |  | Sector-44 Noida(2) | 9372384 |
| 3264 | 36900.37000.37700.37800.39900.45800 | **Balcony Glass Railing** | 259d | 2026-03-29 | 2027-01-26 |  | start no earlier than 2026-03-29 | Sector-44 Noida(2) | 9360814 |
| 3265 | 36900.37000.37700.37800.39900.45800.362900 | 1st Floor | 7d | 2026-03-29 | 2026-04-04 | 2602 |  | Sector-44 Noida(2) | 9372394 |
| 3266 | 36900.37000.37700.37800.39900.45800.363000 | 2nd Floor | 7d | 2026-04-05 | 2026-04-11 | 3265 |  | Sector-44 Noida(2) | 9372404 |
| 3267 | 36900.37000.37700.37800.39900.45800.363100 | 3rd Floor | 7d | 2026-04-12 | 2026-04-18 | 3266 |  | Sector-44 Noida(2) | 9372414 |
| 3268 | 36900.37000.37700.37800.39900.45800.363200 | 4th Floor | 7d | 2026-04-19 | 2026-04-25 | 3267 |  | Sector-44 Noida(2) | 9372424 |
| 3269 | 36900.37000.37700.37800.39900.45800.363300 | 5th Floor | 7d | 2026-04-26 | 2026-05-02 | 3268 |  | Sector-44 Noida(2) | 9372434 |
| 3270 | 36900.37000.37700.37800.39900.45800.363400 | 6th Floor | 7d | 2026-05-03 | 2026-05-09 | 3269 |  | Sector-44 Noida(2) | 9372444 |
| 3271 | 36900.37000.37700.37800.39900.45800.363500 | 7th Floor | 7d | 2026-05-10 | 2026-05-16 | 3270 |  | Sector-44 Noida(2) | 9372454 |
| 3272 | 36900.37000.37700.37800.39900.45800.363600 | 8th Floor | 7d | 2026-05-17 | 2026-05-23 | 3271 |  | Sector-44 Noida(2) | 9372464 |
| 3273 | 36900.37000.37700.37800.39900.45800.363700 | 9th Floor | 7d | 2026-05-24 | 2026-05-30 | 3272 |  | Sector-44 Noida(2) | 9372474 |
| 3274 | 36900.37000.37700.37800.39900.45800.363800 | 10th Floor | 7d | 2026-05-31 | 2026-06-06 | 3273 |  | Sector-44 Noida(2) | 9372484 |
| 3275 | 36900.37000.37700.37800.39900.45800.363900 | 11th Floor | 7d | 2026-06-07 | 2026-06-13 | 3274 |  | Sector-44 Noida(2) | 9372494 |
| 3276 | 36900.37000.37700.37800.39900.45800.364000 | 12th Floor | 7d | 2026-06-14 | 2026-06-20 | 3275 |  | Sector-44 Noida(2) | 9372504 |
| 3277 | 36900.37000.37700.37800.39900.45800.364100 | 13th Floor | 7d | 2026-06-21 | 2026-06-27 | 3276 |  | Sector-44 Noida(2) | 9372514 |
| 3278 | 36900.37000.37700.37800.39900.45800.364200 | 14th Floor | 7d | 2026-06-28 | 2026-07-04 | 3277 |  | Sector-44 Noida(2) | 9372524 |
| 3279 | 36900.37000.37700.37800.39900.45800.364300 | 15th Floor | 7d | 2026-07-05 | 2026-07-11 | 3278 |  | Sector-44 Noida(2) | 9372534 |
| 3280 | 36900.37000.37700.37800.39900.45800.364400 | 16th Floor | 7d | 2026-07-12 | 2026-07-18 | 3279 |  | Sector-44 Noida(2) | 9372544 |
| 3281 | 36900.37000.37700.37800.39900.45800.364500 | 17th Floor | 7d | 2026-07-19 | 2026-07-25 | 3280 |  | Sector-44 Noida(2) | 9372554 |
| 3282 | 36900.37000.37700.37800.39900.45800.364600 | 18th Floor | 7d | 2026-07-26 | 2026-08-01 | 3281 |  | Sector-44 Noida(2) | 9372564 |
| 3283 | 36900.37000.37700.37800.39900.45800.364700 | 19th Floor | 7d | 2026-08-02 | 2026-08-08 | 3282 |  | Sector-44 Noida(2) | 9372574 |
| 3284 | 36900.37000.37700.37800.39900.45800.364800 | 20th Floor | 7d | 2026-08-09 | 2026-08-15 | 3283 |  | Sector-44 Noida(2) | 9372584 |
| 3285 | 36900.37000.37700.37800.39900.45800.364900 | 21st Floor | 7d | 2026-08-16 | 2026-08-22 | 3284 |  | Sector-44 Noida(2) | 9372594 |
| 3286 | 36900.37000.37700.37800.39900.45800.365000 | 22nd Floor | 7d | 2026-08-23 | 2026-08-29 | 3285 |  | Sector-44 Noida(2) | 9372604 |
| 3287 | 36900.37000.37700.37800.39900.45800.365100 | 23rd Floor | 7d | 2026-08-30 | 2026-09-05 | 3286 |  | Sector-44 Noida(2) | 9372614 |
| 3288 | 36900.37000.37700.37800.39900.45800.365200 | 24th Floor | 7d | 2026-09-06 | 2026-09-12 | 3287 |  | Sector-44 Noida(2) | 9372624 |
| 3289 | 36900.37000.37700.37800.39900.45800.365300 | 25th Floor | 7d | 2026-09-13 | 2026-09-19 | 3288 |  | Sector-44 Noida(2) | 9372634 |
| 3290 | 36900.37000.37700.37800.39900.45800.365400 | 26th Floor | 7d | 2026-09-20 | 2026-09-26 | 3289 |  | Sector-44 Noida(2) | 9372644 |
| 3291 | 36900.37000.37700.37800.39900.45800.365500 | 27th Floor | 7d | 2026-09-27 | 2026-10-03 | 3290 |  | Sector-44 Noida(2) | 9372654 |
| 3292 | 36900.37000.37700.37800.39900.45800.365600 | 28th Floor | 7d | 2026-10-04 | 2026-10-10 | 3291 |  | Sector-44 Noida(2) | 9372664 |
| 3293 | 36900.37000.37700.37800.39900.45800.365700 | 29th Floor | 7d | 2026-10-11 | 2026-10-17 | 3292 |  | Sector-44 Noida(2) | 9372674 |
| 3294 | 36900.37000.37700.37800.39900.45800.365800 | 30th Floor | 7d | 2026-10-18 | 2026-10-24 | 3293 |  | Sector-44 Noida(2) | 9372684 |
| 3295 | 36900.37000.37700.37800.39900.45800.365900 | 31st Floor | 7d | 2026-10-25 | 2026-10-31 | 3294 |  | Sector-44 Noida(2) | 9372694 |
| 3296 | 36900.37000.37700.37800.39900.45800.366000 | 32nd Floor | 7d | 2026-12-16 | 2026-12-22 | 3295 |  | Sector-44 Noida(2) | 9372704 |
| 3297 | 36900.37000.37700.37800.39900.45800.366100 | 33th Floor | 7d | 2026-12-23 | 2026-12-29 | 3296 |  | Sector-44 Noida(2) | 9372714 |
| 3298 | 36900.37000.37700.37800.39900.45800.366200 | 34th Floor | 7d | 2026-12-30 | 2027-01-05 | 3297 |  | Sector-44 Noida(2) | 9372724 |
| 3299 | 36900.37000.37700.37800.39900.45800.366300 | 36th Floor | 7d | 2027-01-06 | 2027-01-12 | 3298 |  | Sector-44 Noida(2) | 9372734 |
| 3300 | 36900.37000.37700.37800.39900.45800.366400 | 37th Floor | 7d | 2027-01-13 | 2027-01-19 | 3299 |  | Sector-44 Noida(2) | 9372744 |
| 3301 | 36900.37000.37700.37800.39900.45800.366500 | 38th Floor | 7d | 2027-01-20 | 2027-01-26 | 3300 |  | Sector-44 Noida(2) | 9372754 |

| ID | WBS | Task | Duration | Start | Finish | Predecessors | Constraint | Calendar | Unique_Task_ID |
| --- | --- | --- | --- | --- | --- | --- | --- | --- | --- |
| 3302 | 36900.37000.37700.37800.96400 | **MEP Work** | 313d | 2027-02-08 | 2028-01-31 |  | start no earlier than 2027-02-08 | Sector-44 Noida(2) | 9362144 |
| 3303 | 36900.37000.37700.37800.96400.98600 | **Electrical Work** | 150d | 2027-02-08 | 2027-07-07 |  | start no earlier than 2027-02-08 | Sector-44 Noida(2) | 9362224 |
| 3304 | 36900.37000.37700.37800.96400.98600.366600 | Cable Tray | 30d | 2027-04-09 | 2027-05-08 | 2557 |  | Sector-44 Noida(2) | 9372764 |
| 3305 | 36900.37000.37700.37800.96400.98600.366700 | Cable, main & sub main | 30d | 2027-02-08 | 2027-03-09 | 3304FS-90d |  | Sector-44 Noida(2) | 9372774 |
| 3306 | 36900.37000.37700.37800.96400.98600.366800 | LT panel & DB | 40d | 2027-03-10 | 2027-04-18 | 3304FS-60d |  | Sector-44 Noida(2) | 9372784 |
| 3307 | 36900.37000.37700.37800.96400.98600.366900 | Earthing Works | 15d | 2027-05-09 | 2027-05-23 | 3304 |  | Sector-44 Noida(2) | 9372794 |
| 3308 | 36900.37000.37700.37800.96400.98600.367000 | Advanced Lightening Protection system | 15d | 2027-04-29 | 2027-05-13 | 3307FS-25d |  | Sector-44 Noida(2) | 9372804 |
| 3309 | 36900.37000.37700.37800.96400.98600.367100 | Energy meter | 15d | 2027-03-10 | 2027-03-24 | 3305 |  | Sector-44 Noida(2) | 9372814 |
| 3310 | 36900.37000.37700.37800.96400.98600.367200 | Inverter / UPS | 10d | 2027-04-19 | 2027-04-28 | 3305, 3306, 3309FS-5d |  | Sector-44 Noida(2) | 9372824 |
| 3311 | 36900.37000.37700.37800.96400.98600.367300 | HVAC & Exhaust fan | 30d | 2027-04-09 | 2027-05-08 | 3304FS-30d |  | Sector-44 Noida(2) | 9372834 |
| 3312 | 36900.37000.37700.37800.96400.98600.367400 | FTTH | 10d | 2027-03-25 | 2027-04-03 | 3306FS-25d |  | Sector-44 Noida(2) | 9372844 |
| 3313 | 36900.37000.37700.37800.96400.98600.367500 | Security System - FA & PA | 10d | 2027-03-25 | 2027-04-03 | 3306FS-25d |  | Sector-44 Noida(2) | 9372854 |
| 3314 | 36900.37000.37700.37800.96400.98600.367600 | T&C of complete system | 15d | 2027-06-23 | 2027-07-07 | 3262, 3306, 3308, 3309, 3310, 3311, 3312, 3313, 3446 |  | Sector-44 Noida(2) | 9372864 |
| 3315 | 36900.37000.37700.37800.96400.105500 | **Plumbing work** | 89d | 2027-04-10 | 2027-07-07 |  | start no earlier than 2027-04-10 | Sector-44 Noida(2) | 9362594 |
| 3316 | 36900.37000.37700.37800.96400.105500.367700 | Terrace looping | 20d | 2027-04-10 | 2027-04-29 | 2597 |  | Sector-44 Noida(2) | 9372874 |
| 3317 | 36900.37000.37700.37800.96400.105500.367800 | Shaft Plumbing | 30d | 2027-05-04 | 2027-06-02 | 3253FS-30d, 3316 |  | Sector-44 Noida(2) | 9372884 |
| 3318 | 36900.37000.37700.37800.96400.105500.367900 | CP sanitary fixture supply | 20d | 2027-06-03 | 2027-06-22 | 3317 |  | Sector-44 Noida(2) | 9372894 |
| 3319 | 36900.37000.37700.37800.96400.105500.368000 | Cold & flushing water supply | 20d | 2027-06-03 | 2027-06-22 | 3317 |  | Sector-44 Noida(2) | 9372904 |
| 3320 | 36900.37000.37700.37800.96400.105500.368100 | Misc work | 15d | 2027-06-08 | 2027-06-22 | 3319FS-15d |  | Sector-44 Noida(2) | 9372914 |
| 3321 | 36900.37000.37700.37800.96400.105500.368200 | Installation of PHE pumps | 25d | 2027-04-30 | 2027-05-24 | 3316 |  | Sector-44 Noida(2) | 9372924 |
| 3322 | 36900.37000.37700.37800.96400.105500.368300 | T&C of complete system | 15d | 2027-06-23 | 2027-07-07 | 3316, 3317, 3319, 3320, 3321 |  | Sector-44 Noida(2) | 9372934 |
| 3323 | 36900.37000.37700.37800.96400.111100 | **Fire fighting work** | 228d | 2027-05-04 | 2028-01-31 |  | start no earlier than 2027-05-04 | Sector-44 Noida(2) | 9363944 |
| 3324 | 36900.37000.37700.37800.96400.111100.368400 | Fire hydrant work | 25d | 2027-05-04 | 2027-05-28 | 3253FS-30d |  | Sector-44 Noida(2) | 9372944 |
| 3325 | 36900.37000.37700.37800.96400.111100.368500 | Pipe connection & sprinkler installation | 15d | 2027-05-29 | 2027-06-12 | 3324 |  | Sector-44 Noida(2) | 9372954 |
| 3326 | 36900.37000.37700.37800.96400.111100.368600 | Shaft Downtake works | 25d | 2027-05-04 | 2027-05-28 | 2597, 3253FS-30d |  | Sector-44 Noida(2) | 9372964 |
| 3327 | 36900.37000.37700.37800.96400.111100.368700 | Connection to pump room | 10d | 2027-05-29 | 2027-06-07 | 3326 |  | Sector-44 Noida(2) | 9372974 |
| 3328 | 36900.37000.37700.37800.96400.111100.368800 | Installation of FF pumps | 15d | 2027-05-29 | 2027-06-12 | 3324, 3326 |  | Sector-44 Noida(2) | 9372984 |
| 3329 | 36900.37000.37700.37800.96400.111100.368900 | T&C of complete system | 118d | 2027-08-22 | 2028-01-31 | 3252, 3257, 3263FS-22d, 3325, 3327, 3328, 3233, 2978 |  | Sector-44 Noida(2) | 9372994 |

| ID | WBS | Task | Duration | Start | Finish | Predecessors | Constraint | Calendar | Unique_Task_ID |
| --- | --- | --- | --- | --- | --- | --- | --- | --- | --- |
| 3330 | 36900.37000.37700.37800.96400.183100 | **Lift work** | 78d | 2027-04-20 | 2027-07-06 |  | start no earlier than 2027-04-20 | Sector-44 Noida(2) | 9365804 |
| 3331 | 36900.37000.37700.37800.96400.183100.369000 | Lift Shaft/Pit Handover | 12d | 2027-04-20 | 2027-05-01 | 2598 |  | Sector-44 Noida(2) | 9373004 |
| 3332 | 36900.37000.37700.37800.96400.183100.369100 | Lift installation work | 58d | 2027-05-02 | 2027-06-28 | 3331 |  | Sector-44 Noida(2) | 9373014 |
| 3333 | 36900.37000.37700.37800.96400.183100.369200 | Lift testing and commissioning | 8d | 2027-06-29 | 2027-07-06 | 3332 |  | Sector-44 Noida(2) | 9373024 |
| 3334 | 36900.37000.37700.37800.128100 | **External Paint Works** | 80d | 2027-04-10 | 2027-06-28 |  | start no earlier than 2027-04-10 | Sector-44 Noida(2) | 9364324 |
| 3335 | 36900.37000.37700.37800.128100.254500 | Surface prepration | 30d | 2027-04-10 | 2027-05-09 | 2597 |  | Sector-44 Noida(2) | 9368384 |
| 3336 | 36900.37000.37700.37800.128100.254600 | External Painting (Primer, texture & first coat) | 50d | 2027-05-10 | 2027-06-28 | 3335 |  | Sector-44 Noida(2) | 9368394 |
| 3337 | 36900.37000.37700.37800.128100.254700 | Final coat of painting | 40d | 2027-04-20 | 2027-05-29 | 3336FS-70d |  | Sector-44 Noida(2) | 9368404 |
| 3338 | 36900.37000.37700.37800.128100.254800 | Misc. work | 20d | 2027-05-10 | 2027-05-29 | 3335 |  | Sector-44 Noida(2) | 9368414 |
| 3339 | 36900.37000.37700.37800.221000 | OC Application/Readiness | 1d | 2028-02-01 | 2028-02-01 | 3314, 3322, 3329, 3333, 3249, 2991, 3255, 3256, 3258, 3301, 3246, 3454, 3455, 3456, 3457, 3458, 3459, 3460, 3461 |  | Sector-44 Noida(2) | 9366284 |
| 3340 | 36900.37000.37700.37800.221100 | OC Receipt | 60d | 2028-02-02 | 2028-04-01 | 3339, 2283, 2284, 2292, 2293 |  | Sector-44 Noida(2) | 9366294 |
| 3341 | 36900.37000.37700.37800.124600 | **Post OC Activities** | 205d | 2028-03-03 | 2028-09-23 |  | start no earlier than 2028-03-03 | Sector-44 Noida(2) | 9364084 |
| 3342 | 36900.37000.37700.37800.124600.254900 | CP & Sanitaryware installation | 120d | 2028-03-03 | 2028-06-30 | 3340FS-30d, 3318 |  | Sector-44 Noida(2) | 9368424 |
| 3343 | 36900.37000.37700.37800.124600.255000 | Electrical Fixtures And Fittings installations | 120d | 2028-03-03 | 2028-06-30 | 3340FS-30d |  | Sector-44 Noida(2) | 9368434 |
| 3344 | 36900.37000.37700.37800.124600.255100 | Final Coat Paint Internal | 90d | 2028-03-03 | 2028-05-31 | 3340FS-30d |  | Sector-44 Noida(2) | 9368444 |
| 3345 | 36900.37000.37700.37800.124600.255200 | Split AC Units installation | 100d | 2028-06-16 | 2028-09-23 | 3344FS+15d |  | Sector-44 Noida(2) | 9368454 |
| 3346 | 36900.37000.37700.37800.124600.255300 | Wooden Flooring | 180d | 2028-03-03 | 2028-08-29 | 3340FS-30d |  | Sector-44 Noida(2) | 9368464 |
| 3347 | 36900.37000.37700.37800.221200 | Offer to possession | 150d | 2028-09-24 | 2029-04-06 | 3340FS+120d, 3338, 3342, 3343, 3345, 3346 |  | Sector-44 Noida(2) | 9366304 |
| 3348 | 36900.37000.47300 | **NTA works** | 1000d | 2025-06-21 | 2028-07-29 |  | start no earlier than 2025-06-21 | Sector-44 Noida(2) | 9360924 |
| 3349 | 36900.37000.47300.48200 | **RCC Works** | 561d | 2025-06-21 | 2027-04-02 |  | start no earlier than 2025-06-21 | Sector-44 Noida(2) | 9360944 |
| 3350 | 36900.37000.47300.48200.107200 | **Footings including stitch slab** | 215d | 2025-06-21 | 2026-03-07 |  | start no earlier than 2025-06-21 | Sector-44 Noida(2) | 9362664 |
| 3351 | 36900.37000.47300.48200.107200.255400 | Excavation for isolated fottings of NTA | 25d | 2025-06-21 | 2025-07-15 | 61FS+45d |  | Sector-44 Noida(2) | 9368474 |
| 3352 | 36900.37000.47300.48200.107200.255500 | ATT | 45d | 2025-07-16 | 2025-08-29 | 3351 |  | Sector-44 Noida(2) | 9368484 |
| 3353 | 36900.37000.47300.48200.107200.255600 | PCC | 55d | 2025-08-30 | 2025-10-23 | 3352 |  | Sector-44 Noida(2) | 9368494 |
| 3354 | 36900.37000.47300.48200.107200.255700 | Reinforcement | 40d | 2025-10-24 | 2026-01-16 | 3353 |  | Sector-44 Noida(2) | 9368504 |
| 3355 | 36900.37000.47300.48200.107200.255800 | Shuttering | 25d | 2026-01-17 | 2026-02-10 | 3354 |  | Sector-44 Noida(2) | 9368514 |
| 3356 | 36900.37000.47300.48200.107200.255900 | Concreteing work | 25d | 2026-02-11 | 2026-03-07 | 3355 |  | Sector-44 Noida(2) | 9368524 |

| ID | WBS | Task | Duration | Start | Finish | Predecessors | Constraint | Calendar | Unique_Task_ID |
| --- | --- | --- | --- | --- | --- | --- | --- | --- | --- |
| 3357 | 36900.37000.47300.48200.189600 | **Retaining walls -below B2 slab bottom** | 120d | 2026-01-17 | 2026-05-16 |  | start no earlier than 2026-01-17 | Sector-44 Noida(2) | 9365854 |
| 3358 | 36900.37000.47300.48200.189600.256000 | Reinforcement | 40d | 2026-01-17 | 2026-02-25 | 3354 |  | Sector-44 Noida(2) | 9368534 |
| 3359 | 36900.37000.47300.48200.189600.256100 | Shuttering | 40d | 2026-02-26 | 2026-04-06 | 3358 |  | Sector-44 Noida(2) | 9368544 |
| 3360 | 36900.37000.47300.48200.189600.256200 | Concreteing work | 40d | 2026-04-07 | 2026-05-16 | 3359 |  | Sector-44 Noida(2) | 9368554 |
| 3361 | 36900.37000.47300.48200.189500 | **B2 Slab** | 81d | 2026-03-08 | 2026-05-27 |  | start no earlier than 2026-03-08 | Sector-44 Noida(2) | 9365864 |
| 3362 | 36900.37000.47300.48200.189500.256300 | Shuttering | 35d | 2026-03-08 | 2026-04-11 | 3356 |  | Sector-44 Noida(2) | 9368564 |
| 3363 | 36900.37000.47300.48200.189500.256400 | Reinforcement | 30d | 2026-04-12 | 2026-05-11 | 3362 |  | Sector-44 Noida(2) | 9368574 |
| 3364 | 36900.37000.47300.48200.189500.256500 | Concreteing work | 11d | 2026-05-17 | 2026-05-27 | 3360, 3363FS-25d |  | Sector-44 Noida(2) | 9368584 |
| 3365 | 36900.37000.47300.48200.189400 | **Retaining walls -below B1 slab bottom** | 105d | 2026-02-26 | 2026-06-10 |  | start no earlier than 2026-02-26 | Sector-44 Noida(2) | 9365874 |
| 3366 | 36900.37000.47300.48200.189400.256600 | Reinforcement | 35d | 2026-02-26 | 2026-04-01 | 3358 |  | Sector-44 Noida(2) | 9368594 |
| 3367 | 36900.37000.47300.48200.189400.256700 | Shuttering | 35d | 2026-04-02 | 2026-05-06 | 3366 |  | Sector-44 Noida(2) | 9368604 |
| 3368 | 36900.37000.47300.48200.189400.256800 | Concreteing work | 35d | 2026-05-07 | 2026-06-10 | 3367 |  | Sector-44 Noida(2) | 9368614 |
| 3369 | 36900.37000.47300.48200.186400 | **B1 Slab** | 95d | 2026-05-28 | 2026-08-30 |  | start no earlier than 2026-05-28 | Sector-44 Noida(2) | 9365904 |
| 3370 | 36900.37000.47300.48200.186400.256900 | Shuttering | 50d | 2026-05-28 | 2026-07-16 | 3364 |  | Sector-44 Noida(2) | 9368624 |
| 3371 | 36900.37000.47300.48200.186400.257000 | Reinforcement | 45d | 2026-07-17 | 2026-08-30 | 3370 |  | Sector-44 Noida(2) | 9368634 |
| 3372 | 36900.37000.47300.48200.186400.257100 | Concreteing work | 15d | 2026-08-06 | 2026-08-20 | 3368, 3371FS-25d |  | Sector-44 Noida(2) | 9368644 |
| 3373 | 36900.37000.47300.48200.186300 | **Retaining walls -below Stilt slab bottom** | 105d | 2026-04-02 | 2026-07-15 |  | start no earlier than 2026-04-02 | Sector-44 Noida(2) | 9365954 |
| 3374 | 36900.37000.47300.48200.186300.257200 | Reinforcement | 35d | 2026-04-02 | 2026-05-06 | 3366 |  | Sector-44 Noida(2) | 9368654 |
| 3375 | 36900.37000.47300.48200.186300.257300 | Shuttering | 35d | 2026-05-07 | 2026-06-10 | 3374 |  | Sector-44 Noida(2) | 9368664 |
| 3376 | 36900.37000.47300.48200.186300.257400 | Concreteing work | 35d | 2026-06-11 | 2026-07-15 | 3375 |  | Sector-44 Noida(2) | 9368674 |
| 3377 | 36900.37000.47300.48200.185600 | **Stilt Slab** | 110d | 2026-08-21 | 2027-01-22 |  | start no earlier than 2026-08-21 | Sector-44 Noida(2) | 9365944 |
| 3378 | 36900.37000.47300.48200.185600.257500 | Shuttering | 50d | 2026-08-21 | 2026-10-09 | 3372 |  | Sector-44 Noida(2) | 9368684 |
| 3379 | 36900.37000.47300.48200.185600.257600 | Reinforcement | 45d | 2026-10-10 | 2027-01-07 | 3378 |  | Sector-44 Noida(2) | 9368694 |
| 3380 | 36900.37000.47300.48200.185600.257700 | Concreteing work | 15d | 2027-01-08 | 2027-01-22 | 3376, 3379 |  | Sector-44 Noida(2) | 9368704 |

| ID | WBS | Task | Duration | Start | Finish | Predecessors | Constraint | Calendar | Unique_Task_ID |
| --- | --- | --- | --- | --- | --- | --- | --- | --- | --- |
| 3381 | 36900.37000.47300.48200.185500 | **Podium Slab** | 70d | 2027-01-23 | 2027-04-02 |  | start no earlier than 2027-01-23 | Sector-44 Noida(2) | 9365894 |
| 3382 | 36900.37000.47300.48200.185500.257800 | Shuttering | 50d | 2027-01-23 | 2027-03-13 | 3380 |  | Sector-44 Noida(2) | 9368714 |
| 3383 | 36900.37000.47300.48200.185500.257900 | Reinforcement | 45d | 2027-02-17 | 2027-04-02 | 3382FS-25d |  | Sector-44 Noida(2) | 9368724 |
| 3384 | 36900.37000.47300.48200.185500.258000 | Concreteing work | 15d | 2027-03-09 | 2027-03-23 | 3383FS-25d |  | Sector-44 Noida(2) | 9368734 |
| 3385 | 36900.37000.47300.48200.101500 | **W/P, Soldier piling de-stressing & backfilling** | 265d | 2026-05-18 | 2027-03-23 |  | start no earlier than 2026-05-18 | Sector-44 Noida(2) | 9362364 |
| 3386 | 36900.37000.47300.48200.101500.258100 | W/P of raft and retaining wall till 2nd level of anchoring | 60d | 2026-05-18 | 2026-07-16 | 3356FS-10d, 3364FS-10d |  | Sector-44 Noida(2) | 9368744 |
| 3387 | 36900.37000.47300.48200.101500.258200 | Backfilling till 2nd level of anchoring - B2 slab | 60d | 2026-07-02 | 2026-08-30 | 3386FS-15d |  | Sector-44 Noida(2) | 9368754 |
| 3388 | 36900.37000.47300.48200.101500.258300 | De-stressing of 2nd level of anchoring of soldier piling | 28d | 2026-08-11 | 2026-09-07 | 3387FS-20d |  | Sector-44 Noida(2) | 9368764 |
| 3389 | 36900.37000.47300.48200.101500.258400 | W/P of retaining wall till 1st level of anchoring | 40d | 2026-08-11 | 2026-09-19 | 3372FS-10d |  | Sector-44 Noida(2) | 9368774 |
| 3390 | 36900.37000.47300.48200.101500.258500 | Backfilling till 1st level of anchoring - B1 slab | 40d | 2026-09-05 | 2026-10-14 | 3389FS-15d |  | Sector-44 Noida(2) | 9368784 |
| 3391 | 36900.37000.47300.48200.101500.258600 | De-stressing of 1st level of anchoring of soldier piling | 28d | 2026-09-25 | 2026-10-22 | 3390FS-20d |  | Sector-44 Noida(2) | 9368794 |
| 3392 | 36900.37000.47300.48200.101500.258700 | W/P of balance Retaining wall till NTA slab | 30d | 2027-01-13 | 2027-02-11 | 3380FS-10d |  | Sector-44 Noida(2) | 9368804 |
| 3393 | 36900.37000.47300.48200.101500.258800 | De-stressing of top anchor of soldier piling - 2m from NTA top | 28d | 2027-01-18 | 2027-02-14 | 3392FS-25d |  | Sector-44 Noida(2) | 9368814 |
| 3394 | 36900.37000.47300.48200.101500.258900 | Backfilling till NTA top slab | 60d | 2027-01-23 | 2027-03-23 | 3392FS-20d |  | Sector-44 Noida(2) | 9368824 |
| 3395 | 36900.37000.47300.48200.101500.259000 | Removal of soldier piles | 15d | 2027-03-09 | 2027-03-23 | 3388, 3391, 3393FS-13d, 3394FS-15d |  | Sector-44 Noida(2) | 9368834 |
| 3396 | 36900.37000.47300.99800 | **Finishing works** | 140d | 2027-03-24 | 2027-08-10 |  | start no earlier than 2027-03-24 | Sector-44 Noida(2) | 9362234 |
| 3397 | 36900.37000.47300.99800.103000 | **Basement-2** | 110d | 2027-03-24 | 2027-07-11 |  | start no earlier than 2027-03-24 | Sector-44 Noida(2) | 9362454 |
| 3398 | 36900.37000.47300.99800.103000.259100 | Masonary | 30d | 2027-03-24 | 2027-04-22 | 3384 |  | Sector-44 Noida(2) | 9368844 |
| 3399 | 36900.37000.47300.99800.103000.259200 | Structural Steel | 30d | 2027-03-24 | 2027-04-22 | 3384 |  | Sector-44 Noida(2) | 9368854 |
| 3400 | 36900.37000.47300.99800.103000.259300 | Plaster | 30d | 2027-04-23 | 2027-05-22 | 3398, 3399FS-15d |  | Sector-44 Noida(2) | 9368864 |
| 3401 | 36900.37000.47300.99800.103000.259400 | White Wash | 30d | 2027-05-23 | 2027-06-21 | 3400 |  | Sector-44 Noida(2) | 9368874 |
| 3402 | 36900.37000.47300.99800.103000.259500 | VDF | 60d | 2027-04-08 | 2027-06-06 | 3400FS-45d |  | Sector-44 Noida(2) | 9368884 |
| 3403 | 36900.37000.47300.99800.103000.259600 | Drain & Sump (incl. gratings) | 60d | 2027-05-08 | 2027-07-06 | 3402FS-30d |  | Sector-44 Noida(2) | 9368894 |
| 3404 | 36900.37000.47300.99800.103000.259700 | Car parking marking | 30d | 2027-06-07 | 2027-07-06 | 3401FS-15d |  | Sector-44 Noida(2) | 9368904 |
| 3405 | 36900.37000.47300.99800.103000.259800 | Signages | 30d | 2027-06-12 | 2027-07-11 | 3398FF, 3399FF, 3400FF, 3401FS-10d, 3402FF, 3403FF, 3404FF |  | Sector-44 Noida(2) | 9368914 |

| ID | WBS | Task | Duration | Start | Finish | Predecessors | Constraint | Calendar | Unique_Task_ID |
| --- | --- | --- | --- | --- | --- | --- | --- | --- | --- |
| 3406 | 36900.37000.47300.99800.103200 | **Basement-1** | 110d | 2027-04-23 | 2027-08-10 |  | start no earlier than 2027-04-23 | Sector-44 Noida(2) | 9362544 |
| 3407 | 36900.37000.47300.99800.103200.259900 | Masonary | 30d | 2027-04-23 | 2027-05-22 | 3398 |  | Sector-44 Noida(2) | 9368924 |
| 3408 | 36900.37000.47300.99800.103200.260000 | Structural Steel | 30d | 2027-04-23 | 2027-05-22 | 3398 |  | Sector-44 Noida(2) | 9368934 |
| 3409 | 36900.37000.47300.99800.103200.260100 | Plaster | 30d | 2027-05-23 | 2027-06-21 | 3407, 3408FS-15d |  | Sector-44 Noida(2) | 9368944 |
| 3410 | 36900.37000.47300.99800.103200.260200 | White Wash | 30d | 2027-06-22 | 2027-07-21 | 3409 |  | Sector-44 Noida(2) | 9368954 |
| 3411 | 36900.37000.47300.99800.103200.260300 | VDF | 60d | 2027-05-08 | 2027-07-06 | 3409FS-45d |  | Sector-44 Noida(2) | 9368964 |
| 3412 | 36900.37000.47300.99800.103200.260400 | Drain & Sump (incl. gratings) | 60d | 2027-06-07 | 2027-08-05 | 3411FS-30d |  | Sector-44 Noida(2) | 9368974 |
| 3413 | 36900.37000.47300.99800.103200.260500 | Car parking marking | 30d | 2027-07-07 | 2027-08-05 | 3410FS-15d |  | Sector-44 Noida(2) | 9368984 |
| 3414 | 36900.37000.47300.99800.103200.260600 | Signages | 30d | 2027-07-12 | 2027-08-10 | 3407FF, 3408FF, 3409FF, 3410FS-10d, 3411FF, 3412FF, 3413FF |  | Sector-44 Noida(2) | 9368994 |
| 3415 | 36900.37000.47300.95000 | **Tanks, DG & Trafo yard works** | 267d | 2026-05-30 | 2027-04-06 |  | start no earlier than 2026-05-30 | Sector-44 Noida(2) | 9362104 |
| 3416 | 36900.37000.47300.95000.125100 | **STP WTP RWH RW tanks & plant rooms works** | 62d | 2026-07-19 | 2026-09-18 |  | start no earlier than 2026-07-19 | Sector-44 Noida(2) | 9364074 |
| 3417 | 36900.37000.47300.95000.125100.260700 | STP Works incl pumping station | 20d | 2026-08-30 | 2026-09-18 | 744, 1476, 2208 |  | Sector-44 Noida(2) | 9369004 |
| 3418 | 36900.37000.47300.95000.125100.260800 | WTP works incl Plant room | 20d | 2026-08-30 | 2026-09-18 | 744, 1476, 2208 |  | Sector-44 Noida(2) | 9369014 |
| 3419 | 36900.37000.47300.95000.125100.260900 | Raw water tank works | 20d | 2026-08-30 | 2026-09-18 | 744, 1476, 2208 |  | Sector-44 Noida(2) | 9369024 |
| 3420 | 36900.37000.47300.95000.125100.261000 | Fire fighting tank works incl Plant room | 20d | 2026-08-12 | 2026-08-31 | 754FS-60d, 1486FS-60d, 2218FS-60d |  | Sector-44 Noida(2) | 9369034 |
| 3421 | 36900.37000.47300.95000.125100.261100 | Rain water harvesting works incl Plant room | 20d | 2026-07-19 | 2026-08-07 | 294 |  | Sector-44 Noida(2) | 9369044 |
| 3422 | 36900.37000.47300.95000.101200 | **DG & Trafo yard works** | 267d | 2026-05-30 | 2027-04-06 |  | start no earlier than 2026-05-30 | Sector-44 Noida(2) | 9362244 |
| 3423 | 36900.37000.47300.95000.101200.102900 | **DG Room** | 267d | 2026-05-30 | 2027-04-06 |  | start no earlier than 2026-05-30 | Sector-44 Noida(2) | 9362554 |
| 3424 | 36900.37000.47300.95000.101200.102900.110800 | **DG installation works** | 105d | 2026-07-19 | 2026-10-31 |  | start no earlier than 2026-07-19 | Sector-44 Noida(2) | 90162 |
| 3425 | 36900.37000.47300.95000.101200.102900.110800.805300 | DG foundation works | 15d | 2026-07-19 | 2026-08-02 | 294 |  | Sector-44 Noida(2) | 9396154 |
| 3426 | 36900.37000.47300.95000.101200.102900.110800.805400 | DG room epoxy flooring | 10d | 2026-08-03 | 2026-08-12 | 3425 |  | Sector-44 Noida(2) | 9396164 |
| 3427 | 36900.37000.47300.95000.101200.102900.110800.805500 | DG room acoustics | 90d | 2026-08-03 | 2026-10-31 | 3425 |  | Sector-44 Noida(2) | 9396174 |
| 3428 | 36900.37000.47300.95000.101200.102900.110800.805600 | DG installation including day tank & motor | 30d | 2026-08-13 | 2026-09-11 | 3426 |  | Sector-44 Noida(2) | 90172 |
| 3429 | 36900.37000.47300.95000.101200.102900.110800.805700 | DG stack works including frame fabrication + frame erection + pipe erection + insulation wrapping + cladding | 100d | 2026-07-19 | 2026-10-26 | 294 |  | Sector-44 Noida(2) | 9396184 |
| 3430 | 36900.37000.47300.95000.101200.102900.110800.805800 | DG earthing | 30d | 2026-09-05 | 2026-10-04 | 3428FS-7d |  | Sector-44 Noida(2) | 9396194 |

| ID | WBS | Task | Duration | Start | Finish | Predecessors | Constraint | Calendar | Unique_Task_ID |
| --- | --- | --- | --- | --- | --- | --- | --- | --- | --- |
| 3431 | 36900.37000.47300.95000.101200.102900.181600 | **DG T&C** | 267d | 2026-05-30 | 2027-04-06 |  | start no earlier than 2026-05-30 | Sector-44 Noida(2) | 9365584 |
| 3432 | 36900.37000.47300.95000.101200.102900.181600.805900 | DG stack joint radiography | 70d | 2026-05-30 | 2026-08-07 | 3429FS-150d |  | Sector-44 Noida(2) | 9396204 |
| 3433 | 36900.37000.47300.95000.101200.102900.181600.806000 | DG sync panel installation | 30d | 2026-12-16 | 2027-01-14 | 3427, 3428, 3429FS-30d, 3430 |  | Sector-44 Noida(2) | 9396214 |
| 3434 | 36900.37000.47300.95000.101200.102900.181600.806100 | DG cranking (DG standalone testing) | 7d | 2027-01-15 | 2027-01-21 | 3432, 3433 |  | Sector-44 Noida(2) | 9396224 |
| 3435 | 36900.37000.47300.95000.101200.102900.181600.806200 | DG intergrated T&C with full load setting | 30d | 2027-03-08 | 2027-04-06 | 3434FS+45d |  | Sector-44 Noida(2) | 9396234 |
| 3436 | 36900.37000.47300.95000.101200.102800 | **Transformer room & VCB** | 196d | 2026-07-19 | 2027-03-16 |  | start no earlier than 2026-07-19 | Sector-44 Noida(2) | 9362534 |
| 3437 | 36900.37000.47300.95000.101200.102800.110900 | **Transformer & HT panel installation works** | 135d | 2026-07-19 | 2027-01-14 |  | start no earlier than 2026-07-19 | Sector-44 Noida(2) | 9363974 |
| 3438 | 36900.37000.47300.95000.101200.102800.110900.806300 | Transformer foundation works | 15d | 2026-07-19 | 2026-08-02 | 294 |  | Sector-44 Noida(2) | 9396244 |
| 3439 | 36900.37000.47300.95000.101200.102800.110900.806400 | Room epoxy flooring | 10d | 2026-08-03 | 2026-08-12 | 3438 |  | Sector-44 Noida(2) | 9396254 |
| 3440 | 36900.37000.47300.95000.101200.102800.110900.806500 | Room finishings | 30d | 2026-08-03 | 2026-09-01 | 3438 |  | Sector-44 Noida(2) | 9396264 |
| 3441 | 36900.37000.47300.95000.101200.102800.110900.806600 | Tranformer & HT / LT panels installation | 30d | 2026-08-13 | 2026-09-11 | 3439 |  | Sector-44 Noida(2) | 9396274 |
| 3442 | 36900.37000.47300.95000.101200.102800.110900.806700 | Transformer connection to HT / LT panels including cable laying | 80d | 2026-09-12 | 2027-01-14 | 3441 |  | Sector-44 Noida(2) | 9396284 |
| 3443 | 36900.37000.47300.95000.101200.102800.110900.806800 | Equipment earthing | 30d | 2026-09-05 | 2026-10-04 | 3441FS-7d |  | Sector-44 Noida(2) | 9396294 |
| 3444 | 36900.37000.47300.95000.101200.102800.191300 | **Transformer T&C** | 91d | 2026-12-16 | 2027-03-16 |  | start no earlier than 2026-12-16 | Sector-44 Noida(2) | 9366014 |
| 3445 | 36900.37000.47300.95000.101200.102800.191300.806900 | HT / LT panel installation & terminations | 30d | 2026-12-16 | 2027-01-14 | 3440, 3441, 3442FS-30d, 3443 |  | Sector-44 Noida(2) | 9396304 |
| 3446 | 36900.37000.47300.95000.101200.102800.191300.807000 | Panel charging | 7d | 2027-03-10 | 2027-03-16 | 733, 1465, 2197, 3305, 3445 |  | Sector-44 Noida(2) | 9396314 |
| 3447 | 36900.37000.47300.124800 | **Boundary wall works** | 165d | 2026-07-23 | 2027-02-17 |  | start no earlier than 2026-07-23 | Sector-44 Noida(2) | 9363984 |
| 3448 | 36900.37000.47300.124800.221300 | Removal of Temporary barricading | 60d | 2026-07-23 | 2026-09-20 | 252FS+30d |  | Sector-44 Noida(2) | 9366314 |
| 3449 | 36900.37000.47300.124800.221400 | Excavation works | 60d | 2026-07-28 | 2026-09-25 | 3448FS-55d |  | Sector-44 Noida(2) | 9366324 |
| 3450 | 36900.37000.47300.124800.221500 | Foundation works | 75d | 2026-08-02 | 2026-10-15 | 3449FS-55d |  | Sector-44 Noida(2) | 9366334 |
| 3451 | 36900.37000.47300.124800.221600 | Coloumns | 90d | 2026-08-22 | 2027-01-03 | 3450FS-55d |  | Sector-44 Noida(2) | 9366344 |
| 3452 | 36900.37000.47300.124800.221700 | Boundary wall erection works | 100d | 2026-09-26 | 2027-02-17 | 3451FS-55d |  | Sector-44 Noida(2) | 9366354 |
| 3453 | 36900.37000.47300.103500 | **Landscape works including Hardscaping, irrigation line installations, etc.** | 240d | 2026-10-26 | 2027-08-06 |  | start no earlier than 2026-10-26 | Sector-44 Noida(2) | 9362444 |
| 3454 | 36900.37000.47300.103500.221800 | Works at Retail entrance | 210d | 2026-10-26 | 2027-07-07 | 3452FS-70d |  | Sector-44 Noida(2) | 9366364 |
| 3455 | 36900.37000.47300.103500.221900 | Works at Retail plaza | 210d | 2026-10-26 | 2027-07-07 | 3452FS-70d |  | Sector-44 Noida(2) | 9366374 |
| 3456 | 36900.37000.47300.103500.222000 | Works at Residential entrance | 220d | 2026-10-26 | 2027-07-17 | 3452FS-70d |  | Sector-44 Noida(2) | 9366384 |
| 3457 | 36900.37000.47300.103500.222100 | Works at Private Lawn, BBQ Area & Shaded Plaza | 150d | 2027-03-10 | 2027-08-06 | 3460FS-120d |  | Sector-44 Noida(2) | 9366394 |
| 3458 | 36900.37000.47300.103500.222200 | Works at Kids play area | 150d | 2027-03-10 | 2027-08-06 | 3460FS-120d |  | Sector-44 Noida(2) | 9366404 |
| 3459 | 36900.37000.47300.103500.222300 | Works at Multi-purpose lawn | 150d | 2027-03-10 | 2027-08-06 | 3460FS-120d |  | Sector-44 Noida(2) | 9366414 |
| 3460 | 36900.37000.47300.103500.222400 | Works at site boundary | 210d | 2026-10-26 | 2027-07-07 | 3452FS-70d |  | Sector-44 Noida(2) | 9366424 |
| 3461 | 36900.37000.47300.103500.222500 | Works at Podium (Swimming pool & relaxing area) | 150d | 2027-03-10 | 2027-08-06 | 3460FS-120d |  | Sector-44 Noida(2) | 9366434 |

| ID | WBS | Task | Duration | Start | Finish | Predecessors | Constraint | Calendar | Unique_Task_ID |
| --- | --- | --- | --- | --- | --- | --- | --- | --- | --- |
| 3462 | 36900.37000.47300.47700 | **Club & Retail (2B+G+2)** | 885d | 2025-10-14 | 2028-07-29 |  | start no earlier than 2025-10-14 | Sector-44 Noida(2) | 9360854 |
| 3463 | 36900.37000.47300.47700.62500 | **Sub-Structure works** | 375d | 2025-12-28 | 2027-02-20 |  | start no earlier than 2025-12-28 | Sector-44 Noida(2) | 9362054 |
| 3464 | 36900.37000.47300.47700.62500.130500 | **Soil bed preparation** | 9d | 2025-12-28 | 2026-01-05 |  | start no earlier than 2025-12-28 | Sector-44 Noida(2) | 9364334 |
| 3465 | 36900.37000.47300.47700.62500.130500.369300 | Excavation completion | 4d | 2025-12-28 | 2025-12-31 | 1584 |  | Sector-44 Noida(2) | 9369054 |
| 3466 | 36900.37000.47300.47700.62500.130500.369400 | Surface dressing | 3d | 2026-01-01 | 2026-01-03 | 3465 |  | Sector-44 Noida(2) | 9369064 |
| 3467 | 36900.37000.47300.47700.62500.130500.369500 | ATT | 1d | 2026-01-04 | 2026-01-04 | 3466 |  | Sector-44 Noida(2) | 9369074 |
| 3468 | 36900.37000.47300.47700.62500.130500.369600 | PCC | 1d | 2026-01-05 | 2026-01-05 | 3465FF, 3466SF, 3467 |  | Sector-44 Noida(2) | 9369084 |
| 3469 | 36900.37000.47300.47700.62500.102200 | **RCC Works** | 136d | 2026-01-06 | 2026-05-21 |  | start no earlier than 2026-01-06 | Sector-44 Noida(2) | 9362394 |
| 3470 | 36900.37000.47300.47700.62500.102200.185400 | **Raft** | 31d | 2026-01-06 | 2026-02-05 |  | start no earlier than 2026-01-06 | Sector-44 Noida(2) | 9365764 |
| 3471 | 36900.37000.47300.47700.62500.102200.185400.807100 | Reinforcement Work | 25d | 2026-01-06 | 2026-01-30 | 3468 |  | Sector-44 Noida(2) | 9373034 |
| 3472 | 36900.37000.47300.47700.62500.102200.185400.807200 | Shuttering work | 13d | 2026-01-21 | 2026-02-02 | 3471FS-10d |  | Sector-44 Noida(2) | 9373044 |
| 3473 | 36900.37000.47300.47700.62500.102200.185400.807300 | Concreteing work | 3d | 2026-02-03 | 2026-02-05 | 3471FF, 3472 |  | Sector-44 Noida(2) | 9373054 |
| 3474 | 36900.37000.47300.47700.62500.102200.123500 | **Basement-2 Roof Slab** | 60d | 2026-02-06 | 2026-04-06 |  | start no earlier than 2026-02-06 | Sector-44 Noida(2) | 9364114 |
| 3475 | 36900.37000.47300.47700.62500.102200.123500.188800 | **B2 Roof Slab** | 60d | 2026-02-06 | 2026-04-06 |  | start no earlier than 2026-02-06 | Sector-44 Noida(2) | 9365994 |
| 3476 | 36900.37000.47300.47700.62500.102200.123500.188800.1337300 | Shuttering Work | 35d | 2026-02-06 | 2026-03-12 | 3473 |  | Sector-44 Noida(2) | 9396324 |
| 3477 | 36900.37000.47300.47700.62500.102200.123500.188800.1337400 | Reinforcement Work | 30d | 2026-03-08 | 2026-04-06 | 3476FS-5d |  | Sector-44 Noida(2) | 9396334 |
| 3478 | 36900.37000.47300.47700.62500.102200.123500.188800.1337500 | Concreteing work | 1d | 2026-04-06 | 2026-04-06 | 3476FF, 3477FF |  | Sector-44 Noida(2) | 9396344 |
| 3479 | 36900.37000.47300.47700.62500.102200.123600 | **Basement-1 Roof Slab** | 45d | 2026-04-07 | 2026-05-21 |  | start no earlier than 2026-04-07 | Sector-44 Noida(2) | 9364124 |
| 3480 | 36900.37000.47300.47700.62500.102200.123600.188700 | **B1 Roof Slab** | 45d | 2026-04-07 | 2026-05-21 |  | start no earlier than 2026-04-07 | Sector-44 Noida(2) | 9365984 |
| 3481 | 36900.37000.47300.47700.62500.102200.123600.188700.1337600 | Shuttering Work | 30d | 2026-04-07 | 2026-05-06 | 3478 |  | Sector-44 Noida(2) | 9396354 |
| 3482 | 36900.37000.47300.47700.62500.102200.123600.188700.1337700 | Reinforcement Work | 19d | 2026-05-02 | 2026-05-20 | 3481FS-5d |  | Sector-44 Noida(2) | 9396364 |
| 3483 | 36900.37000.47300.47700.62500.102200.123600.188700.1337800 | Concreteing work | 1d | 2026-05-21 | 2026-05-21 | 3481FF, 3482 |  | Sector-44 Noida(2) | 9396374 |
| 3484 | 36900.37000.47300.47700.62500.98700 | **Sub structure finishing works** | 155d | 2026-08-05 | 2027-02-20 |  | start no earlier than 2026-08-05 | Sector-44 Noida(2) | 9362264 |
| 3485 | 36900.37000.47300.47700.62500.98700.103900 | **Basement-2** | 155d | 2026-08-05 | 2027-02-20 |  | start no earlier than 2026-08-05 | Sector-44 Noida(2) | 9362494 |
| 3486 | 36900.37000.47300.47700.62500.98700.103900.807400 | Masonary | 30d | 2026-08-05 | 2026-09-03 | 3515 |  | Sector-44 Noida(2) | 9373064 |
| 3487 | 36900.37000.47300.47700.62500.98700.103900.807500 | Structural Steel | 30d | 2026-09-19 | 2026-10-18 | 3521 |  | Sector-44 Noida(2) | 9373074 |
| 3488 | 36900.37000.47300.47700.62500.98700.103900.807600 | Plaster | 30d | 2026-10-19 | 2027-01-01 | 3486, 3487 |  | Sector-44 Noida(2) | 9373084 |
| 3489 | 36900.37000.47300.47700.62500.98700.103900.807700 | White Wash | 30d | 2027-01-02 | 2027-01-31 | 3488 |  | Sector-44 Noida(2) | 9373094 |
| 3490 | 36900.37000.47300.47700.62500.98700.103900.807800 | VDF | 60d | 2026-10-04 | 2027-01-16 | 3488FS-45d |  | Sector-44 Noida(2) | 9373104 |
| 3491 | 36900.37000.47300.47700.62500.98700.103900.807900 | Drain & Sump (incl. gratings) | 60d | 2026-12-18 | 2027-02-15 | 3490FS-30d |  | Sector-44 Noida(2) | 9373114 |
| 3492 | 36900.37000.47300.47700.62500.98700.103900.808000 | Car parking marking | 30d | 2027-01-17 | 2027-02-15 | 3489FS-15d |  | Sector-44 Noida(2) | 9373124 |
| 3493 | 36900.37000.47300.47700.62500.98700.103900.808100 | Signages | 30d | 2027-01-22 | 2027-02-20 | 3486FF, 3487FF, 3488FF, 3489FS-10d, 3490FF, 3491FF, 3492FF |  | Sector-44 Noida(2) | 9373134 |

| ID | WBS | Task | Duration | Start | Finish | Predecessors | Constraint | Calendar | Unique_Task_ID |
| --- | --- | --- | --- | --- | --- | --- | --- | --- | --- |
| 3494 | 36900.37000.47300.47700.62500.98700.103800 | **Basement-1** | 110d | 2026-09-04 | 2027-02-05 |  | start no earlier than 2026-09-04 | Sector-44 Noida(2) | 9362484 |
| 3495 | 36900.37000.47300.47700.62500.98700.103800.808200 | Masonary | 30d | 2026-09-04 | 2026-10-03 | 3486 |  | Sector-44 Noida(2) | 9373144 |
| 3496 | 36900.37000.47300.47700.62500.98700.103800.808300 | Structural Steel | 30d | 2026-09-04 | 2026-10-03 | 3486 |  | Sector-44 Noida(2) | 9373154 |
| 3497 | 36900.37000.47300.47700.62500.98700.103800.808400 | Plaster | 30d | 2026-10-04 | 2026-12-17 | 3495, 3496 |  | Sector-44 Noida(2) | 9373164 |
| 3498 | 36900.37000.47300.47700.62500.98700.103800.808500 | White Wash | 30d | 2026-12-18 | 2027-01-16 | 3497 |  | Sector-44 Noida(2) | 9373174 |
| 3499 | 36900.37000.47300.47700.62500.98700.103800.808600 | VDF | 60d | 2026-09-19 | 2027-01-01 | 3497FS-45d |  | Sector-44 Noida(2) | 9373184 |
| 3500 | 36900.37000.47300.47700.62500.98700.103800.808700 | Drain & Sump (incl. gratings) | 60d | 2026-10-19 | 2027-01-31 | 3499FS-30d |  | Sector-44 Noida(2) | 9373194 |
| 3501 | 36900.37000.47300.47700.62500.98700.103800.808800 | Car parking marking | 30d | 2027-01-02 | 2027-01-31 | 3498FS-15d |  | Sector-44 Noida(2) | 9373204 |
| 3502 | 36900.37000.47300.47700.62500.98700.103800.808900 | Signages | 30d | 2027-01-07 | 2027-02-05 | 3495FF, 3496FF, 3497FF, 3498FS-10d, 3499FF, 3500FF, 3501FF |  | Sector-44 Noida(2) | 9373214 |
| 3503 | 36900.37000.47300.47700.97000 | **Super structure works** | 140d | 2026-05-22 | 2026-10-08 |  | start no earlier than 2026-05-22 | Sector-44 Noida(2) | 9362214 |
| 3504 | 36900.37000.47300.47700.97000.101300 | **RCC Works** | 120d | 2026-05-22 | 2026-09-18 |  | start no earlier than 2026-05-22 | Sector-44 Noida(2) | 9362334 |
| 3505 | 36900.37000.47300.47700.97000.101300.123700 | **GF Slab** | 45d | 2026-05-22 | 2026-07-05 |  | start no earlier than 2026-05-22 | Sector-44 Noida(2) | 9364134 |
| 3506 | 36900.37000.47300.47700.97000.101300.123700.188600 | **GF Slab** | 45d | 2026-05-22 | 2026-07-05 |  | start no earlier than 2026-05-22 | Sector-44 Noida(2) | 9365974 |
| 3507 | 36900.37000.47300.47700.97000.101300.123700.188600.1337900 | Shuttering Work | 30d | 2026-05-22 | 2026-06-20 | 3483 |  | Sector-44 Noida(2) | 9396384 |
| 3508 | 36900.37000.47300.47700.97000.101300.123700.188600.1338000 | Reinforcement Work | 19d | 2026-06-16 | 2026-07-04 | 3507FS-5d |  | Sector-44 Noida(2) | 9396394 |
| 3509 | 36900.37000.47300.47700.97000.101300.123700.188600.1338100 | Concreteing work | 1d | 2026-07-05 | 2026-07-05 | 3507FF, 3508 |  | Sector-44 Noida(2) | 9396404 |
| 3510 | 36900.37000.47300.47700.97000.101300.118300 | **1st Floor Slab** | 30d | 2026-07-06 | 2026-08-04 |  | start no earlier than 2026-07-06 | Sector-44 Noida(2) | 9363954 |
| 3511 | 36900.37000.47300.47700.97000.101300.118300.181700 | **1st Floor Slab** | 30d | 2026-07-06 | 2026-08-04 |  | start no earlier than 2026-07-06 | Sector-44 Noida(2) | 9365594 |
| 3512 | 36900.37000.47300.47700.97000.101300.118300.181700.1338200 | Shuttering Work | 20d | 2026-07-06 | 2026-07-25 | 3509 |  | Sector-44 Noida(2) | 9396414 |
| 3513 | 36900.37000.47300.47700.97000.101300.118300.181700.1338300 | Reinforcement Work | 14d | 2026-07-21 | 2026-08-03 | 3512FS-5d |  | Sector-44 Noida(2) | 9396424 |
| 3514 | 36900.37000.47300.47700.97000.101300.118300.181700.1338400 | Conduiting work | 1d | 2026-08-03 | 2026-08-03 | 3513FS-1d |  | Sector-44 Noida(2) | 9396434 |
| 3515 | 36900.37000.47300.47700.97000.101300.118300.181700.1338500 | Concreteing work | 1d | 2026-08-04 | 2026-08-04 | 3512FF, 3513FF, 3514 |  | Sector-44 Noida(2) | 9396444 |
| 3516 | 36900.37000.47300.47700.97000.101300.118400 | **Terrace** | 45d | 2026-08-05 | 2026-09-18 |  | start no earlier than 2026-08-05 | Sector-44 Noida(2) | 9363964 |
| 3517 | 36900.37000.47300.47700.97000.101300.118400.181800 | **Terrace Slab** | 45d | 2026-08-05 | 2026-09-18 |  | start no earlier than 2026-08-05 | Sector-44 Noida(2) | 9365604 |
| 3518 | 36900.37000.47300.47700.97000.101300.118400.181800.1338600 | Shuttering Work | 30d | 2026-08-05 | 2026-09-03 | 3515 |  | Sector-44 Noida(2) | 9396454 |
| 3519 | 36900.37000.47300.47700.97000.101300.118400.181800.1338700 | Reinforcement Work | 19d | 2026-08-30 | 2026-09-17 | 3518FS-5d |  | Sector-44 Noida(2) | 9396464 |
| 3520 | 36900.37000.47300.47700.97000.101300.118400.181800.1338800 | Conduiting work | 1d | 2026-09-17 | 2026-09-17 | 3519FS-1d |  | Sector-44 Noida(2) | 9396474 |
| 3521 | 36900.37000.47300.47700.97000.101300.118400.181800.1338900 | Concreteing work | 1d | 2026-09-18 | 2026-09-18 | 3518FF, 3519FF, 3520 |  | Sector-44 Noida(2) | 9396484 |

| ID | WBS | Task | Duration | Start | Finish | Predecessors | Constraint | Calendar | Unique_Task_ID |
| --- | --- | --- | --- | --- | --- | --- | --- | --- | --- |
| 3522 | 36900.37000.47300.47700.97000.191000 | **Post Pour Works** | 20d | 2026-09-19 | 2026-10-08 |  | start no earlier than 2026-09-19 | Sector-44 Noida(2) | 9366154 |
| 3523 | 36900.37000.47300.47700.97000.191000.369700 | 1st Floor | 10d | 2026-09-19 | 2026-09-28 | 3521 |  | Sector-44 Noida(2) | 9369094 |
| 3524 | 36900.37000.47300.47700.97000.191000.369800 | 2nd Floor | 10d | 2026-09-29 | 2026-10-08 | 3523 |  | Sector-44 Noida(2) | 9369104 |
| 3525 | 36900.37000.47300.47700.48100 | **Finishing works** | 629d | 2025-10-14 | 2027-10-02 |  | start no earlier than 2025-10-14 | Sector-44 Noida(2) | 9360934 |
| 3526 | 36900.37000.47300.47700.48100.48300 | **Floor finishings** | 159d | 2026-09-29 | 2027-04-20 |  | start no earlier than 2026-09-29 | Sector-44 Noida(2) | 9360954 |
| 3527 | 36900.37000.47300.47700.48100.48300.59200 | **1st Floor** | 142d | 2026-09-29 | 2027-04-03 |  | start no earlier than 2026-09-29 | Sector-44 Noida(2) | 9361024 |
| 3528 | 36900.37000.47300.47700.48100.48300.59200.809000 | Block Work | 12d | 2026-09-29 | 2026-10-10 | 3523 |  | Sector-44 Noida(2) | 9373224 |
| 3529 | 36900.37000.47300.47700.48100.48300.59200.809100 | Installation of temporary Main door | 9d | 2026-10-11 | 2026-10-19 | 3528 |  | Sector-44 Noida(2) | 9373234 |
| 3530 | 36900.37000.47300.47700.48100.48300.59200.809200 | Fire sprinkler pipe fixing | 5d | 2026-10-11 | 2026-10-15 | 3528 |  | Sector-44 Noida(2) | 9373244 |
| 3531 | 36900.37000.47300.47700.48100.48300.59200.809300 | Internal Plumbing Works | 10d | 2026-10-11 | 2026-10-20 | 3528 |  | Sector-44 Noida(2) | 9373254 |
| 3532 | 36900.37000.47300.47700.48100.48300.59200.809400 | Waterproofing | 13d | 2026-10-21 | 2026-12-17 | 3531 |  | Sector-44 Noida(2) | 9373264 |
| 3533 | 36900.37000.47300.47700.48100.48300.59200.809500 | Internal Plaster | 13d | 2026-12-18 | 2026-12-30 | 3531, 3532 |  | Sector-44 Noida(2) | 9373274 |
| 3534 | 36900.37000.47300.47700.48100.48300.59200.809600 | IPS flooring work | 13d | 2026-10-11 | 2026-10-23 | 3528 |  | Sector-44 Noida(2) | 9373284 |
| 3535 | 36900.37000.47300.47700.48100.48300.59200.809700 | Toilet dado work | 18d | 2026-12-31 | 2027-01-17 | 3531, 3532, 3533 |  | Sector-44 Noida(2) | 9373294 |
| 3536 | 36900.37000.47300.47700.48100.48300.59200.809800 | Toilet flooring work | 18d | 2027-01-18 | 2027-02-04 | 3535 |  | Sector-44 Noida(2) | 9373304 |
| 3537 | 36900.37000.47300.47700.48100.48300.59200.809900 | Living dinning flooring | 18d | 2027-02-05 | 2027-02-22 | 3534, 3536 |  | Sector-44 Noida(2) | 9373314 |
| 3538 | 36900.37000.47300.47700.48100.48300.59200.810000 | Electrical wiring work | 12d | 2027-02-13 | 2027-02-24 | 3537FS-10d |  | Sector-44 Noida(2) | 9373324 |
| 3539 | 36900.37000.47300.47700.48100.48300.59200.810100 | Aluminium door-window fixing | 19d | 2027-02-17 | 2027-03-07 | 3529, 3538FS-8d |  | Sector-44 Noida(2) | 9373334 |
| 3540 | 36900.37000.47300.47700.48100.48300.59200.810200 | Putty primer coat | 10d | 2027-02-28 | 2027-03-09 | 3539FS-8d |  | Sector-44 Noida(2) | 9373344 |
| 3541 | 36900.37000.47300.47700.48100.48300.59200.810300 | Prehung door fixing | 8d | 2027-03-05 | 2027-03-12 | 3540FS-5d |  | Sector-44 Noida(2) | 9373354 |
| 3542 | 36900.37000.47300.47700.48100.48300.59200.810400 | Painting 1st coat | 12d | 2027-03-13 | 2027-03-24 | 3541 |  | Sector-44 Noida(2) | 9373364 |
| 3543 | 36900.37000.47300.47700.48100.48300.59200.810500 | False Ceiling panel fixing | 10d | 2027-03-25 | 2027-04-03 | 3542 |  | Sector-44 Noida(2) | 9373374 |
| 3544 | 36900.37000.47300.47700.48100.48300.59300 | **2nd Floor** | 142d | 2026-10-16 | 2027-04-20 |  | start no earlier than 2026-10-16 | Sector-44 Noida(2) | 9361534 |
| 3545 | 36900.37000.47300.47700.48100.48300.59300.810600 | Block Work | 12d | 2026-10-16 | 2026-10-27 | 3530 |  | Sector-44 Noida(2) | 9373384 |
| 3546 | 36900.37000.47300.47700.48100.48300.59300.810700 | Installation of temporary Main door | 9d | 2026-10-28 | 2026-12-20 | 3545 |  | Sector-44 Noida(2) | 9373394 |
| 3547 | 36900.37000.47300.47700.48100.48300.59300.810800 | Fire sprinkler pipe fixing | 5d | 2026-10-28 | 2026-12-16 | 3530, 3545 |  | Sector-44 Noida(2) | 9373404 |
| 3548 | 36900.37000.47300.47700.48100.48300.59300.810900 | Internal Plumbing Works | 10d | 2026-10-28 | 2026-12-21 | 3545 |  | Sector-44 Noida(2) | 9373414 |
| 3549 | 36900.37000.47300.47700.48100.48300.59300.811000 | Waterproofing | 13d | 2026-12-22 | 2027-01-03 | 3548 |  | Sector-44 Noida(2) | 9373424 |
| 3550 | 36900.37000.47300.47700.48100.48300.59300.811100 | Internal Plaster | 13d | 2027-01-04 | 2027-01-16 | 3548, 3549 |  | Sector-44 Noida(2) | 9373434 |
| 3551 | 36900.37000.47300.47700.48100.48300.59300.811200 | IPS flooring work | 13d | 2026-10-28 | 2026-12-24 | 3545 |  | Sector-44 Noida(2) | 9373444 |
| 3552 | 36900.37000.47300.47700.48100.48300.59300.811300 | Toilet dado work | 18d | 2027-01-17 | 2027-02-03 | 3548, 3549, 3550 |  | Sector-44 Noida(2) | 9373454 |
| 3553 | 36900.37000.47300.47700.48100.48300.59300.811400 | Toilet flooring work | 18d | 2027-02-04 | 2027-02-21 | 3552 |  | Sector-44 Noida(2) | 9373464 |
| 3554 | 36900.37000.47300.47700.48100.48300.59300.811500 | Living dinning flooring | 18d | 2027-02-22 | 2027-03-11 | 3551, 3553 |  | Sector-44 Noida(2) | 9373474 |
| 3555 | 36900.37000.47300.47700.48100.48300.59300.811600 | Electrical wiring work | 12d | 2027-03-02 | 2027-03-13 | 3554FS-10d |  | Sector-44 Noida(2) | 9373484 |
| 3556 | 36900.37000.47300.47700.48100.48300.59300.811700 | Aluminium door-window fixing | 19d | 2027-03-06 | 2027-03-24 | 3546, 3555FS-8d |  | Sector-44 Noida(2) | 9373494 |
| 3557 | 36900.37000.47300.47700.48100.48300.59300.811800 | Putty primer coat | 10d | 2027-03-17 | 2027-03-26 | 3556FS-8d |  | Sector-44 Noida(2) | 9373504 |
| 3558 | 36900.37000.47300.47700.48100.48300.59300.811900 | Prehung door fixing | 8d | 2027-03-22 | 2027-03-29 | 3557FS-5d |  | Sector-44 Noida(2) | 9373514 |
| 3559 | 36900.37000.47300.47700.48100.48300.59300.812000 | Painting 1st coat | 12d | 2027-03-30 | 2027-04-10 | 3558 |  | Sector-44 Noida(2) | 9373524 |
| 3560 | 36900.37000.47300.47700.48100.48300.59300.812100 | False Ceiling panel fixing | 10d | 2027-04-11 | 2027-04-20 | 3543, 3559 |  | Sector-44 Noida(2) | 9373534 |

| ID | WBS | Task | Duration | Start | Finish | Predecessors | Constraint | Calendar | Unique_Task_ID |
| --- | --- | --- | --- | --- | --- | --- | --- | --- | --- |
| 3561 | 36900.37000.47300.47700.48100.190900 | **Terrace finishing** | 170d | 2027-04-16 | 2027-10-02 |  | start no earlier than 2027-04-16 | Sector-44 Noida(2) | 9366144 |
| 3562 | 36900.37000.47300.47700.48100.190900.369900 | Podium waterproofing | 80d | 2027-04-16 | 2027-07-04 | 3609FS+24d |  | Sector-44 Noida(2) | 9369114 |
| 3563 | 36900.37000.47300.47700.48100.190900.370000 | Podium finishing (only top screed) | 90d | 2027-07-05 | 2027-10-02 | 3562 |  | Sector-44 Noida(2) | 9369124 |
| 3564 | 36900.37000.47300.47700.48100.98200 | **Common area finishing** | 335d | 2025-10-14 | 2026-10-28 |  | start no earlier than 2025-10-14 | Sector-44 Noida(2) | 9362194 |
| 3565 | 36900.37000.47300.47700.48100.98200.370100 | Masonary Work | 20d | 2026-10-09 | 2026-10-28 | 3524 |  | Sector-44 Noida(2) | 9369134 |
| 3566 | 36900.37000.47300.47700.48100.98200.370200 | Fire sprinkler pipe fixing | 10d | 2026-10-14 | 2026-10-23 | 3524FS+5d |  | Sector-44 Noida(2) | 9369144 |
| 3567 | 36900.37000.47300.47700.48100.98200.370300 | Corridoor, staircase, shaft Plaster & whitewash | 20d | 2026-09-29 | 2026-10-18 | 3565FS-30d |  | Sector-44 Noida(2) | 9369154 |
| 3568 | 36900.37000.47300.47700.48100.98200.370400 | Staircase railing fixing | 20d | 2026-10-09 | 2026-10-28 | 3565FS-20d |  | Sector-44 Noida(2) | 9369164 |
| 3569 | 36900.37000.47300.47700.48100.98200.370500 | Fire staircase flooring | 20d | 2026-07-31 | 2026-08-19 | 3568FS-90d |  | Sector-44 Noida(2) | 9369174 |
| 3570 | 36900.37000.47300.47700.48100.98200.370600 | Main staircase flooring | 20d | 2026-07-31 | 2026-08-19 | 3568FS-90d |  | Sector-44 Noida(2) | 9369184 |
| 3571 | 36900.37000.47300.47700.48100.98200.370700 | Fire door work | 30d | 2026-06-21 | 2026-07-20 | 3569FS-60d |  | Sector-44 Noida(2) | 9369194 |
| 3572 | 36900.37000.47300.47700.48100.98200.370800 | Lobby flooring & Corridor | 40d | 2026-05-22 | 2026-06-30 | 3570FS-90d |  | Sector-44 Noida(2) | 9369204 |
| 3573 | 36900.37000.47300.47700.48100.98200.370900 | Ceiling & wall putty-primer | 40d | 2026-04-02 | 2026-05-11 | 3572FS-90d |  | Sector-44 Noida(2) | 9369214 |
| 3574 | 36900.37000.47300.47700.48100.98200.371000 | Ceiling & wall painting | 40d | 2026-02-01 | 2026-03-12 | 3573FS-100d |  | Sector-44 Noida(2) | 9369224 |
| 3575 | 36900.37000.47300.47700.48100.98200.371100 | Electrical wiring work | 40d | 2025-10-19 | 2026-01-11 | 3574FS-100d |  | Sector-44 Noida(2) | 9369234 |
| 3576 | 36900.37000.47300.47700.48100.98200.371200 | Light fixture supply & installation | 30d | 2025-10-14 | 2025-12-27 | 3575FS-45d |  | Sector-44 Noida(2) | 9369244 |
| 3577 | 36900.37000.47300.47700.97100 | **MEP Work** | 390d | 2026-08-25 | 2027-12-17 |  | start no earlier than 2026-08-25 | Sector-44 Noida(2) | 9362204 |
| 3578 | 36900.37000.47300.47700.97100.101400 | **Electrical Work** | 180d | 2026-08-25 | 2027-04-06 |  | start no earlier than 2026-08-25 | Sector-44 Noida(2) | 9362354 |
| 3579 | 36900.37000.47300.47700.97100.101400.371300 | Cable Tray | 45d | 2026-10-09 | 2027-01-06 | 3524 |  | Sector-44 Noida(2) | 9369254 |
| 3580 | 36900.37000.47300.47700.97100.101400.371400 | Cable, main & sub main | 45d | 2026-08-25 | 2026-10-08 | 3579FS-90d |  | Sector-44 Noida(2) | 9369264 |
| 3581 | 36900.37000.47300.47700.97100.101400.371500 | LT panel & DB | 45d | 2026-09-24 | 2026-12-22 | 3579FS-60d |  | Sector-44 Noida(2) | 9369274 |
| 3582 | 36900.37000.47300.47700.97100.101400.371600 | Earthing Works | 30d | 2027-01-07 | 2027-02-05 | 3579 |  | Sector-44 Noida(2) | 9369284 |
| 3583 | 36900.37000.47300.47700.97100.101400.371700 | Energy meter | 30d | 2026-10-09 | 2026-12-22 | 3580 |  | Sector-44 Noida(2) | 9369294 |
| 3584 | 36900.37000.47300.47700.97100.101400.371800 | Inverter / UPS | 30d | 2026-12-23 | 2027-01-21 | 3580, 3581, 3583FS-5d |  | Sector-44 Noida(2) | 9369304 |
| 3585 | 36900.37000.47300.47700.97100.101400.371900 | HVAC & Exhaust fan | 45d | 2026-10-24 | 2027-01-21 | 3579FS-30d |  | Sector-44 Noida(2) | 9369314 |
| 3586 | 36900.37000.47300.47700.97100.101400.372000 | FTTH | 35d | 2026-10-14 | 2027-01-01 | 3581FS-25d |  | Sector-44 Noida(2) | 9369324 |
| 3587 | 36900.37000.47300.47700.97100.101400.372100 | Security System - FA & PA | 35d | 2026-10-14 | 2027-01-01 | 3571, 3581FS-25d |  | Sector-44 Noida(2) | 9369334 |
| 3588 | 36900.37000.47300.47700.97100.101400.372200 | T&C of complete system | 60d | 2027-02-06 | 2027-04-06 | 3576, 3581, 3582, 3583, 3584, 3585, 3586, 3587 |  | Sector-44 Noida(2) | 9369344 |

| ID | WBS | Task | Duration | Start | Finish | Predecessors | Constraint | Calendar | Unique_Task_ID |
| --- | --- | --- | --- | --- | --- | --- | --- | --- | --- |
| 3589 | 36900.37000.47300.47700.97100.124100 | **Plumbing work** | 210d | 2026-09-19 | 2027-05-31 |  | start no earlier than 2026-09-19 | Sector-44 Noida(2) | 9364104 |
| 3590 | 36900.37000.47300.47700.97100.124100.372300 | Shaft Plumbing | 90d | 2026-09-19 | 2027-01-31 | 3567FS-30d |  | Sector-44 Noida(2) | 9369354 |
| 3591 | 36900.37000.47300.47700.97100.124100.372400 | CP sanitary fixture supply | 45d | 2027-02-01 | 2027-03-17 | 3590 |  | Sector-44 Noida(2) | 9369364 |
| 3592 | 36900.37000.47300.47700.97100.124100.372500 | Cold & flushing water supply | 45d | 2027-02-01 | 2027-03-17 | 3590 |  | Sector-44 Noida(2) | 9369374 |
| 3593 | 36900.37000.47300.47700.97100.124100.372600 | Misc work | 30d | 2027-03-03 | 2027-04-01 | 3592FS-15d |  | Sector-44 Noida(2) | 9369384 |
| 3594 | 36900.37000.47300.47700.97100.124100.372700 | T&C of complete system | 60d | 2027-04-02 | 2027-05-31 | 3590, 3592, 3593 |  | Sector-44 Noida(2) | 9369394 |
| 3595 | 36900.37000.47300.47700.97100.107700 | **Fire fighting work** | 150d | 2026-09-19 | 2027-04-01 |  | start no earlier than 2026-09-19 | Sector-44 Noida(2) | 9362674 |
| 3596 | 36900.37000.47300.47700.97100.107700.372800 | Fire hydrant work | 30d | 2026-09-19 | 2026-10-18 | 3567FS-30d |  | Sector-44 Noida(2) | 9369404 |
| 3597 | 36900.37000.47300.47700.97100.107700.372900 | Pipe connection & sprinkler installation | 45d | 2026-12-17 | 2027-01-30 | 3596, 3547 |  | Sector-44 Noida(2) | 9369414 |
| 3598 | 36900.37000.47300.47700.97100.107700.373000 | Shaft Downtake works | 30d | 2026-09-19 | 2026-10-18 | 3567FS-30d |  | Sector-44 Noida(2) | 9369424 |
| 3599 | 36900.37000.47300.47700.97100.107700.373100 | Connection to pump room | 30d | 2026-10-19 | 2027-01-01 | 3598 |  | Sector-44 Noida(2) | 9369434 |
| 3600 | 36900.37000.47300.47700.97100.107700.373200 | Installation of FF pumps | 60d | 2026-10-19 | 2027-01-31 | 3596, 3598 |  | Sector-44 Noida(2) | 9369444 |
| 3601 | 36900.37000.47300.47700.97100.107700.373300 | T&C of complete system | 60d | 2027-02-01 | 2027-04-01 | 3596, 3597, 3599, 3600 |  | Sector-44 Noida(2) | 9369454 |
| 3602 | 36900.37000.47300.47700.97100.181900 | **Lift work** | 60d | 2026-10-09 | 2027-01-21 |  | start no earlier than 2026-10-09 | Sector-44 Noida(2) | 9365924 |
| 3603 | 36900.37000.47300.47700.97100.181900.373400 | Lift Shaft/Pit Handover | 10d | 2026-10-09 | 2026-10-18 | 3524 |  | Sector-44 Noida(2) | 9369464 |
| 3604 | 36900.37000.47300.47700.97100.181900.373500 | Lift installation work | 40d | 2026-10-19 | 2027-01-11 | 3603 |  | Sector-44 Noida(2) | 9369474 |
| 3605 | 36900.37000.47300.47700.97100.181900.373600 | Lift testing and commissioning | 10d | 2027-01-12 | 2027-01-21 | 3604 |  | Sector-44 Noida(2) | 9369484 |
| 3606 | 36900.37000.47300.47700.97100.130600 | **External Paint Works** | 120d | 2026-10-09 | 2027-03-22 |  | start no earlier than 2026-10-09 | Sector-44 Noida(2) | 9364344 |
| 3607 | 36900.37000.47300.47700.97100.130600.373700 | Surface prepration | 50d | 2026-10-09 | 2027-01-11 | 3524 |  | Sector-44 Noida(2) | 9369494 |
| 3608 | 36900.37000.47300.47700.97100.130600.373800 | External Painting (Primer, texture & first coat) | 70d | 2027-01-12 | 2027-03-22 | 3607 |  | Sector-44 Noida(2) | 9369504 |
| 3609 | 36900.37000.47300.47700.97100.130600.373900 | Final coat of painting | 60d | 2027-01-22 | 2027-03-22 | 3608FS-60d |  | Sector-44 Noida(2) | 9369514 |
| 3610 | 36900.37000.47300.47700.97100.130600.374000 | Misc. work | 30d | 2027-01-12 | 2027-02-10 | 3607 |  | Sector-44 Noida(2) | 9369524 |
| 3611 | 36900.37000.47300.47700.97100.261200 | OC Application/Readiness | 1d | 2027-10-03 | 2027-10-03 | 3588, 3594, 3601, 3605, 3563, 3560, 3569, 3570, 3566 |  | Sector-44 Noida(2) | 9366444 |
| 3612 | 36900.37000.47300.47700.97100.261300 | OC Receipt | 30d | 2027-10-04 | 2027-12-17 | 3611, 3493, 3502 |  | Sector-44 Noida(2) | 9366454 |

| ID | WBS | Task | Duration | Start | Finish | Predecessors | Constraint | Calendar | Unique_Task_ID |
| --- | --- | --- | --- | --- | --- | --- | --- | --- | --- |
| 3613 | 36900.37000.47300.47700.125400 | **Post OC Activities** | 105d | 2027-10-04 | 2028-03-01 |  | start no earlier than 2027-10-04 | Sector-44 Noida(2) | 9364054 |
| 3614 | 36900.37000.47300.47700.125400.261400 | CP & Sanitaryware installation | 60d | 2027-10-04 | 2028-01-16 | 3612FS-30d, 3591 |  | Sector-44 Noida(2) | 9366464 |
| 3615 | 36900.37000.47300.47700.125400.261500 | Electrical Fixtures And Fittings installations | 60d | 2027-10-04 | 2028-01-16 | 3612FS-30d |  | Sector-44 Noida(2) | 9366474 |
| 3616 | 36900.37000.47300.47700.125400.261600 | Final Coat Paint Internal | 40d | 2027-10-04 | 2027-12-27 | 3612FS-30d |  | Sector-44 Noida(2) | 9366484 |
| 3617 | 36900.37000.47300.47700.125400.261700 | Split AC Units installation | 50d | 2028-01-12 | 2028-03-01 | 3616FS+15d |  | Sector-44 Noida(2) | 9366494 |
| 3618 | 36900.37000.47300.47700.125400.261800 | Wooden Flooring | 90d | 2027-10-04 | 2028-02-15 | 3612FS-30d |  | Sector-44 Noida(2) | 9366504 |
| 3619 | 36900.37000.47300.47700.222600 | Offer to possession | 150d | 2028-03-02 | 2028-07-29 | 3614, 3615, 3617, 3618, 3610 |  | Sector-44 Noida(2) | 9366184 |
| 3620 | 36900.37000.214700 | Budget Esclation for Raft | 67.5d | 2026-04-01 | 2026-05-30 |  | start no earlier than 2026-04-01 | GC1 | 9637726 |
| 3621 | 36900.37000.214800 | MOSA Area Hampered solider piling cost | 50.62d | 2025-10-01 | 2025-12-29 |  | start no earlier than 2025-10-01 | GC1 | 9637716 |
