Schedule from MS Project XML, 2023-09-29 to 2028-08-07.

## Calendars

- Standard: Mon-Fri 08:00-12:00, 13:00-17:00; Sat-Sun off. Exceptions (off unless hours are given): 2023-12-25 to 2024-01-07, 2024-03-29 to 2024-04-01, 2024-05-06, 2024-05-27, 2024-08-26, 2024-12-23 to 2025-01-05, 2025-04-18 to 2025-04-21, 2025-05-05, 2025-05-26, 2025-08-25, 2025-12-22 to 2026-01-04, 2026-03-27 to 2026-03-30, 2026-05-04, 2026-05-23 to 2026-05-25, 2026-08-29 to 2026-08-31, 2026-12-21 to 2027-01-03, 2027-04-16 to 2027-04-19, 2027-05-01 to 2027-05-03, 2027-05-29 to 2027-05-31, 2027-08-30, 2027-12-25 to 2028-01-09, 2028-03-31 to 2028-04-03, 2028-04-29 to 2028-05-01, 2028-05-27 to 2028-05-29.
- Indian Calendar: Mon-Sat 08:00-12:00, 13:00-17:00; Sun off. Exceptions (off unless hours are given): 2023-11-15 to 2023-12-15, 2024-07-01 to 2024-07-06 08:00-10:00, 14:00-17:00, 2024-07-07, 2024-07-08 to 2024-07-13 08:00-10:00, 14:00-17:00, 2024-07-14, 2024-07-15 to 2024-07-20 08:00-10:00, 14:00-17:00, 2024-07-21, 2024-07-22 to 2024-07-27 08:00-10:00, 14:00-17:00, 2024-07-28, 2024-07-29 to 2024-07-31 08:00-10:00, 14:00-17:00, 2024-08-01 to 2024-08-03 08:00-10:00, 11:00-12:00, 13:00-17:00, 2024-08-04, 2024-08-05 to 2024-08-10 08:00-10:00, 11:00-12:00, 13:00-17:00, 2024-08-11, 2024-08-12 to 2024-08-17 08:00-10:00, 11:00-12:00, 13:00-17:00, 2024-08-18, 2024-08-19 to 2024-08-24 08:00-10:00, 11:00-12:00, 13:00-17:00, 2024-08-25, 2024-08-26 to 2024-08-31 08:00-10:00, 11:00-12:00, 13:00-17:00, 2024-09-01, 2024-09-02 to 2024-09-07 08:00-10:00, 11:00-12:00, 13:00-17:00, 2024-09-08, 2024-09-09 to 2024-09-14 08:00-10:00, 11:00-12:00, 13:00-17:00, 2024-09-15, 2024-09-16 to 2024-09-21 08:00-10:00, 11:00-12:00, 13:00-17:00, 2024-09-22, 2024-09-23 to 2024-09-28 08:00-10:00, 11:00-12:00, 13:00-17:00, 2024-09-29, 2024-09-30 08:00-10:00, 11:00-12:00, 13:00-17:00.
- 7 day week With NGT Ban: Mon-Sun 08:00-12:00, 13:00-17:00. Exceptions (off unless hours are given): 2023-11-01 to 2023-12-15, 2024-11-01 to 2024-12-04, 2024-12-05 to 2024-12-08 10:00-18:00, 2024-12-09 00:00-00:00, 2024-12-10 to 2024-12-15 08:00-18:00, 2025-11-01 to 2025-12-15, 2026-11-01 to 2026-12-15.
- Yashwantpur Finshing: Mon-Fri 08:00-12:00, 13:00-17:00; Sat-Sun off.

## Resources

| Resource |
| --- |
| GPL cost & revenue |
| Riverine |
| GPL Revenue |
| GPL Costs & Revenue |

## Schedule

| ID | WBS | Task | Duration | Start | Finish | Predecessors | Complete | Constraint | Calendar | Unique_Task_ID |
| --- | --- | --- | --- | --- | --- | --- | --- | --- | --- | --- |
| 1 | 37200 | **Tropical Isle 146** | 1773.65ed | 2023-09-29 | 2028-08-07 |  | 6% | start no earlier than 2023-09-29 |  | 7567453 |
| 2 | 37200.37300 | **Tropical Isle 146** | 1607.56d | 2023-09-29 | 2028-08-07 |  | 6% | start no earlier than 2023-09-29 | 7 day week With NGT Ban | 7567463 |
| 3 | 37200.37300.37500 | **Phase-1** | 1485.31d | 2023-09-29 | 2028-04-06 |  | 6% | start no earlier than 2023-09-29 | 7 day week With NGT Ban | 7567473 |
| 4 | 37200.37300.37500.37900 | **Tower 5** | 1410.69d | 2023-09-29 | 2028-01-23 |  | 3% | start no earlier than 2023-09-29 | 7 day week With NGT Ban | 7567483 |
| 5 | 37200.37300.37500.37900.99900 | **Substructure** | 678.69d | 2023-09-29 | 2025-10-23 |  | 57% | start no earlier than 2023-09-29 | 7 day week With NGT Ban | 7569263 |
| 6 | 37200.37300.37500.37900.99900.108500 | **Soil Bed Preparation** | 533.44d | 2023-09-29 | 2025-05-30 |  | 78% | start no earlier than 2023-09-29 | 7 day week With NGT Ban | 7569393 |
| 7 | 37200.37300.37500.37900.99900.108500.201800 | Test Piling | 24.94d | 2023-09-29 | 2023-10-24 |  | 100% | start no earlier than 2023-09-29 | 7 day week With NGT Ban | 7571913 |
| 8 | 37200.37300.37500.37900.99900.108500.201700 | Excavation | 29.94d | 2024-01-10 | 2024-02-08 | 7SS+15.74d | 100% | start no earlier than 2024-01-10 | 7 day week With NGT Ban | 7571923 |
| 9 | 37200.37300.37500.37900.99900.108500.201600 | Main Piling Work | 169.94d | 2024-04-12 | 2025-01-13 | 7FS-12.45d | 100% | start no earlier than 2024-04-12 | 7 day week With NGT Ban | 7571933 |
| 10 | 37200.37300.37500.37900.99900.108500.261900 | Anti-termite | 4.94d | 2025-04-01 | 2025-04-05 | 9FF+1.88d |  |  | 7 day week With NGT Ban | 7571943 |
| 11 | 37200.37300.37500.37900.99900.108500.201500 | PCC | 13.86d | 2024-10-15 | 2024-10-28 | 8FS-14.7d, 10SS+10.93d | 100% | start no earlier than 2024-10-15 | 7 day week With NGT Ban | 7571953 |
| 12 | 37200.37300.37500.37900.99900.108500.262000 | Backfilling | 59.94d | 2025-04-01 | 2025-05-30 | 26FS-4.38d, 17FS-1d, 21FS-2d |  |  | 7 day week With NGT Ban | 7571963 |
| 13 | 37200.37300.37500.37900.99900.103100 | **RCC Structure** | 111d | 2024-12-17 | 2025-04-06 |  | 97% | start no earlier than 2024-12-17 | 7 day week With NGT Ban | 7569283 |
| 14 | 37200.37300.37500.37900.99900.103100.130700 | **Raft Foundation** | 31d | 2024-12-17 | 2025-01-16 |  | 100% | start no earlier than 2024-12-17 | 7 day week With NGT Ban | 7571143 |
| 15 | 37200.37300.37500.37900.99900.103100.130700.200100 | Reinforcement | 26d | 2024-12-17 | 2025-01-11 | 11FS-7.91d | 100% | must finish on 2025-01-13 | 7 day week With NGT Ban | 7574743 |
| 16 | 37200.37300.37500.37900.99900.103100.130700.200200 | Formwork | 14d | 2024-12-31 | 2025-01-13 | 15FF-2d | 100% | start no earlier than 2024-12-31 | 7 day week With NGT Ban | 7574753 |
| 17 | 37200.37300.37500.37900.99900.103100.130700.200300 | Concreting | 4d | 2025-01-13 | 2025-01-16 | 16FS-1d | 100% | start no earlier than 2025-01-13 | 7 day week With NGT Ban | 7574763 |
| 18 | 37200.37300.37500.37900.99900.103100.130800 | **Basement 1 Slab** | 27d | 2025-01-16 | 2025-02-11 |  | 100% | start no earlier than 2025-01-16 | 7 day week With NGT Ban | 7571153 |
| 19 | 37200.37300.37500.37900.99900.103100.130800.200400 | Reinforcement | 22d | 2025-01-16 | 2025-02-06 | 17FS-1d | 100% | start no earlier than 2025-01-16 | 7 day week With NGT Ban | 7574773 |
| 20 | 37200.37300.37500.37900.99900.103100.130800.200500 | Formwork | 22d | 2025-01-19 | 2025-02-09 | 19SS+3d | 100% | start no earlier than 2025-01-19 | 7 day week With NGT Ban | 7574783 |
| 21 | 37200.37300.37500.37900.99900.103100.130800.200600 | Concreting | 2d | 2025-02-09 | 2025-02-11 | 20FS-1d | 100% | start no earlier than 2025-02-09 | 7 day week With NGT Ban | 7574793 |
| 22 | 37200.37300.37500.37900.99900.103100.130900 | **Basement 2 Slab/GF** | 24.38d | 2025-02-10 | 2025-03-06 |  | 100% | start no earlier than 2025-02-10 | 7 day week With NGT Ban | 7571163 |
| 23 | 37200.37300.37500.37900.99900.103100.130900.200700 | Reinforcement | 18d | 2025-02-10 | 2025-03-01 | 21FS-2d | 100% | start no earlier than 2025-02-10 | 7 day week With NGT Ban | 7574803 |
| 24 | 37200.37300.37500.37900.99900.103100.130900.200800 | Formwork | 13d | 2025-02-13 | 2025-03-01 | 23SS+3d | 100% | start no earlier than 2025-02-13 | 7 day week With NGT Ban | 7574813 |
| 25 | 37200.37300.37500.37900.99900.103100.130900.200900 | Concreting | 3.5d | 2025-02-25 | 2025-03-05 | 24 | 100% | start no earlier than 2025-02-25 | 7 day week With NGT Ban | 7574823 |
| 26 | 37200.37300.37500.37900.99900.103100.130900.201000 | Concreting | 3.5d | 2025-02-27 | 2025-03-06 | 25 | 100% |  | 7 day week With NGT Ban | 8074624 |

| ID | WBS | Task | Duration | Start | Finish | Predecessors | Complete | Constraint | Calendar | Unique_Task_ID |
| --- | --- | --- | --- | --- | --- | --- | --- | --- | --- | --- |
| 27 | 37200.37300.37500.37900.99900.103100.187200 | **Podium /Ground Floor Slab** | 28d | 2025-03-10 | 2025-04-06 |  | 90% | start no earlier than 2025-03-10 | 7 day week With NGT Ban | 7571173 |
| 28 | 37200.37300.37500.37900.99900.103100.187200.201100 | Reinforcement | 20d | 2025-03-10 | 2025-04-05 | 26FS+2.38d | 85% | start no earlier than 2025-03-10 | 7 day week With NGT Ban | 7574833 |
| 29 | 37200.37300.37500.37900.99900.103100.187200.201200 | Formwork | 22d | 2025-03-10 | 2025-04-06 | 28FF | 100% | start no earlier than 2025-03-10 | 7 day week With NGT Ban | 7574843 |
| 30 | 37200.37300.37500.37900.99900.103100.187200.374100 | Concreting | 1d | 2025-04-03 | 2025-04-04 | 29FF+3.62d |  |  | 7 day week With NGT Ban | 7574853 |
| 31 | 37200.37300.37500.37900.99900.128200 | **Substructure Finishing** | 174.81d | 2025-05-01 | 2025-10-23 |  |  | start no earlier than 2025-05-01 | 7 day week With NGT Ban | 7569483 |
| 32 | 37200.37300.37500.37900.99900.128200.262100 | Masonary work | 89.94d | 2025-05-01 | 2025-07-30 | 30FS+26.75d |  |  | 7 day week With NGT Ban | 7571973 |
| 33 | 37200.37300.37500.37900.99900.128200.262200 | Plaster | 39.94d | 2025-07-30 | 2025-09-08 | 32 |  |  | 7 day week With NGT Ban | 7571983 |
| 34 | 37200.37300.37500.37900.99900.128200.262300 | Structural steel | 59.94d | 2025-05-28 | 2025-07-26 | 30FS+53.38d |  |  | 7 day week With NGT Ban | 7571993 |
| 35 | 37200.37300.37500.37900.99900.128200.262400 | White Wash | 44.94d | 2025-09-08 | 2025-10-23 | 33 |  |  | 7 day week With NGT Ban | 7572003 |
| 36 | 37200.37300.37500.37900.39000 | **Superstructure** | 739.12d | 2025-04-06 | 2027-07-14 |  |  | start no earlier than 2025-04-06 | 7 day week With NGT Ban | 7567523 |
| 37 | 37200.37300.37500.37900.39000.43300 | **RCC structure** | 447.56d | 2025-04-06 | 2026-08-12 |  |  | start no earlier than 2025-04-06 | 7 day week With NGT Ban | 7567643 |
| 38 | 37200.37300.37500.37900.39000.43300.131000 | **1st floor slab** | 24d | 2025-04-06 | 2025-04-30 |  |  | start no earlier than 2025-04-06 | 7 day week With NGT Ban | 7569563 |
| 39 | 37200.37300.37500.37900.39000.43300.131000.374200 | Reinforcement | 20d | 2025-04-06 | 2025-04-26 | 30FS+1.88d |  |  | 7 day week With NGT Ban | 7574863 |
| 40 | 37200.37300.37500.37900.39000.43300.131000.374300 | Wall conduiting | 4d | 2025-04-09 | 2025-04-13 | 39SS+2.75d |  |  | 7 day week With NGT Ban | 7574873 |
| 41 | 37200.37300.37500.37900.39000.43300.131000.374400 | Formwork | 20d | 2025-04-09 | 2025-04-29 | 39SS+3d |  |  | 7 day week With NGT Ban | 7574883 |
| 42 | 37200.37300.37500.37900.39000.43300.131000.374500 | Concreting | 1d | 2025-04-29 | 2025-04-30 | 41 |  |  | 7 day week With NGT Ban | 7574893 |
| 43 | 37200.37300.37500.37900.39000.43300.131100 | **2nd floor slab** | 21d | 2025-05-01 | 2025-05-22 |  |  | start no earlier than 2025-05-01 | 7 day week With NGT Ban | 7569573 |
| 44 | 37200.37300.37500.37900.39000.43300.131100.374600 | Reinforcement | 18d | 2025-05-01 | 2025-05-19 | 42FS+1d |  |  | 7 day week With NGT Ban | 7574903 |
| 45 | 37200.37300.37500.37900.39000.43300.131100.374700 | Wall conduiting | 4d | 2025-05-04 | 2025-05-08 | 40, 44SS+2.75d |  |  | 7 day week With NGT Ban | 7574913 |
| 46 | 37200.37300.37500.37900.39000.43300.131100.374800 | Formwork | 17d | 2025-05-04 | 2025-05-21 | 44SS+3d |  |  | 7 day week With NGT Ban | 7574923 |
| 47 | 37200.37300.37500.37900.39000.43300.131100.374900 | Concreting | 1d | 2025-05-21 | 2025-05-22 | 46 |  |  | 7 day week With NGT Ban | 7574933 |
| 48 | 37200.37300.37500.37900.39000.43300.131200 | **3rd floor slab** | 15d | 2025-05-23 | 2025-06-07 |  |  | start no earlier than 2025-05-23 | 7 day week With NGT Ban | 7569583 |
| 49 | 37200.37300.37500.37900.39000.43300.131200.375000 | Reinforcement | 11d | 2025-05-23 | 2025-06-03 | 47FS+1d |  |  | 7 day week With NGT Ban | 7574943 |
| 50 | 37200.37300.37500.37900.39000.43300.131200.375100 | Wall conduiting | 3d | 2025-05-26 | 2025-05-29 | 45, 49SS+2.75d |  |  | 7 day week With NGT Ban | 7574953 |
| 51 | 37200.37300.37500.37900.39000.43300.131200.375200 | Formwork | 11d | 2025-05-26 | 2025-06-06 | 49SS+3d |  |  | 7 day week With NGT Ban | 7574963 |
| 52 | 37200.37300.37500.37900.39000.43300.131200.375300 | Concreting | 1d | 2025-06-06 | 2025-06-07 | 51 |  |  | 7 day week With NGT Ban | 7574973 |

| ID | WBS | Task | Duration | Start | Finish | Predecessors | Constraint | Calendar | Unique_Task_ID |
| --- | --- | --- | --- | --- | --- | --- | --- | --- | --- |
| 53 | 37200.37300.37500.37900.39000.43300.131300 | **4th floor slab** | 9d | 2025-06-08 | 2025-06-17 |  | start no earlier than 2025-06-08 | 7 day week With NGT Ban | 7569593 |
| 54 | 37200.37300.37500.37900.39000.43300.131300.375400 | Reinforcement | 8d | 2025-06-08 | 2025-06-16 | 52FS+1d |  | 7 day week With NGT Ban | 7574983 |
| 55 | 37200.37300.37500.37900.39000.43300.131300.375500 | Wall conduiting | 3d | 2025-06-09 | 2025-06-12 | 50, 54SS+1d |  | 7 day week With NGT Ban | 7574993 |
| 56 | 37200.37300.37500.37900.39000.43300.131300.375600 | Formwork | 7d | 2025-06-09 | 2025-06-16 | 54SS+1d |  | 7 day week With NGT Ban | 7575003 |
| 57 | 37200.37300.37500.37900.39000.43300.131300.375700 | Concreting | 1d | 2025-06-16 | 2025-06-17 | 56 |  | 7 day week With NGT Ban | 7575013 |
| 58 | 37200.37300.37500.37900.39000.43300.131400 | **5th floor slab** | 9d | 2025-06-18 | 2025-06-27 |  | start no earlier than 2025-06-18 | 7 day week With NGT Ban | 7569603 |
| 59 | 37200.37300.37500.37900.39000.43300.131400.375800 | Reinforcement | 8d | 2025-06-18 | 2025-06-26 | 57FS+1d |  | 7 day week With NGT Ban | 7575023 |
| 60 | 37200.37300.37500.37900.39000.43300.131400.375900 | Wall conduiting | 3d | 2025-06-19 | 2025-06-22 | 55, 59SS+1d |  | 7 day week With NGT Ban | 7575033 |
| 61 | 37200.37300.37500.37900.39000.43300.131400.376000 | Formwork | 7d | 2025-06-19 | 2025-06-26 | 59SS+1d |  | 7 day week With NGT Ban | 7575043 |
| 62 | 37200.37300.37500.37900.39000.43300.131400.376100 | Concreting | 1d | 2025-06-26 | 2025-06-27 | 61 |  | 7 day week With NGT Ban | 7575053 |
| 63 | 37200.37300.37500.37900.39000.43300.131500 | **6th floor slab** | 9d | 2025-06-28 | 2025-07-07 |  | start no earlier than 2025-06-28 | 7 day week With NGT Ban | 7569613 |
| 64 | 37200.37300.37500.37900.39000.43300.131500.376200 | Reinforcement | 8d | 2025-06-28 | 2025-07-06 | 62FS+1d |  | 7 day week With NGT Ban | 7575063 |
| 65 | 37200.37300.37500.37900.39000.43300.131500.376300 | Wall conduiting | 3d | 2025-06-29 | 2025-07-02 | 60, 64SS+1d |  | 7 day week With NGT Ban | 7575073 |
| 66 | 37200.37300.37500.37900.39000.43300.131500.376400 | Formwork | 7d | 2025-06-29 | 2025-07-06 | 64SS+1d |  | 7 day week With NGT Ban | 7575083 |
| 67 | 37200.37300.37500.37900.39000.43300.131500.376500 | Concreting | 1d | 2025-07-06 | 2025-07-07 | 66 |  | 7 day week With NGT Ban | 7575093 |
| 68 | 37200.37300.37500.37900.39000.43300.131600 | **7th floor slab** | 9d | 2025-07-08 | 2025-07-17 |  | start no earlier than 2025-07-08 | 7 day week With NGT Ban | 7569623 |
| 69 | 37200.37300.37500.37900.39000.43300.131600.376600 | Reinforcement | 8d | 2025-07-08 | 2025-07-16 | 67FS+1d |  | 7 day week With NGT Ban | 7575103 |
| 70 | 37200.37300.37500.37900.39000.43300.131600.376700 | Wall conduiting | 3d | 2025-07-09 | 2025-07-12 | 65, 69SS+1d |  | 7 day week With NGT Ban | 7575113 |
| 71 | 37200.37300.37500.37900.39000.43300.131600.376800 | Formwork | 7d | 2025-07-09 | 2025-07-16 | 69SS+1d |  | 7 day week With NGT Ban | 7575123 |
| 72 | 37200.37300.37500.37900.39000.43300.131600.376900 | Concreting | 1d | 2025-07-16 | 2025-07-17 | 71 |  | 7 day week With NGT Ban | 7575133 |
| 73 | 37200.37300.37500.37900.39000.43300.131700 | **8th floor slab** | 12d | 2025-07-18 | 2025-07-30 |  | start no earlier than 2025-07-18 | 7 day week With NGT Ban | 7569633 |
| 74 | 37200.37300.37500.37900.39000.43300.131700.377000 | Reinforcement | 10d | 2025-07-18 | 2025-07-28 | 72FS+1d |  | 7 day week With NGT Ban | 7575143 |
| 75 | 37200.37300.37500.37900.39000.43300.131700.377100 | Wall conduiting | 3d | 2025-07-19 | 2025-07-22 | 70, 74SS+1d |  | 7 day week With NGT Ban | 7575153 |
| 76 | 37200.37300.37500.37900.39000.43300.131700.377200 | Formwork | 10d | 2025-07-19 | 2025-07-29 | 74SS+1d |  | 7 day week With NGT Ban | 7575163 |
| 77 | 37200.37300.37500.37900.39000.43300.131700.377300 | Concreting | 1d | 2025-07-29 | 2025-07-30 | 76 |  | 7 day week With NGT Ban | 7575173 |

| ID | WBS | Task | Duration | Start | Finish | Predecessors | Constraint | Calendar | Unique_Task_ID |
| --- | --- | --- | --- | --- | --- | --- | --- | --- | --- |
| 78 | 37200.37300.37500.37900.39000.43300.131800 | **9th floor slab** | 9d | 2025-07-31 | 2025-08-09 |  | start no earlier than 2025-07-31 | 7 day week With NGT Ban | 7569643 |
| 79 | 37200.37300.37500.37900.39000.43300.131800.377400 | Reinforcement | 8d | 2025-07-31 | 2025-08-08 | 77FS+1d |  | 7 day week With NGT Ban | 7575183 |
| 80 | 37200.37300.37500.37900.39000.43300.131800.377500 | Wall conduiting | 3d | 2025-08-01 | 2025-08-04 | 75, 79SS+1d |  | 7 day week With NGT Ban | 7575193 |
| 81 | 37200.37300.37500.37900.39000.43300.131800.377600 | Formwork | 7d | 2025-08-01 | 2025-08-08 | 79SS+1d |  | 7 day week With NGT Ban | 7575203 |
| 82 | 37200.37300.37500.37900.39000.43300.131800.377700 | Concreting | 1d | 2025-08-08 | 2025-08-09 | 81 |  | 7 day week With NGT Ban | 7575213 |
| 83 | 37200.37300.37500.37900.39000.43300.131900 | **10th floor slab** | 9d | 2025-08-10 | 2025-08-19 |  | start no earlier than 2025-08-10 | 7 day week With NGT Ban | 7569653 |
| 84 | 37200.37300.37500.37900.39000.43300.131900.377800 | Reinforcement | 8d | 2025-08-10 | 2025-08-18 | 82FS+1d |  | 7 day week With NGT Ban | 7575223 |
| 85 | 37200.37300.37500.37900.39000.43300.131900.377900 | Wall conduiting | 3d | 2025-08-11 | 2025-08-14 | 80, 84SS+1d |  | 7 day week With NGT Ban | 7575233 |
| 86 | 37200.37300.37500.37900.39000.43300.131900.378000 | Formwork | 7d | 2025-08-11 | 2025-08-18 | 84SS+1d |  | 7 day week With NGT Ban | 7575243 |
| 87 | 37200.37300.37500.37900.39000.43300.131900.378100 | Concreting | 1d | 2025-08-18 | 2025-08-19 | 86 |  | 7 day week With NGT Ban | 7575253 |
| 88 | 37200.37300.37500.37900.39000.43300.132000 | **11th floor slab** | 9d | 2025-08-20 | 2025-08-29 |  | start no earlier than 2025-08-20 | 7 day week With NGT Ban | 7569663 |
| 89 | 37200.37300.37500.37900.39000.43300.132000.378200 | Reinforcement | 8d | 2025-08-20 | 2025-08-28 | 87FS+1d |  | 7 day week With NGT Ban | 7575263 |
| 90 | 37200.37300.37500.37900.39000.43300.132000.378300 | Wall conduiting | 3d | 2025-08-21 | 2025-08-24 | 85, 89SS+1d |  | 7 day week With NGT Ban | 7575273 |
| 91 | 37200.37300.37500.37900.39000.43300.132000.378400 | Formwork | 7d | 2025-08-21 | 2025-08-28 | 89SS+1d |  | 7 day week With NGT Ban | 7575283 |
| 92 | 37200.37300.37500.37900.39000.43300.132000.378500 | Concreting | 1d | 2025-08-28 | 2025-08-29 | 91 |  | 7 day week With NGT Ban | 7575293 |
| 93 | 37200.37300.37500.37900.39000.43300.132100 | **12th floor slab** | 9d | 2025-08-30 | 2025-09-08 |  | start no earlier than 2025-08-30 | 7 day week With NGT Ban | 7569673 |
| 94 | 37200.37300.37500.37900.39000.43300.132100.378600 | Reinforcement | 8d | 2025-08-30 | 2025-09-07 | 92FS+1d |  | 7 day week With NGT Ban | 7575303 |
| 95 | 37200.37300.37500.37900.39000.43300.132100.378700 | Wall conduiting | 3d | 2025-08-31 | 2025-09-03 | 90, 94SS+1d |  | 7 day week With NGT Ban | 7575313 |
| 96 | 37200.37300.37500.37900.39000.43300.132100.378800 | Formwork | 7d | 2025-08-31 | 2025-09-07 | 94SS+1d |  | 7 day week With NGT Ban | 7575323 |
| 97 | 37200.37300.37500.37900.39000.43300.132100.378900 | Concreting | 1d | 2025-09-07 | 2025-09-08 | 96 |  | 7 day week With NGT Ban | 7575333 |
| 98 | 37200.37300.37500.37900.39000.43300.132200 | **13th floor slab** | 9d | 2025-09-09 | 2025-09-18 |  | start no earlier than 2025-09-09 | 7 day week With NGT Ban | 7569683 |
| 99 | 37200.37300.37500.37900.39000.43300.132200.382700 | Reinforcement | 8d | 2025-09-09 | 2025-09-17 | 97FS+1d |  | 7 day week With NGT Ban | 7575343 |
| 100 | 37200.37300.37500.37900.39000.43300.132200.382800 | Wall conduiting | 3d | 2025-09-10 | 2025-09-13 | 95, 99SS+1d |  | 7 day week With NGT Ban | 7575353 |
| 101 | 37200.37300.37500.37900.39000.43300.132200.382900 | Formwork | 7d | 2025-09-10 | 2025-09-17 | 99SS+1d |  | 7 day week With NGT Ban | 7575363 |
| 102 | 37200.37300.37500.37900.39000.43300.132200.383000 | Concreting | 1d | 2025-09-17 | 2025-09-18 | 101 |  | 7 day week With NGT Ban | 7575373 |

| ID | WBS | Task | Duration | Start | Finish | Predecessors | Constraint | Calendar | Unique_Task_ID |
| --- | --- | --- | --- | --- | --- | --- | --- | --- | --- |
| 103 | 37200.37300.37500.37900.39000.43300.132300 | **14th floor slab** | 9d | 2025-09-19 | 2025-09-28 |  | start no earlier than 2025-09-19 | 7 day week With NGT Ban | 7569693 |
| 104 | 37200.37300.37500.37900.39000.43300.132300.383100 | Reinforcement | 8d | 2025-09-19 | 2025-09-27 | 102FS+1d |  | 7 day week With NGT Ban | 7575383 |
| 105 | 37200.37300.37500.37900.39000.43300.132300.383200 | Wall conduiting | 3d | 2025-09-20 | 2025-09-23 | 100, 104SS+1d |  | 7 day week With NGT Ban | 7575393 |
| 106 | 37200.37300.37500.37900.39000.43300.132300.383300 | Formwork | 7d | 2025-09-20 | 2025-09-27 | 104SS+1d |  | 7 day week With NGT Ban | 7575403 |
| 107 | 37200.37300.37500.37900.39000.43300.132300.383400 | Concreting | 1d | 2025-09-27 | 2025-09-28 | 106 |  | 7 day week With NGT Ban | 7575413 |
| 108 | 37200.37300.37500.37900.39000.43300.132400 | **15th floor slab** | 9d | 2025-09-29 | 2025-10-08 |  | start no earlier than 2025-09-29 | 7 day week With NGT Ban | 7569703 |
| 109 | 37200.37300.37500.37900.39000.43300.132400.383500 | Reinforcement | 8d | 2025-09-29 | 2025-10-07 | 107FS+1d |  | 7 day week With NGT Ban | 7575423 |
| 110 | 37200.37300.37500.37900.39000.43300.132400.383600 | Wall conduiting | 3d | 2025-09-30 | 2025-10-03 | 105, 109SS+1d |  | 7 day week With NGT Ban | 7575433 |
| 111 | 37200.37300.37500.37900.39000.43300.132400.383700 | Formwork | 7d | 2025-09-30 | 2025-10-07 | 109SS+1d |  | 7 day week With NGT Ban | 7575443 |
| 112 | 37200.37300.37500.37900.39000.43300.132400.383800 | Concreting | 1d | 2025-10-07 | 2025-10-08 | 111 |  | 7 day week With NGT Ban | 7575453 |
| 113 | 37200.37300.37500.37900.39000.43300.132500 | **16th floor slab** | 12d | 2025-10-09 | 2025-10-21 |  | start no earlier than 2025-10-09 | 7 day week With NGT Ban | 7569713 |
| 114 | 37200.37300.37500.37900.39000.43300.132500.383900 | Reinforcement | 10d | 2025-10-09 | 2025-10-19 | 112FS+1d |  | 7 day week With NGT Ban | 7575463 |
| 115 | 37200.37300.37500.37900.39000.43300.132500.384000 | Wall conduiting | 3d | 2025-10-10 | 2025-10-13 | 110, 114SS+1d |  | 7 day week With NGT Ban | 7575473 |
| 116 | 37200.37300.37500.37900.39000.43300.132500.384100 | Formwork | 10d | 2025-10-10 | 2025-10-20 | 114SS+1d |  | 7 day week With NGT Ban | 7575483 |
| 117 | 37200.37300.37500.37900.39000.43300.132500.384200 | Concreting | 1d | 2025-10-20 | 2025-10-21 | 116 |  | 7 day week With NGT Ban | 7575493 |
| 118 | 37200.37300.37500.37900.39000.43300.132600 | **17th floor slab** | 9d | 2025-10-22 | 2025-10-31 |  | start no earlier than 2025-10-22 | 7 day week With NGT Ban | 7569723 |
| 119 | 37200.37300.37500.37900.39000.43300.132600.384300 | Reinforcement | 8d | 2025-10-22 | 2025-10-30 | 117FS+1d |  | 7 day week With NGT Ban | 7575503 |
| 120 | 37200.37300.37500.37900.39000.43300.132600.384400 | Wall conduiting | 3d | 2025-10-23 | 2025-10-26 | 115, 119SS+1d |  | 7 day week With NGT Ban | 7575513 |
| 121 | 37200.37300.37500.37900.39000.43300.132600.384500 | Formwork | 7d | 2025-10-23 | 2025-10-30 | 119SS+1d |  | 7 day week With NGT Ban | 7575523 |
| 122 | 37200.37300.37500.37900.39000.43300.132600.384600 | Concreting | 1d | 2025-10-30 | 2025-10-31 | 121 |  | 7 day week With NGT Ban | 7575533 |
| 123 | 37200.37300.37500.37900.39000.43300.132700 | **18th floor slab** | 9d | 2025-12-16 | 2025-12-25 |  | start no earlier than 2025-12-16 | 7 day week With NGT Ban | 7569733 |
| 124 | 37200.37300.37500.37900.39000.43300.132700.384700 | Reinforcement | 8d | 2025-12-16 | 2025-12-24 | 122FS+1d |  | 7 day week With NGT Ban | 7575543 |
| 125 | 37200.37300.37500.37900.39000.43300.132700.384800 | Wall conduiting | 3d | 2025-12-17 | 2025-12-20 | 120, 124SS+1d |  | 7 day week With NGT Ban | 7575553 |
| 126 | 37200.37300.37500.37900.39000.43300.132700.384900 | Formwork | 7d | 2025-12-17 | 2025-12-24 | 124SS+1d |  | 7 day week With NGT Ban | 7575563 |
| 127 | 37200.37300.37500.37900.39000.43300.132700.385000 | Concreting | 1d | 2025-12-24 | 2025-12-25 | 126 |  | 7 day week With NGT Ban | 7575573 |

| ID | WBS | Task | Duration | Start | Finish | Predecessors | Constraint | Calendar | Unique_Task_ID |
| --- | --- | --- | --- | --- | --- | --- | --- | --- | --- |
| 128 | 37200.37300.37500.37900.39000.43300.132800 | **19th floor slab** | 8d | 2025-12-26 | 2026-01-03 |  | start no earlier than 2025-12-26 | 7 day week With NGT Ban | 7569743 |
| 129 | 37200.37300.37500.37900.39000.43300.132800.385100 | Reinforcement | 7d | 2025-12-26 | 2026-01-02 | 127FS+1d |  | 7 day week With NGT Ban | 7575583 |
| 130 | 37200.37300.37500.37900.39000.43300.132800.385200 | Wall conduiting | 3d | 2025-12-27 | 2025-12-30 | 125, 129SS+1d |  | 7 day week With NGT Ban | 7575593 |
| 131 | 37200.37300.37500.37900.39000.43300.132800.385300 | Formwork | 6d | 2025-12-27 | 2026-01-02 | 129SS+1d |  | 7 day week With NGT Ban | 7575603 |
| 132 | 37200.37300.37500.37900.39000.43300.132800.385400 | Concreting | 1d | 2026-01-02 | 2026-01-03 | 131 |  | 7 day week With NGT Ban | 7575613 |
| 133 | 37200.37300.37500.37900.39000.43300.132900 | **20th floor slab** | 8d | 2026-01-04 | 2026-01-12 |  | start no earlier than 2026-01-04 | 7 day week With NGT Ban | 7569753 |
| 134 | 37200.37300.37500.37900.39000.43300.132900.385500 | Reinforcement | 7d | 2026-01-04 | 2026-01-11 | 132FS+1d |  | 7 day week With NGT Ban | 7575623 |
| 135 | 37200.37300.37500.37900.39000.43300.132900.385600 | Wall conduiting | 3d | 2026-01-05 | 2026-01-08 | 130, 134SS+1d |  | 7 day week With NGT Ban | 7575633 |
| 136 | 37200.37300.37500.37900.39000.43300.132900.385700 | Formwork | 6d | 2026-01-05 | 2026-01-11 | 134SS+1d |  | 7 day week With NGT Ban | 7575643 |
| 137 | 37200.37300.37500.37900.39000.43300.132900.385800 | Concreting | 1d | 2026-01-11 | 2026-01-12 | 136 |  | 7 day week With NGT Ban | 7575653 |
| 138 | 37200.37300.37500.37900.39000.43300.133000 | **21st floor slab** | 8d | 2026-01-13 | 2026-01-21 |  | start no earlier than 2026-01-13 | 7 day week With NGT Ban | 7569763 |
| 139 | 37200.37300.37500.37900.39000.43300.133000.385900 | Reinforcement | 7d | 2026-01-13 | 2026-01-20 | 137FS+1d |  | 7 day week With NGT Ban | 7575663 |
| 140 | 37200.37300.37500.37900.39000.43300.133000.386000 | Wall conduiting | 3d | 2026-01-14 | 2026-01-17 | 135, 139SS+1d |  | 7 day week With NGT Ban | 7575673 |
| 141 | 37200.37300.37500.37900.39000.43300.133000.386100 | Formwork | 6d | 2026-01-14 | 2026-01-20 | 139SS+1d |  | 7 day week With NGT Ban | 7575683 |
| 142 | 37200.37300.37500.37900.39000.43300.133000.386200 | Concreting | 1d | 2026-01-20 | 2026-01-21 | 141 |  | 7 day week With NGT Ban | 7575693 |
| 143 | 37200.37300.37500.37900.39000.43300.133100 | **22nd floor slab** | 8d | 2026-01-22 | 2026-01-30 |  | start no earlier than 2026-01-22 | 7 day week With NGT Ban | 7569773 |
| 144 | 37200.37300.37500.37900.39000.43300.133100.386300 | Reinforcement | 7d | 2026-01-22 | 2026-01-29 | 142FS+1d |  | 7 day week With NGT Ban | 7575703 |
| 145 | 37200.37300.37500.37900.39000.43300.133100.386400 | Wall conduiting | 3d | 2026-01-23 | 2026-01-26 | 140, 144SS+1d |  | 7 day week With NGT Ban | 7575713 |
| 146 | 37200.37300.37500.37900.39000.43300.133100.386500 | Formwork | 6d | 2026-01-23 | 2026-01-29 | 144SS+1d |  | 7 day week With NGT Ban | 7575723 |
| 147 | 37200.37300.37500.37900.39000.43300.133100.386600 | Concreting | 1d | 2026-01-29 | 2026-01-30 | 146 |  | 7 day week With NGT Ban | 7575733 |
| 148 | 37200.37300.37500.37900.39000.43300.133200 | **23rd floor slab** | 8d | 2026-01-31 | 2026-02-08 |  | start no earlier than 2026-01-31 | 7 day week With NGT Ban | 7569783 |
| 149 | 37200.37300.37500.37900.39000.43300.133200.386700 | Reinforcement | 7d | 2026-01-31 | 2026-02-07 | 147FS+1d |  | 7 day week With NGT Ban | 7575743 |
| 150 | 37200.37300.37500.37900.39000.43300.133200.386800 | Wall conduiting | 3d | 2026-02-01 | 2026-02-04 | 145, 149SS+1d |  | 7 day week With NGT Ban | 7575753 |
| 151 | 37200.37300.37500.37900.39000.43300.133200.386900 | Formwork | 6d | 2026-02-01 | 2026-02-07 | 149SS+1d |  | 7 day week With NGT Ban | 7575763 |
| 152 | 37200.37300.37500.37900.39000.43300.133200.387000 | Concreting | 1d | 2026-02-07 | 2026-02-08 | 151 |  | 7 day week With NGT Ban | 7575773 |

| ID | WBS | Task | Duration | Start | Finish | Predecessors | Constraint | Calendar | Unique_Task_ID |
| --- | --- | --- | --- | --- | --- | --- | --- | --- | --- |
| 153 | 37200.37300.37500.37900.39000.43300.133300 | **24th floor slab** | 12d | 2026-02-09 | 2026-02-21 |  | start no earlier than 2026-02-09 | 7 day week With NGT Ban | 7569793 |
| 154 | 37200.37300.37500.37900.39000.43300.133300.387100 | Reinforcement | 10d | 2026-02-09 | 2026-02-19 | 152FS+1d |  | 7 day week With NGT Ban | 7575783 |
| 155 | 37200.37300.37500.37900.39000.43300.133300.387200 | Wall conduiting | 3d | 2026-02-10 | 2026-02-13 | 150, 154SS+1d |  | 7 day week With NGT Ban | 7575793 |
| 156 | 37200.37300.37500.37900.39000.43300.133300.387300 | Formwork | 10d | 2026-02-10 | 2026-02-20 | 154SS+1d |  | 7 day week With NGT Ban | 7575803 |
| 157 | 37200.37300.37500.37900.39000.43300.133300.387400 | Concreting | 1d | 2026-02-20 | 2026-02-21 | 156 |  | 7 day week With NGT Ban | 7575813 |
| 158 | 37200.37300.37500.37900.39000.43300.133400 | **25th floor slab** | 12d | 2026-02-22 | 2026-03-06 |  | start no earlier than 2026-02-22 | 7 day week With NGT Ban | 7569803 |
| 159 | 37200.37300.37500.37900.39000.43300.133400.387500 | Reinforcement | 10d | 2026-02-22 | 2026-03-04 | 157FS+1d |  | 7 day week With NGT Ban | 7575823 |
| 160 | 37200.37300.37500.37900.39000.43300.133400.387600 | Wall conduiting | 3d | 2026-02-23 | 2026-02-26 | 155, 159SS+1d |  | 7 day week With NGT Ban | 7575833 |
| 161 | 37200.37300.37500.37900.39000.43300.133400.387700 | Formwork | 10d | 2026-02-23 | 2026-03-05 | 159SS+1d |  | 7 day week With NGT Ban | 7575843 |
| 162 | 37200.37300.37500.37900.39000.43300.133400.387800 | Concreting | 1d | 2026-03-05 | 2026-03-06 | 161 |  | 7 day week With NGT Ban | 7575853 |
| 163 | 37200.37300.37500.37900.39000.43300.133500 | **26th floor slab** | 8d | 2026-03-07 | 2026-03-15 |  | start no earlier than 2026-03-07 | 7 day week With NGT Ban | 7569813 |
| 164 | 37200.37300.37500.37900.39000.43300.133500.387900 | Reinforcement | 7d | 2026-03-07 | 2026-03-14 | 162FS+1d |  | 7 day week With NGT Ban | 7575863 |
| 165 | 37200.37300.37500.37900.39000.43300.133500.388000 | Wall conduiting | 3d | 2026-03-08 | 2026-03-11 | 160, 164SS+1d |  | 7 day week With NGT Ban | 7575873 |
| 166 | 37200.37300.37500.37900.39000.43300.133500.388100 | Formwork | 6d | 2026-03-08 | 2026-03-14 | 164SS+1d |  | 7 day week With NGT Ban | 7575883 |
| 167 | 37200.37300.37500.37900.39000.43300.133500.388200 | Concreting | 1d | 2026-03-14 | 2026-03-15 | 166 |  | 7 day week With NGT Ban | 7575893 |
| 168 | 37200.37300.37500.37900.39000.43300.133600 | **27th floor slab** | 8d | 2026-03-16 | 2026-03-24 |  | start no earlier than 2026-03-16 | 7 day week With NGT Ban | 7569823 |
| 169 | 37200.37300.37500.37900.39000.43300.133600.388300 | Reinforcement | 7d | 2026-03-16 | 2026-03-23 | 167FS+1d |  | 7 day week With NGT Ban | 7575903 |
| 170 | 37200.37300.37500.37900.39000.43300.133600.388400 | Wall conduiting | 3d | 2026-03-17 | 2026-03-20 | 165, 169SS+1d |  | 7 day week With NGT Ban | 7575913 |
| 171 | 37200.37300.37500.37900.39000.43300.133600.388500 | Formwork | 6d | 2026-03-17 | 2026-03-23 | 169SS+1d |  | 7 day week With NGT Ban | 7575923 |
| 172 | 37200.37300.37500.37900.39000.43300.133600.388600 | Concreting | 1d | 2026-03-23 | 2026-03-24 | 171 |  | 7 day week With NGT Ban | 7575933 |
| 173 | 37200.37300.37500.37900.39000.43300.133700 | **28th floor slab** | 8d | 2026-03-25 | 2026-04-02 |  | start no earlier than 2026-03-25 | 7 day week With NGT Ban | 7569833 |
| 174 | 37200.37300.37500.37900.39000.43300.133700.388700 | Reinforcement | 7d | 2026-03-25 | 2026-04-01 | 172FS+1d |  | 7 day week With NGT Ban | 7575943 |
| 175 | 37200.37300.37500.37900.39000.43300.133700.388800 | Wall conduiting | 3d | 2026-03-26 | 2026-03-29 | 170, 174SS+1d |  | 7 day week With NGT Ban | 7575953 |
| 176 | 37200.37300.37500.37900.39000.43300.133700.388900 | Formwork | 6d | 2026-03-26 | 2026-04-01 | 174SS+1d |  | 7 day week With NGT Ban | 7575963 |
| 177 | 37200.37300.37500.37900.39000.43300.133700.389000 | Concreting | 1d | 2026-04-01 | 2026-04-02 | 176 |  | 7 day week With NGT Ban | 7575973 |

| ID | WBS | Task | Duration | Start | Finish | Predecessors | Constraint | Calendar | Unique_Task_ID |
| --- | --- | --- | --- | --- | --- | --- | --- | --- | --- |
| 178 | 37200.37300.37500.37900.39000.43300.133800 | **29th floor slab** | 8d | 2026-04-02 | 2026-04-10 |  | start no earlier than 2026-04-02 | 7 day week With NGT Ban | 7569843 |
| 179 | 37200.37300.37500.37900.39000.43300.133800.389100 | Reinforcement | 7d | 2026-04-02 | 2026-04-09 | 177 |  | 7 day week With NGT Ban | 7575983 |
| 180 | 37200.37300.37500.37900.39000.43300.133800.389200 | Wall conduiting | 3d | 2026-04-03 | 2026-04-06 | 175, 179SS+1d |  | 7 day week With NGT Ban | 7575993 |
| 181 | 37200.37300.37500.37900.39000.43300.133800.389300 | Formwork | 6d | 2026-04-03 | 2026-04-09 | 179SS+1d |  | 7 day week With NGT Ban | 7576003 |
| 182 | 37200.37300.37500.37900.39000.43300.133800.389400 | Concreting | 1d | 2026-04-09 | 2026-04-10 | 181 |  | 7 day week With NGT Ban | 7576013 |
| 183 | 37200.37300.37500.37900.39000.43300.133900 | **30th floor slab** | 8d | 2026-04-10 | 2026-04-18 |  | start no earlier than 2026-04-10 | 7 day week With NGT Ban | 7569853 |
| 184 | 37200.37300.37500.37900.39000.43300.133900.389500 | Reinforcement | 7d | 2026-04-10 | 2026-04-17 | 182 |  | 7 day week With NGT Ban | 7576023 |
| 185 | 37200.37300.37500.37900.39000.43300.133900.389600 | Wall conduiting | 3d | 2026-04-11 | 2026-04-14 | 180, 184SS+1d |  | 7 day week With NGT Ban | 7576033 |
| 186 | 37200.37300.37500.37900.39000.43300.133900.389700 | Formwork | 6d | 2026-04-11 | 2026-04-17 | 184SS+1d |  | 7 day week With NGT Ban | 7576043 |
| 187 | 37200.37300.37500.37900.39000.43300.133900.389800 | Concreting | 1d | 2026-04-17 | 2026-04-18 | 186 |  | 7 day week With NGT Ban | 7576053 |
| 188 | 37200.37300.37500.37900.39000.43300.134000 | **31st floor slab** | 10d | 2026-04-18 | 2026-04-28 |  | start no earlier than 2026-04-18 | 7 day week With NGT Ban | 7569863 |
| 189 | 37200.37300.37500.37900.39000.43300.134000.389900 | Reinforcement | 7d | 2026-04-18 | 2026-04-25 | 187 |  | 7 day week With NGT Ban | 7576063 |
| 190 | 37200.37300.37500.37900.39000.43300.134000.390000 | Wall conduiting | 3d | 2026-04-19 | 2026-04-22 | 185, 189SS+1d |  | 7 day week With NGT Ban | 7576073 |
| 191 | 37200.37300.37500.37900.39000.43300.134000.390100 | Formwork | 8d | 2026-04-19 | 2026-04-27 | 189SS+1d |  | 7 day week With NGT Ban | 7576083 |
| 192 | 37200.37300.37500.37900.39000.43300.134000.390200 | Concreting | 1d | 2026-04-27 | 2026-04-28 | 191 |  | 7 day week With NGT Ban | 7576093 |
| 193 | 37200.37300.37500.37900.39000.43300.134100 | **32nd floor slab** | 12.75d | 2026-04-28 | 2026-05-11 |  | start no earlier than 2026-04-28 | 7 day week With NGT Ban | 7569873 |
| 194 | 37200.37300.37500.37900.39000.43300.134100.390300 | Reinforcement | 9.94d | 2026-04-28 | 2026-05-08 | 192 |  | 7 day week With NGT Ban | 7576103 |
| 195 | 37200.37300.37500.37900.39000.43300.134100.390400 | Wall conduiting | 1.94d | 2026-04-29 | 2026-05-01 | 190, 194SS+1d |  | 7 day week With NGT Ban | 7576113 |
| 196 | 37200.37300.37500.37900.39000.43300.134100.390500 | Formwork | 9.94d | 2026-04-30 | 2026-05-10 | 194SS+1.88d |  | 7 day week With NGT Ban | 7576123 |
| 197 | 37200.37300.37500.37900.39000.43300.134100.390600 | Concreting | 0.94d | 2026-05-10 | 2026-05-11 | 196 |  | 7 day week With NGT Ban | 7576133 |
| 198 | 37200.37300.37500.37900.39000.43300.134200 | **33rd floor slab** | 11.75d | 2026-05-11 | 2026-05-22 |  | start no earlier than 2026-05-11 | 7 day week With NGT Ban | 7569883 |
| 199 | 37200.37300.37500.37900.39000.43300.134200.390700 | Reinforcement | 8.94d | 2026-05-11 | 2026-05-20 | 197 |  | 7 day week With NGT Ban | 7576143 |
| 200 | 37200.37300.37500.37900.39000.43300.134200.390800 | Wall conduiting | 1.94d | 2026-05-12 | 2026-05-14 | 195, 199SS+1d |  | 7 day week With NGT Ban | 7576153 |
| 201 | 37200.37300.37500.37900.39000.43300.134200.390900 | Formwork | 8.94d | 2026-05-13 | 2026-05-22 | 199SS+1.88d |  | 7 day week With NGT Ban | 7576163 |
| 202 | 37200.37300.37500.37900.39000.43300.134200.391000 | Concreting | 0.94d | 2026-05-22 | 2026-05-22 | 201 |  | 7 day week With NGT Ban | 7576173 |

| ID | WBS | Task | Duration | Start | Finish | Predecessors | Constraint | Calendar | Unique_Task_ID |
| --- | --- | --- | --- | --- | --- | --- | --- | --- | --- |
| 203 | 37200.37300.37500.37900.39000.43300.134300 | **34th floor slab** | 12.75d | 2026-05-23 | 2026-06-04 |  | start no earlier than 2026-05-23 | 7 day week With NGT Ban | 7569893 |
| 204 | 37200.37300.37500.37900.39000.43300.134300.391100 | Reinforcement | 9.94d | 2026-05-23 | 2026-06-01 | 202 |  | 7 day week With NGT Ban | 7576183 |
| 205 | 37200.37300.37500.37900.39000.43300.134300.391200 | Wall conduiting | 1.94d | 2026-05-24 | 2026-05-25 | 200, 204SS+1d |  | 7 day week With NGT Ban | 7576193 |
| 206 | 37200.37300.37500.37900.39000.43300.134300.391300 | Formwork | 9.94d | 2026-05-24 | 2026-06-03 | 204SS+1.88d |  | 7 day week With NGT Ban | 7576203 |
| 207 | 37200.37300.37500.37900.39000.43300.134300.391400 | Concreting | 0.94d | 2026-06-03 | 2026-06-04 | 206 |  | 7 day week With NGT Ban | 7576213 |
| 208 | 37200.37300.37500.37900.39000.43300.134400 | **35th floor slab** | 11.75d | 2026-06-04 | 2026-06-16 |  | start no earlier than 2026-06-04 | 7 day week With NGT Ban | 7569903 |
| 209 | 37200.37300.37500.37900.39000.43300.134400.391500 | Reinforcement | 8.94d | 2026-06-04 | 2026-06-13 | 207 |  | 7 day week With NGT Ban | 7576223 |
| 210 | 37200.37300.37500.37900.39000.43300.134400.391600 | Wall conduiting | 1.94d | 2026-06-05 | 2026-06-07 | 205, 209SS+1d |  | 7 day week With NGT Ban | 7576233 |
| 211 | 37200.37300.37500.37900.39000.43300.134400.391700 | Formwork | 7.94d | 2026-06-07 | 2026-06-15 | 210SS+1.88d |  | 7 day week With NGT Ban | 7576243 |
| 212 | 37200.37300.37500.37900.39000.43300.134400.391800 | Concreting | 0.94d | 2026-06-15 | 2026-06-16 | 211 |  | 7 day week With NGT Ban | 7576253 |
| 213 | 37200.37300.37500.37900.39000.43300.134500 | **Terrace floor slab** | 14.75d | 2026-06-16 | 2026-07-01 |  | start no earlier than 2026-06-16 | 7 day week With NGT Ban | 7569913 |
| 214 | 37200.37300.37500.37900.39000.43300.134500.391900 | Reinforcement | 10.94d | 2026-06-16 | 2026-06-27 | 212 |  | 7 day week With NGT Ban | 7576263 |
| 215 | 37200.37300.37500.37900.39000.43300.134500.392000 | Wall conduiting | 1.94d | 2026-06-17 | 2026-06-19 | 210, 214SS+1d |  | 7 day week With NGT Ban | 7576273 |
| 216 | 37200.37300.37500.37900.39000.43300.134500.392100 | Formwork | 11.94d | 2026-06-18 | 2026-06-30 | 214SS+1.88d |  | 7 day week With NGT Ban | 7576283 |
| 217 | 37200.37300.37500.37900.39000.43300.134500.392200 | Concreting | 0.94d | 2026-06-30 | 2026-07-01 | 216 |  | 7 day week With NGT Ban | 7576293 |
| 218 | 37200.37300.37500.37900.39000.43300.134600 | **OHT & Mumty** | 41.81d | 2026-07-01 | 2026-08-12 |  | start no earlier than 2026-07-01 | 7 day week With NGT Ban | 7569923 |
| 219 | 37200.37300.37500.37900.39000.43300.134600.392300 | Reinforcement | 29.94d | 2026-07-01 | 2026-07-31 | 217 |  | 7 day week With NGT Ban | 7576303 |
| 220 | 37200.37300.37500.37900.39000.43300.134600.392400 | Wall conduiting | 4.94d | 2026-07-02 | 2026-07-07 | 215, 219SS+1d |  | 7 day week With NGT Ban | 7576313 |
| 221 | 37200.37300.37500.37900.39000.43300.134600.392500 | Formwork | 32.94d | 2026-07-07 | 2026-08-09 | 219SS+3.62d, 220 |  | 7 day week With NGT Ban | 7576323 |
| 222 | 37200.37300.37500.37900.39000.43300.134600.392600 | Concreting | 2.94d | 2026-08-09 | 2026-08-12 | 221 |  | 7 day week With NGT Ban | 7576333 |
| 223 | 37200.37300.37500.37900.39000.44800 | **Post Pour Activities** | 427.31d | 2025-06-07 | 2026-09-23 |  | start no earlier than 2025-06-07 | 7 day week With NGT Ban | 7567683 |
| 224 | 37200.37300.37500.37900.39000.44800.262500 | 1st Floor | 7d | 2025-06-07 | 2025-06-14 | 52FS+0.25d |  | 7 day week With NGT Ban | 7572013 |
| 225 | 37200.37300.37500.37900.39000.44800.262600 | 2nd Floor | 7d | 2025-06-17 | 2025-06-24 | 224FS+0.25d, 57FS+0.25d |  | 7 day week With NGT Ban | 7572023 |
| 226 | 37200.37300.37500.37900.39000.44800.262700 | 3rd Floor | 7d | 2025-06-27 | 2025-07-04 | 225FS+0.25d, 62FS+0.25d |  | 7 day week With NGT Ban | 7572033 |
| 227 | 37200.37300.37500.37900.39000.44800.262800 | 4th Floor | 7d | 2025-07-07 | 2025-07-14 | 226FS+0.25d, 67FS+0.25d |  | 7 day week With NGT Ban | 7572043 |
| 228 | 37200.37300.37500.37900.39000.44800.262900 | 5th Floor | 7d | 2025-07-17 | 2025-07-24 | 227FS+0.25d, 72FS+0.25d |  | 7 day week With NGT Ban | 7572053 |
| 229 | 37200.37300.37500.37900.39000.44800.263000 | 6th Floor | 7d | 2025-07-30 | 2025-08-06 | 228FS+0.25d, 77FS+0.25d |  | 7 day week With NGT Ban | 7572063 |
| 230 | 37200.37300.37500.37900.39000.44800.263100 | 7th Floor | 7d | 2025-08-09 | 2025-08-16 | 229FS+0.25d, 82FS+0.25d |  | 7 day week With NGT Ban | 7572073 |
| 231 | 37200.37300.37500.37900.39000.44800.263200 | 8th Floor | 7d | 2025-08-19 | 2025-08-26 | 230FS+0.25d, 87FS+0.25d |  | 7 day week With NGT Ban | 7572083 |
| 232 | 37200.37300.37500.37900.39000.44800.263300 | 9th Floor | 7d | 2025-08-29 | 2025-09-05 | 231FS+0.25d, 92FS+0.25d |  | 7 day week With NGT Ban | 7572093 |
| 233 | 37200.37300.37500.37900.39000.44800.263400 | 10th Floor | 7d | 2025-09-08 | 2025-09-15 | 232FS+0.25d, 97FS+0.25d |  | 7 day week With NGT Ban | 7572103 |
| 234 | 37200.37300.37500.37900.39000.44800.263500 | 11th Floor | 7d | 2025-09-18 | 2025-09-25 | 233FS+0.25d, 102FS+0.25d |  | 7 day week With NGT Ban | 7572113 |
| 235 | 37200.37300.37500.37900.39000.44800.263600 | 12th Floor | 7d | 2025-09-28 | 2025-10-05 | 234FS+0.25d, 107FS+0.25d |  | 7 day week With NGT Ban | 7572123 |
| 236 | 37200.37300.37500.37900.39000.44800.263700 | 13th Floor | 7d | 2025-10-08 | 2025-10-15 | 235FS+0.25d, 112FS+0.25d |  | 7 day week With NGT Ban | 7572133 |
| 237 | 37200.37300.37500.37900.39000.44800.263800 | 14th Floor | 7d | 2026-01-03 | 2026-01-10 | 236, 132 |  | 7 day week With NGT Ban | 7572143 |
| 238 | 37200.37300.37500.37900.39000.44800.263900 | 15th Floor | 7d | 2026-01-12 | 2026-01-19 | 237, 137 |  | 7 day week With NGT Ban | 7572153 |
| 239 | 37200.37300.37500.37900.39000.44800.264000 | 16th Floor | 7d | 2026-01-21 | 2026-01-28 | 238, 142 |  | 7 day week With NGT Ban | 7572163 |
| 240 | 37200.37300.37500.37900.39000.44800.264100 | 17th Floor | 7d | 2026-01-30 | 2026-02-06 | 239, 147 |  | 7 day week With NGT Ban | 7572173 |
| 241 | 37200.37300.37500.37900.39000.44800.264200 | 18th Floor | 7d | 2026-02-08 | 2026-02-15 | 240, 152 |  | 7 day week With NGT Ban | 7572183 |
| 242 | 37200.37300.37500.37900.39000.44800.264300 | 19th Floor | 7d | 2026-02-21 | 2026-02-28 | 241, 157 |  | 7 day week With NGT Ban | 7572193 |
| 243 | 37200.37300.37500.37900.39000.44800.264400 | 20th Floor | 7d | 2026-03-06 | 2026-03-13 | 242, 162 |  | 7 day week With NGT Ban | 7572203 |
| 244 | 37200.37300.37500.37900.39000.44800.264500 | 21st Floor | 7d | 2026-03-15 | 2026-03-22 | 243, 167 |  | 7 day week With NGT Ban | 449 |
| 245 | 37200.37300.37500.37900.39000.44800.264600 | 22nd Floor | 7d | 2026-03-24 | 2026-03-31 | 244, 172 |  | 7 day week With NGT Ban | 459 |
| 246 | 37200.37300.37500.37900.39000.44800.264700 | 23rd Floor | 7d | 2026-04-02 | 2026-04-09 | 245, 177 |  | 7 day week With NGT Ban | 7572213 |
| 247 | 37200.37300.37500.37900.39000.44800.264800 | 24th Floor | 7d | 2026-04-10 | 2026-04-17 | 246, 182 |  | 7 day week With NGT Ban | 7572223 |
| 248 | 37200.37300.37500.37900.39000.44800.264900 | 25th Floor | 7d | 2026-04-18 | 2026-04-25 | 247, 187 |  | 7 day week With NGT Ban | 7572233 |
| 249 | 37200.37300.37500.37900.39000.44800.265000 | 26th Floor | 7d | 2026-04-28 | 2026-05-05 | 248, 192 |  | 7 day week With NGT Ban | 7572243 |
| 250 | 37200.37300.37500.37900.39000.44800.265100 | 27th Floor | 7d | 2026-05-11 | 2026-05-18 | 249, 197 |  | 7 day week With NGT Ban | 7572253 |
| 251 | 37200.37300.37500.37900.39000.44800.265200 | 28th Floor | 7d | 2026-05-23 | 2026-05-29 | 250, 202 |  | 7 day week With NGT Ban | 7572263 |
| 252 | 37200.37300.37500.37900.39000.44800.265300 | 29th Floor | 7d | 2026-06-04 | 2026-06-11 | 251, 207 |  | 7 day week With NGT Ban | 7572273 |
| 253 | 37200.37300.37500.37900.39000.44800.265400 | 30th Floor | 7d | 2026-06-16 | 2026-06-23 | 252, 212 |  | 7 day week With NGT Ban | 7572283 |
| 254 | 37200.37300.37500.37900.39000.44800.265500 | 31st Floor | 7d | 2026-07-01 | 2026-07-08 | 253, 217 |  | 7 day week With NGT Ban | 7572293 |
| 255 | 37200.37300.37500.37900.39000.44800.265600 | 32nd Flood | 7d | 2026-08-12 | 2026-08-19 | 254, 222 |  | 7 day week With NGT Ban | 559 |
| 256 | 37200.37300.37500.37900.39000.44800.265700 | 33rd Floor | 7d | 2026-08-19 | 2026-08-26 | 255 |  | 7 day week With NGT Ban | 7572303 |
| 257 | 37200.37300.37500.37900.39000.44800.265800 | 34th Floor | 7d | 2026-08-26 | 2026-09-02 | 256 |  | 7 day week With NGT Ban | 7572313 |
| 258 | 37200.37300.37500.37900.39000.44800.265900 | 35th Floor | 7d | 2026-09-02 | 2026-09-09 | 257 |  | 7 day week With NGT Ban | 7572323 |
| 259 | 37200.37300.37500.37900.39000.44800.266000 | Terrace | 7d | 2026-09-09 | 2026-09-16 | 258 |  | 7 day week With NGT Ban | 7572333 |
| 260 | 37200.37300.37500.37900.39000.44800.266100 | Mumty & Machine Room | 7d | 2026-09-16 | 2026-09-23 | 259 |  | 7 day week With NGT Ban | 7572343 |

| ID | WBS | Task | Duration | Start | Finish | Predecessors | Constraint | Calendar | Unique_Task_ID |
| --- | --- | --- | --- | --- | --- | --- | --- | --- | --- |
| 261 | 37200.37300.37500.37900.39000.40300 | **Finishing work** | 669.88d | 2025-06-14 | 2027-07-14 |  | start no earlier than 2025-06-14 | 7 day week With NGT Ban | 7567563 |
| 262 | 37200.37300.37500.37900.39000.40300.41300 | **Flat finishing** | 515.31d | 2025-06-14 | 2027-02-10 |  | start no earlier than 2025-06-14 | 7 day week With NGT Ban | 7567603 |
| 263 | 37200.37300.37500.37900.39000.40300.41300.87600 | **1st Floor** | 78.25d | 2025-06-14 | 2025-08-31 |  | start no earlier than 2025-06-14 | 7 day week With NGT Ban | 7567723 |
| 264 | 37200.37300.37500.37900.39000.40300.41300.87600.812200 | Block Work | 5d | 2025-06-14 | 2025-06-19 | 224 |  | 7 day week With NGT Ban | 7581693 |
| 265 | 37200.37300.37500.37900.39000.40300.41300.87600.812300 | Door Frame Fixing | 9d | 2025-06-19 | 2025-06-28 | 264 |  | 7 day week With NGT Ban | 7581703 |
| 266 | 37200.37300.37500.37900.39000.40300.41300.87600.812400 | Internal Plumbing Works | 8d | 2025-06-19 | 2025-06-27 | 264 |  | 7 day week With NGT Ban | 7581713 |
| 267 | 37200.37300.37500.37900.39000.40300.41300.87600.812500 | Waterproofing | 10d | 2025-06-27 | 2025-07-07 | 266 |  | 7 day week With NGT Ban | 7581723 |
| 268 | 37200.37300.37500.37900.39000.40300.41300.87600.812600 | Internal Plaster | 5d | 2025-06-15 | 2025-06-19 | 264SS+0.25d |  | 7 day week With NGT Ban | 7581733 |
| 269 | 37200.37300.37500.37900.39000.40300.41300.87600.812700 | IPS flooring work | 10d | 2025-07-07 | 2025-07-17 | 265, 266, 267 |  | 7 day week With NGT Ban | 7581743 |
| 270 | 37200.37300.37500.37900.39000.40300.41300.87600.812800 | Toilet dado work | 8d | 2025-07-07 | 2025-07-15 | 267, 268 |  | 7 day week With NGT Ban | 7581753 |
| 271 | 37200.37300.37500.37900.39000.40300.41300.87600.812900 | Toilet flooring work | 8d | 2025-07-16 | 2025-07-23 | 270FS+0.25d |  | 7 day week With NGT Ban | 7581763 |
| 272 | 37200.37300.37500.37900.39000.40300.41300.87600.813000 | Living dinning flooring | 7d | 2025-07-24 | 2025-07-30 | 265, 271 |  | 7 day week With NGT Ban | 7581773 |
| 273 | 37200.37300.37500.37900.39000.40300.41300.87600.813100 | Aluminium door-window fixing | 7d | 2025-07-31 | 2025-08-06 | 269, 272 |  | 7 day week With NGT Ban | 7581783 |
| 274 | 37200.37300.37500.37900.39000.40300.41300.87600.813200 | Putty primer coat | 6d | 2025-07-31 | 2025-08-05 | 272 |  | 7 day week With NGT Ban | 7581793 |
| 275 | 37200.37300.37500.37900.39000.40300.41300.87600.813300 | Door shutter fixing | 8d | 2025-07-31 | 2025-08-07 | 272 |  | 7 day week With NGT Ban | 7581803 |
| 276 | 37200.37300.37500.37900.39000.40300.41300.87600.813400 | Electrical wiring work | 8d | 2025-08-08 | 2025-08-15 | 275 |  | 7 day week With NGT Ban | 7581813 |
| 277 | 37200.37300.37500.37900.39000.40300.41300.87600.813500 | Painting 1st coat | 8d | 2025-08-16 | 2025-08-23 | 274, 275, 276 |  | 7 day week With NGT Ban | 7581823 |
| 278 | 37200.37300.37500.37900.39000.40300.41300.87600.813600 | False Cieling panel fixing | 8d | 2025-08-24 | 2025-08-31 | 277 |  | 7 day week With NGT Ban | 7581833 |
| 279 | 37200.37300.37500.37900.39000.40300.41300.87500 | **2nd Floor** | 81.75d | 2025-06-21 | 2025-09-10 |  | start no earlier than 2025-06-21 | 7 day week With NGT Ban | 7567733 |
| 280 | 37200.37300.37500.37900.39000.40300.41300.87500.813700 | Block Work | 5d | 2025-06-24 | 2025-06-29 | 225, 264 |  | 7 day week With NGT Ban | 7581843 |
| 281 | 37200.37300.37500.37900.39000.40300.41300.87500.813800 | Door Frame Fixing | 9d | 2025-06-29 | 2025-07-08 | 265, 280 |  | 7 day week With NGT Ban | 7581853 |
| 282 | 37200.37300.37500.37900.39000.40300.41300.87500.813900 | Internal Plumbing Works | 8d | 2025-06-29 | 2025-07-07 | 266, 280 |  | 7 day week With NGT Ban | 7581863 |
| 283 | 37200.37300.37500.37900.39000.40300.41300.87500.814000 | Waterproofing | 10d | 2025-07-07 | 2025-07-17 | 267, 282 |  | 7 day week With NGT Ban | 7581873 |
| 284 | 37200.37300.37500.37900.39000.40300.41300.87500.814100 | Internal Plaster | 5d | 2025-06-21 | 2025-06-25 | 268FS+1d |  | 7 day week With NGT Ban | 7581883 |
| 285 | 37200.37300.37500.37900.39000.40300.41300.87500.814200 | IPS flooring work | 10d | 2025-07-17 | 2025-07-27 | 269, 281, 282, 283 |  | 7 day week With NGT Ban | 7581893 |
| 286 | 37200.37300.37500.37900.39000.40300.41300.87500.814300 | Toilet dado work | 8d | 2025-07-17 | 2025-07-25 | 270, 283, 284 |  | 7 day week With NGT Ban | 7581903 |
| 287 | 37200.37300.37500.37900.39000.40300.41300.87500.814400 | Toilet flooring work | 8d | 2025-07-25 | 2025-08-02 | 271, 286 |  | 7 day week With NGT Ban | 7581913 |
| 288 | 37200.37300.37500.37900.39000.40300.41300.87500.814500 | Living dinning flooring | 7d | 2025-08-02 | 2025-08-09 | 272, 281, 287 |  | 7 day week With NGT Ban | 7581923 |
| 289 | 37200.37300.37500.37900.39000.40300.41300.87500.814600 | Aluminium door-window fixing | 7d | 2025-08-09 | 2025-08-16 | 273, 285, 288 |  | 7 day week With NGT Ban | 7581933 |
| 290 | 37200.37300.37500.37900.39000.40300.41300.87500.814700 | Putty primer coat | 6d | 2025-08-09 | 2025-08-15 | 274, 288 |  | 7 day week With NGT Ban | 7581943 |
| 291 | 37200.37300.37500.37900.39000.40300.41300.87500.814800 | Door shutter fixing | 8d | 2025-08-09 | 2025-08-17 | 275, 288 |  | 7 day week With NGT Ban | 7581953 |
| 292 | 37200.37300.37500.37900.39000.40300.41300.87500.814900 | Electrical wiring work | 8d | 2025-08-17 | 2025-08-25 | 276, 291 |  | 7 day week With NGT Ban | 7581963 |
| 293 | 37200.37300.37500.37900.39000.40300.41300.87500.815000 | Painting 1st coat | 8d | 2025-08-25 | 2025-09-02 | 277, 290, 291, 292 |  | 7 day week With NGT Ban | 7581973 |
| 294 | 37200.37300.37500.37900.39000.40300.41300.87500.815100 | False ceiling | 8d | 2025-09-02 | 2025-09-10 | 278, 293 |  | 7 day week With NGT Ban | 7581983 |

| ID | WBS | Task | Duration | Start | Finish | Predecessors | Constraint | Calendar | Unique_Task_ID |
| --- | --- | --- | --- | --- | --- | --- | --- | --- | --- |
| 295 | 37200.37300.37500.37900.39000.40300.41300.87400 | **3rd Floor** | 84.75d | 2025-06-26 | 2025-09-18 |  | start no earlier than 2025-06-26 | 7 day week With NGT Ban | 7567743 |
| 296 | 37200.37300.37500.37900.39000.40300.41300.87400.815200 | Block Work | 5d | 2025-06-30 | 2025-07-04 | 280FS+0.25d |  | 7 day week With NGT Ban | 7581993 |
| 297 | 37200.37300.37500.37900.39000.40300.41300.87400.815300 | Door Frame Fixing | 9d | 2025-07-08 | 2025-07-17 | 281, 296 |  | 7 day week With NGT Ban | 7582003 |
| 298 | 37200.37300.37500.37900.39000.40300.41300.87400.815400 | Internal Plumbing Works | 8d | 2025-07-07 | 2025-07-15 | 282, 296 |  | 7 day week With NGT Ban | 7582013 |
| 299 | 37200.37300.37500.37900.39000.40300.41300.87400.815500 | Waterproofing | 10d | 2025-07-17 | 2025-07-27 | 283, 298 |  | 7 day week With NGT Ban | 7582023 |
| 300 | 37200.37300.37500.37900.39000.40300.41300.87400.815600 | Internal Plaster | 5d | 2025-06-26 | 2025-07-01 | 284FS+0.25d |  | 7 day week With NGT Ban | 7582033 |
| 301 | 37200.37300.37500.37900.39000.40300.41300.87400.815700 | IPS flooring work | 10d | 2025-07-27 | 2025-08-06 | 285, 297, 299, 300 |  | 7 day week With NGT Ban | 7582043 |
| 302 | 37200.37300.37500.37900.39000.40300.41300.87400.815800 | Toilet dado work | 8d | 2025-07-26 | 2025-08-02 | 286FS+0.25d |  | 7 day week With NGT Ban | 7582053 |
| 303 | 37200.37300.37500.37900.39000.40300.41300.87400.815900 | Toilet flooring work | 8d | 2025-08-03 | 2025-08-10 | 287, 302 |  | 7 day week With NGT Ban | 7582063 |
| 304 | 37200.37300.37500.37900.39000.40300.41300.87400.816000 | Living dinning flooring | 7d | 2025-08-11 | 2025-08-17 | 288, 297, 303 |  | 7 day week With NGT Ban | 7582073 |
| 305 | 37200.37300.37500.37900.39000.40300.41300.87400.816100 | Aluminium door-window fixing | 7d | 2025-08-18 | 2025-08-24 | 289, 301, 304 |  | 7 day week With NGT Ban | 7582083 |
| 306 | 37200.37300.37500.37900.39000.40300.41300.87400.816200 | Putty primer coat | 6d | 2025-08-18 | 2025-08-23 | 290, 304 |  | 7 day week With NGT Ban | 7582093 |
| 307 | 37200.37300.37500.37900.39000.40300.41300.87400.816300 | Door shutter fixing | 8d | 2025-08-18 | 2025-08-25 | 291, 304 |  | 7 day week With NGT Ban | 7582103 |
| 308 | 37200.37300.37500.37900.39000.40300.41300.87400.816400 | Electrical wiring work | 8d | 2025-08-26 | 2025-09-02 | 292, 307 |  | 7 day week With NGT Ban | 7582113 |
| 309 | 37200.37300.37500.37900.39000.40300.41300.87400.816500 | Painting 1st coat | 8d | 2025-09-03 | 2025-09-10 | 293, 306, 307, 308 |  | 7 day week With NGT Ban | 7582123 |
| 310 | 37200.37300.37500.37900.39000.40300.41300.87400.816600 | False ceiling | 8d | 2025-09-11 | 2025-09-18 | 294, 309 |  | 7 day week With NGT Ban | 7582133 |
| 311 | 37200.37300.37500.37900.39000.40300.41300.87300 | **4th Floor** | 74.25d | 2025-07-14 | 2025-09-26 |  | start no earlier than 2025-07-14 | 7 day week With NGT Ban | 7567753 |
| 312 | 37200.37300.37500.37900.39000.40300.41300.87300.816700 | Block Work | 5d | 2025-07-14 | 2025-07-19 | 227, 296 |  | 7 day week With NGT Ban | 7582143 |
| 313 | 37200.37300.37500.37900.39000.40300.41300.87300.816800 | Door Frame Fixing | 9d | 2025-07-19 | 2025-07-28 | 297, 312 |  | 7 day week With NGT Ban | 7582153 |
| 314 | 37200.37300.37500.37900.39000.40300.41300.87300.816900 | Internal Plumbing Works | 8d | 2025-07-19 | 2025-07-27 | 298, 312 |  | 7 day week With NGT Ban | 7582163 |
| 315 | 37200.37300.37500.37900.39000.40300.41300.87300.817000 | Waterproofing | 10d | 2025-07-27 | 2025-08-06 | 299, 314 |  | 7 day week With NGT Ban | 7582173 |
| 316 | 37200.37300.37500.37900.39000.40300.41300.87300.817100 | Internal Plaster | 5d | 2025-08-06 | 2025-08-11 | 300, 313, 314, 315 |  | 7 day week With NGT Ban | 7582183 |
| 317 | 37200.37300.37500.37900.39000.40300.41300.87300.817200 | IPS flooring work | 10d | 2025-08-11 | 2025-08-21 | 301, 313, 315, 316 |  | 7 day week With NGT Ban | 7582193 |
| 318 | 37200.37300.37500.37900.39000.40300.41300.87300.817300 | Toilet dado work | 8d | 2025-08-11 | 2025-08-19 | 302, 315, 316 |  | 7 day week With NGT Ban | 7582203 |
| 319 | 37200.37300.37500.37900.39000.40300.41300.87300.817400 | Toilet flooring work | 8d | 2025-08-19 | 2025-08-27 | 303, 318 |  | 7 day week With NGT Ban | 7582213 |
| 320 | 37200.37300.37500.37900.39000.40300.41300.87300.817500 | Living dinning flooring | 7d | 2025-08-18 | 2025-08-25 | 304FS+0.25d |  | 7 day week With NGT Ban | 7582223 |
| 321 | 37200.37300.37500.37900.39000.40300.41300.87300.817600 | Aluminium door-window fixing | 7d | 2025-08-25 | 2025-09-01 | 305, 317, 320 |  | 7 day week With NGT Ban | 7582233 |
| 322 | 37200.37300.37500.37900.39000.40300.41300.87300.817700 | Putty primer coat | 6d | 2025-08-25 | 2025-08-31 | 306, 320 |  | 7 day week With NGT Ban | 7582243 |
| 323 | 37200.37300.37500.37900.39000.40300.41300.87300.817800 | Door shutter fixing | 8d | 2025-08-26 | 2025-09-02 | 307, 320 |  | 7 day week With NGT Ban | 7582253 |
| 324 | 37200.37300.37500.37900.39000.40300.41300.87300.817900 | Electrical wiring work | 8d | 2025-09-03 | 2025-09-10 | 308, 323 |  | 7 day week With NGT Ban | 7582263 |
| 325 | 37200.37300.37500.37900.39000.40300.41300.87300.818000 | Painting 1st coat | 8d | 2025-09-11 | 2025-09-18 | 309, 322, 323, 324 |  | 7 day week With NGT Ban | 7582273 |
| 326 | 37200.37300.37500.37900.39000.40300.41300.87300.818100 | False ceiling | 8d | 2025-09-19 | 2025-09-26 | 310, 325 |  | 7 day week With NGT Ban | 7582283 |

| ID | WBS | Task | Duration | Start | Finish | Predecessors | Constraint | Calendar | Unique_Task_ID |
| --- | --- | --- | --- | --- | --- | --- | --- | --- | --- |
| 327 | 37200.37300.37500.37900.39000.40300.41300.87200 | **5th Floor** | 83d | 2025-07-24 | 2025-10-15 |  | start no earlier than 2025-07-24 | 7 day week With NGT Ban | 7567763 |
| 328 | 37200.37300.37500.37900.39000.40300.41300.87200.818200 | Block Work | 5d | 2025-07-24 | 2025-07-29 | 228, 312 |  | 7 day week With NGT Ban | 7582293 |
| 329 | 37200.37300.37500.37900.39000.40300.41300.87200.818300 | Door Frame Fixing | 9d | 2025-07-29 | 2025-08-07 | 313, 328 |  | 7 day week With NGT Ban | 7582303 |
| 330 | 37200.37300.37500.37900.39000.40300.41300.87200.818400 | Internal Plumbing Works | 8d | 2025-07-29 | 2025-08-06 | 314, 328 |  | 7 day week With NGT Ban | 7582313 |
| 331 | 37200.37300.37500.37900.39000.40300.41300.87200.818500 | Waterproofing | 10d | 2025-08-06 | 2025-08-16 | 315, 330 |  | 7 day week With NGT Ban | 7582323 |
| 332 | 37200.37300.37500.37900.39000.40300.41300.87200.818600 | Internal Plaster | 5d | 2025-08-16 | 2025-08-21 | 316, 329, 330, 331 |  | 7 day week With NGT Ban | 7582333 |
| 333 | 37200.37300.37500.37900.39000.40300.41300.87200.818700 | IPS flooring work | 10d | 2025-08-21 | 2025-08-31 | 317, 329, 331, 332 |  | 7 day week With NGT Ban | 7582343 |
| 334 | 37200.37300.37500.37900.39000.40300.41300.87200.818800 | Toilet dado work | 8d | 2025-08-21 | 2025-08-29 | 318, 331, 332 |  | 7 day week With NGT Ban | 7582353 |
| 335 | 37200.37300.37500.37900.39000.40300.41300.87200.818900 | Toilet flooring work | 8d | 2025-08-29 | 2025-09-06 | 319, 334 |  | 7 day week With NGT Ban | 7582363 |
| 336 | 37200.37300.37500.37900.39000.40300.41300.87200.819000 | Living dinning flooring | 7d | 2025-09-06 | 2025-09-13 | 320, 329, 335 |  | 7 day week With NGT Ban | 7582373 |
| 337 | 37200.37300.37500.37900.39000.40300.41300.87200.819100 | Aluminium door-window fixing | 7d | 2025-09-13 | 2025-09-20 | 321, 333, 336 |  | 7 day week With NGT Ban | 7582383 |
| 338 | 37200.37300.37500.37900.39000.40300.41300.87200.819200 | Putty primer coat | 6d | 2025-09-13 | 2025-09-19 | 322, 336 |  | 7 day week With NGT Ban | 7582393 |
| 339 | 37200.37300.37500.37900.39000.40300.41300.87200.819300 | Door shutter fixing | 8d | 2025-09-13 | 2025-09-21 | 323, 336 |  | 7 day week With NGT Ban | 7582403 |
| 340 | 37200.37300.37500.37900.39000.40300.41300.87200.819400 | Electrical wiring work | 8d | 2025-09-21 | 2025-09-29 | 324, 339 |  | 7 day week With NGT Ban | 7582413 |
| 341 | 37200.37300.37500.37900.39000.40300.41300.87200.819500 | Painting 1st coat | 8d | 2025-09-29 | 2025-10-07 | 325, 338, 339, 340 |  | 7 day week With NGT Ban | 7582423 |
| 342 | 37200.37300.37500.37900.39000.40300.41300.87200.819600 | False ceiling | 8d | 2025-10-07 | 2025-10-15 | 326, 341 |  | 7 day week With NGT Ban | 7582433 |
| 343 | 37200.37300.37500.37900.39000.40300.41300.87100 | **6th Floor** | 83d | 2025-08-06 | 2025-10-28 |  | start no earlier than 2025-08-06 | 7 day week With NGT Ban | 7567773 |
| 344 | 37200.37300.37500.37900.39000.40300.41300.87100.819700 | Block Work | 5d | 2025-08-06 | 2025-08-11 | 229, 328 |  | 7 day week With NGT Ban | 7582443 |
| 345 | 37200.37300.37500.37900.39000.40300.41300.87100.819800 | Door Frame Fixing | 9d | 2025-08-07 | 2025-08-16 | 77, 329 |  | 7 day week With NGT Ban | 7582453 |
| 346 | 37200.37300.37500.37900.39000.40300.41300.87100.819900 | Internal Plumbing Works | 8d | 2025-08-11 | 2025-08-19 | 330, 344 |  | 7 day week With NGT Ban | 7582463 |
| 347 | 37200.37300.37500.37900.39000.40300.41300.87100.820000 | Waterproofing | 10d | 2025-08-19 | 2025-08-29 | 331, 346 |  | 7 day week With NGT Ban | 7582473 |
| 348 | 37200.37300.37500.37900.39000.40300.41300.87100.820100 | Internal Plaster | 5d | 2025-08-29 | 2025-09-03 | 332, 345, 346, 347 |  | 7 day week With NGT Ban | 7582483 |
| 349 | 37200.37300.37500.37900.39000.40300.41300.87100.820200 | IPS flooring work | 10d | 2025-09-03 | 2025-09-13 | 333, 345, 347, 348 |  | 7 day week With NGT Ban | 7582493 |
| 350 | 37200.37300.37500.37900.39000.40300.41300.87100.820300 | Toilet dado work | 8d | 2025-09-03 | 2025-09-11 | 334, 347, 348 |  | 7 day week With NGT Ban | 7582503 |
| 351 | 37200.37300.37500.37900.39000.40300.41300.87100.820400 | Toilet flooring work | 8d | 2025-09-11 | 2025-09-19 | 335, 350 |  | 7 day week With NGT Ban | 7582513 |
| 352 | 37200.37300.37500.37900.39000.40300.41300.87100.820500 | Living dinning flooring | 7d | 2025-09-19 | 2025-09-26 | 336, 345, 351 |  | 7 day week With NGT Ban | 7582523 |
| 353 | 37200.37300.37500.37900.39000.40300.41300.87100.820600 | Aluminium door-window fixing | 7d | 2025-09-26 | 2025-10-03 | 337, 349, 352 |  | 7 day week With NGT Ban | 7582533 |
| 354 | 37200.37300.37500.37900.39000.40300.41300.87100.820700 | Putty primer coat | 6d | 2025-09-26 | 2025-10-02 | 338, 352 |  | 7 day week With NGT Ban | 7582543 |
| 355 | 37200.37300.37500.37900.39000.40300.41300.87100.820800 | Door shutter fixing | 8d | 2025-09-26 | 2025-10-04 | 339, 352 |  | 7 day week With NGT Ban | 7582553 |
| 356 | 37200.37300.37500.37900.39000.40300.41300.87100.820900 | Electrical wiring work | 8d | 2025-10-04 | 2025-10-12 | 340, 355 |  | 7 day week With NGT Ban | 7582563 |
| 357 | 37200.37300.37500.37900.39000.40300.41300.87100.821000 | Painting 1st coat | 8d | 2025-10-12 | 2025-10-20 | 341, 354, 355, 356 |  | 7 day week With NGT Ban | 7582573 |
| 358 | 37200.37300.37500.37900.39000.40300.41300.87100.821100 | False ceiling | 8d | 2025-10-20 | 2025-10-28 | 342, 357 |  | 7 day week With NGT Ban | 7582583 |

| ID | WBS | Task | Duration | Start | Finish | Predecessors | Constraint | Calendar | Unique_Task_ID |
| --- | --- | --- | --- | --- | --- | --- | --- | --- | --- |
| 359 | 37200.37300.37500.37900.39000.40300.41300.87000 | **7th Floor** | 83d | 2025-08-16 | 2025-12-22 |  | start no earlier than 2025-08-16 | 7 day week With NGT Ban | 7567783 |
| 360 | 37200.37300.37500.37900.39000.40300.41300.87000.821200 | Block Work | 5d | 2025-08-16 | 2025-08-21 | 230, 344 |  | 7 day week With NGT Ban | 7582593 |
| 361 | 37200.37300.37500.37900.39000.40300.41300.87000.821300 | Door Frame Fixing | 9d | 2025-08-21 | 2025-08-30 | 345, 360 |  | 7 day week With NGT Ban | 7582603 |
| 362 | 37200.37300.37500.37900.39000.40300.41300.87000.821400 | Internal Plumbing Works | 8d | 2025-08-21 | 2025-08-29 | 346, 360 |  | 7 day week With NGT Ban | 7582613 |
| 363 | 37200.37300.37500.37900.39000.40300.41300.87000.821500 | Waterproofing | 10d | 2025-08-29 | 2025-09-08 | 347, 362 |  | 7 day week With NGT Ban | 7582623 |
| 364 | 37200.37300.37500.37900.39000.40300.41300.87000.821600 | Internal Plaster | 5d | 2025-09-08 | 2025-09-13 | 348, 361, 362, 363 |  | 7 day week With NGT Ban | 7582633 |
| 365 | 37200.37300.37500.37900.39000.40300.41300.87000.821700 | IPS flooring work | 10d | 2025-09-13 | 2025-09-23 | 349, 361, 363, 364 |  | 7 day week With NGT Ban | 7582643 |
| 366 | 37200.37300.37500.37900.39000.40300.41300.87000.821800 | Toilet dado work | 8d | 2025-09-13 | 2025-09-21 | 350, 363, 364 |  | 7 day week With NGT Ban | 7582653 |
| 367 | 37200.37300.37500.37900.39000.40300.41300.87000.821900 | Toilet flooring work | 8d | 2025-09-21 | 2025-09-29 | 351, 366 |  | 7 day week With NGT Ban | 7582663 |
| 368 | 37200.37300.37500.37900.39000.40300.41300.87000.822000 | Living dinning flooring | 7d | 2025-09-29 | 2025-10-06 | 352, 361, 367 |  | 7 day week With NGT Ban | 7582673 |
| 369 | 37200.37300.37500.37900.39000.40300.41300.87000.822100 | Aluminium door-window fixing | 7d | 2025-10-06 | 2025-10-13 | 353, 365, 368 |  | 7 day week With NGT Ban | 7582683 |
| 370 | 37200.37300.37500.37900.39000.40300.41300.87000.822200 | Putty primer coat | 6d | 2025-10-06 | 2025-10-12 | 354, 368 |  | 7 day week With NGT Ban | 7582693 |
| 371 | 37200.37300.37500.37900.39000.40300.41300.87000.822300 | Door shutter fixing | 8d | 2025-10-06 | 2025-10-14 | 355, 368 |  | 7 day week With NGT Ban | 7582703 |
| 372 | 37200.37300.37500.37900.39000.40300.41300.87000.822400 | Electrical wiring work | 8d | 2025-10-14 | 2025-10-22 | 356, 371 |  | 7 day week With NGT Ban | 7582713 |
| 373 | 37200.37300.37500.37900.39000.40300.41300.87000.822500 | Painting 1st coat | 8d | 2025-10-22 | 2025-10-30 | 357, 370, 371, 372 |  | 7 day week With NGT Ban | 7582723 |
| 374 | 37200.37300.37500.37900.39000.40300.41300.87000.822600 | False ceiling | 8d | 2025-10-30 | 2025-12-22 | 358, 373 |  | 7 day week With NGT Ban | 7582733 |
| 375 | 37200.37300.37500.37900.39000.40300.41300.86900 | **8th Floor** | 86d | 2025-08-26 | 2026-01-04 |  | start no earlier than 2025-08-26 | 7 day week With NGT Ban | 7567793 |
| 376 | 37200.37300.37500.37900.39000.40300.41300.86900.822700 | Block Work | 8d | 2025-08-26 | 2025-09-03 | 231, 360 |  | 7 day week With NGT Ban | 7582743 |
| 377 | 37200.37300.37500.37900.39000.40300.41300.86900.822800 | Door Frame Fixing | 9d | 2025-09-03 | 2025-09-12 | 361, 376 |  | 7 day week With NGT Ban | 7582753 |
| 378 | 37200.37300.37500.37900.39000.40300.41300.86900.822900 | Internal Plumbing Works | 8d | 2025-09-03 | 2025-09-11 | 362, 376 |  | 7 day week With NGT Ban | 7582763 |
| 379 | 37200.37300.37500.37900.39000.40300.41300.86900.823000 | Waterproofing | 10d | 2025-09-11 | 2025-09-21 | 363, 378 |  | 7 day week With NGT Ban | 7582773 |
| 380 | 37200.37300.37500.37900.39000.40300.41300.86900.823100 | Internal Plaster | 5d | 2025-09-21 | 2025-09-26 | 364, 377, 378, 379 |  | 7 day week With NGT Ban | 7582783 |
| 381 | 37200.37300.37500.37900.39000.40300.41300.86900.823200 | IPS flooring work | 10d | 2025-09-26 | 2025-10-06 | 365, 377, 379, 380 |  | 7 day week With NGT Ban | 7582793 |
| 382 | 37200.37300.37500.37900.39000.40300.41300.86900.823300 | Toilet dado work | 8d | 2025-09-26 | 2025-10-04 | 366, 379, 380 |  | 7 day week With NGT Ban | 7582803 |
| 383 | 37200.37300.37500.37900.39000.40300.41300.86900.823400 | Toilet flooring work | 8d | 2025-10-04 | 2025-10-12 | 367, 382 |  | 7 day week With NGT Ban | 7582813 |
| 384 | 37200.37300.37500.37900.39000.40300.41300.86900.823500 | Living dinning flooring | 7d | 2025-10-12 | 2025-10-19 | 368, 377, 383 |  | 7 day week With NGT Ban | 7582823 |
| 385 | 37200.37300.37500.37900.39000.40300.41300.86900.823600 | Aluminium door-window fixing | 10d | 2025-10-19 | 2025-10-29 | 369, 381, 384 |  | 7 day week With NGT Ban | 7582833 |
| 386 | 37200.37300.37500.37900.39000.40300.41300.86900.823700 | Putty primer coat | 6d | 2025-10-19 | 2025-10-25 | 370, 384 |  | 7 day week With NGT Ban | 7582843 |
| 387 | 37200.37300.37500.37900.39000.40300.41300.86900.823800 | Door shutter fixing | 8d | 2025-10-19 | 2025-10-27 | 371, 384 |  | 7 day week With NGT Ban | 7582853 |
| 388 | 37200.37300.37500.37900.39000.40300.41300.86900.823900 | Electrical wiring work | 8d | 2025-10-27 | 2025-12-19 | 372, 387 |  | 7 day week With NGT Ban | 7582863 |
| 389 | 37200.37300.37500.37900.39000.40300.41300.86900.824000 | Painting 1st coat | 8d | 2025-12-19 | 2025-12-27 | 373, 386, 387, 388 |  | 7 day week With NGT Ban | 7582873 |
| 390 | 37200.37300.37500.37900.39000.40300.41300.86900.824100 | False ceiling | 8d | 2025-12-27 | 2026-01-04 | 374, 389 |  | 7 day week With NGT Ban | 7582883 |

| ID | WBS | Task | Duration | Start | Finish | Predecessors | Constraint | Calendar | Unique_Task_ID |
| --- | --- | --- | --- | --- | --- | --- | --- | --- | --- |
| 391 | 37200.37300.37500.37900.39000.40300.41300.86800 | **9th Floor** | 86d | 2025-09-05 | 2026-01-14 |  | start no earlier than 2025-09-05 | 7 day week With NGT Ban | 7567803 |
| 392 | 37200.37300.37500.37900.39000.40300.41300.86800.824200 | Block Work | 8d | 2025-09-05 | 2025-09-13 | 232, 376 |  | 7 day week With NGT Ban | 7582893 |
| 393 | 37200.37300.37500.37900.39000.40300.41300.86800.824300 | Door Frame Fixing | 9d | 2025-09-13 | 2025-09-22 | 377, 392 |  | 7 day week With NGT Ban | 7582903 |
| 394 | 37200.37300.37500.37900.39000.40300.41300.86800.824400 | Internal Plumbing Works | 8d | 2025-09-13 | 2025-09-21 | 378, 392 |  | 7 day week With NGT Ban | 7582913 |
| 395 | 37200.37300.37500.37900.39000.40300.41300.86800.824500 | Waterproofing | 10d | 2025-09-21 | 2025-10-01 | 379, 394 |  | 7 day week With NGT Ban | 7582923 |
| 396 | 37200.37300.37500.37900.39000.40300.41300.86800.824600 | Internal Plaster | 5d | 2025-10-01 | 2025-10-06 | 380, 393, 394, 395 |  | 7 day week With NGT Ban | 7582933 |
| 397 | 37200.37300.37500.37900.39000.40300.41300.86800.824700 | IPS flooring work | 10d | 2025-10-06 | 2025-10-16 | 381, 393, 395, 396 |  | 7 day week With NGT Ban | 7582943 |
| 398 | 37200.37300.37500.37900.39000.40300.41300.86800.824800 | Toilet dado work | 8d | 2025-10-06 | 2025-10-14 | 382, 395, 396 |  | 7 day week With NGT Ban | 7582953 |
| 399 | 37200.37300.37500.37900.39000.40300.41300.86800.824900 | Toilet flooring work | 8d | 2025-10-14 | 2025-10-22 | 383, 398 |  | 7 day week With NGT Ban | 7582963 |
| 400 | 37200.37300.37500.37900.39000.40300.41300.86800.825000 | Living dinning flooring | 7d | 2025-10-22 | 2025-10-29 | 384, 393, 399 |  | 7 day week With NGT Ban | 7582973 |
| 401 | 37200.37300.37500.37900.39000.40300.41300.86800.825100 | Aluminium door-window fixing | 10d | 2025-10-29 | 2025-12-23 | 385, 397, 400 |  | 7 day week With NGT Ban | 7582983 |
| 402 | 37200.37300.37500.37900.39000.40300.41300.86800.825200 | Putty primer coat | 6d | 2025-10-29 | 2025-12-19 | 386, 400 |  | 7 day week With NGT Ban | 7582993 |
| 403 | 37200.37300.37500.37900.39000.40300.41300.86800.825300 | Door shutter fixing | 8d | 2025-10-29 | 2025-12-21 | 387, 400 |  | 7 day week With NGT Ban | 7583003 |
| 404 | 37200.37300.37500.37900.39000.40300.41300.86800.825400 | Electrical wiring work | 8d | 2025-12-21 | 2025-12-29 | 388, 403 |  | 7 day week With NGT Ban | 7583013 |
| 405 | 37200.37300.37500.37900.39000.40300.41300.86800.825500 | Painting 1st coat | 8d | 2025-12-29 | 2026-01-06 | 389, 402, 403, 404 |  | 7 day week With NGT Ban | 7583023 |
| 406 | 37200.37300.37500.37900.39000.40300.41300.86800.825600 | False ceiling | 8d | 2026-01-06 | 2026-01-14 | 390, 405 |  | 7 day week With NGT Ban | 7583033 |
| 407 | 37200.37300.37500.37900.39000.40300.41300.86700 | **10th Floor** | 86d | 2025-09-15 | 2026-01-24 |  | start no earlier than 2025-09-15 | 7 day week With NGT Ban | 7567813 |
| 408 | 37200.37300.37500.37900.39000.40300.41300.86700.825700 | Block Work | 8d | 2025-09-15 | 2025-09-23 | 233, 392 |  | 7 day week With NGT Ban | 7583043 |
| 409 | 37200.37300.37500.37900.39000.40300.41300.86700.825800 | Door Frame Fixing | 9d | 2025-09-23 | 2025-10-02 | 393, 408 |  | 7 day week With NGT Ban | 7583053 |
| 410 | 37200.37300.37500.37900.39000.40300.41300.86700.825900 | Internal Plumbing Works | 8d | 2025-09-23 | 2025-10-01 | 394, 408 |  | 7 day week With NGT Ban | 7583063 |
| 411 | 37200.37300.37500.37900.39000.40300.41300.86700.826000 | Waterproofing | 10d | 2025-10-01 | 2025-10-11 | 395, 410 |  | 7 day week With NGT Ban | 7583073 |
| 412 | 37200.37300.37500.37900.39000.40300.41300.86700.826100 | Internal Plaster | 5d | 2025-10-11 | 2025-10-16 | 396, 409, 410, 411 |  | 7 day week With NGT Ban | 7583083 |
| 413 | 37200.37300.37500.37900.39000.40300.41300.86700.826200 | IPS flooring work | 10d | 2025-10-16 | 2025-10-26 | 397, 409, 411, 412 |  | 7 day week With NGT Ban | 7583093 |
| 414 | 37200.37300.37500.37900.39000.40300.41300.86700.826300 | Toilet dado work | 8d | 2025-10-16 | 2025-10-24 | 398, 411, 412 |  | 7 day week With NGT Ban | 7583103 |
| 415 | 37200.37300.37500.37900.39000.40300.41300.86700.826400 | Toilet flooring work | 8d | 2025-10-24 | 2025-12-16 | 399, 414 |  | 7 day week With NGT Ban | 7583113 |
| 416 | 37200.37300.37500.37900.39000.40300.41300.86700.826500 | Living dinning flooring | 7d | 2025-12-16 | 2025-12-23 | 400, 409, 415 |  | 7 day week With NGT Ban | 7583123 |
| 417 | 37200.37300.37500.37900.39000.40300.41300.86700.826600 | Aluminium door-window fixing | 10d | 2025-12-23 | 2026-01-02 | 401, 413, 416 |  | 7 day week With NGT Ban | 7583133 |
| 418 | 37200.37300.37500.37900.39000.40300.41300.86700.826700 | Putty primer coat | 6d | 2025-12-23 | 2025-12-29 | 402, 416 |  | 7 day week With NGT Ban | 7583143 |
| 419 | 37200.37300.37500.37900.39000.40300.41300.86700.826800 | Door shutter fixing | 8d | 2025-12-23 | 2025-12-31 | 403, 416 |  | 7 day week With NGT Ban | 7583153 |
| 420 | 37200.37300.37500.37900.39000.40300.41300.86700.826900 | Electrical wiring work | 8d | 2025-12-31 | 2026-01-08 | 404, 419 |  | 7 day week With NGT Ban | 7583163 |
| 421 | 37200.37300.37500.37900.39000.40300.41300.86700.827000 | Painting 1st coat | 8d | 2026-01-08 | 2026-01-16 | 405, 418, 419, 420 |  | 7 day week With NGT Ban | 7583173 |
| 422 | 37200.37300.37500.37900.39000.40300.41300.86700.827100 | False ceiling | 8d | 2026-01-16 | 2026-01-24 | 406, 421 |  | 7 day week With NGT Ban | 7583183 |

| ID | WBS | Task | Duration | Start | Finish | Predecessors | Constraint | Calendar | Unique_Task_ID |
| --- | --- | --- | --- | --- | --- | --- | --- | --- | --- |
| 423 | 37200.37300.37500.37900.39000.40300.41300.86600 | **11th Floor** | 86d | 2025-09-25 | 2026-02-03 |  | start no earlier than 2025-09-25 | 7 day week With NGT Ban | 7567823 |
| 424 | 37200.37300.37500.37900.39000.40300.41300.86600.827200 | Block Work | 8d | 2025-09-25 | 2025-10-03 | 234, 408 |  | 7 day week With NGT Ban | 7583193 |
| 425 | 37200.37300.37500.37900.39000.40300.41300.86600.827300 | Door Frame Fixing | 9d | 2025-10-03 | 2025-10-12 | 409, 424 |  | 7 day week With NGT Ban | 7583203 |
| 426 | 37200.37300.37500.37900.39000.40300.41300.86600.827400 | Internal Plumbing Works | 8d | 2025-10-03 | 2025-10-11 | 410, 424 |  | 7 day week With NGT Ban | 7583213 |
| 427 | 37200.37300.37500.37900.39000.40300.41300.86600.827500 | Waterproofing | 10d | 2025-10-11 | 2025-10-21 | 411, 426 |  | 7 day week With NGT Ban | 7583223 |
| 428 | 37200.37300.37500.37900.39000.40300.41300.86600.827600 | Internal Plaster | 5d | 2025-10-21 | 2025-10-26 | 412, 425, 426, 427 |  | 7 day week With NGT Ban | 7583233 |
| 429 | 37200.37300.37500.37900.39000.40300.41300.86600.827700 | IPS flooring work | 10d | 2025-10-26 | 2025-12-20 | 413, 425, 426, 427 |  | 7 day week With NGT Ban | 7583243 |
| 430 | 37200.37300.37500.37900.39000.40300.41300.86600.827800 | Toilet dado work | 8d | 2025-10-26 | 2025-12-18 | 414, 427, 428 |  | 7 day week With NGT Ban | 7583253 |
| 431 | 37200.37300.37500.37900.39000.40300.41300.86600.827900 | Toilet flooring work | 8d | 2025-12-18 | 2025-12-26 | 415, 430 |  | 7 day week With NGT Ban | 7583263 |
| 432 | 37200.37300.37500.37900.39000.40300.41300.86600.828000 | Living dinning flooring | 7d | 2025-12-26 | 2026-01-02 | 416, 425, 431 |  | 7 day week With NGT Ban | 7583273 |
| 433 | 37200.37300.37500.37900.39000.40300.41300.86600.828100 | Aluminium door-window fixing | 10d | 2026-01-02 | 2026-01-12 | 417, 429, 432 |  | 7 day week With NGT Ban | 7583283 |
| 434 | 37200.37300.37500.37900.39000.40300.41300.86600.828200 | Putty primer coat | 6d | 2026-01-02 | 2026-01-08 | 418, 432 |  | 7 day week With NGT Ban | 7583293 |
| 435 | 37200.37300.37500.37900.39000.40300.41300.86600.828300 | Door shutter fixing | 8d | 2026-01-02 | 2026-01-10 | 419, 432 |  | 7 day week With NGT Ban | 7583303 |
| 436 | 37200.37300.37500.37900.39000.40300.41300.86600.828400 | Electrical wiring work | 8d | 2026-01-10 | 2026-01-18 | 420, 435 |  | 7 day week With NGT Ban | 7583313 |
| 437 | 37200.37300.37500.37900.39000.40300.41300.86600.828500 | Painting 1st coat | 8d | 2026-01-18 | 2026-01-26 | 421, 434, 435, 436 |  | 7 day week With NGT Ban | 7583323 |
| 438 | 37200.37300.37500.37900.39000.40300.41300.86600.828600 | False ceiling | 8d | 2026-01-26 | 2026-02-03 | 422, 437 |  | 7 day week With NGT Ban | 7583333 |
| 439 | 37200.37300.37500.37900.39000.40300.41300.86500 | **12th Floor** | 86d | 2025-10-05 | 2026-02-13 |  | start no earlier than 2025-10-05 | 7 day week With NGT Ban | 7567833 |
| 440 | 37200.37300.37500.37900.39000.40300.41300.86500.828700 | Block Work | 8d | 2025-10-05 | 2025-10-13 | 235, 424 |  | 7 day week With NGT Ban | 7583343 |
| 441 | 37200.37300.37500.37900.39000.40300.41300.86500.828800 | Door Frame Fixing | 9d | 2025-10-13 | 2025-10-22 | 425, 440 |  | 7 day week With NGT Ban | 7583353 |
| 442 | 37200.37300.37500.37900.39000.40300.41300.86500.828900 | Internal Plumbing Works | 8d | 2025-10-13 | 2025-10-21 | 426, 440 |  | 7 day week With NGT Ban | 7583363 |
| 443 | 37200.37300.37500.37900.39000.40300.41300.86500.829000 | Waterproofing | 10d | 2025-10-21 | 2025-10-31 | 427, 442 |  | 7 day week With NGT Ban | 7583373 |
| 444 | 37200.37300.37500.37900.39000.40300.41300.86500.829100 | Internal Plaster | 5d | 2025-10-31 | 2025-12-20 | 428, 441, 442, 443 |  | 7 day week With NGT Ban | 7583383 |
| 445 | 37200.37300.37500.37900.39000.40300.41300.86500.829200 | IPS flooring work | 10d | 2025-12-20 | 2025-12-30 | 429, 441, 442, 443 |  | 7 day week With NGT Ban | 7583393 |
| 446 | 37200.37300.37500.37900.39000.40300.41300.86500.829300 | Toilet dado work | 8d | 2025-12-20 | 2025-12-28 | 430, 443, 444 |  | 7 day week With NGT Ban | 7583403 |
| 447 | 37200.37300.37500.37900.39000.40300.41300.86500.829400 | Toilet flooring work | 8d | 2025-12-28 | 2026-01-05 | 431, 446 |  | 7 day week With NGT Ban | 7583413 |
| 448 | 37200.37300.37500.37900.39000.40300.41300.86500.829500 | Living dinning flooring | 7d | 2026-01-05 | 2026-01-12 | 432, 441, 447 |  | 7 day week With NGT Ban | 7583423 |
| 449 | 37200.37300.37500.37900.39000.40300.41300.86500.829600 | Aluminium door-window fixing | 10d | 2026-01-12 | 2026-01-22 | 433, 445, 448 |  | 7 day week With NGT Ban | 7583433 |
| 450 | 37200.37300.37500.37900.39000.40300.41300.86500.829700 | Putty primer coat | 6d | 2026-01-12 | 2026-01-18 | 434, 448 |  | 7 day week With NGT Ban | 7583443 |
| 451 | 37200.37300.37500.37900.39000.40300.41300.86500.829800 | Door shutter fixing | 8d | 2026-01-12 | 2026-01-20 | 435, 448 |  | 7 day week With NGT Ban | 7583453 |
| 452 | 37200.37300.37500.37900.39000.40300.41300.86500.829900 | Electrical wiring work | 8d | 2026-01-20 | 2026-01-28 | 436, 451 |  | 7 day week With NGT Ban | 7583463 |
| 453 | 37200.37300.37500.37900.39000.40300.41300.86500.830000 | Painting 1st coat | 8d | 2026-01-28 | 2026-02-05 | 437, 450, 451, 452 |  | 7 day week With NGT Ban | 7583473 |
| 454 | 37200.37300.37500.37900.39000.40300.41300.86500.830100 | False ceiling | 8d | 2026-02-05 | 2026-02-13 | 438, 453 |  | 7 day week With NGT Ban | 7583483 |

| ID | WBS | Task | Duration | Start | Finish | Predecessors | Constraint | Calendar | Unique_Task_ID |
| --- | --- | --- | --- | --- | --- | --- | --- | --- | --- |
| 455 | 37200.37300.37500.37900.39000.40300.41300.86400 | **13th Floor** | 86d | 2025-10-15 | 2026-02-23 |  | start no earlier than 2025-10-15 | 7 day week With NGT Ban | 7567843 |
| 456 | 37200.37300.37500.37900.39000.40300.41300.86400.830200 | Block Work | 8d | 2025-10-15 | 2025-10-23 | 236, 440 |  | 7 day week With NGT Ban | 7583493 |
| 457 | 37200.37300.37500.37900.39000.40300.41300.86400.830300 | Door Frame Fixing | 9d | 2025-10-23 | 2025-12-16 | 441, 456 |  | 7 day week With NGT Ban | 7583503 |
| 458 | 37200.37300.37500.37900.39000.40300.41300.86400.830400 | Internal Plumbing Works | 8d | 2025-10-23 | 2025-10-31 | 442, 456 |  | 7 day week With NGT Ban | 7583513 |
| 459 | 37200.37300.37500.37900.39000.40300.41300.86400.830500 | Waterproofing | 10d | 2025-10-31 | 2025-12-25 | 443, 458 |  | 7 day week With NGT Ban | 7583523 |
| 460 | 37200.37300.37500.37900.39000.40300.41300.86400.830600 | Internal Plaster | 5d | 2025-12-25 | 2025-12-30 | 444, 457, 458, 459 |  | 7 day week With NGT Ban | 7583533 |
| 461 | 37200.37300.37500.37900.39000.40300.41300.86400.830700 | IPS flooring work | 10d | 2025-12-30 | 2026-01-09 | 445, 457, 459, 460 |  | 7 day week With NGT Ban | 7583543 |
| 462 | 37200.37300.37500.37900.39000.40300.41300.86400.830800 | Toilet dado work | 8d | 2025-12-30 | 2026-01-07 | 446, 459, 460 |  | 7 day week With NGT Ban | 7583553 |
| 463 | 37200.37300.37500.37900.39000.40300.41300.86400.830900 | Toilet flooring work | 8d | 2026-01-07 | 2026-01-15 | 447, 462 |  | 7 day week With NGT Ban | 7583563 |
| 464 | 37200.37300.37500.37900.39000.40300.41300.86400.831000 | Living dinning flooring | 7d | 2026-01-15 | 2026-01-22 | 448, 457, 463 |  | 7 day week With NGT Ban | 7583573 |
| 465 | 37200.37300.37500.37900.39000.40300.41300.86400.831100 | Aluminium door-window fixing | 12d | 2026-01-22 | 2026-02-03 | 449, 461, 464 |  | 7 day week With NGT Ban | 7583583 |
| 466 | 37200.37300.37500.37900.39000.40300.41300.86400.831200 | Putty primer coat | 6d | 2026-01-22 | 2026-01-28 | 450, 464 |  | 7 day week With NGT Ban | 7583593 |
| 467 | 37200.37300.37500.37900.39000.40300.41300.86400.831300 | Door shutter fixing | 8d | 2026-01-22 | 2026-01-30 | 451, 464 |  | 7 day week With NGT Ban | 7583603 |
| 468 | 37200.37300.37500.37900.39000.40300.41300.86400.831400 | Electrical wiring work | 8d | 2026-01-30 | 2026-02-07 | 452, 467 |  | 7 day week With NGT Ban | 7583613 |
| 469 | 37200.37300.37500.37900.39000.40300.41300.86400.831500 | Painting 1st coat | 8d | 2026-02-07 | 2026-02-15 | 453, 466, 467, 468 |  | 7 day week With NGT Ban | 7583623 |
| 470 | 37200.37300.37500.37900.39000.40300.41300.86400.831600 | False ceiling | 8d | 2026-02-15 | 2026-02-23 | 454, 469 |  | 7 day week With NGT Ban | 7583633 |
| 471 | 37200.37300.37500.37900.39000.40300.41300.86300 | **14th Floor** | 85.75d | 2025-10-24 | 2026-03-03 |  | start no earlier than 2025-10-24 | 7 day week With NGT Ban | 7567853 |
| 472 | 37200.37300.37500.37900.39000.40300.41300.86300.831700 | Block Work | 5d | 2025-10-24 | 2025-10-28 | 456FS+0.25d |  | 7 day week With NGT Ban | 7583643 |
| 473 | 37200.37300.37500.37900.39000.40300.41300.86300.831800 | Door Frame Fixing | 9d | 2025-12-16 | 2025-12-25 | 457, 472 |  | 7 day week With NGT Ban | 7583653 |
| 474 | 37200.37300.37500.37900.39000.40300.41300.86300.831900 | Internal Plumbing Works | 8d | 2025-10-31 | 2025-12-23 | 458, 472 |  | 7 day week With NGT Ban | 7583663 |
| 475 | 37200.37300.37500.37900.39000.40300.41300.86300.832000 | Waterproofing | 10d | 2025-12-25 | 2026-01-04 | 459, 474 |  | 7 day week With NGT Ban | 7583673 |
| 476 | 37200.37300.37500.37900.39000.40300.41300.86300.832100 | Internal Plaster | 5d | 2025-12-31 | 2026-01-04 | 460FS+0.25d |  | 7 day week With NGT Ban | 7583683 |
| 477 | 37200.37300.37500.37900.39000.40300.41300.86300.832200 | IPS flooring work | 10d | 2026-01-10 | 2026-01-19 | 461FS+0.25d |  | 7 day week With NGT Ban | 7583693 |
| 478 | 37200.37300.37500.37900.39000.40300.41300.86300.832300 | Toilet dado work | 8d | 2026-01-07 | 2026-01-15 | 462, 475, 476 |  | 7 day week With NGT Ban | 7583703 |
| 479 | 37200.37300.37500.37900.39000.40300.41300.86300.832400 | Toilet flooring work | 8d | 2026-01-15 | 2026-01-23 | 463, 478 |  | 7 day week With NGT Ban | 7583713 |
| 480 | 37200.37300.37500.37900.39000.40300.41300.86300.832500 | Living dinning flooring | 7d | 2026-01-23 | 2026-01-29 | 464FS+0.25d |  | 7 day week With NGT Ban | 7583723 |
| 481 | 37200.37300.37500.37900.39000.40300.41300.86300.832600 | Aluminium door-window fixing | 10d | 2026-02-04 | 2026-02-13 | 465FS+0.25d |  | 7 day week With NGT Ban | 7583733 |
| 482 | 37200.37300.37500.37900.39000.40300.41300.86300.832700 | Putty primer coat | 6d | 2026-01-30 | 2026-02-04 | 466, 480 |  | 7 day week With NGT Ban | 7583743 |
| 483 | 37200.37300.37500.37900.39000.40300.41300.86300.832800 | Door shutter fixing | 8d | 2026-01-30 | 2026-02-07 | 467, 480 |  | 7 day week With NGT Ban | 7583753 |
| 484 | 37200.37300.37500.37900.39000.40300.41300.86300.832900 | Electrical wiring work | 8d | 2026-02-07 | 2026-02-15 | 468, 483 |  | 7 day week With NGT Ban | 7583763 |
| 485 | 37200.37300.37500.37900.39000.40300.41300.86300.833000 | Painting 1st coat | 8d | 2026-02-15 | 2026-02-23 | 469, 482, 483, 484 |  | 7 day week With NGT Ban | 7583773 |
| 486 | 37200.37300.37500.37900.39000.40300.41300.86300.833100 | False ceiling | 8d | 2026-02-23 | 2026-03-03 | 470, 485 |  | 7 day week With NGT Ban | 7583783 |

| ID | WBS | Task | Duration | Start | Finish | Predecessors | Constraint | Calendar | Unique_Task_ID |
| --- | --- | --- | --- | --- | --- | --- | --- | --- | --- |
| 487 | 37200.37300.37500.37900.39000.40300.41300.86200 | **15th Floor** | 92.81d | 2025-10-29 | 2026-03-16 |  | start no earlier than 2025-10-29 | 7 day week With NGT Ban | 7567863 |
| 488 | 37200.37300.37500.37900.39000.40300.41300.86200.833200 | Block Work | 8d | 2025-10-29 | 2025-12-21 | 472FS+0.25d |  | 7 day week With NGT Ban | 7583793 |
| 489 | 37200.37300.37500.37900.39000.40300.41300.86200.833300 | Door Frame Fixing | 9d | 2025-12-25 | 2026-01-03 | 473, 488 |  | 7 day week With NGT Ban | 7583803 |
| 490 | 37200.37300.37500.37900.39000.40300.41300.86200.833400 | Internal Plumbing Works | 8d | 2025-12-23 | 2025-12-31 | 474, 488 |  | 7 day week With NGT Ban | 7583813 |
| 491 | 37200.37300.37500.37900.39000.40300.41300.86200.833500 | Waterproofing | 10d | 2026-01-04 | 2026-01-14 | 475, 490 |  | 7 day week With NGT Ban | 7583823 |
| 492 | 37200.37300.37500.37900.39000.40300.41300.86200.833600 | Internal Plaster | 53.81d | 2026-01-05 | 2026-02-28 | 476FS+0.25d |  | 7 day week With NGT Ban | 7583833 |
| 493 | 37200.37300.37500.37900.39000.40300.41300.86200.833700 | IPS flooring work | 10d | 2026-01-20 | 2026-01-29 | 477, 489, 490, 491 |  | 7 day week With NGT Ban | 7583843 |
| 494 | 37200.37300.37500.37900.39000.40300.41300.86200.833800 | Toilet dado work | 8d | 2026-02-28 | 2026-03-08 | 478, 491, 492 |  | 7 day week With NGT Ban | 7583853 |
| 495 | 37200.37300.37500.37900.39000.40300.41300.86200.833900 | Toilet flooring work | 8d | 2026-03-08 | 2026-03-16 | 479, 494 |  | 7 day week With NGT Ban | 7583863 |
| 496 | 37200.37300.37500.37900.39000.40300.41300.86200.834000 | Living dinning flooring | 7d | 2026-01-30 | 2026-02-06 | 480FS+0.25d |  | 7 day week With NGT Ban | 7583873 |
| 497 | 37200.37300.37500.37900.39000.40300.41300.86200.834100 | Aluminium door-window fixing | 10d | 2026-02-14 | 2026-02-24 | 481FS+0.25d |  | 7 day week With NGT Ban | 7583883 |
| 498 | 37200.37300.37500.37900.39000.40300.41300.86200.834200 | Putty primer coat | 6d | 2026-02-06 | 2026-02-12 | 482, 496 |  | 7 day week With NGT Ban | 7583893 |
| 499 | 37200.37300.37500.37900.39000.40300.41300.86200.834300 | Door shutter fixing | 8d | 2026-02-07 | 2026-02-15 | 483, 496 |  | 7 day week With NGT Ban | 7583903 |
| 500 | 37200.37300.37500.37900.39000.40300.41300.86200.834400 | Electrical wiring work | 8d | 2026-02-15 | 2026-02-23 | 484, 499 |  | 7 day week With NGT Ban | 7583913 |
| 501 | 37200.37300.37500.37900.39000.40300.41300.86200.834500 | Painting 1st coat | 8d | 2026-02-23 | 2026-03-03 | 485, 498, 499, 500 |  | 7 day week With NGT Ban | 7583923 |
| 502 | 37200.37300.37500.37900.39000.40300.41300.86200.834600 | False ceiling | 8d | 2026-03-03 | 2026-03-11 | 486, 501 |  | 7 day week With NGT Ban | 7583933 |
| 503 | 37200.37300.37500.37900.39000.40300.41300.86100 | **16th Floor** | 92.56d | 2025-12-21 | 2026-03-24 |  | start no earlier than 2025-12-21 | 7 day week With NGT Ban | 7567873 |
| 504 | 37200.37300.37500.37900.39000.40300.41300.86100.834700 | Block Work | 8d | 2025-12-21 | 2025-12-29 | 488FS+0.25d |  | 7 day week With NGT Ban | 7583943 |
| 505 | 37200.37300.37500.37900.39000.40300.41300.86100.834800 | Door Frame Fixing | 9d | 2026-01-03 | 2026-01-12 | 489, 504 |  | 7 day week With NGT Ban | 7583953 |
| 506 | 37200.37300.37500.37900.39000.40300.41300.86100.834900 | Internal Plumbing Works | 8d | 2025-12-31 | 2026-01-08 | 490, 504 |  | 7 day week With NGT Ban | 7583963 |
| 507 | 37200.37300.37500.37900.39000.40300.41300.86100.835000 | Waterproofing | 10d | 2026-01-14 | 2026-01-24 | 491, 506 |  | 7 day week With NGT Ban | 7583973 |
| 508 | 37200.37300.37500.37900.39000.40300.41300.86100.835100 | Internal Plaster | 5d | 2026-02-28 | 2026-03-05 | 492FS+0.25d |  | 7 day week With NGT Ban | 7583983 |
| 509 | 37200.37300.37500.37900.39000.40300.41300.86100.835200 | IPS flooring work | 10d | 2026-01-30 | 2026-02-08 | 493, 505, 506, 507 |  | 7 day week With NGT Ban | 7583993 |
| 510 | 37200.37300.37500.37900.39000.40300.41300.86100.835300 | Toilet dado work | 8d | 2026-03-08 | 2026-03-16 | 494, 507, 508 |  | 7 day week With NGT Ban | 7584003 |
| 511 | 37200.37300.37500.37900.39000.40300.41300.86100.835400 | Toilet flooring work | 8d | 2026-03-16 | 2026-03-24 | 495, 510 |  | 7 day week With NGT Ban | 7584013 |
| 512 | 37200.37300.37500.37900.39000.40300.41300.86100.835500 | Living dinning flooring | 7d | 2026-02-06 | 2026-02-13 | 496FS+0.25d |  | 7 day week With NGT Ban | 7584023 |
| 513 | 37200.37300.37500.37900.39000.40300.41300.86100.835600 | Aluminium door-window fixing | 10d | 2026-02-24 | 2026-03-06 | 497FS+0.25d |  | 7 day week With NGT Ban | 7584033 |
| 514 | 37200.37300.37500.37900.39000.40300.41300.86100.835700 | Putty primer coat | 6d | 2026-02-13 | 2026-02-19 | 498, 512 |  | 7 day week With NGT Ban | 7584043 |
| 515 | 37200.37300.37500.37900.39000.40300.41300.86100.835800 | Door shutter fixing | 8d | 2026-02-15 | 2026-02-23 | 499, 512 |  | 7 day week With NGT Ban | 7584053 |
| 516 | 37200.37300.37500.37900.39000.40300.41300.86100.835900 | Electrical wiring work | 8d | 2026-02-23 | 2026-03-03 | 500, 515 |  | 7 day week With NGT Ban | 7584063 |
| 517 | 37200.37300.37500.37900.39000.40300.41300.86100.836000 | Painting 1st coat | 8d | 2026-03-03 | 2026-03-11 | 501, 514, 515, 516 |  | 7 day week With NGT Ban | 7584073 |
| 518 | 37200.37300.37500.37900.39000.40300.41300.86100.836100 | False ceiling | 8d | 2026-03-11 | 2026-03-19 | 502, 517 |  | 7 day week With NGT Ban | 7584083 |

| ID | WBS | Task | Duration | Start | Finish | Predecessors | Constraint | Calendar | Unique_Task_ID |
| --- | --- | --- | --- | --- | --- | --- | --- | --- | --- |
| 519 | 37200.37300.37500.37900.39000.40300.41300.86000 | **17th Floor** | 92.31d | 2025-12-29 | 2026-04-01 |  | start no earlier than 2025-12-29 | 7 day week With NGT Ban | 7567883 |
| 520 | 37200.37300.37500.37900.39000.40300.41300.86000.836200 | Block Work | 8d | 2025-12-29 | 2026-01-06 | 504FS+0.25d |  | 7 day week With NGT Ban | 7584093 |
| 521 | 37200.37300.37500.37900.39000.40300.41300.86000.836300 | Door Frame Fixing | 9d | 2026-01-12 | 2026-01-21 | 505, 520 |  | 7 day week With NGT Ban | 7584103 |
| 522 | 37200.37300.37500.37900.39000.40300.41300.86000.836400 | Internal Plumbing Works | 8d | 2026-01-08 | 2026-01-16 | 506, 520 |  | 7 day week With NGT Ban | 7584113 |
| 523 | 37200.37300.37500.37900.39000.40300.41300.86000.836500 | Waterproofing | 10d | 2026-01-24 | 2026-02-03 | 507, 522 |  | 7 day week With NGT Ban | 7584123 |
| 524 | 37200.37300.37500.37900.39000.40300.41300.86000.836600 | Internal Plaster | 5d | 2026-03-05 | 2026-03-10 | 508FS+0.25d |  | 7 day week With NGT Ban | 7584133 |
| 525 | 37200.37300.37500.37900.39000.40300.41300.86000.836700 | IPS flooring work | 10d | 2026-02-09 | 2026-02-18 | 509, 521, 522, 523 |  | 7 day week With NGT Ban | 7584143 |
| 526 | 37200.37300.37500.37900.39000.40300.41300.86000.836800 | Toilet dado work | 8d | 2026-03-16 | 2026-03-24 | 510, 523, 524 |  | 7 day week With NGT Ban | 7584153 |
| 527 | 37200.37300.37500.37900.39000.40300.41300.86000.836900 | Toilet flooring work | 8d | 2026-03-24 | 2026-04-01 | 511, 526 |  | 7 day week With NGT Ban | 7584163 |
| 528 | 37200.37300.37500.37900.39000.40300.41300.86000.837000 | Living dinning flooring | 7d | 2026-02-13 | 2026-02-20 | 512FS+0.25d |  | 7 day week With NGT Ban | 7584173 |
| 529 | 37200.37300.37500.37900.39000.40300.41300.86000.837100 | Aluminium door-window fixing | 10d | 2026-03-06 | 2026-03-16 | 513FS+0.25d |  | 7 day week With NGT Ban | 7584183 |
| 530 | 37200.37300.37500.37900.39000.40300.41300.86000.837200 | Putty primer coat | 6d | 2026-02-20 | 2026-02-26 | 514, 528 |  | 7 day week With NGT Ban | 7584193 |
| 531 | 37200.37300.37500.37900.39000.40300.41300.86000.837300 | Door shutter fixing | 8d | 2026-02-23 | 2026-03-03 | 515, 528 |  | 7 day week With NGT Ban | 7584203 |
| 532 | 37200.37300.37500.37900.39000.40300.41300.86000.837400 | Electrical wiring work | 8d | 2026-03-03 | 2026-03-11 | 516, 531 |  | 7 day week With NGT Ban | 7584213 |
| 533 | 37200.37300.37500.37900.39000.40300.41300.86000.837500 | Painting 1st coat | 8d | 2026-03-11 | 2026-03-19 | 517, 530, 531, 532 |  | 7 day week With NGT Ban | 7584223 |
| 534 | 37200.37300.37500.37900.39000.40300.41300.86000.837600 | False ceiling | 8d | 2026-03-19 | 2026-03-27 | 518, 533 |  | 7 day week With NGT Ban | 7584233 |
| 535 | 37200.37300.37500.37900.39000.40300.41300.85900 | **18th Floor** | 92.06d | 2026-01-07 | 2026-04-09 |  | start no earlier than 2026-01-07 | 7 day week With NGT Ban | 7567893 |
| 536 | 37200.37300.37500.37900.39000.40300.41300.85900.837700 | Block Work | 8d | 2026-01-07 | 2026-01-14 | 520FS+0.25d |  | 7 day week With NGT Ban | 7584243 |
| 537 | 37200.37300.37500.37900.39000.40300.41300.85900.837800 | Door Frame Fixing | 9d | 2026-01-21 | 2026-01-30 | 521, 536 |  | 7 day week With NGT Ban | 7584253 |
| 538 | 37200.37300.37500.37900.39000.40300.41300.85900.837900 | Internal Plumbing Works | 8d | 2026-01-16 | 2026-01-24 | 522, 536 |  | 7 day week With NGT Ban | 7584263 |
| 539 | 37200.37300.37500.37900.39000.40300.41300.85900.838000 | Waterproofing | 10d | 2026-02-03 | 2026-02-13 | 523, 538 |  | 7 day week With NGT Ban | 7584273 |
| 540 | 37200.37300.37500.37900.39000.40300.41300.85900.838100 | Internal Plaster | 5d | 2026-03-10 | 2026-03-15 | 524FS+0.25d |  | 7 day week With NGT Ban | 7584283 |
| 541 | 37200.37300.37500.37900.39000.40300.41300.85900.838200 | IPS flooring work | 10d | 2026-02-19 | 2026-02-28 | 525, 537, 538, 539 |  | 7 day week With NGT Ban | 7584293 |
| 542 | 37200.37300.37500.37900.39000.40300.41300.85900.838300 | Toilet dado work | 8d | 2026-03-24 | 2026-04-01 | 526, 539, 540 |  | 7 day week With NGT Ban | 7584303 |
| 543 | 37200.37300.37500.37900.39000.40300.41300.85900.838400 | Toilet flooring work | 8d | 2026-04-01 | 2026-04-09 | 527, 542 |  | 7 day week With NGT Ban | 7584313 |
| 544 | 37200.37300.37500.37900.39000.40300.41300.85900.838500 | Living dinning flooring | 7d | 2026-02-21 | 2026-02-27 | 528FS+0.25d |  | 7 day week With NGT Ban | 7584323 |
| 545 | 37200.37300.37500.37900.39000.40300.41300.85900.838600 | Aluminium door-window fixing | 7d | 2026-03-16 | 2026-03-23 | 529, 541, 544 |  | 7 day week With NGT Ban | 7584333 |
| 546 | 37200.37300.37500.37900.39000.40300.41300.85900.838700 | Putty primer coat | 6d | 2026-02-28 | 2026-03-05 | 530, 544 |  | 7 day week With NGT Ban | 7584343 |
| 547 | 37200.37300.37500.37900.39000.40300.41300.85900.838800 | Door shutter fixing | 8d | 2026-03-03 | 2026-03-11 | 531, 544 |  | 7 day week With NGT Ban | 7584353 |
| 548 | 37200.37300.37500.37900.39000.40300.41300.85900.838900 | Electrical wiring work | 8d | 2026-03-11 | 2026-03-19 | 532, 547 |  | 7 day week With NGT Ban | 7584363 |
| 549 | 37200.37300.37500.37900.39000.40300.41300.85900.839000 | Painting 1st coat | 8d | 2026-03-19 | 2026-03-27 | 533, 546, 547, 548 |  | 7 day week With NGT Ban | 7584373 |
| 550 | 37200.37300.37500.37900.39000.40300.41300.85900.839100 | False ceiling | 8d | 2026-03-27 | 2026-04-04 | 534, 549 |  | 7 day week With NGT Ban | 7584383 |

| ID | WBS | Task | Duration | Start | Finish | Predecessors | Constraint | Calendar | Unique_Task_ID |
| --- | --- | --- | --- | --- | --- | --- | --- | --- | --- |
| 551 | 37200.37300.37500.37900.39000.40300.41300.85800 | **19th Floor** | 96.81d | 2026-01-15 | 2026-04-22 |  | start no earlier than 2026-01-15 | 7 day week With NGT Ban | 7567903 |
| 552 | 37200.37300.37500.37900.39000.40300.41300.85800.839200 | Block Work | 8d | 2026-01-15 | 2026-01-23 | 536FS+0.25d |  | 7 day week With NGT Ban | 7584393 |
| 553 | 37200.37300.37500.37900.39000.40300.41300.85800.839300 | Door Frame Fixing | 9d | 2026-01-30 | 2026-02-08 | 537, 552 |  | 7 day week With NGT Ban | 7584403 |
| 554 | 37200.37300.37500.37900.39000.40300.41300.85800.839400 | Internal Plumbing Works | 8d | 2026-01-24 | 2026-02-01 | 538, 552 |  | 7 day week With NGT Ban | 7584413 |
| 555 | 37200.37300.37500.37900.39000.40300.41300.85800.839500 | Waterproofing | 10d | 2026-02-13 | 2026-02-23 | 539, 554 |  | 7 day week With NGT Ban | 7584423 |
| 556 | 37200.37300.37500.37900.39000.40300.41300.85800.839600 | Internal Plaster | 8d | 2026-03-16 | 2026-03-24 | 540FS+0.25d |  | 7 day week With NGT Ban | 7584424 |
| 557 | 37200.37300.37500.37900.39000.40300.41300.85800.839700 | Internal Plaster | 9d | 2026-03-24 | 2026-04-02 | 540, 553, 554, 555, 556 |  | 7 day week With NGT Ban | 7584433 |
| 558 | 37200.37300.37500.37900.39000.40300.41300.85800.839800 | IPS flooring work | 10d | 2026-04-02 | 2026-04-12 | 541, 553, 555, 557 |  | 7 day week With NGT Ban | 7584443 |
| 559 | 37200.37300.37500.37900.39000.40300.41300.85800.839900 | Toilet dado work | 8d | 2026-04-02 | 2026-04-10 | 542, 555, 557 |  | 7 day week With NGT Ban | 7584453 |
| 560 | 37200.37300.37500.37900.39000.40300.41300.85800.840000 | Toilet flooring work | 8d | 2026-04-10 | 2026-04-18 | 543, 559 |  | 7 day week With NGT Ban | 7584463 |
| 561 | 37200.37300.37500.37900.39000.40300.41300.85800.840100 | Living dinning flooring | 7d | 2026-02-28 | 2026-03-07 | 544FS+0.25d |  | 7 day week With NGT Ban | 7584473 |
| 562 | 37200.37300.37500.37900.39000.40300.41300.85800.840200 | Aluminium door-window fixing | 10d | 2026-04-12 | 2026-04-22 | 545, 558, 561 |  | 7 day week With NGT Ban | 7584483 |
| 563 | 37200.37300.37500.37900.39000.40300.41300.85800.840300 | Putty primer coat | 6d | 2026-03-07 | 2026-03-13 | 546, 561 |  | 7 day week With NGT Ban | 7584493 |
| 564 | 37200.37300.37500.37900.39000.40300.41300.85800.840400 | Door shutter fixing | 8d | 2026-03-11 | 2026-03-19 | 547, 561 |  | 7 day week With NGT Ban | 7584503 |
| 565 | 37200.37300.37500.37900.39000.40300.41300.85800.840500 | Electrical wiring work | 8d | 2026-03-19 | 2026-03-27 | 548, 564 |  | 7 day week With NGT Ban | 7584513 |
| 566 | 37200.37300.37500.37900.39000.40300.41300.85800.840600 | Painting 1st coat | 8d | 2026-03-27 | 2026-04-04 | 549, 563, 564, 565 |  | 7 day week With NGT Ban | 7584523 |
| 567 | 37200.37300.37500.37900.39000.40300.41300.85800.840700 | False ceiling | 8d | 2026-04-04 | 2026-04-12 | 550, 566 |  | 7 day week With NGT Ban | 7584533 |
| 568 | 37200.37300.37500.37900.39000.40300.41300.85700 | **20th Floor** | 95.56d | 2026-01-23 | 2026-04-29 |  | start no earlier than 2026-01-23 | 7 day week With NGT Ban | 7567913 |
| 569 | 37200.37300.37500.37900.39000.40300.41300.85700.840800 | Block Work | 8d | 2026-01-23 | 2026-01-31 | 552FS+0.25d |  | 7 day week With NGT Ban | 7584543 |
| 570 | 37200.37300.37500.37900.39000.40300.41300.85700.840900 | Door Frame Fixing | 9d | 2026-02-08 | 2026-02-17 | 553, 569 |  | 7 day week With NGT Ban | 7584553 |
| 571 | 37200.37300.37500.37900.39000.40300.41300.85700.841000 | Internal Plumbing Works | 8d | 2026-02-01 | 2026-02-09 | 554, 569 |  | 7 day week With NGT Ban | 7584563 |
| 572 | 37200.37300.37500.37900.39000.40300.41300.85700.841100 | Waterproofing | 10d | 2026-02-23 | 2026-03-05 | 555, 571 |  | 7 day week With NGT Ban | 7584573 |
| 573 | 37200.37300.37500.37900.39000.40300.41300.85700.841200 | Internal Plaster | 5d | 2026-04-02 | 2026-04-07 | 557FS+0.25d |  | 7 day week With NGT Ban | 7584583 |
| 574 | 37200.37300.37500.37900.39000.40300.41300.85700.841300 | IPS flooring work | 10d | 2026-04-12 | 2026-04-22 | 558, 570, 572, 573 |  | 7 day week With NGT Ban | 7584593 |
| 575 | 37200.37300.37500.37900.39000.40300.41300.85700.841400 | Toilet dado work | 8d | 2026-04-10 | 2026-04-18 | 559, 572, 573 |  | 7 day week With NGT Ban | 7584603 |
| 576 | 37200.37300.37500.37900.39000.40300.41300.85700.841500 | Toilet flooring work | 8d | 2026-04-18 | 2026-04-26 | 560, 575 |  | 7 day week With NGT Ban | 7584613 |
| 577 | 37200.37300.37500.37900.39000.40300.41300.85700.841600 | Living dinning flooring | 7d | 2026-03-07 | 2026-03-14 | 561FS+0.25d |  | 7 day week With NGT Ban | 7584623 |
| 578 | 37200.37300.37500.37900.39000.40300.41300.85700.841700 | Aluminium door-window fixing | 7d | 2026-04-22 | 2026-04-29 | 562, 574, 577 |  | 7 day week With NGT Ban | 7584633 |
| 579 | 37200.37300.37500.37900.39000.40300.41300.85700.841800 | Putty primer coat | 6d | 2026-03-14 | 2026-03-20 | 563, 577 |  | 7 day week With NGT Ban | 7584643 |
| 580 | 37200.37300.37500.37900.39000.40300.41300.85700.841900 | Door shutter fixing | 8d | 2026-03-19 | 2026-03-27 | 564, 577 |  | 7 day week With NGT Ban | 7584653 |
| 581 | 37200.37300.37500.37900.39000.40300.41300.85700.842000 | Electrical wiring work | 8d | 2026-03-27 | 2026-04-04 | 565, 580 |  | 7 day week With NGT Ban | 7584663 |
| 582 | 37200.37300.37500.37900.39000.40300.41300.85700.842100 | Painting 1st coat | 8d | 2026-04-04 | 2026-04-12 | 566, 579, 580, 581 |  | 7 day week With NGT Ban | 7584673 |
| 583 | 37200.37300.37500.37900.39000.40300.41300.85700.842200 | False ceiling | 8d | 2026-04-12 | 2026-04-20 | 567, 582 |  | 7 day week With NGT Ban | 7584683 |

| ID | WBS | Task | Duration | Start | Finish | Predecessors | Constraint | Calendar | Unique_Task_ID |
| --- | --- | --- | --- | --- | --- | --- | --- | --- | --- |
| 584 | 37200.37300.37500.37900.39000.40300.41300.85600 | **21st Floor** | 102.56d | 2026-01-31 | 2026-05-14 |  | start no earlier than 2026-01-31 | 7 day week With NGT Ban | 7567923 |
| 585 | 37200.37300.37500.37900.39000.40300.41300.85600.842300 | Block Work | 8d | 2026-01-31 | 2026-02-08 | 569FS+0.25d |  | 7 day week With NGT Ban | 7584693 |
| 586 | 37200.37300.37500.37900.39000.40300.41300.85600.842400 | Door Frame Fixing | 9d | 2026-02-17 | 2026-02-26 | 570, 585 |  | 7 day week With NGT Ban | 7584703 |
| 587 | 37200.37300.37500.37900.39000.40300.41300.85600.842500 | Internal Plumbing Works | 8d | 2026-02-10 | 2026-02-17 | 571FS+0.25d |  | 7 day week With NGT Ban | 7584713 |
| 588 | 37200.37300.37500.37900.39000.40300.41300.85600.842600 | Waterproofing | 10d | 2026-03-05 | 2026-03-15 | 572, 587 |  | 7 day week With NGT Ban | 7584723 |
| 589 | 37200.37300.37500.37900.39000.40300.41300.85600.842700 | Internal Plaster | 8d | 2026-02-09 | 2026-02-16 | 585FS+0.25d |  | 7 day week With NGT Ban | 7584733 |
| 590 | 37200.37300.37500.37900.39000.40300.41300.85600.842800 | IPS flooring work | 10d | 2026-04-22 | 2026-05-02 | 574FS+0.25d |  | 7 day week With NGT Ban | 7584743 |
| 591 | 37200.37300.37500.37900.39000.40300.41300.85600.842900 | Toilet dado work | 8d | 2026-04-18 | 2026-04-26 | 575, 588, 589 |  | 7 day week With NGT Ban | 7584753 |
| 592 | 37200.37300.37500.37900.39000.40300.41300.85600.843000 | Toilet flooring work | 8d | 2026-04-26 | 2026-05-04 | 576, 591 |  | 7 day week With NGT Ban | 7584763 |
| 593 | 37200.37300.37500.37900.39000.40300.41300.85600.843100 | Living dinning flooring | 12d | 2026-03-14 | 2026-03-26 | 577FS+0.25d |  | 7 day week With NGT Ban | 7584773 |
| 594 | 37200.37300.37500.37900.39000.40300.41300.85600.843200 | Aluminium door-window fixing | 12d | 2026-05-02 | 2026-05-14 | 578, 590, 593 |  | 7 day week With NGT Ban | 7584783 |
| 595 | 37200.37300.37500.37900.39000.40300.41300.85600.843300 | Putty primer coat | 6d | 2026-03-26 | 2026-04-01 | 579, 593 |  | 7 day week With NGT Ban | 7584793 |
| 596 | 37200.37300.37500.37900.39000.40300.41300.85600.843400 | Door shutter fixing | 8d | 2026-03-27 | 2026-04-04 | 580, 593 |  | 7 day week With NGT Ban | 7584803 |
| 597 | 37200.37300.37500.37900.39000.40300.41300.85600.843500 | Electrical wiring work | 8d | 2026-04-04 | 2026-04-12 | 581, 596 |  | 7 day week With NGT Ban | 7584813 |
| 598 | 37200.37300.37500.37900.39000.40300.41300.85600.843600 | Painting 1st coat | 8d | 2026-04-12 | 2026-04-20 | 582, 595, 596, 597 |  | 7 day week With NGT Ban | 7584823 |
| 599 | 37200.37300.37500.37900.39000.40300.41300.85600.843700 | False ceiling | 8d | 2026-04-20 | 2026-04-28 | 583, 598 |  | 7 day week With NGT Ban | 7584833 |
| 600 | 37200.37300.37500.37900.39000.40300.41300.85500 | **22nd Floor** | 131.06d | 2026-02-09 | 2026-06-20 |  | start no earlier than 2026-02-09 | 7 day week With NGT Ban | 7567933 |
| 601 | 37200.37300.37500.37900.39000.40300.41300.85500.843800 | Block Work | 8d | 2026-02-09 | 2026-02-16 | 585FS+0.25d |  | 7 day week With NGT Ban | 7584843 |
| 602 | 37200.37300.37500.37900.39000.40300.41300.85500.843900 | Door Frame Fixing | 9d | 2026-02-26 | 2026-03-07 | 586, 601 |  | 7 day week With NGT Ban | 7584853 |
| 603 | 37200.37300.37500.37900.39000.40300.41300.85500.844000 | Internal Plumbing Works | 8d | 2026-02-18 | 2026-02-25 | 587, 601 |  | 7 day week With NGT Ban | 7584863 |
| 604 | 37200.37300.37500.37900.39000.40300.41300.85500.844100 | Waterproofing | 10d | 2026-03-15 | 2026-03-25 | 588, 603 |  | 7 day week With NGT Ban | 7584873 |
| 605 | 37200.37300.37500.37900.39000.40300.41300.85500.844200 | Internal Plaster | 5d | 2026-02-17 | 2026-02-22 | 589FS+0.25d |  | 7 day week With NGT Ban | 7584883 |
| 606 | 37200.37300.37500.37900.39000.40300.41300.85500.844300 | IPS flooring work | 10d | 2026-05-02 | 2026-05-12 | 590, 602, 604, 605 |  | 7 day week With NGT Ban | 7584893 |
| 607 | 37200.37300.37500.37900.39000.40300.41300.85500.844400 | Toilet dado work | 8d | 2026-04-26 | 2026-05-04 | 591, 604, 605 |  | 7 day week With NGT Ban | 7584903 |
| 608 | 37200.37300.37500.37900.39000.40300.41300.85500.844500 | Toilet flooring work | 8d | 2026-05-04 | 2026-05-12 | 592, 607 |  | 7 day week With NGT Ban | 7584913 |
| 609 | 37200.37300.37500.37900.39000.40300.41300.85500.844600 | Living dinning flooring | 7d | 2026-05-12 | 2026-05-19 | 593, 602, 608 |  | 7 day week With NGT Ban | 7584923 |
| 610 | 37200.37300.37500.37900.39000.40300.41300.85500.844700 | Aluminium door-window fixing | 7d | 2026-05-19 | 2026-05-26 | 594, 606, 609 |  | 7 day week With NGT Ban | 7584933 |
| 611 | 37200.37300.37500.37900.39000.40300.41300.85500.844800 | Putty primer coat | 6d | 2026-05-19 | 2026-05-25 | 595, 609 |  | 7 day week With NGT Ban | 7584943 |
| 612 | 37200.37300.37500.37900.39000.40300.41300.85500.844900 | Door shutter fixing | 8d | 2026-05-19 | 2026-05-27 | 596, 609 |  | 7 day week With NGT Ban | 7584953 |
| 613 | 37200.37300.37500.37900.39000.40300.41300.85500.845000 | Electrical wiring work | 8d | 2026-05-27 | 2026-06-04 | 597, 612 |  | 7 day week With NGT Ban | 7584963 |
| 614 | 37200.37300.37500.37900.39000.40300.41300.85500.845100 | Painting 1st coat | 8d | 2026-06-04 | 2026-06-12 | 598, 611, 612, 613 |  | 7 day week With NGT Ban | 7584973 |
| 615 | 37200.37300.37500.37900.39000.40300.41300.85500.845200 | False ceiling | 8d | 2026-06-12 | 2026-06-20 | 599, 614 |  | 7 day week With NGT Ban | 7584983 |

| ID | WBS | Task | Duration | Start | Finish | Predecessors | Constraint | Calendar | Unique_Task_ID |
| --- | --- | --- | --- | --- | --- | --- | --- | --- | --- |
| 616 | 37200.37300.37500.37900.39000.40300.41300.85400 | **23rd Floor** | 130.81d | 2026-02-17 | 2026-06-28 |  | start no earlier than 2026-02-17 | 7 day week With NGT Ban | 7567943 |
| 617 | 37200.37300.37500.37900.39000.40300.41300.85400.845300 | Block Work | 8d | 2026-02-17 | 2026-02-25 | 601FS+0.25d |  | 7 day week With NGT Ban | 7584993 |
| 618 | 37200.37300.37500.37900.39000.40300.41300.85400.845400 | Door Frame Fixing | 9d | 2026-03-07 | 2026-03-16 | 602, 617 |  | 7 day week With NGT Ban | 7585003 |
| 619 | 37200.37300.37500.37900.39000.40300.41300.85400.845500 | Internal Plumbing Works | 8d | 2026-02-26 | 2026-03-05 | 603, 617 |  | 7 day week With NGT Ban | 7585013 |
| 620 | 37200.37300.37500.37900.39000.40300.41300.85400.845600 | Waterproofing | 10d | 2026-03-25 | 2026-04-04 | 604, 619 |  | 7 day week With NGT Ban | 7585023 |
| 621 | 37200.37300.37500.37900.39000.40300.41300.85400.845700 | Internal Plaster | 5d | 2026-02-22 | 2026-02-27 | 605FS+0.25d |  | 7 day week With NGT Ban | 7585033 |
| 622 | 37200.37300.37500.37900.39000.40300.41300.85400.845800 | IPS flooring work | 10d | 2026-05-12 | 2026-05-22 | 606, 618, 620, 621 |  | 7 day week With NGT Ban | 7585043 |
| 623 | 37200.37300.37500.37900.39000.40300.41300.85400.845900 | Toilet dado work | 8d | 2026-05-04 | 2026-05-12 | 607, 620, 621 |  | 7 day week With NGT Ban | 7585053 |
| 624 | 37200.37300.37500.37900.39000.40300.41300.85400.846000 | Toilet flooring work | 8d | 2026-05-12 | 2026-05-20 | 608, 623 |  | 7 day week With NGT Ban | 7585063 |
| 625 | 37200.37300.37500.37900.39000.40300.41300.85400.846100 | Living dinning flooring | 7d | 2026-05-20 | 2026-05-27 | 609, 618, 624 |  | 7 day week With NGT Ban | 7585073 |
| 626 | 37200.37300.37500.37900.39000.40300.41300.85400.846200 | Aluminium door-window fixing | 7d | 2026-05-27 | 2026-06-03 | 610, 622, 625 |  | 7 day week With NGT Ban | 7585083 |
| 627 | 37200.37300.37500.37900.39000.40300.41300.85400.846300 | Putty primer coat | 6d | 2026-05-27 | 2026-06-02 | 611, 625 |  | 7 day week With NGT Ban | 7585093 |
| 628 | 37200.37300.37500.37900.39000.40300.41300.85400.846400 | Door shutter fixing | 8d | 2026-05-27 | 2026-06-04 | 612, 625 |  | 7 day week With NGT Ban | 7585103 |
| 629 | 37200.37300.37500.37900.39000.40300.41300.85400.846500 | Electrical wiring work | 8d | 2026-06-04 | 2026-06-12 | 613, 628 |  | 7 day week With NGT Ban | 7585113 |
| 630 | 37200.37300.37500.37900.39000.40300.41300.85400.846600 | Painting 1st coat | 8d | 2026-06-12 | 2026-06-20 | 614, 627, 628, 629 |  | 7 day week With NGT Ban | 7585123 |
| 631 | 37200.37300.37500.37900.39000.40300.41300.85400.846700 | False ceiling | 8d | 2026-06-20 | 2026-06-28 | 615, 630 |  | 7 day week With NGT Ban | 7585133 |
| 632 | 37200.37300.37500.37900.39000.40300.41300.85300 | **24th Floor** | 135.56d | 2026-02-25 | 2026-07-11 |  | start no earlier than 2026-02-25 | 7 day week With NGT Ban | 7567953 |
| 633 | 37200.37300.37500.37900.39000.40300.41300.85300.846800 | Block Work | 8d | 2026-02-25 | 2026-03-05 | 617FS+0.25d |  | 7 day week With NGT Ban | 7585143 |
| 634 | 37200.37300.37500.37900.39000.40300.41300.85300.846900 | Door Frame Fixing | 9d | 2026-03-16 | 2026-03-25 | 618, 633 |  | 7 day week With NGT Ban | 7585153 |
| 635 | 37200.37300.37500.37900.39000.40300.41300.85300.847000 | Internal Plumbing Works | 8d | 2026-03-06 | 2026-03-13 | 619, 633 |  | 7 day week With NGT Ban | 7585163 |
| 636 | 37200.37300.37500.37900.39000.40300.41300.85300.847100 | Waterproofing | 10d | 2026-04-04 | 2026-04-14 | 620, 635 |  | 7 day week With NGT Ban | 7585173 |
| 637 | 37200.37300.37500.37900.39000.40300.41300.85300.847200 | Internal Plaster | 8d | 2026-04-14 | 2026-04-22 | 621, 634, 635, 636 |  | 7 day week With NGT Ban | 7585183 |
| 638 | 37200.37300.37500.37900.39000.40300.41300.85300.847300 | IPS flooring work | 10d | 2026-05-22 | 2026-06-01 | 622, 634, 636, 637 |  | 7 day week With NGT Ban | 7585193 |
| 639 | 37200.37300.37500.37900.39000.40300.41300.85300.847400 | Toilet dado work | 8d | 2026-05-12 | 2026-05-20 | 623, 636, 637 |  | 7 day week With NGT Ban | 7585203 |
| 640 | 37200.37300.37500.37900.39000.40300.41300.85300.847500 | Toilet flooring work | 8d | 2026-05-20 | 2026-05-28 | 624, 639 |  | 7 day week With NGT Ban | 7585213 |
| 641 | 37200.37300.37500.37900.39000.40300.41300.85300.847600 | Living dinning flooring | 12d | 2026-05-28 | 2026-06-09 | 625, 634, 640 |  | 7 day week With NGT Ban | 7585223 |
| 642 | 37200.37300.37500.37900.39000.40300.41300.85300.847700 | Aluminium door-window fixing | 12d | 2026-06-09 | 2026-06-21 | 626, 638, 641 |  | 7 day week With NGT Ban | 7585233 |
| 643 | 37200.37300.37500.37900.39000.40300.41300.85300.847800 | Putty primer coat | 6d | 2026-06-09 | 2026-06-15 | 627, 641 |  | 7 day week With NGT Ban | 7585243 |
| 644 | 37200.37300.37500.37900.39000.40300.41300.85300.847900 | Door shutter fixing | 8d | 2026-06-09 | 2026-06-17 | 628, 641 |  | 7 day week With NGT Ban | 7585253 |
| 645 | 37200.37300.37500.37900.39000.40300.41300.85300.848000 | Electrical wiring work | 8d | 2026-06-17 | 2026-06-25 | 629, 644 |  | 7 day week With NGT Ban | 7585263 |
| 646 | 37200.37300.37500.37900.39000.40300.41300.85300.848100 | Painting 1st coat | 8d | 2026-06-25 | 2026-07-03 | 630, 643, 644, 645 |  | 7 day week With NGT Ban | 7585273 |
| 647 | 37200.37300.37500.37900.39000.40300.41300.85300.848200 | False ceiling | 8d | 2026-07-03 | 2026-07-11 | 631, 646 |  | 7 day week With NGT Ban | 7585283 |

| ID | WBS | Task | Duration | Start | Finish | Predecessors | Constraint | Calendar | Unique_Task_ID |
| --- | --- | --- | --- | --- | --- | --- | --- | --- | --- |
| 648 | 37200.37300.37500.37900.39000.40300.41300.85200 | **25th Floor** | 94d | 2026-04-25 | 2026-07-28 |  | start no earlier than 2026-04-25 | 7 day week With NGT Ban | 7567963 |
| 649 | 37200.37300.37500.37900.39000.40300.41300.85200.848300 | Block Work | 8d | 2026-04-25 | 2026-05-03 | 248, 633 |  | 7 day week With NGT Ban | 7585293 |
| 650 | 37200.37300.37500.37900.39000.40300.41300.85200.848400 | Door Frame Fixing | 9d | 2026-05-03 | 2026-05-12 | 634, 649 |  | 7 day week With NGT Ban | 7585303 |
| 651 | 37200.37300.37500.37900.39000.40300.41300.85200.848500 | Internal Plumbing Works | 8d | 2026-05-03 | 2026-05-11 | 635, 649 |  | 7 day week With NGT Ban | 7585313 |
| 652 | 37200.37300.37500.37900.39000.40300.41300.85200.848600 | Waterproofing | 10d | 2026-05-11 | 2026-05-21 | 636, 651 |  | 7 day week With NGT Ban | 7585323 |
| 653 | 37200.37300.37500.37900.39000.40300.41300.85200.848700 | Internal Plaster | 8d | 2026-05-21 | 2026-05-29 | 637, 650, 651, 652 |  | 7 day week With NGT Ban | 7585333 |
| 654 | 37200.37300.37500.37900.39000.40300.41300.85200.848800 | IPS flooring work | 10d | 2026-06-01 | 2026-06-11 | 638, 650, 652, 653 |  | 7 day week With NGT Ban | 7585343 |
| 655 | 37200.37300.37500.37900.39000.40300.41300.85200.848900 | Toilet dado work | 8d | 2026-05-29 | 2026-06-06 | 639, 652, 653 |  | 7 day week With NGT Ban | 7585353 |
| 656 | 37200.37300.37500.37900.39000.40300.41300.85200.849000 | Toilet flooring work | 8d | 2026-06-06 | 2026-06-14 | 640, 655 |  | 7 day week With NGT Ban | 7585363 |
| 657 | 37200.37300.37500.37900.39000.40300.41300.85200.849100 | Living dinning flooring | 12d | 2026-06-14 | 2026-06-26 | 641, 650, 656 |  | 7 day week With NGT Ban | 7585373 |
| 658 | 37200.37300.37500.37900.39000.40300.41300.85200.849200 | Aluminium door-window fixing | 12d | 2026-06-26 | 2026-07-08 | 642, 654, 657 |  | 7 day week With NGT Ban | 7585383 |
| 659 | 37200.37300.37500.37900.39000.40300.41300.85200.849300 | Putty primer coat | 6d | 2026-06-26 | 2026-07-02 | 643, 657 |  | 7 day week With NGT Ban | 7585393 |
| 660 | 37200.37300.37500.37900.39000.40300.41300.85200.849400 | Door shutter fixing | 8d | 2026-06-26 | 2026-07-04 | 644, 657 |  | 7 day week With NGT Ban | 7585403 |
| 661 | 37200.37300.37500.37900.39000.40300.41300.85200.849500 | Electrical wiring work | 8d | 2026-07-04 | 2026-07-12 | 645, 660 |  | 7 day week With NGT Ban | 7585413 |
| 662 | 37200.37300.37500.37900.39000.40300.41300.85200.849600 | Painting 1st coat | 8d | 2026-07-12 | 2026-07-20 | 646, 659, 660, 661 |  | 7 day week With NGT Ban | 7585423 |
| 663 | 37200.37300.37500.37900.39000.40300.41300.85200.849700 | False ceiling | 8d | 2026-07-20 | 2026-07-28 | 647, 662 |  | 7 day week With NGT Ban | 7585433 |
| 664 | 37200.37300.37500.37900.39000.40300.41300.85100 | **26th Floor** | 96d | 2026-05-05 | 2026-08-09 |  | start no earlier than 2026-05-05 | 7 day week With NGT Ban | 7567973 |
| 665 | 37200.37300.37500.37900.39000.40300.41300.85100.849800 | Block Work | 8d | 2026-05-05 | 2026-05-13 | 249, 649 |  | 7 day week With NGT Ban | 7585443 |
| 666 | 37200.37300.37500.37900.39000.40300.41300.85100.849900 | Door Frame Fixing | 9d | 2026-05-13 | 2026-05-22 | 650, 665 |  | 7 day week With NGT Ban | 7585453 |
| 667 | 37200.37300.37500.37900.39000.40300.41300.85100.850000 | Internal Plumbing Works | 8d | 2026-05-13 | 2026-05-21 | 651, 665 |  | 7 day week With NGT Ban | 7585463 |
| 668 | 37200.37300.37500.37900.39000.40300.41300.85100.850100 | Waterproofing | 10d | 2026-05-21 | 2026-05-31 | 652, 667 |  | 7 day week With NGT Ban | 7585473 |
| 669 | 37200.37300.37500.37900.39000.40300.41300.85100.850200 | Internal Plaster | 8d | 2026-05-31 | 2026-06-08 | 653, 666, 667, 668 |  | 7 day week With NGT Ban | 7585483 |
| 670 | 37200.37300.37500.37900.39000.40300.41300.85100.850300 | IPS flooring work | 10d | 2026-06-11 | 2026-06-21 | 654, 666, 668, 669 |  | 7 day week With NGT Ban | 7585493 |
| 671 | 37200.37300.37500.37900.39000.40300.41300.85100.850400 | Toilet dado work | 8d | 2026-06-08 | 2026-06-16 | 655, 668, 669 |  | 7 day week With NGT Ban | 7585503 |
| 672 | 37200.37300.37500.37900.39000.40300.41300.85100.850500 | Toilet flooring work | 8d | 2026-06-16 | 2026-06-24 | 656, 671 |  | 7 day week With NGT Ban | 7585513 |
| 673 | 37200.37300.37500.37900.39000.40300.41300.85100.850600 | Living dinning flooring | 12d | 2026-06-26 | 2026-07-08 | 657, 666, 672 |  | 7 day week With NGT Ban | 7585523 |
| 674 | 37200.37300.37500.37900.39000.40300.41300.85100.850700 | Aluminium door-window fixing | 12d | 2026-07-08 | 2026-07-20 | 658, 670, 673 |  | 7 day week With NGT Ban | 7585533 |
| 675 | 37200.37300.37500.37900.39000.40300.41300.85100.850800 | Putty primer coat | 6d | 2026-07-08 | 2026-07-14 | 659, 673 |  | 7 day week With NGT Ban | 7585543 |
| 676 | 37200.37300.37500.37900.39000.40300.41300.85100.850900 | Door shutter fixing | 8d | 2026-07-08 | 2026-07-16 | 660, 673 |  | 7 day week With NGT Ban | 7585553 |
| 677 | 37200.37300.37500.37900.39000.40300.41300.85100.851000 | Electrical wiring work | 8d | 2026-07-16 | 2026-07-24 | 661, 676 |  | 7 day week With NGT Ban | 7585563 |
| 678 | 37200.37300.37500.37900.39000.40300.41300.85100.851100 | Painting 1st coat | 8d | 2026-07-24 | 2026-08-01 | 662, 675, 676, 677 |  | 7 day week With NGT Ban | 7585573 |
| 679 | 37200.37300.37500.37900.39000.40300.41300.85100.851200 | False ceiling | 8d | 2026-08-01 | 2026-08-09 | 663, 678 |  | 7 day week With NGT Ban | 7585583 |

| ID | WBS | Task | Duration | Start | Finish | Predecessors | Constraint | Calendar | Unique_Task_ID |
| --- | --- | --- | --- | --- | --- | --- | --- | --- | --- |
| 680 | 37200.37300.37500.37900.39000.40300.41300.85000 | **27th Floor** | 95.25d | 2026-05-18 | 2026-08-21 |  | start no earlier than 2026-05-18 | 7 day week With NGT Ban | 7567983 |
| 681 | 37200.37300.37500.37900.39000.40300.41300.85000.851300 | Block Work | 8d | 2026-05-18 | 2026-05-26 | 250, 665 |  | 7 day week With NGT Ban | 7585593 |
| 682 | 37200.37300.37500.37900.39000.40300.41300.85000.851400 | Door Frame Fixing | 9d | 2026-05-26 | 2026-06-04 | 666, 681 |  | 7 day week With NGT Ban | 7585603 |
| 683 | 37200.37300.37500.37900.39000.40300.41300.85000.851500 | Internal Plumbing Works | 8d | 2026-05-26 | 2026-06-03 | 667, 681 |  | 7 day week With NGT Ban | 7585613 |
| 684 | 37200.37300.37500.37900.39000.40300.41300.85000.851600 | Waterproofing | 10d | 2026-06-03 | 2026-06-13 | 668, 683 |  | 7 day week With NGT Ban | 7585623 |
| 685 | 37200.37300.37500.37900.39000.40300.41300.85000.851700 | Internal Plaster | 8d | 2026-06-13 | 2026-06-21 | 669, 682, 683, 684 |  | 7 day week With NGT Ban | 7585633 |
| 686 | 37200.37300.37500.37900.39000.40300.41300.85000.851800 | IPS flooring work | 10d | 2026-06-21 | 2026-07-01 | 670, 682, 684, 685 |  | 7 day week With NGT Ban | 7585643 |
| 687 | 37200.37300.37500.37900.39000.40300.41300.85000.851900 | Toilet dado work | 8d | 2026-06-21 | 2026-06-29 | 671, 684, 685 |  | 7 day week With NGT Ban | 7585653 |
| 688 | 37200.37300.37500.37900.39000.40300.41300.85000.852000 | Toilet flooring work | 8d | 2026-06-29 | 2026-07-07 | 672, 687 |  | 7 day week With NGT Ban | 7585663 |
| 689 | 37200.37300.37500.37900.39000.40300.41300.85000.852100 | Living dinning flooring | 12d | 2026-07-08 | 2026-07-20 | 673, 682, 688 |  | 7 day week With NGT Ban | 7585673 |
| 690 | 37200.37300.37500.37900.39000.40300.41300.85000.852200 | Aluminium door-window fixing | 12d | 2026-07-20 | 2026-08-01 | 674, 686, 689 |  | 7 day week With NGT Ban | 7585683 |
| 691 | 37200.37300.37500.37900.39000.40300.41300.85000.852300 | Putty primer coat | 6d | 2026-07-20 | 2026-07-26 | 675, 689 |  | 7 day week With NGT Ban | 7585693 |
| 692 | 37200.37300.37500.37900.39000.40300.41300.85000.852400 | Door shutter fixing | 8d | 2026-07-20 | 2026-07-28 | 676, 689 |  | 7 day week With NGT Ban | 7585703 |
| 693 | 37200.37300.37500.37900.39000.40300.41300.85000.852500 | Electrical wiring work | 8d | 2026-07-28 | 2026-08-05 | 677, 692 |  | 7 day week With NGT Ban | 7585713 |
| 694 | 37200.37300.37500.37900.39000.40300.41300.85000.852600 | Painting 1st coat | 8d | 2026-08-05 | 2026-08-13 | 678, 691, 692, 693 |  | 7 day week With NGT Ban | 7585723 |
| 695 | 37200.37300.37500.37900.39000.40300.41300.85000.852700 | False ceiling | 8d | 2026-08-13 | 2026-08-21 | 679, 694 |  | 7 day week With NGT Ban | 7585733 |
| 696 | 37200.37300.37500.37900.39000.40300.41300.84900 | **28th Floor** | 95.5d | 2026-05-30 | 2026-09-02 |  | start no earlier than 2026-05-30 | 7 day week With NGT Ban | 7567993 |
| 697 | 37200.37300.37500.37900.39000.40300.41300.84900.852800 | Block Work | 8d | 2026-05-30 | 2026-06-06 | 251, 681 |  | 7 day week With NGT Ban | 7585743 |
| 698 | 37200.37300.37500.37900.39000.40300.41300.84900.852900 | Door Frame Fixing | 9d | 2026-06-07 | 2026-06-15 | 682, 697 |  | 7 day week With NGT Ban | 7585753 |
| 699 | 37200.37300.37500.37900.39000.40300.41300.84900.853000 | Internal Plumbing Works | 8d | 2026-06-07 | 2026-06-14 | 683, 697 |  | 7 day week With NGT Ban | 7585763 |
| 700 | 37200.37300.37500.37900.39000.40300.41300.84900.853100 | Waterproofing | 10d | 2026-06-15 | 2026-06-24 | 684, 699 |  | 7 day week With NGT Ban | 7585773 |
| 701 | 37200.37300.37500.37900.39000.40300.41300.84900.853200 | Internal Plaster | 8d | 2026-06-25 | 2026-07-02 | 685, 698, 699, 700 |  | 7 day week With NGT Ban | 7585783 |
| 702 | 37200.37300.37500.37900.39000.40300.41300.84900.853300 | IPS flooring work | 10d | 2026-07-03 | 2026-07-12 | 686, 698, 700, 701 |  | 7 day week With NGT Ban | 7585793 |
| 703 | 37200.37300.37500.37900.39000.40300.41300.84900.853400 | Toilet dado work | 8d | 2026-07-03 | 2026-07-10 | 687, 700, 701 |  | 7 day week With NGT Ban | 7585803 |
| 704 | 37200.37300.37500.37900.39000.40300.41300.84900.853500 | Toilet flooring work | 8d | 2026-07-11 | 2026-07-18 | 688, 703 |  | 7 day week With NGT Ban | 7585813 |
| 705 | 37200.37300.37500.37900.39000.40300.41300.84900.853600 | Living dinning flooring | 12d | 2026-07-20 | 2026-08-01 | 689, 698, 704 |  | 7 day week With NGT Ban | 7585823 |
| 706 | 37200.37300.37500.37900.39000.40300.41300.84900.853700 | Aluminium door-window fixing | 12d | 2026-08-01 | 2026-08-13 | 690, 702, 705 |  | 7 day week With NGT Ban | 7585833 |
| 707 | 37200.37300.37500.37900.39000.40300.41300.84900.853800 | Putty primer coat | 6d | 2026-08-01 | 2026-08-07 | 691, 705 |  | 7 day week With NGT Ban | 7585843 |
| 708 | 37200.37300.37500.37900.39000.40300.41300.84900.853900 | Door shutter fixing | 8d | 2026-08-01 | 2026-08-09 | 692, 705 |  | 7 day week With NGT Ban | 7585853 |
| 709 | 37200.37300.37500.37900.39000.40300.41300.84900.854000 | Electrical wiring work | 8d | 2026-08-09 | 2026-08-17 | 693, 708 |  | 7 day week With NGT Ban | 7585863 |
| 710 | 37200.37300.37500.37900.39000.40300.41300.84900.854100 | Painting 1st coat | 8d | 2026-08-17 | 2026-08-25 | 694, 707, 708, 709 |  | 7 day week With NGT Ban | 7585873 |
| 711 | 37200.37300.37500.37900.39000.40300.41300.84900.854200 | False ceiling | 8d | 2026-08-25 | 2026-09-02 | 695, 710 |  | 7 day week With NGT Ban | 7585883 |

| ID | WBS | Task | Duration | Start | Finish | Predecessors | Constraint | Calendar | Unique_Task_ID |
| --- | --- | --- | --- | --- | --- | --- | --- | --- | --- |
| 712 | 37200.37300.37500.37900.39000.40300.41300.84800 | **29th Floor** | 94.75d | 2026-06-11 | 2026-09-14 |  | start no earlier than 2026-06-11 | 7 day week With NGT Ban | 7568003 |
| 713 | 37200.37300.37500.37900.39000.40300.41300.84800.854300 | Block Work | 8d | 2026-06-11 | 2026-06-19 | 252, 697 |  | 7 day week With NGT Ban | 7585893 |
| 714 | 37200.37300.37500.37900.39000.40300.41300.84800.854400 | Door Frame Fixing | 9d | 2026-06-19 | 2026-06-28 | 698, 713 |  | 7 day week With NGT Ban | 7585903 |
| 715 | 37200.37300.37500.37900.39000.40300.41300.84800.854500 | Internal Plumbing Works | 8d | 2026-06-19 | 2026-06-27 | 699, 713 |  | 7 day week With NGT Ban | 7585913 |
| 716 | 37200.37300.37500.37900.39000.40300.41300.84800.854600 | Waterproofing | 10d | 2026-06-27 | 2026-07-07 | 700, 715 |  | 7 day week With NGT Ban | 7585923 |
| 717 | 37200.37300.37500.37900.39000.40300.41300.84800.854700 | Internal Plaster | 8d | 2026-07-07 | 2026-07-15 | 701, 714, 715, 716 |  | 7 day week With NGT Ban | 7585933 |
| 718 | 37200.37300.37500.37900.39000.40300.41300.84800.854800 | IPS flooring work | 10d | 2026-07-15 | 2026-07-25 | 702, 714, 716, 717 |  | 7 day week With NGT Ban | 7585943 |
| 719 | 37200.37300.37500.37900.39000.40300.41300.84800.854900 | Toilet dado work | 8d | 2026-07-15 | 2026-07-23 | 703, 716, 717 |  | 7 day week With NGT Ban | 7585953 |
| 720 | 37200.37300.37500.37900.39000.40300.41300.84800.855000 | Toilet flooring work | 8d | 2026-07-23 | 2026-07-31 | 704, 719 |  | 7 day week With NGT Ban | 7585963 |
| 721 | 37200.37300.37500.37900.39000.40300.41300.84800.855100 | Living dinning flooring | 12d | 2026-08-01 | 2026-08-13 | 705, 714, 720 |  | 7 day week With NGT Ban | 7585973 |
| 722 | 37200.37300.37500.37900.39000.40300.41300.84800.855200 | Aluminium door-window fixing | 12d | 2026-08-13 | 2026-08-25 | 706, 718, 721 |  | 7 day week With NGT Ban | 7585983 |
| 723 | 37200.37300.37500.37900.39000.40300.41300.84800.855300 | Putty primer coat | 6d | 2026-08-13 | 2026-08-19 | 707, 721 |  | 7 day week With NGT Ban | 7585993 |
| 724 | 37200.37300.37500.37900.39000.40300.41300.84800.855400 | Door shutter fixing | 8d | 2026-08-13 | 2026-08-21 | 708, 721 |  | 7 day week With NGT Ban | 7586003 |
| 725 | 37200.37300.37500.37900.39000.40300.41300.84800.855500 | Electrical wiring work | 8d | 2026-08-21 | 2026-08-29 | 709, 724 |  | 7 day week With NGT Ban | 7586013 |
| 726 | 37200.37300.37500.37900.39000.40300.41300.84800.855600 | Painting 1st coat | 8d | 2026-08-29 | 2026-09-06 | 710, 723, 724, 725 |  | 7 day week With NGT Ban | 7586023 |
| 727 | 37200.37300.37500.37900.39000.40300.41300.84800.855700 | False ceiling | 8d | 2026-09-06 | 2026-09-14 | 711, 726 |  | 7 day week With NGT Ban | 7586033 |
| 728 | 37200.37300.37500.37900.39000.40300.41300.84700 | **30th Floor** | 95d | 2026-06-23 | 2026-09-26 |  | start no earlier than 2026-06-23 | 7 day week With NGT Ban | 7568013 |
| 729 | 37200.37300.37500.37900.39000.40300.41300.84700.855800 | Block Work | 8d | 2026-06-23 | 2026-07-01 | 253, 713 |  | 7 day week With NGT Ban | 7586043 |
| 730 | 37200.37300.37500.37900.39000.40300.41300.84700.855900 | Door Frame Fixing | 9d | 2026-07-01 | 2026-07-10 | 714, 729 |  | 7 day week With NGT Ban | 7586053 |
| 731 | 37200.37300.37500.37900.39000.40300.41300.84700.856000 | Internal Plumbing Works | 8d | 2026-07-01 | 2026-07-09 | 715, 729 |  | 7 day week With NGT Ban | 7586063 |
| 732 | 37200.37300.37500.37900.39000.40300.41300.84700.856100 | Waterproofing | 10d | 2026-07-09 | 2026-07-19 | 716, 731 |  | 7 day week With NGT Ban | 7586073 |
| 733 | 37200.37300.37500.37900.39000.40300.41300.84700.856200 | Internal Plaster | 8d | 2026-07-19 | 2026-07-27 | 717, 730, 731, 732 |  | 7 day week With NGT Ban | 7586083 |
| 734 | 37200.37300.37500.37900.39000.40300.41300.84700.856300 | IPS flooring work | 10d | 2026-07-27 | 2026-08-06 | 718, 730, 732, 733 |  | 7 day week With NGT Ban | 7586093 |
| 735 | 37200.37300.37500.37900.39000.40300.41300.84700.856400 | Toilet dado work | 8d | 2026-07-27 | 2026-08-04 | 719, 732, 733 |  | 7 day week With NGT Ban | 7586103 |
| 736 | 37200.37300.37500.37900.39000.40300.41300.84700.856500 | Toilet flooring work | 8d | 2026-08-04 | 2026-08-12 | 720, 735 |  | 7 day week With NGT Ban | 7586113 |
| 737 | 37200.37300.37500.37900.39000.40300.41300.84700.856600 | Living dinning flooring | 12d | 2026-08-13 | 2026-08-25 | 721, 730, 736 |  | 7 day week With NGT Ban | 7586123 |
| 738 | 37200.37300.37500.37900.39000.40300.41300.84700.856700 | Aluminium door-window fixing | 12d | 2026-08-25 | 2026-09-06 | 722, 734, 737 |  | 7 day week With NGT Ban | 7586133 |
| 739 | 37200.37300.37500.37900.39000.40300.41300.84700.856800 | Putty primer coat | 6d | 2026-08-25 | 2026-08-31 | 723, 737 |  | 7 day week With NGT Ban | 7586143 |
| 740 | 37200.37300.37500.37900.39000.40300.41300.84700.856900 | Door shutter fixing | 8d | 2026-08-25 | 2026-09-02 | 724, 737 |  | 7 day week With NGT Ban | 7586153 |
| 741 | 37200.37300.37500.37900.39000.40300.41300.84700.857000 | Electrical wiring work | 8d | 2026-09-02 | 2026-09-10 | 725, 740 |  | 7 day week With NGT Ban | 7586163 |
| 742 | 37200.37300.37500.37900.39000.40300.41300.84700.857100 | Painting 1st coat | 8d | 2026-09-10 | 2026-09-18 | 726, 739, 740, 741 |  | 7 day week With NGT Ban | 7586173 |
| 743 | 37200.37300.37500.37900.39000.40300.41300.84700.857200 | False ceiling | 8d | 2026-09-18 | 2026-09-26 | 727, 742 |  | 7 day week With NGT Ban | 7586183 |

| ID | WBS | Task | Duration | Start | Finish | Predecessors | Constraint | Calendar | Unique_Task_ID |
| --- | --- | --- | --- | --- | --- | --- | --- | --- | --- |
| 744 | 37200.37300.37500.37900.39000.40300.41300.84600 | **31st Floor** | 94d | 2026-07-08 | 2026-10-10 |  | start no earlier than 2026-07-08 | 7 day week With NGT Ban | 7568023 |
| 745 | 37200.37300.37500.37900.39000.40300.41300.84600.857300 | Block Work | 8d | 2026-07-08 | 2026-07-16 | 254, 729 |  | 7 day week With NGT Ban | 7586193 |
| 746 | 37200.37300.37500.37900.39000.40300.41300.84600.857400 | Door Frame Fixing | 9d | 2026-07-16 | 2026-07-25 | 730, 745 |  | 7 day week With NGT Ban | 7586203 |
| 747 | 37200.37300.37500.37900.39000.40300.41300.84600.857500 | Internal Plumbing Works | 8d | 2026-07-16 | 2026-07-24 | 731, 745 |  | 7 day week With NGT Ban | 7586213 |
| 748 | 37200.37300.37500.37900.39000.40300.41300.84600.857600 | Waterproofing | 10d | 2026-07-24 | 2026-08-03 | 732, 747 |  | 7 day week With NGT Ban | 7586223 |
| 749 | 37200.37300.37500.37900.39000.40300.41300.84600.857700 | Internal Plaster | 8d | 2026-08-03 | 2026-08-11 | 733, 746, 747, 748 |  | 7 day week With NGT Ban | 7586233 |
| 750 | 37200.37300.37500.37900.39000.40300.41300.84600.857800 | IPS flooring work | 10d | 2026-08-11 | 2026-08-21 | 734, 746, 748, 749 |  | 7 day week With NGT Ban | 7586243 |
| 751 | 37200.37300.37500.37900.39000.40300.41300.84600.857900 | Toilet dado work | 8d | 2026-08-11 | 2026-08-19 | 735, 748, 749 |  | 7 day week With NGT Ban | 7586253 |
| 752 | 37200.37300.37500.37900.39000.40300.41300.84600.858000 | Toilet flooring work | 8d | 2026-08-19 | 2026-08-27 | 736, 751 |  | 7 day week With NGT Ban | 7586263 |
| 753 | 37200.37300.37500.37900.39000.40300.41300.84600.858100 | Living dinning flooring | 12d | 2026-08-27 | 2026-09-08 | 737, 746, 752 |  | 7 day week With NGT Ban | 7586273 |
| 754 | 37200.37300.37500.37900.39000.40300.41300.84600.858200 | Aluminium door-window fixing | 12d | 2026-09-08 | 2026-09-20 | 738, 750, 753 |  | 7 day week With NGT Ban | 7586283 |
| 755 | 37200.37300.37500.37900.39000.40300.41300.84600.858300 | Putty primer coat | 6d | 2026-09-08 | 2026-09-14 | 739, 753 |  | 7 day week With NGT Ban | 7586293 |
| 756 | 37200.37300.37500.37900.39000.40300.41300.84600.858400 | Door shutter fixing | 8d | 2026-09-08 | 2026-09-16 | 740, 753 |  | 7 day week With NGT Ban | 7586303 |
| 757 | 37200.37300.37500.37900.39000.40300.41300.84600.858500 | Electrical wiring work | 8d | 2026-09-16 | 2026-09-24 | 741, 756 |  | 7 day week With NGT Ban | 7586313 |
| 758 | 37200.37300.37500.37900.39000.40300.41300.84600.858600 | Painting 1st coat | 8d | 2026-09-24 | 2026-10-02 | 742, 755, 756, 757 |  | 7 day week With NGT Ban | 7586323 |
| 759 | 37200.37300.37500.37900.39000.40300.41300.84600.858700 | False ceiling | 8d | 2026-10-02 | 2026-10-10 | 743, 758 |  | 7 day week With NGT Ban | 7586333 |
| 760 | 37200.37300.37500.37900.39000.40300.41300.84500 | **32nd Floor** | 94d | 2026-08-19 | 2027-01-05 |  | start no earlier than 2026-08-19 | 7 day week With NGT Ban | 7568033 |
| 761 | 37200.37300.37500.37900.39000.40300.41300.84500.858800 | Block Work | 8d | 2026-08-19 | 2026-08-27 | 255, 745 |  | 7 day week With NGT Ban | 7586343 |
| 762 | 37200.37300.37500.37900.39000.40300.41300.84500.858900 | Door Frame Fixing | 9d | 2026-08-27 | 2026-09-05 | 746, 761 |  | 7 day week With NGT Ban | 7586353 |
| 763 | 37200.37300.37500.37900.39000.40300.41300.84500.859000 | Internal Plumbing Works | 8d | 2026-08-27 | 2026-09-04 | 747, 761 |  | 7 day week With NGT Ban | 7586363 |
| 764 | 37200.37300.37500.37900.39000.40300.41300.84500.859100 | Waterproofing | 10d | 2026-09-04 | 2026-09-14 | 748, 763 |  | 7 day week With NGT Ban | 7586373 |
| 765 | 37200.37300.37500.37900.39000.40300.41300.84500.859200 | Internal Plaster | 8d | 2026-09-14 | 2026-09-22 | 749, 762, 763, 764 |  | 7 day week With NGT Ban | 7586383 |
| 766 | 37200.37300.37500.37900.39000.40300.41300.84500.859300 | IPS flooring work | 10d | 2026-09-22 | 2026-10-02 | 750, 762, 764, 765 |  | 7 day week With NGT Ban | 7586393 |
| 767 | 37200.37300.37500.37900.39000.40300.41300.84500.859400 | Toilet dado work | 8d | 2026-09-22 | 2026-09-30 | 751, 764, 765 |  | 7 day week With NGT Ban | 7586403 |
| 768 | 37200.37300.37500.37900.39000.40300.41300.84500.859500 | Toilet flooring work | 8d | 2026-09-30 | 2026-10-08 | 752, 767 |  | 7 day week With NGT Ban | 7586413 |
| 769 | 37200.37300.37500.37900.39000.40300.41300.84500.859600 | Living dinning flooring | 12d | 2026-10-08 | 2026-10-20 | 753, 762, 768 |  | 7 day week With NGT Ban | 7586423 |
| 770 | 37200.37300.37500.37900.39000.40300.41300.84500.859700 | Aluminium door-window fixing | 12d | 2026-10-20 | 2026-12-16 | 754, 766, 769 |  | 7 day week With NGT Ban | 7586433 |
| 771 | 37200.37300.37500.37900.39000.40300.41300.84500.859800 | Putty primer coat | 6d | 2026-10-20 | 2026-10-26 | 755, 769 |  | 7 day week With NGT Ban | 7586443 |
| 772 | 37200.37300.37500.37900.39000.40300.41300.84500.859900 | Door shutter fixing | 8d | 2026-10-20 | 2026-10-28 | 756, 769 |  | 7 day week With NGT Ban | 7586453 |
| 773 | 37200.37300.37500.37900.39000.40300.41300.84500.860000 | Electrical wiring work | 8d | 2026-10-28 | 2026-12-20 | 757, 772 |  | 7 day week With NGT Ban | 7586463 |
| 774 | 37200.37300.37500.37900.39000.40300.41300.84500.860100 | Painting 1st coat | 8d | 2026-12-20 | 2026-12-28 | 758, 771, 772, 773 |  | 7 day week With NGT Ban | 7586473 |
| 775 | 37200.37300.37500.37900.39000.40300.41300.84500.860200 | False ceiling | 8d | 2026-12-28 | 2027-01-05 | 759, 774 |  | 7 day week With NGT Ban | 7586483 |

| ID | WBS | Task | Duration | Start | Finish | Predecessors | Constraint | Calendar | Unique_Task_ID |
| --- | --- | --- | --- | --- | --- | --- | --- | --- | --- |
| 776 | 37200.37300.37500.37900.39000.40300.41300.84400 | **33rd Floor** | 98d | 2026-08-27 | 2027-01-17 |  | start no earlier than 2026-08-27 | 7 day week With NGT Ban | 7568043 |
| 777 | 37200.37300.37500.37900.39000.40300.41300.84400.860300 | Block Work | 8d | 2026-08-27 | 2026-09-04 | 256, 761 |  | 7 day week With NGT Ban | 7586493 |
| 778 | 37200.37300.37500.37900.39000.40300.41300.84400.860400 | Door Frame Fixing | 9d | 2026-09-05 | 2026-09-14 | 762, 777 |  | 7 day week With NGT Ban | 7586503 |
| 779 | 37200.37300.37500.37900.39000.40300.41300.84400.860500 | Internal Plumbing Works | 8d | 2026-09-04 | 2026-09-12 | 763, 777 |  | 7 day week With NGT Ban | 7586513 |
| 780 | 37200.37300.37500.37900.39000.40300.41300.84400.860600 | Waterproofing | 10d | 2026-09-14 | 2026-09-24 | 764, 779 |  | 7 day week With NGT Ban | 7586523 |
| 781 | 37200.37300.37500.37900.39000.40300.41300.84400.860700 | Internal Plaster | 8d | 2026-09-24 | 2026-10-02 | 765, 778, 779, 780 |  | 7 day week With NGT Ban | 7586533 |
| 782 | 37200.37300.37500.37900.39000.40300.41300.84400.860800 | IPS flooring work | 10d | 2026-10-02 | 2026-10-12 | 766, 778, 780, 781 |  | 7 day week With NGT Ban | 7586543 |
| 783 | 37200.37300.37500.37900.39000.40300.41300.84400.860900 | Toilet dado work | 8d | 2026-10-02 | 2026-10-10 | 767, 780, 781 |  | 7 day week With NGT Ban | 7586553 |
| 784 | 37200.37300.37500.37900.39000.40300.41300.84400.861000 | Toilet flooring work | 8d | 2026-10-10 | 2026-10-18 | 768, 783 |  | 7 day week With NGT Ban | 7586563 |
| 785 | 37200.37300.37500.37900.39000.40300.41300.84400.861100 | Living dinning flooring | 12d | 2026-10-20 | 2026-12-16 | 769, 778, 784 |  | 7 day week With NGT Ban | 7586573 |
| 786 | 37200.37300.37500.37900.39000.40300.41300.84400.861200 | Aluminium door-window fixing | 12d | 2026-12-16 | 2026-12-28 | 770, 782, 785 |  | 7 day week With NGT Ban | 7586583 |
| 787 | 37200.37300.37500.37900.39000.40300.41300.84400.861300 | Putty primer coat | 6d | 2026-12-16 | 2026-12-22 | 771, 785 |  | 7 day week With NGT Ban | 7586593 |
| 788 | 37200.37300.37500.37900.39000.40300.41300.84400.861400 | Door shutter fixing | 8d | 2026-12-16 | 2026-12-24 | 772, 785 |  | 7 day week With NGT Ban | 7586603 |
| 789 | 37200.37300.37500.37900.39000.40300.41300.84400.861500 | Electrical wiring work | 8d | 2026-12-24 | 2027-01-01 | 773, 788 |  | 7 day week With NGT Ban | 7586613 |
| 790 | 37200.37300.37500.37900.39000.40300.41300.84400.861600 | Painting 1st coat | 8d | 2027-01-01 | 2027-01-09 | 774, 787, 788, 789 |  | 7 day week With NGT Ban | 7586623 |
| 791 | 37200.37300.37500.37900.39000.40300.41300.84400.861700 | False ceiling | 8d | 2027-01-09 | 2027-01-17 | 775, 790 |  | 7 day week With NGT Ban | 7586633 |
| 792 | 37200.37300.37500.37900.39000.40300.41300.84300 | **34th Floor** | 102d | 2026-09-04 | 2027-01-29 |  | start no earlier than 2026-09-04 | 7 day week With NGT Ban | 7568053 |
| 793 | 37200.37300.37500.37900.39000.40300.41300.84300.861800 | Block Work | 8d | 2026-09-04 | 2026-09-12 | 257, 777 |  | 7 day week With NGT Ban | 7586643 |
| 794 | 37200.37300.37500.37900.39000.40300.41300.84300.861900 | Door Frame Fixing | 9d | 2026-09-14 | 2026-09-23 | 778, 793 |  | 7 day week With NGT Ban | 7586653 |
| 795 | 37200.37300.37500.37900.39000.40300.41300.84300.862000 | Internal Plumbing Works | 8d | 2026-09-12 | 2026-09-20 | 779, 793 |  | 7 day week With NGT Ban | 7586663 |
| 796 | 37200.37300.37500.37900.39000.40300.41300.84300.862100 | Waterproofing | 10d | 2026-09-24 | 2026-10-04 | 780, 795 |  | 7 day week With NGT Ban | 7586673 |
| 797 | 37200.37300.37500.37900.39000.40300.41300.84300.862200 | Internal Plaster | 8d | 2026-10-04 | 2026-10-12 | 781, 794, 795, 796 |  | 7 day week With NGT Ban | 7586683 |
| 798 | 37200.37300.37500.37900.39000.40300.41300.84300.862300 | IPS flooring work | 10d | 2026-10-12 | 2026-10-22 | 782, 794, 796, 797 |  | 7 day week With NGT Ban | 7586693 |
| 799 | 37200.37300.37500.37900.39000.40300.41300.84300.862400 | Toilet dado work | 8d | 2026-10-12 | 2026-10-20 | 783, 796, 797 |  | 7 day week With NGT Ban | 7586703 |
| 800 | 37200.37300.37500.37900.39000.40300.41300.84300.862500 | Toilet flooring work | 8d | 2026-10-20 | 2026-10-28 | 784, 799 |  | 7 day week With NGT Ban | 7586713 |
| 801 | 37200.37300.37500.37900.39000.40300.41300.84300.862600 | Living dinning flooring | 12d | 2026-12-16 | 2026-12-28 | 785, 794, 800 |  | 7 day week With NGT Ban | 7586723 |
| 802 | 37200.37300.37500.37900.39000.40300.41300.84300.862700 | Aluminium door-window fixing | 12d | 2026-12-28 | 2027-01-09 | 786, 798, 801 |  | 7 day week With NGT Ban | 7586733 |
| 803 | 37200.37300.37500.37900.39000.40300.41300.84300.862800 | Putty primer coat | 6d | 2026-12-28 | 2027-01-03 | 787, 801 |  | 7 day week With NGT Ban | 7586743 |
| 804 | 37200.37300.37500.37900.39000.40300.41300.84300.862900 | Door shutter fixing | 8d | 2026-12-28 | 2027-01-05 | 788, 801 |  | 7 day week With NGT Ban | 7586753 |
| 805 | 37200.37300.37500.37900.39000.40300.41300.84300.863000 | Electrical wiring work | 8d | 2027-01-05 | 2027-01-13 | 789, 804 |  | 7 day week With NGT Ban | 7586763 |
| 806 | 37200.37300.37500.37900.39000.40300.41300.84300.863100 | Painting 1st coat | 8d | 2027-01-13 | 2027-01-21 | 790, 803, 804, 805 |  | 7 day week With NGT Ban | 7586773 |
| 807 | 37200.37300.37500.37900.39000.40300.41300.84300.863200 | False ceiling | 8d | 2027-01-21 | 2027-01-29 | 791, 806 |  | 7 day week With NGT Ban | 7586783 |

| ID | WBS | Task | Duration | Start | Finish | Predecessors | Constraint | Calendar | Unique_Task_ID |
| --- | --- | --- | --- | --- | --- | --- | --- | --- | --- |
| 808 | 37200.37300.37500.37900.39000.40300.41300.84200 | **35th Floor** | 106d | 2026-09-12 | 2027-02-10 |  | start no earlier than 2026-09-12 | 7 day week With NGT Ban | 7568063 |
| 809 | 37200.37300.37500.37900.39000.40300.41300.84200.863300 | Block Work | 8d | 2026-09-12 | 2026-09-20 | 258, 793 |  | 7 day week With NGT Ban | 7586793 |
| 810 | 37200.37300.37500.37900.39000.40300.41300.84200.863400 | Door Frame Fixing | 9d | 2026-09-23 | 2026-10-02 | 794, 809 |  | 7 day week With NGT Ban | 7586803 |
| 811 | 37200.37300.37500.37900.39000.40300.41300.84200.863500 | Internal Plumbing Works | 8d | 2026-09-20 | 2026-09-28 | 795, 809 |  | 7 day week With NGT Ban | 7586813 |
| 812 | 37200.37300.37500.37900.39000.40300.41300.84200.863600 | Waterproofing | 10d | 2026-10-04 | 2026-10-14 | 796, 811 |  | 7 day week With NGT Ban | 7586823 |
| 813 | 37200.37300.37500.37900.39000.40300.41300.84200.863700 | Internal Plaster | 8d | 2026-10-14 | 2026-10-22 | 797, 810, 811, 812 |  | 7 day week With NGT Ban | 7586833 |
| 814 | 37200.37300.37500.37900.39000.40300.41300.84200.863800 | IPS flooring work | 10d | 2026-10-22 | 2026-12-16 | 798, 810, 812, 813 |  | 7 day week With NGT Ban | 7586843 |
| 815 | 37200.37300.37500.37900.39000.40300.41300.84200.863900 | Toilet dado work | 8d | 2026-10-22 | 2026-10-30 | 799, 812, 813 |  | 7 day week With NGT Ban | 7586853 |
| 816 | 37200.37300.37500.37900.39000.40300.41300.84200.864000 | Toilet flooring work | 8d | 2026-10-30 | 2026-12-22 | 800, 815 |  | 7 day week With NGT Ban | 7586863 |
| 817 | 37200.37300.37500.37900.39000.40300.41300.84200.864100 | Living dinning flooring | 12d | 2026-12-28 | 2027-01-09 | 801, 810, 816 |  | 7 day week With NGT Ban | 7586873 |
| 818 | 37200.37300.37500.37900.39000.40300.41300.84200.864200 | Aluminium door-window fixing | 12d | 2027-01-09 | 2027-01-21 | 802, 814, 817 |  | 7 day week With NGT Ban | 7586883 |
| 819 | 37200.37300.37500.37900.39000.40300.41300.84200.864300 | Putty primer coat | 6d | 2027-01-09 | 2027-01-15 | 803, 817 |  | 7 day week With NGT Ban | 7586893 |
| 820 | 37200.37300.37500.37900.39000.40300.41300.84200.864400 | Door shutter fixing | 8d | 2027-01-09 | 2027-01-17 | 804, 817 |  | 7 day week With NGT Ban | 7586903 |
| 821 | 37200.37300.37500.37900.39000.40300.41300.84200.864500 | Electrical wiring work | 8d | 2027-01-17 | 2027-01-25 | 805, 820 |  | 7 day week With NGT Ban | 7586913 |
| 822 | 37200.37300.37500.37900.39000.40300.41300.84200.864600 | Painting 1st coat | 8d | 2027-01-25 | 2027-02-02 | 806, 819, 820, 821 |  | 7 day week With NGT Ban | 7586923 |
| 823 | 37200.37300.37500.37900.39000.40300.41300.84200.864700 | False ceiling | 8d | 2027-02-02 | 2027-02-10 | 807, 822 |  | 7 day week With NGT Ban | 7586933 |
| 824 | 37200.37300.37500.37900.39000.40300.191800 | **Terrace Finishing** | 79.88d | 2026-07-01 | 2026-09-19 |  | start no earlier than 2026-07-01 | 7 day week With NGT Ban | 7571253 |
| 825 | 37200.37300.37500.37900.39000.40300.191800.392700 | Terrace waterproofing | 39.94d | 2026-07-01 | 2026-08-10 | 217 |  | 7 day week With NGT Ban | 7576343 |
| 826 | 37200.37300.37500.37900.39000.40300.191800.392800 | Terrace finishing | 39.94d | 2026-08-10 | 2026-09-19 | 825 |  | 7 day week With NGT Ban | 7576353 |
| 827 | 37200.37300.37500.37900.39000.40300.99700 | **Common Area Finishing** | 279.31d | 2025-07-25 | 2026-06-14 |  | start no earlier than 2025-07-25 | 7 day week With NGT Ban | 7569213 |
| 828 | 37200.37300.37500.37900.39000.40300.99700.392900 | Block Work | 39.94d | 2025-07-25 | 2025-09-02 | 228FS+0.25d |  | 7 day week With NGT Ban | 7576363 |
| 829 | 37200.37300.37500.37900.39000.40300.99700.393000 | Internal Plaster | 119.94d | 2025-08-29 | 2026-02-10 | 834SS+17.88d |  | 7 day week With NGT Ban | 7576373 |
| 830 | 37200.37300.37500.37900.39000.40300.99700.393100 | Staircase railing fixing | 149.94d | 2026-01-15 | 2026-06-14 | 832SS+26.75d, 831SS+26.75d |  | 7 day week With NGT Ban | 7576383 |
| 831 | 37200.37300.37500.37900.39000.40300.99700.393200 | Main staircase flooring | 149.94d | 2025-12-19 | 2026-05-18 | 832SS+13.38d |  | 7 day week With NGT Ban | 7576393 |
| 832 | 37200.37300.37500.37900.39000.40300.99700.393300 | Fire staircase flooring | 149.94d | 2025-10-22 | 2026-05-05 | 829SS+13.38d, 836SS+26.75d |  | 7 day week With NGT Ban | 7576403 |
| 833 | 37200.37300.37500.37900.39000.40300.99700.393400 | Fire door work | 59.94d | 2026-01-15 | 2026-03-16 | 831SS+26.75d, 832SS+26.75d |  | 7 day week With NGT Ban | 7576413 |
| 834 | 37200.37300.37500.37900.39000.40300.99700.393500 | Electrical wiring work | 119.94d | 2025-08-11 | 2026-01-23 | 828SS+17.88d |  | 7 day week With NGT Ban | 7576423 |
| 835 | 37200.37300.37500.37900.39000.40300.99700.393600 | Lobby flooring | 150d | 2025-08-15 | 2026-02-26 | 834SS+3.38d |  | 7 day week With NGT Ban | 7576433 |
| 836 | 37200.37300.37500.37900.39000.40300.99700.393700 | Ceiling & wall putty-primer | 109.94d | 2025-09-25 | 2026-02-27 | 829SS+26.75d |  | 7 day week With NGT Ban | 7576443 |
| 837 | 37200.37300.37500.37900.39000.40300.99700.393800 | Ceiling & wall painting | 99.94d | 2025-10-13 | 2026-03-07 | 836SS+17.88d |  | 7 day week With NGT Ban | 7576453 |
| 838 | 37200.37300.37500.37900.39000.40300.99700.393900 | Light fixture supply & installation | 44.94d | 2026-01-19 | 2026-03-05 | 837SS+53.38d |  | 7 day week With NGT Ban | 7576463 |

| ID | WBS | Task | Duration | Start | Finish | Predecessors | Constraint | Calendar | Unique_Task_ID |
| --- | --- | --- | --- | --- | --- | --- | --- | --- | --- |
| 839 | 37200.37300.37500.37900.39000.40300.47000 | **Balcony Glass Railing** | 67.81d | 2027-05-07 | 2027-07-14 |  | start no earlier than 2027-05-07 | 7 day week With NGT Ban | 132460 |
| 840 | 37200.37300.37500.37900.39000.40300.47000.394000 | 1st Floor | 1.94d | 2027-05-07 | 2027-05-09 | 908 |  | 7 day week With NGT Ban | 132470 |
| 841 | 37200.37300.37500.37900.39000.40300.47000.394100 | 2nd Floor | 1.94d | 2027-05-09 | 2027-05-11 | 840 |  | 7 day week With NGT Ban | 132480 |
| 842 | 37200.37300.37500.37900.39000.40300.47000.394200 | 3rd Floor | 1.94d | 2027-05-11 | 2027-05-13 | 841 |  | 7 day week With NGT Ban | 132490 |
| 843 | 37200.37300.37500.37900.39000.40300.47000.394300 | 4th Floor | 1.94d | 2027-05-13 | 2027-05-15 | 842 |  | 7 day week With NGT Ban | 132500 |
| 844 | 37200.37300.37500.37900.39000.40300.47000.394400 | 5th Floor | 1.94d | 2027-05-15 | 2027-05-17 | 843 |  | 7 day week With NGT Ban | 132510 |
| 845 | 37200.37300.37500.37900.39000.40300.47000.394500 | 6th Floor | 1.94d | 2027-05-17 | 2027-05-19 | 844 |  | 7 day week With NGT Ban | 132520 |
| 846 | 37200.37300.37500.37900.39000.40300.47000.394600 | 7th Floor | 1.94d | 2027-05-19 | 2027-05-21 | 845 |  | 7 day week With NGT Ban | 132530 |
| 847 | 37200.37300.37500.37900.39000.40300.47000.394700 | 8th Floor | 1.94d | 2027-05-21 | 2027-05-23 | 846 |  | 7 day week With NGT Ban | 132540 |
| 848 | 37200.37300.37500.37900.39000.40300.47000.394800 | 9th Floor | 1.94d | 2027-05-23 | 2027-05-25 | 847 |  | 7 day week With NGT Ban | 132550 |
| 849 | 37200.37300.37500.37900.39000.40300.47000.394900 | 10th Floor | 1.94d | 2027-05-25 | 2027-05-27 | 848 |  | 7 day week With NGT Ban | 132560 |
| 850 | 37200.37300.37500.37900.39000.40300.47000.395000 | 11th Floor | 1.94d | 2027-05-27 | 2027-05-29 | 849 |  | 7 day week With NGT Ban | 132570 |
| 851 | 37200.37300.37500.37900.39000.40300.47000.395100 | 12th Floor | 1.94d | 2027-05-29 | 2027-05-31 | 850 |  | 7 day week With NGT Ban | 132580 |
| 852 | 37200.37300.37500.37900.39000.40300.47000.395200 | 13th Floor | 1.94d | 2027-05-31 | 2027-06-01 | 851 |  | 7 day week With NGT Ban | 132590 |
| 853 | 37200.37300.37500.37900.39000.40300.47000.395300 | 14th Floor | 1.94d | 2027-06-02 | 2027-06-03 | 852 |  | 7 day week With NGT Ban | 132600 |
| 854 | 37200.37300.37500.37900.39000.40300.47000.395400 | 15th Floor | 1.94d | 2027-06-03 | 2027-06-05 | 853 |  | 7 day week With NGT Ban | 132610 |
| 855 | 37200.37300.37500.37900.39000.40300.47000.395500 | 16th Floor | 1.94d | 2027-06-05 | 2027-06-07 | 854 |  | 7 day week With NGT Ban | 7576473 |
| 856 | 37200.37300.37500.37900.39000.40300.47000.395600 | 17th Floor | 1.94d | 2027-06-07 | 2027-06-09 | 855 |  | 7 day week With NGT Ban | 132620 |
| 857 | 37200.37300.37500.37900.39000.40300.47000.395700 | 18th Floor | 1.94d | 2027-06-09 | 2027-06-11 | 856 |  | 7 day week With NGT Ban | 132630 |
| 858 | 37200.37300.37500.37900.39000.40300.47000.395800 | 19th Floor | 1.94d | 2027-06-11 | 2027-06-13 | 857 |  | 7 day week With NGT Ban | 132640 |
| 859 | 37200.37300.37500.37900.39000.40300.47000.395900 | 20th Floor | 1.94d | 2027-06-13 | 2027-06-15 | 858 |  | 7 day week With NGT Ban | 132650 |
| 860 | 37200.37300.37500.37900.39000.40300.47000.396000 | 21st Floor | 1.94d | 2027-06-15 | 2027-06-17 | 859 |  | 7 day week With NGT Ban | 7576483 |
| 861 | 37200.37300.37500.37900.39000.40300.47000.396100 | 22nd Floor | 1.94d | 2027-06-17 | 2027-06-19 | 860 |  | 7 day week With NGT Ban | 132660 |
| 862 | 37200.37300.37500.37900.39000.40300.47000.396200 | 23rd Floor | 1.94d | 2027-06-19 | 2027-06-21 | 861 |  | 7 day week With NGT Ban | 132670 |
| 863 | 37200.37300.37500.37900.39000.40300.47000.396300 | 24th Floor | 1.94d | 2027-06-21 | 2027-06-23 | 862 |  | 7 day week With NGT Ban | 132680 |
| 864 | 37200.37300.37500.37900.39000.40300.47000.396400 | 25th Floor | 1.94d | 2027-06-23 | 2027-06-25 | 863 |  | 7 day week With NGT Ban | 132690 |
| 865 | 37200.37300.37500.37900.39000.40300.47000.396500 | 26th Floor | 1.94d | 2027-06-25 | 2027-06-27 | 864 |  | 7 day week With NGT Ban | 132700 |
| 866 | 37200.37300.37500.37900.39000.40300.47000.396600 | 27th Floor | 1.94d | 2027-06-27 | 2027-06-29 | 865 |  | 7 day week With NGT Ban | 132710 |
| 867 | 37200.37300.37500.37900.39000.40300.47000.396700 | 28th Floor | 1.94d | 2027-06-29 | 2027-07-01 | 866 |  | 7 day week With NGT Ban | 132720 |
| 868 | 37200.37300.37500.37900.39000.40300.47000.396800 | 29th Floor | 1.94d | 2027-07-01 | 2027-07-02 | 867 |  | 7 day week With NGT Ban | 132730 |
| 869 | 37200.37300.37500.37900.39000.40300.47000.396900 | 30th Floor | 1.94d | 2027-07-03 | 2027-07-04 | 868 |  | 7 day week With NGT Ban | 132740 |
| 870 | 37200.37300.37500.37900.39000.40300.47000.397000 | 31st Floor | 1.94d | 2027-07-04 | 2027-07-06 | 869 |  | 7 day week With NGT Ban | 7576493 |
| 871 | 37200.37300.37500.37900.39000.40300.47000.397100 | 32nd Floor | 1.94d | 2027-07-06 | 2027-07-08 | 870 |  | 7 day week With NGT Ban | 132750 |
| 872 | 37200.37300.37500.37900.39000.40300.47000.397200 | 33rd Floor | 1.94d | 2027-07-08 | 2027-07-10 | 871 |  | 7 day week With NGT Ban | 132760 |
| 873 | 37200.37300.37500.37900.39000.40300.47000.397300 | 34th Floor | 1.94d | 2027-07-10 | 2027-07-12 | 872 |  | 7 day week With NGT Ban | 132770 |
| 874 | 37200.37300.37500.37900.39000.40300.47000.397400 | 35th Floor | 1.94d | 2027-07-12 | 2027-07-14 | 873 |  | 7 day week With NGT Ban | 132780 |

| ID | WBS | Task | Duration | Start | Finish | Predecessors | Constraint | Calendar | Unique_Task_ID |
| --- | --- | --- | --- | --- | --- | --- | --- | --- | --- |
| 875 | 37200.37300.37500.37900.95100 | **MEP work** | 623.12d | 2025-10-22 | 2027-10-05 |  | start no earlier than 2025-10-22 | 7 day week With NGT Ban | 7569153 |
| 876 | 37200.37300.37500.37900.95100.97200 | **Electrical work** | 268.19d | 2026-08-12 | 2027-06-21 |  | start no earlier than 2026-08-12 | 7 day week With NGT Ban | 7569163 |
| 877 | 37200.37300.37500.37900.95100.97200.266200 | Cable Tray | 89.94d | 2026-08-12 | 2026-12-24 | 222 |  | 7 day week With NGT Ban | 7572353 |
| 878 | 37200.37300.37500.37900.95100.97200.266300 | Cable, main & sub main | 79.94d | 2026-09-21 | 2027-01-23 | 877SS+40d |  | 7 day week With NGT Ban | 9211 |
| 879 | 37200.37300.37500.37900.95100.97200.266400 | LT panel & DB | 119.94d | 2026-12-25 | 2027-04-23 | 877 |  | 7 day week With NGT Ban | 7572363 |
| 880 | 37200.37300.37500.37900.95100.97200.266500 | Rising main | 89.94d | 2027-02-16 | 2027-05-17 | 877FS+53.38d |  | 7 day week With NGT Ban | 7572373 |
| 881 | 37200.37300.37500.37900.95100.97200.266600 | EARTHING Works | 59.94d | 2027-01-07 | 2027-03-08 | 877FS+13.38d |  | 7 day week With NGT Ban | 9204 |
| 882 | 37200.37300.37500.37900.95100.97200.266700 | Advance lightening protection | 59.94d | 2026-09-19 | 2027-01-02 | 826 |  | 7 day week With NGT Ban | 9205 |
| 883 | 37200.37300.37500.37900.95100.97200.266800 | Inverter | 34.94d | 2027-05-17 | 2027-06-21 | 880, 881, 884 |  | 7 day week With NGT Ban | 9206 |
| 884 | 37200.37300.37500.37900.95100.97200.266900 | Energy meter | 59.94d | 2027-01-24 | 2027-03-24 | 878 |  | 7 day week With NGT Ban | 9207 |
| 885 | 37200.37300.37500.37900.95100.97200.267000 | Exhast fan | 60d | 2026-10-12 | 2027-01-25 | 818FF+4.5d |  | 7 day week With NGT Ban | 9208 |
| 886 | 37200.37300.37500.37900.95100.97200.267100 | FTTH | 59.94d | 2027-02-27 | 2027-04-28 | 881FS-9d |  | 7 day week With NGT Ban | 9209 |
| 887 | 37200.37300.37500.37900.95100.97200.267200 | Security System - FA & PA | 54.94d | 2027-04-23 | 2027-06-17 | 879, 886FF |  | 7 day week With NGT Ban | 9219 |
| 888 | 37200.37300.37500.37900.95100.97200.267300 | Solar water heater | 59.94d | 2026-09-19 | 2027-01-02 | 826 |  | 7 day week With NGT Ban | 9229 |
| 889 | 37200.37300.37500.37900.95100.123900 | **Plumbing wrok** | 437.69d | 2026-01-01 | 2027-04-29 |  | start no earlier than 2026-01-01 | 7 day week With NGT Ban | 7569413 |
| 890 | 37200.37300.37500.37900.95100.123900.267400 | Terrace looping | 44.94d | 2026-08-10 | 2026-09-24 | 825 |  | 7 day week With NGT Ban | 7572383 |
| 891 | 37200.37300.37500.37900.95100.123900.267500 | Shaft Plumbing | 119.94d | 2026-09-24 | 2027-03-08 | 35, 890 |  | 7 day week With NGT Ban | 7572393 |
| 892 | 37200.37300.37500.37900.95100.123900.267600 | CP sanitary fixture supply | 75d | 2027-02-13 | 2027-04-29 | 813, 816FS+53.38d |  | 7 day week With NGT Ban | 7572403 |
| 893 | 37200.37300.37500.37900.95100.123900.267700 | Cold & flushing water supply | 89.94d | 2026-01-01 | 2026-04-01 | 829SS+80d |  | 7 day week With NGT Ban | 7572413 |
| 894 | 37200.37300.37500.37900.95100.123900.267800 | Misc work | 29.94d | 2026-03-23 | 2026-04-22 | 893FS-9d |  | 7 day week With NGT Ban | 7572423 |
| 895 | 37200.37300.37500.37900.95100.128300 | **Fire fighting work** | 366.94d | 2025-10-22 | 2027-01-22 |  | start no earlier than 2025-10-22 | 7 day week With NGT Ban | 7569493 |
| 896 | 37200.37300.37500.37900.95100.128300.267900 | Fire hydrant work | 89.94d | 2025-10-22 | 2026-03-06 | 829SS+53.38d |  | 7 day week With NGT Ban | 9221 |
| 897 | 37200.37300.37500.37900.95100.128300.268000 | Sprinkler & piping work | 89.94d | 2026-04-01 | 2026-06-30 | 896FS+26.75d |  | 7 day week With NGT Ban | 7572433 |
| 898 | 37200.37300.37500.37900.95100.128300.268100 | Shaft Downtake works | 89.94d | 2026-08-10 | 2026-12-23 | 825 |  | 7 day week With NGT Ban | 7572443 |
| 899 | 37200.37300.37500.37900.95100.128300.268200 | Connection to pump room | 29.94d | 2026-12-23 | 2027-01-22 | 898 |  | 7 day week With NGT Ban | 9224 |

| ID | WBS | Task | Duration | Start | Finish | Predecessors | Complete | Constraint | Calendar | Unique_Task_ID |
| --- | --- | --- | --- | --- | --- | --- | --- | --- | --- | --- |
| 900 | 37200.37300.37500.37900.95100.182400 | **Lift work** | 169.81d | 2026-08-12 | 2027-03-14 |  |  | start no earlier than 2026-08-12 | 7 day week With NGT Ban | 7571053 |
| 901 | 37200.37300.37500.37900.95100.182400.268300 | Lift Shaft Handover | 39.94d | 2026-08-12 | 2026-09-20 | 222 |  |  | 7 day week With NGT Ban | 7572453 |
| 902 | 37200.37300.37500.37900.95100.182400.268400 | Lift installation work | 44.94d | 2026-09-21 | 2026-12-19 | 901 |  |  | 7 day week With NGT Ban | 7572463 |
| 903 | 37200.37300.37500.37900.95100.182400.268500 | Lift testing and commissioning | 84.94d | 2026-12-19 | 2027-03-14 | 902 |  |  | 7 day week With NGT Ban | 7572473 |
| 904 | 37200.37300.37500.37900.95100.193500 | **AC work** | 62.94d | 2027-08-03 | 2027-10-05 |  |  | start no earlier than 2027-08-03 | 7 day week With NGT Ban | 7571323 |
| 905 | 37200.37300.37500.37900.95100.193500.268600 | Split AC | 62.94d | 2027-08-03 | 2027-10-05 | 921FS-26.75d |  |  | 7 day week With NGT Ban | 7572483 |
| 906 | 37200.37300.37500.37900.125800 | **Tower Completion** | 265.88d | 2026-09-24 | 2027-08-01 |  |  | start no earlier than 2026-09-24 | 7 day week With NGT Ban | 7569443 |
| 907 | 37200.37300.37500.37900.125800.222700 | SURFACE PREPARATION | 79.94d | 2026-09-24 | 2027-01-27 | 260FS+1.88d |  |  | 7 day week With NGT Ban | 7571483 |
| 908 | 37200.37300.37500.37900.125800.222800 | External Painting | 99.94d | 2027-01-27 | 2027-05-07 | 907 |  |  | 7 day week With NGT Ban | 7571493 |
| 909 | 37200.37300.37500.37900.125800.222900 | Final coat of painting | 86d | 2027-05-07 | 2027-08-01 | 908 |  |  | 7 day week With NGT Ban | 7571503 |
| 910 | 37200.37300.37500.37900.125800.223000 | Misc. work | 59.94d | 2027-05-07 | 2027-07-06 | 908 |  |  | 7 day week With NGT Ban | 7571513 |
| 911 | 37200.37300.37500.37900.193200 | **Basement lobby** | 60d | 2026-02-26 | 2026-04-27 |  |  | start no earlier than 2026-02-26 | 7 day week With NGT Ban | 7571293 |
| 912 | 37200.37300.37500.37900.193200.223100 | Basement lobby | 60d | 2026-02-26 | 2026-04-27 | 835 |  |  | 7 day week With NGT Ban | 7571523 |
| 913 | 37200.37300.37500.37900.114800 | **Post OC activities** | 333.19d | 2027-01-25 | 2027-12-24 |  |  | start no earlier than 2027-01-25 | 7 day week With NGT Ban | 7569373 |
| 914 | 37200.37300.37500.37900.114800.223200 | Wardrobe installation | 142.94d | 2027-08-03 | 2027-12-24 | 921FS-26.75d |  |  | 7 day week With NGT Ban | 7571533 |
| 915 | 37200.37300.37500.37900.114800.223300 | CP & SANITARYWARE | 82.94d | 2027-08-03 | 2027-10-25 | 921FS-26.75d, 892 |  |  | 7 day week With NGT Ban | 37702 |
| 916 | 37200.37300.37500.37900.114800.223400 | Wooden Flooring | 142.94d | 2027-08-03 | 2027-12-24 | 921FS-26.75d |  |  | 7 day week With NGT Ban | 7571543 |
| 917 | 37200.37300.37500.37900.114800.223500 | Electrical Fixtures And Fittings | 79.94d | 2027-01-25 | 2027-04-14 | 821 |  |  | 7 day week With NGT Ban | 37704 |
| 918 | 37200.37300.37500.37900.114800.223600 | Modular Kitchen | 142.94d | 2027-08-03 | 2027-12-24 | 914SS |  |  | 7 day week With NGT Ban | 37714 |
| 919 | 37200.37300.37500.37900.114800.223700 | Final Coat Paint | 67.94d | 2027-08-16 | 2027-10-23 | 921FS-13.38d, 838 |  |  | 7 day week With NGT Ban | 37705 |
| 920 | 37200.37300.37500.37900.215400 | OC Application/Readiness | 0.94d | 2027-07-06 | 2027-07-07 | 222, 830FS+7.12d, 903, 823, 885, 887, 888, 883, 882, 874FS-44.5d, 34, 833, 891, 894, 897, 899, 910 |  |  | 7 day week With NGT Ban | 7571363 |
| 921 | 37200.37300.37500.37900.215500 | OC Receipt | 0d | 2027-08-30 | 2027-08-30 | 920FS+53.38d, 909, 912 |  |  | 7 day week With NGT Ban | 7571373 |
| 922 | 37200.37300.37500.37900.215600 | Offer To Possession | 29.94d | 2027-12-24 | 2028-01-23 | 914, 915, 916, 917, 918, 919, 905 |  |  | 7 day week With NGT Ban | 7571383 |
| 923 | 37200.37300.37500.38000 | **Tower 4** | 1386.94d | 2023-09-30 | 2027-12-30 |  | 3% | start no earlier than 2023-09-30 | 7 day week With NGT Ban | 7567493 |
| 924 | 37200.37300.37500.38000.100000 | **Substructure** | 638.06d | 2023-09-30 | 2025-09-12 |  | 58% | start no earlier than 2023-09-30 | 7 day week With NGT Ban | 7569253 |
| 925 | 37200.37300.37500.38000.100000.111500 | **Soil Bed Preparation** | 533.44d | 2023-09-30 | 2025-05-30 |  | 77% | start no earlier than 2023-09-30 | 7 day week With NGT Ban | 7569383 |
| 926 | 37200.37300.37500.38000.100000.111500.198000 | Test Piling | 24.94d | 2023-09-30 | 2023-10-24 |  | 100% | start no earlier than 2023-09-30 | 7 day week With NGT Ban | 7572493 |
| 927 | 37200.37300.37500.38000.100000.111500.197900 | Excavation | 29.94d | 2024-01-10 | 2024-02-08 | 7SS+36.74d | 100% | start no earlier than 2024-01-10 | 7 day week With NGT Ban | 7572503 |
| 928 | 37200.37300.37500.38000.100000.111500.197800 | Main Piling Work | 168.94d | 2024-04-12 | 2024-12-23 | 7FS-7.45d | 100% | start no earlier than 2024-04-12 | 7 day week With NGT Ban | 7572513 |
| 929 | 37200.37300.37500.38000.100000.111500.268700 | Anti-termite | 5d | 2025-04-01 | 2025-04-05 | 928FS+13.38d |  |  | 7 day week With NGT Ban | 7572523 |
| 930 | 37200.37300.37500.38000.100000.111500.197700 | PCC | 3.01d | 2024-10-25 | 2024-10-28 | 927FS-14.7d, 929SS+2.98d | 100% | start no earlier than 2024-10-25 | 7 day week With NGT Ban | 7572533 |
| 931 | 37200.37300.37500.38000.100000.111500.268800 | Backfilling | 59.94d | 2025-04-01 | 2025-05-30 | 944FS-0.94d |  |  | 7 day week With NGT Ban | 7572543 |

| ID | WBS | Task | Duration | Start | Finish | Predecessors | Complete | Constraint | Calendar | Unique_Task_ID |
| --- | --- | --- | --- | --- | --- | --- | --- | --- | --- | --- |
| 932 | 37200.37300.37500.38000.100000.102600 | **RCC Structure** | 108.5d | 2024-12-21 | 2025-04-08 |  | 92% | start no earlier than 2024-12-21 | 7 day week With NGT Ban | 7569293 |
| 933 | 37200.37300.37500.38000.100000.102600.134700 | **Raft Foundation** | 36.5d | 2024-12-21 | 2025-01-26 |  | 100% | start no earlier than 2024-12-21 | 7 day week With NGT Ban | 7571233 |
| 934 | 37200.37300.37500.38000.100000.102600.134700.203000 | Reinforcement | 23d | 2024-12-21 | 2025-01-22 | 930FS-31.15d | 100% | start no earlier than 2024-12-21 | 7 day week With NGT Ban | 7576503 |
| 935 | 37200.37300.37500.38000.100000.102600.134700.203100 | Formwork | 24d | 2024-12-31 | 2025-01-23 | 934FF+2d | 100% | start no earlier than 2024-12-31 | 7 day week With NGT Ban | 7576513 |
| 936 | 37200.37300.37500.38000.100000.102600.134700.203200 | Concreting | 4d | 2025-01-23 | 2025-01-26 | 935FS-1d | 100% | start no earlier than 2025-01-23 | 7 day week With NGT Ban | 7576523 |
| 937 | 37200.37300.37500.38000.100000.102600.134800 | **Basement 1 Slab** | 26d | 2025-01-25 | 2025-02-19 |  | 100% | start no earlier than 2025-01-25 | 7 day week With NGT Ban | 7571213 |
| 938 | 37200.37300.37500.38000.100000.102600.134800.203300 | Reinforcement | 22d | 2025-01-25 | 2025-02-15 | 936 | 100% | start no earlier than 2025-01-25 | 7 day week With NGT Ban | 7576533 |
| 939 | 37200.37300.37500.38000.100000.102600.134800.203400 | Formwork | 19d | 2025-01-31 | 2025-02-18 | 938SS+3d | 100% | start no earlier than 2025-01-31 | 7 day week With NGT Ban | 7576543 |
| 940 | 37200.37300.37500.38000.100000.102600.134800.203500 | Concreting | 4d | 2025-02-16 | 2025-02-19 | 939FS+6.4d | 100% | start no earlier than 2025-02-16 | 7 day week With NGT Ban | 7576553 |
| 941 | 37200.37300.37500.38000.100000.102600.134900 | **Basement 2 Slab/GF** | 21.94d | 2025-02-17 | 2025-03-10 |  | 100% | start no earlier than 2025-02-17 | 7 day week With NGT Ban | 7571203 |
| 942 | 37200.37300.37500.38000.100000.102600.134900.203600 | Reinforcement | 19d | 2025-02-17 | 2025-03-09 | 940FS-1d | 100% | start no earlier than 2025-02-17 | 7 day week With NGT Ban | 7576563 |
| 943 | 37200.37300.37500.38000.100000.102600.134900.203700 | Formwork | 18d | 2025-02-20 | 2025-03-09 | 942SS+3d | 100% | start no earlier than 2025-02-20 | 7 day week With NGT Ban | 7576573 |
| 944 | 37200.37300.37500.38000.100000.102600.134900.203800 | Concreting | 1.94d | 2025-03-09 | 2025-03-10 | 943FS-1d | 100% | start no earlier than 2025-03-09 | 7 day week With NGT Ban | 7576583 |
| 945 | 37200.37300.37500.38000.100000.102600.186100 | **Podium** | 29d | 2025-03-11 | 2025-04-08 |  | 58% | start no earlier than 2025-03-11 | 7 day week With NGT Ban | 7571193 |
| 946 | 37200.37300.37500.38000.100000.102600.186100.203900 | Reinforcement | 15d | 2025-03-11 | 2025-04-05 | 944FS+0.06d | 66% | start no earlier than 2025-03-11 | 7 day week With NGT Ban | 7576593 |
| 947 | 37200.37300.37500.38000.100000.102600.186100.204000 | Formwork | 15d | 2025-03-17 | 2025-04-07 | 946SS+1d | 53% | start no earlier than 2025-03-17 | 7 day week With NGT Ban | 7576603 |
| 948 | 37200.37300.37500.38000.100000.102600.186100.397500 | Concreting | 1d | 2025-04-08 | 2025-04-08 | 947 |  |  | 7 day week With NGT Ban | 7576613 |
| 949 | 37200.37300.37500.38000.100000.128400 | **Substructure Finishing** | 129.81d | 2025-05-05 | 2025-09-12 |  |  | start no earlier than 2025-05-05 | 7 day week With NGT Ban | 7569503 |
| 950 | 37200.37300.37500.38000.100000.128400.268900 | Masonary work | 44.94d | 2025-05-05 | 2025-06-19 | 948FS+26.75d |  |  | 7 day week With NGT Ban | 7572553 |
| 951 | 37200.37300.37500.38000.100000.128400.269000 | Plaster | 39.94d | 2025-06-19 | 2025-07-29 | 950 |  |  | 7 day week With NGT Ban | 7572563 |
| 952 | 37200.37300.37500.38000.100000.128400.269100 | Structural steel | 59.94d | 2025-06-01 | 2025-07-31 | 948FS+53.38d |  |  | 7 day week With NGT Ban | 7572573 |
| 953 | 37200.37300.37500.38000.100000.128400.269200 | White Wash | 44.94d | 2025-07-29 | 2025-09-12 | 951 |  |  | 7 day week With NGT Ban | 7572583 |
| 954 | 37200.37300.37500.38000.39200 | **Superstructure** | 737.44d | 2025-04-11 | 2027-07-18 |  |  | start no earlier than 2025-04-11 | 7 day week With NGT Ban | 7567533 |
| 955 | 37200.37300.37500.38000.39200.43400 | **RCC structure** | 445.88d | 2025-04-11 | 2026-08-15 |  |  | start no earlier than 2025-04-11 | 7 day week With NGT Ban | 7567653 |
| 956 | 37200.37300.37500.38000.39200.43400.135000 | **1st floor slab** | 24d | 2025-04-11 | 2025-05-05 |  |  | start no earlier than 2025-04-11 | 7 day week With NGT Ban | 7569933 |
| 957 | 37200.37300.37500.38000.39200.43400.135000.397600 | Reinforcement | 20d | 2025-04-11 | 2025-05-01 | 948FS+2.75d |  |  | 7 day week With NGT Ban | 7576623 |
| 958 | 37200.37300.37500.38000.39200.43400.135000.397700 | Wall conduiting | 4d | 2025-04-14 | 2025-04-18 | 957SS+2.75d |  |  | 7 day week With NGT Ban | 7576633 |
| 959 | 37200.37300.37500.38000.39200.43400.135000.397800 | Formwork | 20d | 2025-04-14 | 2025-05-04 | 957SS+3d |  |  | 7 day week With NGT Ban | 7576643 |
| 960 | 37200.37300.37500.38000.39200.43400.135000.397900 | Concreting | 1d | 2025-05-04 | 2025-05-05 | 959 |  |  | 7 day week With NGT Ban | 7576653 |

| ID | WBS | Task | Duration | Start | Finish | Predecessors | Constraint | Calendar | Unique_Task_ID |
| --- | --- | --- | --- | --- | --- | --- | --- | --- | --- |
| 961 | 37200.37300.37500.38000.39200.43400.135100 | **2nd floor slab** | 21d | 2025-05-06 | 2025-05-27 |  | start no earlier than 2025-05-06 | 7 day week With NGT Ban | 7569943 |
| 962 | 37200.37300.37500.38000.39200.43400.135100.398000 | Reinforcement | 20d | 2025-05-06 | 2025-05-26 | 960FS+1d |  | 7 day week With NGT Ban | 7576663 |
| 963 | 37200.37300.37500.38000.39200.43400.135100.398100 | Wall conduiting | 4d | 2025-05-09 | 2025-05-13 | 958, 962SS+2.75d |  | 7 day week With NGT Ban | 7576673 |
| 964 | 37200.37300.37500.38000.39200.43400.135100.398200 | Formwork | 17d | 2025-05-09 | 2025-05-26 | 962SS+3d |  | 7 day week With NGT Ban | 7576683 |
| 965 | 37200.37300.37500.38000.39200.43400.135100.398300 | Concreting | 1d | 2025-05-26 | 2025-05-27 | 964 |  | 7 day week With NGT Ban | 7576693 |
| 966 | 37200.37300.37500.38000.39200.43400.135200 | **3rd floor slab** | 15d | 2025-05-28 | 2025-06-12 |  | start no earlier than 2025-05-28 | 7 day week With NGT Ban | 7569953 |
| 967 | 37200.37300.37500.38000.39200.43400.135200.398400 | Reinforcement | 11d | 2025-05-28 | 2025-06-08 | 965FS+1d |  | 7 day week With NGT Ban | 7576703 |
| 968 | 37200.37300.37500.38000.39200.43400.135200.398500 | Wall conduiting | 3d | 2025-05-31 | 2025-06-03 | 963, 967SS+2.75d |  | 7 day week With NGT Ban | 7576713 |
| 969 | 37200.37300.37500.38000.39200.43400.135200.398600 | Formwork | 11d | 2025-05-31 | 2025-06-11 | 967SS+3d |  | 7 day week With NGT Ban | 7576723 |
| 970 | 37200.37300.37500.38000.39200.43400.135200.398700 | Concreting | 1d | 2025-06-11 | 2025-06-12 | 969 |  | 7 day week With NGT Ban | 7576733 |
| 971 | 37200.37300.37500.38000.39200.43400.135300 | **4th floor slab** | 9d | 2025-06-13 | 2025-06-22 |  | start no earlier than 2025-06-13 | 7 day week With NGT Ban | 7569963 |
| 972 | 37200.37300.37500.38000.39200.43400.135300.398800 | Reinforcement | 8d | 2025-06-13 | 2025-06-21 | 970FS+1d |  | 7 day week With NGT Ban | 7576743 |
| 973 | 37200.37300.37500.38000.39200.43400.135300.398900 | Wall conduiting | 3d | 2025-06-14 | 2025-06-17 | 968, 972SS+1d |  | 7 day week With NGT Ban | 7576753 |
| 974 | 37200.37300.37500.38000.39200.43400.135300.399000 | Formwork | 7d | 2025-06-14 | 2025-06-21 | 972SS+1d |  | 7 day week With NGT Ban | 7576763 |
| 975 | 37200.37300.37500.38000.39200.43400.135300.399100 | Concreting | 1d | 2025-06-21 | 2025-06-22 | 974 |  | 7 day week With NGT Ban | 7576773 |
| 976 | 37200.37300.37500.38000.39200.43400.135400 | **5th floor slab** | 9d | 2025-06-23 | 2025-07-02 |  | start no earlier than 2025-06-23 | 7 day week With NGT Ban | 7569973 |
| 977 | 37200.37300.37500.38000.39200.43400.135400.399200 | Reinforcement | 8d | 2025-06-23 | 2025-07-01 | 975FS+1d |  | 7 day week With NGT Ban | 7576783 |
| 978 | 37200.37300.37500.38000.39200.43400.135400.399300 | Wall conduiting | 3d | 2025-06-24 | 2025-06-27 | 973, 977SS+1d |  | 7 day week With NGT Ban | 7576793 |
| 979 | 37200.37300.37500.38000.39200.43400.135400.399400 | Formwork | 7d | 2025-06-24 | 2025-07-01 | 977SS+1d |  | 7 day week With NGT Ban | 7576803 |
| 980 | 37200.37300.37500.38000.39200.43400.135400.399500 | Concreting | 1d | 2025-07-01 | 2025-07-02 | 979 |  | 7 day week With NGT Ban | 7576813 |
| 981 | 37200.37300.37500.38000.39200.43400.135500 | **6th floor slab** | 9d | 2025-07-03 | 2025-07-12 |  | start no earlier than 2025-07-03 | 7 day week With NGT Ban | 7569983 |
| 982 | 37200.37300.37500.38000.39200.43400.135500.399600 | Reinforcement | 8d | 2025-07-03 | 2025-07-11 | 980FS+1d |  | 7 day week With NGT Ban | 7576823 |
| 983 | 37200.37300.37500.38000.39200.43400.135500.399700 | Wall conduiting | 3d | 2025-07-04 | 2025-07-07 | 978, 982SS+1d |  | 7 day week With NGT Ban | 7576833 |
| 984 | 37200.37300.37500.38000.39200.43400.135500.399800 | Formwork | 7d | 2025-07-04 | 2025-07-11 | 982SS+1d |  | 7 day week With NGT Ban | 7576843 |
| 985 | 37200.37300.37500.38000.39200.43400.135500.399900 | Concreting | 1d | 2025-07-11 | 2025-07-12 | 984 |  | 7 day week With NGT Ban | 7576853 |

| ID | WBS | Task | Duration | Start | Finish | Predecessors | Constraint | Calendar | Unique_Task_ID |
| --- | --- | --- | --- | --- | --- | --- | --- | --- | --- |
| 986 | 37200.37300.37500.38000.39200.43400.135600 | **7th floor slab** | 9d | 2025-07-13 | 2025-07-22 |  | start no earlier than 2025-07-13 | 7 day week With NGT Ban | 7569993 |
| 987 | 37200.37300.37500.38000.39200.43400.135600.400000 | Reinforcement | 8d | 2025-07-13 | 2025-07-21 | 985FS+1d |  | 7 day week With NGT Ban | 7576863 |
| 988 | 37200.37300.37500.38000.39200.43400.135600.400100 | Wall conduiting | 3d | 2025-07-14 | 2025-07-17 | 983, 987SS+1d |  | 7 day week With NGT Ban | 7576873 |
| 989 | 37200.37300.37500.38000.39200.43400.135600.400200 | Formwork | 7d | 2025-07-14 | 2025-07-21 | 987SS+1d |  | 7 day week With NGT Ban | 7576883 |
| 990 | 37200.37300.37500.38000.39200.43400.135600.400300 | Concreting | 1d | 2025-07-21 | 2025-07-22 | 989 |  | 7 day week With NGT Ban | 7576893 |
| 991 | 37200.37300.37500.38000.39200.43400.135700 | **8th floor slab** | 12d | 2025-07-23 | 2025-08-04 |  | start no earlier than 2025-07-23 | 7 day week With NGT Ban | 7570003 |
| 992 | 37200.37300.37500.38000.39200.43400.135700.400400 | Reinforcement | 10d | 2025-07-23 | 2025-08-02 | 990FS+1d |  | 7 day week With NGT Ban | 7576903 |
| 993 | 37200.37300.37500.38000.39200.43400.135700.400500 | Wall conduiting | 3d | 2025-07-24 | 2025-07-27 | 988, 992SS+1d |  | 7 day week With NGT Ban | 7576913 |
| 994 | 37200.37300.37500.38000.39200.43400.135700.400600 | Formwork | 10d | 2025-07-24 | 2025-08-03 | 992SS+1d |  | 7 day week With NGT Ban | 7576923 |
| 995 | 37200.37300.37500.38000.39200.43400.135700.400700 | Concreting | 1d | 2025-08-03 | 2025-08-04 | 994 |  | 7 day week With NGT Ban | 7576933 |
| 996 | 37200.37300.37500.38000.39200.43400.135800 | **9th floor slab** | 9d | 2025-08-05 | 2025-08-14 |  | start no earlier than 2025-08-05 | 7 day week With NGT Ban | 7570013 |
| 997 | 37200.37300.37500.38000.39200.43400.135800.400800 | Reinforcement | 8d | 2025-08-05 | 2025-08-13 | 995FS+1d |  | 7 day week With NGT Ban | 7576943 |
| 998 | 37200.37300.37500.38000.39200.43400.135800.400900 | Wall conduiting | 3d | 2025-08-06 | 2025-08-09 | 993, 997SS+1d |  | 7 day week With NGT Ban | 7576953 |
| 999 | 37200.37300.37500.38000.39200.43400.135800.401000 | Formwork | 7d | 2025-08-06 | 2025-08-13 | 997SS+1d |  | 7 day week With NGT Ban | 7576963 |
| 1000 | 37200.37300.37500.38000.39200.43400.135800.401100 | Concreting | 1d | 2025-08-13 | 2025-08-14 | 999 |  | 7 day week With NGT Ban | 7576973 |
| 1001 | 37200.37300.37500.38000.39200.43400.135900 | **10th floor slab** | 9d | 2025-08-11 | 2025-08-20 |  | start no earlier than 2025-08-11 | 7 day week With NGT Ban | 7570023 |
| 1002 | 37200.37300.37500.38000.39200.43400.135900.401200 | Reinforcement | 8d | 2025-08-11 | 2025-08-19 | 997SS+6d |  | 7 day week With NGT Ban | 7576983 |
| 1003 | 37200.37300.37500.38000.39200.43400.135900.401300 | Wall conduiting | 3d | 2025-08-12 | 2025-08-15 | 998, 1002SS+1d |  | 7 day week With NGT Ban | 7576993 |
| 1004 | 37200.37300.37500.38000.39200.43400.135900.401400 | Formwork | 7d | 2025-08-12 | 2025-08-19 | 1002SS+1d |  | 7 day week With NGT Ban | 7577003 |
| 1005 | 37200.37300.37500.38000.39200.43400.135900.401500 | Concreting | 1d | 2025-08-19 | 2025-08-20 | 1004 |  | 7 day week With NGT Ban | 7577013 |
| 1006 | 37200.37300.37500.38000.39200.43400.136000 | **11th floor slab** | 9d | 2025-08-21 | 2025-08-30 |  | start no earlier than 2025-08-21 | 7 day week With NGT Ban | 7570033 |
| 1007 | 37200.37300.37500.38000.39200.43400.136000.401600 | Reinforcement | 8d | 2025-08-21 | 2025-08-29 | 1005FS+1d |  | 7 day week With NGT Ban | 7577023 |
| 1008 | 37200.37300.37500.38000.39200.43400.136000.401700 | Wall conduiting | 3d | 2025-08-22 | 2025-08-25 | 1003, 1007SS+1d |  | 7 day week With NGT Ban | 7577033 |
| 1009 | 37200.37300.37500.38000.39200.43400.136000.401800 | Formwork | 7d | 2025-08-22 | 2025-08-29 | 1007SS+1d |  | 7 day week With NGT Ban | 7577043 |
| 1010 | 37200.37300.37500.38000.39200.43400.136000.401900 | Concreting | 1d | 2025-08-29 | 2025-08-30 | 1009 |  | 7 day week With NGT Ban | 7577053 |

| ID | WBS | Task | Duration | Start | Finish | Predecessors | Constraint | Calendar | Unique_Task_ID |
| --- | --- | --- | --- | --- | --- | --- | --- | --- | --- |
| 1011 | 37200.37300.37500.38000.39200.43400.136100 | **12th floor slab** | 9d | 2025-08-31 | 2025-09-09 |  | start no earlier than 2025-08-31 | 7 day week With NGT Ban | 7570043 |
| 1012 | 37200.37300.37500.38000.39200.43400.136100.402000 | Reinforcement | 8d | 2025-08-31 | 2025-09-08 | 1010FS+1d |  | 7 day week With NGT Ban | 7577063 |
| 1013 | 37200.37300.37500.38000.39200.43400.136100.402100 | Wall conduiting | 3d | 2025-09-01 | 2025-09-04 | 1008, 1012SS+1d |  | 7 day week With NGT Ban | 7577073 |
| 1014 | 37200.37300.37500.38000.39200.43400.136100.402200 | Formwork | 7d | 2025-09-01 | 2025-09-08 | 1012SS+1d |  | 7 day week With NGT Ban | 7577083 |
| 1015 | 37200.37300.37500.38000.39200.43400.136100.402300 | Concreting | 1d | 2025-09-08 | 2025-09-09 | 1014 |  | 7 day week With NGT Ban | 7577093 |
| 1016 | 37200.37300.37500.38000.39200.43400.136200 | **13th floor slab** | 9d | 2025-09-10 | 2025-09-19 |  | start no earlier than 2025-09-10 | 7 day week With NGT Ban | 7570053 |
| 1017 | 37200.37300.37500.38000.39200.43400.136200.402400 | Reinforcement | 8d | 2025-09-10 | 2025-09-18 | 1015FS+1d |  | 7 day week With NGT Ban | 7577103 |
| 1018 | 37200.37300.37500.38000.39200.43400.136200.402500 | Wall conduiting | 3d | 2025-09-11 | 2025-09-14 | 1013, 1017SS+1d |  | 7 day week With NGT Ban | 7577113 |
| 1019 | 37200.37300.37500.38000.39200.43400.136200.402600 | Formwork | 7d | 2025-09-11 | 2025-09-18 | 1017SS+1d |  | 7 day week With NGT Ban | 7577123 |
| 1020 | 37200.37300.37500.38000.39200.43400.136200.402700 | Concreting | 1d | 2025-09-18 | 2025-09-19 | 1019 |  | 7 day week With NGT Ban | 7577133 |
| 1021 | 37200.37300.37500.38000.39200.43400.136300 | **14th floor slab** | 9d | 2025-09-20 | 2025-09-29 |  | start no earlier than 2025-09-20 | 7 day week With NGT Ban | 7570063 |
| 1022 | 37200.37300.37500.38000.39200.43400.136300.402800 | Reinforcement | 8d | 2025-09-20 | 2025-09-28 | 1020FS+1d |  | 7 day week With NGT Ban | 7577143 |
| 1023 | 37200.37300.37500.38000.39200.43400.136300.402900 | Wall conduiting | 3d | 2025-09-21 | 2025-09-24 | 1018, 1022SS+1d |  | 7 day week With NGT Ban | 7577153 |
| 1024 | 37200.37300.37500.38000.39200.43400.136300.403000 | Formwork | 7d | 2025-09-21 | 2025-09-28 | 1022SS+1d |  | 7 day week With NGT Ban | 7577163 |
| 1025 | 37200.37300.37500.38000.39200.43400.136300.403100 | Concreting | 1d | 2025-09-28 | 2025-09-29 | 1024 |  | 7 day week With NGT Ban | 7577173 |
| 1026 | 37200.37300.37500.38000.39200.43400.136400 | **15th floor slab** | 9d | 2025-09-30 | 2025-10-09 |  | start no earlier than 2025-09-30 | 7 day week With NGT Ban | 7570073 |
| 1027 | 37200.37300.37500.38000.39200.43400.136400.403200 | Reinforcement | 8d | 2025-09-30 | 2025-10-08 | 1025FS+1d |  | 7 day week With NGT Ban | 7577183 |
| 1028 | 37200.37300.37500.38000.39200.43400.136400.403300 | Wall conduiting | 3d | 2025-10-01 | 2025-10-04 | 1023, 1027SS+1d |  | 7 day week With NGT Ban | 7577193 |
| 1029 | 37200.37300.37500.38000.39200.43400.136400.403400 | Formwork | 7d | 2025-10-01 | 2025-10-08 | 1027SS+1d |  | 7 day week With NGT Ban | 7577203 |
| 1030 | 37200.37300.37500.38000.39200.43400.136400.403500 | Concreting | 1d | 2025-10-08 | 2025-10-09 | 1029 |  | 7 day week With NGT Ban | 7577213 |
| 1031 | 37200.37300.37500.38000.39200.43400.136500 | **16th floor slab** | 12d | 2025-10-10 | 2025-10-22 |  | start no earlier than 2025-10-10 | 7 day week With NGT Ban | 7570083 |
| 1032 | 37200.37300.37500.38000.39200.43400.136500.403600 | Reinforcement | 10d | 2025-10-10 | 2025-10-20 | 1030FS+1d |  | 7 day week With NGT Ban | 7577223 |
| 1033 | 37200.37300.37500.38000.39200.43400.136500.403700 | Wall conduiting | 3d | 2025-10-11 | 2025-10-14 | 1028, 1032SS+1d |  | 7 day week With NGT Ban | 7577233 |
| 1034 | 37200.37300.37500.38000.39200.43400.136500.403800 | Formwork | 10d | 2025-10-11 | 2025-10-21 | 1032SS+1d |  | 7 day week With NGT Ban | 7577243 |
| 1035 | 37200.37300.37500.38000.39200.43400.136500.403900 | Concreting | 1d | 2025-10-21 | 2025-10-22 | 1034 |  | 7 day week With NGT Ban | 7577253 |

| ID | WBS | Task | Duration | Start | Finish | Predecessors | Constraint | Calendar | Unique_Task_ID |
| --- | --- | --- | --- | --- | --- | --- | --- | --- | --- |
| 1036 | 37200.37300.37500.38000.39200.43400.136600 | **17th floor slab** | 9d | 2025-10-23 | 2025-12-16 |  | start no earlier than 2025-10-23 | 7 day week With NGT Ban | 7570093 |
| 1037 | 37200.37300.37500.38000.39200.43400.136600.404000 | Reinforcement | 8d | 2025-10-23 | 2025-10-31 | 1035FS+1d |  | 7 day week With NGT Ban | 7577263 |
| 1038 | 37200.37300.37500.38000.39200.43400.136600.404100 | Wall conduiting | 3d | 2025-10-24 | 2025-10-27 | 1033, 1037SS+1d |  | 7 day week With NGT Ban | 7577273 |
| 1039 | 37200.37300.37500.38000.39200.43400.136600.404200 | Formwork | 7d | 2025-10-24 | 2025-10-31 | 1037SS+1d |  | 7 day week With NGT Ban | 7577283 |
| 1040 | 37200.37300.37500.38000.39200.43400.136600.404300 | Concreting | 1d | 2025-10-31 | 2025-12-16 | 1039 |  | 7 day week With NGT Ban | 7577293 |
| 1041 | 37200.37300.37500.38000.39200.43400.136700 | **18th floor slab** | 9d | 2025-12-17 | 2025-12-26 |  | start no earlier than 2025-12-17 | 7 day week With NGT Ban | 7570103 |
| 1042 | 37200.37300.37500.38000.39200.43400.136700.404400 | Reinforcement | 8d | 2025-12-17 | 2025-12-25 | 1040FS+1d |  | 7 day week With NGT Ban | 7577303 |
| 1043 | 37200.37300.37500.38000.39200.43400.136700.404500 | Wall conduiting | 3d | 2025-12-18 | 2025-12-21 | 1038, 1042SS+1d |  | 7 day week With NGT Ban | 7577313 |
| 1044 | 37200.37300.37500.38000.39200.43400.136700.404600 | Formwork | 7d | 2025-12-18 | 2025-12-25 | 1042SS+1d |  | 7 day week With NGT Ban | 7577323 |
| 1045 | 37200.37300.37500.38000.39200.43400.136700.404700 | Concreting | 1d | 2025-12-25 | 2025-12-26 | 1044 |  | 7 day week With NGT Ban | 7577333 |
| 1046 | 37200.37300.37500.38000.39200.43400.136800 | **19th floor slab** | 8d | 2025-12-29 | 2026-01-06 |  | start no earlier than 2025-12-29 | 7 day week With NGT Ban | 7570113 |
| 1047 | 37200.37300.37500.38000.39200.43400.136800.404800 | Reinforcement | 7d | 2025-12-29 | 2026-01-05 | 1045FS+3d |  | 7 day week With NGT Ban | 7577343 |
| 1048 | 37200.37300.37500.38000.39200.43400.136800.404900 | Wall conduiting | 3d | 2025-12-30 | 2026-01-02 | 1043, 1047SS+1d |  | 7 day week With NGT Ban | 7577353 |
| 1049 | 37200.37300.37500.38000.39200.43400.136800.405000 | Formwork | 6d | 2025-12-30 | 2026-01-05 | 1047SS+1d |  | 7 day week With NGT Ban | 7577363 |
| 1050 | 37200.37300.37500.38000.39200.43400.136800.405100 | Concreting | 1d | 2026-01-05 | 2026-01-06 | 1049 |  | 7 day week With NGT Ban | 7577373 |
| 1051 | 37200.37300.37500.38000.39200.43400.136900 | **20th floor slab** | 8d | 2026-01-07 | 2026-01-15 |  | start no earlier than 2026-01-07 | 7 day week With NGT Ban | 7570123 |
| 1052 | 37200.37300.37500.38000.39200.43400.136900.405200 | Reinforcement | 7d | 2026-01-07 | 2026-01-14 | 1050FS+1d |  | 7 day week With NGT Ban | 7577383 |
| 1053 | 37200.37300.37500.38000.39200.43400.136900.405300 | Wall conduiting | 3d | 2026-01-08 | 2026-01-11 | 1048, 1052SS+1d |  | 7 day week With NGT Ban | 7577393 |
| 1054 | 37200.37300.37500.38000.39200.43400.136900.405400 | Formwork | 6d | 2026-01-08 | 2026-01-14 | 1052SS+1d |  | 7 day week With NGT Ban | 7577403 |
| 1055 | 37200.37300.37500.38000.39200.43400.136900.405500 | Concreting | 1d | 2026-01-14 | 2026-01-15 | 1054 |  | 7 day week With NGT Ban | 7577413 |
| 1056 | 37200.37300.37500.38000.39200.43400.137000 | **21st floor slab** | 8d | 2026-01-16 | 2026-01-24 |  | start no earlier than 2026-01-16 | 7 day week With NGT Ban | 7570133 |
| 1057 | 37200.37300.37500.38000.39200.43400.137000.405600 | Reinforcement | 7d | 2026-01-16 | 2026-01-23 | 1055FS+1d |  | 7 day week With NGT Ban | 7577423 |
| 1058 | 37200.37300.37500.38000.39200.43400.137000.405700 | Wall conduiting | 3d | 2026-01-17 | 2026-01-20 | 1053, 1057SS+1d |  | 7 day week With NGT Ban | 7577433 |
| 1059 | 37200.37300.37500.38000.39200.43400.137000.405800 | Formwork | 6d | 2026-01-17 | 2026-01-23 | 1057SS+1d |  | 7 day week With NGT Ban | 7577443 |
| 1060 | 37200.37300.37500.38000.39200.43400.137000.405900 | Concreting | 1d | 2026-01-23 | 2026-01-24 | 1059 |  | 7 day week With NGT Ban | 7577453 |

| ID | WBS | Task | Duration | Start | Finish | Predecessors | Constraint | Calendar | Unique_Task_ID |
| --- | --- | --- | --- | --- | --- | --- | --- | --- | --- |
| 1061 | 37200.37300.37500.38000.39200.43400.137100 | **22nd floor slab** | 8d | 2026-01-25 | 2026-02-02 |  | start no earlier than 2026-01-25 | 7 day week With NGT Ban | 7570143 |
| 1062 | 37200.37300.37500.38000.39200.43400.137100.406000 | Reinforcement | 7d | 2026-01-25 | 2026-02-01 | 1060FS+1d |  | 7 day week With NGT Ban | 7577463 |
| 1063 | 37200.37300.37500.38000.39200.43400.137100.406100 | Wall conduiting | 3d | 2026-01-26 | 2026-01-29 | 1058, 1062SS+1d |  | 7 day week With NGT Ban | 7577473 |
| 1064 | 37200.37300.37500.38000.39200.43400.137100.406200 | Formwork | 6d | 2026-01-26 | 2026-02-01 | 1062SS+1d |  | 7 day week With NGT Ban | 7577483 |
| 1065 | 37200.37300.37500.38000.39200.43400.137100.406300 | Concreting | 1d | 2026-02-01 | 2026-02-02 | 1064 |  | 7 day week With NGT Ban | 7577493 |
| 1066 | 37200.37300.37500.38000.39200.43400.137200 | **23rd floor slab** | 8d | 2026-02-04 | 2026-02-12 |  | start no earlier than 2026-02-04 | 7 day week With NGT Ban | 7570153 |
| 1067 | 37200.37300.37500.38000.39200.43400.137200.406400 | Reinforcement | 7d | 2026-02-04 | 2026-02-11 | 1065FS+1.88d |  | 7 day week With NGT Ban | 7577503 |
| 1068 | 37200.37300.37500.38000.39200.43400.137200.406500 | Wall conduiting | 3d | 2026-02-05 | 2026-02-08 | 1063, 1067SS+1d |  | 7 day week With NGT Ban | 7577513 |
| 1069 | 37200.37300.37500.38000.39200.43400.137200.406600 | Formwork | 6d | 2026-02-05 | 2026-02-11 | 1067SS+1d |  | 7 day week With NGT Ban | 7577523 |
| 1070 | 37200.37300.37500.38000.39200.43400.137200.406700 | Concreting | 1d | 2026-02-11 | 2026-02-12 | 1069 |  | 7 day week With NGT Ban | 7577533 |
| 1071 | 37200.37300.37500.38000.39200.43400.137300 | **24th floor slab** | 12d | 2026-02-13 | 2026-02-25 |  | start no earlier than 2026-02-13 | 7 day week With NGT Ban | 7570163 |
| 1072 | 37200.37300.37500.38000.39200.43400.137300.406800 | Reinforcement | 10d | 2026-02-13 | 2026-02-23 | 1070FS+1d |  | 7 day week With NGT Ban | 7577543 |
| 1073 | 37200.37300.37500.38000.39200.43400.137300.406900 | Wall conduiting | 3d | 2026-02-14 | 2026-02-17 | 1068, 1072SS+1d |  | 7 day week With NGT Ban | 7577553 |
| 1074 | 37200.37300.37500.38000.39200.43400.137300.407000 | Formwork | 10d | 2026-02-14 | 2026-02-24 | 1072SS+1d |  | 7 day week With NGT Ban | 7577563 |
| 1075 | 37200.37300.37500.38000.39200.43400.137300.407100 | Concreting | 1d | 2026-02-24 | 2026-02-25 | 1074 |  | 7 day week With NGT Ban | 7577573 |
| 1076 | 37200.37300.37500.38000.39200.43400.137400 | **25th floor slab** | 12d | 2026-02-26 | 2026-03-10 |  | start no earlier than 2026-02-26 | 7 day week With NGT Ban | 7570173 |
| 1077 | 37200.37300.37500.38000.39200.43400.137400.407200 | Reinforcement | 10d | 2026-02-26 | 2026-03-08 | 1075FS+1d |  | 7 day week With NGT Ban | 7577583 |
| 1078 | 37200.37300.37500.38000.39200.43400.137400.407300 | Wall conduiting | 3d | 2026-02-27 | 2026-03-02 | 1073, 1077SS+1d |  | 7 day week With NGT Ban | 7577593 |
| 1079 | 37200.37300.37500.38000.39200.43400.137400.407400 | Formwork | 10d | 2026-02-27 | 2026-03-09 | 1077SS+1d |  | 7 day week With NGT Ban | 7577603 |
| 1080 | 37200.37300.37500.38000.39200.43400.137400.407500 | Concreting | 1d | 2026-03-09 | 2026-03-10 | 1079 |  | 7 day week With NGT Ban | 7577613 |
| 1081 | 37200.37300.37500.38000.39200.43400.137500 | **26th floor slab** | 8d | 2026-03-11 | 2026-03-19 |  | start no earlier than 2026-03-11 | 7 day week With NGT Ban | 7570183 |
| 1082 | 37200.37300.37500.38000.39200.43400.137500.407600 | Reinforcement | 7d | 2026-03-11 | 2026-03-18 | 1080FS+1d |  | 7 day week With NGT Ban | 7577623 |
| 1083 | 37200.37300.37500.38000.39200.43400.137500.407700 | Wall conduiting | 3d | 2026-03-12 | 2026-03-15 | 1078, 1082SS+1d |  | 7 day week With NGT Ban | 7577633 |
| 1084 | 37200.37300.37500.38000.39200.43400.137500.407800 | Formwork | 6d | 2026-03-12 | 2026-03-18 | 1082SS+1d |  | 7 day week With NGT Ban | 7577643 |
| 1085 | 37200.37300.37500.38000.39200.43400.137500.407900 | Concreting | 1d | 2026-03-18 | 2026-03-19 | 1084 |  | 7 day week With NGT Ban | 7577653 |

| ID | WBS | Task | Duration | Start | Finish | Predecessors | Constraint | Calendar | Unique_Task_ID |
| --- | --- | --- | --- | --- | --- | --- | --- | --- | --- |
| 1086 | 37200.37300.37500.38000.39200.43400.137600 | **27th floor slab** | 8d | 2026-03-20 | 2026-03-28 |  | start no earlier than 2026-03-20 | 7 day week With NGT Ban | 7570193 |
| 1087 | 37200.37300.37500.38000.39200.43400.137600.408000 | Reinforcement | 7d | 2026-03-20 | 2026-03-27 | 1085FS+1d |  | 7 day week With NGT Ban | 7577663 |
| 1088 | 37200.37300.37500.38000.39200.43400.137600.408100 | Wall conduiting | 3d | 2026-03-21 | 2026-03-24 | 1083, 1087SS+1d |  | 7 day week With NGT Ban | 7577673 |
| 1089 | 37200.37300.37500.38000.39200.43400.137600.408200 | Formwork | 6d | 2026-03-21 | 2026-03-27 | 1087SS+1d |  | 7 day week With NGT Ban | 7577683 |
| 1090 | 37200.37300.37500.38000.39200.43400.137600.408300 | Concreting | 1d | 2026-03-27 | 2026-03-28 | 1089 |  | 7 day week With NGT Ban | 7577693 |
| 1091 | 37200.37300.37500.38000.39200.43400.137700 | **28th floor slab** | 8d | 2026-03-29 | 2026-04-06 |  | start no earlier than 2026-03-29 | 7 day week With NGT Ban | 7570203 |
| 1092 | 37200.37300.37500.38000.39200.43400.137700.408400 | Reinforcement | 7d | 2026-03-29 | 2026-04-05 | 1090FS+1d |  | 7 day week With NGT Ban | 7577703 |
| 1093 | 37200.37300.37500.38000.39200.43400.137700.408500 | Wall conduiting | 3d | 2026-03-30 | 2026-04-02 | 1088, 1092SS+1d |  | 7 day week With NGT Ban | 7577713 |
| 1094 | 37200.37300.37500.38000.39200.43400.137700.408600 | Formwork | 6d | 2026-03-30 | 2026-04-05 | 1092SS+1d |  | 7 day week With NGT Ban | 7577723 |
| 1095 | 37200.37300.37500.38000.39200.43400.137700.408700 | Concreting | 1d | 2026-04-05 | 2026-04-06 | 1094 |  | 7 day week With NGT Ban | 7577733 |
| 1096 | 37200.37300.37500.38000.39200.43400.137800 | **29th floor slab** | 8d | 2026-04-06 | 2026-04-14 |  | start no earlier than 2026-04-06 | 7 day week With NGT Ban | 7570213 |
| 1097 | 37200.37300.37500.38000.39200.43400.137800.408800 | Reinforcement | 7d | 2026-04-06 | 2026-04-13 | 1095 |  | 7 day week With NGT Ban | 7577743 |
| 1098 | 37200.37300.37500.38000.39200.43400.137800.408900 | Wall conduiting | 3d | 2026-04-07 | 2026-04-10 | 1093, 1097SS+1d |  | 7 day week With NGT Ban | 7577753 |
| 1099 | 37200.37300.37500.38000.39200.43400.137800.409000 | Formwork | 6d | 2026-04-07 | 2026-04-13 | 1097SS+1d |  | 7 day week With NGT Ban | 7577763 |
| 1100 | 37200.37300.37500.38000.39200.43400.137800.409100 | Concreting | 1d | 2026-04-13 | 2026-04-14 | 1099 |  | 7 day week With NGT Ban | 7577773 |
| 1101 | 37200.37300.37500.38000.39200.43400.137900 | **30th floor slab** | 8d | 2026-04-14 | 2026-04-22 |  | start no earlier than 2026-04-14 | 7 day week With NGT Ban | 7570223 |
| 1102 | 37200.37300.37500.38000.39200.43400.137900.409200 | Reinforcement | 7d | 2026-04-14 | 2026-04-21 | 1100 |  | 7 day week With NGT Ban | 7577783 |
| 1103 | 37200.37300.37500.38000.39200.43400.137900.409300 | Wall conduiting | 3d | 2026-04-15 | 2026-04-18 | 1098, 1102SS+1d |  | 7 day week With NGT Ban | 7577793 |
| 1104 | 37200.37300.37500.38000.39200.43400.137900.409400 | Formwork | 6d | 2026-04-15 | 2026-04-21 | 1102SS+1d |  | 7 day week With NGT Ban | 7577803 |
| 1105 | 37200.37300.37500.38000.39200.43400.137900.409500 | Concreting | 1d | 2026-04-21 | 2026-04-22 | 1104 |  | 7 day week With NGT Ban | 7577813 |
| 1106 | 37200.37300.37500.38000.39200.43400.138000 | **31st floor slab** | 11.75d | 2026-04-22 | 2026-05-04 |  | start no earlier than 2026-04-22 | 7 day week With NGT Ban | 7570233 |
| 1107 | 37200.37300.37500.38000.39200.43400.138000.409600 | Reinforcement | 8.94d | 2026-04-22 | 2026-05-01 | 1105 |  | 7 day week With NGT Ban | 7577823 |
| 1108 | 37200.37300.37500.38000.39200.43400.138000.409700 | Wall conduiting | 1.94d | 2026-04-23 | 2026-04-25 | 1103, 1107SS+1d |  | 7 day week With NGT Ban | 7577833 |
| 1109 | 37200.37300.37500.38000.39200.43400.138000.409800 | Formwork | 8.94d | 2026-04-24 | 2026-05-03 | 1107SS+1.88d |  | 7 day week With NGT Ban | 7577843 |
| 1110 | 37200.37300.37500.38000.39200.43400.138000.409900 | Concreting | 0.94d | 2026-05-03 | 2026-05-04 | 1109 |  | 7 day week With NGT Ban | 7577853 |

| ID | WBS | Task | Duration | Start | Finish | Predecessors | Constraint | Calendar | Unique_Task_ID |
| --- | --- | --- | --- | --- | --- | --- | --- | --- | --- |
| 1111 | 37200.37300.37500.38000.39200.43400.138100 | **32nd floor slab** | 12.75d | 2026-05-04 | 2026-05-17 |  | start no earlier than 2026-05-04 | 7 day week With NGT Ban | 7570243 |
| 1112 | 37200.37300.37500.38000.39200.43400.138100.410000 | Reinforcement | 9.94d | 2026-05-04 | 2026-05-14 | 1110 |  | 7 day week With NGT Ban | 7577863 |
| 1113 | 37200.37300.37500.38000.39200.43400.138100.410100 | Wall conduiting | 1.94d | 2026-05-05 | 2026-05-07 | 1108, 1112SS+1d |  | 7 day week With NGT Ban | 7577873 |
| 1114 | 37200.37300.37500.38000.39200.43400.138100.410200 | Formwork | 9.94d | 2026-05-06 | 2026-05-16 | 1112SS+1.88d |  | 7 day week With NGT Ban | 7577883 |
| 1115 | 37200.37300.37500.38000.39200.43400.138100.410300 | Concreting | 0.94d | 2026-05-16 | 2026-05-17 | 1114 |  | 7 day week With NGT Ban | 7577893 |
| 1116 | 37200.37300.37500.38000.39200.43400.138200 | **33rd floor slab** | 11.75d | 2026-05-17 | 2026-05-28 |  | start no earlier than 2026-05-17 | 7 day week With NGT Ban | 7570253 |
| 1117 | 37200.37300.37500.38000.39200.43400.138200.410400 | Reinforcement | 8.94d | 2026-05-17 | 2026-05-26 | 1115 |  | 7 day week With NGT Ban | 7577903 |
| 1118 | 37200.37300.37500.38000.39200.43400.138200.410500 | Wall conduiting | 1.94d | 2026-05-18 | 2026-05-20 | 1113, 1117SS+1d |  | 7 day week With NGT Ban | 7577913 |
| 1119 | 37200.37300.37500.38000.39200.43400.138200.410600 | Formwork | 8.94d | 2026-05-19 | 2026-05-27 | 1117SS+1.88d |  | 7 day week With NGT Ban | 7577923 |
| 1120 | 37200.37300.37500.38000.39200.43400.138200.410700 | Concreting | 0.94d | 2026-05-27 | 2026-05-28 | 1119 |  | 7 day week With NGT Ban | 7577933 |
| 1121 | 37200.37300.37500.38000.39200.43400.138300 | **34th floor slab** | 12.75d | 2026-05-28 | 2026-06-10 |  | start no earlier than 2026-05-28 | 7 day week With NGT Ban | 7570263 |
| 1122 | 37200.37300.37500.38000.39200.43400.138300.410800 | Reinforcement | 9.94d | 2026-05-28 | 2026-06-07 | 1120 |  | 7 day week With NGT Ban | 7577943 |
| 1123 | 37200.37300.37500.38000.39200.43400.138300.410900 | Wall conduiting | 1.94d | 2026-05-29 | 2026-05-31 | 1118, 1122SS+1d |  | 7 day week With NGT Ban | 7577953 |
| 1124 | 37200.37300.37500.38000.39200.43400.138300.411000 | Formwork | 9.94d | 2026-05-30 | 2026-06-09 | 1122SS+1.88d |  | 7 day week With NGT Ban | 7577963 |
| 1125 | 37200.37300.37500.38000.39200.43400.138300.411100 | Concreting | 0.94d | 2026-06-09 | 2026-06-10 | 1124 |  | 7 day week With NGT Ban | 7577973 |
| 1126 | 37200.37300.37500.38000.39200.43400.138400 | **35th floor slab** | 11.75d | 2026-06-10 | 2026-06-22 |  | start no earlier than 2026-06-10 | 7 day week With NGT Ban | 7570273 |
| 1127 | 37200.37300.37500.38000.39200.43400.138400.411200 | Reinforcement | 8.94d | 2026-06-10 | 2026-06-19 | 1125 |  | 7 day week With NGT Ban | 7577983 |
| 1128 | 37200.37300.37500.38000.39200.43400.138400.411300 | Wall conduiting | 1.94d | 2026-06-11 | 2026-06-13 | 1123, 1127SS+1d |  | 7 day week With NGT Ban | 7577993 |
| 1129 | 37200.37300.37500.38000.39200.43400.138400.411400 | Formwork | 7.94d | 2026-06-13 | 2026-06-21 | 1128SS+1.88d |  | 7 day week With NGT Ban | 7578003 |
| 1130 | 37200.37300.37500.38000.39200.43400.138400.411500 | Concreting | 0.94d | 2026-06-21 | 2026-06-22 | 1129 |  | 7 day week With NGT Ban | 7578013 |
| 1131 | 37200.37300.37500.38000.39200.43400.138500 | **Terrace floor slab** | 14.75d | 2026-06-22 | 2026-07-07 |  | start no earlier than 2026-06-22 | 7 day week With NGT Ban | 7570283 |
| 1132 | 37200.37300.37500.38000.39200.43400.138500.411600 | Reinforcement | 10.94d | 2026-06-22 | 2026-07-03 | 1130 |  | 7 day week With NGT Ban | 7578023 |
| 1133 | 37200.37300.37500.38000.39200.43400.138500.411700 | Wall conduiting | 1.94d | 2026-06-23 | 2026-06-25 | 1128, 1132SS+1d |  | 7 day week With NGT Ban | 7578033 |
| 1134 | 37200.37300.37500.38000.39200.43400.138500.411800 | Formwork | 11.94d | 2026-06-24 | 2026-07-06 | 1132SS+1.88d |  | 7 day week With NGT Ban | 7578043 |
| 1135 | 37200.37300.37500.38000.39200.43400.138500.411900 | Concreting | 0.94d | 2026-07-06 | 2026-07-07 | 1134 |  | 7 day week With NGT Ban | 7578053 |

| ID | WBS | Task | Duration | Start | Finish | Predecessors | Constraint | Calendar | Unique_Task_ID |
| --- | --- | --- | --- | --- | --- | --- | --- | --- | --- |
| 1136 | 37200.37300.37500.38000.39200.43400.138600 | **OHT & Mumty** | 39.5d | 2026-07-07 | 2026-08-15 |  | start no earlier than 2026-07-07 | 7 day week With NGT Ban | 7570293 |
| 1137 | 37200.37300.37500.38000.39200.43400.138600.412000 | Reinforcement | 29.94d | 2026-07-07 | 2026-08-06 | 1135 |  | 7 day week With NGT Ban | 7578063 |
| 1138 | 37200.37300.37500.38000.39200.43400.138600.412100 | Wall conduiting | 4.94d | 2026-07-08 | 2026-07-13 | 1133, 1137SS+1d |  | 7 day week With NGT Ban | 7578073 |
| 1139 | 37200.37300.37500.38000.39200.43400.138600.412200 | Formwork | 32.94d | 2026-07-10 | 2026-08-12 | 1137SS+3.62d |  | 7 day week With NGT Ban | 7578083 |
| 1140 | 37200.37300.37500.38000.39200.43400.138600.412300 | Concreting | 2.94d | 2026-08-12 | 2026-08-15 | 1139 |  | 7 day week With NGT Ban | 7578093 |
| 1141 | 37200.37300.37500.38000.39200.44900 | **Post Pour Activities** | 425.62d | 2025-06-13 | 2026-09-26 |  | start no earlier than 2025-06-13 | 7 day week With NGT Ban | 7567693 |
| 1142 | 37200.37300.37500.38000.39200.44900.269300 | 1st Floor | 7d | 2025-06-13 | 2025-06-19 | 970FS+0.25d |  | 7 day week With NGT Ban | 7572593 |
| 1143 | 37200.37300.37500.38000.39200.44900.269400 | 2nd Floor | 7d | 2025-06-23 | 2025-06-29 | 1142FS+0.25d, 975FS+0.25d |  | 7 day week With NGT Ban | 7572603 |
| 1144 | 37200.37300.37500.38000.39200.44900.269500 | 3rd Floor | 7d | 2025-07-23 | 2025-07-29 | 1143FS+0.25d, 990FS+0.25d |  | 7 day week With NGT Ban | 7572613 |
| 1145 | 37200.37300.37500.38000.39200.44900.269600 | 4th Floor | 7d | 2025-08-05 | 2025-08-11 | 1144FS+0.25d, 995FS+0.25d |  | 7 day week With NGT Ban | 7572623 |
| 1146 | 37200.37300.37500.38000.39200.44900.269700 | 5th Floor | 7d | 2025-08-15 | 2025-08-21 | 1145FS+0.25d, 1000FS+0.25d |  | 7 day week With NGT Ban | 7572633 |
| 1147 | 37200.37300.37500.38000.39200.44900.269800 | 6th Floor | 7d | 2025-08-22 | 2025-08-29 | 1146FS+0.25d, 1005FS+0.25d |  | 7 day week With NGT Ban | 7572643 |
| 1148 | 37200.37300.37500.38000.39200.44900.269900 | 7th Floor | 7d | 2025-08-31 | 2025-09-06 | 1147FS+0.25d, 1010FS+0.25d |  | 7 day week With NGT Ban | 7572653 |
| 1149 | 37200.37300.37500.38000.39200.44900.270000 | 8th Floor | 7d | 2025-09-10 | 2025-09-16 | 1148FS+0.25d, 1015FS+0.25d |  | 7 day week With NGT Ban | 7572663 |
| 1150 | 37200.37300.37500.38000.39200.44900.270100 | 9th Floor | 7d | 2025-09-20 | 2025-09-26 | 1149FS+0.25d, 1020FS+0.25d |  | 7 day week With NGT Ban | 7572673 |
| 1151 | 37200.37300.37500.38000.39200.44900.270200 | 10th Floor | 7d | 2025-09-30 | 2025-10-06 | 1150FS+0.25d, 1025FS+0.25d |  | 7 day week With NGT Ban | 7572683 |
| 1152 | 37200.37300.37500.38000.39200.44900.270300 | 11th Floor | 7d | 2025-10-22 | 2025-10-29 | 1151, 1035 |  | 7 day week With NGT Ban | 7572693 |
| 1153 | 37200.37300.37500.38000.39200.44900.270400 | 12th Floor | 7d | 2025-12-16 | 2025-12-23 | 1152, 1040 |  | 7 day week With NGT Ban | 7572703 |
| 1154 | 37200.37300.37500.38000.39200.44900.270500 | 13th Floor | 7d | 2025-12-26 | 2026-01-02 | 1153, 1045 |  | 7 day week With NGT Ban | 7572713 |
| 1155 | 37200.37300.37500.38000.39200.44900.270600 | 14th Floor | 7d | 2026-01-06 | 2026-01-13 | 1154, 1050 |  | 7 day week With NGT Ban | 7572723 |
| 1156 | 37200.37300.37500.38000.39200.44900.270700 | 15th Floor | 7d | 2026-01-15 | 2026-01-22 | 1155, 1055 |  | 7 day week With NGT Ban | 7572733 |
| 1157 | 37200.37300.37500.38000.39200.44900.270800 | 16th Floor | 7d | 2026-01-24 | 2026-01-31 | 1156, 1060 |  | 7 day week With NGT Ban | 7572743 |
| 1158 | 37200.37300.37500.38000.39200.44900.270900 | 17th Floor | 7d | 2026-02-02 | 2026-02-09 | 1157, 1065 |  | 7 day week With NGT Ban | 7572753 |
| 1159 | 37200.37300.37500.38000.39200.44900.271000 | 18th Floor | 7d | 2026-02-12 | 2026-02-19 | 1158, 1070 |  | 7 day week With NGT Ban | 7572763 |
| 1160 | 37200.37300.37500.38000.39200.44900.271100 | 19th Floor | 7d | 2026-02-25 | 2026-03-04 | 1159, 1075 |  | 7 day week With NGT Ban | 7572773 |
| 1161 | 37200.37300.37500.38000.39200.44900.271200 | 20th Floor | 7d | 2026-03-10 | 2026-03-17 | 1160, 1080 |  | 7 day week With NGT Ban | 7572783 |
| 1162 | 37200.37300.37500.38000.39200.44900.271300 | 21st Floor | 7d | 2026-03-19 | 2026-03-26 | 1161, 1085 |  | 7 day week With NGT Ban | 7572793 |
| 1163 | 37200.37300.37500.38000.39200.44900.271400 | 22nd Floor | 7d | 2026-03-28 | 2026-04-04 | 1162, 1090 |  | 7 day week With NGT Ban | 7572803 |
| 1164 | 37200.37300.37500.38000.39200.44900.271500 | 23rd Floor | 7d | 2026-04-06 | 2026-04-13 | 1163, 1095 |  | 7 day week With NGT Ban | 7572813 |
| 1165 | 37200.37300.37500.38000.39200.44900.271600 | 24th Floor | 7d | 2026-04-14 | 2026-04-21 | 1164, 1100 |  | 7 day week With NGT Ban | 7572823 |
| 1166 | 37200.37300.37500.38000.39200.44900.271700 | 25th Floor | 7d | 2026-04-22 | 2026-04-29 | 1165, 1105 |  | 7 day week With NGT Ban | 7572833 |
| 1167 | 37200.37300.37500.38000.39200.44900.271800 | 26th Floor | 7d | 2026-05-04 | 2026-05-11 | 1166, 1110 |  | 7 day week With NGT Ban | 7572843 |
| 1168 | 37200.37300.37500.38000.39200.44900.271900 | 27th Floor | 7d | 2026-05-17 | 2026-05-24 | 1167, 1115 |  | 7 day week With NGT Ban | 7572853 |
| 1169 | 37200.37300.37500.38000.39200.44900.272000 | 28th Floor | 7d | 2026-05-28 | 2026-06-04 | 1168, 1120 |  | 7 day week With NGT Ban | 7572863 |
| 1170 | 37200.37300.37500.38000.39200.44900.272100 | 29th Floor | 7d | 2026-06-10 | 2026-06-17 | 1169, 1125 |  | 7 day week With NGT Ban | 7572873 |
| 1171 | 37200.37300.37500.38000.39200.44900.272200 | 30th Floor | 7d | 2026-06-22 | 2026-06-29 | 1170, 1130 |  | 7 day week With NGT Ban | 7572883 |
| 1172 | 37200.37300.37500.38000.39200.44900.272300 | 31st Floor | 7d | 2026-07-07 | 2026-07-14 | 1171, 1135 |  | 7 day week With NGT Ban | 7572893 |
| 1173 | 37200.37300.37500.38000.39200.44900.272400 | 32nd Flood | 7d | 2026-08-15 | 2026-08-22 | 1172, 1140 |  | 7 day week With NGT Ban | 7572903 |
| 1174 | 37200.37300.37500.38000.39200.44900.272500 | 33rd Floor | 7d | 2026-08-22 | 2026-08-29 | 1173 |  | 7 day week With NGT Ban | 7572913 |
| 1175 | 37200.37300.37500.38000.39200.44900.272600 | 34th Floor | 7d | 2026-08-29 | 2026-09-05 | 1174 |  | 7 day week With NGT Ban | 7572923 |
| 1176 | 37200.37300.37500.38000.39200.44900.272700 | 35th Floor | 7d | 2026-09-05 | 2026-09-12 | 1175 |  | 7 day week With NGT Ban | 7572933 |
| 1177 | 37200.37300.37500.38000.39200.44900.272800 | Terrace | 7d | 2026-09-12 | 2026-09-19 | 1176 |  | 7 day week With NGT Ban | 7572943 |
| 1178 | 37200.37300.37500.38000.39200.44900.272900 | Mumty & Machine Room | 7d | 2026-09-19 | 2026-09-26 | 1177 |  | 7 day week With NGT Ban | 7572953 |

| ID | WBS | Task | Duration | Start | Finish | Predecessors | Constraint | Calendar | Unique_Task_ID |
| --- | --- | --- | --- | --- | --- | --- | --- | --- | --- |
| 1179 | 37200.37300.37500.38000.39200.40400 | **Finishing work** | 667.94d | 2025-06-20 | 2027-07-18 |  | start no earlier than 2025-06-20 | 7 day week With NGT Ban | 7567573 |
| 1180 | 37200.37300.37500.38000.39200.40400.41400 | **Flat finishing** | 571.25d | 2025-06-20 | 2027-04-12 |  | start no earlier than 2025-06-20 | 7 day week With NGT Ban | 7567613 |
| 1181 | 37200.37300.37500.38000.39200.40400.41400.80500 | **1st Floor** | 68d | 2025-06-20 | 2025-08-27 |  | start no earlier than 2025-06-20 | 7 day week With NGT Ban | 7568073 |
| 1182 | 37200.37300.37500.38000.39200.40400.41400.80500.864800 | Block Work | 5d | 2025-06-20 | 2025-06-25 | 1142FS+0.25d |  | 7 day week With NGT Ban | 7586943 |
| 1183 | 37200.37300.37500.38000.39200.40400.41400.80500.864900 | Door Frame Fixing | 5d | 2025-06-25 | 2025-06-30 | 1182 |  | 7 day week With NGT Ban | 7586953 |
| 1184 | 37200.37300.37500.38000.39200.40400.41400.80500.865000 | Internal Plumbing Works | 5d | 2025-06-21 | 2025-06-26 | 1182SS+1d |  | 7 day week With NGT Ban | 7586963 |
| 1185 | 37200.37300.37500.38000.39200.40400.41400.80500.865100 | Waterproofing | 8d | 2025-06-26 | 2025-07-04 | 1184 |  | 7 day week With NGT Ban | 7586973 |
| 1186 | 37200.37300.37500.38000.39200.40400.41400.80500.865200 | Internal Plaster | 7d | 2025-06-26 | 2025-07-03 | 1182FS+1d |  | 7 day week With NGT Ban | 7586983 |
| 1187 | 37200.37300.37500.38000.39200.40400.41400.80500.865300 | IPS flooring work | 7d | 2025-07-04 | 2025-07-11 | 1183, 1184, 1185 |  | 7 day week With NGT Ban | 7586993 |
| 1188 | 37200.37300.37500.38000.39200.40400.41400.80500.865400 | Toilet dado work | 7d | 2025-07-04 | 2025-07-11 | 1185, 1186 |  | 7 day week With NGT Ban | 7587003 |
| 1189 | 37200.37300.37500.38000.39200.40400.41400.80500.865500 | Toilet flooring work | 7d | 2025-07-11 | 2025-07-18 | 1188 |  | 7 day week With NGT Ban | 7587013 |
| 1190 | 37200.37300.37500.38000.39200.40400.41400.80500.865600 | Living dinning flooring | 8d | 2025-07-18 | 2025-07-26 | 1183, 1189 |  | 7 day week With NGT Ban | 7587023 |
| 1191 | 37200.37300.37500.38000.39200.40400.41400.80500.865700 | Aluminium door-window fixing | 7d | 2025-07-26 | 2025-08-02 | 1187, 1190 |  | 7 day week With NGT Ban | 7587033 |
| 1192 | 37200.37300.37500.38000.39200.40400.41400.80500.865800 | Putty primer coat | 6d | 2025-07-26 | 2025-08-01 | 1190 |  | 7 day week With NGT Ban | 7587043 |
| 1193 | 37200.37300.37500.38000.39200.40400.41400.80500.865900 | Door shutter fixing | 8d | 2025-07-26 | 2025-08-03 | 1190 |  | 7 day week With NGT Ban | 7587053 |
| 1194 | 37200.37300.37500.38000.39200.40400.41400.80500.866000 | Electrical wiring work | 8d | 2025-08-03 | 2025-08-11 | 1193 |  | 7 day week With NGT Ban | 7587063 |
| 1195 | 37200.37300.37500.38000.39200.40400.41400.80500.866100 | Painting 1st coat | 8d | 2025-08-11 | 2025-08-19 | 1192, 1193, 1194 |  | 7 day week With NGT Ban | 7587073 |
| 1196 | 37200.37300.37500.38000.39200.40400.41400.80500.866200 | False ceiling | 8d | 2025-08-19 | 2025-08-27 | 1195 |  | 7 day week With NGT Ban | 7587083 |
| 1197 | 37200.37300.37500.38000.39200.40400.41400.80400 | **2nd Floor** | 75d | 2025-06-25 | 2025-09-08 |  | start no earlier than 2025-06-25 | 7 day week With NGT Ban | 7568083 |
| 1198 | 37200.37300.37500.38000.39200.40400.41400.80400.866300 | Block Work | 8d | 2025-06-25 | 2025-07-03 | 1182FS+0.25d |  | 7 day week With NGT Ban | 7587093 |
| 1199 | 37200.37300.37500.38000.39200.40400.41400.80400.866400 | Door Frame Fixing | 9d | 2025-07-03 | 2025-07-12 | 1183, 1198 |  | 7 day week With NGT Ban | 7587103 |
| 1200 | 37200.37300.37500.38000.39200.40400.41400.80400.866500 | Internal Plumbing Works | 8d | 2025-07-03 | 2025-07-11 | 1184, 1198 |  | 7 day week With NGT Ban | 7587113 |
| 1201 | 37200.37300.37500.38000.39200.40400.41400.80400.866600 | Waterproofing | 10d | 2025-07-11 | 2025-07-21 | 1185, 1200 |  | 7 day week With NGT Ban | 7587123 |
| 1202 | 37200.37300.37500.38000.39200.40400.41400.80400.866700 | Internal Plaster | 8d | 2025-07-03 | 2025-07-11 | 1186FS+0.25d |  | 7 day week With NGT Ban | 7587133 |
| 1203 | 37200.37300.37500.38000.39200.40400.41400.80400.866800 | IPS flooring work | 10d | 2025-07-21 | 2025-07-31 | 1187, 1199, 1200, 1201 |  | 7 day week With NGT Ban | 7587143 |
| 1204 | 37200.37300.37500.38000.39200.40400.41400.80400.866900 | Toilet dado work | 8d | 2025-07-21 | 2025-07-29 | 1188, 1201, 1202 |  | 7 day week With NGT Ban | 7587153 |
| 1205 | 37200.37300.37500.38000.39200.40400.41400.80400.867000 | Toilet flooring work | 8d | 2025-07-29 | 2025-08-06 | 1189, 1204 |  | 7 day week With NGT Ban | 7587163 |
| 1206 | 37200.37300.37500.38000.39200.40400.41400.80400.867100 | Living dinning flooring | 12d | 2025-07-26 | 2025-08-07 | 1190FS+0.25d |  | 7 day week With NGT Ban | 7587173 |
| 1207 | 37200.37300.37500.38000.39200.40400.41400.80400.867200 | Aluminium door-window fixing | 12d | 2025-08-02 | 2025-08-14 | 1191FS+0.25d |  | 7 day week With NGT Ban | 7587183 |
| 1208 | 37200.37300.37500.38000.39200.40400.41400.80400.867300 | Putty primer coat | 6d | 2025-08-07 | 2025-08-13 | 1192, 1206 |  | 7 day week With NGT Ban | 7587193 |
| 1209 | 37200.37300.37500.38000.39200.40400.41400.80400.867400 | Door shutter fixing | 8d | 2025-08-07 | 2025-08-15 | 1193, 1206 |  | 7 day week With NGT Ban | 7587203 |
| 1210 | 37200.37300.37500.38000.39200.40400.41400.80400.867500 | Electrical wiring work | 8d | 2025-08-15 | 2025-08-23 | 1194, 1209 |  | 7 day week With NGT Ban | 7587213 |
| 1211 | 37200.37300.37500.38000.39200.40400.41400.80400.867600 | Painting 1st coat | 8d | 2025-08-23 | 2025-08-31 | 1195, 1208, 1209, 1210 |  | 7 day week With NGT Ban | 7587223 |
| 1212 | 37200.37300.37500.38000.39200.40400.41400.80400.867700 | False ceiling | 8d | 2025-08-31 | 2025-09-08 | 1196, 1211 |  | 7 day week With NGT Ban | 7587233 |

| ID | WBS | Task | Duration | Start | Finish | Predecessors | Constraint | Calendar | Unique_Task_ID |
| --- | --- | --- | --- | --- | --- | --- | --- | --- | --- |
| 1213 | 37200.37300.37500.38000.39200.40400.41400.80300 | **3rd Floor** | 79d | 2025-07-03 | 2025-09-20 |  | start no earlier than 2025-07-03 | 7 day week With NGT Ban | 7568093 |
| 1214 | 37200.37300.37500.38000.39200.40400.41400.80300.867800 | Block Work | 8d | 2025-07-03 | 2025-07-11 | 1198FS+0.25d |  | 7 day week With NGT Ban | 7587243 |
| 1215 | 37200.37300.37500.38000.39200.40400.41400.80300.867900 | Door Frame Fixing | 9d | 2025-07-12 | 2025-07-21 | 1199, 1214 |  | 7 day week With NGT Ban | 7587253 |
| 1216 | 37200.37300.37500.38000.39200.40400.41400.80300.868000 | Internal Plumbing Works | 8d | 2025-07-11 | 2025-07-19 | 1200, 1214 |  | 7 day week With NGT Ban | 7587263 |
| 1217 | 37200.37300.37500.38000.39200.40400.41400.80300.868100 | Waterproofing | 10d | 2025-07-21 | 2025-07-31 | 1201, 1216 |  | 7 day week With NGT Ban | 7587273 |
| 1218 | 37200.37300.37500.38000.39200.40400.41400.80300.868200 | Internal Plaster | 8d | 2025-07-11 | 2025-07-19 | 1202FS+0.25d |  | 7 day week With NGT Ban | 7587283 |
| 1219 | 37200.37300.37500.38000.39200.40400.41400.80300.868300 | IPS flooring work | 10d | 2025-07-31 | 2025-08-10 | 1203, 1215, 1217, 1218 |  | 7 day week With NGT Ban | 7587293 |
| 1220 | 37200.37300.37500.38000.39200.40400.41400.80300.868400 | Toilet dado work | 8d | 2025-07-31 | 2025-08-08 | 1204, 1217, 1218 |  | 7 day week With NGT Ban | 7587303 |
| 1221 | 37200.37300.37500.38000.39200.40400.41400.80300.868500 | Toilet flooring work | 8d | 2025-08-06 | 2025-08-14 | 1205FS+0.25d |  | 7 day week With NGT Ban | 7587313 |
| 1222 | 37200.37300.37500.38000.39200.40400.41400.80300.868600 | Living dinning flooring | 12d | 2025-08-07 | 2025-08-19 | 1206FS+0.25d |  | 7 day week With NGT Ban | 7587323 |
| 1223 | 37200.37300.37500.38000.39200.40400.41400.80300.868700 | Aluminium door-window fixing | 12d | 2025-08-14 | 2025-08-26 | 1207FS+0.25d |  | 7 day week With NGT Ban | 7587333 |
| 1224 | 37200.37300.37500.38000.39200.40400.41400.80300.868800 | Putty primer coat | 6d | 2025-08-19 | 2025-08-25 | 1208, 1222 |  | 7 day week With NGT Ban | 7587343 |
| 1225 | 37200.37300.37500.38000.39200.40400.41400.80300.868900 | Door shutter fixing | 8d | 2025-08-19 | 2025-08-27 | 1209, 1222 |  | 7 day week With NGT Ban | 7587353 |
| 1226 | 37200.37300.37500.38000.39200.40400.41400.80300.869000 | Electrical wiring work | 8d | 2025-08-27 | 2025-09-04 | 1210, 1225 |  | 7 day week With NGT Ban | 7587363 |
| 1227 | 37200.37300.37500.38000.39200.40400.41400.80300.869100 | Painting 1st coat | 8d | 2025-09-04 | 2025-09-12 | 1211, 1224, 1225, 1226 |  | 7 day week With NGT Ban | 7587373 |
| 1228 | 37200.37300.37500.38000.39200.40400.41400.80300.869200 | False ceiling | 8d | 2025-09-12 | 2025-09-20 | 1212, 1227 |  | 7 day week With NGT Ban | 7587383 |
| 1229 | 37200.37300.37500.38000.39200.40400.41400.80200 | **4th Floor** | 59.25d | 2025-08-20 | 2025-10-18 |  | start no earlier than 2025-08-20 | 7 day week With NGT Ban | 7568103 |
| 1230 | 37200.37300.37500.38000.39200.40400.41400.80200.869300 | Block Work | 8d | 2025-08-29 | 2025-09-06 | 1147, 1214 |  | 7 day week With NGT Ban | 7587393 |
| 1231 | 37200.37300.37500.38000.39200.40400.41400.80200.869400 | Door Frame Fixing | 9d | 2025-09-06 | 2025-09-15 | 1215, 1230 |  | 7 day week With NGT Ban | 7587403 |
| 1232 | 37200.37300.37500.38000.39200.40400.41400.80200.869500 | Internal Plumbing Works | 8d | 2025-09-06 | 2025-09-14 | 1216, 1230 |  | 7 day week With NGT Ban | 7587413 |
| 1233 | 37200.37300.37500.38000.39200.40400.41400.80200.869600 | Waterproofing | 10d | 2025-09-14 | 2025-09-24 | 1217, 1232 |  | 7 day week With NGT Ban | 7587423 |
| 1234 | 37200.37300.37500.38000.39200.40400.41400.80200.869700 | Internal Plaster | 8d | 2025-09-24 | 2025-10-02 | 1218, 1231, 1232, 1233 |  | 7 day week With NGT Ban | 7587433 |
| 1235 | 37200.37300.37500.38000.39200.40400.41400.80200.869800 | IPS flooring work | 10d | 2025-10-02 | 2025-10-12 | 1219, 1231, 1233, 1234 |  | 7 day week With NGT Ban | 7587443 |
| 1236 | 37200.37300.37500.38000.39200.40400.41400.80200.869900 | Toilet dado work | 8d | 2025-10-02 | 2025-10-10 | 1220, 1233, 1234 |  | 7 day week With NGT Ban | 7587453 |
| 1237 | 37200.37300.37500.38000.39200.40400.41400.80200.870000 | Toilet flooring work | 8d | 2025-10-10 | 2025-10-18 | 1221, 1236 |  | 7 day week With NGT Ban | 7587463 |
| 1238 | 37200.37300.37500.38000.39200.40400.41400.80200.870100 | Living dinning flooring | 12d | 2025-08-20 | 2025-08-31 | 1222FS+0.25d |  | 7 day week With NGT Ban | 7587473 |
| 1239 | 37200.37300.37500.38000.39200.40400.41400.80200.870200 | Aluminium door-window fixing | 12d | 2025-08-27 | 2025-09-07 | 1223FS+0.25d |  | 7 day week With NGT Ban | 7587483 |
| 1240 | 37200.37300.37500.38000.39200.40400.41400.80200.870300 | Putty primer coat | 6d | 2025-09-01 | 2025-09-06 | 1224, 1238 |  | 7 day week With NGT Ban | 7587493 |
| 1241 | 37200.37300.37500.38000.39200.40400.41400.80200.870400 | Door shutter fixing | 8d | 2025-09-01 | 2025-09-08 | 1225, 1238 |  | 7 day week With NGT Ban | 7587503 |
| 1242 | 37200.37300.37500.38000.39200.40400.41400.80200.870500 | Electrical wiring work | 8d | 2025-09-09 | 2025-09-16 | 1226, 1241 |  | 7 day week With NGT Ban | 7587513 |
| 1243 | 37200.37300.37500.38000.39200.40400.41400.80200.870600 | Painting 1st coat | 8d | 2025-09-17 | 2025-09-24 | 1227, 1240, 1241, 1242 |  | 7 day week With NGT Ban | 7587523 |
| 1244 | 37200.37300.37500.38000.39200.40400.41400.80200.870700 | False ceiling | 8d | 2025-09-25 | 2025-10-02 | 1228, 1243 |  | 7 day week With NGT Ban | 7587533 |

| ID | WBS | Task | Duration | Start | Finish | Predecessors | Constraint | Calendar | Unique_Task_ID |
| --- | --- | --- | --- | --- | --- | --- | --- | --- | --- |
| 1245 | 37200.37300.37500.38000.39200.40400.41400.80100 | **5th Floor** | 57.75d | 2025-09-01 | 2025-10-28 |  | start no earlier than 2025-09-01 | 7 day week With NGT Ban | 7568113 |
| 1246 | 37200.37300.37500.38000.39200.40400.41400.80100.870800 | Block Work | 8d | 2025-09-06 | 2025-09-14 | 1230FS+0.25d |  | 7 day week With NGT Ban | 7587543 |
| 1247 | 37200.37300.37500.38000.39200.40400.41400.80100.870900 | Door Frame Fixing | 9d | 2025-09-15 | 2025-09-24 | 1231, 1246 |  | 7 day week With NGT Ban | 7587553 |
| 1248 | 37200.37300.37500.38000.39200.40400.41400.80100.871000 | Internal Plumbing Works | 8d | 2025-09-14 | 2025-09-22 | 1232, 1246 |  | 7 day week With NGT Ban | 7587563 |
| 1249 | 37200.37300.37500.38000.39200.40400.41400.80100.871100 | Waterproofing | 10d | 2025-09-24 | 2025-10-04 | 1233, 1248 |  | 7 day week With NGT Ban | 7587573 |
| 1250 | 37200.37300.37500.38000.39200.40400.41400.80100.871200 | Internal Plaster | 8d | 2025-10-05 | 2025-10-12 | 1234FS+2.75d |  | 7 day week With NGT Ban | 7587583 |
| 1251 | 37200.37300.37500.38000.39200.40400.41400.80100.871300 | IPS flooring work | 10d | 2025-10-13 | 2025-10-22 | 1235, 1247, 1249, 1250 |  | 7 day week With NGT Ban | 7587593 |
| 1252 | 37200.37300.37500.38000.39200.40400.41400.80100.871400 | Toilet dado work | 8d | 2025-10-13 | 2025-10-20 | 1236, 1249, 1250 |  | 7 day week With NGT Ban | 7587603 |
| 1253 | 37200.37300.37500.38000.39200.40400.41400.80100.871500 | Toilet flooring work | 8d | 2025-10-21 | 2025-10-28 | 1237, 1252 |  | 7 day week With NGT Ban | 7587613 |
| 1254 | 37200.37300.37500.38000.39200.40400.41400.80100.871600 | Living dinning flooring | 12d | 2025-09-01 | 2025-09-13 | 1238FS+0.25d |  | 7 day week With NGT Ban | 7587623 |
| 1255 | 37200.37300.37500.38000.39200.40400.41400.80100.871700 | Aluminium door-window fixing | 12d | 2025-09-08 | 2025-09-20 | 1239FS+0.25d |  | 7 day week With NGT Ban | 7587633 |
| 1256 | 37200.37300.37500.38000.39200.40400.41400.80100.871800 | Putty primer coat | 6d | 2025-09-13 | 2025-09-19 | 1240, 1254 |  | 7 day week With NGT Ban | 7587643 |
| 1257 | 37200.37300.37500.38000.39200.40400.41400.80100.871900 | Door shutter fixing | 8d | 2025-09-13 | 2025-09-21 | 1241, 1254 |  | 7 day week With NGT Ban | 7587653 |
| 1258 | 37200.37300.37500.38000.39200.40400.41400.80100.872000 | Electrical wiring work | 8d | 2025-09-21 | 2025-09-29 | 1242, 1257 |  | 7 day week With NGT Ban | 7587663 |
| 1259 | 37200.37300.37500.38000.39200.40400.41400.80100.872100 | Painting 1st coat | 8d | 2025-09-29 | 2025-10-07 | 1243, 1256, 1257, 1258 |  | 7 day week With NGT Ban | 7587673 |
| 1260 | 37200.37300.37500.38000.39200.40400.41400.80100.872200 | False ceiling | 8d | 2025-10-07 | 2025-10-15 | 1244, 1259 |  | 7 day week With NGT Ban | 7587683 |
| 1261 | 37200.37300.37500.38000.39200.40400.41400.80000 | **6th Floor** | 52.5d | 2025-09-13 | 2025-12-19 |  | start no earlier than 2025-09-13 | 7 day week With NGT Ban | 7568123 |
| 1262 | 37200.37300.37500.38000.39200.40400.41400.80000.872300 | Block Work | 5d | 2025-09-14 | 2025-09-19 | 1246FS+0.25d |  | 7 day week With NGT Ban | 7587693 |
| 1263 | 37200.37300.37500.38000.39200.40400.41400.80000.872400 | Door Frame Fixing | 5d | 2025-09-24 | 2025-09-29 | 995, 1247 |  | 7 day week With NGT Ban | 7587703 |
| 1264 | 37200.37300.37500.38000.39200.40400.41400.80000.872500 | Internal Plumbing Works | 5d | 2025-09-22 | 2025-09-27 | 1248, 1262 |  | 7 day week With NGT Ban | 7587713 |
| 1265 | 37200.37300.37500.38000.39200.40400.41400.80000.872600 | Waterproofing | 8d | 2025-10-04 | 2025-10-12 | 1249, 1264 |  | 7 day week With NGT Ban | 7587723 |
| 1266 | 37200.37300.37500.38000.39200.40400.41400.80000.872700 | Internal Plaster | 7d | 2025-10-13 | 2025-10-20 | 1250FS+0.25d |  | 7 day week With NGT Ban | 7587733 |
| 1267 | 37200.37300.37500.38000.39200.40400.41400.80000.872800 | IPS flooring work | 7d | 2025-10-23 | 2025-10-29 | 1251, 1263, 1265, 1266 |  | 7 day week With NGT Ban | 7587743 |
| 1268 | 37200.37300.37500.38000.39200.40400.41400.80000.872900 | Toilet dado work | 7d | 2025-10-21 | 2025-10-27 | 1252, 1265, 1266 |  | 7 day week With NGT Ban | 7587753 |
| 1269 | 37200.37300.37500.38000.39200.40400.41400.80000.873000 | Toilet flooring work | 7d | 2025-10-29 | 2025-12-19 | 1253, 1268 |  | 7 day week With NGT Ban | 7587763 |
| 1270 | 37200.37300.37500.38000.39200.40400.41400.80000.873100 | Living dinning flooring | 8d | 2025-09-13 | 2025-09-21 | 1254FS+0.25d |  | 7 day week With NGT Ban | 7587773 |
| 1271 | 37200.37300.37500.38000.39200.40400.41400.80000.873200 | Aluminium door-window fixing | 7d | 2025-09-20 | 2025-09-27 | 1255FS+0.25d |  | 7 day week With NGT Ban | 7587783 |
| 1272 | 37200.37300.37500.38000.39200.40400.41400.80000.873300 | Putty primer coat | 6d | 2025-09-21 | 2025-09-27 | 1256, 1270 |  | 7 day week With NGT Ban | 7587793 |
| 1273 | 37200.37300.37500.38000.39200.40400.41400.80000.873400 | Door shutter fixing | 8d | 2025-09-21 | 2025-09-29 | 1257, 1270 |  | 7 day week With NGT Ban | 7587803 |
| 1274 | 37200.37300.37500.38000.39200.40400.41400.80000.873500 | Electrical wiring work | 8d | 2025-09-29 | 2025-10-07 | 1258, 1273 |  | 7 day week With NGT Ban | 7587813 |
| 1275 | 37200.37300.37500.38000.39200.40400.41400.80000.873600 | Painting 1st coat | 8d | 2025-10-07 | 2025-10-15 | 1259, 1272, 1273, 1274 |  | 7 day week With NGT Ban | 7587823 |
| 1276 | 37200.37300.37500.38000.39200.40400.41400.80000.873700 | False ceiling | 8d | 2025-10-15 | 2025-10-23 | 1260, 1275 |  | 7 day week With NGT Ban | 7587833 |

| ID | WBS | Task | Duration | Start | Finish | Predecessors | Constraint | Calendar | Unique_Task_ID |
| --- | --- | --- | --- | --- | --- | --- | --- | --- | --- |
| 1277 | 37200.37300.37500.38000.39200.40400.41400.79900 | **7th Floor** | 53d | 2025-09-20 | 2025-12-26 |  | start no earlier than 2025-09-20 | 7 day week With NGT Ban | 7568133 |
| 1278 | 37200.37300.37500.38000.39200.40400.41400.79900.873800 | Block Work | 5d | 2025-09-20 | 2025-09-24 | 1262FS+0.25d |  | 7 day week With NGT Ban | 7587843 |
| 1279 | 37200.37300.37500.38000.39200.40400.41400.79900.873900 | Door Frame Fixing | 5d | 2025-09-29 | 2025-10-04 | 1263, 1278 |  | 7 day week With NGT Ban | 7587853 |
| 1280 | 37200.37300.37500.38000.39200.40400.41400.79900.874000 | Internal Plumbing Works | 5d | 2025-09-27 | 2025-10-02 | 1264, 1278 |  | 7 day week With NGT Ban | 7587863 |
| 1281 | 37200.37300.37500.38000.39200.40400.41400.79900.874100 | Waterproofing | 8d | 2025-10-12 | 2025-10-20 | 1265, 1280 |  | 7 day week With NGT Ban | 7587873 |
| 1282 | 37200.37300.37500.38000.39200.40400.41400.79900.874200 | Internal Plaster | 7d | 2025-10-20 | 2025-10-27 | 1266FS+0.25d |  | 7 day week With NGT Ban | 7587883 |
| 1283 | 37200.37300.37500.38000.39200.40400.41400.79900.874300 | IPS flooring work | 7d | 2025-10-30 | 2025-12-20 | 1267, 1279, 1281, 1282 |  | 7 day week With NGT Ban | 7587893 |
| 1284 | 37200.37300.37500.38000.39200.40400.41400.79900.874400 | Toilet dado work | 7d | 2025-10-28 | 2025-12-18 | 1268, 1281, 1282 |  | 7 day week With NGT Ban | 7587903 |
| 1285 | 37200.37300.37500.38000.39200.40400.41400.79900.874500 | Toilet flooring work | 7d | 2025-12-20 | 2025-12-26 | 1269, 1284 |  | 7 day week With NGT Ban | 7587913 |
| 1286 | 37200.37300.37500.38000.39200.40400.41400.79900.874600 | Living dinning flooring | 8d | 2025-09-21 | 2025-09-29 | 1270FS+0.25d |  | 7 day week With NGT Ban | 7587923 |
| 1287 | 37200.37300.37500.38000.39200.40400.41400.79900.874700 | Aluminium door-window fixing | 7d | 2025-09-27 | 2025-10-04 | 1271FS+0.25d |  | 7 day week With NGT Ban | 7587933 |
| 1288 | 37200.37300.37500.38000.39200.40400.41400.79900.874800 | Putty primer coat | 6d | 2025-09-29 | 2025-10-05 | 1272, 1286 |  | 7 day week With NGT Ban | 7587943 |
| 1289 | 37200.37300.37500.38000.39200.40400.41400.79900.874900 | Door shutter fixing | 8d | 2025-09-29 | 2025-10-07 | 1273, 1286 |  | 7 day week With NGT Ban | 7587953 |
| 1290 | 37200.37300.37500.38000.39200.40400.41400.79900.875000 | Electrical wiring work | 8d | 2025-10-07 | 2025-10-15 | 1274, 1289 |  | 7 day week With NGT Ban | 7587963 |
| 1291 | 37200.37300.37500.38000.39200.40400.41400.79900.875100 | Painting 1st coat | 8d | 2025-10-15 | 2025-10-23 | 1275, 1288, 1289, 1290 |  | 7 day week With NGT Ban | 7587973 |
| 1292 | 37200.37300.37500.38000.39200.40400.41400.79900.875200 | False ceiling | 8d | 2025-10-23 | 2025-10-31 | 1276, 1291 |  | 7 day week With NGT Ban | 7587983 |
| 1293 | 37200.37300.37500.38000.39200.40400.41400.79800 | **8th Floor** | 54.75d | 2025-09-25 | 2026-01-02 |  | start no earlier than 2025-09-25 | 7 day week With NGT Ban | 7568143 |
| 1294 | 37200.37300.37500.38000.39200.40400.41400.79800.875300 | Block Work | 5d | 2025-09-25 | 2025-09-30 | 1278FS+0.25d |  | 7 day week With NGT Ban | 7587993 |
| 1295 | 37200.37300.37500.38000.39200.40400.41400.79800.875400 | Door Frame Fixing | 5d | 2025-10-04 | 2025-10-09 | 1279, 1294 |  | 7 day week With NGT Ban | 7588003 |
| 1296 | 37200.37300.37500.38000.39200.40400.41400.79800.875500 | Internal Plumbing Works | 5d | 2025-10-02 | 2025-10-07 | 1280, 1294 |  | 7 day week With NGT Ban | 7588013 |
| 1297 | 37200.37300.37500.38000.39200.40400.41400.79800.875600 | Waterproofing | 8d | 2025-10-20 | 2025-10-28 | 1281, 1296 |  | 7 day week With NGT Ban | 7588023 |
| 1298 | 37200.37300.37500.38000.39200.40400.41400.79800.875700 | Internal Plaster | 7d | 2025-10-27 | 2025-12-18 | 1282FS+0.25d |  | 7 day week With NGT Ban | 7588033 |
| 1299 | 37200.37300.37500.38000.39200.40400.41400.79800.875800 | IPS flooring work | 7d | 2025-12-21 | 2025-12-27 | 1283, 1295, 1297, 1298 |  | 7 day week With NGT Ban | 7588043 |
| 1300 | 37200.37300.37500.38000.39200.40400.41400.79800.875900 | Toilet dado work | 7d | 2025-12-19 | 2025-12-25 | 1284, 1297, 1298 |  | 7 day week With NGT Ban | 7588053 |
| 1301 | 37200.37300.37500.38000.39200.40400.41400.79800.876000 | Toilet flooring work | 7d | 2025-12-27 | 2026-01-02 | 1285, 1300 |  | 7 day week With NGT Ban | 7588063 |
| 1302 | 37200.37300.37500.38000.39200.40400.41400.79800.876100 | Living dinning flooring | 8d | 2025-09-30 | 2025-10-07 | 1286FS+0.25d |  | 7 day week With NGT Ban | 7588073 |
| 1303 | 37200.37300.37500.38000.39200.40400.41400.79800.876200 | Aluminium door-window fixing | 7d | 2025-10-05 | 2025-10-11 | 1287FS+0.25d |  | 7 day week With NGT Ban | 7588083 |
| 1304 | 37200.37300.37500.38000.39200.40400.41400.79800.876300 | Putty primer coat | 6d | 2025-10-08 | 2025-10-13 | 1288, 1302 |  | 7 day week With NGT Ban | 7588093 |
| 1305 | 37200.37300.37500.38000.39200.40400.41400.79800.876400 | Door shutter fixing | 8d | 2025-10-08 | 2025-10-15 | 1289, 1302 |  | 7 day week With NGT Ban | 7588103 |
| 1306 | 37200.37300.37500.38000.39200.40400.41400.79800.876500 | Electrical wiring work | 8d | 2025-10-16 | 2025-10-23 | 1290, 1305 |  | 7 day week With NGT Ban | 7588113 |
| 1307 | 37200.37300.37500.38000.39200.40400.41400.79800.876600 | Painting 1st coat | 8d | 2025-10-24 | 2025-10-31 | 1291, 1304, 1305, 1306 |  | 7 day week With NGT Ban | 7588123 |
| 1308 | 37200.37300.37500.38000.39200.40400.41400.79800.876700 | False ceiling | 8d | 2025-12-16 | 2025-12-23 | 1292, 1307 |  | 7 day week With NGT Ban | 7588133 |

| ID | WBS | Task | Duration | Start | Finish | Predecessors | Constraint | Calendar | Unique_Task_ID |
| --- | --- | --- | --- | --- | --- | --- | --- | --- | --- |
| 1309 | 37200.37300.37500.38000.39200.40400.41400.79700 | **9th Floor** | 53.5d | 2025-10-08 | 2026-01-14 |  | start no earlier than 2025-10-08 | 7 day week With NGT Ban | 7568153 |
| 1310 | 37200.37300.37500.38000.39200.40400.41400.79700.876800 | Block Work | 5d | 2025-10-29 | 2025-12-18 | 1152, 1294 |  | 7 day week With NGT Ban | 7588143 |
| 1311 | 37200.37300.37500.38000.39200.40400.41400.79700.876900 | Door Frame Fixing | 5d | 2025-12-18 | 2025-12-23 | 1295, 1310 |  | 7 day week With NGT Ban | 7588153 |
| 1312 | 37200.37300.37500.38000.39200.40400.41400.79700.877000 | Internal Plumbing Works | 5d | 2025-12-18 | 2025-12-23 | 1296, 1310 |  | 7 day week With NGT Ban | 7588163 |
| 1313 | 37200.37300.37500.38000.39200.40400.41400.79700.877100 | Waterproofing | 8d | 2025-12-23 | 2025-12-31 | 1297, 1312 |  | 7 day week With NGT Ban | 7588173 |
| 1314 | 37200.37300.37500.38000.39200.40400.41400.79700.877200 | Internal Plaster | 7d | 2025-12-19 | 2025-12-25 | 1298FS+0.25d |  | 7 day week With NGT Ban | 7588183 |
| 1315 | 37200.37300.37500.38000.39200.40400.41400.79700.877300 | IPS flooring work | 7d | 2025-12-31 | 2026-01-07 | 1299, 1311, 1313, 1314 |  | 7 day week With NGT Ban | 7588193 |
| 1316 | 37200.37300.37500.38000.39200.40400.41400.79700.877400 | Toilet dado work | 7d | 2025-12-31 | 2026-01-07 | 1300, 1313, 1314 |  | 7 day week With NGT Ban | 7588203 |
| 1317 | 37200.37300.37500.38000.39200.40400.41400.79700.877500 | Toilet flooring work | 7d | 2026-01-07 | 2026-01-14 | 1301, 1316 |  | 7 day week With NGT Ban | 7588213 |
| 1318 | 37200.37300.37500.38000.39200.40400.41400.79700.877600 | Living dinning flooring | 8d | 2025-10-08 | 2025-10-16 | 1302FS+0.25d |  | 7 day week With NGT Ban | 7588223 |
| 1319 | 37200.37300.37500.38000.39200.40400.41400.79700.877700 | Aluminium door-window fixing | 7d | 2025-10-12 | 2025-10-19 | 1303FS+0.25d |  | 7 day week With NGT Ban | 7588233 |
| 1320 | 37200.37300.37500.38000.39200.40400.41400.79700.877800 | Putty primer coat | 6d | 2025-10-16 | 2025-10-22 | 1304, 1318 |  | 7 day week With NGT Ban | 7588243 |
| 1321 | 37200.37300.37500.38000.39200.40400.41400.79700.877900 | Door shutter fixing | 8d | 2025-10-16 | 2025-10-24 | 1305, 1318 |  | 7 day week With NGT Ban | 7588253 |
| 1322 | 37200.37300.37500.38000.39200.40400.41400.79700.878000 | Electrical wiring work | 12d | 2025-10-24 | 2025-12-20 | 1306, 1321 |  | 7 day week With NGT Ban | 7588263 |
| 1323 | 37200.37300.37500.38000.39200.40400.41400.79700.878100 | Painting 1st coat | 12d | 2025-12-20 | 2026-01-01 | 1307, 1320, 1321, 1322 |  | 7 day week With NGT Ban | 7588273 |
| 1324 | 37200.37300.37500.38000.39200.40400.41400.79700.878200 | False ceiling | 10d | 2026-01-01 | 2026-01-11 | 1308, 1323 |  | 7 day week With NGT Ban | 7588283 |
| 1325 | 37200.37300.37500.38000.39200.40400.41400.79600 | **10th Floor** | 53.75d | 2025-10-16 | 2026-01-23 |  | start no earlier than 2025-10-16 | 7 day week With NGT Ban | 7568163 |
| 1326 | 37200.37300.37500.38000.39200.40400.41400.79600.878300 | Block Work | 5d | 2025-12-19 | 2025-12-23 | 1310FS+0.25d |  | 7 day week With NGT Ban | 7588293 |
| 1327 | 37200.37300.37500.38000.39200.40400.41400.79600.878400 | Door Frame Fixing | 5d | 2025-12-24 | 2025-12-28 | 1311, 1326 |  | 7 day week With NGT Ban | 7588303 |
| 1328 | 37200.37300.37500.38000.39200.40400.41400.79600.878500 | Internal Plumbing Works | 5d | 2025-12-24 | 2025-12-28 | 1312, 1326 |  | 7 day week With NGT Ban | 7588313 |
| 1329 | 37200.37300.37500.38000.39200.40400.41400.79600.878600 | Waterproofing | 8d | 2025-12-31 | 2026-01-08 | 1313, 1328 |  | 7 day week With NGT Ban | 7588323 |
| 1330 | 37200.37300.37500.38000.39200.40400.41400.79600.878700 | Internal Plaster | 7d | 2025-12-26 | 2026-01-02 | 1314FS+0.25d |  | 7 day week With NGT Ban | 7588333 |
| 1331 | 37200.37300.37500.38000.39200.40400.41400.79600.878800 | IPS flooring work | 7d | 2026-01-08 | 2026-01-15 | 1315, 1327, 1329, 1330 |  | 7 day week With NGT Ban | 7588343 |
| 1332 | 37200.37300.37500.38000.39200.40400.41400.79600.878900 | Toilet dado work | 7d | 2026-01-08 | 2026-01-15 | 1316, 1329, 1330 |  | 7 day week With NGT Ban | 7588353 |
| 1333 | 37200.37300.37500.38000.39200.40400.41400.79600.879000 | Toilet flooring work | 7d | 2026-01-15 | 2026-01-22 | 1317, 1332 |  | 7 day week With NGT Ban | 7588363 |
| 1334 | 37200.37300.37500.38000.39200.40400.41400.79600.879100 | Living dinning flooring | 8d | 2025-10-16 | 2025-10-24 | 1318FS+0.25d |  | 7 day week With NGT Ban | 7588373 |
| 1335 | 37200.37300.37500.38000.39200.40400.41400.79600.879200 | Aluminium door-window fixing | 7d | 2025-10-19 | 2025-10-26 | 1319FS+0.25d |  | 7 day week With NGT Ban | 7588383 |
| 1336 | 37200.37300.37500.38000.39200.40400.41400.79600.879300 | Putty primer coat | 6d | 2025-10-24 | 2025-10-30 | 1320, 1334 |  | 7 day week With NGT Ban | 7588393 |
| 1337 | 37200.37300.37500.38000.39200.40400.41400.79600.879400 | Door shutter fixing | 8d | 2025-10-24 | 2025-12-16 | 1321, 1334 |  | 7 day week With NGT Ban | 7588403 |
| 1338 | 37200.37300.37500.38000.39200.40400.41400.79600.879500 | Electrical wiring work | 12d | 2025-12-20 | 2026-01-01 | 1322, 1337 |  | 7 day week With NGT Ban | 7588413 |
| 1339 | 37200.37300.37500.38000.39200.40400.41400.79600.879600 | Painting 1st coat | 12d | 2026-01-01 | 2026-01-13 | 1323, 1336, 1337, 1338 |  | 7 day week With NGT Ban | 7588423 |
| 1340 | 37200.37300.37500.38000.39200.40400.41400.79600.879700 | False ceiling | 10d | 2026-01-13 | 2026-01-23 | 1324, 1339 |  | 7 day week With NGT Ban | 7588433 |

| ID | WBS | Task | Duration | Start | Finish | Predecessors | Constraint | Calendar | Unique_Task_ID |
| --- | --- | --- | --- | --- | --- | --- | --- | --- | --- |
| 1341 | 37200.37300.37500.38000.39200.40400.41400.79500 | **11th Floor** | 57.5d | 2025-10-24 | 2026-02-04 |  | start no earlier than 2025-10-24 | 7 day week With NGT Ban | 7568173 |
| 1342 | 37200.37300.37500.38000.39200.40400.41400.79500.879800 | Block Work | 5d | 2025-12-24 | 2025-12-29 | 1326FS+0.25d |  | 7 day week With NGT Ban | 7588443 |
| 1343 | 37200.37300.37500.38000.39200.40400.41400.79500.879900 | Door Frame Fixing | 5d | 2025-12-29 | 2026-01-03 | 1327, 1342 |  | 7 day week With NGT Ban | 7588453 |
| 1344 | 37200.37300.37500.38000.39200.40400.41400.79500.880000 | Internal Plumbing Works | 5d | 2025-12-29 | 2026-01-03 | 1328, 1342 |  | 7 day week With NGT Ban | 7588463 |
| 1345 | 37200.37300.37500.38000.39200.40400.41400.79500.880100 | Waterproofing | 8d | 2026-01-08 | 2026-01-16 | 1329, 1344 |  | 7 day week With NGT Ban | 7588473 |
| 1346 | 37200.37300.37500.38000.39200.40400.41400.79500.880200 | Internal Plaster | 7d | 2026-01-02 | 2026-01-09 | 1330FS+0.25d |  | 7 day week With NGT Ban | 7588483 |
| 1347 | 37200.37300.37500.38000.39200.40400.41400.79500.880300 | IPS flooring work | 7d | 2026-01-16 | 2026-01-23 | 1331, 1343, 1344, 1345 |  | 7 day week With NGT Ban | 7588493 |
| 1348 | 37200.37300.37500.38000.39200.40400.41400.79500.880400 | Toilet dado work | 7d | 2026-01-16 | 2026-01-23 | 1332, 1345, 1346 |  | 7 day week With NGT Ban | 7588503 |
| 1349 | 37200.37300.37500.38000.39200.40400.41400.79500.880500 | Toilet flooring work | 7d | 2026-01-23 | 2026-01-30 | 1333, 1348 |  | 7 day week With NGT Ban | 7588513 |
| 1350 | 37200.37300.37500.38000.39200.40400.41400.79500.880600 | Living dinning flooring | 8d | 2025-10-24 | 2025-12-16 | 1334FS+0.25d |  | 7 day week With NGT Ban | 7588523 |
| 1351 | 37200.37300.37500.38000.39200.40400.41400.79500.880700 | Aluminium door-window fixing | 7d | 2025-10-26 | 2025-12-17 | 1335FS+0.25d |  | 7 day week With NGT Ban | 7588533 |
| 1352 | 37200.37300.37500.38000.39200.40400.41400.79500.880800 | Putty primer coat | 6d | 2025-12-16 | 2025-12-22 | 1336, 1350 |  | 7 day week With NGT Ban | 7588543 |
| 1353 | 37200.37300.37500.38000.39200.40400.41400.79500.880900 | Door shutter fixing | 8d | 2025-12-16 | 2025-12-24 | 1337, 1350 |  | 7 day week With NGT Ban | 7588553 |
| 1354 | 37200.37300.37500.38000.39200.40400.41400.79500.881000 | Electrical wiring work | 12d | 2026-01-01 | 2026-01-13 | 1338, 1353 |  | 7 day week With NGT Ban | 7588563 |
| 1355 | 37200.37300.37500.38000.39200.40400.41400.79500.881100 | Painting 1st coat | 12d | 2026-01-13 | 2026-01-25 | 1339, 1352, 1353, 1354 |  | 7 day week With NGT Ban | 7588573 |
| 1356 | 37200.37300.37500.38000.39200.40400.41400.79500.881200 | False ceiling | 10d | 2026-01-25 | 2026-02-04 | 1340, 1355 |  | 7 day week With NGT Ban | 7588583 |
| 1357 | 37200.37300.37500.38000.39200.40400.41400.79400 | **12th Floor** | 71.5d | 2025-12-17 | 2026-02-26 |  | start no earlier than 2025-12-17 | 7 day week With NGT Ban | 7568183 |
| 1358 | 37200.37300.37500.38000.39200.40400.41400.79400.881300 | Block Work | 5d | 2025-12-29 | 2026-01-03 | 1342FS+0.25d |  | 7 day week With NGT Ban | 7588593 |
| 1359 | 37200.37300.37500.38000.39200.40400.41400.79400.881400 | Door Frame Fixing | 9d | 2026-01-03 | 2026-01-12 | 1343, 1358 |  | 7 day week With NGT Ban | 7588603 |
| 1360 | 37200.37300.37500.38000.39200.40400.41400.79400.881500 | Internal Plumbing Works | 15d | 2026-01-03 | 2026-01-18 | 1344, 1358 |  | 7 day week With NGT Ban | 7588613 |
| 1361 | 37200.37300.37500.38000.39200.40400.41400.79400.881600 | Waterproofing | 15d | 2026-01-18 | 2026-02-02 | 1345, 1360 |  | 7 day week With NGT Ban | 7588623 |
| 1362 | 37200.37300.37500.38000.39200.40400.41400.79400.881700 | Internal Plaster | 8d | 2026-01-09 | 2026-01-17 | 1346FS+0.25d |  | 7 day week With NGT Ban | 7588633 |
| 1363 | 37200.37300.37500.38000.39200.40400.41400.79400.881800 | IPS flooring work | 12d | 2026-02-02 | 2026-02-14 | 1347, 1359, 1360, 1361 |  | 7 day week With NGT Ban | 7588643 |
| 1364 | 37200.37300.37500.38000.39200.40400.41400.79400.881900 | Toilet dado work | 12d | 2026-02-02 | 2026-02-14 | 1348, 1361, 1362 |  | 7 day week With NGT Ban | 7588653 |
| 1365 | 37200.37300.37500.38000.39200.40400.41400.79400.882000 | Toilet flooring work | 12d | 2026-02-14 | 2026-02-26 | 1349, 1364 |  | 7 day week With NGT Ban | 7588663 |
| 1366 | 37200.37300.37500.38000.39200.40400.41400.79400.882100 | Living dinning flooring | 7d | 2025-12-17 | 2025-12-23 | 1350FS+0.25d |  | 7 day week With NGT Ban | 7588673 |
| 1367 | 37200.37300.37500.38000.39200.40400.41400.79400.882200 | Aluminium door-window fixing | 8d | 2025-12-18 | 2025-12-25 | 1351FS+0.25d |  | 7 day week With NGT Ban | 7588683 |
| 1368 | 37200.37300.37500.38000.39200.40400.41400.79400.882300 | Putty primer coat | 6d | 2025-12-24 | 2025-12-29 | 1352, 1366 |  | 7 day week With NGT Ban | 7588693 |
| 1369 | 37200.37300.37500.38000.39200.40400.41400.79400.882400 | Door shutter fixing | 8d | 2025-12-24 | 2026-01-01 | 1353, 1366 |  | 7 day week With NGT Ban | 7588703 |
| 1370 | 37200.37300.37500.38000.39200.40400.41400.79400.882500 | Electrical wiring work | 12d | 2026-01-13 | 2026-01-25 | 1354, 1369 |  | 7 day week With NGT Ban | 7588713 |
| 1371 | 37200.37300.37500.38000.39200.40400.41400.79400.882600 | Painting 1st coat | 12d | 2026-01-25 | 2026-02-06 | 1355, 1368, 1369, 1370 |  | 7 day week With NGT Ban | 7588723 |
| 1372 | 37200.37300.37500.38000.39200.40400.41400.79400.882700 | False ceiling | 10d | 2026-02-06 | 2026-02-16 | 1356, 1371 |  | 7 day week With NGT Ban | 7588733 |

| ID | WBS | Task | Duration | Start | Finish | Predecessors | Constraint | Calendar | Unique_Task_ID |
| --- | --- | --- | --- | --- | --- | --- | --- | --- | --- |
| 1373 | 37200.37300.37500.38000.39200.40400.41400.79300 | **13th Floor** | 71.25d | 2025-12-24 | 2026-03-05 |  | start no earlier than 2025-12-24 | 7 day week With NGT Ban | 7568193 |
| 1374 | 37200.37300.37500.38000.39200.40400.41400.79300.882800 | Block Work | 5d | 2026-01-03 | 2026-01-08 | 1358FS+0.25d |  | 7 day week With NGT Ban | 7588743 |
| 1375 | 37200.37300.37500.38000.39200.40400.41400.79300.882900 | Door Frame Fixing | 5d | 2026-01-12 | 2026-01-17 | 1359, 1374 |  | 7 day week With NGT Ban | 7588753 |
| 1376 | 37200.37300.37500.38000.39200.40400.41400.79300.883000 | Internal Plumbing Works | 5d | 2026-01-18 | 2026-01-23 | 1360, 1374 |  | 7 day week With NGT Ban | 7588763 |
| 1377 | 37200.37300.37500.38000.39200.40400.41400.79300.883100 | Waterproofing | 8d | 2026-02-02 | 2026-02-10 | 1361, 1376 |  | 7 day week With NGT Ban | 7588773 |
| 1378 | 37200.37300.37500.38000.39200.40400.41400.79300.883200 | Internal Plaster | 7d | 2026-01-20 | 2026-01-27 | 1362FS+2.75d |  | 7 day week With NGT Ban | 7588783 |
| 1379 | 37200.37300.37500.38000.39200.40400.41400.79300.883300 | IPS flooring work | 7d | 2026-02-14 | 2026-02-21 | 1363, 1375, 1377, 1378 |  | 7 day week With NGT Ban | 7588793 |
| 1380 | 37200.37300.37500.38000.39200.40400.41400.79300.883400 | Toilet dado work | 7d | 2026-02-14 | 2026-02-21 | 1364, 1377, 1378 |  | 7 day week With NGT Ban | 7588803 |
| 1381 | 37200.37300.37500.38000.39200.40400.41400.79300.883500 | Toilet flooring work | 7d | 2026-02-26 | 2026-03-05 | 1365, 1380 |  | 7 day week With NGT Ban | 7588813 |
| 1382 | 37200.37300.37500.38000.39200.40400.41400.79300.883600 | Living dinning flooring | 8d | 2025-12-24 | 2026-01-01 | 1366FS+0.25d |  | 7 day week With NGT Ban | 7588823 |
| 1383 | 37200.37300.37500.38000.39200.40400.41400.79300.883700 | Aluminium door-window fixing | 7d | 2025-12-26 | 2026-01-02 | 1367FS+0.25d |  | 7 day week With NGT Ban | 7588833 |
| 1384 | 37200.37300.37500.38000.39200.40400.41400.79300.883800 | Putty primer coat | 6d | 2026-01-01 | 2026-01-07 | 1368, 1382 |  | 7 day week With NGT Ban | 7588843 |
| 1385 | 37200.37300.37500.38000.39200.40400.41400.79300.883900 | Door shutter fixing | 8d | 2026-01-01 | 2026-01-09 | 1369, 1382 |  | 7 day week With NGT Ban | 7588853 |
| 1386 | 37200.37300.37500.38000.39200.40400.41400.79300.884000 | Electrical wiring work | 12d | 2026-01-25 | 2026-02-06 | 1370, 1385 |  | 7 day week With NGT Ban | 7588863 |
| 1387 | 37200.37300.37500.38000.39200.40400.41400.79300.884100 | Painting 1st coat | 12d | 2026-02-06 | 2026-02-18 | 1371, 1384, 1385, 1386 |  | 7 day week With NGT Ban | 7588873 |
| 1388 | 37200.37300.37500.38000.39200.40400.41400.79300.884200 | False ceiling | 10d | 2026-02-18 | 2026-02-28 | 1372, 1387 |  | 7 day week With NGT Ban | 7588883 |
| 1389 | 37200.37300.37500.38000.39200.40400.41400.79200 | **14th Floor** | 79d | 2026-01-01 | 2026-03-21 |  | start no earlier than 2026-01-01 | 7 day week With NGT Ban | 7568203 |
| 1390 | 37200.37300.37500.38000.39200.40400.41400.79200.884300 | Block Work | 5d | 2026-01-09 | 2026-01-13 | 1374FS+0.25d |  | 7 day week With NGT Ban | 7588893 |
| 1391 | 37200.37300.37500.38000.39200.40400.41400.79200.884400 | Door Frame Fixing | 9d | 2026-01-17 | 2026-01-26 | 1375, 1390 |  | 7 day week With NGT Ban | 7588903 |
| 1392 | 37200.37300.37500.38000.39200.40400.41400.79200.884500 | Internal Plumbing Works | 15d | 2026-01-23 | 2026-02-07 | 1376, 1390 |  | 7 day week With NGT Ban | 7588913 |
| 1393 | 37200.37300.37500.38000.39200.40400.41400.79200.884600 | Waterproofing | 15d | 2026-02-10 | 2026-02-25 | 1377, 1392 |  | 7 day week With NGT Ban | 7588923 |
| 1394 | 37200.37300.37500.38000.39200.40400.41400.79200.884700 | Internal Plaster | 8d | 2026-01-27 | 2026-02-04 | 1378FS+0.25d |  | 7 day week With NGT Ban | 7588933 |
| 1395 | 37200.37300.37500.38000.39200.40400.41400.79200.884800 | IPS flooring work | 12d | 2026-02-25 | 2026-03-09 | 1379, 1391, 1392, 1393 |  | 7 day week With NGT Ban | 7588943 |
| 1396 | 37200.37300.37500.38000.39200.40400.41400.79200.884900 | Toilet dado work | 12d | 2026-02-25 | 2026-03-09 | 1380, 1393, 1394 |  | 7 day week With NGT Ban | 7588953 |
| 1397 | 37200.37300.37500.38000.39200.40400.41400.79200.885000 | Toilet flooring work | 12d | 2026-03-09 | 2026-03-21 | 1381, 1396 |  | 7 day week With NGT Ban | 7588963 |
| 1398 | 37200.37300.37500.38000.39200.40400.41400.79200.885100 | Living dinning flooring | 7d | 2026-01-01 | 2026-01-08 | 1382FS+0.25d |  | 7 day week With NGT Ban | 7588973 |
| 1399 | 37200.37300.37500.38000.39200.40400.41400.79200.885200 | Aluminium door-window fixing | 8d | 2026-01-02 | 2026-01-10 | 1383FS+0.25d |  | 7 day week With NGT Ban | 7588983 |
| 1400 | 37200.37300.37500.38000.39200.40400.41400.79200.885300 | Putty primer coat | 6d | 2026-01-08 | 2026-01-14 | 1384, 1398 |  | 7 day week With NGT Ban | 7588993 |
| 1401 | 37200.37300.37500.38000.39200.40400.41400.79200.885400 | Door shutter fixing | 8d | 2026-01-09 | 2026-01-17 | 1385, 1398 |  | 7 day week With NGT Ban | 7589003 |
| 1402 | 37200.37300.37500.38000.39200.40400.41400.79200.885500 | Electrical wiring work | 12d | 2026-02-06 | 2026-02-18 | 1386, 1401 |  | 7 day week With NGT Ban | 7589013 |
| 1403 | 37200.37300.37500.38000.39200.40400.41400.79200.885600 | Painting 1st coat | 12d | 2026-02-18 | 2026-03-02 | 1387, 1400, 1401, 1402 |  | 7 day week With NGT Ban | 7589023 |
| 1404 | 37200.37300.37500.38000.39200.40400.41400.79200.885700 | False ceiling | 10d | 2026-03-02 | 2026-03-12 | 1388, 1403 |  | 7 day week With NGT Ban | 7589033 |

| ID | WBS | Task | Duration | Start | Finish | Predecessors | Constraint | Calendar | Unique_Task_ID |
| --- | --- | --- | --- | --- | --- | --- | --- | --- | --- |
| 1405 | 37200.37300.37500.38000.39200.40400.41400.79100 | **15th Floor** | 78.75d | 2026-01-08 | 2026-03-28 |  | start no earlier than 2026-01-08 | 7 day week With NGT Ban | 7568213 |
| 1406 | 37200.37300.37500.38000.39200.40400.41400.79100.885800 | Block Work | 8d | 2026-01-14 | 2026-01-22 | 1390FS+0.25d |  | 7 day week With NGT Ban | 7589043 |
| 1407 | 37200.37300.37500.38000.39200.40400.41400.79100.885900 | Door Frame Fixing | 9d | 2026-01-26 | 2026-02-04 | 1391, 1406 |  | 7 day week With NGT Ban | 7589053 |
| 1408 | 37200.37300.37500.38000.39200.40400.41400.79100.886000 | Internal Plumbing Works | 10d | 2026-02-07 | 2026-02-17 | 1392, 1406 |  | 7 day week With NGT Ban | 7589063 |
| 1409 | 37200.37300.37500.38000.39200.40400.41400.79100.886100 | Waterproofing | 12d | 2026-02-25 | 2026-03-09 | 1393, 1408 |  | 7 day week With NGT Ban | 7589073 |
| 1410 | 37200.37300.37500.38000.39200.40400.41400.79100.886200 | Internal Plaster | 5d | 2026-02-05 | 2026-02-09 | 1394FS+0.25d |  | 7 day week With NGT Ban | 7589083 |
| 1411 | 37200.37300.37500.38000.39200.40400.41400.79100.886300 | IPS flooring work | 9d | 2026-03-09 | 2026-03-18 | 1395, 1407, 1408, 1409 |  | 7 day week With NGT Ban | 7589093 |
| 1412 | 37200.37300.37500.38000.39200.40400.41400.79100.886400 | Toilet dado work | 8d | 2026-03-09 | 2026-03-17 | 1396, 1409, 1410 |  | 7 day week With NGT Ban | 7589103 |
| 1413 | 37200.37300.37500.38000.39200.40400.41400.79100.886500 | Toilet flooring work | 7d | 2026-03-21 | 2026-03-28 | 1397, 1412 |  | 7 day week With NGT Ban | 7589113 |
| 1414 | 37200.37300.37500.38000.39200.40400.41400.79100.886600 | Living dinning flooring | 12d | 2026-01-08 | 2026-01-20 | 1398FS+0.25d |  | 7 day week With NGT Ban | 7589123 |
| 1415 | 37200.37300.37500.38000.39200.40400.41400.79100.886700 | Aluminium door-window fixing | 12d | 2026-01-10 | 2026-01-22 | 1399FS+0.25d |  | 7 day week With NGT Ban | 7589133 |
| 1416 | 37200.37300.37500.38000.39200.40400.41400.79100.886800 | Putty primer coat | 6d | 2026-01-20 | 2026-01-26 | 1400, 1414 |  | 7 day week With NGT Ban | 7589143 |
| 1417 | 37200.37300.37500.38000.39200.40400.41400.79100.886900 | Door shutter fixing | 8d | 2026-01-20 | 2026-01-28 | 1401, 1414 |  | 7 day week With NGT Ban | 7589153 |
| 1418 | 37200.37300.37500.38000.39200.40400.41400.79100.887000 | Electrical wiring work | 12d | 2026-02-18 | 2026-03-02 | 1402, 1417 |  | 7 day week With NGT Ban | 7589163 |
| 1419 | 37200.37300.37500.38000.39200.40400.41400.79100.887100 | Painting 1st coat | 12d | 2026-03-02 | 2026-03-14 | 1403, 1416, 1417, 1418 |  | 7 day week With NGT Ban | 7589173 |
| 1420 | 37200.37300.37500.38000.39200.40400.41400.79100.887200 | False ceiling | 10d | 2026-03-14 | 2026-03-24 | 1404, 1419 |  | 7 day week With NGT Ban | 7589183 |
| 1421 | 37200.37300.37500.38000.39200.40400.41400.79000 | **16th Floor** | 74.5d | 2026-01-21 | 2026-04-05 |  | start no earlier than 2026-01-21 | 7 day week With NGT Ban | 7568223 |
| 1422 | 37200.37300.37500.38000.39200.40400.41400.79000.887300 | Block Work | 8d | 2026-01-22 | 2026-01-30 | 1406FS+0.25d |  | 7 day week With NGT Ban | 7589193 |
| 1423 | 37200.37300.37500.38000.39200.40400.41400.79000.887400 | Door Frame Fixing | 9d | 2026-02-04 | 2026-02-13 | 1407, 1422 |  | 7 day week With NGT Ban | 7589203 |
| 1424 | 37200.37300.37500.38000.39200.40400.41400.79000.887500 | Internal Plumbing Works | 10d | 2026-02-17 | 2026-02-27 | 1408, 1422 |  | 7 day week With NGT Ban | 7589213 |
| 1425 | 37200.37300.37500.38000.39200.40400.41400.79000.887600 | Waterproofing | 12d | 2026-03-09 | 2026-03-21 | 1409, 1424 |  | 7 day week With NGT Ban | 7589223 |
| 1426 | 37200.37300.37500.38000.39200.40400.41400.79000.887700 | Internal Plaster | 5d | 2026-02-10 | 2026-02-15 | 1410FS+0.25d |  | 7 day week With NGT Ban | 7589233 |
| 1427 | 37200.37300.37500.38000.39200.40400.41400.79000.887800 | IPS flooring work | 9d | 2026-03-21 | 2026-03-30 | 1411, 1423, 1424, 1425 |  | 7 day week With NGT Ban | 7589243 |
| 1428 | 37200.37300.37500.38000.39200.40400.41400.79000.887900 | Toilet dado work | 8d | 2026-03-21 | 2026-03-29 | 1412, 1425, 1426 |  | 7 day week With NGT Ban | 7589253 |
| 1429 | 37200.37300.37500.38000.39200.40400.41400.79000.888000 | Toilet flooring work | 7d | 2026-03-29 | 2026-04-05 | 1413, 1428 |  | 7 day week With NGT Ban | 7589263 |
| 1430 | 37200.37300.37500.38000.39200.40400.41400.79000.888100 | Living dinning flooring | 12d | 2026-01-21 | 2026-02-01 | 1414FS+0.25d |  | 7 day week With NGT Ban | 7589273 |
| 1431 | 37200.37300.37500.38000.39200.40400.41400.79000.888200 | Aluminium door-window fixing | 12d | 2026-01-23 | 2026-02-03 | 1415FS+0.25d |  | 7 day week With NGT Ban | 7589283 |
| 1432 | 37200.37300.37500.38000.39200.40400.41400.79000.888300 | Putty primer coat | 6d | 2026-02-02 | 2026-02-07 | 1416, 1430 |  | 7 day week With NGT Ban | 7589293 |
| 1433 | 37200.37300.37500.38000.39200.40400.41400.79000.888400 | Door shutter fixing | 8d | 2026-02-02 | 2026-02-09 | 1417, 1430 |  | 7 day week With NGT Ban | 7589303 |
| 1434 | 37200.37300.37500.38000.39200.40400.41400.79000.888500 | Electrical wiring work | 12d | 2026-03-02 | 2026-03-14 | 1418, 1433 |  | 7 day week With NGT Ban | 7589313 |
| 1435 | 37200.37300.37500.38000.39200.40400.41400.79000.888600 | Painting 1st coat | 12d | 2026-03-14 | 2026-03-26 | 1419, 1432, 1433, 1434 |  | 7 day week With NGT Ban | 7589323 |
| 1436 | 37200.37300.37500.38000.39200.40400.41400.79000.888700 | False ceiling | 10d | 2026-03-26 | 2026-04-05 | 1420, 1435 |  | 7 day week With NGT Ban | 7589333 |

| ID | WBS | Task | Duration | Start | Finish | Predecessors | Constraint | Calendar | Unique_Task_ID |
| --- | --- | --- | --- | --- | --- | --- | --- | --- | --- |
| 1437 | 37200.37300.37500.38000.39200.40400.41400.78900 | **17th Floor** | 82.75d | 2026-01-30 | 2026-04-23 |  | start no earlier than 2026-01-30 | 7 day week With NGT Ban | 7568233 |
| 1438 | 37200.37300.37500.38000.39200.40400.41400.78900.888800 | Block Work | 8d | 2026-01-30 | 2026-02-07 | 1422FS+0.25d |  | 7 day week With NGT Ban | 7589343 |
| 1439 | 37200.37300.37500.38000.39200.40400.41400.78900.888900 | Door Frame Fixing | 9d | 2026-02-13 | 2026-02-22 | 1423, 1438 |  | 7 day week With NGT Ban | 7589353 |
| 1440 | 37200.37300.37500.38000.39200.40400.41400.78900.889000 | Internal Plumbing Works | 10d | 2026-02-27 | 2026-03-09 | 1424, 1438 |  | 7 day week With NGT Ban | 7589363 |
| 1441 | 37200.37300.37500.38000.39200.40400.41400.78900.889100 | Waterproofing | 12d | 2026-03-21 | 2026-04-02 | 1425, 1440 |  | 7 day week With NGT Ban | 7589373 |
| 1442 | 37200.37300.37500.38000.39200.40400.41400.78900.889200 | Internal Plaster | 5d | 2026-02-15 | 2026-02-20 | 1426FS+0.25d |  | 7 day week With NGT Ban | 7589383 |
| 1443 | 37200.37300.37500.38000.39200.40400.41400.78900.889300 | IPS flooring work | 9d | 2026-04-02 | 2026-04-11 | 1427, 1439, 1440, 1441 |  | 7 day week With NGT Ban | 7589393 |
| 1444 | 37200.37300.37500.38000.39200.40400.41400.78900.889400 | Toilet dado work | 8d | 2026-04-02 | 2026-04-10 | 1428, 1441, 1442 |  | 7 day week With NGT Ban | 7589403 |
| 1445 | 37200.37300.37500.38000.39200.40400.41400.78900.889500 | Toilet flooring work | 7d | 2026-04-10 | 2026-04-17 | 1429, 1444 |  | 7 day week With NGT Ban | 7589413 |
| 1446 | 37200.37300.37500.38000.39200.40400.41400.78900.889600 | Living dinning flooring | 12d | 2026-02-02 | 2026-02-14 | 1430FS+0.25d |  | 7 day week With NGT Ban | 7589423 |
| 1447 | 37200.37300.37500.38000.39200.40400.41400.78900.889700 | Aluminium door-window fixing | 12d | 2026-04-11 | 2026-04-23 | 1431, 1443, 1446 |  | 7 day week With NGT Ban | 7589433 |
| 1448 | 37200.37300.37500.38000.39200.40400.41400.78900.889800 | Putty primer coat | 6d | 2026-02-14 | 2026-02-20 | 1432, 1446 |  | 7 day week With NGT Ban | 7589443 |
| 1449 | 37200.37300.37500.38000.39200.40400.41400.78900.889900 | Door shutter fixing | 8d | 2026-02-14 | 2026-02-22 | 1433, 1446 |  | 7 day week With NGT Ban | 7589453 |
| 1450 | 37200.37300.37500.38000.39200.40400.41400.78900.890000 | Electrical wiring work | 12d | 2026-03-14 | 2026-03-26 | 1434, 1449 |  | 7 day week With NGT Ban | 7589463 |
| 1451 | 37200.37300.37500.38000.39200.40400.41400.78900.890100 | Painting 1st coat | 12d | 2026-03-26 | 2026-04-07 | 1435, 1448, 1449, 1450 |  | 7 day week With NGT Ban | 7589473 |
| 1452 | 37200.37300.37500.38000.39200.40400.41400.78900.890200 | False ceiling | 10d | 2026-04-07 | 2026-04-17 | 1436, 1451 |  | 7 day week With NGT Ban | 7589483 |
| 1453 | 37200.37300.37500.38000.39200.40400.41400.78800 | **18th Floor** | 86.75d | 2026-02-08 | 2026-05-05 |  | start no earlier than 2026-02-08 | 7 day week With NGT Ban | 7568243 |
| 1454 | 37200.37300.37500.38000.39200.40400.41400.78800.890300 | Block Work | 8d | 2026-02-08 | 2026-02-15 | 1438FS+0.25d |  | 7 day week With NGT Ban | 7589493 |
| 1455 | 37200.37300.37500.38000.39200.40400.41400.78800.890400 | Door Frame Fixing | 9d | 2026-02-22 | 2026-03-03 | 1439, 1454 |  | 7 day week With NGT Ban | 7589503 |
| 1456 | 37200.37300.37500.38000.39200.40400.41400.78800.890500 | Internal Plumbing Works | 10d | 2026-03-09 | 2026-03-19 | 1440, 1454 |  | 7 day week With NGT Ban | 7589513 |
| 1457 | 37200.37300.37500.38000.39200.40400.41400.78800.890600 | Waterproofing | 12d | 2026-04-02 | 2026-04-14 | 1441, 1456 |  | 7 day week With NGT Ban | 7589523 |
| 1458 | 37200.37300.37500.38000.39200.40400.41400.78800.890700 | Internal Plaster | 9d | 2026-02-20 | 2026-03-01 | 1442 |  | 7 day week With NGT Ban | 7589533 |
| 1459 | 37200.37300.37500.38000.39200.40400.41400.78800.890800 | IPS flooring work | 9d | 2026-04-14 | 2026-04-23 | 1443, 1455, 1456, 1457 |  | 7 day week With NGT Ban | 7589543 |
| 1460 | 37200.37300.37500.38000.39200.40400.41400.78800.890900 | Toilet dado work | 8d | 2026-04-14 | 2026-04-22 | 1444, 1457, 1458 |  | 7 day week With NGT Ban | 7589553 |
| 1461 | 37200.37300.37500.38000.39200.40400.41400.78800.891000 | Toilet flooring work | 7d | 2026-04-22 | 2026-04-29 | 1445, 1460 |  | 7 day week With NGT Ban | 7589563 |
| 1462 | 37200.37300.37500.38000.39200.40400.41400.78800.891100 | Living dinning flooring | 12d | 2026-02-14 | 2026-02-26 | 1446FS+0.25d |  | 7 day week With NGT Ban | 7589573 |
| 1463 | 37200.37300.37500.38000.39200.40400.41400.78800.891200 | Aluminium door-window fixing | 12d | 2026-04-23 | 2026-05-05 | 1447FS+0.25d |  | 7 day week With NGT Ban | 7589583 |
| 1464 | 37200.37300.37500.38000.39200.40400.41400.78800.891300 | Putty primer coat | 6d | 2026-02-26 | 2026-03-04 | 1448, 1462 |  | 7 day week With NGT Ban | 7589593 |
| 1465 | 37200.37300.37500.38000.39200.40400.41400.78800.891400 | Door shutter fixing | 8d | 2026-02-26 | 2026-03-06 | 1449, 1462 |  | 7 day week With NGT Ban | 7589603 |
| 1466 | 37200.37300.37500.38000.39200.40400.41400.78800.891500 | Electrical wiring work | 12d | 2026-03-26 | 2026-04-07 | 1450, 1465 |  | 7 day week With NGT Ban | 7589613 |
| 1467 | 37200.37300.37500.38000.39200.40400.41400.78800.891600 | Painting 1st coat | 12d | 2026-04-07 | 2026-04-19 | 1451, 1464, 1465, 1466 |  | 7 day week With NGT Ban | 7589623 |
| 1468 | 37200.37300.37500.38000.39200.40400.41400.78800.891700 | False ceiling | 10d | 2026-04-19 | 2026-04-29 | 1452, 1467 |  | 7 day week With NGT Ban | 7589633 |

| ID | WBS | Task | Duration | Start | Finish | Predecessors | Constraint | Calendar | Unique_Task_ID |
| --- | --- | --- | --- | --- | --- | --- | --- | --- | --- |
| 1469 | 37200.37300.37500.38000.39200.40400.41400.78700 | **19th Floor** | 90.75d | 2026-02-16 | 2026-05-17 |  | start no earlier than 2026-02-16 | 7 day week With NGT Ban | 7568253 |
| 1470 | 37200.37300.37500.38000.39200.40400.41400.78700.891800 | Block Work | 8d | 2026-02-16 | 2026-02-24 | 1454FS+0.25d |  | 7 day week With NGT Ban | 7589643 |
| 1471 | 37200.37300.37500.38000.39200.40400.41400.78700.891900 | Door Frame Fixing | 9d | 2026-03-03 | 2026-03-12 | 1455, 1470 |  | 7 day week With NGT Ban | 7589653 |
| 1472 | 37200.37300.37500.38000.39200.40400.41400.78700.892000 | Internal Plumbing Works | 10d | 2026-03-19 | 2026-03-29 | 1456, 1470 |  | 7 day week With NGT Ban | 7589663 |
| 1473 | 37200.37300.37500.38000.39200.40400.41400.78700.892100 | Waterproofing | 12d | 2026-04-14 | 2026-04-26 | 1457, 1472 |  | 7 day week With NGT Ban | 7589673 |
| 1474 | 37200.37300.37500.38000.39200.40400.41400.78700.892200 | Internal Plaster | 5d | 2026-03-01 | 2026-03-06 | 1458FS+0.25d |  | 7 day week With NGT Ban | 7589683 |
| 1475 | 37200.37300.37500.38000.39200.40400.41400.78700.892300 | IPS flooring work | 9d | 2026-04-26 | 2026-05-05 | 1459, 1471, 1473, 1474 |  | 7 day week With NGT Ban | 7589693 |
| 1476 | 37200.37300.37500.38000.39200.40400.41400.78700.892400 | Toilet dado work | 8d | 2026-04-26 | 2026-05-04 | 1460, 1473, 1474 |  | 7 day week With NGT Ban | 7589703 |
| 1477 | 37200.37300.37500.38000.39200.40400.41400.78700.892500 | Toilet flooring work | 7d | 2026-05-04 | 2026-05-11 | 1461, 1476 |  | 7 day week With NGT Ban | 7589713 |
| 1478 | 37200.37300.37500.38000.39200.40400.41400.78700.892600 | Living dinning flooring | 12d | 2026-02-26 | 2026-03-10 | 1462FS+0.25d |  | 7 day week With NGT Ban | 7589723 |
| 1479 | 37200.37300.37500.38000.39200.40400.41400.78700.892700 | Aluminium door-window fixing | 12d | 2026-05-06 | 2026-05-17 | 1463FS+0.25d |  | 7 day week With NGT Ban | 7589733 |
| 1480 | 37200.37300.37500.38000.39200.40400.41400.78700.892800 | Putty primer coat | 6d | 2026-03-10 | 2026-03-16 | 1464, 1478 |  | 7 day week With NGT Ban | 7589743 |
| 1481 | 37200.37300.37500.38000.39200.40400.41400.78700.892900 | Door shutter fixing | 8d | 2026-03-10 | 2026-03-18 | 1465, 1478 |  | 7 day week With NGT Ban | 7589753 |
| 1482 | 37200.37300.37500.38000.39200.40400.41400.78700.893000 | Electrical wiring work | 12d | 2026-04-07 | 2026-04-19 | 1466, 1481 |  | 7 day week With NGT Ban | 7589763 |
| 1483 | 37200.37300.37500.38000.39200.40400.41400.78700.893100 | Painting 1st coat | 12d | 2026-04-19 | 2026-05-01 | 1467, 1480, 1481, 1482 |  | 7 day week With NGT Ban | 7589773 |
| 1484 | 37200.37300.37500.38000.39200.40400.41400.78700.893200 | False ceiling | 10d | 2026-05-01 | 2026-05-11 | 1468, 1483 |  | 7 day week With NGT Ban | 7589783 |
| 1485 | 37200.37300.37500.38000.39200.40400.41400.78600 | **20th Floor** | 94.5d | 2026-02-24 | 2026-05-29 |  | start no earlier than 2026-02-24 | 7 day week With NGT Ban | 7568263 |
| 1486 | 37200.37300.37500.38000.39200.40400.41400.78600.893300 | Block Work | 8d | 2026-02-24 | 2026-03-04 | 1470FS+0.25d |  | 7 day week With NGT Ban | 7589793 |
| 1487 | 37200.37300.37500.38000.39200.40400.41400.78600.893400 | Door Frame Fixing | 9d | 2026-03-12 | 2026-03-21 | 1471, 1486 |  | 7 day week With NGT Ban | 7589803 |
| 1488 | 37200.37300.37500.38000.39200.40400.41400.78600.893500 | Internal Plumbing Works | 10d | 2026-03-29 | 2026-04-08 | 1472, 1486 |  | 7 day week With NGT Ban | 7589813 |
| 1489 | 37200.37300.37500.38000.39200.40400.41400.78600.893600 | Waterproofing | 12d | 2026-04-26 | 2026-05-08 | 1473, 1488 |  | 7 day week With NGT Ban | 7589823 |
| 1490 | 37200.37300.37500.38000.39200.40400.41400.78600.893700 | Internal Plaster | 5d | 2026-03-07 | 2026-03-11 | 1474FS+0.25d |  | 7 day week With NGT Ban | 7589833 |
| 1491 | 37200.37300.37500.38000.39200.40400.41400.78600.893800 | IPS flooring work | 9d | 2026-05-08 | 2026-05-17 | 1475, 1487, 1489, 1490 |  | 7 day week With NGT Ban | 7589843 |
| 1492 | 37200.37300.37500.38000.39200.40400.41400.78600.893900 | Toilet dado work | 8d | 2026-05-08 | 2026-05-16 | 1476, 1489, 1490 |  | 7 day week With NGT Ban | 7589853 |
| 1493 | 37200.37300.37500.38000.39200.40400.41400.78600.894000 | Toilet flooring work | 7d | 2026-05-16 | 2026-05-23 | 1477, 1492 |  | 7 day week With NGT Ban | 7589863 |
| 1494 | 37200.37300.37500.38000.39200.40400.41400.78600.894100 | Living dinning flooring | 12d | 2026-03-11 | 2026-03-22 | 1478FS+0.25d |  | 7 day week With NGT Ban | 7589873 |
| 1495 | 37200.37300.37500.38000.39200.40400.41400.78600.894200 | Aluminium door-window fixing | 12d | 2026-05-18 | 2026-05-29 | 1479, 1491, 1494 |  | 7 day week With NGT Ban | 7589883 |
| 1496 | 37200.37300.37500.38000.39200.40400.41400.78600.894300 | Putty primer coat | 6d | 2026-03-23 | 2026-03-28 | 1480, 1494 |  | 7 day week With NGT Ban | 7589893 |
| 1497 | 37200.37300.37500.38000.39200.40400.41400.78600.894400 | Door shutter fixing | 8d | 2026-03-23 | 2026-03-30 | 1481, 1494 |  | 7 day week With NGT Ban | 7589903 |
| 1498 | 37200.37300.37500.38000.39200.40400.41400.78600.894500 | Electrical wiring work | 12d | 2026-04-19 | 2026-05-01 | 1482, 1497 |  | 7 day week With NGT Ban | 7589913 |
| 1499 | 37200.37300.37500.38000.39200.40400.41400.78600.894600 | Painting 1st coat | 12d | 2026-05-01 | 2026-05-13 | 1483, 1496, 1497, 1498 |  | 7 day week With NGT Ban | 7589923 |
| 1500 | 37200.37300.37500.38000.39200.40400.41400.78600.894700 | False ceiling | 10d | 2026-05-13 | 2026-05-23 | 1484, 1499 |  | 7 day week With NGT Ban | 7589933 |

| ID | WBS | Task | Duration | Start | Finish | Predecessors | Constraint | Calendar | Unique_Task_ID |
| --- | --- | --- | --- | --- | --- | --- | --- | --- | --- |
| 1501 | 37200.37300.37500.38000.39200.40400.41400.78500 | **21st Floor** | 145.75d | 2026-03-04 | 2026-07-28 |  | start no earlier than 2026-03-04 | 7 day week With NGT Ban | 7568273 |
| 1502 | 37200.37300.37500.38000.39200.40400.41400.78500.894800 | Block Work | 8d | 2026-03-04 | 2026-03-12 | 1486FS+0.25d |  | 7 day week With NGT Ban | 7589943 |
| 1503 | 37200.37300.37500.38000.39200.40400.41400.78500.894900 | Door Frame Fixing | 9d | 2026-03-21 | 2026-03-30 | 1487, 1502 |  | 7 day week With NGT Ban | 7589953 |
| 1504 | 37200.37300.37500.38000.39200.40400.41400.78500.895000 | Internal Plumbing Works | 10d | 2026-04-08 | 2026-04-18 | 1488, 1502 |  | 7 day week With NGT Ban | 7589963 |
| 1505 | 37200.37300.37500.38000.39200.40400.41400.78500.895100 | Waterproofing | 12d | 2026-05-08 | 2026-05-20 | 1489, 1504 |  | 7 day week With NGT Ban | 7589973 |
| 1506 | 37200.37300.37500.38000.39200.40400.41400.78500.895200 | Internal Plaster | 8d | 2026-03-12 | 2026-03-20 | 1490FS+0.25d |  | 7 day week With NGT Ban | 7589983 |
| 1507 | 37200.37300.37500.38000.39200.40400.41400.78500.895300 | IPS flooring work | 9d | 2026-05-20 | 2026-05-29 | 1491, 1503, 1505, 1506 |  | 7 day week With NGT Ban | 7589993 |
| 1508 | 37200.37300.37500.38000.39200.40400.41400.78500.895400 | Toilet dado work | 8d | 2026-05-20 | 2026-05-28 | 1492, 1505, 1506 |  | 7 day week With NGT Ban | 7590003 |
| 1509 | 37200.37300.37500.38000.39200.40400.41400.78500.895500 | Toilet flooring work | 7d | 2026-05-28 | 2026-06-04 | 1493, 1508 |  | 7 day week With NGT Ban | 7590013 |
| 1510 | 37200.37300.37500.38000.39200.40400.41400.78500.895600 | Living dinning flooring | 12d | 2026-06-04 | 2026-06-16 | 1494, 1503, 1509 |  | 7 day week With NGT Ban | 7590023 |
| 1511 | 37200.37300.37500.38000.39200.40400.41400.78500.895700 | Aluminium door-window fixing | 12d | 2026-06-16 | 2026-06-28 | 1495, 1507, 1510 |  | 7 day week With NGT Ban | 7590033 |
| 1512 | 37200.37300.37500.38000.39200.40400.41400.78500.895800 | Putty primer coat | 6d | 2026-06-16 | 2026-06-22 | 1496, 1510 |  | 7 day week With NGT Ban | 7590043 |
| 1513 | 37200.37300.37500.38000.39200.40400.41400.78500.895900 | Door shutter fixing | 8d | 2026-06-16 | 2026-06-24 | 1497, 1510 |  | 7 day week With NGT Ban | 7590053 |
| 1514 | 37200.37300.37500.38000.39200.40400.41400.78500.896000 | Electrical wiring work | 12d | 2026-06-24 | 2026-07-06 | 1498, 1513 |  | 7 day week With NGT Ban | 7590063 |
| 1515 | 37200.37300.37500.38000.39200.40400.41400.78500.896100 | Painting 1st coat | 12d | 2026-07-06 | 2026-07-18 | 1499, 1512, 1513, 1514 |  | 7 day week With NGT Ban | 7590073 |
| 1516 | 37200.37300.37500.38000.39200.40400.41400.78500.896200 | False ceiling | 10d | 2026-07-18 | 2026-07-28 | 1500, 1515 |  | 7 day week With NGT Ban | 7590083 |
| 1517 | 37200.37300.37500.38000.39200.40400.41400.78400 | **22nd Floor** | 149.5d | 2026-03-13 | 2026-08-09 |  | start no earlier than 2026-03-13 | 7 day week With NGT Ban | 7568283 |
| 1518 | 37200.37300.37500.38000.39200.40400.41400.78400.896300 | Block Work | 5d | 2026-03-13 | 2026-03-17 | 1502FS+0.25d |  | 7 day week With NGT Ban | 7590093 |
| 1519 | 37200.37300.37500.38000.39200.40400.41400.78400.896400 | Door Frame Fixing | 9d | 2026-03-30 | 2026-04-08 | 1503, 1518 |  | 7 day week With NGT Ban | 7590103 |
| 1520 | 37200.37300.37500.38000.39200.40400.41400.78400.896500 | Internal Plumbing Works | 10d | 2026-04-18 | 2026-04-28 | 1504, 1518 |  | 7 day week With NGT Ban | 7590113 |
| 1521 | 37200.37300.37500.38000.39200.40400.41400.78400.896600 | Waterproofing | 12d | 2026-05-20 | 2026-06-01 | 1505, 1520 |  | 7 day week With NGT Ban | 7590123 |
| 1522 | 37200.37300.37500.38000.39200.40400.41400.78400.896700 | Internal Plaster | 10d | 2026-03-20 | 2026-03-30 | 1506FS+0.25d |  | 7 day week With NGT Ban | 7590133 |
| 1523 | 37200.37300.37500.38000.39200.40400.41400.78400.896800 | IPS flooring work | 9d | 2026-06-01 | 2026-06-10 | 1507, 1519, 1521, 1522 |  | 7 day week With NGT Ban | 7590143 |
| 1524 | 37200.37300.37500.38000.39200.40400.41400.78400.896900 | Toilet dado work | 8d | 2026-06-01 | 2026-06-09 | 1508, 1521, 1522 |  | 7 day week With NGT Ban | 7590153 |
| 1525 | 37200.37300.37500.38000.39200.40400.41400.78400.897000 | Toilet flooring work | 7d | 2026-06-09 | 2026-06-16 | 1509, 1524 |  | 7 day week With NGT Ban | 7590163 |
| 1526 | 37200.37300.37500.38000.39200.40400.41400.78400.897100 | Living dinning flooring | 12d | 2026-06-16 | 2026-06-28 | 1510, 1519, 1525 |  | 7 day week With NGT Ban | 7590173 |
| 1527 | 37200.37300.37500.38000.39200.40400.41400.78400.897200 | Aluminium door-window fixing | 12d | 2026-06-28 | 2026-07-10 | 1511, 1523, 1526 |  | 7 day week With NGT Ban | 7590183 |
| 1528 | 37200.37300.37500.38000.39200.40400.41400.78400.897300 | Putty primer coat | 6d | 2026-06-28 | 2026-07-04 | 1512, 1526 |  | 7 day week With NGT Ban | 7590193 |
| 1529 | 37200.37300.37500.38000.39200.40400.41400.78400.897400 | Door shutter fixing | 8d | 2026-06-28 | 2026-07-06 | 1513, 1526 |  | 7 day week With NGT Ban | 7590203 |
| 1530 | 37200.37300.37500.38000.39200.40400.41400.78400.897500 | Electrical wiring work | 12d | 2026-07-06 | 2026-07-18 | 1514, 1529 |  | 7 day week With NGT Ban | 7590213 |
| 1531 | 37200.37300.37500.38000.39200.40400.41400.78400.897600 | Painting 1st coat | 12d | 2026-07-18 | 2026-07-30 | 1515, 1528, 1529, 1530 |  | 7 day week With NGT Ban | 7590223 |
| 1532 | 37200.37300.37500.38000.39200.40400.41400.78400.897700 | False ceiling | 10d | 2026-07-30 | 2026-08-09 | 1516, 1531 |  | 7 day week With NGT Ban | 7590233 |

| ID | WBS | Task | Duration | Start | Finish | Predecessors | Constraint | Calendar | Unique_Task_ID |
| --- | --- | --- | --- | --- | --- | --- | --- | --- | --- |
| 1533 | 37200.37300.37500.38000.39200.40400.41400.78300 | **23rd Floor** | 159.25d | 2026-03-18 | 2026-08-24 |  | start no earlier than 2026-03-18 | 7 day week With NGT Ban | 7568293 |
| 1534 | 37200.37300.37500.38000.39200.40400.41400.78300.897800 | Block Work | 7.94d | 2026-03-18 | 2026-03-26 | 1518FS+0.25d |  | 7 day week With NGT Ban | 7590243 |
| 1535 | 37200.37300.37500.38000.39200.40400.41400.78300.897900 | Door Frame Fixing | 9d | 2026-04-08 | 2026-04-17 | 1519, 1534 |  | 7 day week With NGT Ban | 7590253 |
| 1536 | 37200.37300.37500.38000.39200.40400.41400.78300.898000 | Internal Plumbing Works | 10d | 2026-04-28 | 2026-05-08 | 1520, 1534 |  | 7 day week With NGT Ban | 7590263 |
| 1537 | 37200.37300.37500.38000.39200.40400.41400.78300.898100 | Waterproofing | 12d | 2026-06-01 | 2026-06-13 | 1521, 1536 |  | 7 day week With NGT Ban | 7590273 |
| 1538 | 37200.37300.37500.38000.39200.40400.41400.78300.898200 | Internal Plaster | 10d | 2026-03-30 | 2026-04-09 | 1522FS+0.25d |  | 7 day week With NGT Ban | 7590283 |
| 1539 | 37200.37300.37500.38000.39200.40400.41400.78300.898300 | IPS flooring work | 9d | 2026-06-13 | 2026-06-22 | 1523, 1535, 1537, 1538 |  | 7 day week With NGT Ban | 7590293 |
| 1540 | 37200.37300.37500.38000.39200.40400.41400.78300.898400 | Toilet dado work | 8d | 2026-06-13 | 2026-06-21 | 1524, 1537, 1538 |  | 7 day week With NGT Ban | 7590303 |
| 1541 | 37200.37300.37500.38000.39200.40400.41400.78300.898500 | Toilet flooring work | 7d | 2026-06-21 | 2026-06-28 | 1525, 1540 |  | 7 day week With NGT Ban | 7590313 |
| 1542 | 37200.37300.37500.38000.39200.40400.41400.78300.898600 | Living dinning flooring | 15d | 2026-06-28 | 2026-07-13 | 1526, 1535, 1541 |  | 7 day week With NGT Ban | 7590323 |
| 1543 | 37200.37300.37500.38000.39200.40400.41400.78300.898700 | Aluminium door-window fixing | 15d | 2026-07-13 | 2026-07-28 | 1527, 1539, 1542 |  | 7 day week With NGT Ban | 7590333 |
| 1544 | 37200.37300.37500.38000.39200.40400.41400.78300.898800 | Putty primer coat | 6d | 2026-07-13 | 2026-07-19 | 1528, 1542 |  | 7 day week With NGT Ban | 7590343 |
| 1545 | 37200.37300.37500.38000.39200.40400.41400.78300.898900 | Door shutter fixing | 8d | 2026-07-13 | 2026-07-21 | 1529, 1542 |  | 7 day week With NGT Ban | 7590353 |
| 1546 | 37200.37300.37500.38000.39200.40400.41400.78300.899000 | Electrical wiring work | 12d | 2026-07-21 | 2026-08-02 | 1530, 1545 |  | 7 day week With NGT Ban | 7590363 |
| 1547 | 37200.37300.37500.38000.39200.40400.41400.78300.899100 | Painting 1st coat | 12d | 2026-08-02 | 2026-08-14 | 1531, 1544, 1545, 1546 |  | 7 day week With NGT Ban | 7590373 |
| 1548 | 37200.37300.37500.38000.39200.40400.41400.78300.899200 | False ceiling | 10d | 2026-08-14 | 2026-08-24 | 1532, 1547 |  | 7 day week With NGT Ban | 7590383 |
| 1549 | 37200.37300.37500.38000.39200.40400.41400.78200 | **24th Floor** | 172.06d | 2026-03-26 | 2026-09-14 |  | start no earlier than 2026-03-26 | 7 day week With NGT Ban | 7568303 |
| 1550 | 37200.37300.37500.38000.39200.40400.41400.78200.899300 | Block Work | 4d | 2026-03-26 | 2026-03-30 | 1534FS+0.25d |  | 7 day week With NGT Ban | 7590393 |
| 1551 | 37200.37300.37500.38000.39200.40400.41400.78200.899400 | Door Frame Fixing | 9d | 2026-04-17 | 2026-04-26 | 1535, 1550 |  | 7 day week With NGT Ban | 7590403 |
| 1552 | 37200.37300.37500.38000.39200.40400.41400.78200.899500 | Internal Plumbing Works | 10d | 2026-05-08 | 2026-05-18 | 1536, 1550 |  | 7 day week With NGT Ban | 7590413 |
| 1553 | 37200.37300.37500.38000.39200.40400.41400.78200.899600 | Waterproofing | 12d | 2026-06-13 | 2026-06-25 | 1537, 1552 |  | 7 day week With NGT Ban | 7590423 |
| 1554 | 37200.37300.37500.38000.39200.40400.41400.78200.899700 | Internal Plaster | 9d | 2026-06-25 | 2026-07-04 | 1538, 1551, 1552, 1553 |  | 7 day week With NGT Ban | 7590433 |
| 1555 | 37200.37300.37500.38000.39200.40400.41400.78200.899800 | IPS flooring work | 9d | 2026-07-04 | 2026-07-13 | 1539, 1551, 1553, 1554 |  | 7 day week With NGT Ban | 7590443 |
| 1556 | 37200.37300.37500.38000.39200.40400.41400.78200.899900 | Toilet dado work | 8d | 2026-07-04 | 2026-07-12 | 1540, 1553, 1554 |  | 7 day week With NGT Ban | 7590453 |
| 1557 | 37200.37300.37500.38000.39200.40400.41400.78200.900000 | Toilet flooring work | 7d | 2026-07-12 | 2026-07-19 | 1541, 1556 |  | 7 day week With NGT Ban | 7590463 |
| 1558 | 37200.37300.37500.38000.39200.40400.41400.78200.900100 | Living dinning flooring | 15d | 2026-07-19 | 2026-08-03 | 1542, 1551, 1557 |  | 7 day week With NGT Ban | 7590473 |
| 1559 | 37200.37300.37500.38000.39200.40400.41400.78200.900200 | Aluminium door-window fixing | 15d | 2026-08-03 | 2026-08-18 | 1543, 1555, 1558 |  | 7 day week With NGT Ban | 7590483 |
| 1560 | 37200.37300.37500.38000.39200.40400.41400.78200.900300 | Putty primer coat | 6d | 2026-08-03 | 2026-08-09 | 1544, 1558 |  | 7 day week With NGT Ban | 7590493 |
| 1561 | 37200.37300.37500.38000.39200.40400.41400.78200.900400 | Door shutter fixing | 8d | 2026-08-03 | 2026-08-11 | 1545, 1558 |  | 7 day week With NGT Ban | 7590503 |
| 1562 | 37200.37300.37500.38000.39200.40400.41400.78200.900500 | Electrical wiring work | 12d | 2026-08-11 | 2026-08-23 | 1546, 1561 |  | 7 day week With NGT Ban | 7590513 |
| 1563 | 37200.37300.37500.38000.39200.40400.41400.78200.900600 | Painting 1st coat | 12d | 2026-08-23 | 2026-09-04 | 1547, 1560, 1561, 1562 |  | 7 day week With NGT Ban | 7590523 |
| 1564 | 37200.37300.37500.38000.39200.40400.41400.78200.900700 | False ceiling | 10d | 2026-09-04 | 2026-09-14 | 1548, 1563 |  | 7 day week With NGT Ban | 7590533 |

| ID | WBS | Task | Duration | Start | Finish | Predecessors | Constraint | Calendar | Unique_Task_ID |
| --- | --- | --- | --- | --- | --- | --- | --- | --- | --- |
| 1565 | 37200.37300.37500.38000.39200.40400.41400.78100 | **25th Floor** | 128.38d | 2026-05-24 | 2026-09-29 |  | start no earlier than 2026-05-24 | 7 day week With NGT Ban | 7568313 |
| 1566 | 37200.37300.37500.38000.39200.40400.41400.78100.900800 | Block Work | 7.94d | 2026-05-24 | 2026-06-01 | 1168, 1550 |  | 7 day week With NGT Ban | 7590543 |
| 1567 | 37200.37300.37500.38000.39200.40400.41400.78100.900900 | Door Frame Fixing | 9d | 2026-06-01 | 2026-06-10 | 1551, 1566 |  | 7 day week With NGT Ban | 7590553 |
| 1568 | 37200.37300.37500.38000.39200.40400.41400.78100.901000 | Internal Plumbing Works | 10d | 2026-06-01 | 2026-06-11 | 1552, 1566 |  | 7 day week With NGT Ban | 7590563 |
| 1569 | 37200.37300.37500.38000.39200.40400.41400.78100.901100 | Waterproofing | 12d | 2026-06-25 | 2026-07-07 | 1553, 1568 |  | 7 day week With NGT Ban | 7590573 |
| 1570 | 37200.37300.37500.38000.39200.40400.41400.78100.901200 | Internal Plaster | 9d | 2026-07-07 | 2026-07-16 | 1554, 1567, 1568, 1569 |  | 7 day week With NGT Ban | 7590583 |
| 1571 | 37200.37300.37500.38000.39200.40400.41400.78100.901300 | IPS flooring work | 9d | 2026-07-16 | 2026-07-25 | 1555, 1567, 1569, 1570 |  | 7 day week With NGT Ban | 7590593 |
| 1572 | 37200.37300.37500.38000.39200.40400.41400.78100.901400 | Toilet dado work | 8d | 2026-07-16 | 2026-07-24 | 1556, 1569, 1570 |  | 7 day week With NGT Ban | 7590603 |
| 1573 | 37200.37300.37500.38000.39200.40400.41400.78100.901500 | Toilet flooring work | 7d | 2026-07-24 | 2026-07-31 | 1557, 1572 |  | 7 day week With NGT Ban | 7590613 |
| 1574 | 37200.37300.37500.38000.39200.40400.41400.78100.901600 | Living dinning flooring | 15d | 2026-08-03 | 2026-08-18 | 1558, 1567, 1573 |  | 7 day week With NGT Ban | 7590623 |
| 1575 | 37200.37300.37500.38000.39200.40400.41400.78100.901700 | Aluminium door-window fixing | 15d | 2026-08-18 | 2026-09-02 | 1559, 1571, 1574 |  | 7 day week With NGT Ban | 7590633 |
| 1576 | 37200.37300.37500.38000.39200.40400.41400.78100.901800 | Putty primer coat | 6d | 2026-08-18 | 2026-08-24 | 1560, 1574 |  | 7 day week With NGT Ban | 7590643 |
| 1577 | 37200.37300.37500.38000.39200.40400.41400.78100.901900 | Door shutter fixing | 8d | 2026-08-18 | 2026-08-26 | 1561, 1574 |  | 7 day week With NGT Ban | 7590653 |
| 1578 | 37200.37300.37500.38000.39200.40400.41400.78100.902000 | Electrical wiring work | 12d | 2026-08-26 | 2026-09-07 | 1562, 1577 |  | 7 day week With NGT Ban | 7590663 |
| 1579 | 37200.37300.37500.38000.39200.40400.41400.78100.902100 | Painting 1st coat | 12d | 2026-09-07 | 2026-09-19 | 1563, 1576, 1577, 1578 |  | 7 day week With NGT Ban | 7590673 |
| 1580 | 37200.37300.37500.38000.39200.40400.41400.78100.902200 | False ceiling | 10d | 2026-09-19 | 2026-09-29 | 1564, 1579 |  | 7 day week With NGT Ban | 7590683 |
| 1581 | 37200.37300.37500.38000.39200.40400.41400.78000 | **26th Floor** | 131.62d | 2026-06-04 | 2026-10-14 |  | start no earlier than 2026-06-04 | 7 day week With NGT Ban | 7568323 |
| 1582 | 37200.37300.37500.38000.39200.40400.41400.78000.902300 | Block Work | 7.94d | 2026-06-04 | 2026-06-12 | 1169, 1566 |  | 7 day week With NGT Ban | 7590693 |
| 1583 | 37200.37300.37500.38000.39200.40400.41400.78000.902400 | Door Frame Fixing | 9d | 2026-06-12 | 2026-06-21 | 1567, 1582 |  | 7 day week With NGT Ban | 7590703 |
| 1584 | 37200.37300.37500.38000.39200.40400.41400.78000.902500 | Internal Plumbing Works | 10d | 2026-06-12 | 2026-06-22 | 1568, 1582 |  | 7 day week With NGT Ban | 7590713 |
| 1585 | 37200.37300.37500.38000.39200.40400.41400.78000.902600 | Waterproofing | 12d | 2026-07-07 | 2026-07-19 | 1569, 1584 |  | 7 day week With NGT Ban | 7590723 |
| 1586 | 37200.37300.37500.38000.39200.40400.41400.78000.902700 | Internal Plaster | 9d | 2026-07-19 | 2026-07-28 | 1570, 1583, 1584, 1585 |  | 7 day week With NGT Ban | 7590733 |
| 1587 | 37200.37300.37500.38000.39200.40400.41400.78000.902800 | IPS flooring work | 9d | 2026-07-28 | 2026-08-06 | 1571, 1583, 1585, 1586 |  | 7 day week With NGT Ban | 7590743 |
| 1588 | 37200.37300.37500.38000.39200.40400.41400.78000.902900 | Toilet dado work | 8d | 2026-07-28 | 2026-08-05 | 1572, 1585, 1586 |  | 7 day week With NGT Ban | 7590753 |
| 1589 | 37200.37300.37500.38000.39200.40400.41400.78000.903000 | Toilet flooring work | 7d | 2026-08-05 | 2026-08-12 | 1573, 1588 |  | 7 day week With NGT Ban | 7590763 |
| 1590 | 37200.37300.37500.38000.39200.40400.41400.78000.903100 | Living dinning flooring | 15d | 2026-08-18 | 2026-09-02 | 1574, 1583, 1589 |  | 7 day week With NGT Ban | 7590773 |
| 1591 | 37200.37300.37500.38000.39200.40400.41400.78000.903200 | Aluminium door-window fixing | 15d | 2026-09-02 | 2026-09-17 | 1575, 1587, 1590 |  | 7 day week With NGT Ban | 7590783 |
| 1592 | 37200.37300.37500.38000.39200.40400.41400.78000.903300 | Putty primer coat | 6d | 2026-09-02 | 2026-09-08 | 1576, 1590 |  | 7 day week With NGT Ban | 7590793 |
| 1593 | 37200.37300.37500.38000.39200.40400.41400.78000.903400 | Door shutter fixing | 8d | 2026-09-02 | 2026-09-10 | 1577, 1590 |  | 7 day week With NGT Ban | 7590803 |
| 1594 | 37200.37300.37500.38000.39200.40400.41400.78000.903500 | Electrical wiring work | 12d | 2026-09-10 | 2026-09-22 | 1578, 1593 |  | 7 day week With NGT Ban | 7590813 |
| 1595 | 37200.37300.37500.38000.39200.40400.41400.78000.903600 | Painting 1st coat | 12d | 2026-09-22 | 2026-10-04 | 1579, 1592, 1593, 1594 |  | 7 day week With NGT Ban | 7590823 |
| 1596 | 37200.37300.37500.38000.39200.40400.41400.78000.903700 | False ceiling | 10d | 2026-10-04 | 2026-10-14 | 1580, 1595 |  | 7 day week With NGT Ban | 7590833 |

| ID | WBS | Task | Duration | Start | Finish | Predecessors | Constraint | Calendar | Unique_Task_ID |
| --- | --- | --- | --- | --- | --- | --- | --- | --- | --- |
| 1597 | 37200.37300.37500.38000.39200.40400.41400.77900 | **27th Floor** | 133.88d | 2026-06-17 | 2026-10-29 |  | start no earlier than 2026-06-17 | 7 day week With NGT Ban | 7568333 |
| 1598 | 37200.37300.37500.38000.39200.40400.41400.77900.903800 | Block Work | 7.94d | 2026-06-17 | 2026-06-25 | 1170, 1582 |  | 7 day week With NGT Ban | 7590843 |
| 1599 | 37200.37300.37500.38000.39200.40400.41400.77900.903900 | Door Frame Fixing | 8.94d | 2026-06-25 | 2026-07-04 | 1583, 1598 |  | 7 day week With NGT Ban | 7590853 |
| 1600 | 37200.37300.37500.38000.39200.40400.41400.77900.904000 | Internal Plumbing Works | 10d | 2026-06-25 | 2026-07-05 | 1584, 1598 |  | 7 day week With NGT Ban | 7590863 |
| 1601 | 37200.37300.37500.38000.39200.40400.41400.77900.904100 | Waterproofing | 12d | 2026-07-19 | 2026-07-31 | 1585, 1600 |  | 7 day week With NGT Ban | 7590873 |
| 1602 | 37200.37300.37500.38000.39200.40400.41400.77900.904200 | Internal Plaster | 9d | 2026-07-31 | 2026-08-09 | 1586, 1599, 1600, 1601 |  | 7 day week With NGT Ban | 7590883 |
| 1603 | 37200.37300.37500.38000.39200.40400.41400.77900.904300 | IPS flooring work | 9d | 2026-08-09 | 2026-08-18 | 1587, 1599, 1601, 1602 |  | 7 day week With NGT Ban | 7590893 |
| 1604 | 37200.37300.37500.38000.39200.40400.41400.77900.904400 | Toilet dado work | 8d | 2026-08-09 | 2026-08-17 | 1588, 1601, 1602 |  | 7 day week With NGT Ban | 7590903 |
| 1605 | 37200.37300.37500.38000.39200.40400.41400.77900.904500 | Toilet flooring work | 7d | 2026-08-17 | 2026-08-24 | 1589, 1604 |  | 7 day week With NGT Ban | 7590913 |
| 1606 | 37200.37300.37500.38000.39200.40400.41400.77900.904600 | Living dinning flooring | 15d | 2026-09-02 | 2026-09-17 | 1590, 1599, 1605 |  | 7 day week With NGT Ban | 7590923 |
| 1607 | 37200.37300.37500.38000.39200.40400.41400.77900.904700 | Aluminium door-window fixing | 15d | 2026-09-17 | 2026-10-02 | 1591, 1603, 1606 |  | 7 day week With NGT Ban | 7590933 |
| 1608 | 37200.37300.37500.38000.39200.40400.41400.77900.904800 | Putty primer coat | 6d | 2026-09-17 | 2026-09-23 | 1592, 1606 |  | 7 day week With NGT Ban | 7590943 |
| 1609 | 37200.37300.37500.38000.39200.40400.41400.77900.904900 | Door shutter fixing | 8d | 2026-09-17 | 2026-09-25 | 1593, 1606 |  | 7 day week With NGT Ban | 7590953 |
| 1610 | 37200.37300.37500.38000.39200.40400.41400.77900.905000 | Electrical wiring work | 12d | 2026-09-25 | 2026-10-07 | 1594, 1609 |  | 7 day week With NGT Ban | 7590963 |
| 1611 | 37200.37300.37500.38000.39200.40400.41400.77900.905100 | Painting 1st coat | 12d | 2026-10-07 | 2026-10-19 | 1595, 1608, 1609, 1610 |  | 7 day week With NGT Ban | 7590973 |
| 1612 | 37200.37300.37500.38000.39200.40400.41400.77900.905200 | False ceiling | 10d | 2026-10-19 | 2026-10-29 | 1596, 1611 |  | 7 day week With NGT Ban | 7590983 |
| 1613 | 37200.37300.37500.38000.39200.40400.41400.77800 | **28th Floor** | 137.12d | 2026-06-29 | 2026-12-28 |  | start no earlier than 2026-06-29 | 7 day week With NGT Ban | 7568343 |
| 1614 | 37200.37300.37500.38000.39200.40400.41400.77800.905300 | Block Work | 7.94d | 2026-06-29 | 2026-07-07 | 1171, 1598 |  | 7 day week With NGT Ban | 7590993 |
| 1615 | 37200.37300.37500.38000.39200.40400.41400.77800.905400 | Door Frame Fixing | 8.94d | 2026-07-07 | 2026-07-16 | 1599, 1614 |  | 7 day week With NGT Ban | 7591003 |
| 1616 | 37200.37300.37500.38000.39200.40400.41400.77800.905500 | Internal Plumbing Works | 10d | 2026-07-07 | 2026-07-17 | 1600, 1614 |  | 7 day week With NGT Ban | 7591013 |
| 1617 | 37200.37300.37500.38000.39200.40400.41400.77800.905600 | Waterproofing | 12d | 2026-07-31 | 2026-08-12 | 1601, 1616 |  | 7 day week With NGT Ban | 7591023 |
| 1618 | 37200.37300.37500.38000.39200.40400.41400.77800.905700 | Internal Plaster | 9d | 2026-08-12 | 2026-08-21 | 1602, 1615, 1616, 1617 |  | 7 day week With NGT Ban | 7591033 |
| 1619 | 37200.37300.37500.38000.39200.40400.41400.77800.905800 | IPS flooring work | 9d | 2026-08-21 | 2026-08-30 | 1603, 1615, 1617, 1618 |  | 7 day week With NGT Ban | 7591043 |
| 1620 | 37200.37300.37500.38000.39200.40400.41400.77800.905900 | Toilet dado work | 8d | 2026-08-21 | 2026-08-29 | 1604, 1617, 1618 |  | 7 day week With NGT Ban | 7591053 |
| 1621 | 37200.37300.37500.38000.39200.40400.41400.77800.906000 | Toilet flooring work | 7d | 2026-08-29 | 2026-09-05 | 1605, 1620 |  | 7 day week With NGT Ban | 7591063 |
| 1622 | 37200.37300.37500.38000.39200.40400.41400.77800.906100 | Living dinning flooring | 15d | 2026-09-17 | 2026-10-02 | 1606, 1615, 1621 |  | 7 day week With NGT Ban | 7591073 |
| 1623 | 37200.37300.37500.38000.39200.40400.41400.77800.906200 | Aluminium door-window fixing | 15d | 2026-10-02 | 2026-10-17 | 1607, 1619, 1622 |  | 7 day week With NGT Ban | 7591083 |
| 1624 | 37200.37300.37500.38000.39200.40400.41400.77800.906300 | Putty primer coat | 6d | 2026-10-02 | 2026-10-08 | 1608, 1622 |  | 7 day week With NGT Ban | 7591093 |
| 1625 | 37200.37300.37500.38000.39200.40400.41400.77800.906400 | Door shutter fixing | 8d | 2026-10-02 | 2026-10-10 | 1609, 1622 |  | 7 day week With NGT Ban | 7591103 |
| 1626 | 37200.37300.37500.38000.39200.40400.41400.77800.906500 | Electrical wiring work | 12d | 2026-10-10 | 2026-10-22 | 1610, 1625 |  | 7 day week With NGT Ban | 7591113 |
| 1627 | 37200.37300.37500.38000.39200.40400.41400.77800.906600 | Painting 1st coat | 12d | 2026-10-22 | 2026-12-18 | 1611, 1624, 1625, 1626 |  | 7 day week With NGT Ban | 7591123 |
| 1628 | 37200.37300.37500.38000.39200.40400.41400.77800.906700 | False ceiling | 10d | 2026-12-18 | 2026-12-28 | 1612, 1627 |  | 7 day week With NGT Ban | 7591133 |

| ID | WBS | Task | Duration | Start | Finish | Predecessors | Constraint | Calendar | Unique_Task_ID |
| --- | --- | --- | --- | --- | --- | --- | --- | --- | --- |
| 1629 | 37200.37300.37500.38000.39200.40400.41400.77700 | **29th Floor** | 137.38d | 2026-07-14 | 2027-01-12 |  | start no earlier than 2026-07-14 | 7 day week With NGT Ban | 7568353 |
| 1630 | 37200.37300.37500.38000.39200.40400.41400.77700.906800 | Block Work | 7.94d | 2026-07-14 | 2026-07-22 | 1172, 1614 |  | 7 day week With NGT Ban | 7591143 |
| 1631 | 37200.37300.37500.38000.39200.40400.41400.77700.906900 | Door Frame Fixing | 8.94d | 2026-07-22 | 2026-07-30 | 1615, 1630 |  | 7 day week With NGT Ban | 7591153 |
| 1632 | 37200.37300.37500.38000.39200.40400.41400.77700.907000 | Internal Plumbing Works | 10d | 2026-07-22 | 2026-08-01 | 1616, 1630 |  | 7 day week With NGT Ban | 7591163 |
| 1633 | 37200.37300.37500.38000.39200.40400.41400.77700.907100 | Waterproofing | 12d | 2026-08-12 | 2026-08-24 | 1617, 1632 |  | 7 day week With NGT Ban | 7591173 |
| 1634 | 37200.37300.37500.38000.39200.40400.41400.77700.907200 | Internal Plaster | 9d | 2026-08-24 | 2026-09-02 | 1618, 1631, 1632, 1633 |  | 7 day week With NGT Ban | 7591183 |
| 1635 | 37200.37300.37500.38000.39200.40400.41400.77700.907300 | IPS flooring work | 9d | 2026-09-02 | 2026-09-11 | 1619, 1631, 1633, 1634 |  | 7 day week With NGT Ban | 7591193 |
| 1636 | 37200.37300.37500.38000.39200.40400.41400.77700.907400 | Toilet dado work | 8d | 2026-09-02 | 2026-09-10 | 1620, 1633, 1634 |  | 7 day week With NGT Ban | 7591203 |
| 1637 | 37200.37300.37500.38000.39200.40400.41400.77700.907500 | Toilet flooring work | 7d | 2026-09-10 | 2026-09-17 | 1621, 1636 |  | 7 day week With NGT Ban | 7591213 |
| 1638 | 37200.37300.37500.38000.39200.40400.41400.77700.907600 | Living dinning flooring | 15d | 2026-10-02 | 2026-10-17 | 1622, 1631, 1637 |  | 7 day week With NGT Ban | 7591223 |
| 1639 | 37200.37300.37500.38000.39200.40400.41400.77700.907700 | Aluminium door-window fixing | 15d | 2026-10-17 | 2026-12-16 | 1623, 1635, 1638 |  | 7 day week With NGT Ban | 7591233 |
| 1640 | 37200.37300.37500.38000.39200.40400.41400.77700.907800 | Putty primer coat | 6d | 2026-10-17 | 2026-10-23 | 1624, 1638 |  | 7 day week With NGT Ban | 7591243 |
| 1641 | 37200.37300.37500.38000.39200.40400.41400.77700.907900 | Door shutter fixing | 8d | 2026-10-17 | 2026-10-25 | 1625, 1638 |  | 7 day week With NGT Ban | 7591253 |
| 1642 | 37200.37300.37500.38000.39200.40400.41400.77700.908000 | Electrical wiring work | 12d | 2026-10-25 | 2026-12-21 | 1626, 1641 |  | 7 day week With NGT Ban | 7591263 |
| 1643 | 37200.37300.37500.38000.39200.40400.41400.77700.908100 | Painting 1st coat | 12d | 2026-12-21 | 2027-01-02 | 1627, 1640, 1641, 1642 |  | 7 day week With NGT Ban | 7591273 |
| 1644 | 37200.37300.37500.38000.39200.40400.41400.77700.908200 | False ceiling | 10d | 2027-01-02 | 2027-01-12 | 1628, 1643 |  | 7 day week With NGT Ban | 7591283 |
| 1645 | 37200.37300.37500.38000.39200.40400.41400.77600 | **30th Floor** | 118.88d | 2026-08-22 | 2027-02-02 |  | start no earlier than 2026-08-22 | 7 day week With NGT Ban | 7568363 |
| 1646 | 37200.37300.37500.38000.39200.40400.41400.77600.908300 | Block Work | 7.94d | 2026-08-22 | 2026-08-30 | 1173, 1630 |  | 7 day week With NGT Ban | 7591293 |
| 1647 | 37200.37300.37500.38000.39200.40400.41400.77600.908400 | Door Frame Fixing | 8.94d | 2026-08-30 | 2026-09-08 | 1631, 1646 |  | 7 day week With NGT Ban | 7591303 |
| 1648 | 37200.37300.37500.38000.39200.40400.41400.77600.908500 | Internal Plumbing Works | 9.94d | 2026-08-30 | 2026-09-09 | 1632, 1646 |  | 7 day week With NGT Ban | 7591313 |
| 1649 | 37200.37300.37500.38000.39200.40400.41400.77600.908600 | Waterproofing | 12d | 2026-09-09 | 2026-09-21 | 1633, 1648 |  | 7 day week With NGT Ban | 7591323 |
| 1650 | 37200.37300.37500.38000.39200.40400.41400.77600.908700 | Internal Plaster | 9d | 2026-09-21 | 2026-09-30 | 1634, 1647, 1648, 1649 |  | 7 day week With NGT Ban | 7591333 |
| 1651 | 37200.37300.37500.38000.39200.40400.41400.77600.908800 | IPS flooring work | 9d | 2026-09-30 | 2026-10-09 | 1635, 1647, 1649, 1650 |  | 7 day week With NGT Ban | 7591343 |
| 1652 | 37200.37300.37500.38000.39200.40400.41400.77600.908900 | Toilet dado work | 8d | 2026-09-30 | 2026-10-08 | 1636, 1649, 1650 |  | 7 day week With NGT Ban | 7591353 |
| 1653 | 37200.37300.37500.38000.39200.40400.41400.77600.909000 | Toilet flooring work | 7d | 2026-10-08 | 2026-10-15 | 1637, 1652 |  | 7 day week With NGT Ban | 7591363 |
| 1654 | 37200.37300.37500.38000.39200.40400.41400.77600.909100 | Living dinning flooring | 15d | 2026-10-17 | 2026-12-16 | 1638, 1647, 1653 |  | 7 day week With NGT Ban | 7591373 |
| 1655 | 37200.37300.37500.38000.39200.40400.41400.77600.909200 | Aluminium door-window fixing | 15d | 2026-12-16 | 2026-12-31 | 1639, 1651, 1654 |  | 7 day week With NGT Ban | 7591383 |
| 1656 | 37200.37300.37500.38000.39200.40400.41400.77600.909300 | Putty primer coat | 6d | 2026-12-16 | 2026-12-22 | 1640, 1654 |  | 7 day week With NGT Ban | 7591393 |
| 1657 | 37200.37300.37500.38000.39200.40400.41400.77600.909400 | Door shutter fixing | 8d | 2026-12-16 | 2026-12-24 | 1641, 1654 |  | 7 day week With NGT Ban | 7591403 |
| 1658 | 37200.37300.37500.38000.39200.40400.41400.77600.909500 | Electrical wiring work | 15d | 2026-12-24 | 2027-01-08 | 1642, 1657 |  | 7 day week With NGT Ban | 7591413 |
| 1659 | 37200.37300.37500.38000.39200.40400.41400.77600.909600 | Painting 1st coat | 15d | 2027-01-08 | 2027-01-23 | 1643, 1656, 1657, 1658 |  | 7 day week With NGT Ban | 7591423 |
| 1660 | 37200.37300.37500.38000.39200.40400.41400.77600.909700 | False ceiling | 10d | 2027-01-23 | 2027-02-02 | 1644, 1659 |  | 7 day week With NGT Ban | 7591433 |

| ID | WBS | Task | Duration | Start | Finish | Predecessors | Constraint | Calendar | Unique_Task_ID |
| --- | --- | --- | --- | --- | --- | --- | --- | --- | --- |
| 1661 | 37200.37300.37500.38000.39200.40400.41400.77500 | **31st Floor** | 125.94d | 2026-08-30 | 2027-02-17 |  | start no earlier than 2026-08-30 | 7 day week With NGT Ban | 7568373 |
| 1662 | 37200.37300.37500.38000.39200.40400.41400.77500.909800 | Block Work | 7.94d | 2026-08-30 | 2026-09-07 | 1174, 1646 |  | 7 day week With NGT Ban | 7591443 |
| 1663 | 37200.37300.37500.38000.39200.40400.41400.77500.909900 | Door Frame Fixing | 8.94d | 2026-09-08 | 2026-09-17 | 1647, 1662 |  | 7 day week With NGT Ban | 7591453 |
| 1664 | 37200.37300.37500.38000.39200.40400.41400.77500.910000 | Internal Plumbing Works | 9.94d | 2026-09-09 | 2026-09-19 | 1648, 1662 |  | 7 day week With NGT Ban | 7591463 |
| 1665 | 37200.37300.37500.38000.39200.40400.41400.77500.910100 | Waterproofing | 12d | 2026-09-21 | 2026-10-03 | 1649, 1664 |  | 7 day week With NGT Ban | 7591473 |
| 1666 | 37200.37300.37500.38000.39200.40400.41400.77500.910200 | Internal Plaster | 9d | 2026-10-03 | 2026-10-12 | 1650, 1663, 1664, 1665 |  | 7 day week With NGT Ban | 7591483 |
| 1667 | 37200.37300.37500.38000.39200.40400.41400.77500.910300 | IPS flooring work | 9d | 2026-10-12 | 2026-10-21 | 1651, 1663, 1665, 1666 |  | 7 day week With NGT Ban | 7591493 |
| 1668 | 37200.37300.37500.38000.39200.40400.41400.77500.910400 | Toilet dado work | 8d | 2026-10-12 | 2026-10-20 | 1652, 1665, 1666 |  | 7 day week With NGT Ban | 7591503 |
| 1669 | 37200.37300.37500.38000.39200.40400.41400.77500.910500 | Toilet flooring work | 7d | 2026-10-20 | 2026-10-27 | 1653, 1668 |  | 7 day week With NGT Ban | 7591513 |
| 1670 | 37200.37300.37500.38000.39200.40400.41400.77500.910600 | Living dinning flooring | 15d | 2026-12-16 | 2026-12-31 | 1654, 1663, 1669 |  | 7 day week With NGT Ban | 7591523 |
| 1671 | 37200.37300.37500.38000.39200.40400.41400.77500.910700 | Aluminium door-window fixing | 12d | 2026-12-31 | 2027-01-12 | 1655, 1667, 1670 |  | 7 day week With NGT Ban | 7591533 |
| 1672 | 37200.37300.37500.38000.39200.40400.41400.77500.910800 | Putty primer coat | 6d | 2026-12-31 | 2027-01-06 | 1656, 1670 |  | 7 day week With NGT Ban | 7591543 |
| 1673 | 37200.37300.37500.38000.39200.40400.41400.77500.910900 | Door shutter fixing | 8d | 2026-12-31 | 2027-01-08 | 1657, 1670 |  | 7 day week With NGT Ban | 7591553 |
| 1674 | 37200.37300.37500.38000.39200.40400.41400.77500.911000 | Electrical wiring work | 15d | 2027-01-08 | 2027-01-23 | 1658, 1673 |  | 7 day week With NGT Ban | 7591563 |
| 1675 | 37200.37300.37500.38000.39200.40400.41400.77500.911100 | Painting 1st coat | 15d | 2027-01-23 | 2027-02-07 | 1659, 1672, 1673, 1674 |  | 7 day week With NGT Ban | 7591573 |
| 1676 | 37200.37300.37500.38000.39200.40400.41400.77500.911200 | False ceiling | 10d | 2027-02-07 | 2027-02-17 | 1660, 1675 |  | 7 day week With NGT Ban | 7591583 |
| 1677 | 37200.37300.37500.38000.39200.40400.41400.77400 | **32nd Floor** | 133d | 2026-09-07 | 2027-03-04 |  | start no earlier than 2026-09-07 | 7 day week With NGT Ban | 7568383 |
| 1678 | 37200.37300.37500.38000.39200.40400.41400.77400.911300 | Block Work | 7.94d | 2026-09-07 | 2026-09-15 | 1175, 1662 |  | 7 day week With NGT Ban | 7591593 |
| 1679 | 37200.37300.37500.38000.39200.40400.41400.77400.911400 | Door Frame Fixing | 8.94d | 2026-09-17 | 2026-09-26 | 1663, 1678 |  | 7 day week With NGT Ban | 7591603 |
| 1680 | 37200.37300.37500.38000.39200.40400.41400.77400.911500 | Internal Plumbing Works | 9.94d | 2026-09-19 | 2026-09-29 | 1664, 1678 |  | 7 day week With NGT Ban | 7591613 |
| 1681 | 37200.37300.37500.38000.39200.40400.41400.77400.911600 | Waterproofing | 12d | 2026-10-03 | 2026-10-15 | 1665, 1680 |  | 7 day week With NGT Ban | 7591623 |
| 1682 | 37200.37300.37500.38000.39200.40400.41400.77400.911700 | Internal Plaster | 9d | 2026-10-15 | 2026-10-24 | 1666, 1679, 1680, 1681 |  | 7 day week With NGT Ban | 7591633 |
| 1683 | 37200.37300.37500.38000.39200.40400.41400.77400.911800 | IPS flooring work | 9d | 2026-10-24 | 2026-12-17 | 1667, 1679, 1681, 1682 |  | 7 day week With NGT Ban | 7591643 |
| 1684 | 37200.37300.37500.38000.39200.40400.41400.77400.911900 | Toilet dado work | 8d | 2026-10-24 | 2026-12-16 | 1668, 1681, 1682 |  | 7 day week With NGT Ban | 7591653 |
| 1685 | 37200.37300.37500.38000.39200.40400.41400.77400.912000 | Toilet flooring work | 7d | 2026-12-16 | 2026-12-23 | 1669, 1684 |  | 7 day week With NGT Ban | 7591663 |
| 1686 | 37200.37300.37500.38000.39200.40400.41400.77400.912100 | Living dinning flooring | 15d | 2026-12-31 | 2027-01-15 | 1670, 1679, 1685 |  | 7 day week With NGT Ban | 7591673 |
| 1687 | 37200.37300.37500.38000.39200.40400.41400.77400.912200 | Aluminium door-window fixing | 12d | 2027-01-15 | 2027-01-27 | 1671, 1683, 1686 |  | 7 day week With NGT Ban | 7591683 |
| 1688 | 37200.37300.37500.38000.39200.40400.41400.77400.912300 | Putty primer coat | 6d | 2027-01-15 | 2027-01-21 | 1672, 1686 |  | 7 day week With NGT Ban | 7591693 |
| 1689 | 37200.37300.37500.38000.39200.40400.41400.77400.912400 | Door shutter fixing | 8d | 2027-01-15 | 2027-01-23 | 1673, 1686 |  | 7 day week With NGT Ban | 7591703 |
| 1690 | 37200.37300.37500.38000.39200.40400.41400.77400.912500 | Electrical wiring work | 15d | 2027-01-23 | 2027-02-07 | 1674, 1689 |  | 7 day week With NGT Ban | 7591713 |
| 1691 | 37200.37300.37500.38000.39200.40400.41400.77400.912600 | Painting 1st coat | 15d | 2027-02-07 | 2027-02-22 | 1675, 1688, 1689, 1690 |  | 7 day week With NGT Ban | 7591723 |
| 1692 | 37200.37300.37500.38000.39200.40400.41400.77400.912700 | False ceiling | 10d | 2027-02-22 | 2027-03-04 | 1676, 1691 |  | 7 day week With NGT Ban | 7591733 |

| ID | WBS | Task | Duration | Start | Finish | Predecessors | Constraint | Calendar | Unique_Task_ID |
| --- | --- | --- | --- | --- | --- | --- | --- | --- | --- |
| 1693 | 37200.37300.37500.38000.39200.40400.41400.77300 | **33rd Floor** | 137.06d | 2026-09-15 | 2027-03-16 |  | start no earlier than 2026-09-15 | 7 day week With NGT Ban | 7568393 |
| 1694 | 37200.37300.37500.38000.39200.40400.41400.77300.912800 | Block Work | 7.94d | 2026-09-15 | 2026-09-23 | 1176, 1678 |  | 7 day week With NGT Ban | 7591743 |
| 1695 | 37200.37300.37500.38000.39200.40400.41400.77300.912900 | Door Frame Fixing | 8.94d | 2026-09-26 | 2026-10-05 | 1679, 1694 |  | 7 day week With NGT Ban | 7591753 |
| 1696 | 37200.37300.37500.38000.39200.40400.41400.77300.913000 | Internal Plumbing Works | 9.94d | 2026-09-29 | 2026-10-09 | 1680, 1694 |  | 7 day week With NGT Ban | 7591763 |
| 1697 | 37200.37300.37500.38000.39200.40400.41400.77300.913100 | Waterproofing | 12d | 2026-10-15 | 2026-10-27 | 1681, 1696 |  | 7 day week With NGT Ban | 7591773 |
| 1698 | 37200.37300.37500.38000.39200.40400.41400.77300.913200 | Internal Plaster | 9d | 2026-10-27 | 2026-12-20 | 1682, 1695, 1696, 1697 |  | 7 day week With NGT Ban | 7591783 |
| 1699 | 37200.37300.37500.38000.39200.40400.41400.77300.913300 | IPS flooring work | 9d | 2026-12-20 | 2026-12-29 | 1683, 1695, 1697, 1698 |  | 7 day week With NGT Ban | 7591793 |
| 1700 | 37200.37300.37500.38000.39200.40400.41400.77300.913400 | Toilet dado work | 8d | 2026-12-20 | 2026-12-28 | 1684, 1697, 1698 |  | 7 day week With NGT Ban | 7591803 |
| 1701 | 37200.37300.37500.38000.39200.40400.41400.77300.913500 | Toilet flooring work | 7d | 2026-12-28 | 2027-01-04 | 1685, 1700 |  | 7 day week With NGT Ban | 7591813 |
| 1702 | 37200.37300.37500.38000.39200.40400.41400.77300.913600 | Living dinning flooring | 15d | 2027-01-15 | 2027-01-30 | 1686, 1695, 1701 |  | 7 day week With NGT Ban | 7591823 |
| 1703 | 37200.37300.37500.38000.39200.40400.41400.77300.913700 | Aluminium door-window fixing | 15d | 2027-01-30 | 2027-02-14 | 1687, 1699, 1702 |  | 7 day week With NGT Ban | 7591833 |
| 1704 | 37200.37300.37500.38000.39200.40400.41400.77300.913800 | Putty primer coat | 6d | 2027-01-30 | 2027-02-05 | 1688, 1702 |  | 7 day week With NGT Ban | 7591843 |
| 1705 | 37200.37300.37500.38000.39200.40400.41400.77300.913900 | Door shutter fixing | 8d | 2027-01-30 | 2027-02-07 | 1689, 1702 |  | 7 day week With NGT Ban | 7591853 |
| 1706 | 37200.37300.37500.38000.39200.40400.41400.77300.914000 | Electrical wiring work | 12d | 2027-02-07 | 2027-02-19 | 1690, 1705 |  | 7 day week With NGT Ban | 7591863 |
| 1707 | 37200.37300.37500.38000.39200.40400.41400.77300.914100 | Painting 1st coat | 12d | 2027-02-22 | 2027-03-06 | 1691, 1704, 1705, 1706 |  | 7 day week With NGT Ban | 7591873 |
| 1708 | 37200.37300.37500.38000.39200.40400.41400.77300.914200 | False ceiling | 10d | 2027-03-06 | 2027-03-16 | 1692, 1707 |  | 7 day week With NGT Ban | 7591883 |
| 1709 | 37200.37300.37500.38000.39200.40400.41400.77200 | **34th Floor** | 141.12d | 2026-09-23 | 2027-03-28 |  | start no earlier than 2026-09-23 | 7 day week With NGT Ban | 7568403 |
| 1710 | 37200.37300.37500.38000.39200.40400.41400.77200.914300 | Block Work | 7.94d | 2026-09-23 | 2026-10-01 | 1177, 1694 |  | 7 day week With NGT Ban | 7591893 |
| 1711 | 37200.37300.37500.38000.39200.40400.41400.77200.914400 | Door Frame Fixing | 8.94d | 2026-10-05 | 2026-10-14 | 1695, 1710 |  | 7 day week With NGT Ban | 7591903 |
| 1712 | 37200.37300.37500.38000.39200.40400.41400.77200.914500 | Internal Plumbing Works | 9.94d | 2026-10-09 | 2026-10-19 | 1696, 1710 |  | 7 day week With NGT Ban | 7591913 |
| 1713 | 37200.37300.37500.38000.39200.40400.41400.77200.914600 | Waterproofing | 12d | 2026-10-27 | 2026-12-23 | 1697, 1712 |  | 7 day week With NGT Ban | 7591923 |
| 1714 | 37200.37300.37500.38000.39200.40400.41400.77200.914700 | Internal Plaster | 9d | 2026-12-23 | 2027-01-01 | 1698, 1711, 1712, 1713 |  | 7 day week With NGT Ban | 7591933 |
| 1715 | 37200.37300.37500.38000.39200.40400.41400.77200.914800 | IPS flooring work | 9d | 2027-01-01 | 2027-01-10 | 1699, 1711, 1713, 1714 |  | 7 day week With NGT Ban | 7591943 |
| 1716 | 37200.37300.37500.38000.39200.40400.41400.77200.914900 | Toilet dado work | 8d | 2027-01-01 | 2027-01-09 | 1700, 1713, 1714 |  | 7 day week With NGT Ban | 7591953 |
| 1717 | 37200.37300.37500.38000.39200.40400.41400.77200.915000 | Toilet flooring work | 7d | 2027-01-09 | 2027-01-16 | 1701, 1716 |  | 7 day week With NGT Ban | 7591963 |
| 1718 | 37200.37300.37500.38000.39200.40400.41400.77200.915100 | Living dinning flooring | 15d | 2027-01-30 | 2027-02-14 | 1702, 1711, 1717 |  | 7 day week With NGT Ban | 7591973 |
| 1719 | 37200.37300.37500.38000.39200.40400.41400.77200.915200 | Aluminium door-window fixing | 15d | 2027-02-14 | 2027-03-01 | 1703, 1715, 1718 |  | 7 day week With NGT Ban | 7591983 |
| 1720 | 37200.37300.37500.38000.39200.40400.41400.77200.915300 | Putty primer coat | 6d | 2027-02-14 | 2027-02-20 | 1704, 1718 |  | 7 day week With NGT Ban | 7591993 |
| 1721 | 37200.37300.37500.38000.39200.40400.41400.77200.915400 | Door shutter fixing | 8d | 2027-02-14 | 2027-02-22 | 1705, 1718 |  | 7 day week With NGT Ban | 7592003 |
| 1722 | 37200.37300.37500.38000.39200.40400.41400.77200.915500 | Electrical wiring work | 12d | 2027-02-22 | 2027-03-06 | 1706, 1721 |  | 7 day week With NGT Ban | 7592013 |
| 1723 | 37200.37300.37500.38000.39200.40400.41400.77200.915600 | Painting 1st coat | 12d | 2027-03-06 | 2027-03-18 | 1707, 1720, 1721, 1722 |  | 7 day week With NGT Ban | 7592023 |
| 1724 | 37200.37300.37500.38000.39200.40400.41400.77200.915700 | False ceiling | 10d | 2027-03-18 | 2027-03-28 | 1708, 1723 |  | 7 day week With NGT Ban | 7592033 |

| ID | WBS | Task | Duration | Start | Finish | Predecessors | Constraint | Calendar | Unique_Task_ID |
| --- | --- | --- | --- | --- | --- | --- | --- | --- | --- |
| 1725 | 37200.37300.37500.38000.39200.40400.41400.77100 | **35th Floor** | 148.19d | 2026-10-01 | 2027-04-12 |  | start no earlier than 2026-10-01 | 7 day week With NGT Ban | 7568413 |
| 1726 | 37200.37300.37500.38000.39200.40400.41400.77100.915800 | Block Work | 7.94d | 2026-10-01 | 2026-10-09 | 1178, 1710 |  | 7 day week With NGT Ban | 7592043 |
| 1727 | 37200.37300.37500.38000.39200.40400.41400.77100.915900 | Door Frame Fixing | 8.94d | 2026-10-14 | 2026-10-23 | 1711, 1726 |  | 7 day week With NGT Ban | 7592053 |
| 1728 | 37200.37300.37500.38000.39200.40400.41400.77100.916000 | Internal Plumbing Works | 9.94d | 2026-10-19 | 2026-10-29 | 1712, 1726 |  | 7 day week With NGT Ban | 7592063 |
| 1729 | 37200.37300.37500.38000.39200.40400.41400.77100.916100 | Waterproofing | 12d | 2026-12-23 | 2027-01-04 | 1713, 1728 |  | 7 day week With NGT Ban | 7592073 |
| 1730 | 37200.37300.37500.38000.39200.40400.41400.77100.916200 | Internal Plaster | 9d | 2027-01-04 | 2027-01-13 | 1714, 1727, 1728, 1729 |  | 7 day week With NGT Ban | 7592083 |
| 1731 | 37200.37300.37500.38000.39200.40400.41400.77100.916300 | IPS flooring work | 9d | 2027-01-13 | 2027-01-22 | 1715, 1727, 1729, 1730 |  | 7 day week With NGT Ban | 7592093 |
| 1732 | 37200.37300.37500.38000.39200.40400.41400.77100.916400 | Toilet dado work | 8d | 2027-01-13 | 2027-01-21 | 1716, 1729, 1730 |  | 7 day week With NGT Ban | 7592103 |
| 1733 | 37200.37300.37500.38000.39200.40400.41400.77100.916500 | Toilet flooring work | 7d | 2027-01-21 | 2027-01-28 | 1717, 1732 |  | 7 day week With NGT Ban | 7592113 |
| 1734 | 37200.37300.37500.38000.39200.40400.41400.77100.916600 | Living dinning flooring | 15d | 2027-02-14 | 2027-03-01 | 1718, 1727, 1733 |  | 7 day week With NGT Ban | 7592123 |
| 1735 | 37200.37300.37500.38000.39200.40400.41400.77100.916700 | Aluminium door-window fixing | 15d | 2027-03-01 | 2027-03-16 | 1719, 1731, 1734 |  | 7 day week With NGT Ban | 7592133 |
| 1736 | 37200.37300.37500.38000.39200.40400.41400.77100.916800 | Putty primer coat | 6d | 2027-03-01 | 2027-03-07 | 1720, 1734 |  | 7 day week With NGT Ban | 7592143 |
| 1737 | 37200.37300.37500.38000.39200.40400.41400.77100.916900 | Door shutter fixing | 8d | 2027-03-01 | 2027-03-09 | 1721, 1734 |  | 7 day week With NGT Ban | 7592153 |
| 1738 | 37200.37300.37500.38000.39200.40400.41400.77100.917000 | Electrical wiring work | 12d | 2027-03-09 | 2027-03-21 | 1722, 1737 |  | 7 day week With NGT Ban | 7592163 |
| 1739 | 37200.37300.37500.38000.39200.40400.41400.77100.917100 | Painting 1st coat | 12d | 2027-03-21 | 2027-04-02 | 1723, 1736, 1737, 1738 |  | 7 day week With NGT Ban | 7592173 |
| 1740 | 37200.37300.37500.38000.39200.40400.41400.77100.917200 | False ceiling | 10d | 2027-04-02 | 2027-04-12 | 1724, 1739 |  | 7 day week With NGT Ban | 7592183 |
| 1741 | 37200.37300.37500.38000.39200.40400.191600 | **Terrace Finishing** | 79.88d | 2026-08-15 | 2026-12-18 |  | start no earlier than 2026-08-15 | 7 day week With NGT Ban | 7571273 |
| 1742 | 37200.37300.37500.38000.39200.40400.191600.412400 | Terrace waterproofing | 39.94d | 2026-08-15 | 2026-09-24 | 1140 |  | 7 day week With NGT Ban | 7578103 |
| 1743 | 37200.37300.37500.38000.39200.40400.191600.412500 | Terrace finishing | 39.94d | 2026-09-24 | 2026-12-18 | 1742 |  | 7 day week With NGT Ban | 7578113 |
| 1744 | 37200.37300.37500.38000.39200.40400.99600 | **Common Area Finishing** | 279.31d | 2025-08-22 | 2026-07-12 |  | start no earlier than 2025-08-22 | 7 day week With NGT Ban | 7569203 |
| 1745 | 37200.37300.37500.38000.39200.40400.99600.412600 | Block Work | 39.94d | 2025-08-22 | 2025-10-01 | 1146FS+0.25d |  | 7 day week With NGT Ban | 7578123 |
| 1746 | 37200.37300.37500.38000.39200.40400.99600.412700 | Internal Plaster | 119.94d | 2025-09-27 | 2026-03-10 | 1751SS+17.88d |  | 7 day week With NGT Ban | 7578133 |
| 1747 | 37200.37300.37500.38000.39200.40400.99600.412800 | Staircase railing fixing | 149.94d | 2026-02-12 | 2026-07-12 | 1749SS+26.75d, 1748SS+26.75d |  | 7 day week With NGT Ban | 7578143 |
| 1748 | 37200.37300.37500.38000.39200.40400.99600.412900 | Main staircase flooring | 149.94d | 2026-01-16 | 2026-06-15 | 1749SS+13.38d |  | 7 day week With NGT Ban | 7578153 |
| 1749 | 37200.37300.37500.38000.39200.40400.99600.413000 | Fire staircase flooring | 149.94d | 2026-01-03 | 2026-06-02 | 1746SS+13.38d, 1753SS+26.75d |  | 7 day week With NGT Ban | 7578163 |
| 1750 | 37200.37300.37500.38000.39200.40400.99600.413100 | Fire door work | 59.94d | 2026-02-12 | 2026-04-13 | 1748SS+26.75d, 1749SS+26.75d |  | 7 day week With NGT Ban | 7578173 |
| 1751 | 37200.37300.37500.38000.39200.40400.99600.413200 | Electrical wiring work | 119.94d | 2025-09-09 | 2026-02-21 | 1745SS+17.88d |  | 7 day week With NGT Ban | 7578183 |
| 1752 | 37200.37300.37500.38000.39200.40400.99600.413300 | Lobby flooring | 150d | 2025-09-12 | 2026-03-26 | 1751SS+3.38d |  | 7 day week With NGT Ban | 7578193 |
| 1753 | 37200.37300.37500.38000.39200.40400.99600.413400 | Ceiling & wall putty-primer | 109.94d | 2025-10-23 | 2026-03-27 | 1746SS+26.75d |  | 7 day week With NGT Ban | 7578203 |
| 1754 | 37200.37300.37500.38000.39200.40400.99600.413500 | Ceiling & wall painting | 99.94d | 2025-12-25 | 2026-04-04 | 1753SS+17.88d |  | 7 day week With NGT Ban | 7578213 |
| 1755 | 37200.37300.37500.38000.39200.40400.99600.413600 | Light fixture supply & installation | 44.94d | 2026-02-17 | 2026-04-02 | 1754SS+53.38d |  | 7 day week With NGT Ban | 7578223 |

| ID | WBS | Task | Duration | Start | Finish | Predecessors | Constraint | Calendar | Unique_Task_ID |
| --- | --- | --- | --- | --- | --- | --- | --- | --- | --- |
| 1756 | 37200.37300.37500.38000.39200.40400.46900 | **Balcony Glass Railing** | 67.81d | 2027-05-11 | 2027-07-18 |  | start no earlier than 2027-05-11 | 7 day week With NGT Ban | 133510 |
| 1757 | 37200.37300.37500.38000.39200.40400.46900.413700 | 1st Floor | 1.94d | 2027-05-11 | 2027-05-13 | 1825 |  | 7 day week With NGT Ban | 133520 |
| 1758 | 37200.37300.37500.38000.39200.40400.46900.413800 | 2nd Floor | 1.94d | 2027-05-13 | 2027-05-15 | 1757 |  | 7 day week With NGT Ban | 133530 |
| 1759 | 37200.37300.37500.38000.39200.40400.46900.413900 | 3rd Floor | 1.94d | 2027-05-15 | 2027-05-17 | 1758 |  | 7 day week With NGT Ban | 133540 |
| 1760 | 37200.37300.37500.38000.39200.40400.46900.414000 | 4th Floor | 1.94d | 2027-05-17 | 2027-05-19 | 1759 |  | 7 day week With NGT Ban | 133550 |
| 1761 | 37200.37300.37500.38000.39200.40400.46900.414100 | 5th Floor | 1.94d | 2027-05-19 | 2027-05-21 | 1760 |  | 7 day week With NGT Ban | 133560 |
| 1762 | 37200.37300.37500.38000.39200.40400.46900.414200 | 6th Floor | 1.94d | 2027-05-21 | 2027-05-22 | 1761 |  | 7 day week With NGT Ban | 133570 |
| 1763 | 37200.37300.37500.38000.39200.40400.46900.414300 | 7th Floor | 1.94d | 2027-05-23 | 2027-05-24 | 1762 |  | 7 day week With NGT Ban | 133580 |
| 1764 | 37200.37300.37500.38000.39200.40400.46900.414400 | 8th Floor | 1.94d | 2027-05-24 | 2027-05-26 | 1763 |  | 7 day week With NGT Ban | 133590 |
| 1765 | 37200.37300.37500.38000.39200.40400.46900.414500 | 9th Floor | 1.94d | 2027-05-26 | 2027-05-28 | 1764 |  | 7 day week With NGT Ban | 133600 |
| 1766 | 37200.37300.37500.38000.39200.40400.46900.414600 | 10th Floor | 1.94d | 2027-05-28 | 2027-05-30 | 1765 |  | 7 day week With NGT Ban | 133610 |
| 1767 | 37200.37300.37500.38000.39200.40400.46900.414700 | 11th Floor | 1.94d | 2027-05-30 | 2027-06-01 | 1766 |  | 7 day week With NGT Ban | 133620 |
| 1768 | 37200.37300.37500.38000.39200.40400.46900.414800 | 12th Floor | 1.94d | 2027-06-01 | 2027-06-03 | 1767 |  | 7 day week With NGT Ban | 133630 |
| 1769 | 37200.37300.37500.38000.39200.40400.46900.414900 | 13th Floor | 1.94d | 2027-06-03 | 2027-06-05 | 1768 |  | 7 day week With NGT Ban | 133640 |
| 1770 | 37200.37300.37500.38000.39200.40400.46900.415000 | 14th Floor | 1.94d | 2027-06-05 | 2027-06-07 | 1769 |  | 7 day week With NGT Ban | 133650 |
| 1771 | 37200.37300.37500.38000.39200.40400.46900.415100 | 15th Floor | 1.94d | 2027-06-07 | 2027-06-09 | 1770 |  | 7 day week With NGT Ban | 133660 |
| 1772 | 37200.37300.37500.38000.39200.40400.46900.415200 | 16th Floor | 1.94d | 2027-06-09 | 2027-06-11 | 1771 |  | 7 day week With NGT Ban | 133670 |
| 1773 | 37200.37300.37500.38000.39200.40400.46900.415300 | 17th Floor | 1.94d | 2027-06-11 | 2027-06-13 | 1772 |  | 7 day week With NGT Ban | 133680 |
| 1774 | 37200.37300.37500.38000.39200.40400.46900.415400 | 18th Floor | 1.94d | 2027-06-13 | 2027-06-15 | 1773 |  | 7 day week With NGT Ban | 133690 |
| 1775 | 37200.37300.37500.38000.39200.40400.46900.415500 | 19th Floor | 1.94d | 2027-06-15 | 2027-06-17 | 1774 |  | 7 day week With NGT Ban | 133700 |
| 1776 | 37200.37300.37500.38000.39200.40400.46900.415600 | 20th Floor | 1.94d | 2027-06-17 | 2027-06-19 | 1775 |  | 7 day week With NGT Ban | 133710 |
| 1777 | 37200.37300.37500.38000.39200.40400.46900.415700 | 21st Floor | 1.94d | 2027-06-19 | 2027-06-21 | 1776 |  | 7 day week With NGT Ban | 133720 |
| 1778 | 37200.37300.37500.38000.39200.40400.46900.415800 | 22nd Floor | 1.94d | 2027-06-21 | 2027-06-22 | 1777 |  | 7 day week With NGT Ban | 133730 |
| 1779 | 37200.37300.37500.38000.39200.40400.46900.415900 | 23rd Floor | 1.94d | 2027-06-23 | 2027-06-24 | 1778 |  | 7 day week With NGT Ban | 133740 |
| 1780 | 37200.37300.37500.38000.39200.40400.46900.416000 | 24th Floor | 1.94d | 2027-06-24 | 2027-06-26 | 1779 |  | 7 day week With NGT Ban | 133750 |
| 1781 | 37200.37300.37500.38000.39200.40400.46900.416100 | 25th Floor | 1.94d | 2027-06-26 | 2027-06-28 | 1780 |  | 7 day week With NGT Ban | 133760 |
| 1782 | 37200.37300.37500.38000.39200.40400.46900.416200 | 26th Floor | 1.94d | 2027-06-28 | 2027-06-30 | 1781 |  | 7 day week With NGT Ban | 133770 |
| 1783 | 37200.37300.37500.38000.39200.40400.46900.416300 | 27th Floor | 1.94d | 2027-06-30 | 2027-07-02 | 1782 |  | 7 day week With NGT Ban | 133780 |
| 1784 | 37200.37300.37500.38000.39200.40400.46900.416400 | 28th Floor | 1.94d | 2027-07-02 | 2027-07-04 | 1783 |  | 7 day week With NGT Ban | 133790 |
| 1785 | 37200.37300.37500.38000.39200.40400.46900.416500 | 29th Floor | 1.94d | 2027-07-04 | 2027-07-06 | 1784 |  | 7 day week With NGT Ban | 133800 |
| 1786 | 37200.37300.37500.38000.39200.40400.46900.416600 | 30th Floor | 1.94d | 2027-07-06 | 2027-07-08 | 1785 |  | 7 day week With NGT Ban | 133810 |
| 1787 | 37200.37300.37500.38000.39200.40400.46900.416700 | 31st Floor | 1.94d | 2027-07-08 | 2027-07-10 | 1786 |  | 7 day week With NGT Ban | 133820 |
| 1788 | 37200.37300.37500.38000.39200.40400.46900.416800 | 32nd Floor | 1.94d | 2027-07-10 | 2027-07-12 | 1787 |  | 7 day week With NGT Ban | 133830 |
| 1789 | 37200.37300.37500.38000.39200.40400.46900.416900 | 33rd Floor | 1.94d | 2027-07-12 | 2027-07-14 | 1788 |  | 7 day week With NGT Ban | 133840 |
| 1790 | 37200.37300.37500.38000.39200.40400.46900.417000 | 34th Floor | 1.94d | 2027-07-14 | 2027-07-16 | 1789 |  | 7 day week With NGT Ban | 133850 |
| 1791 | 37200.37300.37500.38000.39200.40400.46900.417100 | 35th Floor | 1.94d | 2027-07-16 | 2027-07-18 | 1790 |  | 7 day week With NGT Ban | 133860 |

| ID | WBS | Task | Duration | Start | Finish | Predecessors | Constraint | Calendar | Unique_Task_ID |
| --- | --- | --- | --- | --- | --- | --- | --- | --- | --- |
| 1792 | 37200.37300.37500.38000.95200 | **MEP work** | 571.12d | 2026-01-03 | 2027-09-11 |  | start no earlier than 2026-01-03 | 7 day week With NGT Ban | 7569143 |
| 1793 | 37200.37300.37500.38000.95200.97300 | **Electrical work** | 233.25d | 2026-08-15 | 2027-05-20 |  | start no earlier than 2026-08-15 | 7 day week With NGT Ban | 7569173 |
| 1794 | 37200.37300.37500.38000.95200.97300.273000 | Cable Tray | 89.94d | 2026-08-15 | 2026-12-28 | 1140 |  | 7 day week With NGT Ban | 7572963 |
| 1795 | 37200.37300.37500.38000.95200.97300.273100 | Cable, main & sub main | 79.94d | 2026-09-24 | 2027-01-27 | 1794SS+40d |  | 7 day week With NGT Ban | 7572973 |
| 1796 | 37200.37300.37500.38000.95200.97300.273200 | LT panel & DB | 119.94d | 2026-12-28 | 2027-04-27 | 1794 |  | 7 day week With NGT Ban | 7572983 |
| 1797 | 37200.37300.37500.38000.95200.97300.273300 | Rising main | 89.94d | 2027-02-19 | 2027-05-20 | 1794FS+53.38d |  | 7 day week With NGT Ban | 7572993 |
| 1798 | 37200.37300.37500.38000.95200.97300.273400 | EARTHING Works | 59.94d | 2027-01-10 | 2027-03-11 | 1794FS+13.38d |  | 7 day week With NGT Ban | 7573003 |
| 1799 | 37200.37300.37500.38000.95200.97300.273500 | Advance lightening protection | 59.94d | 2026-12-18 | 2027-02-16 | 1743 |  | 7 day week With NGT Ban | 7573013 |
| 1800 | 37200.37300.37500.38000.95200.97300.273600 | Inverter | 34.94d | 2027-03-11 | 2027-04-15 | 1798 |  | 7 day week With NGT Ban | 7573023 |
| 1801 | 37200.37300.37500.38000.95200.97300.273700 | Energy meter | 59.94d | 2027-01-27 | 2027-03-28 | 1795 |  | 7 day week With NGT Ban | 7573033 |
| 1802 | 37200.37300.37500.38000.95200.97300.273800 | Exhast fan | 60d | 2027-01-20 | 2027-03-20 | 1735FF+4.5d |  | 7 day week With NGT Ban | 7573043 |
| 1803 | 37200.37300.37500.38000.95200.97300.273900 | FTTH | 59.94d | 2027-03-02 | 2027-05-01 | 1798FS-9d |  | 7 day week With NGT Ban | 7573053 |
| 1804 | 37200.37300.37500.38000.95200.97300.274000 | Security System - FA & PA | 54.94d | 2027-03-07 | 2027-05-01 | 1803FF |  | 7 day week With NGT Ban | 7573063 |
| 1805 | 37200.37300.37500.38000.95200.97300.274100 | Solar water heater | 59.94d | 2026-12-18 | 2027-02-16 | 1743 |  | 7 day week With NGT Ban | 7573073 |
| 1806 | 37200.37300.37500.38000.95200.121900 | **Plumbing wrok** | 446.88d | 2026-01-30 | 2027-06-05 |  | start no earlier than 2026-01-30 | 7 day week With NGT Ban | 7569403 |
| 1807 | 37200.37300.37500.38000.95200.121900.274200 | Terrace looping | 44.94d | 2026-09-24 | 2026-12-23 | 1742 |  | 7 day week With NGT Ban | 7573083 |
| 1808 | 37200.37300.37500.38000.95200.121900.274300 | Shaft Plumbing | 119.94d | 2026-12-23 | 2027-04-22 | 1807 |  | 7 day week With NGT Ban | 7573093 |
| 1809 | 37200.37300.37500.38000.95200.121900.274400 | CP sanitary fixture supply | 75d | 2027-03-22 | 2027-06-05 | 1730, 1733FS+53.38d |  | 7 day week With NGT Ban | 7573103 |
| 1810 | 37200.37300.37500.38000.95200.121900.274500 | Cold & flushing water supply | 89.94d | 2026-01-30 | 2026-04-29 | 1746SS+80d |  | 7 day week With NGT Ban | 7573113 |
| 1811 | 37200.37300.37500.38000.95200.121900.274600 | Misc work | 29.94d | 2026-04-20 | 2026-05-20 | 1810FS-9d |  | 7 day week With NGT Ban | 7573123 |
| 1812 | 37200.37300.37500.38000.95200.128500 | **Fire fighting work** | 384.06d | 2026-01-03 | 2027-03-08 |  | start no earlier than 2026-01-03 | 7 day week With NGT Ban | 7569513 |
| 1813 | 37200.37300.37500.38000.95200.128500.274700 | Fire hydrant work | 89.94d | 2026-01-03 | 2026-04-03 | 1746SS+53.38d |  | 7 day week With NGT Ban | 7573133 |
| 1814 | 37200.37300.37500.38000.95200.128500.274800 | Sprinkler & piping work | 89.94d | 2026-04-30 | 2026-07-28 | 1813FS+26.75d |  | 7 day week With NGT Ban | 7573143 |
| 1815 | 37200.37300.37500.38000.95200.128500.274900 | Shaft Downtake works | 89.94d | 2026-09-24 | 2027-02-06 | 1742 |  | 7 day week With NGT Ban | 7573153 |
| 1816 | 37200.37300.37500.38000.95200.128500.275000 | Connection to pump room | 29.94d | 2027-02-06 | 2027-03-08 | 1815 |  | 7 day week With NGT Ban | 7573163 |

| ID | WBS | Task | Duration | Start | Finish | Predecessors | Complete | Constraint | Calendar | Unique_Task_ID |
| --- | --- | --- | --- | --- | --- | --- | --- | --- | --- | --- |
| 1817 | 37200.37300.37500.38000.95200.183600 | **Lift work** | 169.81d | 2026-08-15 | 2027-03-18 |  |  | start no earlier than 2026-08-15 | 7 day week With NGT Ban | 7571063 |
| 1818 | 37200.37300.37500.38000.95200.183600.275100 | Lift Shaft Handover | 39.94d | 2026-08-15 | 2026-09-24 | 1140 |  |  | 7 day week With NGT Ban | 7573173 |
| 1819 | 37200.37300.37500.38000.95200.183600.275200 | Lift installation work | 44.94d | 2026-09-24 | 2026-12-23 | 1818 |  |  | 7 day week With NGT Ban | 7573183 |
| 1820 | 37200.37300.37500.38000.95200.183600.275300 | Lift testing and commissioning | 84.94d | 2026-12-23 | 2027-03-18 | 1819 |  |  | 7 day week With NGT Ban | 7573193 |
| 1821 | 37200.37300.37500.38000.95200.193600 | **AC work** | 77.94d | 2027-06-25 | 2027-09-11 |  |  | start no earlier than 2027-06-25 | 7 day week With NGT Ban | 7571313 |
| 1822 | 37200.37300.37500.38000.95200.193600.275400 | Split AC | 77.94d | 2027-06-25 | 2027-09-11 | 1838FS-26.75d |  |  | 7 day week With NGT Ban | 7573203 |
| 1823 | 37200.37300.37500.38000.125900 | **Tower Completion** | 250.88d | 2026-09-28 | 2027-07-21 |  |  | start no earlier than 2026-09-28 | 7 day week With NGT Ban | 7569453 |
| 1824 | 37200.37300.37500.38000.125900.223800 | SURFACE PREPARATION | 79.94d | 2026-09-28 | 2027-01-31 | 1178FS+1.88d |  |  | 7 day week With NGT Ban | 7571553 |
| 1825 | 37200.37300.37500.38000.125900.223900 | External Painting | 99.94d | 2027-01-31 | 2027-05-11 | 1824 |  |  | 7 day week With NGT Ban | 7571563 |
| 1826 | 37200.37300.37500.38000.125900.224000 | Final coat of painting | 71d | 2027-05-11 | 2027-07-21 | 1825 |  |  | 7 day week With NGT Ban | 7571573 |
| 1827 | 37200.37300.37500.38000.125900.224100 | Misc. work | 59.94d | 2027-05-11 | 2027-07-10 | 1825 |  |  | 7 day week With NGT Ban | 7571583 |
| 1828 | 37200.37300.37500.38000.193100 | **Basement lobby** | 60d | 2026-03-26 | 2026-05-25 |  |  | start no earlier than 2026-03-26 | 7 day week With NGT Ban | 7571283 |
| 1829 | 37200.37300.37500.38000.193100.224200 | Basement lobby | 60d | 2026-03-26 | 2026-05-25 | 1752 |  |  | 7 day week With NGT Ban | 7571593 |
| 1830 | 37200.37300.37500.38000.114700 | **Post OC activities** | 254d | 2027-03-21 | 2027-11-30 |  |  | start no earlier than 2027-03-21 | 7 day week With NGT Ban | 7569363 |
| 1831 | 37200.37300.37500.38000.114700.224300 | Wardrobe installation | 157.94d | 2027-06-25 | 2027-11-30 | 1838FS-26.75d |  |  | 7 day week With NGT Ban | 7571603 |
| 1832 | 37200.37300.37500.38000.114700.224400 | CP & SANITARYWARE | 97.94d | 2027-06-25 | 2027-10-01 | 1838FS-26.75d, 1809 |  |  | 7 day week With NGT Ban | 7571613 |
| 1833 | 37200.37300.37500.38000.114700.224500 | Wooden Flooring | 157.94d | 2027-06-25 | 2027-11-30 | 1838FS-26.75d |  |  | 7 day week With NGT Ban | 7571623 |
| 1834 | 37200.37300.37500.38000.114700.224600 | Electrical Fixtures And Fittings | 75d | 2027-03-21 | 2027-06-04 | 1738 |  |  | 7 day week With NGT Ban | 7571633 |
| 1835 | 37200.37300.37500.38000.114700.224700 | Modular Kitchen | 157.94d | 2027-06-25 | 2027-11-30 | 1831SS |  |  | 7 day week With NGT Ban | 7571643 |
| 1836 | 37200.37300.37500.38000.114700.224800 | Final Coat Paint | 82.94d | 2027-07-08 | 2027-09-29 | 1838FS-13.38d, 1740 |  |  | 7 day week With NGT Ban | 7571653 |
| 1837 | 37200.37300.37500.38000.215700 | OC Application/Readiness | 0.94d | 2027-05-20 | 2027-05-21 | 1140, 1747FS+7.12d, 1755, 1138, 952, 953, 1750, 1820, 1816, 1814, 1811, 1808, 1796, 1797, 1799, 1800, 1801, 1802, 1804, 1805, 1829 |  |  | 7 day week With NGT Ban | 7571393 |
| 1838 | 37200.37300.37500.38000.215800 | OC Receipt | 0.94d | 2027-07-21 | 2027-07-22 | 1837FS+53.38d, 1791, 1826, 1827 |  |  | 7 day week With NGT Ban | 7571403 |
| 1839 | 37200.37300.37500.38000.215900 | Offer To Possession | 29.94d | 2027-11-30 | 2027-12-30 | 1831, 1832, 1833, 1834, 1835, 1836 |  |  | 7 day week With NGT Ban | 132350 |
| 1840 | 37200.37300.37500.38100 | **Tower 3** | 1476.62d | 2023-09-30 | 2028-03-29 |  | 3% | start no earlier than 2023-09-30 | 7 day week With NGT Ban | 7567503 |
| 1841 | 37200.37300.37500.38100.100100 | **Substructure** | 656d | 2023-09-30 | 2025-09-30 |  | 59% | start no earlier than 2023-09-30 | 7 day week With NGT Ban | 7569233 |
| 1842 | 37200.37300.37500.38100.100100.112800 | **Soil Bed Preparation** | 533.44d | 2023-09-30 | 2025-05-30 |  | 80% | start no earlier than 2023-09-30 | 7 day week With NGT Ban | 7569353 |
| 1843 | 37200.37300.37500.38100.100100.112800.202500 | Test Piling | 74.94d | 2023-09-30 | 2024-01-27 |  | 100% | start no earlier than 2023-09-30 | 7 day week With NGT Ban | 7573213 |
| 1844 | 37200.37300.37500.38100.100100.112800.202600 | Excavation | 29.94d | 2024-01-10 | 2024-02-08 | 7SS+61.74d | 100% | start no earlier than 2024-01-10 | 7 day week With NGT Ban | 7573223 |
| 1845 | 37200.37300.37500.38100.100100.112800.202900 | Main Piling Work | 184.12d | 2024-04-12 | 2024-10-13 | 7FS-5.45d | 100% | start no earlier than 2024-04-12 | 7 day week With NGT Ban | 7573233 |
| 1846 | 37200.37300.37500.38100.100100.112800.275500 | Anti-termite | 4.94d | 2025-04-01 | 2025-04-05 | 1845FS-81d |  |  | 7 day week With NGT Ban | 7573243 |
| 1847 | 37200.37300.37500.38100.100100.112800.275600 | PCC | 3.94d | 2025-04-01 | 2025-04-04 | 1844FS-14.7d |  |  | 7 day week With NGT Ban | 7573253 |
| 1848 | 37200.37300.37500.38100.100100.112800.275700 | Backfilling | 59.94d | 2025-04-01 | 2025-05-30 | 1861FS+4d |  |  | 7 day week With NGT Ban | 7573263 |

| ID | WBS | Task | Duration | Start | Finish | Predecessors | Complete | Constraint | Calendar | Unique_Task_ID |
| --- | --- | --- | --- | --- | --- | --- | --- | --- | --- | --- |
| 1849 | 37200.37300.37500.38100.100100.103600 | **RCC Structure** | 113.94d | 2025-01-03 | 2025-04-26 |  | 80% | start no earlier than 2025-01-03 | 7 day week With NGT Ban | 7569303 |
| 1850 | 37200.37300.37500.38100.100100.103600.138700 | **Raft Foundation** | 35d | 2025-01-03 | 2025-02-06 |  | 100% | start no earlier than 2025-01-03 | 7 day week With NGT Ban | 7571093 |
| 1851 | 37200.37300.37500.38100.100100.103600.138700.206100 | Reinforcement | 30d | 2025-01-03 | 2025-02-02 | 1847FS-30.94d | 100% | start no earlier than 2025-01-03 | 7 day week With NGT Ban | 7578233 |
| 1852 | 37200.37300.37500.38100.100100.103600.138700.206200 | Formwork | 18d | 2025-01-17 | 2025-02-03 | 1851FF+1.06d | 100% | start no earlier than 2025-01-17 | 7 day week With NGT Ban | 7578243 |
| 1853 | 37200.37300.37500.38100.100100.103600.138700.206300 | Concreting | 4d | 2025-02-03 | 2025-02-06 | 1852FS-1d | 100% | start no earlier than 2025-02-03 | 7 day week With NGT Ban | 7578253 |
| 1854 | 37200.37300.37500.38100.100100.103600.138800 | **Basement 1 Slab** | 27d | 2025-02-08 | 2025-03-06 |  | 100% | start no earlier than 2025-02-08 | 7 day week With NGT Ban | 7571083 |
| 1855 | 37200.37300.37500.38100.100100.103600.138800.206400 | Reinforcement | 21d | 2025-02-08 | 2025-03-06 | 1853FS+1d | 100% | start no earlier than 2025-02-08 | 7 day week With NGT Ban | 7578263 |
| 1856 | 37200.37300.37500.38100.100100.103600.138800.206500 | Formwork | 15d | 2025-02-11 | 2025-03-06 | 1855SS+3d | 100% | start no earlier than 2025-02-11 | 7 day week With NGT Ban | 7578273 |
| 1857 | 37200.37300.37500.38100.100100.103600.138800.206600 | Concreting | 2d | 2025-03-03 | 2025-03-06 | 1856FF+3.25d | 100% | start no earlier than 2025-03-03 | 7 day week With NGT Ban | 7578283 |
| 1858 | 37200.37300.37500.38100.100100.103600.138900 | **Basement 2 Slab/GF** | 18d | 2025-03-04 | 2025-03-21 |  | 100% | start no earlier than 2025-03-04 | 7 day week With NGT Ban | 7571073 |
| 1859 | 37200.37300.37500.38100.100100.103600.138900.206700 | Reinforcement | 15d | 2025-03-04 | 2025-03-21 | 1857FS-2d | 100% | start no earlier than 2025-03-04 | 7 day week With NGT Ban | 7578293 |
| 1860 | 37200.37300.37500.38100.100100.103600.138900.206800 | Formwork | 15d | 2025-03-05 | 2025-03-21 | 1859SS+1d | 100% | start no earlier than 2025-03-05 | 7 day week With NGT Ban | 7578303 |
| 1861 | 37200.37300.37500.38100.100100.103600.138900.206900 | Concreting | 3d | 2025-03-09 | 2025-03-11 | 1860FS-1d | 100% | start no earlier than 2025-03-09 | 7 day week With NGT Ban | 7578313 |
| 1862 | 37200.37300.37500.38100.100100.103600.183300 | **Podium** | 39.94d | 2025-03-18 | 2025-04-26 |  | 39% | start no earlier than 2025-03-18 | 7 day week With NGT Ban | 7571043 |
| 1863 | 37200.37300.37500.38100.100100.103600.183300.207000 | Reinforcement | 22.94d | 2025-03-18 | 2025-04-10 | 1861FS+5d | 56% | start no earlier than 2025-03-18 | 7 day week With NGT Ban | 7578323 |
| 1864 | 37200.37300.37500.38100.100100.103600.183300.207100 | Formwork | 30.94d | 2025-03-21 | 2025-04-21 | 1863SS+2.75d | 32% | start no earlier than 2025-03-21 | 7 day week With NGT Ban | 7578333 |
| 1865 | 37200.37300.37500.38100.100100.103600.183300.417200 | Concreting | 5d | 2025-04-21 | 2025-04-26 | 1864 |  |  | 7 day week With NGT Ban | 7578343 |
| 1866 | 37200.37300.37500.38100.100100.128600 | **Substructure Finishing** | 129.81d | 2025-05-23 | 2025-09-30 |  |  | start no earlier than 2025-05-23 | 7 day week With NGT Ban | 7569523 |
| 1867 | 37200.37300.37500.38100.100100.128600.275800 | Masonary work | 44.94d | 2025-05-23 | 2025-07-07 | 1865FS+26.75d |  |  | 7 day week With NGT Ban | 7573273 |
| 1868 | 37200.37300.37500.38100.100100.128600.275900 | Plaster | 39.94d | 2025-07-07 | 2025-08-16 | 1867 |  |  | 7 day week With NGT Ban | 7573283 |
| 1869 | 37200.37300.37500.38100.100100.128600.276000 | Structural steel | 59.94d | 2025-06-19 | 2025-08-18 | 1865FS+53.38d |  |  | 7 day week With NGT Ban | 7573293 |
| 1870 | 37200.37300.37500.38100.100100.128600.276100 | White Wash | 44.94d | 2025-08-16 | 2025-09-30 | 1868 |  |  | 7 day week With NGT Ban | 7573303 |
| 1871 | 37200.37300.37500.38100.39300 | **Superstructure** | 740d | 2025-04-29 | 2027-08-07 |  |  | start no earlier than 2025-04-29 | 7 day week With NGT Ban | 7567543 |
| 1872 | 37200.37300.37500.38100.39300.43500 | **RCC structure** | 458.12d | 2025-04-29 | 2026-09-14 |  |  | start no earlier than 2025-04-29 | 7 day week With NGT Ban | 7567663 |
| 1873 | 37200.37300.37500.38100.39300.43500.139000 | **1st floor slab** | 24d | 2025-04-29 | 2025-05-23 |  |  | start no earlier than 2025-04-29 | 7 day week With NGT Ban | 7570303 |
| 1874 | 37200.37300.37500.38100.39300.43500.139000.417300 | Reinforcement | 20d | 2025-04-29 | 2025-05-19 | 1865FS+2.75d |  |  | 7 day week With NGT Ban | 7578353 |
| 1875 | 37200.37300.37500.38100.39300.43500.139000.417400 | Wall conduiting | 4d | 2025-05-02 | 2025-05-06 | 1874SS+2.75d |  |  | 7 day week With NGT Ban | 7578363 |
| 1876 | 37200.37300.37500.38100.39300.43500.139000.417500 | Formwork | 20d | 2025-05-02 | 2025-05-22 | 1874SS+3d |  |  | 7 day week With NGT Ban | 7578373 |
| 1877 | 37200.37300.37500.38100.39300.43500.139000.417600 | Concreting | 1d | 2025-05-22 | 2025-05-23 | 1876 |  |  | 7 day week With NGT Ban | 7578383 |

| ID | WBS | Task | Duration | Start | Finish | Predecessors | Constraint | Calendar | Unique_Task_ID |
| --- | --- | --- | --- | --- | --- | --- | --- | --- | --- |
| 1878 | 37200.37300.37500.38100.39300.43500.139100 | **2nd floor slab** | 21d | 2025-05-24 | 2025-06-14 |  | start no earlier than 2025-05-24 | 7 day week With NGT Ban | 7570313 |
| 1879 | 37200.37300.37500.38100.39300.43500.139100.417700 | Reinforcement | 20d | 2025-05-24 | 2025-06-13 | 1877FS+1d |  | 7 day week With NGT Ban | 7578393 |
| 1880 | 37200.37300.37500.38100.39300.43500.139100.417800 | Wall conduiting | 4d | 2025-05-27 | 2025-05-31 | 1875, 1879SS+2.75d |  | 7 day week With NGT Ban | 7578403 |
| 1881 | 37200.37300.37500.38100.39300.43500.139100.417900 | Formwork | 20d | 2025-05-24 | 2025-06-13 | 1879SS |  | 7 day week With NGT Ban | 7578413 |
| 1882 | 37200.37300.37500.38100.39300.43500.139100.418000 | Concreting | 1d | 2025-06-13 | 2025-06-14 | 1881 |  | 7 day week With NGT Ban | 7578423 |
| 1883 | 37200.37300.37500.38100.39300.43500.139200 | **3rd floor slab** | 15d | 2025-06-15 | 2025-06-30 |  | start no earlier than 2025-06-15 | 7 day week With NGT Ban | 7570323 |
| 1884 | 37200.37300.37500.38100.39300.43500.139200.418100 | Reinforcement | 11d | 2025-06-15 | 2025-06-26 | 1882FS+1d |  | 7 day week With NGT Ban | 7578433 |
| 1885 | 37200.37300.37500.38100.39300.43500.139200.418200 | Wall conduiting | 3d | 2025-06-18 | 2025-06-21 | 1880, 1884SS+2.75d |  | 7 day week With NGT Ban | 7578443 |
| 1886 | 37200.37300.37500.38100.39300.43500.139200.418300 | Formwork | 11d | 2025-06-18 | 2025-06-29 | 1884SS+3d |  | 7 day week With NGT Ban | 7578453 |
| 1887 | 37200.37300.37500.38100.39300.43500.139200.418400 | Concreting | 1d | 2025-06-29 | 2025-06-30 | 1886 |  | 7 day week With NGT Ban | 7578463 |
| 1888 | 37200.37300.37500.38100.39300.43500.139300 | **4th floor slab** | 9d | 2025-07-01 | 2025-07-10 |  | start no earlier than 2025-07-01 | 7 day week With NGT Ban | 7570333 |
| 1889 | 37200.37300.37500.38100.39300.43500.139300.418500 | Reinforcement | 8d | 2025-07-01 | 2025-07-09 | 1887FS+1d |  | 7 day week With NGT Ban | 7578473 |
| 1890 | 37200.37300.37500.38100.39300.43500.139300.418600 | Wall conduiting | 3d | 2025-07-02 | 2025-07-05 | 1885, 1889SS+1d |  | 7 day week With NGT Ban | 7578483 |
| 1891 | 37200.37300.37500.38100.39300.43500.139300.418700 | Formwork | 7d | 2025-07-02 | 2025-07-09 | 1889SS+1d |  | 7 day week With NGT Ban | 7578493 |
| 1892 | 37200.37300.37500.38100.39300.43500.139300.418800 | Concreting | 1d | 2025-07-09 | 2025-07-10 | 1891 |  | 7 day week With NGT Ban | 7578503 |
| 1893 | 37200.37300.37500.38100.39300.43500.139400 | **5th floor slab** | 9d | 2025-07-11 | 2025-07-20 |  | start no earlier than 2025-07-11 | 7 day week With NGT Ban | 7570343 |
| 1894 | 37200.37300.37500.38100.39300.43500.139400.418900 | Reinforcement | 8d | 2025-07-11 | 2025-07-19 | 1892FS+1d |  | 7 day week With NGT Ban | 7578513 |
| 1895 | 37200.37300.37500.38100.39300.43500.139400.419000 | Wall conduiting | 3d | 2025-07-12 | 2025-07-15 | 1890, 1894SS+1d |  | 7 day week With NGT Ban | 7578523 |
| 1896 | 37200.37300.37500.38100.39300.43500.139400.419100 | Formwork | 7d | 2025-07-12 | 2025-07-19 | 1894SS+1d |  | 7 day week With NGT Ban | 7578533 |
| 1897 | 37200.37300.37500.38100.39300.43500.139400.419200 | Concreting | 1d | 2025-07-19 | 2025-07-20 | 1896 |  | 7 day week With NGT Ban | 7578543 |
| 1898 | 37200.37300.37500.38100.39300.43500.139500 | **6th floor slab** | 9d | 2025-07-21 | 2025-07-30 |  | start no earlier than 2025-07-21 | 7 day week With NGT Ban | 7570353 |
| 1899 | 37200.37300.37500.38100.39300.43500.139500.419300 | Reinforcement | 8d | 2025-07-21 | 2025-07-29 | 1897FS+1d |  | 7 day week With NGT Ban | 7578553 |
| 1900 | 37200.37300.37500.38100.39300.43500.139500.419400 | Wall conduiting | 3d | 2025-07-22 | 2025-07-25 | 1895, 1899SS+1d |  | 7 day week With NGT Ban | 7578563 |
| 1901 | 37200.37300.37500.38100.39300.43500.139500.419500 | Formwork | 7d | 2025-07-22 | 2025-07-29 | 1899SS+1d |  | 7 day week With NGT Ban | 7578573 |
| 1902 | 37200.37300.37500.38100.39300.43500.139500.419600 | Concreting | 1d | 2025-07-29 | 2025-07-30 | 1901 |  | 7 day week With NGT Ban | 7578583 |

| ID | WBS | Task | Duration | Start | Finish | Predecessors | Constraint | Calendar | Unique_Task_ID |
| --- | --- | --- | --- | --- | --- | --- | --- | --- | --- |
| 1903 | 37200.37300.37500.38100.39300.43500.139600 | **7th floor slab** | 9d | 2025-07-31 | 2025-08-09 |  | start no earlier than 2025-07-31 | 7 day week With NGT Ban | 7570363 |
| 1904 | 37200.37300.37500.38100.39300.43500.139600.419700 | Reinforcement | 8d | 2025-07-31 | 2025-08-08 | 1902FS+1d |  | 7 day week With NGT Ban | 7578593 |
| 1905 | 37200.37300.37500.38100.39300.43500.139600.419800 | Wall conduiting | 3d | 2025-08-01 | 2025-08-04 | 1900, 1904SS+1d |  | 7 day week With NGT Ban | 7578603 |
| 1906 | 37200.37300.37500.38100.39300.43500.139600.419900 | Formwork | 7d | 2025-08-01 | 2025-08-08 | 1904SS+1d |  | 7 day week With NGT Ban | 7578613 |
| 1907 | 37200.37300.37500.38100.39300.43500.139600.420000 | Concreting | 1d | 2025-08-08 | 2025-08-09 | 1906 |  | 7 day week With NGT Ban | 7578623 |
| 1908 | 37200.37300.37500.38100.39300.43500.139700 | **8th floor slab** | 12d | 2025-08-10 | 2025-08-22 |  | start no earlier than 2025-08-10 | 7 day week With NGT Ban | 7570373 |
| 1909 | 37200.37300.37500.38100.39300.43500.139700.420100 | Reinforcement | 10d | 2025-08-10 | 2025-08-20 | 1907FS+1d |  | 7 day week With NGT Ban | 7578633 |
| 1910 | 37200.37300.37500.38100.39300.43500.139700.420200 | Wall conduiting | 3d | 2025-08-11 | 2025-08-14 | 1905, 1909SS+1d |  | 7 day week With NGT Ban | 7578643 |
| 1911 | 37200.37300.37500.38100.39300.43500.139700.420300 | Formwork | 10d | 2025-08-11 | 2025-08-21 | 1909SS+1d |  | 7 day week With NGT Ban | 7578653 |
| 1912 | 37200.37300.37500.38100.39300.43500.139700.420400 | Concreting | 1d | 2025-08-21 | 2025-08-22 | 1911 |  | 7 day week With NGT Ban | 7578663 |
| 1913 | 37200.37300.37500.38100.39300.43500.139800 | **9th floor slab** | 9d | 2025-08-23 | 2025-09-01 |  | start no earlier than 2025-08-23 | 7 day week With NGT Ban | 7570383 |
| 1914 | 37200.37300.37500.38100.39300.43500.139800.420500 | Reinforcement | 8d | 2025-08-23 | 2025-08-31 | 1912FS+1d |  | 7 day week With NGT Ban | 7578673 |
| 1915 | 37200.37300.37500.38100.39300.43500.139800.420600 | Wall conduiting | 3d | 2025-08-24 | 2025-08-27 | 1910, 1914SS+1d |  | 7 day week With NGT Ban | 7578683 |
| 1916 | 37200.37300.37500.38100.39300.43500.139800.420700 | Formwork | 7d | 2025-08-24 | 2025-08-31 | 1914SS+1d |  | 7 day week With NGT Ban | 7578693 |
| 1917 | 37200.37300.37500.38100.39300.43500.139800.420800 | Concreting | 1d | 2025-08-31 | 2025-09-01 | 1916 |  | 7 day week With NGT Ban | 7578703 |
| 1918 | 37200.37300.37500.38100.39300.43500.139900 | **10th floor slab** | 9d | 2025-09-02 | 2025-09-11 |  | start no earlier than 2025-09-02 | 7 day week With NGT Ban | 7570393 |
| 1919 | 37200.37300.37500.38100.39300.43500.139900.420900 | Reinforcement | 8d | 2025-09-02 | 2025-09-10 | 1917FS+1d |  | 7 day week With NGT Ban | 7578713 |
| 1920 | 37200.37300.37500.38100.39300.43500.139900.421000 | Wall conduiting | 3d | 2025-09-03 | 2025-09-06 | 1915, 1919SS+1d |  | 7 day week With NGT Ban | 7578723 |
| 1921 | 37200.37300.37500.38100.39300.43500.139900.421100 | Formwork | 7d | 2025-09-03 | 2025-09-10 | 1919SS+1d |  | 7 day week With NGT Ban | 7578733 |
| 1922 | 37200.37300.37500.38100.39300.43500.139900.421200 | Concreting | 1d | 2025-09-10 | 2025-09-11 | 1921 |  | 7 day week With NGT Ban | 7578743 |
| 1923 | 37200.37300.37500.38100.39300.43500.140000 | **11th floor slab** | 9d | 2025-09-12 | 2025-09-21 |  | start no earlier than 2025-09-12 | 7 day week With NGT Ban | 7570403 |
| 1924 | 37200.37300.37500.38100.39300.43500.140000.421300 | Reinforcement | 8d | 2025-09-12 | 2025-09-20 | 1922FS+1d |  | 7 day week With NGT Ban | 7578753 |
| 1925 | 37200.37300.37500.38100.39300.43500.140000.421400 | Wall conduiting | 3d | 2025-09-13 | 2025-09-16 | 1920, 1924SS+1d |  | 7 day week With NGT Ban | 7578763 |
| 1926 | 37200.37300.37500.38100.39300.43500.140000.421500 | Formwork | 7d | 2025-09-13 | 2025-09-20 | 1924SS+1d |  | 7 day week With NGT Ban | 7578773 |
| 1927 | 37200.37300.37500.38100.39300.43500.140000.421600 | Concreting | 1d | 2025-09-20 | 2025-09-21 | 1926 |  | 7 day week With NGT Ban | 7578783 |

| ID | WBS | Task | Duration | Start | Finish | Predecessors | Constraint | Calendar | Unique_Task_ID |
| --- | --- | --- | --- | --- | --- | --- | --- | --- | --- |
| 1928 | 37200.37300.37500.38100.39300.43500.140100 | **12th floor slab** | 9d | 2025-09-22 | 2025-10-01 |  | start no earlier than 2025-09-22 | 7 day week With NGT Ban | 7570413 |
| 1929 | 37200.37300.37500.38100.39300.43500.140100.421700 | Reinforcement | 8d | 2025-09-22 | 2025-09-30 | 1927FS+1d |  | 7 day week With NGT Ban | 7578793 |
| 1930 | 37200.37300.37500.38100.39300.43500.140100.421800 | Wall conduiting | 3d | 2025-09-23 | 2025-09-26 | 1925, 1929SS+1d |  | 7 day week With NGT Ban | 7578803 |
| 1931 | 37200.37300.37500.38100.39300.43500.140100.421900 | Formwork | 7d | 2025-09-23 | 2025-09-30 | 1929SS+1d |  | 7 day week With NGT Ban | 7578813 |
| 1932 | 37200.37300.37500.38100.39300.43500.140100.422000 | Concreting | 1d | 2025-09-30 | 2025-10-01 | 1931 |  | 7 day week With NGT Ban | 7578823 |
| 1933 | 37200.37300.37500.38100.39300.43500.140200 | **13th floor slab** | 9d | 2025-10-03 | 2025-10-12 |  | start no earlier than 2025-10-03 | 7 day week With NGT Ban | 7570423 |
| 1934 | 37200.37300.37500.38100.39300.43500.140200.422100 | Reinforcement | 8d | 2025-10-03 | 2025-10-11 | 1932FS+2d |  | 7 day week With NGT Ban | 7578833 |
| 1935 | 37200.37300.37500.38100.39300.43500.140200.422200 | Wall conduiting | 3d | 2025-10-04 | 2025-10-07 | 1930, 1934SS+1d |  | 7 day week With NGT Ban | 7578843 |
| 1936 | 37200.37300.37500.38100.39300.43500.140200.422300 | Formwork | 7d | 2025-10-04 | 2025-10-11 | 1934SS+1d |  | 7 day week With NGT Ban | 7578853 |
| 1937 | 37200.37300.37500.38100.39300.43500.140200.422400 | Concreting | 1d | 2025-10-11 | 2025-10-12 | 1936 |  | 7 day week With NGT Ban | 7578863 |
| 1938 | 37200.37300.37500.38100.39300.43500.140300 | **14th floor slab** | 9d | 2025-10-13 | 2025-10-22 |  | start no earlier than 2025-10-13 | 7 day week With NGT Ban | 7570433 |
| 1939 | 37200.37300.37500.38100.39300.43500.140300.422500 | Reinforcement | 8d | 2025-10-13 | 2025-10-21 | 1937FS+1d |  | 7 day week With NGT Ban | 7578873 |
| 1940 | 37200.37300.37500.38100.39300.43500.140300.422600 | Wall conduiting | 3d | 2025-10-14 | 2025-10-17 | 1935, 1939SS+1d |  | 7 day week With NGT Ban | 7578883 |
| 1941 | 37200.37300.37500.38100.39300.43500.140300.422700 | Formwork | 7d | 2025-10-14 | 2025-10-21 | 1939SS+1d |  | 7 day week With NGT Ban | 7578893 |
| 1942 | 37200.37300.37500.38100.39300.43500.140300.422800 | Concreting | 1d | 2025-10-21 | 2025-10-22 | 1941 |  | 7 day week With NGT Ban | 7578903 |
| 1943 | 37200.37300.37500.38100.39300.43500.140400 | **15th floor slab** | 9d | 2025-10-24 | 2025-12-17 |  | start no earlier than 2025-10-24 | 7 day week With NGT Ban | 7570443 |
| 1944 | 37200.37300.37500.38100.39300.43500.140400.422900 | Reinforcement | 8d | 2025-10-24 | 2025-12-16 | 1942FS+1.88d |  | 7 day week With NGT Ban | 7578913 |
| 1945 | 37200.37300.37500.38100.39300.43500.140400.423000 | Wall conduiting | 3d | 2025-10-25 | 2025-10-28 | 1940, 1944SS+1d |  | 7 day week With NGT Ban | 7578923 |
| 1946 | 37200.37300.37500.38100.39300.43500.140400.423100 | Formwork | 7d | 2025-10-25 | 2025-12-16 | 1944SS+1d |  | 7 day week With NGT Ban | 7578933 |
| 1947 | 37200.37300.37500.38100.39300.43500.140400.423200 | Concreting | 1d | 2025-12-16 | 2025-12-17 | 1946 |  | 7 day week With NGT Ban | 7578943 |
| 1948 | 37200.37300.37500.38100.39300.43500.140500 | **16th floor slab** | 12d | 2025-12-18 | 2025-12-30 |  | start no earlier than 2025-12-18 | 7 day week With NGT Ban | 7570453 |
| 1949 | 37200.37300.37500.38100.39300.43500.140500.423300 | Reinforcement | 10d | 2025-12-18 | 2025-12-28 | 1947FS+1d |  | 7 day week With NGT Ban | 7578953 |
| 1950 | 37200.37300.37500.38100.39300.43500.140500.423400 | Wall conduiting | 3d | 2025-12-19 | 2025-12-22 | 1945, 1949SS+1d |  | 7 day week With NGT Ban | 7578963 |
| 1951 | 37200.37300.37500.38100.39300.43500.140500.423500 | Formwork | 10d | 2025-12-19 | 2025-12-29 | 1949SS+1d |  | 7 day week With NGT Ban | 7578973 |
| 1952 | 37200.37300.37500.38100.39300.43500.140500.423600 | Concreting | 1d | 2025-12-29 | 2025-12-30 | 1951 |  | 7 day week With NGT Ban | 7578983 |

| ID | WBS | Task | Duration | Start | Finish | Predecessors | Constraint | Calendar | Unique_Task_ID |
| --- | --- | --- | --- | --- | --- | --- | --- | --- | --- |
| 1953 | 37200.37300.37500.38100.39300.43500.140600 | **17th floor slab** | 9d | 2025-12-31 | 2026-01-09 |  | start no earlier than 2025-12-31 | 7 day week With NGT Ban | 7570463 |
| 1954 | 37200.37300.37500.38100.39300.43500.140600.423700 | Reinforcement | 8d | 2025-12-31 | 2026-01-08 | 1952FS+1d |  | 7 day week With NGT Ban | 7578993 |
| 1955 | 37200.37300.37500.38100.39300.43500.140600.423800 | Wall conduiting | 3d | 2026-01-01 | 2026-01-04 | 1950, 1954SS+1d |  | 7 day week With NGT Ban | 7579003 |
| 1956 | 37200.37300.37500.38100.39300.43500.140600.423900 | Formwork | 7d | 2026-01-01 | 2026-01-08 | 1954SS+1d |  | 7 day week With NGT Ban | 7579013 |
| 1957 | 37200.37300.37500.38100.39300.43500.140600.424000 | Concreting | 1d | 2026-01-08 | 2026-01-09 | 1956 |  | 7 day week With NGT Ban | 7579023 |
| 1958 | 37200.37300.37500.38100.39300.43500.140700 | **18th floor slab** | 9d | 2026-01-10 | 2026-01-19 |  | start no earlier than 2026-01-10 | 7 day week With NGT Ban | 7570473 |
| 1959 | 37200.37300.37500.38100.39300.43500.140700.424100 | Reinforcement | 8d | 2026-01-10 | 2026-01-18 | 1957FS+1d |  | 7 day week With NGT Ban | 7579033 |
| 1960 | 37200.37300.37500.38100.39300.43500.140700.424200 | Wall conduiting | 3d | 2026-01-11 | 2026-01-14 | 1955, 1959SS+1d |  | 7 day week With NGT Ban | 7579043 |
| 1961 | 37200.37300.37500.38100.39300.43500.140700.424300 | Formwork | 7d | 2026-01-11 | 2026-01-18 | 1959SS+1d |  | 7 day week With NGT Ban | 7579053 |
| 1962 | 37200.37300.37500.38100.39300.43500.140700.424400 | Concreting | 1d | 2026-01-18 | 2026-01-19 | 1961 |  | 7 day week With NGT Ban | 7579063 |
| 1963 | 37200.37300.37500.38100.39300.43500.140800 | **19th floor slab** | 8d | 2026-01-20 | 2026-01-28 |  | start no earlier than 2026-01-20 | 7 day week With NGT Ban | 7570483 |
| 1964 | 37200.37300.37500.38100.39300.43500.140800.424500 | Reinforcement | 7d | 2026-01-20 | 2026-01-27 | 1962FS+1d |  | 7 day week With NGT Ban | 7579073 |
| 1965 | 37200.37300.37500.38100.39300.43500.140800.424600 | Wall conduiting | 3d | 2026-01-21 | 2026-01-24 | 1960, 1964SS+1d |  | 7 day week With NGT Ban | 7579083 |
| 1966 | 37200.37300.37500.38100.39300.43500.140800.424700 | Formwork | 6d | 2026-01-21 | 2026-01-27 | 1964SS+1d |  | 7 day week With NGT Ban | 7579093 |
| 1967 | 37200.37300.37500.38100.39300.43500.140800.424800 | Concreting | 1d | 2026-01-27 | 2026-01-28 | 1966 |  | 7 day week With NGT Ban | 7579103 |
| 1968 | 37200.37300.37500.38100.39300.43500.140900 | **20th floor slab** | 8d | 2026-01-29 | 2026-02-06 |  | start no earlier than 2026-01-29 | 7 day week With NGT Ban | 7570493 |
| 1969 | 37200.37300.37500.38100.39300.43500.140900.424900 | Reinforcement | 7d | 2026-01-29 | 2026-02-05 | 1967FS+1d |  | 7 day week With NGT Ban | 7579113 |
| 1970 | 37200.37300.37500.38100.39300.43500.140900.425000 | Wall conduiting | 3d | 2026-01-30 | 2026-02-02 | 1965, 1969SS+1d |  | 7 day week With NGT Ban | 7579123 |
| 1971 | 37200.37300.37500.38100.39300.43500.140900.425100 | Formwork | 6d | 2026-01-30 | 2026-02-05 | 1969SS+1d |  | 7 day week With NGT Ban | 7579133 |
| 1972 | 37200.37300.37500.38100.39300.43500.140900.425200 | Concreting | 1d | 2026-02-05 | 2026-02-06 | 1971 |  | 7 day week With NGT Ban | 7579143 |
| 1973 | 37200.37300.37500.38100.39300.43500.141000 | **21st floor slab** | 8d | 2026-02-08 | 2026-02-16 |  | start no earlier than 2026-02-08 | 7 day week With NGT Ban | 7570503 |
| 1974 | 37200.37300.37500.38100.39300.43500.141000.425300 | Reinforcement | 7d | 2026-02-08 | 2026-02-15 | 1972FS+1.88d |  | 7 day week With NGT Ban | 7579153 |
| 1975 | 37200.37300.37500.38100.39300.43500.141000.425400 | Wall conduiting | 3d | 2026-02-09 | 2026-02-12 | 1970, 1974SS+1d |  | 7 day week With NGT Ban | 7579163 |
| 1976 | 37200.37300.37500.38100.39300.43500.141000.425500 | Formwork | 6d | 2026-02-09 | 2026-02-15 | 1974SS+1d |  | 7 day week With NGT Ban | 7579173 |
| 1977 | 37200.37300.37500.38100.39300.43500.141000.425600 | Concreting | 1d | 2026-02-15 | 2026-02-16 | 1976 |  | 7 day week With NGT Ban | 7579183 |

| ID | WBS | Task | Duration | Start | Finish | Predecessors | Constraint | Calendar | Unique_Task_ID |
| --- | --- | --- | --- | --- | --- | --- | --- | --- | --- |
| 1978 | 37200.37300.37500.38100.39300.43500.141100 | **22nd floor slab** | 8d | 2026-02-17 | 2026-02-25 |  | start no earlier than 2026-02-17 | 7 day week With NGT Ban | 7570513 |
| 1979 | 37200.37300.37500.38100.39300.43500.141100.425700 | Reinforcement | 7d | 2026-02-17 | 2026-02-24 | 1977FS+1d |  | 7 day week With NGT Ban | 7579193 |
| 1980 | 37200.37300.37500.38100.39300.43500.141100.425800 | Wall conduiting | 3d | 2026-02-18 | 2026-02-21 | 1975, 1979SS+1d |  | 7 day week With NGT Ban | 7579203 |
| 1981 | 37200.37300.37500.38100.39300.43500.141100.425900 | Formwork | 6d | 2026-02-18 | 2026-02-24 | 1979SS+1d |  | 7 day week With NGT Ban | 7579213 |
| 1982 | 37200.37300.37500.38100.39300.43500.141100.426000 | Concreting | 1d | 2026-02-24 | 2026-02-25 | 1981 |  | 7 day week With NGT Ban | 7579223 |
| 1983 | 37200.37300.37500.38100.39300.43500.141200 | **23rd floor slab** | 8d | 2026-02-26 | 2026-03-06 |  | start no earlier than 2026-02-26 | 7 day week With NGT Ban | 7570523 |
| 1984 | 37200.37300.37500.38100.39300.43500.141200.426100 | Reinforcement | 7d | 2026-02-26 | 2026-03-05 | 1982FS+1d |  | 7 day week With NGT Ban | 7579233 |
| 1985 | 37200.37300.37500.38100.39300.43500.141200.426200 | Wall conduiting | 3d | 2026-02-27 | 2026-03-02 | 1980, 1984SS+1d |  | 7 day week With NGT Ban | 7579243 |
| 1986 | 37200.37300.37500.38100.39300.43500.141200.426300 | Formwork | 6d | 2026-02-27 | 2026-03-05 | 1984SS+1d |  | 7 day week With NGT Ban | 7579253 |
| 1987 | 37200.37300.37500.38100.39300.43500.141200.426400 | Concreting | 1d | 2026-03-05 | 2026-03-06 | 1986 |  | 7 day week With NGT Ban | 7579263 |
| 1988 | 37200.37300.37500.38100.39300.43500.141300 | **24th floor slab** | 12d | 2026-03-07 | 2026-03-19 |  | start no earlier than 2026-03-07 | 7 day week With NGT Ban | 7570533 |
| 1989 | 37200.37300.37500.38100.39300.43500.141300.426500 | Reinforcement | 10d | 2026-03-07 | 2026-03-17 | 1987FS+1d |  | 7 day week With NGT Ban | 7579273 |
| 1990 | 37200.37300.37500.38100.39300.43500.141300.426600 | Wall conduiting | 3d | 2026-03-08 | 2026-03-11 | 1985, 1989SS+1d |  | 7 day week With NGT Ban | 7579283 |
| 1991 | 37200.37300.37500.38100.39300.43500.141300.426700 | Formwork | 10d | 2026-03-08 | 2026-03-18 | 1989SS+1d |  | 7 day week With NGT Ban | 7579293 |
| 1992 | 37200.37300.37500.38100.39300.43500.141300.426800 | Concreting | 1d | 2026-03-18 | 2026-03-19 | 1991 |  | 7 day week With NGT Ban | 7579303 |
| 1993 | 37200.37300.37500.38100.39300.43500.141400 | **25th floor slab** | 12d | 2026-03-20 | 2026-04-01 |  | start no earlier than 2026-03-20 | 7 day week With NGT Ban | 7570543 |
| 1994 | 37200.37300.37500.38100.39300.43500.141400.426900 | Reinforcement | 10d | 2026-03-20 | 2026-03-30 | 1992FS+1d |  | 7 day week With NGT Ban | 7579313 |
| 1995 | 37200.37300.37500.38100.39300.43500.141400.427000 | Wall conduiting | 3d | 2026-03-21 | 2026-03-24 | 1990, 1994SS+1d |  | 7 day week With NGT Ban | 7579323 |
| 1996 | 37200.37300.37500.38100.39300.43500.141400.427100 | Formwork | 10d | 2026-03-21 | 2026-03-31 | 1994SS+1d |  | 7 day week With NGT Ban | 7579333 |
| 1997 | 37200.37300.37500.38100.39300.43500.141400.427200 | Concreting | 1d | 2026-03-31 | 2026-04-01 | 1996 |  | 7 day week With NGT Ban | 7579343 |
| 1998 | 37200.37300.37500.38100.39300.43500.141500 | **26th floor slab** | 8d | 2026-04-02 | 2026-04-10 |  | start no earlier than 2026-04-02 | 7 day week With NGT Ban | 7570553 |
| 1999 | 37200.37300.37500.38100.39300.43500.141500.427300 | Reinforcement | 7d | 2026-04-02 | 2026-04-09 | 1997FS+1d |  | 7 day week With NGT Ban | 7579353 |
| 2000 | 37200.37300.37500.38100.39300.43500.141500.427400 | Wall conduiting | 3d | 2026-04-03 | 2026-04-06 | 1995, 1999SS+1d |  | 7 day week With NGT Ban | 7579363 |
| 2001 | 37200.37300.37500.38100.39300.43500.141500.427500 | Formwork | 6d | 2026-04-03 | 2026-04-09 | 1999SS+1d |  | 7 day week With NGT Ban | 7579373 |
| 2002 | 37200.37300.37500.38100.39300.43500.141500.427600 | Concreting | 1d | 2026-04-09 | 2026-04-10 | 2001 |  | 7 day week With NGT Ban | 7579383 |

| ID | WBS | Task | Duration | Start | Finish | Predecessors | Constraint | Calendar | Unique_Task_ID |
| --- | --- | --- | --- | --- | --- | --- | --- | --- | --- |
| 2003 | 37200.37300.37500.38100.39300.43500.141600 | **27th floor slab** | 8d | 2026-04-11 | 2026-04-19 |  | start no earlier than 2026-04-11 | 7 day week With NGT Ban | 7570563 |
| 2004 | 37200.37300.37500.38100.39300.43500.141600.427700 | Reinforcement | 7d | 2026-04-11 | 2026-04-18 | 2002FS+1d |  | 7 day week With NGT Ban | 7579393 |
| 2005 | 37200.37300.37500.38100.39300.43500.141600.427800 | Wall conduiting | 3d | 2026-04-12 | 2026-04-15 | 2000, 2004SS+1d |  | 7 day week With NGT Ban | 7579403 |
| 2006 | 37200.37300.37500.38100.39300.43500.141600.427900 | Formwork | 6d | 2026-04-12 | 2026-04-18 | 2004SS+1d |  | 7 day week With NGT Ban | 7579413 |
| 2007 | 37200.37300.37500.38100.39300.43500.141600.428000 | Concreting | 1d | 2026-04-18 | 2026-04-19 | 2006 |  | 7 day week With NGT Ban | 7579423 |
| 2008 | 37200.37300.37500.38100.39300.43500.141700 | **28th floor slab** | 8d | 2026-04-20 | 2026-04-28 |  | start no earlier than 2026-04-20 | 7 day week With NGT Ban | 7570573 |
| 2009 | 37200.37300.37500.38100.39300.43500.141700.428100 | Reinforcement | 7d | 2026-04-20 | 2026-04-27 | 2007FS+1d |  | 7 day week With NGT Ban | 7579433 |
| 2010 | 37200.37300.37500.38100.39300.43500.141700.428200 | Wall conduiting | 3d | 2026-04-21 | 2026-04-24 | 2005, 2009SS+1d |  | 7 day week With NGT Ban | 7579443 |
| 2011 | 37200.37300.37500.38100.39300.43500.141700.428300 | Formwork | 6d | 2026-04-21 | 2026-04-27 | 2009SS+1d |  | 7 day week With NGT Ban | 7579453 |
| 2012 | 37200.37300.37500.38100.39300.43500.141700.428400 | Concreting | 1d | 2026-04-27 | 2026-04-28 | 2011 |  | 7 day week With NGT Ban | 7579463 |
| 2013 | 37200.37300.37500.38100.39300.43500.141800 | **29th floor slab** | 8d | 2026-04-29 | 2026-05-07 |  | start no earlier than 2026-04-29 | 7 day week With NGT Ban | 7570583 |
| 2014 | 37200.37300.37500.38100.39300.43500.141800.428500 | Reinforcement | 7d | 2026-04-29 | 2026-05-06 | 2012FS+1d |  | 7 day week With NGT Ban | 7579473 |
| 2015 | 37200.37300.37500.38100.39300.43500.141800.428600 | Wall conduiting | 3d | 2026-04-30 | 2026-05-03 | 2010, 2014SS+1d |  | 7 day week With NGT Ban | 7579483 |
| 2016 | 37200.37300.37500.38100.39300.43500.141800.428700 | Formwork | 6d | 2026-04-30 | 2026-05-06 | 2014SS+1d |  | 7 day week With NGT Ban | 7579493 |
| 2017 | 37200.37300.37500.38100.39300.43500.141800.428800 | Concreting | 1d | 2026-05-06 | 2026-05-07 | 2016 |  | 7 day week With NGT Ban | 7579503 |
| 2018 | 37200.37300.37500.38100.39300.43500.141900 | **30th floor slab** | 8d | 2026-05-08 | 2026-05-16 |  | start no earlier than 2026-05-08 | 7 day week With NGT Ban | 7570593 |
| 2019 | 37200.37300.37500.38100.39300.43500.141900.428900 | Reinforcement | 7d | 2026-05-08 | 2026-05-15 | 2017FS+1d |  | 7 day week With NGT Ban | 7579513 |
| 2020 | 37200.37300.37500.38100.39300.43500.141900.429000 | Wall conduiting | 3d | 2026-05-09 | 2026-05-12 | 2015, 2019SS+1d |  | 7 day week With NGT Ban | 7579523 |
| 2021 | 37200.37300.37500.38100.39300.43500.141900.429100 | Formwork | 6d | 2026-05-09 | 2026-05-15 | 2019SS+1d |  | 7 day week With NGT Ban | 7579533 |
| 2022 | 37200.37300.37500.38100.39300.43500.141900.429200 | Concreting | 1d | 2026-05-15 | 2026-05-16 | 2021 |  | 7 day week With NGT Ban | 7579543 |
| 2023 | 37200.37300.37500.38100.39300.43500.142000 | **31st floor slab** | 10.88d | 2026-05-16 | 2026-05-27 |  | start no earlier than 2026-05-16 | 7 day week With NGT Ban | 7570603 |
| 2024 | 37200.37300.37500.38100.39300.43500.142000.429300 | Reinforcement | 8.94d | 2026-05-16 | 2026-05-25 | 2022FS+0.25d |  | 7 day week With NGT Ban | 7579553 |
| 2025 | 37200.37300.37500.38100.39300.43500.142000.429400 | Wall conduiting | 1.94d | 2026-05-17 | 2026-05-19 | 2020, 2024SS+1d |  | 7 day week With NGT Ban | 7579563 |
| 2026 | 37200.37300.37500.38100.39300.43500.142000.429500 | Formwork | 8.94d | 2026-05-17 | 2026-05-26 | 2024SS+1d |  | 7 day week With NGT Ban | 7579573 |
| 2027 | 37200.37300.37500.38100.39300.43500.142000.429600 | Concreting | 0.94d | 2026-05-26 | 2026-05-27 | 2026 |  | 7 day week With NGT Ban | 7579583 |

| ID | WBS | Task | Duration | Start | Finish | Predecessors | Constraint | Calendar | Unique_Task_ID |
| --- | --- | --- | --- | --- | --- | --- | --- | --- | --- |
| 2028 | 37200.37300.37500.38100.39300.43500.142100 | **32nd floor slab** | 12.75d | 2026-05-28 | 2026-06-10 |  | start no earlier than 2026-05-28 | 7 day week With NGT Ban | 7570613 |
| 2029 | 37200.37300.37500.38100.39300.43500.142100.429700 | Reinforcement | 9.94d | 2026-05-28 | 2026-06-07 | 2027FS+1d |  | 7 day week With NGT Ban | 7579593 |
| 2030 | 37200.37300.37500.38100.39300.43500.142100.429800 | Wall conduiting | 1.94d | 2026-05-29 | 2026-05-31 | 2025, 2029SS+1d |  | 7 day week With NGT Ban | 7579603 |
| 2031 | 37200.37300.37500.38100.39300.43500.142100.429900 | Formwork | 9.94d | 2026-05-30 | 2026-06-09 | 2029SS+1.88d |  | 7 day week With NGT Ban | 7579613 |
| 2032 | 37200.37300.37500.38100.39300.43500.142100.430000 | Concreting | 0.94d | 2026-06-09 | 2026-06-10 | 2031 |  | 7 day week With NGT Ban | 7579623 |
| 2033 | 37200.37300.37500.38100.39300.43500.142200 | **33rd floor slab** | 11.75d | 2026-06-11 | 2026-06-23 |  | start no earlier than 2026-06-11 | 7 day week With NGT Ban | 7570623 |
| 2034 | 37200.37300.37500.38100.39300.43500.142200.430100 | Reinforcement | 8.94d | 2026-06-11 | 2026-06-20 | 2032FS+1d |  | 7 day week With NGT Ban | 7579633 |
| 2035 | 37200.37300.37500.38100.39300.43500.142200.430200 | Wall conduiting | 1.94d | 2026-06-12 | 2026-06-14 | 2030, 2034SS+1d |  | 7 day week With NGT Ban | 7579643 |
| 2036 | 37200.37300.37500.38100.39300.43500.142200.430300 | Formwork | 8.94d | 2026-06-13 | 2026-06-22 | 2034SS+1.88d |  | 7 day week With NGT Ban | 7579653 |
| 2037 | 37200.37300.37500.38100.39300.43500.142200.430400 | Concreting | 0.94d | 2026-06-22 | 2026-06-23 | 2036 |  | 7 day week With NGT Ban | 7579663 |
| 2038 | 37200.37300.37500.38100.39300.43500.142300 | **34th floor slab** | 12.75d | 2026-06-24 | 2026-07-06 |  | start no earlier than 2026-06-24 | 7 day week With NGT Ban | 7570633 |
| 2039 | 37200.37300.37500.38100.39300.43500.142300.430500 | Reinforcement | 9.94d | 2026-06-24 | 2026-07-03 | 2037FS+1d |  | 7 day week With NGT Ban | 7579673 |
| 2040 | 37200.37300.37500.38100.39300.43500.142300.430600 | Wall conduiting | 1.94d | 2026-06-25 | 2026-06-26 | 2035, 2039SS+1d |  | 7 day week With NGT Ban | 7579683 |
| 2041 | 37200.37300.37500.38100.39300.43500.142300.430700 | Formwork | 9.94d | 2026-06-25 | 2026-07-05 | 2039SS+1.88d |  | 7 day week With NGT Ban | 7579693 |
| 2042 | 37200.37300.37500.38100.39300.43500.142300.430800 | Concreting | 0.94d | 2026-07-05 | 2026-07-06 | 2041 |  | 7 day week With NGT Ban | 7579703 |
| 2043 | 37200.37300.37500.38100.39300.43500.142400 | **35th floor slab** | 11.75d | 2026-07-07 | 2026-07-19 |  | start no earlier than 2026-07-07 | 7 day week With NGT Ban | 7570643 |
| 2044 | 37200.37300.37500.38100.39300.43500.142400.430900 | Reinforcement | 8.94d | 2026-07-07 | 2026-07-16 | 2042FS+1d |  | 7 day week With NGT Ban | 7579713 |
| 2045 | 37200.37300.37500.38100.39300.43500.142400.431000 | Wall conduiting | 1.94d | 2026-07-08 | 2026-07-10 | 2040, 2044SS+1d |  | 7 day week With NGT Ban | 7579723 |
| 2046 | 37200.37300.37500.38100.39300.43500.142400.431100 | Formwork | 7.94d | 2026-07-10 | 2026-07-18 | 2045SS+1.88d |  | 7 day week With NGT Ban | 7579733 |
| 2047 | 37200.37300.37500.38100.39300.43500.142400.431200 | Concreting | 0.94d | 2026-07-18 | 2026-07-19 | 2046 |  | 7 day week With NGT Ban | 7579743 |
| 2048 | 37200.37300.37500.38100.39300.43500.142500 | **Terrace floor slab** | 14.75d | 2026-07-20 | 2026-08-04 |  | start no earlier than 2026-07-20 | 7 day week With NGT Ban | 7570653 |
| 2049 | 37200.37300.37500.38100.39300.43500.142500.431300 | Reinforcement | 10.94d | 2026-07-20 | 2026-07-31 | 2047FS+1d |  | 7 day week With NGT Ban | 7579753 |
| 2050 | 37200.37300.37500.38100.39300.43500.142500.431400 | Wall conduiting | 1.94d | 2026-07-21 | 2026-07-23 | 2045, 2049SS+1d |  | 7 day week With NGT Ban | 7579763 |
| 2051 | 37200.37300.37500.38100.39300.43500.142500.431500 | Formwork | 11.94d | 2026-07-22 | 2026-08-03 | 2049SS+1.88d |  | 7 day week With NGT Ban | 7579773 |
| 2052 | 37200.37300.37500.38100.39300.43500.142500.431600 | Concreting | 0.94d | 2026-08-03 | 2026-08-04 | 2051 |  | 7 day week With NGT Ban | 7579783 |

| ID | WBS | Task | Duration | Start | Finish | Predecessors | Constraint | Calendar | Unique_Task_ID |
| --- | --- | --- | --- | --- | --- | --- | --- | --- | --- |
| 2053 | 37200.37300.37500.38100.39300.43500.142600 | **OHT & Mumty** | 39.5d | 2026-08-06 | 2026-09-14 |  | start no earlier than 2026-08-06 | 7 day week With NGT Ban | 7570663 |
| 2054 | 37200.37300.37500.38100.39300.43500.142600.431700 | Reinforcement | 29.94d | 2026-08-06 | 2026-09-05 | 2052FS+2d |  | 7 day week With NGT Ban | 7579793 |
| 2055 | 37200.37300.37500.38100.39300.43500.142600.431800 | Wall conduiting | 4.94d | 2026-08-07 | 2026-08-12 | 2050, 2054SS+1d |  | 7 day week With NGT Ban | 7579803 |
| 2056 | 37200.37300.37500.38100.39300.43500.142600.431900 | Formwork | 32.94d | 2026-08-09 | 2026-09-11 | 2054SS+3.62d |  | 7 day week With NGT Ban | 7579813 |
| 2057 | 37200.37300.37500.38100.39300.43500.142600.432000 | Concreting | 2.94d | 2026-09-11 | 2026-09-14 | 2056 |  | 7 day week With NGT Ban | 7579823 |
| 2058 | 37200.37300.37500.38100.39300.45000 | **Post Pour Activities** | 418.12d | 2025-07-20 | 2026-10-26 |  | start no earlier than 2025-07-20 | 7 day week With NGT Ban | 7567703 |
| 2059 | 37200.37300.37500.38100.39300.45000.276200 | 1st Floor | 7d | 2025-07-20 | 2025-07-27 | 1897 |  | 7 day week With NGT Ban | 7573313 |
| 2060 | 37200.37300.37500.38100.39300.45000.276300 | 2nd Floor | 7d | 2025-08-09 | 2025-08-16 | 2059, 1907 |  | 7 day week With NGT Ban | 7573323 |
| 2061 | 37200.37300.37500.38100.39300.45000.276400 | 3rd Floor | 7d | 2025-08-22 | 2025-08-29 | 2060, 1912 |  | 7 day week With NGT Ban | 7573333 |
| 2062 | 37200.37300.37500.38100.39300.45000.276500 | 4th Floor | 7d | 2025-09-01 | 2025-09-08 | 2061, 1917 |  | 7 day week With NGT Ban | 7573343 |
| 2063 | 37200.37300.37500.38100.39300.45000.276600 | 5th Floor | 7d | 2025-09-11 | 2025-09-18 | 2062, 1922 |  | 7 day week With NGT Ban | 7573353 |
| 2064 | 37200.37300.37500.38100.39300.45000.276700 | 6th Floor | 7d | 2025-09-21 | 2025-09-28 | 2063, 1927 |  | 7 day week With NGT Ban | 7573363 |
| 2065 | 37200.37300.37500.38100.39300.45000.276800 | 7th Floor | 7d | 2025-10-01 | 2025-10-08 | 2064, 1932 |  | 7 day week With NGT Ban | 7573373 |
| 2066 | 37200.37300.37500.38100.39300.45000.276900 | 8th Floor | 7d | 2025-10-12 | 2025-10-19 | 2065, 1937 |  | 7 day week With NGT Ban | 7573383 |
| 2067 | 37200.37300.37500.38100.39300.45000.277000 | 9th Floor | 7d | 2025-10-22 | 2025-10-29 | 2066, 1942 |  | 7 day week With NGT Ban | 7573393 |
| 2068 | 37200.37300.37500.38100.39300.45000.277100 | 10th Floor | 7d | 2025-12-17 | 2025-12-24 | 2067, 1947 |  | 7 day week With NGT Ban | 7573403 |
| 2069 | 37200.37300.37500.38100.39300.45000.277200 | 11th Floor | 7d | 2025-12-30 | 2026-01-06 | 2068, 1952 |  | 7 day week With NGT Ban | 7573413 |
| 2070 | 37200.37300.37500.38100.39300.45000.277300 | 12th Floor | 7d | 2026-01-09 | 2026-01-16 | 2069, 1957 |  | 7 day week With NGT Ban | 7573423 |
| 2071 | 37200.37300.37500.38100.39300.45000.277400 | 13th Floor | 7d | 2026-01-19 | 2026-01-26 | 2070, 1962 |  | 7 day week With NGT Ban | 7573433 |
| 2072 | 37200.37300.37500.38100.39300.45000.277500 | 14th Floor | 7d | 2026-01-28 | 2026-02-04 | 2071, 1967 |  | 7 day week With NGT Ban | 7573443 |
| 2073 | 37200.37300.37500.38100.39300.45000.277600 | 15th Floor | 7d | 2026-02-06 | 2026-02-13 | 2072, 1972 |  | 7 day week With NGT Ban | 7573453 |
| 2074 | 37200.37300.37500.38100.39300.45000.277700 | 16th Floor | 7d | 2026-02-16 | 2026-02-23 | 2073, 1977 |  | 7 day week With NGT Ban | 7573463 |
| 2075 | 37200.37300.37500.38100.39300.45000.277800 | 17th Floor | 7d | 2026-02-25 | 2026-03-04 | 2074, 1982 |  | 7 day week With NGT Ban | 7573473 |
| 2076 | 37200.37300.37500.38100.39300.45000.277900 | 18th Floor | 7d | 2026-03-06 | 2026-03-13 | 2075, 1987 |  | 7 day week With NGT Ban | 7573483 |
| 2077 | 37200.37300.37500.38100.39300.45000.278000 | 19th Floor | 7d | 2026-03-19 | 2026-03-26 | 2076, 1992 |  | 7 day week With NGT Ban | 7573493 |
| 2078 | 37200.37300.37500.38100.39300.45000.278100 | 20th Floor | 7d | 2026-04-01 | 2026-04-08 | 2077, 1997 |  | 7 day week With NGT Ban | 7573503 |
| 2079 | 37200.37300.37500.38100.39300.45000.278200 | 21st Floor | 7d | 2026-04-10 | 2026-04-17 | 2078, 2002 |  | 7 day week With NGT Ban | 7573513 |
| 2080 | 37200.37300.37500.38100.39300.45000.278300 | 22nd Floor | 7d | 2026-04-19 | 2026-04-26 | 2079, 2007 |  | 7 day week With NGT Ban | 7573523 |
| 2081 | 37200.37300.37500.38100.39300.45000.278400 | 23rd Floor | 7d | 2026-04-28 | 2026-05-05 | 2080, 2012 |  | 7 day week With NGT Ban | 7573533 |
| 2082 | 37200.37300.37500.38100.39300.45000.278500 | 24th Floor | 7d | 2026-05-07 | 2026-05-14 | 2081, 2017 |  | 7 day week With NGT Ban | 7573543 |
| 2083 | 37200.37300.37500.38100.39300.45000.278600 | 25th Floor | 7d | 2026-05-16 | 2026-05-23 | 2082, 2022 |  | 7 day week With NGT Ban | 7573553 |
| 2084 | 37200.37300.37500.38100.39300.45000.278700 | 26th Floor | 7d | 2026-05-27 | 2026-06-03 | 2083, 2027 |  | 7 day week With NGT Ban | 7573563 |
| 2085 | 37200.37300.37500.38100.39300.45000.278800 | 27th Floor | 7d | 2026-06-10 | 2026-06-17 | 2084, 2032 |  | 7 day week With NGT Ban | 7573573 |
| 2086 | 37200.37300.37500.38100.39300.45000.278900 | 28th Floor | 7d | 2026-06-23 | 2026-06-30 | 2085, 2037 |  | 7 day week With NGT Ban | 7573583 |
| 2087 | 37200.37300.37500.38100.39300.45000.279000 | 29th Floor | 7d | 2026-07-06 | 2026-07-13 | 2086, 2042 |  | 7 day week With NGT Ban | 7573593 |
| 2088 | 37200.37300.37500.38100.39300.45000.279100 | 30th Floor | 7d | 2026-07-19 | 2026-07-26 | 2087, 2047 |  | 7 day week With NGT Ban | 7573603 |
| 2089 | 37200.37300.37500.38100.39300.45000.279200 | 31st Floor | 7d | 2026-08-04 | 2026-08-11 | 2088, 2052 |  | 7 day week With NGT Ban | 7573613 |
| 2090 | 37200.37300.37500.38100.39300.45000.279300 | 32nd Flood | 7d | 2026-09-14 | 2026-09-21 | 2089, 2057 |  | 7 day week With NGT Ban | 7573623 |
| 2091 | 37200.37300.37500.38100.39300.45000.279400 | 33rd Floor | 7d | 2026-09-21 | 2026-09-28 | 2090 |  | 7 day week With NGT Ban | 7573633 |
| 2092 | 37200.37300.37500.38100.39300.45000.279500 | 34th Floor | 7d | 2026-09-28 | 2026-10-05 | 2091 |  | 7 day week With NGT Ban | 7573643 |
| 2093 | 37200.37300.37500.38100.39300.45000.279600 | 35th Floor | 7d | 2026-10-05 | 2026-10-12 | 2092 |  | 7 day week With NGT Ban | 7573653 |
| 2094 | 37200.37300.37500.38100.39300.45000.279700 | Terrace | 7d | 2026-10-12 | 2026-10-19 | 2093 |  | 7 day week With NGT Ban | 7573663 |
| 2095 | 37200.37300.37500.38100.39300.45000.279800 | Mumty & Machine Room | 7d | 2026-10-19 | 2026-10-26 | 2094 |  | 7 day week With NGT Ban | 7573673 |

| ID | WBS | Task | Duration | Start | Finish | Predecessors | Constraint | Calendar | Unique_Task_ID |
| --- | --- | --- | --- | --- | --- | --- | --- | --- | --- |
| 2096 | 37200.37300.37500.38100.39300.40500 | **Finishing work** | 667d | 2025-07-11 | 2027-08-07 |  | start no earlier than 2025-07-11 | 7 day week With NGT Ban | 7567583 |
| 2097 | 37200.37300.37500.38100.39300.40500.41500 | **Flat finishing** | 577.12d | 2025-07-11 | 2027-05-09 |  | start no earlier than 2025-07-11 | 7 day week With NGT Ban | 7567623 |
| 2098 | 37200.37300.37500.38100.39300.40500.41500.74500 | **1st Floor** | 67.25d | 2025-07-11 | 2025-09-16 |  | start no earlier than 2025-07-11 | 7 day week With NGT Ban | 7568423 |
| 2099 | 37200.37300.37500.38100.39300.40500.41500.74500.917300 | Block Work | 8d | 2025-07-21 | 2025-07-29 | 2059SS+1d |  | 7 day week With NGT Ban | 7592193 |
| 2100 | 37200.37300.37500.38100.39300.40500.41500.74500.917400 | Door Frame Fixing | 9d | 2025-07-29 | 2025-08-07 | 2099 |  | 7 day week With NGT Ban | 7592203 |
| 2101 | 37200.37300.37500.38100.39300.40500.41500.74500.917500 | Internal Plumbing Works | 8d | 2025-07-29 | 2025-08-06 | 2099 |  | 7 day week With NGT Ban | 7592213 |
| 2102 | 37200.37300.37500.38100.39300.40500.41500.74500.917600 | Waterproofing | 10d | 2025-08-06 | 2025-08-16 | 2101 |  | 7 day week With NGT Ban | 7592223 |
| 2103 | 37200.37300.37500.38100.39300.40500.41500.74500.917700 | Internal Plaster | 8d | 2025-07-11 | 2025-07-19 | 1892FS+1d |  | 7 day week With NGT Ban | 7592233 |
| 2104 | 37200.37300.37500.38100.39300.40500.41500.74500.917800 | IPS flooring work | 10d | 2025-08-16 | 2025-08-26 | 2100, 2101, 2102 |  | 7 day week With NGT Ban | 7592243 |
| 2105 | 37200.37300.37500.38100.39300.40500.41500.74500.917900 | Toilet dado work | 8d | 2025-08-16 | 2025-08-24 | 2102, 2103 |  | 7 day week With NGT Ban | 7592253 |
| 2106 | 37200.37300.37500.38100.39300.40500.41500.74500.918000 | Toilet flooring work | 8d | 2025-08-24 | 2025-09-01 | 2105 |  | 7 day week With NGT Ban | 7592263 |
| 2107 | 37200.37300.37500.38100.39300.40500.41500.74500.918100 | Living dinning flooring | 8d | 2025-08-07 | 2025-08-15 | 2100FS+0.25d |  | 7 day week With NGT Ban | 7592273 |
| 2108 | 37200.37300.37500.38100.39300.40500.41500.74500.918200 | Aluminium door-window fixing | 8d | 2025-08-26 | 2025-09-03 | 2104FS+0.25d |  | 7 day week With NGT Ban | 7592283 |
| 2109 | 37200.37300.37500.38100.39300.40500.41500.74500.918300 | Putty primer coat | 6d | 2025-08-15 | 2025-08-21 | 2107 |  | 7 day week With NGT Ban | 7592293 |
| 2110 | 37200.37300.37500.38100.39300.40500.41500.74500.918400 | Door shutter fixing | 8d | 2025-08-15 | 2025-08-23 | 2107 |  | 7 day week With NGT Ban | 7592303 |
| 2111 | 37200.37300.37500.38100.39300.40500.41500.74500.918500 | Electrical wiring work | 8d | 2025-08-23 | 2025-08-31 | 2110 |  | 7 day week With NGT Ban | 7592313 |
| 2112 | 37200.37300.37500.38100.39300.40500.41500.74500.918600 | Painting 1st coat | 8d | 2025-08-31 | 2025-09-08 | 2109, 2110, 2111 |  | 7 day week With NGT Ban | 7592323 |
| 2113 | 37200.37300.37500.38100.39300.40500.41500.74500.918700 | False ceiling | 8d | 2025-09-08 | 2025-09-16 | 2112 |  | 7 day week With NGT Ban | 7592333 |
| 2114 | 37200.37300.37500.38100.39300.40500.41500.74200 | **2nd Floor** | 67.25d | 2025-07-19 | 2025-09-25 |  | start no earlier than 2025-07-19 | 7 day week With NGT Ban | 7568433 |
| 2115 | 37200.37300.37500.38100.39300.40500.41500.74200.918800 | Block Work | 8d | 2025-07-29 | 2025-08-06 | 2099FS+0.25d |  | 7 day week With NGT Ban | 7592343 |
| 2116 | 37200.37300.37500.38100.39300.40500.41500.74200.918900 | Door Frame Fixing | 9d | 2025-08-07 | 2025-08-16 | 2115FS+0.25d |  | 7 day week With NGT Ban | 7592353 |
| 2117 | 37200.37300.37500.38100.39300.40500.41500.74200.919000 | Internal Plumbing Works | 8d | 2025-08-06 | 2025-08-14 | 2101, 2115 |  | 7 day week With NGT Ban | 7592363 |
| 2118 | 37200.37300.37500.38100.39300.40500.41500.74200.919100 | Waterproofing | 10d | 2025-08-16 | 2025-08-26 | 2102, 2117 |  | 7 day week With NGT Ban | 7592373 |
| 2119 | 37200.37300.37500.38100.39300.40500.41500.74200.919200 | Internal Plaster | 8d | 2025-07-19 | 2025-07-27 | 2103FS+0.25d |  | 7 day week With NGT Ban | 7592383 |
| 2120 | 37200.37300.37500.38100.39300.40500.41500.74200.919300 | IPS flooring work | 10d | 2025-08-26 | 2025-09-05 | 2104, 2116, 2117, 2118 |  | 7 day week With NGT Ban | 7592393 |
| 2121 | 37200.37300.37500.38100.39300.40500.41500.74200.919400 | Toilet dado work | 8d | 2025-08-26 | 2025-09-03 | 2105, 2118, 2119 |  | 7 day week With NGT Ban | 7592403 |
| 2122 | 37200.37300.37500.38100.39300.40500.41500.74200.919500 | Toilet flooring work | 8d | 2025-09-03 | 2025-09-11 | 2106, 2121 |  | 7 day week With NGT Ban | 7592413 |
| 2123 | 37200.37300.37500.38100.39300.40500.41500.74200.919600 | Living dinning flooring | 8d | 2025-08-16 | 2025-08-24 | 2107FS+0.25d |  | 7 day week With NGT Ban | 7592423 |
| 2124 | 37200.37300.37500.38100.39300.40500.41500.74200.919700 | Aluminium door-window fixing | 8d | 2025-09-04 | 2025-09-12 | 2108FS+0.25d |  | 7 day week With NGT Ban | 7592433 |
| 2125 | 37200.37300.37500.38100.39300.40500.41500.74200.919800 | Putty primer coat | 6d | 2025-08-24 | 2025-08-30 | 2109, 2123 |  | 7 day week With NGT Ban | 7592443 |
| 2126 | 37200.37300.37500.38100.39300.40500.41500.74200.919900 | Door shutter fixing | 8d | 2025-08-24 | 2025-09-01 | 2110, 2123 |  | 7 day week With NGT Ban | 7592453 |
| 2127 | 37200.37300.37500.38100.39300.40500.41500.74200.920000 | Electrical wiring work | 8d | 2025-09-01 | 2025-09-09 | 2111, 2126 |  | 7 day week With NGT Ban | 7592463 |
| 2128 | 37200.37300.37500.38100.39300.40500.41500.74200.920100 | Painting 1st coat | 8d | 2025-09-09 | 2025-09-17 | 2112, 2125, 2126, 2127 |  | 7 day week With NGT Ban | 7592473 |
| 2129 | 37200.37300.37500.38100.39300.40500.41500.74200.920200 | False ceiling | 8d | 2025-09-17 | 2025-09-25 | 2113, 2128 |  | 7 day week With NGT Ban | 7592483 |

| ID | WBS | Task | Duration | Start | Finish | Predecessors | Constraint | Calendar | Unique_Task_ID |
| --- | --- | --- | --- | --- | --- | --- | --- | --- | --- |
| 2130 | 37200.37300.37500.38100.39300.40500.41500.72300 | **3rd Floor** | 71.25d | 2025-07-28 | 2025-10-07 |  | start no earlier than 2025-07-28 | 7 day week With NGT Ban | 7568443 |
| 2131 | 37200.37300.37500.38100.39300.40500.41500.72300.920300 | Block Work | 8d | 2025-08-07 | 2025-08-15 | 2115FS+0.25d |  | 7 day week With NGT Ban | 7592493 |
| 2132 | 37200.37300.37500.38100.39300.40500.41500.72300.920400 | Door Frame Fixing | 9d | 2025-08-16 | 2025-08-25 | 2116, 2131 |  | 7 day week With NGT Ban | 7592503 |
| 2133 | 37200.37300.37500.38100.39300.40500.41500.72300.920500 | Internal Plumbing Works | 8d | 2025-08-15 | 2025-08-23 | 2117, 2131 |  | 7 day week With NGT Ban | 7592513 |
| 2134 | 37200.37300.37500.38100.39300.40500.41500.72300.920600 | Waterproofing | 10d | 2025-08-26 | 2025-09-05 | 2118, 2133 |  | 7 day week With NGT Ban | 7592523 |
| 2135 | 37200.37300.37500.38100.39300.40500.41500.72300.920700 | Internal Plaster | 8d | 2025-07-28 | 2025-08-05 | 2119FS+0.25d |  | 7 day week With NGT Ban | 7592533 |
| 2136 | 37200.37300.37500.38100.39300.40500.41500.72300.920800 | IPS flooring work | 10d | 2025-09-05 | 2025-09-15 | 2120, 2132, 2134, 2135 |  | 7 day week With NGT Ban | 7592543 |
| 2137 | 37200.37300.37500.38100.39300.40500.41500.72300.920900 | Toilet dado work | 8d | 2025-09-05 | 2025-09-13 | 2121, 2134, 2135 |  | 7 day week With NGT Ban | 7592553 |
| 2138 | 37200.37300.37500.38100.39300.40500.41500.72300.921000 | Toilet flooring work | 8d | 2025-09-13 | 2025-09-21 | 2122, 2137 |  | 7 day week With NGT Ban | 7592563 |
| 2139 | 37200.37300.37500.38100.39300.40500.41500.72300.921100 | Living dinning flooring | 12d | 2025-08-24 | 2025-09-05 | 2123FS+0.25d |  | 7 day week With NGT Ban | 7592573 |
| 2140 | 37200.37300.37500.38100.39300.40500.41500.72300.921200 | Aluminium door-window fixing | 12d | 2025-09-12 | 2025-09-24 | 2124FS+0.25d |  | 7 day week With NGT Ban | 7592583 |
| 2141 | 37200.37300.37500.38100.39300.40500.41500.72300.921300 | Putty primer coat | 6d | 2025-09-05 | 2025-09-11 | 2125, 2139 |  | 7 day week With NGT Ban | 7592593 |
| 2142 | 37200.37300.37500.38100.39300.40500.41500.72300.921400 | Door shutter fixing | 8d | 2025-09-05 | 2025-09-13 | 2126, 2139 |  | 7 day week With NGT Ban | 7592603 |
| 2143 | 37200.37300.37500.38100.39300.40500.41500.72300.921500 | Electrical wiring work | 8d | 2025-09-13 | 2025-09-21 | 2127, 2142 |  | 7 day week With NGT Ban | 7592613 |
| 2144 | 37200.37300.37500.38100.39300.40500.41500.72300.921600 | Painting 1st coat | 8d | 2025-09-21 | 2025-09-29 | 2128, 2141, 2142, 2143 |  | 7 day week With NGT Ban | 7592623 |
| 2145 | 37200.37300.37500.38100.39300.40500.41500.72300.921700 | False ceiling | 8d | 2025-09-29 | 2025-10-07 | 2129, 2144 |  | 7 day week With NGT Ban | 7592633 |
| 2146 | 37200.37300.37500.38100.39300.40500.41500.71200 | **4th Floor** | 75.25d | 2025-08-05 | 2025-10-19 |  | start no earlier than 2025-08-05 | 7 day week With NGT Ban | 7568453 |
| 2147 | 37200.37300.37500.38100.39300.40500.41500.71200.921800 | Block Work | 8d | 2025-08-15 | 2025-08-23 | 2131FS+0.25d |  | 7 day week With NGT Ban | 7592643 |
| 2148 | 37200.37300.37500.38100.39300.40500.41500.71200.921900 | Door Frame Fixing | 9d | 2025-08-25 | 2025-09-03 | 2132, 2147 |  | 7 day week With NGT Ban | 7592653 |
| 2149 | 37200.37300.37500.38100.39300.40500.41500.71200.922000 | Internal Plumbing Works | 8d | 2025-08-23 | 2025-08-31 | 2133, 2147 |  | 7 day week With NGT Ban | 7592663 |
| 2150 | 37200.37300.37500.38100.39300.40500.41500.71200.922100 | Waterproofing | 10d | 2025-09-05 | 2025-09-15 | 2134, 2149 |  | 7 day week With NGT Ban | 7592673 |
| 2151 | 37200.37300.37500.38100.39300.40500.41500.71200.922200 | Internal Plaster | 8d | 2025-08-05 | 2025-08-13 | 2135FS+0.25d |  | 7 day week With NGT Ban | 7592683 |
| 2152 | 37200.37300.37500.38100.39300.40500.41500.71200.922300 | IPS flooring work | 10d | 2025-09-15 | 2025-09-25 | 2136, 2148, 2150, 2151 |  | 7 day week With NGT Ban | 7592693 |
| 2153 | 37200.37300.37500.38100.39300.40500.41500.71200.922400 | Toilet dado work | 8d | 2025-09-15 | 2025-09-23 | 2137, 2150, 2151 |  | 7 day week With NGT Ban | 7592703 |
| 2154 | 37200.37300.37500.38100.39300.40500.41500.71200.922500 | Toilet flooring work | 8d | 2025-09-23 | 2025-10-01 | 2138, 2153 |  | 7 day week With NGT Ban | 7592713 |
| 2155 | 37200.37300.37500.38100.39300.40500.41500.71200.922600 | Living dinning flooring | 12d | 2025-09-05 | 2025-09-17 | 2139FS+0.25d |  | 7 day week With NGT Ban | 7592723 |
| 2156 | 37200.37300.37500.38100.39300.40500.41500.71200.922700 | Aluminium door-window fixing | 12d | 2025-09-24 | 2025-10-06 | 2140FS+0.25d |  | 7 day week With NGT Ban | 7592733 |
| 2157 | 37200.37300.37500.38100.39300.40500.41500.71200.922800 | Putty primer coat | 6d | 2025-09-17 | 2025-09-23 | 2141, 2155 |  | 7 day week With NGT Ban | 7592743 |
| 2158 | 37200.37300.37500.38100.39300.40500.41500.71200.922900 | Door shutter fixing | 8d | 2025-09-17 | 2025-09-25 | 2142, 2155 |  | 7 day week With NGT Ban | 7592753 |
| 2159 | 37200.37300.37500.38100.39300.40500.41500.71200.923000 | Electrical wiring work | 8d | 2025-09-25 | 2025-10-03 | 2143, 2158 |  | 7 day week With NGT Ban | 7592763 |
| 2160 | 37200.37300.37500.38100.39300.40500.41500.71200.923100 | Painting 1st coat | 8d | 2025-10-03 | 2025-10-11 | 2144, 2157, 2158, 2159 |  | 7 day week With NGT Ban | 7592773 |
| 2161 | 37200.37300.37500.38100.39300.40500.41500.71200.923200 | False ceiling | 8d | 2025-10-11 | 2025-10-19 | 2145, 2160 |  | 7 day week With NGT Ban | 7592783 |

| ID | WBS | Task | Duration | Start | Finish | Predecessors | Constraint | Calendar | Unique_Task_ID |
| --- | --- | --- | --- | --- | --- | --- | --- | --- | --- |
| 2162 | 37200.37300.37500.38100.39300.40500.41500.70400 | **5th Floor** | 79.25d | 2025-08-13 | 2025-10-31 |  | start no earlier than 2025-08-13 | 7 day week With NGT Ban | 7568463 |
| 2163 | 37200.37300.37500.38100.39300.40500.41500.70400.923300 | Block Work | 8d | 2025-08-23 | 2025-08-31 | 2147FS+0.25d |  | 7 day week With NGT Ban | 7592793 |
| 2164 | 37200.37300.37500.38100.39300.40500.41500.70400.923400 | Door Frame Fixing | 9d | 2025-09-03 | 2025-09-12 | 2148, 2163 |  | 7 day week With NGT Ban | 7592803 |
| 2165 | 37200.37300.37500.38100.39300.40500.41500.70400.923500 | Internal Plumbing Works | 8d | 2025-08-31 | 2025-09-08 | 2149, 2163 |  | 7 day week With NGT Ban | 7592813 |
| 2166 | 37200.37300.37500.38100.39300.40500.41500.70400.923600 | Waterproofing | 10d | 2025-09-15 | 2025-09-25 | 2150, 2165 |  | 7 day week With NGT Ban | 7592823 |
| 2167 | 37200.37300.37500.38100.39300.40500.41500.70400.923700 | Internal Plaster | 8d | 2025-08-13 | 2025-08-21 | 2151FS+0.25d |  | 7 day week With NGT Ban | 7592833 |
| 2168 | 37200.37300.37500.38100.39300.40500.41500.70400.923800 | IPS flooring work | 10d | 2025-09-25 | 2025-10-05 | 2152, 2164, 2166, 2167 |  | 7 day week With NGT Ban | 7592843 |
| 2169 | 37200.37300.37500.38100.39300.40500.41500.70400.923900 | Toilet dado work | 8d | 2025-09-25 | 2025-10-03 | 2153, 2166, 2167 |  | 7 day week With NGT Ban | 7592853 |
| 2170 | 37200.37300.37500.38100.39300.40500.41500.70400.924000 | Toilet flooring work | 8d | 2025-10-03 | 2025-10-11 | 2154, 2169 |  | 7 day week With NGT Ban | 7592863 |
| 2171 | 37200.37300.37500.38100.39300.40500.41500.70400.924100 | Living dinning flooring | 12d | 2025-09-17 | 2025-09-29 | 2155FS+0.25d |  | 7 day week With NGT Ban | 7592873 |
| 2172 | 37200.37300.37500.38100.39300.40500.41500.70400.924200 | Aluminium door-window fixing | 12d | 2025-10-06 | 2025-10-18 | 2156FS+0.25d |  | 7 day week With NGT Ban | 7592883 |
| 2173 | 37200.37300.37500.38100.39300.40500.41500.70400.924300 | Putty primer coat | 6d | 2025-09-29 | 2025-10-05 | 2157, 2171 |  | 7 day week With NGT Ban | 7592893 |
| 2174 | 37200.37300.37500.38100.39300.40500.41500.70400.924400 | Door shutter fixing | 8d | 2025-09-29 | 2025-10-07 | 2158, 2171 |  | 7 day week With NGT Ban | 7592903 |
| 2175 | 37200.37300.37500.38100.39300.40500.41500.70400.924500 | Electrical wiring work | 8d | 2025-10-07 | 2025-10-15 | 2159, 2174 |  | 7 day week With NGT Ban | 7592913 |
| 2176 | 37200.37300.37500.38100.39300.40500.41500.70400.924600 | Painting 1st coat | 8d | 2025-10-15 | 2025-10-23 | 2160, 2173, 2174, 2175 |  | 7 day week With NGT Ban | 7592923 |
| 2177 | 37200.37300.37500.38100.39300.40500.41500.70400.924700 | False ceiling | 8d | 2025-10-23 | 2025-10-31 | 2161, 2176 |  | 7 day week With NGT Ban | 7592933 |
| 2178 | 37200.37300.37500.38100.39300.40500.41500.62600 | **6th Floor** | 83.25d | 2025-08-21 | 2025-12-28 |  | start no earlier than 2025-08-21 | 7 day week With NGT Ban | 7568473 |
| 2179 | 37200.37300.37500.38100.39300.40500.41500.62600.924800 | Block Work | 8d | 2025-08-31 | 2025-09-08 | 2163FS+0.25d |  | 7 day week With NGT Ban | 118100 |
| 2180 | 37200.37300.37500.38100.39300.40500.41500.62600.924900 | Door Frame Fixing | 9d | 2025-09-12 | 2025-09-21 | 1912, 2164 |  | 7 day week With NGT Ban | 118120 |
| 2181 | 37200.37300.37500.38100.39300.40500.41500.62600.925000 | Internal Plumbing Works | 8d | 2025-09-08 | 2025-09-16 | 2165, 2179 |  | 7 day week With NGT Ban | 118130 |
| 2182 | 37200.37300.37500.38100.39300.40500.41500.62600.925100 | Waterproofing | 10d | 2025-09-25 | 2025-10-05 | 2166, 2181 |  | 7 day week With NGT Ban | 118140 |
| 2183 | 37200.37300.37500.38100.39300.40500.41500.62600.925200 | Internal Plaster | 8d | 2025-08-21 | 2025-08-29 | 2167FS+0.25d |  | 7 day week With NGT Ban | 118150 |
| 2184 | 37200.37300.37500.38100.39300.40500.41500.62600.925300 | IPS flooring work | 10d | 2025-10-05 | 2025-10-15 | 2168, 2180, 2182, 2183 |  | 7 day week With NGT Ban | 118160 |
| 2185 | 37200.37300.37500.38100.39300.40500.41500.62600.925400 | Toilet dado work | 8d | 2025-10-05 | 2025-10-13 | 2169, 2182, 2183 |  | 7 day week With NGT Ban | 118170 |
| 2186 | 37200.37300.37500.38100.39300.40500.41500.62600.925500 | Toilet flooring work | 8d | 2025-10-13 | 2025-10-21 | 2170, 2185 |  | 7 day week With NGT Ban | 118180 |
| 2187 | 37200.37300.37500.38100.39300.40500.41500.62600.925600 | Living dinning flooring | 12d | 2025-09-30 | 2025-10-12 | 2171FS+0.25d |  | 7 day week With NGT Ban | 118190 |
| 2188 | 37200.37300.37500.38100.39300.40500.41500.62600.925700 | Aluminium door-window fixing | 12d | 2025-10-19 | 2025-10-31 | 2172FS+0.25d |  | 7 day week With NGT Ban | 118200 |
| 2189 | 37200.37300.37500.38100.39300.40500.41500.62600.925800 | Putty primer coat | 6d | 2025-10-12 | 2025-10-18 | 2173, 2187 |  | 7 day week With NGT Ban | 118210 |
| 2190 | 37200.37300.37500.38100.39300.40500.41500.62600.925900 | Door shutter fixing | 8d | 2025-10-12 | 2025-10-20 | 2174, 2187 |  | 7 day week With NGT Ban | 118220 |
| 2191 | 37200.37300.37500.38100.39300.40500.41500.62600.926000 | Electrical wiring work | 8d | 2025-10-20 | 2025-10-28 | 2175, 2190 |  | 7 day week With NGT Ban | 118230 |
| 2192 | 37200.37300.37500.38100.39300.40500.41500.62600.926100 | Painting 1st coat | 8d | 2025-10-28 | 2025-12-20 | 2176, 2189, 2190, 2191 |  | 7 day week With NGT Ban | 118240 |
| 2193 | 37200.37300.37500.38100.39300.40500.41500.62600.926200 | False ceiling | 8d | 2025-12-20 | 2025-12-28 | 2177, 2192 |  | 7 day week With NGT Ban | 118250 |

| ID | WBS | Task | Duration | Start | Finish | Predecessors | Constraint | Calendar | Unique_Task_ID |
| --- | --- | --- | --- | --- | --- | --- | --- | --- | --- |
| 2194 | 37200.37300.37500.38100.39300.40500.41500.91800 | **7th Floor** | 87.25d | 2025-08-30 | 2026-01-09 |  | start no earlier than 2025-08-30 | 7 day week With NGT Ban | 7568483 |
| 2195 | 37200.37300.37500.38100.39300.40500.41500.91800.926300 | Block Work | 8d | 2025-09-09 | 2025-09-17 | 2179FS+0.25d |  | 7 day week With NGT Ban | 118260 |
| 2196 | 37200.37300.37500.38100.39300.40500.41500.91800.926400 | Door Frame Fixing | 9d | 2025-09-21 | 2025-09-30 | 2180, 2195 |  | 7 day week With NGT Ban | 118280 |
| 2197 | 37200.37300.37500.38100.39300.40500.41500.91800.926500 | Internal Plumbing Works | 8d | 2025-09-17 | 2025-09-25 | 2181, 2195 |  | 7 day week With NGT Ban | 118290 |
| 2198 | 37200.37300.37500.38100.39300.40500.41500.91800.926600 | Waterproofing | 10d | 2025-10-05 | 2025-10-15 | 2182, 2197 |  | 7 day week With NGT Ban | 118300 |
| 2199 | 37200.37300.37500.38100.39300.40500.41500.91800.926700 | Internal Plaster | 8d | 2025-08-30 | 2025-09-07 | 2183FS+0.25d |  | 7 day week With NGT Ban | 118310 |
| 2200 | 37200.37300.37500.38100.39300.40500.41500.91800.926800 | IPS flooring work | 10d | 2025-10-15 | 2025-10-25 | 2184, 2196, 2198, 2199 |  | 7 day week With NGT Ban | 118320 |
| 2201 | 37200.37300.37500.38100.39300.40500.41500.91800.926900 | Toilet dado work | 8d | 2025-10-15 | 2025-10-23 | 2185, 2198, 2199 |  | 7 day week With NGT Ban | 118330 |
| 2202 | 37200.37300.37500.38100.39300.40500.41500.91800.927000 | Toilet flooring work | 8d | 2025-10-23 | 2025-10-31 | 2186, 2201 |  | 7 day week With NGT Ban | 118340 |
| 2203 | 37200.37300.37500.38100.39300.40500.41500.91800.927100 | Living dinning flooring | 12d | 2025-10-12 | 2025-10-24 | 2187FS+0.25d |  | 7 day week With NGT Ban | 118350 |
| 2204 | 37200.37300.37500.38100.39300.40500.41500.91800.927200 | Aluminium door-window fixing | 12d | 2025-10-31 | 2025-12-27 | 2188FS+0.25d |  | 7 day week With NGT Ban | 118360 |
| 2205 | 37200.37300.37500.38100.39300.40500.41500.91800.927300 | Putty primer coat | 6d | 2025-10-24 | 2025-10-30 | 2189, 2203 |  | 7 day week With NGT Ban | 118370 |
| 2206 | 37200.37300.37500.38100.39300.40500.41500.91800.927400 | Door shutter fixing | 8d | 2025-10-24 | 2025-12-16 | 2190, 2203 |  | 7 day week With NGT Ban | 118380 |
| 2207 | 37200.37300.37500.38100.39300.40500.41500.91800.927500 | Electrical wiring work | 8d | 2025-12-16 | 2025-12-24 | 2191, 2206 |  | 7 day week With NGT Ban | 118390 |
| 2208 | 37200.37300.37500.38100.39300.40500.41500.91800.927600 | Painting 1st coat | 8d | 2025-12-24 | 2026-01-01 | 2192, 2205, 2206, 2207 |  | 7 day week With NGT Ban | 118400 |
| 2209 | 37200.37300.37500.38100.39300.40500.41500.91800.927700 | False ceiling | 8d | 2026-01-01 | 2026-01-09 | 2193, 2208 |  | 7 day week With NGT Ban | 118410 |
| 2210 | 37200.37300.37500.38100.39300.40500.41500.61900 | **8th Floor** | 91.25d | 2025-09-07 | 2026-01-21 |  | start no earlier than 2025-09-07 | 7 day week With NGT Ban | 7568493 |
| 2211 | 37200.37300.37500.38100.39300.40500.41500.61900.927800 | Block Work | 8d | 2025-09-17 | 2025-09-25 | 2195FS+0.25d |  | 7 day week With NGT Ban | 118420 |
| 2212 | 37200.37300.37500.38100.39300.40500.41500.61900.927900 | Door Frame Fixing | 9d | 2025-09-30 | 2025-10-09 | 2196, 2211 |  | 7 day week With NGT Ban | 118440 |
| 2213 | 37200.37300.37500.38100.39300.40500.41500.61900.928000 | Internal Plumbing Works | 8d | 2025-09-25 | 2025-10-03 | 2197, 2211 |  | 7 day week With NGT Ban | 118450 |
| 2214 | 37200.37300.37500.38100.39300.40500.41500.61900.928100 | Waterproofing | 10d | 2025-10-15 | 2025-10-25 | 2198, 2213 |  | 7 day week With NGT Ban | 118460 |
| 2215 | 37200.37300.37500.38100.39300.40500.41500.61900.928200 | Internal Plaster | 8d | 2025-09-07 | 2025-09-15 | 2199FS+0.25d |  | 7 day week With NGT Ban | 118470 |
| 2216 | 37200.37300.37500.38100.39300.40500.41500.61900.928300 | IPS flooring work | 10d | 2025-10-25 | 2025-12-19 | 2200, 2212, 2214, 2215 |  | 7 day week With NGT Ban | 118480 |
| 2217 | 37200.37300.37500.38100.39300.40500.41500.61900.928400 | Toilet dado work | 8d | 2025-10-25 | 2025-12-17 | 2201, 2214, 2215 |  | 7 day week With NGT Ban | 118490 |
| 2218 | 37200.37300.37500.38100.39300.40500.41500.61900.928500 | Toilet flooring work | 8d | 2025-12-17 | 2025-12-25 | 2202, 2217 |  | 7 day week With NGT Ban | 118500 |
| 2219 | 37200.37300.37500.38100.39300.40500.41500.61900.928600 | Living dinning flooring | 12d | 2025-10-24 | 2025-12-20 | 2203FS+0.25d |  | 7 day week With NGT Ban | 118510 |
| 2220 | 37200.37300.37500.38100.39300.40500.41500.61900.928700 | Aluminium door-window fixing | 12d | 2025-12-27 | 2026-01-08 | 2204FS+0.25d |  | 7 day week With NGT Ban | 118520 |
| 2221 | 37200.37300.37500.38100.39300.40500.41500.61900.928800 | Putty primer coat | 6d | 2025-12-20 | 2025-12-26 | 2205, 2219 |  | 7 day week With NGT Ban | 118530 |
| 2222 | 37200.37300.37500.38100.39300.40500.41500.61900.928900 | Door shutter fixing | 8d | 2025-12-20 | 2025-12-28 | 2206, 2219 |  | 7 day week With NGT Ban | 118540 |
| 2223 | 37200.37300.37500.38100.39300.40500.41500.61900.929000 | Electrical wiring work | 8d | 2025-12-28 | 2026-01-05 | 2207, 2222 |  | 7 day week With NGT Ban | 118550 |
| 2224 | 37200.37300.37500.38100.39300.40500.41500.61900.929100 | Painting 1st coat | 8d | 2026-01-05 | 2026-01-13 | 2208, 2221, 2222, 2223 |  | 7 day week With NGT Ban | 118560 |
| 2225 | 37200.37300.37500.38100.39300.40500.41500.61900.929200 | False ceiling | 8d | 2026-01-13 | 2026-01-21 | 2209, 2224 |  | 7 day week With NGT Ban | 118570 |

| ID | WBS | Task | Duration | Start | Finish | Predecessors | Constraint | Calendar | Unique_Task_ID |
| --- | --- | --- | --- | --- | --- | --- | --- | --- | --- |
| 2226 | 37200.37300.37500.38100.39300.40500.41500.67300 | **9th Floor** | 95.25d | 2025-09-15 | 2026-02-02 |  | start no earlier than 2025-09-15 | 7 day week With NGT Ban | 7568503 |
| 2227 | 37200.37300.37500.38100.39300.40500.41500.67300.929300 | Block Work | 8d | 2025-09-25 | 2025-10-03 | 2211FS+0.25d |  | 7 day week With NGT Ban | 118580 |
| 2228 | 37200.37300.37500.38100.39300.40500.41500.67300.929400 | Door Frame Fixing | 9d | 2025-10-09 | 2025-10-18 | 2212, 2227 |  | 7 day week With NGT Ban | 118600 |
| 2229 | 37200.37300.37500.38100.39300.40500.41500.67300.929500 | Internal Plumbing Works | 8d | 2025-10-03 | 2025-10-11 | 2213, 2227 |  | 7 day week With NGT Ban | 118610 |
| 2230 | 37200.37300.37500.38100.39300.40500.41500.67300.929600 | Waterproofing | 10d | 2025-10-25 | 2025-12-19 | 2214, 2229 |  | 7 day week With NGT Ban | 118620 |
| 2231 | 37200.37300.37500.38100.39300.40500.41500.67300.929700 | Internal Plaster | 8d | 2025-09-15 | 2025-09-23 | 2215FS+0.25d |  | 7 day week With NGT Ban | 118630 |
| 2232 | 37200.37300.37500.38100.39300.40500.41500.67300.929800 | IPS flooring work | 10d | 2025-12-19 | 2025-12-29 | 2216, 2228, 2230, 2231 |  | 7 day week With NGT Ban | 118640 |
| 2233 | 37200.37300.37500.38100.39300.40500.41500.67300.929900 | Toilet dado work | 8d | 2025-12-19 | 2025-12-27 | 2217, 2230, 2231 |  | 7 day week With NGT Ban | 118650 |
| 2234 | 37200.37300.37500.38100.39300.40500.41500.67300.930000 | Toilet flooring work | 8d | 2025-12-27 | 2026-01-04 | 2218, 2233 |  | 7 day week With NGT Ban | 118660 |
| 2235 | 37200.37300.37500.38100.39300.40500.41500.67300.930100 | Living dinning flooring | 12d | 2025-12-20 | 2026-01-01 | 2219FS+0.25d |  | 7 day week With NGT Ban | 118670 |
| 2236 | 37200.37300.37500.38100.39300.40500.41500.67300.930200 | Aluminium door-window fixing | 12d | 2026-01-08 | 2026-01-20 | 2220FS+0.25d |  | 7 day week With NGT Ban | 118680 |
| 2237 | 37200.37300.37500.38100.39300.40500.41500.67300.930300 | Putty primer coat | 6d | 2026-01-01 | 2026-01-07 | 2221, 2235 |  | 7 day week With NGT Ban | 118690 |
| 2238 | 37200.37300.37500.38100.39300.40500.41500.67300.930400 | Door shutter fixing | 8d | 2026-01-01 | 2026-01-09 | 2222, 2235 |  | 7 day week With NGT Ban | 118700 |
| 2239 | 37200.37300.37500.38100.39300.40500.41500.67300.930500 | Electrical wiring work | 8d | 2026-01-09 | 2026-01-17 | 2223, 2238 |  | 7 day week With NGT Ban | 118710 |
| 2240 | 37200.37300.37500.38100.39300.40500.41500.67300.930600 | Painting 1st coat | 8d | 2026-01-17 | 2026-01-25 | 2224, 2237, 2238, 2239 |  | 7 day week With NGT Ban | 118720 |
| 2241 | 37200.37300.37500.38100.39300.40500.41500.67300.930700 | False ceiling | 8d | 2026-01-25 | 2026-02-02 | 2225, 2240 |  | 7 day week With NGT Ban | 118730 |
| 2242 | 37200.37300.37500.38100.39300.40500.41500.90300 | **10th Floor** | 99.25d | 2025-09-23 | 2026-02-15 |  | start no earlier than 2025-09-23 | 7 day week With NGT Ban | 7568513 |
| 2243 | 37200.37300.37500.38100.39300.40500.41500.90300.930800 | Block Work | 8d | 2025-10-03 | 2025-10-11 | 2227FS+0.25d |  | 7 day week With NGT Ban | 118740 |
| 2244 | 37200.37300.37500.38100.39300.40500.41500.90300.930900 | Door Frame Fixing | 9d | 2025-10-18 | 2025-10-27 | 2228, 2243 |  | 7 day week With NGT Ban | 118760 |
| 2245 | 37200.37300.37500.38100.39300.40500.41500.90300.931000 | Internal Plumbing Works | 8d | 2025-10-11 | 2025-10-19 | 2229, 2243 |  | 7 day week With NGT Ban | 118770 |
| 2246 | 37200.37300.37500.38100.39300.40500.41500.90300.931100 | Waterproofing | 10d | 2025-12-19 | 2025-12-29 | 2230, 2245 |  | 7 day week With NGT Ban | 118780 |
| 2247 | 37200.37300.37500.38100.39300.40500.41500.90300.931200 | Internal Plaster | 8d | 2025-09-23 | 2025-10-01 | 2231FS+0.25d |  | 7 day week With NGT Ban | 118790 |
| 2248 | 37200.37300.37500.38100.39300.40500.41500.90300.931300 | IPS flooring work | 10d | 2025-12-29 | 2026-01-08 | 2232, 2244, 2246, 2247 |  | 7 day week With NGT Ban | 118800 |
| 2249 | 37200.37300.37500.38100.39300.40500.41500.90300.931400 | Toilet dado work | 8d | 2025-12-29 | 2026-01-06 | 2233, 2246, 2247 |  | 7 day week With NGT Ban | 118810 |
| 2250 | 37200.37300.37500.38100.39300.40500.41500.90300.931500 | Toilet flooring work | 8d | 2026-01-06 | 2026-01-14 | 2234, 2249 |  | 7 day week With NGT Ban | 118820 |
| 2251 | 37200.37300.37500.38100.39300.40500.41500.90300.931600 | Living dinning flooring | 12d | 2026-01-02 | 2026-01-14 | 2235FS+0.25d |  | 7 day week With NGT Ban | 118830 |
| 2252 | 37200.37300.37500.38100.39300.40500.41500.90300.931700 | Aluminium door-window fixing | 12d | 2026-01-21 | 2026-02-02 | 2236FS+0.25d |  | 7 day week With NGT Ban | 118840 |
| 2253 | 37200.37300.37500.38100.39300.40500.41500.90300.931800 | Putty primer coat | 6d | 2026-01-14 | 2026-01-20 | 2237, 2251 |  | 7 day week With NGT Ban | 118850 |
| 2254 | 37200.37300.37500.38100.39300.40500.41500.90300.931900 | Door shutter fixing | 8d | 2026-01-14 | 2026-01-22 | 2238, 2251 |  | 7 day week With NGT Ban | 118860 |
| 2255 | 37200.37300.37500.38100.39300.40500.41500.90300.932000 | Electrical wiring work | 8d | 2026-01-22 | 2026-01-30 | 2239, 2254 |  | 7 day week With NGT Ban | 118870 |
| 2256 | 37200.37300.37500.38100.39300.40500.41500.90300.932100 | Painting 1st coat | 8d | 2026-01-30 | 2026-02-07 | 2240, 2253, 2254, 2255 |  | 7 day week With NGT Ban | 118880 |
| 2257 | 37200.37300.37500.38100.39300.40500.41500.90300.932200 | False ceiling | 8d | 2026-02-07 | 2026-02-15 | 2241, 2256 |  | 7 day week With NGT Ban | 118890 |

| ID | WBS | Task | Duration | Start | Finish | Predecessors | Constraint | Calendar | Unique_Task_ID |
| --- | --- | --- | --- | --- | --- | --- | --- | --- | --- |
| 2258 | 37200.37300.37500.38100.39300.40500.41500.90200 | **11th Floor** | 93.25d | 2025-10-12 | 2026-02-27 |  | start no earlier than 2025-10-12 | 7 day week With NGT Ban | 7568523 |
| 2259 | 37200.37300.37500.38100.39300.40500.41500.90200.932300 | Block Work | 8d | 2025-10-12 | 2025-10-20 | 2243FS+0.25d |  | 7 day week With NGT Ban | 118900 |
| 2260 | 37200.37300.37500.38100.39300.40500.41500.90200.932400 | Door Frame Fixing | 9d | 2025-10-27 | 2025-12-20 | 2244, 2259 |  | 7 day week With NGT Ban | 118920 |
| 2261 | 37200.37300.37500.38100.39300.40500.41500.90200.932500 | Internal Plumbing Works | 8d | 2025-10-20 | 2025-10-28 | 2245, 2259 |  | 7 day week With NGT Ban | 118930 |
| 2262 | 37200.37300.37500.38100.39300.40500.41500.90200.932600 | Waterproofing | 10d | 2025-12-29 | 2026-01-08 | 2246, 2261 |  | 7 day week With NGT Ban | 118940 |
| 2263 | 37200.37300.37500.38100.39300.40500.41500.90200.932700 | Internal Plaster | 8d | 2025-10-20 | 2025-10-28 | 2247FS+0.25d, 2259FS+0.25d |  | 7 day week With NGT Ban | 118950 |
| 2264 | 37200.37300.37500.38100.39300.40500.41500.90200.932800 | IPS flooring work | 10d | 2026-01-08 | 2026-01-18 | 2248, 2260, 2261, 2262 |  | 7 day week With NGT Ban | 118960 |
| 2265 | 37200.37300.37500.38100.39300.40500.41500.90200.932900 | Toilet dado work | 8d | 2026-01-08 | 2026-01-16 | 2249, 2262, 2263 |  | 7 day week With NGT Ban | 118970 |
| 2266 | 37200.37300.37500.38100.39300.40500.41500.90200.933000 | Toilet flooring work | 8d | 2026-01-16 | 2026-01-24 | 2250, 2265 |  | 7 day week With NGT Ban | 118980 |
| 2267 | 37200.37300.37500.38100.39300.40500.41500.90200.933100 | Living dinning flooring | 12d | 2026-01-14 | 2026-01-26 | 2251FS+0.25d |  | 7 day week With NGT Ban | 118990 |
| 2268 | 37200.37300.37500.38100.39300.40500.41500.90200.933200 | Aluminium door-window fixing | 12d | 2026-02-02 | 2026-02-14 | 2252FS+0.25d |  | 7 day week With NGT Ban | 119000 |
| 2269 | 37200.37300.37500.38100.39300.40500.41500.90200.933300 | Putty primer coat | 6d | 2026-01-26 | 2026-02-01 | 2253, 2267 |  | 7 day week With NGT Ban | 119010 |
| 2270 | 37200.37300.37500.38100.39300.40500.41500.90200.933400 | Door shutter fixing | 8d | 2026-01-26 | 2026-02-03 | 2254, 2267 |  | 7 day week With NGT Ban | 119020 |
| 2271 | 37200.37300.37500.38100.39300.40500.41500.90200.933500 | Electrical wiring work | 8d | 2026-02-03 | 2026-02-11 | 2255, 2270 |  | 7 day week With NGT Ban | 119030 |
| 2272 | 37200.37300.37500.38100.39300.40500.41500.90200.933600 | Painting 1st coat | 8d | 2026-02-11 | 2026-02-19 | 2256, 2269, 2270, 2271 |  | 7 day week With NGT Ban | 119040 |
| 2273 | 37200.37300.37500.38100.39300.40500.41500.90200.933700 | False ceiling | 8d | 2026-02-19 | 2026-02-27 | 2257, 2272 |  | 7 day week With NGT Ban | 119050 |
| 2274 | 37200.37300.37500.38100.39300.40500.41500.90100 | **12th Floor** | 105.25d | 2025-10-20 | 2026-03-19 |  | start no earlier than 2025-10-20 | 7 day week With NGT Ban | 7568533 |
| 2275 | 37200.37300.37500.38100.39300.40500.41500.90100.933800 | Block Work | 8d | 2025-10-20 | 2025-10-28 | 2259FS+0.25d |  | 7 day week With NGT Ban | 119060 |
| 2276 | 37200.37300.37500.38100.39300.40500.41500.90100.933900 | Door Frame Fixing | 9d | 2025-12-20 | 2025-12-29 | 2260, 2275 |  | 7 day week With NGT Ban | 119080 |
| 2277 | 37200.37300.37500.38100.39300.40500.41500.90100.934000 | Internal Plumbing Works | 8d | 2025-10-28 | 2025-12-20 | 2261, 2275 |  | 7 day week With NGT Ban | 119090 |
| 2278 | 37200.37300.37500.38100.39300.40500.41500.90100.934100 | Waterproofing | 10d | 2026-01-08 | 2026-01-18 | 2262, 2277 |  | 7 day week With NGT Ban | 119100 |
| 2279 | 37200.37300.37500.38100.39300.40500.41500.90100.934200 | Internal Plaster | 8d | 2025-10-28 | 2025-12-20 | 2263FS+0.25d, 2275FS+0.25d |  | 7 day week With NGT Ban | 119110 |
| 2280 | 37200.37300.37500.38100.39300.40500.41500.90100.934300 | IPS flooring work | 10d | 2026-01-18 | 2026-01-28 | 2264, 2276, 2277, 2278 |  | 7 day week With NGT Ban | 119120 |
| 2281 | 37200.37300.37500.38100.39300.40500.41500.90100.934400 | Toilet dado work | 8d | 2026-01-18 | 2026-01-26 | 2265, 2278, 2279 |  | 7 day week With NGT Ban | 119130 |
| 2282 | 37200.37300.37500.38100.39300.40500.41500.90100.934500 | Toilet flooring work | 8d | 2026-01-26 | 2026-02-03 | 2266, 2281 |  | 7 day week With NGT Ban | 119140 |
| 2283 | 37200.37300.37500.38100.39300.40500.41500.90100.934600 | Living dinning flooring | 12d | 2026-02-03 | 2026-02-15 | 2267, 2276, 2282 |  | 7 day week With NGT Ban | 119150 |
| 2284 | 37200.37300.37500.38100.39300.40500.41500.90100.934700 | Aluminium door-window fixing | 12d | 2026-02-15 | 2026-02-27 | 2268, 2280, 2283 |  | 7 day week With NGT Ban | 119160 |
| 2285 | 37200.37300.37500.38100.39300.40500.41500.90100.934800 | Putty primer coat | 6d | 2026-02-15 | 2026-02-21 | 2269, 2283 |  | 7 day week With NGT Ban | 119170 |
| 2286 | 37200.37300.37500.38100.39300.40500.41500.90100.934900 | Door shutter fixing | 8d | 2026-02-15 | 2026-02-23 | 2270, 2283 |  | 7 day week With NGT Ban | 119180 |
| 2287 | 37200.37300.37500.38100.39300.40500.41500.90100.935000 | Electrical wiring work | 8d | 2026-02-23 | 2026-03-03 | 2271, 2286 |  | 7 day week With NGT Ban | 119190 |
| 2288 | 37200.37300.37500.38100.39300.40500.41500.90100.935100 | Painting 1st coat | 8d | 2026-03-03 | 2026-03-11 | 2272, 2285, 2286, 2287 |  | 7 day week With NGT Ban | 119200 |
| 2289 | 37200.37300.37500.38100.39300.40500.41500.90100.935200 | False ceiling | 8d | 2026-03-11 | 2026-03-19 | 2273, 2288 |  | 7 day week With NGT Ban | 119210 |

| ID | WBS | Task | Duration | Start | Finish | Predecessors | Constraint | Calendar | Unique_Task_ID |
| --- | --- | --- | --- | --- | --- | --- | --- | --- | --- |
| 2290 | 37200.37300.37500.38100.39300.40500.41500.90000 | **13th Floor** | 109.25d | 2025-10-28 | 2026-03-31 |  | start no earlier than 2025-10-28 | 7 day week With NGT Ban | 7568543 |
| 2291 | 37200.37300.37500.38100.39300.40500.41500.90000.935300 | Block Work | 8d | 2025-10-28 | 2025-12-20 | 2275FS+0.25d |  | 7 day week With NGT Ban | 119220 |
| 2292 | 37200.37300.37500.38100.39300.40500.41500.90000.935400 | Door Frame Fixing | 9d | 2025-12-29 | 2026-01-07 | 2276, 2291 |  | 7 day week With NGT Ban | 119240 |
| 2293 | 37200.37300.37500.38100.39300.40500.41500.90000.935500 | Internal Plumbing Works | 8d | 2025-12-20 | 2025-12-28 | 2277, 2291 |  | 7 day week With NGT Ban | 119250 |
| 2294 | 37200.37300.37500.38100.39300.40500.41500.90000.935600 | Waterproofing | 10d | 2026-01-18 | 2026-01-28 | 2278, 2293 |  | 7 day week With NGT Ban | 119260 |
| 2295 | 37200.37300.37500.38100.39300.40500.41500.90000.935700 | Internal Plaster | 8d | 2025-12-20 | 2025-12-28 | 2279FS+0.25d, 2291FS+0.25d |  | 7 day week With NGT Ban | 119270 |
| 2296 | 37200.37300.37500.38100.39300.40500.41500.90000.935800 | IPS flooring work | 10d | 2026-01-28 | 2026-02-07 | 2280, 2292, 2294, 2295 |  | 7 day week With NGT Ban | 119280 |
| 2297 | 37200.37300.37500.38100.39300.40500.41500.90000.935900 | Toilet dado work | 8d | 2026-01-28 | 2026-02-05 | 2281, 2294, 2295 |  | 7 day week With NGT Ban | 119290 |
| 2298 | 37200.37300.37500.38100.39300.40500.41500.90000.936000 | Toilet flooring work | 8d | 2026-02-05 | 2026-02-13 | 2282, 2297 |  | 7 day week With NGT Ban | 119300 |
| 2299 | 37200.37300.37500.38100.39300.40500.41500.90000.936100 | Living dinning flooring | 12d | 2026-02-15 | 2026-02-27 | 2283FS+0.25d |  | 7 day week With NGT Ban | 119310 |
| 2300 | 37200.37300.37500.38100.39300.40500.41500.90000.936200 | Aluminium door-window fixing | 12d | 2026-02-27 | 2026-03-11 | 2284FS+0.25d |  | 7 day week With NGT Ban | 119320 |
| 2301 | 37200.37300.37500.38100.39300.40500.41500.90000.936300 | Putty primer coat | 6d | 2026-02-27 | 2026-03-05 | 2285, 2299 |  | 7 day week With NGT Ban | 119330 |
| 2302 | 37200.37300.37500.38100.39300.40500.41500.90000.936400 | Door shutter fixing | 8d | 2026-02-27 | 2026-03-07 | 2286, 2299 |  | 7 day week With NGT Ban | 119340 |
| 2303 | 37200.37300.37500.38100.39300.40500.41500.90000.936500 | Electrical wiring work | 8d | 2026-03-07 | 2026-03-15 | 2287, 2302 |  | 7 day week With NGT Ban | 119350 |
| 2304 | 37200.37300.37500.38100.39300.40500.41500.90000.936600 | Painting 1st coat | 8d | 2026-03-15 | 2026-03-23 | 2288, 2301, 2302, 2303 |  | 7 day week With NGT Ban | 119360 |
| 2305 | 37200.37300.37500.38100.39300.40500.41500.90000.936700 | False ceiling | 8d | 2026-03-23 | 2026-03-31 | 2289, 2304 |  | 7 day week With NGT Ban | 119370 |
| 2306 | 37200.37300.37500.38100.39300.40500.41500.89900 | **14th Floor** | 107d | 2025-12-20 | 2026-04-06 |  | start no earlier than 2025-12-20 | 7 day week With NGT Ban | 7568553 |
| 2307 | 37200.37300.37500.38100.39300.40500.41500.89900.936800 | Block Work | 5d | 2025-12-20 | 2025-12-25 | 2291FS+0.25d |  | 7 day week With NGT Ban | 119380 |
| 2308 | 37200.37300.37500.38100.39300.40500.41500.89900.936900 | Door Frame Fixing | 9d | 2026-01-07 | 2026-01-16 | 2292, 2307 |  | 7 day week With NGT Ban | 119400 |
| 2309 | 37200.37300.37500.38100.39300.40500.41500.89900.937000 | Internal Plumbing Works | 15d | 2025-12-28 | 2026-01-12 | 2293, 2307 |  | 7 day week With NGT Ban | 119410 |
| 2310 | 37200.37300.37500.38100.39300.40500.41500.89900.937100 | Waterproofing | 15d | 2026-01-28 | 2026-02-12 | 2294, 2309 |  | 7 day week With NGT Ban | 119420 |
| 2311 | 37200.37300.37500.38100.39300.40500.41500.89900.937200 | Internal Plaster | 8d | 2025-12-29 | 2026-01-06 | 2295FS+0.25d |  | 7 day week With NGT Ban | 119430 |
| 2312 | 37200.37300.37500.38100.39300.40500.41500.89900.937300 | IPS flooring work | 12d | 2026-02-12 | 2026-02-24 | 2296, 2308, 2309, 2310 |  | 7 day week With NGT Ban | 119440 |
| 2313 | 37200.37300.37500.38100.39300.40500.41500.89900.937400 | Toilet dado work | 12d | 2026-02-12 | 2026-02-24 | 2297, 2310, 2311 |  | 7 day week With NGT Ban | 119450 |
| 2314 | 37200.37300.37500.38100.39300.40500.41500.89900.937500 | Toilet flooring work | 12d | 2026-02-24 | 2026-03-08 | 2298, 2313 |  | 7 day week With NGT Ban | 119460 |
| 2315 | 37200.37300.37500.38100.39300.40500.41500.89900.937600 | Living dinning flooring | 7d | 2026-02-28 | 2026-03-07 | 2299FS+0.25d |  | 7 day week With NGT Ban | 119470 |
| 2316 | 37200.37300.37500.38100.39300.40500.41500.89900.937700 | Aluminium door-window fixing | 18d | 2026-03-12 | 2026-03-30 | 2300FS+0.25d |  | 7 day week With NGT Ban | 119480 |
| 2317 | 37200.37300.37500.38100.39300.40500.41500.89900.937800 | Putty primer coat | 6d | 2026-03-07 | 2026-03-13 | 2301, 2315 |  | 7 day week With NGT Ban | 119490 |
| 2318 | 37200.37300.37500.38100.39300.40500.41500.89900.937900 | Door shutter fixing | 6d | 2026-03-07 | 2026-03-13 | 2302, 2315 |  | 7 day week With NGT Ban | 119500 |
| 2319 | 37200.37300.37500.38100.39300.40500.41500.89900.938000 | Electrical wiring work | 6d | 2026-03-15 | 2026-03-21 | 2303, 2318 |  | 7 day week With NGT Ban | 119510 |
| 2320 | 37200.37300.37500.38100.39300.40500.41500.89900.938100 | Painting 1st coat | 6d | 2026-03-23 | 2026-03-29 | 2304, 2317, 2318, 2319 |  | 7 day week With NGT Ban | 119520 |
| 2321 | 37200.37300.37500.38100.39300.40500.41500.89900.938200 | False ceiling | 6d | 2026-03-31 | 2026-04-06 | 2305, 2320 |  | 7 day week With NGT Ban | 119530 |

| ID | WBS | Task | Duration | Start | Finish | Predecessors | Constraint | Calendar | Unique_Task_ID |
| --- | --- | --- | --- | --- | --- | --- | --- | --- | --- |
| 2322 | 37200.37300.37500.38100.39300.40500.41500.89800 | **15th Floor** | 120d | 2025-12-26 | 2026-04-25 |  | start no earlier than 2025-12-26 | 7 day week With NGT Ban | 7568563 |
| 2323 | 37200.37300.37500.38100.39300.40500.41500.89800.938300 | Block Work | 5d | 2025-12-26 | 2025-12-31 | 2307FS+0.25d |  | 7 day week With NGT Ban | 119540 |
| 2324 | 37200.37300.37500.38100.39300.40500.41500.89800.938400 | Door Frame Fixing | 9d | 2026-01-16 | 2026-01-25 | 2308, 2323 |  | 7 day week With NGT Ban | 119560 |
| 2325 | 37200.37300.37500.38100.39300.40500.41500.89800.938500 | Internal Plumbing Works | 15d | 2026-01-12 | 2026-01-27 | 2309, 2323 |  | 7 day week With NGT Ban | 119570 |
| 2326 | 37200.37300.37500.38100.39300.40500.41500.89800.938600 | Waterproofing | 15d | 2026-02-12 | 2026-02-27 | 2310, 2325 |  | 7 day week With NGT Ban | 119580 |
| 2327 | 37200.37300.37500.38100.39300.40500.41500.89800.938700 | Internal Plaster | 8d | 2026-01-06 | 2026-01-14 | 2311FS+0.25d |  | 7 day week With NGT Ban | 119590 |
| 2328 | 37200.37300.37500.38100.39300.40500.41500.89800.938800 | IPS flooring work | 12d | 2026-02-27 | 2026-03-11 | 2312, 2324, 2325, 2326 |  | 7 day week With NGT Ban | 119600 |
| 2329 | 37200.37300.37500.38100.39300.40500.41500.89800.938900 | Toilet dado work | 12d | 2026-02-27 | 2026-03-11 | 2313, 2326, 2327 |  | 7 day week With NGT Ban | 119610 |
| 2330 | 37200.37300.37500.38100.39300.40500.41500.89800.939000 | Toilet flooring work | 12d | 2026-03-11 | 2026-03-23 | 2314, 2329 |  | 7 day week With NGT Ban | 119620 |
| 2331 | 37200.37300.37500.38100.39300.40500.41500.89800.939100 | Living dinning flooring | 7d | 2026-03-07 | 2026-03-14 | 2315FS+0.25d |  | 7 day week With NGT Ban | 119630 |
| 2332 | 37200.37300.37500.38100.39300.40500.41500.89800.939200 | Aluminium door-window fixing | 18d | 2026-03-30 | 2026-04-17 | 2316, 2328, 2331 |  | 7 day week With NGT Ban | 119640 |
| 2333 | 37200.37300.37500.38100.39300.40500.41500.89800.939300 | Putty primer coat | 6d | 2026-03-14 | 2026-03-20 | 2317, 2331 |  | 7 day week With NGT Ban | 119650 |
| 2334 | 37200.37300.37500.38100.39300.40500.41500.89800.939400 | Door shutter fixing | 7.94d | 2026-03-14 | 2026-03-22 | 2318, 2331 |  | 7 day week With NGT Ban | 119660 |
| 2335 | 37200.37300.37500.38100.39300.40500.41500.89800.939500 | Electrical wiring work | 11.94d | 2026-03-22 | 2026-04-03 | 2319, 2334 |  | 7 day week With NGT Ban | 119670 |
| 2336 | 37200.37300.37500.38100.39300.40500.41500.89800.939600 | Painting 1st coat | 11.94d | 2026-04-03 | 2026-04-15 | 2320, 2333, 2334, 2335 |  | 7 day week With NGT Ban | 119680 |
| 2337 | 37200.37300.37500.38100.39300.40500.41500.89800.939700 | False ceiling | 9.94d | 2026-04-15 | 2026-04-25 | 2321, 2336 |  | 7 day week With NGT Ban | 119690 |
| 2338 | 37200.37300.37500.38100.39300.40500.41500.89700 | **16th Floor** | 126.69d | 2025-12-31 | 2026-05-07 |  | start no earlier than 2025-12-31 | 7 day week With NGT Ban | 7568573 |
| 2339 | 37200.37300.37500.38100.39300.40500.41500.89700.939800 | Block Work | 10d | 2025-12-31 | 2026-01-10 | 2323FS+0.25d |  | 7 day week With NGT Ban | 119700 |
| 2340 | 37200.37300.37500.38100.39300.40500.41500.89700.939900 | Door Frame Fixing | 9d | 2026-01-25 | 2026-02-03 | 2324, 2339 |  | 7 day week With NGT Ban | 119720 |
| 2341 | 37200.37300.37500.38100.39300.40500.41500.89700.940000 | Internal Plumbing Works | 15d | 2026-01-27 | 2026-02-11 | 2325, 2339 |  | 7 day week With NGT Ban | 119730 |
| 2342 | 37200.37300.37500.38100.39300.40500.41500.89700.940100 | Waterproofing | 15d | 2026-02-27 | 2026-03-14 | 2326, 2341 |  | 7 day week With NGT Ban | 119740 |
| 2343 | 37200.37300.37500.38100.39300.40500.41500.89700.940200 | Internal Plaster | 12d | 2026-01-14 | 2026-01-26 | 2327FS+0.25d |  | 7 day week With NGT Ban | 119750 |
| 2344 | 37200.37300.37500.38100.39300.40500.41500.89700.940300 | IPS flooring work | 12d | 2026-03-14 | 2026-03-26 | 2328, 2340, 2341, 2342 |  | 7 day week With NGT Ban | 119760 |
| 2345 | 37200.37300.37500.38100.39300.40500.41500.89700.940400 | Toilet dado work | 12d | 2026-03-14 | 2026-03-26 | 2329, 2342, 2343 |  | 7 day week With NGT Ban | 119770 |
| 2346 | 37200.37300.37500.38100.39300.40500.41500.89700.940500 | Toilet flooring work | 12d | 2026-03-26 | 2026-04-07 | 2330, 2345 |  | 7 day week With NGT Ban | 119780 |
| 2347 | 37200.37300.37500.38100.39300.40500.41500.89700.940600 | Living dinning flooring | 7d | 2026-03-14 | 2026-03-21 | 2331FS+0.25d |  | 7 day week With NGT Ban | 119790 |
| 2348 | 37200.37300.37500.38100.39300.40500.41500.89700.940700 | Aluminium door-window fixing | 18d | 2026-04-17 | 2026-05-05 | 2332FS+0.25d |  | 7 day week With NGT Ban | 119800 |
| 2349 | 37200.37300.37500.38100.39300.40500.41500.89700.940800 | Putty primer coat | 5.94d | 2026-03-21 | 2026-03-27 | 2333, 2347 |  | 7 day week With NGT Ban | 119810 |
| 2350 | 37200.37300.37500.38100.39300.40500.41500.89700.940900 | Door shutter fixing | 7.94d | 2026-03-22 | 2026-03-30 | 2334, 2347 |  | 7 day week With NGT Ban | 119820 |
| 2351 | 37200.37300.37500.38100.39300.40500.41500.89700.941000 | Electrical wiring work | 11.94d | 2026-04-03 | 2026-04-15 | 2335, 2350 |  | 7 day week With NGT Ban | 119830 |
| 2352 | 37200.37300.37500.38100.39300.40500.41500.89700.941100 | Painting 1st coat | 11.94d | 2026-04-15 | 2026-04-27 | 2336, 2349, 2350, 2351 |  | 7 day week With NGT Ban | 119840 |
| 2353 | 37200.37300.37500.38100.39300.40500.41500.89700.941200 | False ceiling | 9.94d | 2026-04-27 | 2026-05-07 | 2337, 2352 |  | 7 day week With NGT Ban | 119850 |

| ID | WBS | Task | Duration | Start | Finish | Predecessors | Constraint | Calendar | Unique_Task_ID |
| --- | --- | --- | --- | --- | --- | --- | --- | --- | --- |
| 2354 | 37200.37300.37500.38100.39300.40500.41500.89600 | **17th Floor** | 132.75d | 2026-01-10 | 2026-05-23 |  | start no earlier than 2026-01-10 | 7 day week With NGT Ban | 7568583 |
| 2355 | 37200.37300.37500.38100.39300.40500.41500.89600.941300 | Block Work | 12d | 2026-01-10 | 2026-01-22 | 2339FS+0.25d |  | 7 day week With NGT Ban | 119860 |
| 2356 | 37200.37300.37500.38100.39300.40500.41500.89600.941400 | Door Frame Fixing | 9d | 2026-02-03 | 2026-02-12 | 2340, 2355 |  | 7 day week With NGT Ban | 119880 |
| 2357 | 37200.37300.37500.38100.39300.40500.41500.89600.941500 | Internal Plumbing Works | 15d | 2026-02-11 | 2026-02-26 | 2341, 2355 |  | 7 day week With NGT Ban | 119890 |
| 2358 | 37200.37300.37500.38100.39300.40500.41500.89600.941600 | Waterproofing | 15d | 2026-03-14 | 2026-03-29 | 2342, 2357 |  | 7 day week With NGT Ban | 119900 |
| 2359 | 37200.37300.37500.38100.39300.40500.41500.89600.941700 | Internal Plaster | 12d | 2026-01-26 | 2026-02-07 | 2343FS+0.25d |  | 7 day week With NGT Ban | 119910 |
| 2360 | 37200.37300.37500.38100.39300.40500.41500.89600.941800 | IPS flooring work | 12d | 2026-03-29 | 2026-04-10 | 2344, 2356, 2357, 2358 |  | 7 day week With NGT Ban | 119920 |
| 2361 | 37200.37300.37500.38100.39300.40500.41500.89600.941900 | Toilet dado work | 12d | 2026-03-29 | 2026-04-10 | 2345, 2358, 2359 |  | 7 day week With NGT Ban | 119930 |
| 2362 | 37200.37300.37500.38100.39300.40500.41500.89600.942000 | Toilet flooring work | 12d | 2026-04-10 | 2026-04-22 | 2346, 2361 |  | 7 day week With NGT Ban | 119940 |
| 2363 | 37200.37300.37500.38100.39300.40500.41500.89600.942100 | Living dinning flooring | 7d | 2026-03-21 | 2026-03-28 | 2347FS+0.25d |  | 7 day week With NGT Ban | 119950 |
| 2364 | 37200.37300.37500.38100.39300.40500.41500.89600.942200 | Aluminium door-window fixing | 18d | 2026-05-05 | 2026-05-23 | 2348, 2360, 2363 |  | 7 day week With NGT Ban | 119960 |
| 2365 | 37200.37300.37500.38100.39300.40500.41500.89600.942300 | Putty primer coat | 5.94d | 2026-03-28 | 2026-04-03 | 2349, 2363 |  | 7 day week With NGT Ban | 119970 |
| 2366 | 37200.37300.37500.38100.39300.40500.41500.89600.942400 | Door shutter fixing | 7.94d | 2026-03-30 | 2026-04-07 | 2350, 2363 |  | 7 day week With NGT Ban | 119980 |
| 2367 | 37200.37300.37500.38100.39300.40500.41500.89600.942500 | Electrical wiring work | 11.94d | 2026-04-15 | 2026-04-27 | 2351, 2366 |  | 7 day week With NGT Ban | 119990 |
| 2368 | 37200.37300.37500.38100.39300.40500.41500.89600.942600 | Painting 1st coat | 11.94d | 2026-04-27 | 2026-05-09 | 2352, 2365, 2366, 2367 |  | 7 day week With NGT Ban | 120000 |
| 2369 | 37200.37300.37500.38100.39300.40500.41500.89600.942700 | False ceiling | 9.94d | 2026-05-09 | 2026-05-19 | 2353, 2368 |  | 7 day week With NGT Ban | 120010 |
| 2370 | 37200.37300.37500.38100.39300.40500.41500.89500 | **18th Floor** | 138.5d | 2026-01-22 | 2026-06-10 |  | start no earlier than 2026-01-22 | 7 day week With NGT Ban | 7568593 |
| 2371 | 37200.37300.37500.38100.39300.40500.41500.89500.942800 | Block Work | 12d | 2026-01-22 | 2026-02-03 | 2355FS+0.25d |  | 7 day week With NGT Ban | 120020 |
| 2372 | 37200.37300.37500.38100.39300.40500.41500.89500.942900 | Door Frame Fixing | 9d | 2026-02-12 | 2026-02-21 | 2356, 2371 |  | 7 day week With NGT Ban | 120050 |
| 2373 | 37200.37300.37500.38100.39300.40500.41500.89500.943000 | Internal Plumbing Works | 15d | 2026-02-26 | 2026-03-13 | 2357, 2371 |  | 7 day week With NGT Ban | 120060 |
| 2374 | 37200.37300.37500.38100.39300.40500.41500.89500.943100 | Waterproofing | 15d | 2026-03-29 | 2026-04-13 | 2358, 2373 |  | 7 day week With NGT Ban | 120070 |
| 2375 | 37200.37300.37500.38100.39300.40500.41500.89500.943200 | Internal Plaster | 12d | 2026-02-08 | 2026-02-20 | 2359FS+0.25d |  | 7 day week With NGT Ban | 120080 |
| 2376 | 37200.37300.37500.38100.39300.40500.41500.89500.943300 | IPS flooring work | 12d | 2026-04-13 | 2026-04-25 | 2360, 2372, 2373, 2374 |  | 7 day week With NGT Ban | 120090 |
| 2377 | 37200.37300.37500.38100.39300.40500.41500.89500.943400 | Toilet dado work | 12d | 2026-04-13 | 2026-04-25 | 2361, 2374, 2375 |  | 7 day week With NGT Ban | 120100 |
| 2378 | 37200.37300.37500.38100.39300.40500.41500.89500.943500 | Toilet flooring work | 12d | 2026-04-25 | 2026-05-07 | 2362, 2377 |  | 7 day week With NGT Ban | 120110 |
| 2379 | 37200.37300.37500.38100.39300.40500.41500.89500.943600 | Living dinning flooring | 7d | 2026-03-29 | 2026-04-05 | 2363FS+0.25d |  | 7 day week With NGT Ban | 120120 |
| 2380 | 37200.37300.37500.38100.39300.40500.41500.89500.943700 | Aluminium door-window fixing | 18d | 2026-05-23 | 2026-06-10 | 2364, 2376, 2379 |  | 7 day week With NGT Ban | 120130 |
| 2381 | 37200.37300.37500.38100.39300.40500.41500.89500.943800 | Putty primer coat | 5.94d | 2026-04-05 | 2026-04-11 | 2365, 2379 |  | 7 day week With NGT Ban | 120140 |
| 2382 | 37200.37300.37500.38100.39300.40500.41500.89500.943900 | Door shutter fixing | 7.94d | 2026-04-07 | 2026-04-15 | 2366, 2379 |  | 7 day week With NGT Ban | 120150 |
| 2383 | 37200.37300.37500.38100.39300.40500.41500.89500.944000 | Electrical wiring work | 11.94d | 2026-04-27 | 2026-05-09 | 2367, 2382 |  | 7 day week With NGT Ban | 120160 |
| 2384 | 37200.37300.37500.38100.39300.40500.41500.89500.944100 | Painting 1st coat | 11.94d | 2026-05-09 | 2026-05-21 | 2368, 2381, 2382, 2383 |  | 7 day week With NGT Ban | 120170 |
| 2385 | 37200.37300.37500.38100.39300.40500.41500.89500.944200 | False ceiling | 9.94d | 2026-05-21 | 2026-05-30 | 2369, 2384 |  | 7 day week With NGT Ban | 120180 |

| ID | WBS | Task | Duration | Start | Finish | Predecessors | Constraint | Calendar | Unique_Task_ID |
| --- | --- | --- | --- | --- | --- | --- | --- | --- | --- |
| 2386 | 37200.37300.37500.38100.39300.40500.41500.89400 | **19th Floor** | 156.25d | 2026-02-04 | 2026-07-10 |  | start no earlier than 2026-02-04 | 7 day week With NGT Ban | 7568603 |
| 2387 | 37200.37300.37500.38100.39300.40500.41500.89400.944300 | Block Work | 12d | 2026-02-04 | 2026-02-16 | 2371FS+0.25d |  | 7 day week With NGT Ban | 120190 |
| 2388 | 37200.37300.37500.38100.39300.40500.41500.89400.944400 | Door Frame Fixing | 9d | 2026-02-21 | 2026-03-02 | 2372, 2387 |  | 7 day week With NGT Ban | 120210 |
| 2389 | 37200.37300.37500.38100.39300.40500.41500.89400.944500 | Internal Plumbing Works | 15d | 2026-03-13 | 2026-03-28 | 2373, 2387 |  | 7 day week With NGT Ban | 120220 |
| 2390 | 37200.37300.37500.38100.39300.40500.41500.89400.944600 | Waterproofing | 15d | 2026-04-13 | 2026-04-28 | 2374, 2389 |  | 7 day week With NGT Ban | 120230 |
| 2391 | 37200.37300.37500.38100.39300.40500.41500.89400.944700 | Internal Plaster | 12d | 2026-02-20 | 2026-03-04 | 2375FS+0.25d |  | 7 day week With NGT Ban | 120240 |
| 2392 | 37200.37300.37500.38100.39300.40500.41500.89400.944800 | IPS flooring work | 12d | 2026-04-28 | 2026-05-10 | 2376, 2388, 2390, 2391 |  | 7 day week With NGT Ban | 120250 |
| 2393 | 37200.37300.37500.38100.39300.40500.41500.89400.944900 | Toilet dado work | 12d | 2026-04-28 | 2026-05-10 | 2377, 2390, 2391 |  | 7 day week With NGT Ban | 120260 |
| 2394 | 37200.37300.37500.38100.39300.40500.41500.89400.945000 | Toilet flooring work | 12d | 2026-05-10 | 2026-05-22 | 2378, 2393 |  | 7 day week With NGT Ban | 120270 |
| 2395 | 37200.37300.37500.38100.39300.40500.41500.89400.945100 | Living dinning flooring | 7d | 2026-05-22 | 2026-05-29 | 2379, 2388, 2394 |  | 7 day week With NGT Ban | 120280 |
| 2396 | 37200.37300.37500.38100.39300.40500.41500.89400.945200 | Aluminium door-window fixing | 18d | 2026-06-10 | 2026-06-28 | 2380, 2392, 2395 |  | 7 day week With NGT Ban | 120290 |
| 2397 | 37200.37300.37500.38100.39300.40500.41500.89400.945300 | Putty primer coat | 5.94d | 2026-05-29 | 2026-06-04 | 2381, 2395 |  | 7 day week With NGT Ban | 120300 |
| 2398 | 37200.37300.37500.38100.39300.40500.41500.89400.945400 | Door shutter fixing | 7.94d | 2026-05-29 | 2026-06-06 | 2382, 2395 |  | 7 day week With NGT Ban | 120310 |
| 2399 | 37200.37300.37500.38100.39300.40500.41500.89400.945500 | Electrical wiring work | 11.94d | 2026-06-06 | 2026-06-18 | 2383, 2398 |  | 7 day week With NGT Ban | 120320 |
| 2400 | 37200.37300.37500.38100.39300.40500.41500.89400.945600 | Painting 1st coat | 11.94d | 2026-06-18 | 2026-06-30 | 2384, 2397, 2398, 2399 |  | 7 day week With NGT Ban | 120330 |
| 2401 | 37200.37300.37500.38100.39300.40500.41500.89400.945700 | False ceiling | 9.94d | 2026-06-30 | 2026-07-10 | 2385, 2400 |  | 7 day week With NGT Ban | 120340 |
| 2402 | 37200.37300.37500.38100.39300.40500.41500.89300 | **20th Floor** | 159d | 2026-02-16 | 2026-07-25 |  | start no earlier than 2026-02-16 | 7 day week With NGT Ban | 7568613 |
| 2403 | 37200.37300.37500.38100.39300.40500.41500.89300.945800 | Block Work | 12d | 2026-02-16 | 2026-02-28 | 2387FS+0.25d |  | 7 day week With NGT Ban | 120350 |
| 2404 | 37200.37300.37500.38100.39300.40500.41500.89300.945900 | Door Frame Fixing | 9d | 2026-03-02 | 2026-03-11 | 2388, 2403 |  | 7 day week With NGT Ban | 120370 |
| 2405 | 37200.37300.37500.38100.39300.40500.41500.89300.946000 | Internal Plumbing Works | 15d | 2026-03-28 | 2026-04-12 | 2389, 2403 |  | 7 day week With NGT Ban | 120380 |
| 2406 | 37200.37300.37500.38100.39300.40500.41500.89300.946100 | Waterproofing | 15d | 2026-04-28 | 2026-05-13 | 2390, 2405 |  | 7 day week With NGT Ban | 120390 |
| 2407 | 37200.37300.37500.38100.39300.40500.41500.89300.946200 | Internal Plaster | 12d | 2026-03-04 | 2026-03-16 | 2391FS+0.25d |  | 7 day week With NGT Ban | 120400 |
| 2408 | 37200.37300.37500.38100.39300.40500.41500.89300.946300 | IPS flooring work | 12d | 2026-05-13 | 2026-05-25 | 2392, 2404, 2406, 2407 |  | 7 day week With NGT Ban | 120410 |
| 2409 | 37200.37300.37500.38100.39300.40500.41500.89300.946400 | Toilet dado work | 12d | 2026-05-13 | 2026-05-25 | 2393, 2406, 2407 |  | 7 day week With NGT Ban | 120420 |
| 2410 | 37200.37300.37500.38100.39300.40500.41500.89300.946500 | Toilet flooring work | 12d | 2026-05-25 | 2026-06-06 | 2394, 2409 |  | 7 day week With NGT Ban | 120430 |
| 2411 | 37200.37300.37500.38100.39300.40500.41500.89300.946600 | Living dinning flooring | 7d | 2026-06-06 | 2026-06-13 | 2395, 2404, 2410 |  | 7 day week With NGT Ban | 120440 |
| 2412 | 37200.37300.37500.38100.39300.40500.41500.89300.946700 | Aluminium door-window fixing | 18d | 2026-06-28 | 2026-07-16 | 2396, 2408, 2411 |  | 7 day week With NGT Ban | 120450 |
| 2413 | 37200.37300.37500.38100.39300.40500.41500.89300.946800 | Putty primer coat | 5.94d | 2026-06-13 | 2026-06-19 | 2397, 2411 |  | 7 day week With NGT Ban | 120460 |
| 2414 | 37200.37300.37500.38100.39300.40500.41500.89300.946900 | Door shutter fixing | 7.94d | 2026-06-13 | 2026-06-21 | 2398, 2411 |  | 7 day week With NGT Ban | 120470 |
| 2415 | 37200.37300.37500.38100.39300.40500.41500.89300.947000 | Electrical wiring work | 11.94d | 2026-06-21 | 2026-07-03 | 2399, 2414 |  | 7 day week With NGT Ban | 120480 |
| 2416 | 37200.37300.37500.38100.39300.40500.41500.89300.947100 | Painting 1st coat | 11.94d | 2026-07-03 | 2026-07-15 | 2400, 2413, 2414, 2415 |  | 7 day week With NGT Ban | 120490 |
| 2417 | 37200.37300.37500.38100.39300.40500.41500.89300.947200 | False ceiling | 9.94d | 2026-07-15 | 2026-07-25 | 2401, 2416 |  | 7 day week With NGT Ban | 120500 |

| ID | WBS | Task | Duration | Start | Finish | Predecessors | Constraint | Calendar | Unique_Task_ID |
| --- | --- | --- | --- | --- | --- | --- | --- | --- | --- |
| 2418 | 37200.37300.37500.38100.39300.40500.41500.89200 | **21st Floor** | 145.69d | 2026-03-13 | 2026-08-06 |  | start no earlier than 2026-03-13 | 7 day week With NGT Ban | 7568623 |
| 2419 | 37200.37300.37500.38100.39300.40500.41500.89200.947300 | Block Work | 7.94d | 2026-03-13 | 2026-03-21 | 2076FS+0.25d, 2403FS+0.25d |  | 7 day week With NGT Ban | 120510 |
| 2420 | 37200.37300.37500.38100.39300.40500.41500.89200.947400 | Door Frame Fixing | 8.94d | 2026-03-21 | 2026-03-30 | 2404, 2419 |  | 7 day week With NGT Ban | 120530 |
| 2421 | 37200.37300.37500.38100.39300.40500.41500.89200.947500 | Internal Plumbing Works | 9.94d | 2026-03-21 | 2026-03-31 | 2419FS+0.25d |  | 7 day week With NGT Ban | 120540 |
| 2422 | 37200.37300.37500.38100.39300.40500.41500.89200.947600 | Waterproofing | 11.94d | 2026-05-13 | 2026-05-25 | 2406, 2421 |  | 7 day week With NGT Ban | 120550 |
| 2423 | 37200.37300.37500.38100.39300.40500.41500.89200.947700 | Internal Plaster | 8.94d | 2026-03-31 | 2026-04-09 | 2407FS+0.25d, 2419FS+10d |  | 7 day week With NGT Ban | 120560 |
| 2424 | 37200.37300.37500.38100.39300.40500.41500.89200.947800 | IPS flooring work | 8.94d | 2026-05-25 | 2026-06-03 | 2408, 2420, 2422, 2423 |  | 7 day week With NGT Ban | 120570 |
| 2425 | 37200.37300.37500.38100.39300.40500.41500.89200.947900 | Toilet dado work | 7.94d | 2026-05-25 | 2026-06-02 | 2409, 2422, 2423 |  | 7 day week With NGT Ban | 120580 |
| 2426 | 37200.37300.37500.38100.39300.40500.41500.89200.948000 | Toilet flooring work | 6.94d | 2026-06-06 | 2026-06-13 | 2410, 2425 |  | 7 day week With NGT Ban | 120590 |
| 2427 | 37200.37300.37500.38100.39300.40500.41500.89200.948100 | Living dinning flooring | 11.94d | 2026-06-13 | 2026-06-25 | 2411, 2420, 2426 |  | 7 day week With NGT Ban | 120600 |
| 2428 | 37200.37300.37500.38100.39300.40500.41500.89200.948200 | Aluminium door-window fixing | 11.94d | 2026-07-16 | 2026-07-28 | 2412, 2424, 2427 |  | 7 day week With NGT Ban | 120610 |
| 2429 | 37200.37300.37500.38100.39300.40500.41500.89200.948300 | Putty primer coat | 5.94d | 2026-06-25 | 2026-07-01 | 2413, 2427 |  | 7 day week With NGT Ban | 120620 |
| 2430 | 37200.37300.37500.38100.39300.40500.41500.89200.948400 | Door shutter fixing | 7.94d | 2026-06-25 | 2026-07-03 | 2414, 2427 |  | 7 day week With NGT Ban | 120630 |
| 2431 | 37200.37300.37500.38100.39300.40500.41500.89200.948500 | Electrical wiring work | 11.94d | 2026-07-03 | 2026-07-15 | 2415, 2430 |  | 7 day week With NGT Ban | 120640 |
| 2432 | 37200.37300.37500.38100.39300.40500.41500.89200.948600 | Painting 1st coat | 11.94d | 2026-07-15 | 2026-07-27 | 2416, 2429, 2430, 2431 |  | 7 day week With NGT Ban | 120650 |
| 2433 | 37200.37300.37500.38100.39300.40500.41500.89200.948700 | False ceiling | 9.94d | 2026-07-27 | 2026-08-06 | 2417, 2432 |  | 7 day week With NGT Ban | 120660 |
| 2434 | 37200.37300.37500.38100.39300.40500.41500.89100 | **22nd Floor** | 107.31d | 2026-05-14 | 2026-08-29 |  | start no earlier than 2026-05-14 | 7 day week With NGT Ban | 7568633 |
| 2435 | 37200.37300.37500.38100.39300.40500.41500.89100.948800 | Block Work | 7.94d | 2026-05-14 | 2026-05-22 | 2082, 2419 |  | 7 day week With NGT Ban | 120670 |
| 2436 | 37200.37300.37500.38100.39300.40500.41500.89100.948900 | Door Frame Fixing | 8.94d | 2026-05-22 | 2026-05-31 | 2420, 2435 |  | 7 day week With NGT Ban | 120690 |
| 2437 | 37200.37300.37500.38100.39300.40500.41500.89100.949000 | Internal Plumbing Works | 9.94d | 2026-05-22 | 2026-06-01 | 2421, 2435 |  | 7 day week With NGT Ban | 120700 |
| 2438 | 37200.37300.37500.38100.39300.40500.41500.89100.949100 | Waterproofing | 11.94d | 2026-06-01 | 2026-06-13 | 2422, 2437 |  | 7 day week With NGT Ban | 120710 |
| 2439 | 37200.37300.37500.38100.39300.40500.41500.89100.949200 | Internal Plaster | 8.94d | 2026-06-13 | 2026-06-22 | 2423, 2436, 2437, 2438 |  | 7 day week With NGT Ban | 120720 |
| 2440 | 37200.37300.37500.38100.39300.40500.41500.89100.949300 | IPS flooring work | 8.94d | 2026-06-22 | 2026-07-01 | 2424, 2436, 2438, 2439 |  | 7 day week With NGT Ban | 120730 |
| 2441 | 37200.37300.37500.38100.39300.40500.41500.89100.949400 | Toilet dado work | 7.94d | 2026-06-22 | 2026-06-30 | 2425, 2438, 2439 |  | 7 day week With NGT Ban | 120740 |
| 2442 | 37200.37300.37500.38100.39300.40500.41500.89100.949500 | Toilet flooring work | 6.94d | 2026-06-30 | 2026-07-07 | 2426, 2441 |  | 7 day week With NGT Ban | 120750 |
| 2443 | 37200.37300.37500.38100.39300.40500.41500.89100.949600 | Living dinning flooring | 11.94d | 2026-07-07 | 2026-07-18 | 2427, 2436, 2442 |  | 7 day week With NGT Ban | 120760 |
| 2444 | 37200.37300.37500.38100.39300.40500.41500.89100.949700 | Aluminium door-window fixing | 11.94d | 2026-07-28 | 2026-08-09 | 2428, 2440, 2443 |  | 7 day week With NGT Ban | 120770 |
| 2445 | 37200.37300.37500.38100.39300.40500.41500.89100.949800 | Putty primer coat | 5.94d | 2026-07-19 | 2026-07-24 | 2429, 2443 |  | 7 day week With NGT Ban | 120780 |
| 2446 | 37200.37300.37500.38100.39300.40500.41500.89100.949900 | Door shutter fixing | 7.94d | 2026-07-19 | 2026-07-26 | 2430, 2443 |  | 7 day week With NGT Ban | 120790 |
| 2447 | 37200.37300.37500.38100.39300.40500.41500.89100.950000 | Electrical wiring work | 11.94d | 2026-07-26 | 2026-08-07 | 2431, 2446 |  | 7 day week With NGT Ban | 120800 |
| 2448 | 37200.37300.37500.38100.39300.40500.41500.89100.950100 | Painting 1st coat | 11.94d | 2026-08-07 | 2026-08-19 | 2432, 2445, 2446, 2447 |  | 7 day week With NGT Ban | 120810 |
| 2449 | 37200.37300.37500.38100.39300.40500.41500.89100.950200 | False ceiling | 9.94d | 2026-08-19 | 2026-08-29 | 2433, 2448 |  | 7 day week With NGT Ban | 120820 |

| ID | WBS | Task | Duration | Start | Finish | Predecessors | Constraint | Calendar | Unique_Task_ID |
| --- | --- | --- | --- | --- | --- | --- | --- | --- | --- |
| 2450 | 37200.37300.37500.38100.39300.40500.41500.89000 | **23rd Floor** | 113.25d | 2026-05-23 | 2026-09-13 |  | start no earlier than 2026-05-23 | 7 day week With NGT Ban | 7568643 |
| 2451 | 37200.37300.37500.38100.39300.40500.41500.89000.950300 | Block Work | 7.94d | 2026-05-23 | 2026-05-31 | 2083, 2435 |  | 7 day week With NGT Ban | 120830 |
| 2452 | 37200.37300.37500.38100.39300.40500.41500.89000.950400 | Door Frame Fixing | 8.94d | 2026-05-31 | 2026-06-09 | 2436, 2451 |  | 7 day week With NGT Ban | 120850 |
| 2453 | 37200.37300.37500.38100.39300.40500.41500.89000.950500 | Internal Plumbing Works | 9.94d | 2026-06-01 | 2026-06-11 | 2437, 2451 |  | 7 day week With NGT Ban | 120860 |
| 2454 | 37200.37300.37500.38100.39300.40500.41500.89000.950600 | Waterproofing | 11.94d | 2026-06-13 | 2026-06-25 | 2438, 2453 |  | 7 day week With NGT Ban | 120870 |
| 2455 | 37200.37300.37500.38100.39300.40500.41500.89000.950700 | Internal Plaster | 8.94d | 2026-06-25 | 2026-07-04 | 2439, 2452, 2453, 2454 |  | 7 day week With NGT Ban | 120880 |
| 2456 | 37200.37300.37500.38100.39300.40500.41500.89000.950800 | IPS flooring work | 8.94d | 2026-07-04 | 2026-07-13 | 2440, 2452, 2454, 2455 |  | 7 day week With NGT Ban | 120890 |
| 2457 | 37200.37300.37500.38100.39300.40500.41500.89000.950900 | Toilet dado work | 7.94d | 2026-07-04 | 2026-07-12 | 2441, 2454, 2455 |  | 7 day week With NGT Ban | 120900 |
| 2458 | 37200.37300.37500.38100.39300.40500.41500.89000.951000 | Toilet flooring work | 6.94d | 2026-07-12 | 2026-07-18 | 2442, 2457 |  | 7 day week With NGT Ban | 120910 |
| 2459 | 37200.37300.37500.38100.39300.40500.41500.89000.951100 | Living dinning flooring | 14.94d | 2026-07-19 | 2026-08-02 | 2443, 2452, 2458 |  | 7 day week With NGT Ban | 120920 |
| 2460 | 37200.37300.37500.38100.39300.40500.41500.89000.951200 | Aluminium door-window fixing | 14.94d | 2026-08-09 | 2026-08-24 | 2444, 2456, 2459 |  | 7 day week With NGT Ban | 120930 |
| 2461 | 37200.37300.37500.38100.39300.40500.41500.89000.951300 | Putty primer coat | 5.94d | 2026-08-02 | 2026-08-08 | 2445, 2459 |  | 7 day week With NGT Ban | 120940 |
| 2462 | 37200.37300.37500.38100.39300.40500.41500.89000.951400 | Door shutter fixing | 7.94d | 2026-08-02 | 2026-08-10 | 2446, 2459 |  | 7 day week With NGT Ban | 120950 |
| 2463 | 37200.37300.37500.38100.39300.40500.41500.89000.951500 | Electrical wiring work | 11.94d | 2026-08-10 | 2026-08-22 | 2447, 2462 |  | 7 day week With NGT Ban | 120960 |
| 2464 | 37200.37300.37500.38100.39300.40500.41500.89000.951600 | Painting 1st coat | 11.94d | 2026-08-22 | 2026-09-03 | 2448, 2461, 2462, 2463 |  | 7 day week With NGT Ban | 120970 |
| 2465 | 37200.37300.37500.38100.39300.40500.41500.89000.951700 | False ceiling | 9.94d | 2026-09-03 | 2026-09-13 | 2449, 2464 |  | 7 day week With NGT Ban | 120980 |
| 2466 | 37200.37300.37500.38100.39300.40500.41500.88900 | **24th Floor** | 117.06d | 2026-06-03 | 2026-09-28 |  | start no earlier than 2026-06-03 | 7 day week With NGT Ban | 7568653 |
| 2467 | 37200.37300.37500.38100.39300.40500.41500.88900.951800 | Block Work | 7.94d | 2026-06-03 | 2026-06-11 | 2084, 2451 |  | 7 day week With NGT Ban | 120990 |
| 2468 | 37200.37300.37500.38100.39300.40500.41500.88900.951900 | Door Frame Fixing | 8.94d | 2026-06-11 | 2026-06-20 | 2452, 2467 |  | 7 day week With NGT Ban | 121010 |
| 2469 | 37200.37300.37500.38100.39300.40500.41500.88900.952000 | Internal Plumbing Works | 9.94d | 2026-06-11 | 2026-06-21 | 2453, 2467 |  | 7 day week With NGT Ban | 121020 |
| 2470 | 37200.37300.37500.38100.39300.40500.41500.88900.952100 | Waterproofing | 11.94d | 2026-06-25 | 2026-07-07 | 2454, 2469 |  | 7 day week With NGT Ban | 121030 |
| 2471 | 37200.37300.37500.38100.39300.40500.41500.88900.952200 | Internal Plaster | 8.94d | 2026-07-07 | 2026-07-16 | 2455, 2468, 2469, 2470 |  | 7 day week With NGT Ban | 121040 |
| 2472 | 37200.37300.37500.38100.39300.40500.41500.88900.952300 | IPS flooring work | 8.94d | 2026-07-16 | 2026-07-24 | 2456, 2468, 2470, 2471 |  | 7 day week With NGT Ban | 121050 |
| 2473 | 37200.37300.37500.38100.39300.40500.41500.88900.952400 | Toilet dado work | 7.94d | 2026-07-16 | 2026-07-23 | 2457, 2470, 2471 |  | 7 day week With NGT Ban | 121060 |
| 2474 | 37200.37300.37500.38100.39300.40500.41500.88900.952500 | Toilet flooring work | 6.94d | 2026-07-24 | 2026-07-30 | 2458, 2473 |  | 7 day week With NGT Ban | 121070 |
| 2475 | 37200.37300.37500.38100.39300.40500.41500.88900.952600 | Living dinning flooring | 14.94d | 2026-08-02 | 2026-08-17 | 2459, 2468, 2474 |  | 7 day week With NGT Ban | 121080 |
| 2476 | 37200.37300.37500.38100.39300.40500.41500.88900.952700 | Aluminium door-window fixing | 14.94d | 2026-08-24 | 2026-09-08 | 2460, 2472, 2475 |  | 7 day week With NGT Ban | 121090 |
| 2477 | 37200.37300.37500.38100.39300.40500.41500.88900.952800 | Putty primer coat | 5.94d | 2026-08-17 | 2026-08-23 | 2461, 2475 |  | 7 day week With NGT Ban | 121100 |
| 2478 | 37200.37300.37500.38100.39300.40500.41500.88900.952900 | Door shutter fixing | 7.94d | 2026-08-17 | 2026-08-25 | 2462, 2475 |  | 7 day week With NGT Ban | 121110 |
| 2479 | 37200.37300.37500.38100.39300.40500.41500.88900.953000 | Electrical wiring work | 11.94d | 2026-08-25 | 2026-09-06 | 2463, 2478 |  | 7 day week With NGT Ban | 121120 |
| 2480 | 37200.37300.37500.38100.39300.40500.41500.88900.953100 | Painting 1st coat | 11.94d | 2026-09-06 | 2026-09-18 | 2464, 2477, 2478, 2479 |  | 7 day week With NGT Ban | 121130 |
| 2481 | 37200.37300.37500.38100.39300.40500.41500.88900.953200 | False ceiling | 9.94d | 2026-09-18 | 2026-09-28 | 2465, 2480 |  | 7 day week With NGT Ban | 121140 |

| ID | WBS | Task | Duration | Start | Finish | Predecessors | Constraint | Calendar | Unique_Task_ID |
| --- | --- | --- | --- | --- | --- | --- | --- | --- | --- |
| 2482 | 37200.37300.37500.38100.39300.40500.41500.88800 | **25th Floor** | 118.25d | 2026-06-17 | 2026-10-13 |  | start no earlier than 2026-06-17 | 7 day week With NGT Ban | 7568663 |
| 2483 | 37200.37300.37500.38100.39300.40500.41500.88800.953300 | Block Work | 7.94d | 2026-06-17 | 2026-06-25 | 2085, 2467 |  | 7 day week With NGT Ban | 121150 |
| 2484 | 37200.37300.37500.38100.39300.40500.41500.88800.953400 | Door Frame Fixing | 8.94d | 2026-06-25 | 2026-07-04 | 2468, 2483 |  | 7 day week With NGT Ban | 121170 |
| 2485 | 37200.37300.37500.38100.39300.40500.41500.88800.953500 | Internal Plumbing Works | 9.94d | 2026-06-25 | 2026-07-05 | 2469, 2483 |  | 7 day week With NGT Ban | 121180 |
| 2486 | 37200.37300.37500.38100.39300.40500.41500.88800.953600 | Waterproofing | 11.94d | 2026-07-07 | 2026-07-19 | 2470, 2485 |  | 7 day week With NGT Ban | 121190 |
| 2487 | 37200.37300.37500.38100.39300.40500.41500.88800.953700 | Internal Plaster | 8.94d | 2026-07-19 | 2026-07-27 | 2471, 2484, 2485, 2486 |  | 7 day week With NGT Ban | 121200 |
| 2488 | 37200.37300.37500.38100.39300.40500.41500.88800.953800 | IPS flooring work | 8.94d | 2026-07-28 | 2026-08-05 | 2472, 2484, 2486, 2487 |  | 7 day week With NGT Ban | 121210 |
| 2489 | 37200.37300.37500.38100.39300.40500.41500.88800.953900 | Toilet dado work | 7.94d | 2026-07-28 | 2026-08-04 | 2473, 2486, 2487 |  | 7 day week With NGT Ban | 121220 |
| 2490 | 37200.37300.37500.38100.39300.40500.41500.88800.954000 | Toilet flooring work | 6.94d | 2026-08-04 | 2026-08-11 | 2474, 2489 |  | 7 day week With NGT Ban | 121230 |
| 2491 | 37200.37300.37500.38100.39300.40500.41500.88800.954100 | Living dinning flooring | 14.94d | 2026-08-17 | 2026-09-01 | 2475, 2484, 2490 |  | 7 day week With NGT Ban | 121240 |
| 2492 | 37200.37300.37500.38100.39300.40500.41500.88800.954200 | Aluminium door-window fixing | 14.94d | 2026-09-08 | 2026-09-23 | 2476, 2488, 2491 |  | 7 day week With NGT Ban | 121250 |
| 2493 | 37200.37300.37500.38100.39300.40500.41500.88800.954300 | Putty primer coat | 5.94d | 2026-09-01 | 2026-09-07 | 2477, 2491 |  | 7 day week With NGT Ban | 121260 |
| 2494 | 37200.37300.37500.38100.39300.40500.41500.88800.954400 | Door shutter fixing | 7.94d | 2026-09-01 | 2026-09-09 | 2478, 2491 |  | 7 day week With NGT Ban | 121270 |
| 2495 | 37200.37300.37500.38100.39300.40500.41500.88800.954500 | Electrical wiring work | 11.94d | 2026-09-09 | 2026-09-21 | 2479, 2494 |  | 7 day week With NGT Ban | 121280 |
| 2496 | 37200.37300.37500.38100.39300.40500.41500.88800.954600 | Painting 1st coat | 11.94d | 2026-09-21 | 2026-10-03 | 2480, 2493, 2494, 2495 |  | 7 day week With NGT Ban | 121290 |
| 2497 | 37200.37300.37500.38100.39300.40500.41500.88800.954700 | False ceiling | 9.94d | 2026-10-03 | 2026-10-13 | 2481, 2496 |  | 7 day week With NGT Ban | 121300 |
| 2498 | 37200.37300.37500.38100.39300.40500.41500.88700 | **26th Floor** | 120.44d | 2026-06-30 | 2026-10-28 |  | start no earlier than 2026-06-30 | 7 day week With NGT Ban | 7568673 |
| 2499 | 37200.37300.37500.38100.39300.40500.41500.88700.954800 | Block Work | 7.94d | 2026-06-30 | 2026-07-07 | 2086, 2483 |  | 7 day week With NGT Ban | 121310 |
| 2500 | 37200.37300.37500.38100.39300.40500.41500.88700.954900 | Door Frame Fixing | 8.94d | 2026-07-08 | 2026-07-16 | 2484, 2499 |  | 7 day week With NGT Ban | 121330 |
| 2501 | 37200.37300.37500.38100.39300.40500.41500.88700.955000 | Internal Plumbing Works | 9.94d | 2026-07-08 | 2026-07-17 | 2485, 2499 |  | 7 day week With NGT Ban | 121340 |
| 2502 | 37200.37300.37500.38100.39300.40500.41500.88700.955100 | Waterproofing | 11.94d | 2026-07-19 | 2026-07-30 | 2486, 2501 |  | 7 day week With NGT Ban | 121350 |
| 2503 | 37200.37300.37500.38100.39300.40500.41500.88700.955200 | Internal Plaster | 8.94d | 2026-07-31 | 2026-08-08 | 2487, 2500, 2501, 2502 |  | 7 day week With NGT Ban | 121360 |
| 2504 | 37200.37300.37500.38100.39300.40500.41500.88700.955300 | IPS flooring work | 8.94d | 2026-08-08 | 2026-08-17 | 2488, 2500, 2502, 2503 |  | 7 day week With NGT Ban | 121370 |
| 2505 | 37200.37300.37500.38100.39300.40500.41500.88700.955400 | Toilet dado work | 7.94d | 2026-08-08 | 2026-08-16 | 2489, 2502, 2503 |  | 7 day week With NGT Ban | 121380 |
| 2506 | 37200.37300.37500.38100.39300.40500.41500.88700.955500 | Toilet flooring work | 6.94d | 2026-08-16 | 2026-08-23 | 2490, 2505 |  | 7 day week With NGT Ban | 121390 |
| 2507 | 37200.37300.37500.38100.39300.40500.41500.88700.955600 | Living dinning flooring | 14.94d | 2026-09-01 | 2026-09-16 | 2491, 2500, 2506 |  | 7 day week With NGT Ban | 121400 |
| 2508 | 37200.37300.37500.38100.39300.40500.41500.88700.955700 | Aluminium door-window fixing | 14.94d | 2026-09-23 | 2026-10-08 | 2492, 2504, 2507 |  | 7 day week With NGT Ban | 121410 |
| 2509 | 37200.37300.37500.38100.39300.40500.41500.88700.955800 | Putty primer coat | 5.94d | 2026-09-16 | 2026-09-22 | 2493, 2507 |  | 7 day week With NGT Ban | 121420 |
| 2510 | 37200.37300.37500.38100.39300.40500.41500.88700.955900 | Door shutter fixing | 7.94d | 2026-09-16 | 2026-09-24 | 2494, 2507 |  | 7 day week With NGT Ban | 121430 |
| 2511 | 37200.37300.37500.38100.39300.40500.41500.88700.956000 | Electrical wiring work | 11.94d | 2026-09-24 | 2026-10-06 | 2495, 2510 |  | 7 day week With NGT Ban | 121440 |
| 2512 | 37200.37300.37500.38100.39300.40500.41500.88700.956100 | Painting 1st coat | 11.94d | 2026-10-06 | 2026-10-18 | 2496, 2509, 2510, 2511 |  | 7 day week With NGT Ban | 121450 |
| 2513 | 37200.37300.37500.38100.39300.40500.41500.88700.956200 | False ceiling | 9.94d | 2026-10-18 | 2026-10-28 | 2497, 2512 |  | 7 day week With NGT Ban | 121460 |

| ID | WBS | Task | Duration | Start | Finish | Predecessors | Constraint | Calendar | Unique_Task_ID |
| --- | --- | --- | --- | --- | --- | --- | --- | --- | --- |
| 2514 | 37200.37300.37500.38100.39300.40500.41500.88600 | **27th Floor** | 121.62d | 2026-07-13 | 2026-12-27 |  | start no earlier than 2026-07-13 | 7 day week With NGT Ban | 7568683 |
| 2515 | 37200.37300.37500.38100.39300.40500.41500.88600.956300 | Block Work | 7.94d | 2026-07-13 | 2026-07-21 | 2087, 2499 |  | 7 day week With NGT Ban | 121470 |
| 2516 | 37200.37300.37500.38100.39300.40500.41500.88600.956400 | Door Frame Fixing | 8.94d | 2026-07-21 | 2026-07-30 | 2500, 2515 |  | 7 day week With NGT Ban | 121490 |
| 2517 | 37200.37300.37500.38100.39300.40500.41500.88600.956500 | Internal Plumbing Works | 9.94d | 2026-07-21 | 2026-07-31 | 2501, 2515 |  | 7 day week With NGT Ban | 121500 |
| 2518 | 37200.37300.37500.38100.39300.40500.41500.88600.956600 | Waterproofing | 11.94d | 2026-07-31 | 2026-08-12 | 2502, 2517 |  | 7 day week With NGT Ban | 121510 |
| 2519 | 37200.37300.37500.38100.39300.40500.41500.88600.956700 | Internal Plaster | 8.94d | 2026-08-12 | 2026-08-21 | 2503, 2516, 2517, 2518 |  | 7 day week With NGT Ban | 121520 |
| 2520 | 37200.37300.37500.38100.39300.40500.41500.88600.956800 | IPS flooring work | 8.94d | 2026-08-21 | 2026-08-30 | 2504, 2516, 2518, 2519 |  | 7 day week With NGT Ban | 121530 |
| 2521 | 37200.37300.37500.38100.39300.40500.41500.88600.956900 | Toilet dado work | 7.94d | 2026-08-21 | 2026-08-29 | 2505, 2518, 2519 |  | 7 day week With NGT Ban | 121540 |
| 2522 | 37200.37300.37500.38100.39300.40500.41500.88600.957000 | Toilet flooring work | 6.94d | 2026-08-29 | 2026-09-05 | 2506, 2521 |  | 7 day week With NGT Ban | 121550 |
| 2523 | 37200.37300.37500.38100.39300.40500.41500.88600.957100 | Living dinning flooring | 14.94d | 2026-09-16 | 2026-10-01 | 2507, 2516, 2522 |  | 7 day week With NGT Ban | 121560 |
| 2524 | 37200.37300.37500.38100.39300.40500.41500.88600.957200 | Aluminium door-window fixing | 14.94d | 2026-10-08 | 2026-10-22 | 2508, 2520, 2523 |  | 7 day week With NGT Ban | 121570 |
| 2525 | 37200.37300.37500.38100.39300.40500.41500.88600.957300 | Putty primer coat | 5.94d | 2026-10-01 | 2026-10-07 | 2509, 2523 |  | 7 day week With NGT Ban | 121580 |
| 2526 | 37200.37300.37500.38100.39300.40500.41500.88600.957400 | Door shutter fixing | 7.94d | 2026-10-01 | 2026-10-09 | 2510, 2523 |  | 7 day week With NGT Ban | 121590 |
| 2527 | 37200.37300.37500.38100.39300.40500.41500.88600.957500 | Electrical wiring work | 11.94d | 2026-10-09 | 2026-10-21 | 2511, 2526 |  | 7 day week With NGT Ban | 121600 |
| 2528 | 37200.37300.37500.38100.39300.40500.41500.88600.957600 | Painting 1st coat | 11.94d | 2026-10-21 | 2026-12-17 | 2512, 2525, 2526, 2527 |  | 7 day week With NGT Ban | 121610 |
| 2529 | 37200.37300.37500.38100.39300.40500.41500.88600.957700 | False ceiling | 9.94d | 2026-12-17 | 2026-12-27 | 2513, 2528 |  | 7 day week With NGT Ban | 121620 |
| 2530 | 37200.37300.37500.38100.39300.40500.41500.88500 | **28th Floor** | 123.81d | 2026-07-26 | 2027-01-11 |  | start no earlier than 2026-07-26 | 7 day week With NGT Ban | 7568693 |
| 2531 | 37200.37300.37500.38100.39300.40500.41500.88500.957800 | Block Work | 7.94d | 2026-07-26 | 2026-08-03 | 2088, 2515 |  | 7 day week With NGT Ban | 121630 |
| 2532 | 37200.37300.37500.38100.39300.40500.41500.88500.957900 | Door Frame Fixing | 8.94d | 2026-08-03 | 2026-08-12 | 2516, 2531 |  | 7 day week With NGT Ban | 121650 |
| 2533 | 37200.37300.37500.38100.39300.40500.41500.88500.958000 | Internal Plumbing Works | 9.94d | 2026-08-03 | 2026-08-13 | 2517, 2531 |  | 7 day week With NGT Ban | 121660 |
| 2534 | 37200.37300.37500.38100.39300.40500.41500.88500.958100 | Waterproofing | 11.94d | 2026-08-13 | 2026-08-25 | 2518, 2533 |  | 7 day week With NGT Ban | 121670 |
| 2535 | 37200.37300.37500.38100.39300.40500.41500.88500.958200 | Internal Plaster | 8.94d | 2026-08-25 | 2026-09-03 | 2519, 2532, 2533, 2534 |  | 7 day week With NGT Ban | 121680 |
| 2536 | 37200.37300.37500.38100.39300.40500.41500.88500.958300 | IPS flooring work | 8.94d | 2026-09-03 | 2026-09-12 | 2520, 2532, 2534, 2535 |  | 7 day week With NGT Ban | 121690 |
| 2537 | 37200.37300.37500.38100.39300.40500.41500.88500.958400 | Toilet dado work | 7.94d | 2026-09-03 | 2026-09-11 | 2521, 2534, 2535 |  | 7 day week With NGT Ban | 121700 |
| 2538 | 37200.37300.37500.38100.39300.40500.41500.88500.958500 | Toilet flooring work | 6.94d | 2026-09-11 | 2026-09-18 | 2522, 2537 |  | 7 day week With NGT Ban | 121710 |
| 2539 | 37200.37300.37500.38100.39300.40500.41500.88500.958600 | Living dinning flooring | 14.94d | 2026-10-01 | 2026-10-16 | 2523, 2532, 2538 |  | 7 day week With NGT Ban | 121720 |
| 2540 | 37200.37300.37500.38100.39300.40500.41500.88500.958700 | Aluminium door-window fixing | 14.94d | 2026-10-23 | 2026-12-21 | 2524, 2536, 2539 |  | 7 day week With NGT Ban | 121730 |
| 2541 | 37200.37300.37500.38100.39300.40500.41500.88500.958800 | Putty primer coat | 5.94d | 2026-10-16 | 2026-10-22 | 2525, 2539 |  | 7 day week With NGT Ban | 121740 |
| 2542 | 37200.37300.37500.38100.39300.40500.41500.88500.958900 | Door shutter fixing | 7.94d | 2026-10-16 | 2026-10-24 | 2526, 2539 |  | 7 day week With NGT Ban | 121750 |
| 2543 | 37200.37300.37500.38100.39300.40500.41500.88500.959000 | Electrical wiring work | 11.94d | 2026-10-24 | 2026-12-20 | 2527, 2542 |  | 7 day week With NGT Ban | 121760 |
| 2544 | 37200.37300.37500.38100.39300.40500.41500.88500.959100 | Painting 1st coat | 11.94d | 2026-12-20 | 2027-01-01 | 2528, 2541, 2542, 2543 |  | 7 day week With NGT Ban | 121770 |
| 2545 | 37200.37300.37500.38100.39300.40500.41500.88500.959200 | False ceiling | 9.94d | 2027-01-01 | 2027-01-11 | 2529, 2544 |  | 7 day week With NGT Ban | 121780 |

| ID | WBS | Task | Duration | Start | Finish | Predecessors | Constraint | Calendar | Unique_Task_ID |
| --- | --- | --- | --- | --- | --- | --- | --- | --- | --- |
| 2546 | 37200.37300.37500.38100.39300.40500.41500.88400 | **29th Floor** | 123d | 2026-08-11 | 2027-01-26 |  | start no earlier than 2026-08-11 | 7 day week With NGT Ban | 7568703 |
| 2547 | 37200.37300.37500.38100.39300.40500.41500.88400.959300 | Block Work | 7.94d | 2026-08-11 | 2026-08-19 | 2089, 2531 |  | 7 day week With NGT Ban | 121790 |
| 2548 | 37200.37300.37500.38100.39300.40500.41500.88400.959400 | Door Frame Fixing | 8.94d | 2026-08-19 | 2026-08-28 | 2532, 2547 |  | 7 day week With NGT Ban | 121810 |
| 2549 | 37200.37300.37500.38100.39300.40500.41500.88400.959500 | Internal Plumbing Works | 9.94d | 2026-08-19 | 2026-08-29 | 2533, 2547 |  | 7 day week With NGT Ban | 121820 |
| 2550 | 37200.37300.37500.38100.39300.40500.41500.88400.959600 | Waterproofing | 11.94d | 2026-08-29 | 2026-09-10 | 2534, 2549 |  | 7 day week With NGT Ban | 121830 |
| 2551 | 37200.37300.37500.38100.39300.40500.41500.88400.959700 | Internal Plaster | 8.94d | 2026-09-10 | 2026-09-19 | 2535, 2548, 2549, 2550 |  | 7 day week With NGT Ban | 121840 |
| 2552 | 37200.37300.37500.38100.39300.40500.41500.88400.959800 | IPS flooring work | 8.94d | 2026-09-19 | 2026-09-27 | 2536, 2548, 2550, 2551 |  | 7 day week With NGT Ban | 121850 |
| 2553 | 37200.37300.37500.38100.39300.40500.41500.88400.959900 | Toilet dado work | 7.94d | 2026-09-19 | 2026-09-26 | 2537, 2550, 2551 |  | 7 day week With NGT Ban | 121860 |
| 2554 | 37200.37300.37500.38100.39300.40500.41500.88400.960000 | Toilet flooring work | 6.94d | 2026-09-27 | 2026-10-03 | 2538, 2553 |  | 7 day week With NGT Ban | 121870 |
| 2555 | 37200.37300.37500.38100.39300.40500.41500.88400.960100 | Living dinning flooring | 14.94d | 2026-10-16 | 2026-10-31 | 2539, 2548, 2554 |  | 7 day week With NGT Ban | 121880 |
| 2556 | 37200.37300.37500.38100.39300.40500.41500.88400.960200 | Aluminium door-window fixing | 14.94d | 2026-12-21 | 2027-01-05 | 2540, 2552, 2555 |  | 7 day week With NGT Ban | 121890 |
| 2557 | 37200.37300.37500.38100.39300.40500.41500.88400.960300 | Putty primer coat | 5.94d | 2026-10-31 | 2026-12-21 | 2541, 2555 |  | 7 day week With NGT Ban | 121900 |
| 2558 | 37200.37300.37500.38100.39300.40500.41500.88400.960400 | Door shutter fixing | 7.94d | 2026-10-31 | 2026-12-23 | 2542, 2555 |  | 7 day week With NGT Ban | 121910 |
| 2559 | 37200.37300.37500.38100.39300.40500.41500.88400.960500 | Electrical wiring work | 11.94d | 2026-12-23 | 2027-01-04 | 2543, 2558 |  | 7 day week With NGT Ban | 121920 |
| 2560 | 37200.37300.37500.38100.39300.40500.41500.88400.960600 | Painting 1st coat | 11.94d | 2027-01-04 | 2027-01-16 | 2544, 2557, 2558, 2559 |  | 7 day week With NGT Ban | 121930 |
| 2561 | 37200.37300.37500.38100.39300.40500.41500.88400.960700 | False ceiling | 9.94d | 2027-01-16 | 2027-01-26 | 2545, 2560 |  | 7 day week With NGT Ban | 121940 |
| 2562 | 37200.37300.37500.38100.39300.40500.41500.88300 | **30th Floor** | 116.31d | 2026-09-21 | 2027-03-02 |  | start no earlier than 2026-09-21 | 7 day week With NGT Ban | 7568713 |
| 2563 | 37200.37300.37500.38100.39300.40500.41500.88300.960800 | Block Work | 7.94d | 2026-09-21 | 2026-09-29 | 2090, 2547 |  | 7 day week With NGT Ban | 121950 |
| 2564 | 37200.37300.37500.38100.39300.40500.41500.88300.960900 | Door Frame Fixing | 8.94d | 2026-09-29 | 2026-10-08 | 2548, 2563 |  | 7 day week With NGT Ban | 121970 |
| 2565 | 37200.37300.37500.38100.39300.40500.41500.88300.961000 | Internal Plumbing Works | 9.94d | 2026-09-29 | 2026-10-09 | 2549, 2563 |  | 7 day week With NGT Ban | 121980 |
| 2566 | 37200.37300.37500.38100.39300.40500.41500.88300.961100 | Waterproofing | 11.94d | 2026-10-09 | 2026-10-21 | 2550, 2565 |  | 7 day week With NGT Ban | 121990 |
| 2567 | 37200.37300.37500.38100.39300.40500.41500.88300.961200 | Internal Plaster | 8.94d | 2026-10-21 | 2026-10-30 | 2551, 2564, 2565, 2566 |  | 7 day week With NGT Ban | 122000 |
| 2568 | 37200.37300.37500.38100.39300.40500.41500.88300.961300 | IPS flooring work | 8.94d | 2026-10-30 | 2026-12-23 | 2552, 2564, 2566, 2567 |  | 7 day week With NGT Ban | 122010 |
| 2569 | 37200.37300.37500.38100.39300.40500.41500.88300.961400 | Toilet dado work | 7.94d | 2026-10-30 | 2026-12-22 | 2553, 2566, 2567 |  | 7 day week With NGT Ban | 122020 |
| 2570 | 37200.37300.37500.38100.39300.40500.41500.88300.961500 | Toilet flooring work | 6.94d | 2026-12-22 | 2026-12-29 | 2554, 2569 |  | 7 day week With NGT Ban | 122030 |
| 2571 | 37200.37300.37500.38100.39300.40500.41500.88300.961600 | Living dinning flooring | 14.94d | 2026-12-29 | 2027-01-13 | 2555, 2564, 2570 |  | 7 day week With NGT Ban | 122040 |
| 2572 | 37200.37300.37500.38100.39300.40500.41500.88300.961700 | Aluminium door-window fixing | 14.94d | 2027-01-13 | 2027-01-28 | 2556, 2568, 2571 |  | 7 day week With NGT Ban | 122050 |
| 2573 | 37200.37300.37500.38100.39300.40500.41500.88300.961800 | Putty primer coat | 5.94d | 2027-01-13 | 2027-01-19 | 2557, 2571 |  | 7 day week With NGT Ban | 122060 |
| 2574 | 37200.37300.37500.38100.39300.40500.41500.88300.961900 | Door shutter fixing | 7.94d | 2027-01-13 | 2027-01-21 | 2558, 2571 |  | 7 day week With NGT Ban | 122070 |
| 2575 | 37200.37300.37500.38100.39300.40500.41500.88300.962000 | Electrical wiring work | 14.94d | 2027-01-21 | 2027-02-05 | 2559, 2574 |  | 7 day week With NGT Ban | 122080 |
| 2576 | 37200.37300.37500.38100.39300.40500.41500.88300.962100 | Painting 1st coat | 14.94d | 2027-02-05 | 2027-02-20 | 2560, 2573, 2574, 2575 |  | 7 day week With NGT Ban | 122090 |
| 2577 | 37200.37300.37500.38100.39300.40500.41500.88300.962200 | False ceiling | 9.94d | 2027-02-20 | 2027-03-02 | 2561, 2576 |  | 7 day week With NGT Ban | 122100 |

| ID | WBS | Task | Duration | Start | Finish | Predecessors | Constraint | Calendar | Unique_Task_ID |
| --- | --- | --- | --- | --- | --- | --- | --- | --- | --- |
| 2578 | 37200.37300.37500.38100.39300.40500.41500.88200 | **31st Floor** | 123.31d | 2026-09-29 | 2027-03-17 |  | start no earlier than 2026-09-29 | 7 day week With NGT Ban | 7568723 |
| 2579 | 37200.37300.37500.38100.39300.40500.41500.88200.962300 | Block Work | 7.94d | 2026-09-29 | 2026-10-07 | 2091, 2563 |  | 7 day week With NGT Ban | 122110 |
| 2580 | 37200.37300.37500.38100.39300.40500.41500.88200.962400 | Door Frame Fixing | 8.94d | 2026-10-08 | 2026-10-17 | 2564, 2579 |  | 7 day week With NGT Ban | 122130 |
| 2581 | 37200.37300.37500.38100.39300.40500.41500.88200.962500 | Internal Plumbing Works | 9.94d | 2026-10-09 | 2026-10-19 | 2565, 2579 |  | 7 day week With NGT Ban | 122140 |
| 2582 | 37200.37300.37500.38100.39300.40500.41500.88200.962600 | Waterproofing | 11.94d | 2026-10-21 | 2026-12-17 | 2566, 2581 |  | 7 day week With NGT Ban | 122150 |
| 2583 | 37200.37300.37500.38100.39300.40500.41500.88200.962700 | Internal Plaster | 8.94d | 2026-12-17 | 2026-12-26 | 2567, 2580, 2581, 2582 |  | 7 day week With NGT Ban | 122160 |
| 2584 | 37200.37300.37500.38100.39300.40500.41500.88200.962800 | IPS flooring work | 8.94d | 2026-12-26 | 2027-01-04 | 2568, 2580, 2582, 2583 |  | 7 day week With NGT Ban | 122170 |
| 2585 | 37200.37300.37500.38100.39300.40500.41500.88200.962900 | Toilet dado work | 7.94d | 2026-12-26 | 2027-01-03 | 2569, 2582, 2583 |  | 7 day week With NGT Ban | 122180 |
| 2586 | 37200.37300.37500.38100.39300.40500.41500.88200.963000 | Toilet flooring work | 6.94d | 2027-01-03 | 2027-01-10 | 2570, 2585 |  | 7 day week With NGT Ban | 122190 |
| 2587 | 37200.37300.37500.38100.39300.40500.41500.88200.963100 | Living dinning flooring | 14.94d | 2027-01-13 | 2027-01-28 | 2571, 2580, 2586 |  | 7 day week With NGT Ban | 122200 |
| 2588 | 37200.37300.37500.38100.39300.40500.41500.88200.963200 | Aluminium door-window fixing | 11.94d | 2027-01-28 | 2027-02-09 | 2572, 2584, 2587 |  | 7 day week With NGT Ban | 122210 |
| 2589 | 37200.37300.37500.38100.39300.40500.41500.88200.963300 | Putty primer coat | 5.94d | 2027-01-28 | 2027-02-03 | 2573, 2587 |  | 7 day week With NGT Ban | 122220 |
| 2590 | 37200.37300.37500.38100.39300.40500.41500.88200.963400 | Door shutter fixing | 7.94d | 2027-01-28 | 2027-02-05 | 2574, 2587 |  | 7 day week With NGT Ban | 122230 |
| 2591 | 37200.37300.37500.38100.39300.40500.41500.88200.963500 | Electrical wiring work | 14.94d | 2027-02-05 | 2027-02-20 | 2575, 2590 |  | 7 day week With NGT Ban | 122240 |
| 2592 | 37200.37300.37500.38100.39300.40500.41500.88200.963600 | Painting 1st coat | 14.94d | 2027-02-20 | 2027-03-07 | 2576, 2589, 2590, 2591 |  | 7 day week With NGT Ban | 122250 |
| 2593 | 37200.37300.37500.38100.39300.40500.41500.88200.963700 | False ceiling | 9.94d | 2027-03-07 | 2027-03-17 | 2577, 2592 |  | 7 day week With NGT Ban | 122260 |
| 2594 | 37200.37300.37500.38100.39300.40500.41500.88100 | **32nd Floor** | 130.31d | 2026-10-07 | 2027-03-31 |  | start no earlier than 2026-10-07 | 7 day week With NGT Ban | 7568733 |
| 2595 | 37200.37300.37500.38100.39300.40500.41500.88100.963800 | Block Work | 7.94d | 2026-10-07 | 2026-10-15 | 2092, 2579 |  | 7 day week With NGT Ban | 122270 |
| 2596 | 37200.37300.37500.38100.39300.40500.41500.88100.963900 | Door Frame Fixing | 8.94d | 2026-10-17 | 2026-10-26 | 2580, 2595 |  | 7 day week With NGT Ban | 122290 |
| 2597 | 37200.37300.37500.38100.39300.40500.41500.88100.964000 | Internal Plumbing Works | 9.94d | 2026-10-19 | 2026-10-29 | 2581, 2595 |  | 7 day week With NGT Ban | 122300 |
| 2598 | 37200.37300.37500.38100.39300.40500.41500.88100.964100 | Waterproofing | 11.94d | 2026-12-17 | 2026-12-29 | 2582, 2597 |  | 7 day week With NGT Ban | 122310 |
| 2599 | 37200.37300.37500.38100.39300.40500.41500.88100.964200 | Internal Plaster | 8.94d | 2026-12-29 | 2027-01-07 | 2583, 2596, 2597, 2598 |  | 7 day week With NGT Ban | 122320 |
| 2600 | 37200.37300.37500.38100.39300.40500.41500.88100.964300 | IPS flooring work | 8.94d | 2027-01-07 | 2027-01-16 | 2584, 2596, 2598, 2599 |  | 7 day week With NGT Ban | 122330 |
| 2601 | 37200.37300.37500.38100.39300.40500.41500.88100.964400 | Toilet dado work | 7.94d | 2027-01-07 | 2027-01-15 | 2585, 2598, 2599 |  | 7 day week With NGT Ban | 122340 |
| 2602 | 37200.37300.37500.38100.39300.40500.41500.88100.964500 | Toilet flooring work | 6.94d | 2027-01-15 | 2027-01-22 | 2586, 2601 |  | 7 day week With NGT Ban | 122350 |
| 2603 | 37200.37300.37500.38100.39300.40500.41500.88100.964600 | Living dinning flooring | 14.94d | 2027-01-28 | 2027-02-12 | 2587, 2596, 2602 |  | 7 day week With NGT Ban | 122360 |
| 2604 | 37200.37300.37500.38100.39300.40500.41500.88100.964700 | Aluminium door-window fixing | 11.94d | 2027-02-12 | 2027-02-24 | 2588, 2600, 2603 |  | 7 day week With NGT Ban | 122370 |
| 2605 | 37200.37300.37500.38100.39300.40500.41500.88100.964800 | Putty primer coat | 5.94d | 2027-02-12 | 2027-02-18 | 2589, 2603 |  | 7 day week With NGT Ban | 122380 |
| 2606 | 37200.37300.37500.38100.39300.40500.41500.88100.964900 | Door shutter fixing | 7.94d | 2027-02-12 | 2027-02-20 | 2590, 2603 |  | 7 day week With NGT Ban | 122390 |
| 2607 | 37200.37300.37500.38100.39300.40500.41500.88100.965000 | Electrical wiring work | 14.94d | 2027-02-20 | 2027-03-07 | 2591, 2606 |  | 7 day week With NGT Ban | 122400 |
| 2608 | 37200.37300.37500.38100.39300.40500.41500.88100.965100 | Painting 1st coat | 14.94d | 2027-03-07 | 2027-03-22 | 2592, 2605, 2606, 2607 |  | 7 day week With NGT Ban | 122410 |
| 2609 | 37200.37300.37500.38100.39300.40500.41500.88100.965200 | False ceiling | 9.94d | 2027-03-22 | 2027-03-31 | 2593, 2608 |  | 7 day week With NGT Ban | 122420 |

| ID | WBS | Task | Duration | Start | Finish | Predecessors | Constraint | Calendar | Unique_Task_ID |
| --- | --- | --- | --- | --- | --- | --- | --- | --- | --- |
| 2610 | 37200.37300.37500.38100.39300.40500.41500.88000 | **33rd Floor** | 134.31d | 2026-10-15 | 2027-04-12 |  | start no earlier than 2026-10-15 | 7 day week With NGT Ban | 7568743 |
| 2611 | 37200.37300.37500.38100.39300.40500.41500.88000.965300 | Block Work | 7.94d | 2026-10-15 | 2026-10-23 | 2093, 2595 |  | 7 day week With NGT Ban | 122430 |
| 2612 | 37200.37300.37500.38100.39300.40500.41500.88000.965400 | Door Frame Fixing | 8.94d | 2026-10-26 | 2026-12-19 | 2596, 2611 |  | 7 day week With NGT Ban | 122450 |
| 2613 | 37200.37300.37500.38100.39300.40500.41500.88000.965500 | Internal Plumbing Works | 9.94d | 2026-10-29 | 2026-12-23 | 2597, 2611 |  | 7 day week With NGT Ban | 122460 |
| 2614 | 37200.37300.37500.38100.39300.40500.41500.88000.965600 | Waterproofing | 11.94d | 2026-12-29 | 2027-01-10 | 2598, 2613 |  | 7 day week With NGT Ban | 122470 |
| 2615 | 37200.37300.37500.38100.39300.40500.41500.88000.965700 | Internal Plaster | 8.94d | 2027-01-10 | 2027-01-19 | 2599, 2612, 2613, 2614 |  | 7 day week With NGT Ban | 122480 |
| 2616 | 37200.37300.37500.38100.39300.40500.41500.88000.965800 | IPS flooring work | 8.94d | 2027-01-19 | 2027-01-28 | 2600, 2612, 2614, 2615 |  | 7 day week With NGT Ban | 122490 |
| 2617 | 37200.37300.37500.38100.39300.40500.41500.88000.965900 | Toilet dado work | 7.94d | 2027-01-19 | 2027-01-27 | 2601, 2614, 2615 |  | 7 day week With NGT Ban | 122500 |
| 2618 | 37200.37300.37500.38100.39300.40500.41500.88000.966000 | Toilet flooring work | 6.94d | 2027-01-27 | 2027-02-03 | 2602, 2617 |  | 7 day week With NGT Ban | 122510 |
| 2619 | 37200.37300.37500.38100.39300.40500.41500.88000.966100 | Living dinning flooring | 14.94d | 2027-02-12 | 2027-02-27 | 2603, 2612, 2618 |  | 7 day week With NGT Ban | 122520 |
| 2620 | 37200.37300.37500.38100.39300.40500.41500.88000.966200 | Aluminium door-window fixing | 14.94d | 2027-02-27 | 2027-03-14 | 2604, 2616, 2619 |  | 7 day week With NGT Ban | 122530 |
| 2621 | 37200.37300.37500.38100.39300.40500.41500.88000.966300 | Putty primer coat | 5.94d | 2027-02-27 | 2027-03-05 | 2605, 2619 |  | 7 day week With NGT Ban | 122540 |
| 2622 | 37200.37300.37500.38100.39300.40500.41500.88000.966400 | Door shutter fixing | 7.94d | 2027-02-27 | 2027-03-07 | 2606, 2619 |  | 7 day week With NGT Ban | 122550 |
| 2623 | 37200.37300.37500.38100.39300.40500.41500.88000.966500 | Electrical wiring work | 11.94d | 2027-03-07 | 2027-03-19 | 2607, 2622 |  | 7 day week With NGT Ban | 122560 |
| 2624 | 37200.37300.37500.38100.39300.40500.41500.88000.966600 | Painting 1st coat | 11.94d | 2027-03-22 | 2027-04-02 | 2608, 2621, 2622, 2623 |  | 7 day week With NGT Ban | 122570 |
| 2625 | 37200.37300.37500.38100.39300.40500.41500.88000.966700 | False ceiling | 9.94d | 2027-04-03 | 2027-04-12 | 2609, 2624 |  | 7 day week With NGT Ban | 122580 |
| 2626 | 37200.37300.37500.38100.39300.40500.41500.87900 | **34th Floor** | 138.31d | 2026-10-23 | 2027-04-24 |  | start no earlier than 2026-10-23 | 7 day week With NGT Ban | 7568753 |
| 2627 | 37200.37300.37500.38100.39300.40500.41500.87900.966800 | Block Work | 7.94d | 2026-10-23 | 2026-10-31 | 2094, 2611 |  | 7 day week With NGT Ban | 122590 |
| 2628 | 37200.37300.37500.38100.39300.40500.41500.87900.966900 | Door Frame Fixing | 8.94d | 2026-12-19 | 2026-12-28 | 2612, 2627 |  | 7 day week With NGT Ban | 122610 |
| 2629 | 37200.37300.37500.38100.39300.40500.41500.87900.967000 | Internal Plumbing Works | 9.94d | 2026-12-23 | 2027-01-02 | 2613, 2627 |  | 7 day week With NGT Ban | 122620 |
| 2630 | 37200.37300.37500.38100.39300.40500.41500.87900.967100 | Waterproofing | 11.94d | 2027-01-10 | 2027-01-22 | 2614, 2629 |  | 7 day week With NGT Ban | 122630 |
| 2631 | 37200.37300.37500.38100.39300.40500.41500.87900.967200 | Internal Plaster | 8.94d | 2027-01-22 | 2027-01-31 | 2615, 2628, 2629, 2630 |  | 7 day week With NGT Ban | 122640 |
| 2632 | 37200.37300.37500.38100.39300.40500.41500.87900.967300 | IPS flooring work | 8.94d | 2027-01-31 | 2027-02-09 | 2616, 2628, 2630, 2631 |  | 7 day week With NGT Ban | 122650 |
| 2633 | 37200.37300.37500.38100.39300.40500.41500.87900.967400 | Toilet dado work | 7.94d | 2027-01-31 | 2027-02-08 | 2617, 2630, 2631 |  | 7 day week With NGT Ban | 122660 |
| 2634 | 37200.37300.37500.38100.39300.40500.41500.87900.967500 | Toilet flooring work | 6.94d | 2027-02-08 | 2027-02-15 | 2618, 2633 |  | 7 day week With NGT Ban | 122670 |
| 2635 | 37200.37300.37500.38100.39300.40500.41500.87900.967600 | Living dinning flooring | 14.94d | 2027-02-27 | 2027-03-14 | 2619, 2628, 2634 |  | 7 day week With NGT Ban | 122680 |
| 2636 | 37200.37300.37500.38100.39300.40500.41500.87900.967700 | Aluminium door-window fixing | 14.94d | 2027-03-14 | 2027-03-29 | 2620, 2632, 2635 |  | 7 day week With NGT Ban | 122690 |
| 2637 | 37200.37300.37500.38100.39300.40500.41500.87900.967800 | Putty primer coat | 5.94d | 2027-03-14 | 2027-03-20 | 2621, 2635 |  | 7 day week With NGT Ban | 122700 |
| 2638 | 37200.37300.37500.38100.39300.40500.41500.87900.967900 | Door shutter fixing | 7.94d | 2027-03-14 | 2027-03-22 | 2622, 2635 |  | 7 day week With NGT Ban | 122710 |
| 2639 | 37200.37300.37500.38100.39300.40500.41500.87900.968000 | Electrical wiring work | 11.94d | 2027-03-22 | 2027-04-02 | 2623, 2638 |  | 7 day week With NGT Ban | 122720 |
| 2640 | 37200.37300.37500.38100.39300.40500.41500.87900.968100 | Painting 1st coat | 11.94d | 2027-04-03 | 2027-04-14 | 2624, 2637, 2638, 2639 |  | 7 day week With NGT Ban | 122730 |
| 2641 | 37200.37300.37500.38100.39300.40500.41500.87900.968200 | False ceiling | 9.94d | 2027-04-14 | 2027-04-24 | 2625, 2640 |  | 7 day week With NGT Ban | 122740 |

| ID | WBS | Task | Duration | Start | Finish | Predecessors | Constraint | Calendar | Unique_Task_ID |
| --- | --- | --- | --- | --- | --- | --- | --- | --- | --- |
| 2642 | 37200.37300.37500.38100.39300.40500.41500.87800 | **35th Floor** | 145.31d | 2026-10-31 | 2027-05-09 |  | start no earlier than 2026-10-31 | 7 day week With NGT Ban | 7568763 |
| 2643 | 37200.37300.37500.38100.39300.40500.41500.87800.968300 | Block Work | 7.94d | 2026-10-31 | 2026-12-23 | 2095, 2627 |  | 7 day week With NGT Ban | 122750 |
| 2644 | 37200.37300.37500.38100.39300.40500.41500.87800.968400 | Door Frame Fixing | 8.94d | 2026-12-28 | 2027-01-06 | 2628, 2643 |  | 7 day week With NGT Ban | 122770 |
| 2645 | 37200.37300.37500.38100.39300.40500.41500.87800.968500 | Internal Plumbing Works | 9.94d | 2027-01-02 | 2027-01-12 | 2629, 2643 |  | 7 day week With NGT Ban | 122780 |
| 2646 | 37200.37300.37500.38100.39300.40500.41500.87800.968600 | Waterproofing | 11.94d | 2027-01-22 | 2027-02-03 | 2630, 2645 |  | 7 day week With NGT Ban | 122790 |
| 2647 | 37200.37300.37500.38100.39300.40500.41500.87800.968700 | Internal Plaster | 8.94d | 2027-02-03 | 2027-02-12 | 2631, 2644, 2645, 2646 |  | 7 day week With NGT Ban | 122800 |
| 2648 | 37200.37300.37500.38100.39300.40500.41500.87800.968800 | IPS flooring work | 8.94d | 2027-02-12 | 2027-02-21 | 2632, 2644, 2646, 2647 |  | 7 day week With NGT Ban | 122810 |
| 2649 | 37200.37300.37500.38100.39300.40500.41500.87800.968900 | Toilet dado work | 7.94d | 2027-02-12 | 2027-02-20 | 2633, 2646, 2647 |  | 7 day week With NGT Ban | 122820 |
| 2650 | 37200.37300.37500.38100.39300.40500.41500.87800.969000 | Toilet flooring work | 6.94d | 2027-02-20 | 2027-02-27 | 2634, 2649 |  | 7 day week With NGT Ban | 122830 |
| 2651 | 37200.37300.37500.38100.39300.40500.41500.87800.969100 | Living dinning flooring | 14.94d | 2027-03-14 | 2027-03-29 | 2635, 2644, 2650 |  | 7 day week With NGT Ban | 122840 |
| 2652 | 37200.37300.37500.38100.39300.40500.41500.87800.969200 | Aluminium door-window fixing | 14.94d | 2027-03-29 | 2027-04-12 | 2636, 2648, 2651 |  | 7 day week With NGT Ban | 122850 |
| 2653 | 37200.37300.37500.38100.39300.40500.41500.87800.969300 | Putty primer coat | 5.94d | 2027-03-29 | 2027-04-03 | 2637, 2651 |  | 7 day week With NGT Ban | 122860 |
| 2654 | 37200.37300.37500.38100.39300.40500.41500.87800.969400 | Door shutter fixing | 7.94d | 2027-03-29 | 2027-04-05 | 2638, 2651 |  | 7 day week With NGT Ban | 122870 |
| 2655 | 37200.37300.37500.38100.39300.40500.41500.87800.969500 | Electrical wiring work | 11.94d | 2027-04-06 | 2027-04-17 | 2639, 2654 |  | 7 day week With NGT Ban | 122880 |
| 2656 | 37200.37300.37500.38100.39300.40500.41500.87800.969600 | Painting 1st coat | 11.94d | 2027-04-17 | 2027-04-29 | 2640, 2653, 2654, 2655 |  | 7 day week With NGT Ban | 122890 |
| 2657 | 37200.37300.37500.38100.39300.40500.41500.87800.969700 | False ceiling | 9.94d | 2027-04-29 | 2027-05-09 | 2641, 2656 |  | 7 day week With NGT Ban | 122900 |
| 2658 | 37200.37300.37500.38100.39300.40500.191200 | **Terrace Finishing** | 79.88d | 2026-08-04 | 2026-10-23 |  | start no earlier than 2026-08-04 | 7 day week With NGT Ban | 7571263 |
| 2659 | 37200.37300.37500.38100.39300.40500.191200.432100 | Terrace waterproofing | 39.94d | 2026-08-04 | 2026-09-13 | 2052 |  | 7 day week With NGT Ban | 7579833 |
| 2660 | 37200.37300.37500.38100.39300.40500.191200.432200 | Terrace finishing | 39.94d | 2026-09-13 | 2026-10-23 | 2659 |  | 7 day week With NGT Ban | 7579843 |
| 2661 | 37200.37300.37500.38100.39300.40500.99500 | **Common Area Finishing** | 279.31d | 2025-09-18 | 2026-08-09 |  | start no earlier than 2025-09-18 | 7 day week With NGT Ban | 7569243 |
| 2662 | 37200.37300.37500.38100.39300.40500.99500.432300 | Block Work | 39.94d | 2025-09-18 | 2025-10-28 | 2063FS+0.25d |  | 7 day week With NGT Ban | 7579853 |
| 2663 | 37200.37300.37500.38100.39300.40500.99500.432400 | Internal Plaster | 119.94d | 2025-10-24 | 2026-04-07 | 2668SS+17.88d |  | 7 day week With NGT Ban | 7579863 |
| 2664 | 37200.37300.37500.38100.39300.40500.99500.432500 | Staircase railing fixing | 149.94d | 2026-03-12 | 2026-08-09 | 2666SS+26.75d, 2665SS+26.75d |  | 7 day week With NGT Ban | 7579873 |
| 2665 | 37200.37300.37500.38100.39300.40500.99500.432600 | Main staircase flooring | 149.94d | 2026-02-13 | 2026-07-13 | 2666SS+13.38d |  | 7 day week With NGT Ban | 7579883 |
| 2666 | 37200.37300.37500.38100.39300.40500.99500.432700 | Fire staircase flooring | 149.94d | 2026-01-31 | 2026-06-30 | 2663SS+13.38d, 2670SS+26.75d |  | 7 day week With NGT Ban | 7579893 |
| 2667 | 37200.37300.37500.38100.39300.40500.99500.432800 | Fire door work | 59.94d | 2026-03-12 | 2026-05-11 | 2665SS+26.75d, 2666SS+26.75d |  | 7 day week With NGT Ban | 7579903 |
| 2668 | 37200.37300.37500.38100.39300.40500.99500.432900 | Electrical wiring work | 119.94d | 2025-10-06 | 2026-03-20 | 2662SS+17.88d |  | 7 day week With NGT Ban | 7579913 |
| 2669 | 37200.37300.37500.38100.39300.40500.99500.433000 | Lobby flooring | 150d | 2025-10-10 | 2026-04-23 | 2668SS+3.38d |  | 7 day week With NGT Ban | 7579923 |
| 2670 | 37200.37300.37500.38100.39300.40500.99500.433100 | Ceiling & wall putty-primer | 109.94d | 2026-01-04 | 2026-04-24 | 2663SS+26.75d |  | 7 day week With NGT Ban | 7579933 |
| 2671 | 37200.37300.37500.38100.39300.40500.99500.433200 | Ceiling & wall painting | 99.94d | 2026-01-22 | 2026-05-02 | 2670SS+17.88d |  | 7 day week With NGT Ban | 7579943 |
| 2672 | 37200.37300.37500.38100.39300.40500.99500.433300 | Light fixture supply & installation | 44.94d | 2026-03-16 | 2026-04-30 | 2671SS+53.38d |  | 7 day week With NGT Ban | 7579953 |

| ID | WBS | Task | Duration | Start | Finish | Predecessors | Constraint | Calendar | Unique_Task_ID |
| --- | --- | --- | --- | --- | --- | --- | --- | --- | --- |
| 2673 | 37200.37300.37500.38100.39300.40500.46700 | **Balcony Glass Railing** | 58.12d | 2027-06-10 | 2027-08-07 |  | start no earlier than 2027-06-10 | 7 day week With NGT Ban | 133870 |
| 2674 | 37200.37300.37500.38100.39300.40500.46700.433400 | 1st Floor | 1.94d | 2027-06-10 | 2027-06-12 | 2742 |  | 7 day week With NGT Ban | 133880 |
| 2675 | 37200.37300.37500.38100.39300.40500.46700.433500 | 2nd Floor | 1.94d | 2027-06-12 | 2027-06-14 | 2674 |  | 7 day week With NGT Ban | 133890 |
| 2676 | 37200.37300.37500.38100.39300.40500.46700.433600 | 3rd Floor | 1.94d | 2027-06-14 | 2027-06-16 | 2675 |  | 7 day week With NGT Ban | 133900 |
| 2677 | 37200.37300.37500.38100.39300.40500.46700.433700 | 4th Floor | 1.94d | 2027-06-16 | 2027-06-18 | 2676 |  | 7 day week With NGT Ban | 133910 |
| 2678 | 37200.37300.37500.38100.39300.40500.46700.433800 | 5th Floor | 1.94d | 2027-06-18 | 2027-06-20 | 2677 |  | 7 day week With NGT Ban | 133920 |
| 2679 | 37200.37300.37500.38100.39300.40500.46700.433900 | 6th Floor | 1.94d | 2027-06-20 | 2027-06-22 | 2678 |  | 7 day week With NGT Ban | 133930 |
| 2680 | 37200.37300.37500.38100.39300.40500.46700.434000 | 7th Floor | 1.94d | 2027-06-22 | 2027-06-24 | 2679 |  | 7 day week With NGT Ban | 133940 |
| 2681 | 37200.37300.37500.38100.39300.40500.46700.434100 | 8th Floor | 1.94d | 2027-06-24 | 2027-06-26 | 2680 |  | 7 day week With NGT Ban | 133950 |
| 2682 | 37200.37300.37500.38100.39300.40500.46700.434200 | 9th Floor | 1.94d | 2027-06-26 | 2027-06-27 | 2681 |  | 7 day week With NGT Ban | 133960 |
| 2683 | 37200.37300.37500.38100.39300.40500.46700.434300 | 10th Floor | 1.94d | 2027-06-28 | 2027-06-29 | 2682 |  | 7 day week With NGT Ban | 133970 |
| 2684 | 37200.37300.37500.38100.39300.40500.46700.434400 | 11th Floor | 1.94d | 2027-06-29 | 2027-07-01 | 2683 |  | 7 day week With NGT Ban | 133980 |
| 2685 | 37200.37300.37500.38100.39300.40500.46700.434500 | 12th Floor | 1.94d | 2027-07-01 | 2027-07-03 | 2684 |  | 7 day week With NGT Ban | 133990 |
| 2686 | 37200.37300.37500.38100.39300.40500.46700.434600 | 13th Floor | 1.94d | 2027-07-03 | 2027-07-05 | 2685 |  | 7 day week With NGT Ban | 134000 |
| 2687 | 37200.37300.37500.38100.39300.40500.46700.434700 | 14th Floor | 1.94d | 2027-07-05 | 2027-07-07 | 2686 |  | 7 day week With NGT Ban | 134010 |
| 2688 | 37200.37300.37500.38100.39300.40500.46700.434800 | 15th Floor | 1.94d | 2027-07-07 | 2027-07-09 | 2687 |  | 7 day week With NGT Ban | 134020 |
| 2689 | 37200.37300.37500.38100.39300.40500.46700.434900 | 16th Floor | 1.94d | 2027-07-09 | 2027-07-11 | 2688 |  | 7 day week With NGT Ban | 134030 |
| 2690 | 37200.37300.37500.38100.39300.40500.46700.435000 | 17th Floor | 1.94d | 2027-07-11 | 2027-07-13 | 2689 |  | 7 day week With NGT Ban | 134040 |
| 2691 | 37200.37300.37500.38100.39300.40500.46700.435100 | 18th Floor | 1.94d | 2027-07-13 | 2027-07-15 | 2690 |  | 7 day week With NGT Ban | 134050 |
| 2692 | 37200.37300.37500.38100.39300.40500.46700.435200 | 19th Floor | 1.94d | 2027-07-15 | 2027-07-17 | 2691 |  | 7 day week With NGT Ban | 134060 |
| 2693 | 37200.37300.37500.38100.39300.40500.46700.435300 | 20th Floor | 1.94d | 2027-07-17 | 2027-07-19 | 2692 |  | 7 day week With NGT Ban | 134070 |
| 2694 | 37200.37300.37500.38100.39300.40500.46700.435400 | 21st Floor | 1.94d | 2027-07-19 | 2027-07-21 | 2693 |  | 7 day week With NGT Ban | 134080 |
| 2695 | 37200.37300.37500.38100.39300.40500.46700.435500 | 22nd Floor | 1.94d | 2027-07-21 | 2027-07-23 | 2694 |  | 7 day week With NGT Ban | 134090 |
| 2696 | 37200.37300.37500.38100.39300.40500.46700.435600 | 23rd Floor | 1.94d | 2027-07-23 | 2027-07-25 | 2695 |  | 7 day week With NGT Ban | 134100 |
| 2697 | 37200.37300.37500.38100.39300.40500.46700.435700 | 24th Floor | 1.94d | 2027-07-25 | 2027-07-27 | 2696 |  | 7 day week With NGT Ban | 134110 |
| 2698 | 37200.37300.37500.38100.39300.40500.46700.435800 | 25th Floor | 1.94d | 2027-07-27 | 2027-07-28 | 2697 |  | 7 day week With NGT Ban | 134120 |
| 2699 | 37200.37300.37500.38100.39300.40500.46700.435900 | 26th Floor | 1.94d | 2027-07-29 | 2027-07-30 | 2698 |  | 7 day week With NGT Ban | 134130 |
| 2700 | 37200.37300.37500.38100.39300.40500.46700.436000 | 27th Floor | 1.94d | 2027-07-30 | 2027-08-01 | 2699 |  | 7 day week With NGT Ban | 134140 |
| 2701 | 37200.37300.37500.38100.39300.40500.46700.436100 | 28th Floor | 1.94d | 2027-08-01 | 2027-08-03 | 2700 |  | 7 day week With NGT Ban | 134150 |
| 2702 | 37200.37300.37500.38100.39300.40500.46700.436200 | 29th Floor | 1.94d | 2027-08-03 | 2027-08-05 | 2701 |  | 7 day week With NGT Ban | 134160 |
| 2703 | 37200.37300.37500.38100.39300.40500.46700.436300 | 30th Floor | 1.94d | 2027-08-05 | 2027-08-07 | 2702 |  | 7 day week With NGT Ban | 134170 |
| 2704 | 37200.37300.37500.38100.39300.40500.46700.436400 | 31st Floor | 0d | 2027-08-07 | 2027-08-07 | 2703 |  | 7 day week With NGT Ban | 134180 |
| 2705 | 37200.37300.37500.38100.39300.40500.46700.436500 | 32nd Floor | 0d | 2027-08-07 | 2027-08-07 | 2704 |  | 7 day week With NGT Ban | 134190 |
| 2706 | 37200.37300.37500.38100.39300.40500.46700.436600 | 33rd Floor | 0d | 2027-08-07 | 2027-08-07 | 2705 |  | 7 day week With NGT Ban | 134200 |
| 2707 | 37200.37300.37500.38100.39300.40500.46700.436700 | 34th Floor | 0d | 2027-08-07 | 2027-08-07 | 2706 |  | 7 day week With NGT Ban | 134210 |
| 2708 | 37200.37300.37500.38100.39300.40500.46700.436800 | 35th Floor | 0d | 2027-08-07 | 2027-08-07 | 2707 |  | 7 day week With NGT Ban | 134220 |

| ID | WBS | Task | Duration | Start | Finish | Predecessors | Constraint | Calendar | Unique_Task_ID |
| --- | --- | --- | --- | --- | --- | --- | --- | --- | --- |
| 2709 | 37200.37300.37500.38100.95300 | **MEP work** | 633.12d | 2026-01-31 | 2027-12-10 |  | start no earlier than 2026-01-31 | 7 day week With NGT Ban | 7569133 |
| 2710 | 37200.37300.37500.38100.95300.97400 | **Electrical work** | 233.25d | 2026-09-14 | 2027-06-20 |  | start no earlier than 2026-09-14 | 7 day week With NGT Ban | 7569183 |
| 2711 | 37200.37300.37500.38100.95300.97400.279900 | Cable Tray | 89.94d | 2026-09-14 | 2027-01-27 | 2057 |  | 7 day week With NGT Ban | 7573683 |
| 2712 | 37200.37300.37500.38100.95300.97400.280000 | Cable, main & sub main | 79.94d | 2026-10-24 | 2027-02-26 | 2711SS+40d |  | 7 day week With NGT Ban | 7573693 |
| 2713 | 37200.37300.37500.38100.95300.97400.280100 | LT panel & DB | 119.94d | 2027-01-27 | 2027-05-27 | 2711 |  | 7 day week With NGT Ban | 7573703 |
| 2714 | 37200.37300.37500.38100.95300.97400.280200 | Rising main | 89.94d | 2027-03-22 | 2027-06-20 | 2711FS+53.38d |  | 7 day week With NGT Ban | 7573713 |
| 2715 | 37200.37300.37500.38100.95300.97400.280300 | EARTHING Works | 59.94d | 2027-02-10 | 2027-04-11 | 2711FS+13.38d |  | 7 day week With NGT Ban | 7573723 |
| 2716 | 37200.37300.37500.38100.95300.97400.280400 | Advance lightening protection | 59.94d | 2026-10-23 | 2027-02-05 | 2660 |  | 7 day week With NGT Ban | 7573733 |
| 2717 | 37200.37300.37500.38100.95300.97400.280500 | Inverter | 34.94d | 2027-04-11 | 2027-05-15 | 2715 |  | 7 day week With NGT Ban | 7573743 |
| 2718 | 37200.37300.37500.38100.95300.97400.280600 | Energy meter | 59.94d | 2027-02-26 | 2027-04-27 | 2712 |  | 7 day week With NGT Ban | 7573753 |
| 2719 | 37200.37300.37500.38100.95300.97400.280700 | Exhast fan | 59.94d | 2027-02-16 | 2027-04-17 | 2652FF+4.5d |  | 7 day week With NGT Ban | 7573763 |
| 2720 | 37200.37300.37500.38100.95300.97400.280800 | FTTH | 59.94d | 2027-04-02 | 2027-05-31 | 2715FS-9d |  | 7 day week With NGT Ban | 7573773 |
| 2721 | 37200.37300.37500.38100.95300.97400.280900 | Security System - FA & PA | 54.94d | 2027-04-07 | 2027-05-31 | 2720FF |  | 7 day week With NGT Ban | 7573783 |
| 2722 | 37200.37300.37500.38100.95300.97400.281000 | Solar water heater | 59.94d | 2026-10-23 | 2027-02-05 | 2660 |  | 7 day week With NGT Ban | 7573793 |
| 2723 | 37200.37300.37500.38100.95300.122200 | **Plumbing wrok** | 448.75d | 2026-02-26 | 2027-07-05 |  | start no earlier than 2026-02-26 | 7 day week With NGT Ban | 7569423 |
| 2724 | 37200.37300.37500.38100.95300.122200.281100 | Terrace looping | 44.94d | 2026-09-13 | 2026-10-28 | 2659 |  | 7 day week With NGT Ban | 7573803 |
| 2725 | 37200.37300.37500.38100.95300.122200.281200 | Shaft Plumbing | 119.94d | 2026-10-28 | 2027-04-11 | 2724 |  | 7 day week With NGT Ban | 7573813 |
| 2726 | 37200.37300.37500.38100.95300.122200.281300 | CP sanitary fixture supply | 74.94d | 2027-04-21 | 2027-07-05 | 2647, 2650FS+53.38d |  | 7 day week With NGT Ban | 7573823 |
| 2727 | 37200.37300.37500.38100.95300.122200.281400 | Cold & flushing water supply | 89.94d | 2026-02-26 | 2026-05-27 | 2663SS+80d |  | 7 day week With NGT Ban | 7573833 |
| 2728 | 37200.37300.37500.38100.95300.122200.281500 | Misc work | 29.94d | 2026-05-18 | 2026-06-17 | 2727FS-9d |  | 7 day week With NGT Ban | 7573843 |
| 2729 | 37200.37300.37500.38100.95300.128700 | **Fire fighting work** | 345.06d | 2026-01-31 | 2027-02-25 |  | start no earlier than 2026-01-31 | 7 day week With NGT Ban | 7569533 |
| 2730 | 37200.37300.37500.38100.95300.128700.281600 | Fire hydrant work | 89.94d | 2026-01-31 | 2026-04-30 | 2663SS+53.38d |  | 7 day week With NGT Ban | 7573853 |
| 2731 | 37200.37300.37500.38100.95300.128700.281700 | Sprinkler & piping work | 88d | 2026-05-27 | 2026-08-23 | 2730FS+26.75d |  | 7 day week With NGT Ban | 7573863 |
| 2732 | 37200.37300.37500.38100.95300.128700.281800 | Shaft Downtake works | 89.94d | 2026-09-13 | 2027-01-26 | 2659 |  | 7 day week With NGT Ban | 7573873 |
| 2733 | 37200.37300.37500.38100.95300.128700.281900 | Connection to pump room | 29.94d | 2027-01-26 | 2027-02-25 | 2732 |  | 7 day week With NGT Ban | 7573883 |

| ID | WBS | Task | Duration | Start | Finish | Predecessors | Complete | Constraint | Calendar | Unique_Task_ID |
| --- | --- | --- | --- | --- | --- | --- | --- | --- | --- | --- |
| 2734 | 37200.37300.37500.38100.95300.183700 | **Lift work** | 169.81d | 2026-09-14 | 2027-04-17 |  |  | start no earlier than 2026-09-14 | 7 day week With NGT Ban | 7571183 |
| 2735 | 37200.37300.37500.38100.95300.183700.282000 | Lift Shaft Handover | 39.94d | 2026-09-14 | 2026-10-24 | 2057 |  |  | 7 day week With NGT Ban | 7573893 |
| 2736 | 37200.37300.37500.38100.95300.183700.282100 | Lift installation work | 44.94d | 2026-10-24 | 2027-01-22 | 2735 |  |  | 7 day week With NGT Ban | 7573903 |
| 2737 | 37200.37300.37500.38100.95300.183700.282200 | Lift testing and commissioning | 84.94d | 2027-01-22 | 2027-04-17 | 2736 |  |  | 7 day week With NGT Ban | 7573913 |
| 2738 | 37200.37300.37500.38100.95300.193700 | **AC work** | 96.94d | 2027-09-04 | 2027-12-10 |  |  | start no earlier than 2027-09-04 | 7 day week With NGT Ban | 7571303 |
| 2739 | 37200.37300.37500.38100.95300.193700.282300 | Split AC | 96.94d | 2027-09-04 | 2027-12-10 | 2755FS-26.75d |  |  | 7 day week With NGT Ban | 7573923 |
| 2740 | 37200.37300.37500.38100.126000 | **Tower Completion** | 239.88d | 2026-10-28 | 2027-08-09 |  |  | start no earlier than 2026-10-28 | 7 day week With NGT Ban | 7569463 |
| 2741 | 37200.37300.37500.38100.126000.224900 | SURFACE PREPARATION | 79.94d | 2026-10-28 | 2027-03-02 | 2095FS+1.88d |  |  | 7 day week With NGT Ban | 7571663 |
| 2742 | 37200.37300.37500.38100.126000.225000 | External Painting | 99.94d | 2027-03-02 | 2027-06-10 | 2741 |  |  | 7 day week With NGT Ban | 7571673 |
| 2743 | 37200.37300.37500.38100.126000.225100 | Final coat of painting | 60d | 2027-06-10 | 2027-08-09 | 2742 |  |  | 7 day week With NGT Ban | 7571683 |
| 2744 | 37200.37300.37500.38100.126000.225200 | Misc. work | 59.94d | 2027-06-10 | 2027-08-09 | 2742 |  |  | 7 day week With NGT Ban | 7571693 |
| 2745 | 37200.37300.37500.38100.193000 | **Basement lobby** | 60d | 2026-04-23 | 2026-06-22 |  |  | start no earlier than 2026-04-23 | 7 day week With NGT Ban | 7571343 |
| 2746 | 37200.37300.37500.38100.193000.225300 | Basement lobby | 60d | 2026-04-23 | 2026-06-22 | 2669 |  |  | 7 day week With NGT Ban | 7571703 |
| 2747 | 37200.37300.37500.38100.114200 | **Post OC activities** | 316.25d | 2027-04-17 | 2028-02-28 |  |  | start no earlier than 2027-04-17 | 7 day week With NGT Ban | 7569333 |
| 2748 | 37200.37300.37500.38100.114200.225400 | Wardrobe installation | 176.94d | 2027-09-04 | 2028-02-28 | 2755FS-26.75d |  |  | 7 day week With NGT Ban | 7571713 |
| 2749 | 37200.37300.37500.38100.114200.225500 | CP & SANITARYWARE | 116.94d | 2027-09-04 | 2027-12-30 | 2755FS-26.75d, 2726 |  |  | 7 day week With NGT Ban | 7571723 |
| 2750 | 37200.37300.37500.38100.114200.225600 | Wooden Flooring | 176.94d | 2027-09-04 | 2028-02-28 | 2755FS-26.75d |  |  | 7 day week With NGT Ban | 7571733 |
| 2751 | 37200.37300.37500.38100.114200.225700 | Electrical Fixtures And Fittings | 74.94d | 2027-04-17 | 2027-07-01 | 2655 |  |  | 7 day week With NGT Ban | 7571743 |
| 2752 | 37200.37300.37500.38100.114200.225800 | Modular Kitchen | 176.94d | 2027-09-04 | 2028-02-28 | 2748SS |  |  | 7 day week With NGT Ban | 114831 |
| 2753 | 37200.37300.37500.38100.114200.225900 | Final Coat Paint | 89.94d | 2027-09-17 | 2027-12-16 | 2755FS-13.38d, 2672 |  |  | 7 day week With NGT Ban | 7571753 |
| 2754 | 37200.37300.37500.38100.216000 | OC Application/Readiness | 0d | 2027-08-07 | 2027-08-07 | 2057, 2664FS+7.12d, 1869, 1870, 2055, 2667, 2657, 2708, 2713, 2714, 2716, 2717, 2718, 2719, 2721, 2722, 2725, 2728, 2731, 2733, 2737 |  |  | 7 day week With NGT Ban | 7571413 |
| 2755 | 37200.37300.37500.38100.216100 | OC Receipt | 0.94d | 2027-09-30 | 2027-09-30 | 2754FS+53.38d, 2743, 2744 |  |  | 7 day week With NGT Ban | 7571423 |
| 2756 | 37200.37300.37500.38100.216200 | Offer To Possession | 29.94d | 2028-02-28 | 2028-03-29 | 2748, 2749, 2750, 2751, 2752, 2753 |  |  | 7 day week With NGT Ban | 132360 |
| 2757 | 37200.37300.37500.38200 | **Tower 2** | 1428.31d | 2024-01-10 | 2028-04-06 |  | 3% | start no earlier than 2024-01-10 | 7 day week With NGT Ban | 7567513 |
| 2758 | 37200.37300.37500.38200.100200 | **Substructure** | 604.94d | 2024-01-10 | 2025-10-06 |  | 56% | start no earlier than 2024-01-10 | 7 day week With NGT Ban | 7569223 |
| 2759 | 37200.37300.37500.38200.100200.113400 | **Soil Bed Preparation** | 476.44d | 2024-01-10 | 2025-05-30 |  | 78% | start no earlier than 2024-01-10 | 7 day week With NGT Ban | 7569343 |
| 2760 | 37200.37300.37500.38200.100200.113400.208700 | Test Piling | 24.94d | 2024-02-01 | 2024-02-25 |  | 100% | start no earlier than 2024-02-01 | 7 day week With NGT Ban | 7573933 |
| 2761 | 37200.37300.37500.38200.100200.113400.208600 | Excavation | 29.94d | 2024-01-10 | 2024-02-08 | 7SS+36.74d | 100% | start no earlier than 2024-01-10 | 7 day week With NGT Ban | 7573943 |
| 2762 | 37200.37300.37500.38200.100200.113400.208500 | Main Piling Work | 169.06d | 2024-04-12 | 2024-10-11 | 7FS-12.45d | 100% | start no earlier than 2024-04-12 | 7 day week With NGT Ban | 7573953 |
| 2763 | 37200.37300.37500.38200.100200.113400.282400 | Anti-termite | 4.94d | 2025-04-01 | 2025-04-05 | 2761FS-14.7d, 2762FS+1.94d |  |  | 7 day week With NGT Ban | 7573963 |
| 2764 | 37200.37300.37500.38200.100200.113400.208400 | PCC | 9.69d | 2024-10-18 | 2024-10-27 | 2763SS+21.89d | 100% | start no earlier than 2024-10-18 | 7 day week With NGT Ban | 7573973 |
| 2765 | 37200.37300.37500.38200.100200.113400.282500 | Backfilling | 59.94d | 2025-04-01 | 2025-05-30 | 2778FS-8d |  |  | 7 day week With NGT Ban | 7573983 |

| ID | WBS | Task | Duration | Start | Finish | Predecessors | Complete | Constraint | Calendar | Unique_Task_ID |
| --- | --- | --- | --- | --- | --- | --- | --- | --- | --- | --- |
| 2766 | 37200.37300.37500.38200.100200.104300 | **RCC Structure** | 140.94d | 2024-12-16 | 2025-05-05 |  | 76% | start no earlier than 2024-12-16 | 7 day week With NGT Ban | 7569313 |
| 2767 | 37200.37300.37500.38200.100200.104300.142700 | **Raft Foundation** | 32d | 2024-12-16 | 2025-01-16 |  | 100% | start no earlier than 2024-12-16 | 7 day week With NGT Ban | 7571103 |
| 2768 | 37200.37300.37500.38200.100200.104300.142700.198200 | Reinforcement | 26d | 2024-12-16 | 2025-01-11 | 2764SS+5d | 100% | start no earlier than 2024-12-16 | 7 day week With NGT Ban | 7579963 |
| 2769 | 37200.37300.37500.38200.100200.104300.142700.198600 | Formwork | 21d | 2024-12-24 | 2025-01-13 | 2768FF | 100% | start no earlier than 2024-12-24 | 7 day week With NGT Ban | 7579973 |
| 2770 | 37200.37300.37500.38200.100200.104300.142700.198700 | Concreting | 4d | 2025-01-13 | 2025-01-16 | 2769FS+2d | 100% | start no earlier than 2025-01-13 | 7 day week With NGT Ban | 7579983 |
| 2771 | 37200.37300.37500.38200.100200.104300.142800 | **Basement 1 Slab** | 40d | 2025-01-17 | 2025-02-25 |  | 100% | start no earlier than 2025-01-17 | 7 day week With NGT Ban | 7571113 |
| 2772 | 37200.37300.37500.38200.100200.104300.142800.198800 | Reinforcement | 21d | 2025-01-17 | 2025-02-20 | 2770 | 100% | start no earlier than 2025-01-17 | 7 day week With NGT Ban | 7579993 |
| 2773 | 37200.37300.37500.38200.100200.104300.142800.198900 | Formwork | 21d | 2025-01-20 | 2025-02-24 | 2772SS+3d | 100% | start no earlier than 2025-01-20 | 7 day week With NGT Ban | 7580003 |
| 2774 | 37200.37300.37500.38200.100200.104300.142800.199000 | Concreting | 1d | 2025-02-25 | 2025-02-25 | 2773 | 100% | start no earlier than 2025-02-25 | 7 day week With NGT Ban | 7580013 |
| 2775 | 37200.37300.37500.38200.100200.104300.142900 | **Basement 2 Slab/GF** | 25d | 2025-02-13 | 2025-03-09 |  | 100% | start no earlier than 2025-02-13 | 7 day week With NGT Ban | 7571123 |
| 2776 | 37200.37300.37500.38200.100200.104300.142900.199100 | Reinforcement | 16d | 2025-02-13 | 2025-03-06 | 2774 | 100% | start no earlier than 2025-02-13 | 7 day week With NGT Ban | 7580023 |
| 2777 | 37200.37300.37500.38200.100200.104300.142900.199200 | Formwork | 14d | 2025-02-17 | 2025-03-07 | 2776SS+3d | 100% | start no earlier than 2025-02-17 | 7 day week With NGT Ban | 7580033 |
| 2778 | 37200.37300.37500.38200.100200.104300.142900.199700 | Concreting | 3d | 2025-03-01 | 2025-03-09 | 2777FS-6d | 100% | start no earlier than 2025-03-01 | 7 day week With NGT Ban | 7580043 |
| 2779 | 37200.37300.37500.38200.100200.104300.183000 | **Podium** | 65.94d | 2025-03-01 | 2025-05-05 |  | 45% | start no earlier than 2025-03-01 | 7 day week With NGT Ban | 7571133 |
| 2780 | 37200.37300.37500.38200.100200.104300.183000.199900 | Reinforcement | 42.94d | 2025-03-01 | 2025-05-05 | 2778FS-8d | 55% | start no earlier than 2025-03-01 | 7 day week With NGT Ban | 7580053 |
| 2781 | 37200.37300.37500.38200.100200.104300.183000.200000 | Formwork | 39.94d | 2025-03-04 | 2025-05-04 | 2780SS+3d | 45% | start no earlier than 2025-03-04 | 7 day week With NGT Ban | 7580063 |
| 2782 | 37200.37300.37500.38200.100200.104300.183000.436900 | Concreting | 9.94d | 2025-04-22 | 2025-05-02 | 2781 |  |  | 7 day week With NGT Ban | 7580073 |
| 2783 | 37200.37300.37500.38200.100200.128800 | **Substructure Finishing** | 129.81d | 2025-05-29 | 2025-10-06 |  |  | start no earlier than 2025-05-29 | 7 day week With NGT Ban | 7569543 |
| 2784 | 37200.37300.37500.38200.100200.128800.282600 | Masonary work | 44.94d | 2025-05-29 | 2025-07-13 | 2782FS+26.75d |  |  | 7 day week With NGT Ban | 7573993 |
| 2785 | 37200.37300.37500.38200.100200.128800.282700 | Plaster | 39.94d | 2025-07-13 | 2025-08-22 | 2784 |  |  | 7 day week With NGT Ban | 7574003 |
| 2786 | 37200.37300.37500.38200.100200.128800.282800 | Structural steel | 59.94d | 2025-06-25 | 2025-08-24 | 2782FS+53.38d |  |  | 7 day week With NGT Ban | 7574013 |
| 2787 | 37200.37300.37500.38200.100200.128800.282900 | White Wash | 44.94d | 2025-08-22 | 2025-10-06 | 2785 |  |  | 7 day week With NGT Ban | 7574023 |
| 2788 | 37200.37300.37500.38200.39100 | **Superstructure** | 733.56d | 2025-05-05 | 2027-08-07 |  |  | start no earlier than 2025-05-05 | 7 day week With NGT Ban | 7567553 |
| 2789 | 37200.37300.37500.38200.39100.43600 | **RCC structure** | 442d | 2025-05-05 | 2026-09-04 |  |  | start no earlier than 2025-05-05 | 7 day week With NGT Ban | 7567673 |
| 2790 | 37200.37300.37500.38200.39100.43600.143000 | **1st floor slab** | 24d | 2025-05-05 | 2025-05-29 |  |  | start no earlier than 2025-05-05 | 7 day week With NGT Ban | 7570673 |
| 2791 | 37200.37300.37500.38200.39100.43600.143000.437000 | Reinforcement | 20d | 2025-05-05 | 2025-05-25 | 2782FS+2.75d |  |  | 7 day week With NGT Ban | 7580083 |
| 2792 | 37200.37300.37500.38200.39100.43600.143000.437100 | Wall conduiting | 4d | 2025-05-08 | 2025-05-12 | 2791SS+2.75d |  |  | 7 day week With NGT Ban | 7580093 |
| 2793 | 37200.37300.37500.38200.39100.43600.143000.437200 | Formwork | 20d | 2025-05-08 | 2025-05-28 | 2791SS+3d |  |  | 7 day week With NGT Ban | 7580103 |
| 2794 | 37200.37300.37500.38200.39100.43600.143000.437300 | Concreting | 1d | 2025-05-28 | 2025-05-29 | 2793 |  |  | 7 day week With NGT Ban | 7580113 |

| ID | WBS | Task | Duration | Start | Finish | Predecessors | Constraint | Calendar | Unique_Task_ID |
| --- | --- | --- | --- | --- | --- | --- | --- | --- | --- |
| 2795 | 37200.37300.37500.38200.39100.43600.143100 | **2nd floor slab** | 21d | 2025-06-01 | 2025-06-22 |  | start no earlier than 2025-06-01 | 7 day week With NGT Ban | 7570683 |
| 2796 | 37200.37300.37500.38200.39100.43600.143100.437400 | Reinforcement | 20d | 2025-06-01 | 2025-06-21 | 2794FS+2.75d |  | 7 day week With NGT Ban | 7580123 |
| 2797 | 37200.37300.37500.38200.39100.43600.143100.437500 | Wall conduiting | 4d | 2025-06-04 | 2025-06-08 | 2792, 2796SS+2.75d |  | 7 day week With NGT Ban | 7580133 |
| 2798 | 37200.37300.37500.38200.39100.43600.143100.437600 | Formwork | 20d | 2025-06-01 | 2025-06-21 | 2796SS |  | 7 day week With NGT Ban | 7580143 |
| 2799 | 37200.37300.37500.38200.39100.43600.143100.437700 | Concreting | 1d | 2025-06-21 | 2025-06-22 | 2798 |  | 7 day week With NGT Ban | 7580153 |
| 2800 | 37200.37300.37500.38200.39100.43600.143200 | **3rd floor slab** | 15d | 2025-06-23 | 2025-07-08 |  | start no earlier than 2025-06-23 | 7 day week With NGT Ban | 7570693 |
| 2801 | 37200.37300.37500.38200.39100.43600.143200.437800 | Reinforcement | 11d | 2025-06-23 | 2025-07-04 | 2799FS+1d |  | 7 day week With NGT Ban | 7580163 |
| 2802 | 37200.37300.37500.38200.39100.43600.143200.437900 | Wall conduiting | 3d | 2025-06-26 | 2025-06-29 | 2797, 2801SS+2.75d |  | 7 day week With NGT Ban | 7580173 |
| 2803 | 37200.37300.37500.38200.39100.43600.143200.438000 | Formwork | 14d | 2025-06-23 | 2025-07-07 | 2801SS |  | 7 day week With NGT Ban | 7580183 |
| 2804 | 37200.37300.37500.38200.39100.43600.143200.438100 | Concreting | 1d | 2025-07-07 | 2025-07-08 | 2803 |  | 7 day week With NGT Ban | 7580193 |
| 2805 | 37200.37300.37500.38200.39100.43600.143300 | **4th floor slab** | 9d | 2025-07-09 | 2025-07-18 |  | start no earlier than 2025-07-09 | 7 day week With NGT Ban | 7570703 |
| 2806 | 37200.37300.37500.38200.39100.43600.143300.438200 | Reinforcement | 8d | 2025-07-09 | 2025-07-17 | 2804FS+1d |  | 7 day week With NGT Ban | 7580203 |
| 2807 | 37200.37300.37500.38200.39100.43600.143300.438300 | Wall conduiting | 3d | 2025-07-10 | 2025-07-13 | 2802, 2806SS+1d |  | 7 day week With NGT Ban | 7580213 |
| 2808 | 37200.37300.37500.38200.39100.43600.143300.438400 | Formwork | 7d | 2025-07-10 | 2025-07-17 | 2806SS+1d |  | 7 day week With NGT Ban | 7580223 |
| 2809 | 37200.37300.37500.38200.39100.43600.143300.438500 | Concreting | 1d | 2025-07-17 | 2025-07-18 | 2808 |  | 7 day week With NGT Ban | 7580233 |
| 2810 | 37200.37300.37500.38200.39100.43600.143400 | **5th floor slab** | 9d | 2025-07-19 | 2025-07-28 |  | start no earlier than 2025-07-19 | 7 day week With NGT Ban | 7570713 |
| 2811 | 37200.37300.37500.38200.39100.43600.143400.438600 | Reinforcement | 8d | 2025-07-19 | 2025-07-27 | 2809FS+1d |  | 7 day week With NGT Ban | 7580243 |
| 2812 | 37200.37300.37500.38200.39100.43600.143400.438700 | Wall conduiting | 3d | 2025-07-20 | 2025-07-23 | 2807, 2811SS+1d |  | 7 day week With NGT Ban | 7580253 |
| 2813 | 37200.37300.37500.38200.39100.43600.143400.438800 | Formwork | 7d | 2025-07-20 | 2025-07-27 | 2811SS+1d |  | 7 day week With NGT Ban | 7580263 |
| 2814 | 37200.37300.37500.38200.39100.43600.143400.438900 | Concreting | 1d | 2025-07-27 | 2025-07-28 | 2813 |  | 7 day week With NGT Ban | 7580273 |
| 2815 | 37200.37300.37500.38200.39100.43600.143500 | **6th floor slab** | 9d | 2025-07-29 | 2025-08-07 |  | start no earlier than 2025-07-29 | 7 day week With NGT Ban | 7570723 |
| 2816 | 37200.37300.37500.38200.39100.43600.143500.439000 | Reinforcement | 8d | 2025-07-29 | 2025-08-06 | 2814FS+1d |  | 7 day week With NGT Ban | 7580283 |
| 2817 | 37200.37300.37500.38200.39100.43600.143500.439100 | Wall conduiting | 3d | 2025-07-30 | 2025-08-02 | 2812, 2816SS+1d |  | 7 day week With NGT Ban | 7580293 |
| 2818 | 37200.37300.37500.38200.39100.43600.143500.439200 | Formwork | 7d | 2025-07-30 | 2025-08-06 | 2816SS+1d |  | 7 day week With NGT Ban | 7580303 |
| 2819 | 37200.37300.37500.38200.39100.43600.143500.439300 | Concreting | 1d | 2025-08-06 | 2025-08-07 | 2818 |  | 7 day week With NGT Ban | 7580313 |

| ID | WBS | Task | Duration | Start | Finish | Predecessors | Constraint | Calendar | Unique_Task_ID |
| --- | --- | --- | --- | --- | --- | --- | --- | --- | --- |
| 2820 | 37200.37300.37500.38200.39100.43600.143600 | **7th floor slab** | 9d | 2025-08-08 | 2025-08-17 |  | start no earlier than 2025-08-08 | 7 day week With NGT Ban | 7570733 |
| 2821 | 37200.37300.37500.38200.39100.43600.143600.439400 | Reinforcement | 8d | 2025-08-08 | 2025-08-16 | 2819FS+1d |  | 7 day week With NGT Ban | 7580323 |
| 2822 | 37200.37300.37500.38200.39100.43600.143600.439500 | Wall conduiting | 3d | 2025-08-09 | 2025-08-12 | 2817, 2821SS+1d |  | 7 day week With NGT Ban | 7580333 |
| 2823 | 37200.37300.37500.38200.39100.43600.143600.439600 | Formwork | 7d | 2025-08-09 | 2025-08-16 | 2821SS+1d |  | 7 day week With NGT Ban | 7580343 |
| 2824 | 37200.37300.37500.38200.39100.43600.143600.439700 | Concreting | 1d | 2025-08-16 | 2025-08-17 | 2823 |  | 7 day week With NGT Ban | 7580353 |
| 2825 | 37200.37300.37500.38200.39100.43600.143700 | **8th floor slab** | 12d | 2025-08-18 | 2025-08-30 |  | start no earlier than 2025-08-18 | 7 day week With NGT Ban | 7570743 |
| 2826 | 37200.37300.37500.38200.39100.43600.143700.439800 | Reinforcement | 10d | 2025-08-18 | 2025-08-28 | 2824FS+1d |  | 7 day week With NGT Ban | 7580363 |
| 2827 | 37200.37300.37500.38200.39100.43600.143700.439900 | Wall conduiting | 3d | 2025-08-19 | 2025-08-22 | 2822, 2826SS+1d |  | 7 day week With NGT Ban | 7580373 |
| 2828 | 37200.37300.37500.38200.39100.43600.143700.440000 | Formwork | 10d | 2025-08-19 | 2025-08-29 | 2826SS+1d |  | 7 day week With NGT Ban | 7580383 |
| 2829 | 37200.37300.37500.38200.39100.43600.143700.440100 | Concreting | 1d | 2025-08-29 | 2025-08-30 | 2828 |  | 7 day week With NGT Ban | 7580393 |
| 2830 | 37200.37300.37500.38200.39100.43600.143800 | **9th floor slab** | 9d | 2025-08-31 | 2025-09-09 |  | start no earlier than 2025-08-31 | 7 day week With NGT Ban | 7570753 |
| 2831 | 37200.37300.37500.38200.39100.43600.143800.440200 | Reinforcement | 8d | 2025-08-31 | 2025-09-08 | 2829FS+1d |  | 7 day week With NGT Ban | 7580403 |
| 2832 | 37200.37300.37500.38200.39100.43600.143800.440300 | Wall conduiting | 3d | 2025-09-01 | 2025-09-04 | 2827, 2831SS+1d |  | 7 day week With NGT Ban | 7580413 |
| 2833 | 37200.37300.37500.38200.39100.43600.143800.440400 | Formwork | 7d | 2025-09-01 | 2025-09-08 | 2831SS+1d |  | 7 day week With NGT Ban | 7580423 |
| 2834 | 37200.37300.37500.38200.39100.43600.143800.440500 | Concreting | 1d | 2025-09-08 | 2025-09-09 | 2833 |  | 7 day week With NGT Ban | 7580433 |
| 2835 | 37200.37300.37500.38200.39100.43600.143900 | **10th floor slab** | 9d | 2025-09-10 | 2025-09-19 |  | start no earlier than 2025-09-10 | 7 day week With NGT Ban | 7570763 |
| 2836 | 37200.37300.37500.38200.39100.43600.143900.440600 | Reinforcement | 8d | 2025-09-10 | 2025-09-18 | 2834FS+1d |  | 7 day week With NGT Ban | 7580443 |
| 2837 | 37200.37300.37500.38200.39100.43600.143900.440700 | Wall conduiting | 3d | 2025-09-11 | 2025-09-14 | 2832, 2836SS+1d |  | 7 day week With NGT Ban | 7580453 |
| 2838 | 37200.37300.37500.38200.39100.43600.143900.440800 | Formwork | 7d | 2025-09-11 | 2025-09-18 | 2836SS+1d |  | 7 day week With NGT Ban | 7580463 |
| 2839 | 37200.37300.37500.38200.39100.43600.143900.440900 | Concreting | 1d | 2025-09-18 | 2025-09-19 | 2838 |  | 7 day week With NGT Ban | 7580473 |
| 2840 | 37200.37300.37500.38200.39100.43600.144000 | **11th floor slab** | 9d | 2025-09-20 | 2025-09-29 |  | start no earlier than 2025-09-20 | 7 day week With NGT Ban | 7570773 |
| 2841 | 37200.37300.37500.38200.39100.43600.144000.441000 | Reinforcement | 8d | 2025-09-20 | 2025-09-28 | 2839FS+1d |  | 7 day week With NGT Ban | 7580483 |
| 2842 | 37200.37300.37500.38200.39100.43600.144000.441100 | Wall conduiting | 3d | 2025-09-21 | 2025-09-24 | 2837, 2841SS+1d |  | 7 day week With NGT Ban | 7580493 |
| 2843 | 37200.37300.37500.38200.39100.43600.144000.441200 | Formwork | 7d | 2025-09-21 | 2025-09-28 | 2841SS+1d |  | 7 day week With NGT Ban | 7580503 |
| 2844 | 37200.37300.37500.38200.39100.43600.144000.441300 | Concreting | 1d | 2025-09-28 | 2025-09-29 | 2843 |  | 7 day week With NGT Ban | 7580513 |

| ID | WBS | Task | Duration | Start | Finish | Predecessors | Constraint | Calendar | Unique_Task_ID |
| --- | --- | --- | --- | --- | --- | --- | --- | --- | --- |
| 2845 | 37200.37300.37500.38200.39100.43600.144100 | **12th floor slab** | 9d | 2025-09-30 | 2025-10-09 |  | start no earlier than 2025-09-30 | 7 day week With NGT Ban | 7570783 |
| 2846 | 37200.37300.37500.38200.39100.43600.144100.441400 | Reinforcement | 8d | 2025-09-30 | 2025-10-08 | 2844FS+1d |  | 7 day week With NGT Ban | 7580523 |
| 2847 | 37200.37300.37500.38200.39100.43600.144100.441500 | Wall conduiting | 3d | 2025-10-01 | 2025-10-04 | 2842, 2846SS+1d |  | 7 day week With NGT Ban | 7580533 |
| 2848 | 37200.37300.37500.38200.39100.43600.144100.441600 | Formwork | 7d | 2025-10-01 | 2025-10-08 | 2846SS+1d |  | 7 day week With NGT Ban | 7580543 |
| 2849 | 37200.37300.37500.38200.39100.43600.144100.441700 | Concreting | 1d | 2025-10-08 | 2025-10-09 | 2848 |  | 7 day week With NGT Ban | 7580553 |
| 2850 | 37200.37300.37500.38200.39100.43600.144200 | **13th floor slab** | 9d | 2025-10-10 | 2025-10-19 |  | start no earlier than 2025-10-10 | 7 day week With NGT Ban | 7570793 |
| 2851 | 37200.37300.37500.38200.39100.43600.144200.441800 | Reinforcement | 8d | 2025-10-10 | 2025-10-18 | 2849FS+1d |  | 7 day week With NGT Ban | 7580563 |
| 2852 | 37200.37300.37500.38200.39100.43600.144200.441900 | Wall conduiting | 3d | 2025-10-11 | 2025-10-14 | 2847, 2851SS+1d |  | 7 day week With NGT Ban | 7580573 |
| 2853 | 37200.37300.37500.38200.39100.43600.144200.442000 | Formwork | 7d | 2025-10-11 | 2025-10-18 | 2851SS+1d |  | 7 day week With NGT Ban | 7580583 |
| 2854 | 37200.37300.37500.38200.39100.43600.144200.442100 | Concreting | 1d | 2025-10-18 | 2025-10-19 | 2853 |  | 7 day week With NGT Ban | 7580593 |
| 2855 | 37200.37300.37500.38200.39100.43600.144300 | **14th floor slab** | 9d | 2025-10-20 | 2025-10-29 |  | start no earlier than 2025-10-20 | 7 day week With NGT Ban | 7570803 |
| 2856 | 37200.37300.37500.38200.39100.43600.144300.442200 | Reinforcement | 8d | 2025-10-20 | 2025-10-28 | 2854FS+1d |  | 7 day week With NGT Ban | 7580603 |
| 2857 | 37200.37300.37500.38200.39100.43600.144300.442300 | Wall conduiting | 3d | 2025-10-21 | 2025-10-24 | 2852, 2856SS+1d |  | 7 day week With NGT Ban | 7580613 |
| 2858 | 37200.37300.37500.38200.39100.43600.144300.442400 | Formwork | 7d | 2025-10-21 | 2025-10-28 | 2856SS+1d |  | 7 day week With NGT Ban | 7580623 |
| 2859 | 37200.37300.37500.38200.39100.43600.144300.442500 | Concreting | 1d | 2025-10-28 | 2025-10-29 | 2858 |  | 7 day week With NGT Ban | 7580633 |
| 2860 | 37200.37300.37500.38200.39100.43600.144400 | **15th floor slab** | 9d | 2025-10-30 | 2025-12-23 |  | start no earlier than 2025-10-30 | 7 day week With NGT Ban | 7570813 |
| 2861 | 37200.37300.37500.38200.39100.43600.144400.442600 | Reinforcement | 8d | 2025-10-30 | 2025-12-22 | 2859FS+1d |  | 7 day week With NGT Ban | 7580643 |
| 2862 | 37200.37300.37500.38200.39100.43600.144400.442700 | Wall conduiting | 3d | 2025-10-31 | 2025-12-18 | 2857, 2861SS+1d |  | 7 day week With NGT Ban | 7580653 |
| 2863 | 37200.37300.37500.38200.39100.43600.144400.442800 | Formwork | 7d | 2025-10-31 | 2025-12-22 | 2861SS+1d |  | 7 day week With NGT Ban | 7580663 |
| 2864 | 37200.37300.37500.38200.39100.43600.144400.442900 | Concreting | 1d | 2025-12-22 | 2025-12-23 | 2863 |  | 7 day week With NGT Ban | 7580673 |
| 2865 | 37200.37300.37500.38200.39100.43600.144500 | **16th floor slab** | 12d | 2025-12-24 | 2026-01-05 |  | start no earlier than 2025-12-24 | 7 day week With NGT Ban | 7570823 |
| 2866 | 37200.37300.37500.38200.39100.43600.144500.443000 | Reinforcement | 10d | 2025-12-24 | 2026-01-03 | 2864FS+1d |  | 7 day week With NGT Ban | 7580683 |
| 2867 | 37200.37300.37500.38200.39100.43600.144500.443100 | Wall conduiting | 3d | 2025-12-25 | 2025-12-28 | 2862, 2866SS+1d |  | 7 day week With NGT Ban | 7580693 |
| 2868 | 37200.37300.37500.38200.39100.43600.144500.443200 | Formwork | 10d | 2025-12-25 | 2026-01-04 | 2866SS+1d |  | 7 day week With NGT Ban | 7580703 |
| 2869 | 37200.37300.37500.38200.39100.43600.144500.443300 | Concreting | 1d | 2026-01-04 | 2026-01-05 | 2868 |  | 7 day week With NGT Ban | 7580713 |

| ID | WBS | Task | Duration | Start | Finish | Predecessors | Constraint | Calendar | Unique_Task_ID |
| --- | --- | --- | --- | --- | --- | --- | --- | --- | --- |
| 2870 | 37200.37300.37500.38200.39100.43600.144600 | **17th floor slab** | 9d | 2026-01-06 | 2026-01-15 |  | start no earlier than 2026-01-06 | 7 day week With NGT Ban | 7570833 |
| 2871 | 37200.37300.37500.38200.39100.43600.144600.443400 | Reinforcement | 8d | 2026-01-06 | 2026-01-14 | 2869FS+1d |  | 7 day week With NGT Ban | 7580723 |
| 2872 | 37200.37300.37500.38200.39100.43600.144600.443500 | Wall conduiting | 3d | 2026-01-07 | 2026-01-10 | 2867, 2871SS+1d |  | 7 day week With NGT Ban | 7580733 |
| 2873 | 37200.37300.37500.38200.39100.43600.144600.443600 | Formwork | 7d | 2026-01-07 | 2026-01-14 | 2871SS+1d |  | 7 day week With NGT Ban | 7580743 |
| 2874 | 37200.37300.37500.38200.39100.43600.144600.443700 | Concreting | 1d | 2026-01-14 | 2026-01-15 | 2873 |  | 7 day week With NGT Ban | 7580753 |
| 2875 | 37200.37300.37500.38200.39100.43600.144700 | **18th floor slab** | 9d | 2026-01-16 | 2026-01-25 |  | start no earlier than 2026-01-16 | 7 day week With NGT Ban | 7570843 |
| 2876 | 37200.37300.37500.38200.39100.43600.144700.443800 | Reinforcement | 8d | 2026-01-16 | 2026-01-24 | 2874FS+1d |  | 7 day week With NGT Ban | 7580763 |
| 2877 | 37200.37300.37500.38200.39100.43600.144700.443900 | Wall conduiting | 3d | 2026-01-17 | 2026-01-20 | 2872, 2876SS+1d |  | 7 day week With NGT Ban | 7580773 |
| 2878 | 37200.37300.37500.38200.39100.43600.144700.444000 | Formwork | 7d | 2026-01-17 | 2026-01-24 | 2876SS+1d |  | 7 day week With NGT Ban | 7580783 |
| 2879 | 37200.37300.37500.38200.39100.43600.144700.444100 | Concreting | 1d | 2026-01-24 | 2026-01-25 | 2878 |  | 7 day week With NGT Ban | 7580793 |
| 2880 | 37200.37300.37500.38200.39100.43600.144800 | **19th floor slab** | 8d | 2026-01-26 | 2026-02-03 |  | start no earlier than 2026-01-26 | 7 day week With NGT Ban | 7570853 |
| 2881 | 37200.37300.37500.38200.39100.43600.144800.444200 | Reinforcement | 7d | 2026-01-26 | 2026-02-02 | 2879FS+1d |  | 7 day week With NGT Ban | 7580803 |
| 2882 | 37200.37300.37500.38200.39100.43600.144800.444300 | Wall conduiting | 3d | 2026-01-27 | 2026-01-30 | 2877, 2881SS+1d |  | 7 day week With NGT Ban | 7580813 |
| 2883 | 37200.37300.37500.38200.39100.43600.144800.444400 | Formwork | 6d | 2026-01-27 | 2026-02-02 | 2881SS+1d |  | 7 day week With NGT Ban | 7580823 |
| 2884 | 37200.37300.37500.38200.39100.43600.144800.444500 | Concreting | 1d | 2026-02-02 | 2026-02-03 | 2883 |  | 7 day week With NGT Ban | 7580833 |
| 2885 | 37200.37300.37500.38200.39100.43600.144900 | **20th floor slab** | 8d | 2026-02-04 | 2026-02-12 |  | start no earlier than 2026-02-04 | 7 day week With NGT Ban | 7570863 |
| 2886 | 37200.37300.37500.38200.39100.43600.144900.444600 | Reinforcement | 7d | 2026-02-04 | 2026-02-11 | 2884FS+1d |  | 7 day week With NGT Ban | 7580843 |
| 2887 | 37200.37300.37500.38200.39100.43600.144900.444700 | Wall conduiting | 3d | 2026-02-05 | 2026-02-08 | 2882, 2886SS+1d |  | 7 day week With NGT Ban | 7580853 |
| 2888 | 37200.37300.37500.38200.39100.43600.144900.444800 | Formwork | 6d | 2026-02-05 | 2026-02-11 | 2886SS+1d |  | 7 day week With NGT Ban | 7580863 |
| 2889 | 37200.37300.37500.38200.39100.43600.144900.444900 | Concreting | 1d | 2026-02-11 | 2026-02-12 | 2888 |  | 7 day week With NGT Ban | 7580873 |
| 2890 | 37200.37300.37500.38200.39100.43600.145000 | **21st floor slab** | 8d | 2026-02-13 | 2026-02-21 |  | start no earlier than 2026-02-13 | 7 day week With NGT Ban | 7570873 |
| 2891 | 37200.37300.37500.38200.39100.43600.145000.445000 | Reinforcement | 7d | 2026-02-13 | 2026-02-20 | 2889FS+1d |  | 7 day week With NGT Ban | 7580883 |
| 2892 | 37200.37300.37500.38200.39100.43600.145000.445100 | Wall conduiting | 3d | 2026-02-14 | 2026-02-17 | 2887, 2891SS+1d |  | 7 day week With NGT Ban | 7580893 |
| 2893 | 37200.37300.37500.38200.39100.43600.145000.445200 | Formwork | 6d | 2026-02-14 | 2026-02-20 | 2891SS+1d |  | 7 day week With NGT Ban | 7580903 |
| 2894 | 37200.37300.37500.38200.39100.43600.145000.445300 | Concreting | 1d | 2026-02-20 | 2026-02-21 | 2893 |  | 7 day week With NGT Ban | 7580913 |

| ID | WBS | Task | Duration | Start | Finish | Predecessors | Constraint | Calendar | Unique_Task_ID |
| --- | --- | --- | --- | --- | --- | --- | --- | --- | --- |
| 2895 | 37200.37300.37500.38200.39100.43600.145100 | **22nd floor slab** | 8d | 2026-02-22 | 2026-03-02 |  | start no earlier than 2026-02-22 | 7 day week With NGT Ban | 7570883 |
| 2896 | 37200.37300.37500.38200.39100.43600.145100.445400 | Reinforcement | 7d | 2026-02-22 | 2026-03-01 | 2894FS+1d |  | 7 day week With NGT Ban | 7580923 |
| 2897 | 37200.37300.37500.38200.39100.43600.145100.445500 | Wall conduiting | 3d | 2026-02-23 | 2026-02-26 | 2892, 2896SS+1d |  | 7 day week With NGT Ban | 7580933 |
| 2898 | 37200.37300.37500.38200.39100.43600.145100.445600 | Formwork | 6d | 2026-02-23 | 2026-03-01 | 2896SS+1d |  | 7 day week With NGT Ban | 7580943 |
| 2899 | 37200.37300.37500.38200.39100.43600.145100.445700 | Concreting | 1d | 2026-03-01 | 2026-03-02 | 2898 |  | 7 day week With NGT Ban | 7580953 |
| 2900 | 37200.37300.37500.38200.39100.43600.145200 | **23rd floor slab** | 8d | 2026-03-03 | 2026-03-11 |  | start no earlier than 2026-03-03 | 7 day week With NGT Ban | 7570893 |
| 2901 | 37200.37300.37500.38200.39100.43600.145200.445800 | Reinforcement | 7d | 2026-03-03 | 2026-03-10 | 2899FS+1d |  | 7 day week With NGT Ban | 7580963 |
| 2902 | 37200.37300.37500.38200.39100.43600.145200.445900 | Wall conduiting | 3d | 2026-03-04 | 2026-03-07 | 2897, 2901SS+1d |  | 7 day week With NGT Ban | 7580973 |
| 2903 | 37200.37300.37500.38200.39100.43600.145200.446000 | Formwork | 6d | 2026-03-04 | 2026-03-10 | 2901SS+1d |  | 7 day week With NGT Ban | 7580983 |
| 2904 | 37200.37300.37500.38200.39100.43600.145200.446100 | Concreting | 1d | 2026-03-10 | 2026-03-11 | 2903 |  | 7 day week With NGT Ban | 7580993 |
| 2905 | 37200.37300.37500.38200.39100.43600.145300 | **24th floor slab** | 12d | 2026-03-11 | 2026-03-23 |  | start no earlier than 2026-03-11 | 7 day week With NGT Ban | 7570903 |
| 2906 | 37200.37300.37500.38200.39100.43600.145300.446200 | Reinforcement | 10d | 2026-03-11 | 2026-03-21 | 2904 |  | 7 day week With NGT Ban | 7581003 |
| 2907 | 37200.37300.37500.38200.39100.43600.145300.446300 | Wall conduiting | 3d | 2026-03-12 | 2026-03-15 | 2902, 2906SS+1d |  | 7 day week With NGT Ban | 7581013 |
| 2908 | 37200.37300.37500.38200.39100.43600.145300.446400 | Formwork | 10d | 2026-03-12 | 2026-03-22 | 2906SS+1d |  | 7 day week With NGT Ban | 7581023 |
| 2909 | 37200.37300.37500.38200.39100.43600.145300.446500 | Concreting | 1d | 2026-03-22 | 2026-03-23 | 2908 |  | 7 day week With NGT Ban | 7581033 |
| 2910 | 37200.37300.37500.38200.39100.43600.145400 | **25th floor slab** | 12d | 2026-03-24 | 2026-04-05 |  | start no earlier than 2026-03-24 | 7 day week With NGT Ban | 7570913 |
| 2911 | 37200.37300.37500.38200.39100.43600.145400.446600 | Reinforcement | 10d | 2026-03-24 | 2026-04-03 | 2909FS+1d |  | 7 day week With NGT Ban | 7581043 |
| 2912 | 37200.37300.37500.38200.39100.43600.145400.446700 | Wall conduiting | 3d | 2026-03-25 | 2026-03-28 | 2907, 2911SS+1d |  | 7 day week With NGT Ban | 7581053 |
| 2913 | 37200.37300.37500.38200.39100.43600.145400.446800 | Formwork | 10d | 2026-03-25 | 2026-04-04 | 2911SS+1d |  | 7 day week With NGT Ban | 7581063 |
| 2914 | 37200.37300.37500.38200.39100.43600.145400.446900 | Concreting | 1d | 2026-04-04 | 2026-04-05 | 2913 |  | 7 day week With NGT Ban | 7581073 |
| 2915 | 37200.37300.37500.38200.39100.43600.145500 | **26th floor slab** | 8d | 2026-04-06 | 2026-04-14 |  | start no earlier than 2026-04-06 | 7 day week With NGT Ban | 7570923 |
| 2916 | 37200.37300.37500.38200.39100.43600.145500.447000 | Reinforcement | 7d | 2026-04-06 | 2026-04-13 | 2914FS+1d |  | 7 day week With NGT Ban | 7581083 |
| 2917 | 37200.37300.37500.38200.39100.43600.145500.447100 | Wall conduiting | 3d | 2026-04-07 | 2026-04-10 | 2912, 2916SS+1d |  | 7 day week With NGT Ban | 7581093 |
| 2918 | 37200.37300.37500.38200.39100.43600.145500.447200 | Formwork | 6d | 2026-04-07 | 2026-04-13 | 2916SS+1d |  | 7 day week With NGT Ban | 7581103 |
| 2919 | 37200.37300.37500.38200.39100.43600.145500.447300 | Concreting | 1d | 2026-04-13 | 2026-04-14 | 2918 |  | 7 day week With NGT Ban | 7581113 |

| ID | WBS | Task | Duration | Start | Finish | Predecessors | Constraint | Calendar | Unique_Task_ID |
| --- | --- | --- | --- | --- | --- | --- | --- | --- | --- |
| 2920 | 37200.37300.37500.38200.39100.43600.145600 | **27th floor slab** | 8d | 2026-04-14 | 2026-04-22 |  | start no earlier than 2026-04-14 | 7 day week With NGT Ban | 7570933 |
| 2921 | 37200.37300.37500.38200.39100.43600.145600.447400 | Reinforcement | 7d | 2026-04-14 | 2026-04-21 | 2919 |  | 7 day week With NGT Ban | 7581123 |
| 2922 | 37200.37300.37500.38200.39100.43600.145600.447500 | Wall conduiting | 3d | 2026-04-15 | 2026-04-18 | 2917, 2921SS+1d |  | 7 day week With NGT Ban | 7581133 |
| 2923 | 37200.37300.37500.38200.39100.43600.145600.447600 | Formwork | 6d | 2026-04-15 | 2026-04-21 | 2921SS+1d |  | 7 day week With NGT Ban | 7581143 |
| 2924 | 37200.37300.37500.38200.39100.43600.145600.447700 | Concreting | 1d | 2026-04-21 | 2026-04-22 | 2923 |  | 7 day week With NGT Ban | 7581153 |
| 2925 | 37200.37300.37500.38200.39100.43600.145700 | **28th floor slab** | 8d | 2026-04-22 | 2026-04-30 |  | start no earlier than 2026-04-22 | 7 day week With NGT Ban | 7570943 |
| 2926 | 37200.37300.37500.38200.39100.43600.145700.447800 | Reinforcement | 7d | 2026-04-22 | 2026-04-29 | 2924 |  | 7 day week With NGT Ban | 7581163 |
| 2927 | 37200.37300.37500.38200.39100.43600.145700.447900 | Wall conduiting | 3d | 2026-04-23 | 2026-04-26 | 2922, 2926SS+1d |  | 7 day week With NGT Ban | 7581173 |
| 2928 | 37200.37300.37500.38200.39100.43600.145700.448000 | Formwork | 6d | 2026-04-23 | 2026-04-29 | 2926SS+1d |  | 7 day week With NGT Ban | 7581183 |
| 2929 | 37200.37300.37500.38200.39100.43600.145700.448100 | Concreting | 1d | 2026-04-29 | 2026-04-30 | 2928 |  | 7 day week With NGT Ban | 7581193 |
| 2930 | 37200.37300.37500.38200.39100.43600.145800 | **29th floor slab** | 8d | 2026-04-30 | 2026-05-08 |  | start no earlier than 2026-04-30 | 7 day week With NGT Ban | 7570953 |
| 2931 | 37200.37300.37500.38200.39100.43600.145800.448200 | Reinforcement | 7d | 2026-04-30 | 2026-05-07 | 2929 |  | 7 day week With NGT Ban | 7581203 |
| 2932 | 37200.37300.37500.38200.39100.43600.145800.448300 | Wall conduiting | 3d | 2026-05-01 | 2026-05-04 | 2927, 2931SS+1d |  | 7 day week With NGT Ban | 7581213 |
| 2933 | 37200.37300.37500.38200.39100.43600.145800.448400 | Formwork | 6d | 2026-05-01 | 2026-05-07 | 2931SS+1d |  | 7 day week With NGT Ban | 7581223 |
| 2934 | 37200.37300.37500.38200.39100.43600.145800.448500 | Concreting | 1d | 2026-05-07 | 2026-05-08 | 2933 |  | 7 day week With NGT Ban | 7581233 |
| 2935 | 37200.37300.37500.38200.39100.43600.145900 | **30th floor slab** | 8d | 2026-05-08 | 2026-05-16 |  | start no earlier than 2026-05-08 | 7 day week With NGT Ban | 7570963 |
| 2936 | 37200.37300.37500.38200.39100.43600.145900.448600 | Reinforcement | 7d | 2026-05-08 | 2026-05-15 | 2934 |  | 7 day week With NGT Ban | 7581243 |
| 2937 | 37200.37300.37500.38200.39100.43600.145900.448700 | Wall conduiting | 3d | 2026-05-09 | 2026-05-12 | 2932, 2936SS+1d |  | 7 day week With NGT Ban | 7581253 |
| 2938 | 37200.37300.37500.38200.39100.43600.145900.448800 | Formwork | 6d | 2026-05-09 | 2026-05-15 | 2936SS+1d |  | 7 day week With NGT Ban | 7581263 |
| 2939 | 37200.37300.37500.38200.39100.43600.145900.448900 | Concreting | 1d | 2026-05-15 | 2026-05-16 | 2938 |  | 7 day week With NGT Ban | 7581273 |
| 2940 | 37200.37300.37500.38200.39100.43600.146000 | **31st floor slab** | 8d | 2026-05-16 | 2026-05-24 |  | start no earlier than 2026-05-16 | 7 day week With NGT Ban | 7570973 |
| 2941 | 37200.37300.37500.38200.39100.43600.146000.449000 | Reinforcement | 7d | 2026-05-16 | 2026-05-23 | 2939 |  | 7 day week With NGT Ban | 7581283 |
| 2942 | 37200.37300.37500.38200.39100.43600.146000.449100 | Wall conduiting | 3d | 2026-05-17 | 2026-05-20 | 2937, 2941SS+1d |  | 7 day week With NGT Ban | 7581293 |
| 2943 | 37200.37300.37500.38200.39100.43600.146000.449200 | Formwork | 6d | 2026-05-17 | 2026-05-23 | 2941SS+1d |  | 7 day week With NGT Ban | 7581303 |
| 2944 | 37200.37300.37500.38200.39100.43600.146000.449300 | Concreting | 1d | 2026-05-23 | 2026-05-24 | 2943 |  | 7 day week With NGT Ban | 7581313 |

| ID | WBS | Task | Duration | Start | Finish | Predecessors | Constraint | Calendar | Unique_Task_ID |
| --- | --- | --- | --- | --- | --- | --- | --- | --- | --- |
| 2945 | 37200.37300.37500.38200.39100.43600.146100 | **32nd floor slab** | 12.75d | 2026-05-24 | 2026-06-06 |  | start no earlier than 2026-05-24 | 7 day week With NGT Ban | 7570983 |
| 2946 | 37200.37300.37500.38200.39100.43600.146100.449400 | Reinforcement | 9.94d | 2026-05-24 | 2026-06-03 | 2944 |  | 7 day week With NGT Ban | 7581323 |
| 2947 | 37200.37300.37500.38200.39100.43600.146100.449500 | Wall conduiting | 1.94d | 2026-05-25 | 2026-05-27 | 2942, 2946SS+1d |  | 7 day week With NGT Ban | 7581333 |
| 2948 | 37200.37300.37500.38200.39100.43600.146100.449600 | Formwork | 9.94d | 2026-05-26 | 2026-06-05 | 2946SS+1.88d |  | 7 day week With NGT Ban | 7581343 |
| 2949 | 37200.37300.37500.38200.39100.43600.146100.449700 | Concreting | 0.94d | 2026-06-05 | 2026-06-06 | 2948 |  | 7 day week With NGT Ban | 7581353 |
| 2950 | 37200.37300.37500.38200.39100.43600.146200 | **33rd floor slab** | 11.75d | 2026-06-06 | 2026-06-17 |  | start no earlier than 2026-06-06 | 7 day week With NGT Ban | 7570993 |
| 2951 | 37200.37300.37500.38200.39100.43600.146200.449800 | Reinforcement | 8.94d | 2026-06-06 | 2026-06-15 | 2949 |  | 7 day week With NGT Ban | 7581363 |
| 2952 | 37200.37300.37500.38200.39100.43600.146200.449900 | Wall conduiting | 1.94d | 2026-06-07 | 2026-06-09 | 2947, 2951SS+1d |  | 7 day week With NGT Ban | 7581373 |
| 2953 | 37200.37300.37500.38200.39100.43600.146200.450000 | Formwork | 8.94d | 2026-06-08 | 2026-06-16 | 2951SS+1.88d |  | 7 day week With NGT Ban | 7581383 |
| 2954 | 37200.37300.37500.38200.39100.43600.146200.450100 | Concreting | 0.94d | 2026-06-16 | 2026-06-17 | 2953 |  | 7 day week With NGT Ban | 7581393 |
| 2955 | 37200.37300.37500.38200.39100.43600.146300 | **34th floor slab** | 12.75d | 2026-06-17 | 2026-06-30 |  | start no earlier than 2026-06-17 | 7 day week With NGT Ban | 7571003 |
| 2956 | 37200.37300.37500.38200.39100.43600.146300.450200 | Reinforcement | 9.94d | 2026-06-17 | 2026-06-27 | 2954 |  | 7 day week With NGT Ban | 7581403 |
| 2957 | 37200.37300.37500.38200.39100.43600.146300.450300 | Wall conduiting | 1.94d | 2026-06-18 | 2026-06-20 | 2952, 2956SS+1d |  | 7 day week With NGT Ban | 7581413 |
| 2958 | 37200.37300.37500.38200.39100.43600.146300.450400 | Formwork | 9.94d | 2026-06-19 | 2026-06-29 | 2956SS+1.88d |  | 7 day week With NGT Ban | 7581423 |
| 2959 | 37200.37300.37500.38200.39100.43600.146300.450500 | Concreting | 0.94d | 2026-06-29 | 2026-06-30 | 2958 |  | 7 day week With NGT Ban | 7581433 |
| 2960 | 37200.37300.37500.38200.39100.43600.146400 | **35th floor slab** | 11.75d | 2026-06-30 | 2026-07-12 |  | start no earlier than 2026-06-30 | 7 day week With NGT Ban | 7571013 |
| 2961 | 37200.37300.37500.38200.39100.43600.146400.450600 | Reinforcement | 8.94d | 2026-06-30 | 2026-07-09 | 2959 |  | 7 day week With NGT Ban | 7581443 |
| 2962 | 37200.37300.37500.38200.39100.43600.146400.450700 | Wall conduiting | 1.94d | 2026-07-01 | 2026-07-03 | 2957, 2961SS+1d |  | 7 day week With NGT Ban | 7581453 |
| 2963 | 37200.37300.37500.38200.39100.43600.146400.450800 | Formwork | 7.94d | 2026-07-03 | 2026-07-11 | 2962SS+1.88d |  | 7 day week With NGT Ban | 7581463 |
| 2964 | 37200.37300.37500.38200.39100.43600.146400.450900 | Concreting | 0.94d | 2026-07-11 | 2026-07-12 | 2963 |  | 7 day week With NGT Ban | 7581473 |
| 2965 | 37200.37300.37500.38200.39100.43600.146500 | **Terrace floor slab** | 14.75d | 2026-07-12 | 2026-07-27 |  | start no earlier than 2026-07-12 | 7 day week With NGT Ban | 7571023 |
| 2966 | 37200.37300.37500.38200.39100.43600.146500.451000 | Reinforcement | 10.94d | 2026-07-12 | 2026-07-23 | 2964 |  | 7 day week With NGT Ban | 7581483 |
| 2967 | 37200.37300.37500.38200.39100.43600.146500.451100 | Wall conduiting | 1.94d | 2026-07-13 | 2026-07-15 | 2962, 2966SS+1d |  | 7 day week With NGT Ban | 7581493 |
| 2968 | 37200.37300.37500.38200.39100.43600.146500.451200 | Formwork | 11.94d | 2026-07-14 | 2026-07-26 | 2966SS+1.88d |  | 7 day week With NGT Ban | 7581503 |
| 2969 | 37200.37300.37500.38200.39100.43600.146500.451300 | Concreting | 0.94d | 2026-07-26 | 2026-07-27 | 2968 |  | 7 day week With NGT Ban | 7581513 |

| ID | WBS | Task | Duration | Start | Finish | Predecessors | Constraint | Calendar | Unique_Task_ID |
| --- | --- | --- | --- | --- | --- | --- | --- | --- | --- |
| 2970 | 37200.37300.37500.38200.39100.43600.146600 | **OHT & Mumty** | 39.5d | 2026-07-27 | 2026-09-04 |  | start no earlier than 2026-07-27 | 7 day week With NGT Ban | 7571033 |
| 2971 | 37200.37300.37500.38200.39100.43600.146600.451400 | Reinforcement | 29.94d | 2026-07-27 | 2026-08-26 | 2969 |  | 7 day week With NGT Ban | 7581523 |
| 2972 | 37200.37300.37500.38200.39100.43600.146600.451500 | Wall conduiting | 4.94d | 2026-07-28 | 2026-08-02 | 2967, 2971SS+1d |  | 7 day week With NGT Ban | 7581533 |
| 2973 | 37200.37300.37500.38200.39100.43600.146600.451600 | Formwork | 32.94d | 2026-07-30 | 2026-09-01 | 2971SS+3.62d |  | 7 day week With NGT Ban | 7581543 |
| 2974 | 37200.37300.37500.38200.39100.43600.146600.451700 | Concreting | 2.94d | 2026-09-01 | 2026-09-04 | 2973 |  | 7 day week With NGT Ban | 7581553 |
| 2975 | 37200.37300.37500.38200.39100.45100 | **Post Pour Activities** | 400.25d | 2025-07-28 | 2026-10-16 |  | start no earlier than 2025-07-28 | 7 day week With NGT Ban | 7567713 |
| 2976 | 37200.37300.37500.38200.39100.45100.283000 | 1st Floor | 7d | 2025-07-28 | 2025-08-04 | 2814 |  | 7 day week With NGT Ban | 7574033 |
| 2977 | 37200.37300.37500.38200.39100.45100.283100 | 2nd Floor | 7d | 2025-08-17 | 2025-08-24 | 2976, 2824 |  | 7 day week With NGT Ban | 7574043 |
| 2978 | 37200.37300.37500.38200.39100.45100.283200 | 3rd Floor | 7d | 2025-08-30 | 2025-09-06 | 2977, 2829 |  | 7 day week With NGT Ban | 7574053 |
| 2979 | 37200.37300.37500.38200.39100.45100.283300 | 4th Floor | 7d | 2025-09-09 | 2025-09-16 | 2978, 2834 |  | 7 day week With NGT Ban | 7574063 |
| 2980 | 37200.37300.37500.38200.39100.45100.283400 | 5th Floor | 7d | 2025-09-19 | 2025-09-26 | 2979, 2839 |  | 7 day week With NGT Ban | 7574073 |
| 2981 | 37200.37300.37500.38200.39100.45100.283500 | 6th Floor | 7d | 2025-09-29 | 2025-10-06 | 2980, 2844 |  | 7 day week With NGT Ban | 7574083 |
| 2982 | 37200.37300.37500.38200.39100.45100.283600 | 7th Floor | 7d | 2025-10-09 | 2025-10-16 | 2981, 2849 |  | 7 day week With NGT Ban | 7574093 |
| 2983 | 37200.37300.37500.38200.39100.45100.283700 | 8th Floor | 7d | 2025-10-19 | 2025-10-26 | 2982, 2854 |  | 7 day week With NGT Ban | 7574103 |
| 2984 | 37200.37300.37500.38200.39100.45100.283800 | 9th Floor | 7d | 2025-10-29 | 2025-12-20 | 2983, 2859 |  | 7 day week With NGT Ban | 7574113 |
| 2985 | 37200.37300.37500.38200.39100.45100.283900 | 10th Floor | 7d | 2025-12-23 | 2025-12-30 | 2984, 2864 |  | 7 day week With NGT Ban | 7574123 |
| 2986 | 37200.37300.37500.38200.39100.45100.284000 | 11th Floor | 7d | 2026-01-05 | 2026-01-12 | 2985, 2869 |  | 7 day week With NGT Ban | 7574133 |
| 2987 | 37200.37300.37500.38200.39100.45100.284100 | 12th Floor | 7d | 2026-01-15 | 2026-01-22 | 2986, 2874 |  | 7 day week With NGT Ban | 7574143 |
| 2988 | 37200.37300.37500.38200.39100.45100.284200 | 13th Floor | 7d | 2026-01-25 | 2026-02-01 | 2987, 2879 |  | 7 day week With NGT Ban | 7574153 |
| 2989 | 37200.37300.37500.38200.39100.45100.284300 | 14th Floor | 7d | 2026-02-03 | 2026-02-10 | 2988, 2884 |  | 7 day week With NGT Ban | 7574163 |
| 2990 | 37200.37300.37500.38200.39100.45100.284400 | 15th Floor | 7d | 2026-02-12 | 2026-02-19 | 2989, 2889 |  | 7 day week With NGT Ban | 7574173 |
| 2991 | 37200.37300.37500.38200.39100.45100.284500 | 16th Floor | 7d | 2026-02-21 | 2026-02-28 | 2990, 2894 |  | 7 day week With NGT Ban | 7574183 |
| 2992 | 37200.37300.37500.38200.39100.45100.284600 | 17th Floor | 7d | 2026-03-02 | 2026-03-09 | 2991, 2899 |  | 7 day week With NGT Ban | 7574193 |
| 2993 | 37200.37300.37500.38200.39100.45100.284700 | 18th Floor | 7d | 2026-03-11 | 2026-03-18 | 2992, 2904 |  | 7 day week With NGT Ban | 7574203 |
| 2994 | 37200.37300.37500.38200.39100.45100.284800 | 19th Floor | 7d | 2026-03-23 | 2026-03-30 | 2993, 2909 |  | 7 day week With NGT Ban | 7574213 |
| 2995 | 37200.37300.37500.38200.39100.45100.284900 | 20th Floor | 7d | 2026-04-05 | 2026-04-12 | 2994, 2914 |  | 7 day week With NGT Ban | 7574223 |
| 2996 | 37200.37300.37500.38200.39100.45100.285000 | 21st Floor | 7d | 2026-04-14 | 2026-04-21 | 2995, 2919 |  | 7 day week With NGT Ban | 7574233 |
| 2997 | 37200.37300.37500.38200.39100.45100.285100 | 22nd Floor | 7d | 2026-04-22 | 2026-04-29 | 2996, 2924 |  | 7 day week With NGT Ban | 7574243 |
| 2998 | 37200.37300.37500.38200.39100.45100.285200 | 23rd Floor | 7d | 2026-04-30 | 2026-05-07 | 2997, 2929 |  | 7 day week With NGT Ban | 7574253 |
| 2999 | 37200.37300.37500.38200.39100.45100.285300 | 24th Floor | 7d | 2026-05-08 | 2026-05-15 | 2998, 2934 |  | 7 day week With NGT Ban | 7574263 |
| 3000 | 37200.37300.37500.38200.39100.45100.285400 | 25th Floor | 7d | 2026-05-16 | 2026-05-23 | 2999, 2939 |  | 7 day week With NGT Ban | 7574273 |
| 3001 | 37200.37300.37500.38200.39100.45100.285500 | 26th Floor | 7d | 2026-05-24 | 2026-05-31 | 3000, 2944 |  | 7 day week With NGT Ban | 7574283 |
| 3002 | 37200.37300.37500.38200.39100.45100.285600 | 27th Floor | 7d | 2026-06-06 | 2026-06-13 | 3001, 2949 |  | 7 day week With NGT Ban | 7574293 |
| 3003 | 37200.37300.37500.38200.39100.45100.285700 | 28th Floor | 7d | 2026-06-17 | 2026-06-24 | 3002, 2954 |  | 7 day week With NGT Ban | 7574303 |
| 3004 | 37200.37300.37500.38200.39100.45100.285800 | 29th Floor | 7d | 2026-06-30 | 2026-07-07 | 3003, 2959 |  | 7 day week With NGT Ban | 7574313 |
| 3005 | 37200.37300.37500.38200.39100.45100.285900 | 30th Floor | 7d | 2026-07-12 | 2026-07-19 | 3004, 2964 |  | 7 day week With NGT Ban | 7574323 |
| 3006 | 37200.37300.37500.38200.39100.45100.286000 | 31st Floor | 7d | 2026-07-27 | 2026-08-03 | 3005, 2969 |  | 7 day week With NGT Ban | 7574333 |
| 3007 | 37200.37300.37500.38200.39100.45100.286100 | 32nd Flood | 7d | 2026-09-04 | 2026-09-11 | 3006, 2974 |  | 7 day week With NGT Ban | 7574343 |
| 3008 | 37200.37300.37500.38200.39100.45100.286200 | 33rd Floor | 7d | 2026-09-11 | 2026-09-18 | 3007 |  | 7 day week With NGT Ban | 7574353 |
| 3009 | 37200.37300.37500.38200.39100.45100.286300 | 34th Floor | 7d | 2026-09-18 | 2026-09-25 | 3008 |  | 7 day week With NGT Ban | 7574363 |
| 3010 | 37200.37300.37500.38200.39100.45100.286400 | 35th Floor | 7d | 2026-09-25 | 2026-10-02 | 3009 |  | 7 day week With NGT Ban | 7574373 |
| 3011 | 37200.37300.37500.38200.39100.45100.286500 | Terrace | 7d | 2026-10-02 | 2026-10-09 | 3010 |  | 7 day week With NGT Ban | 7574383 |
| 3012 | 37200.37300.37500.38200.39100.45100.286600 | Mumty & Machine Room | 7d | 2026-10-09 | 2026-10-16 | 3011 |  | 7 day week With NGT Ban | 7574393 |

| ID | WBS | Task | Duration | Start | Finish | Predecessors | Constraint | Calendar | Unique_Task_ID |
| --- | --- | --- | --- | --- | --- | --- | --- | --- | --- |
| 3013 | 37200.37300.37500.38200.39100.40600 | **Finishing work** | 642.56d | 2025-08-04 | 2027-08-07 |  | start no earlier than 2025-08-04 | 7 day week With NGT Ban | 7567593 |
| 3014 | 37200.37300.37500.38200.39100.40600.41600 | **Flat finishing** | 544.19d | 2025-08-04 | 2027-04-30 |  | start no earlier than 2025-08-04 | 7 day week With NGT Ban | 7567633 |
| 3015 | 37200.37300.37500.38200.39100.40600.41600.84000 | **1st Floor** | 61.25d | 2025-08-04 | 2025-10-04 |  | start no earlier than 2025-08-04 | 7 day week With NGT Ban | 7568773 |
| 3016 | 37200.37300.37500.38200.39100.40600.41600.84000.969800 | Block Work | 8d | 2025-08-04 | 2025-08-12 | 2976FS+0.25d |  | 7 day week With NGT Ban | 7592943 |
| 3017 | 37200.37300.37500.38200.39100.40600.41600.84000.969900 | Door Frame Fixing | 9d | 2025-08-12 | 2025-08-21 | 3016 |  | 7 day week With NGT Ban | 7592953 |
| 3018 | 37200.37300.37500.38200.39100.40600.41600.84000.970000 | Internal Plumbing Works | 8d | 2025-08-12 | 2025-08-20 | 3016 |  | 7 day week With NGT Ban | 7592963 |
| 3019 | 37200.37300.37500.38200.39100.40600.41600.84000.970100 | Waterproofing | 10d | 2025-08-20 | 2025-08-30 | 3018 |  | 7 day week With NGT Ban | 7592973 |
| 3020 | 37200.37300.37500.38200.39100.40600.41600.84000.970200 | Internal Plaster | 8d | 2025-08-13 | 2025-08-21 | 3016FS+1d |  | 7 day week With NGT Ban | 7592983 |
| 3021 | 37200.37300.37500.38200.39100.40600.41600.84000.970300 | IPS flooring work | 10d | 2025-08-30 | 2025-09-09 | 3017, 3018, 3019 |  | 7 day week With NGT Ban | 7592993 |
| 3022 | 37200.37300.37500.38200.39100.40600.41600.84000.970400 | Toilet dado work | 8d | 2025-08-17 | 2025-08-25 | 2824 |  | 7 day week With NGT Ban | 7593003 |
| 3023 | 37200.37300.37500.38200.39100.40600.41600.84000.970500 | Toilet flooring work | 8d | 2025-08-25 | 2025-09-02 | 3022 |  | 7 day week With NGT Ban | 7593013 |
| 3024 | 37200.37300.37500.38200.39100.40600.41600.84000.970600 | Living dinning flooring | 12d | 2025-08-21 | 2025-09-02 | 3017FS+0.25d |  | 7 day week With NGT Ban | 7593023 |
| 3025 | 37200.37300.37500.38200.39100.40600.41600.84000.970700 | Aluminium door-window fixing | 12d | 2025-09-09 | 2025-09-21 | 3021FS+0.25d |  | 7 day week With NGT Ban | 7593033 |
| 3026 | 37200.37300.37500.38200.39100.40600.41600.84000.970800 | Putty primer coat | 6d | 2025-09-02 | 2025-09-08 | 3024 |  | 7 day week With NGT Ban | 7593043 |
| 3027 | 37200.37300.37500.38200.39100.40600.41600.84000.970900 | Door shutter fixing | 8d | 2025-09-02 | 2025-09-10 | 3024 |  | 7 day week With NGT Ban | 7593053 |
| 3028 | 37200.37300.37500.38200.39100.40600.41600.84000.971000 | Electrical wiring work | 8d | 2025-09-10 | 2025-09-18 | 3027 |  | 7 day week With NGT Ban | 7593063 |
| 3029 | 37200.37300.37500.38200.39100.40600.41600.84000.971100 | Painting 1st coat | 8d | 2025-09-18 | 2025-09-26 | 3026, 3027, 3028 |  | 7 day week With NGT Ban | 7593073 |
| 3030 | 37200.37300.37500.38200.39100.40600.41600.84000.971200 | False ceiling | 8d | 2025-09-26 | 2025-10-04 | 3029 |  | 7 day week With NGT Ban | 7593083 |
| 3031 | 37200.37300.37500.38200.39100.40600.41600.83900 | **2nd Floor** | 65.25d | 2025-08-12 | 2025-10-17 |  | start no earlier than 2025-08-12 | 7 day week With NGT Ban | 7568783 |
| 3032 | 37200.37300.37500.38200.39100.40600.41600.83900.971300 | Block Work | 8d | 2025-08-12 | 2025-08-20 | 3016FS+0.25d |  | 7 day week With NGT Ban | 7593093 |
| 3033 | 37200.37300.37500.38200.39100.40600.41600.83900.971400 | Door Frame Fixing | 9d | 2025-08-21 | 2025-08-30 | 3017, 3032 |  | 7 day week With NGT Ban | 7593103 |
| 3034 | 37200.37300.37500.38200.39100.40600.41600.83900.971500 | Internal Plumbing Works | 8d | 2025-08-20 | 2025-08-28 | 3018, 3032 |  | 7 day week With NGT Ban | 7593113 |
| 3035 | 37200.37300.37500.38200.39100.40600.41600.83900.971600 | Waterproofing | 10d | 2025-08-30 | 2025-09-09 | 3019, 3034 |  | 7 day week With NGT Ban | 7593123 |
| 3036 | 37200.37300.37500.38200.39100.40600.41600.83900.971700 | Internal Plaster | 8d | 2025-08-21 | 2025-08-29 | 3032FS+0.25d |  | 7 day week With NGT Ban | 7593133 |
| 3037 | 37200.37300.37500.38200.39100.40600.41600.83900.971800 | IPS flooring work | 10d | 2025-09-09 | 2025-09-19 | 3021, 3033, 3034, 3035 |  | 7 day week With NGT Ban | 7593143 |
| 3038 | 37200.37300.37500.38200.39100.40600.41600.83900.971900 | Toilet dado work | 8d | 2025-08-25 | 2025-09-02 | 3022FS+0.25d |  | 7 day week With NGT Ban | 7593153 |
| 3039 | 37200.37300.37500.38200.39100.40600.41600.83900.972000 | Toilet flooring work | 8d | 2025-09-02 | 2025-09-10 | 3023, 3038 |  | 7 day week With NGT Ban | 7593163 |
| 3040 | 37200.37300.37500.38200.39100.40600.41600.83900.972100 | Living dinning flooring | 12d | 2025-09-03 | 2025-09-15 | 3024FS+0.25d |  | 7 day week With NGT Ban | 7593173 |
| 3041 | 37200.37300.37500.38200.39100.40600.41600.83900.972200 | Aluminium door-window fixing | 12d | 2025-09-22 | 2025-10-04 | 3025FS+0.25d |  | 7 day week With NGT Ban | 7593183 |
| 3042 | 37200.37300.37500.38200.39100.40600.41600.83900.972300 | Putty primer coat | 6d | 2025-09-15 | 2025-09-21 | 3026, 3040 |  | 7 day week With NGT Ban | 7593193 |
| 3043 | 37200.37300.37500.38200.39100.40600.41600.83900.972400 | Door shutter fixing | 8d | 2025-09-15 | 2025-09-23 | 3027, 3040 |  | 7 day week With NGT Ban | 7593203 |
| 3044 | 37200.37300.37500.38200.39100.40600.41600.83900.972500 | Electrical wiring work | 8d | 2025-09-23 | 2025-10-01 | 3028, 3043 |  | 7 day week With NGT Ban | 7593213 |
| 3045 | 37200.37300.37500.38200.39100.40600.41600.83900.972600 | Painting 1st coat | 8d | 2025-10-01 | 2025-10-09 | 3029, 3042, 3043, 3044 |  | 7 day week With NGT Ban | 7593223 |
| 3046 | 37200.37300.37500.38200.39100.40600.41600.83900.972700 | False ceiling | 8d | 2025-10-09 | 2025-10-17 | 3030, 3045 |  | 7 day week With NGT Ban | 7593233 |

| ID | WBS | Task | Duration | Start | Finish | Predecessors | Constraint | Calendar | Unique_Task_ID |
| --- | --- | --- | --- | --- | --- | --- | --- | --- | --- |
| 3047 | 37200.37300.37500.38200.39100.40600.41600.83800 | **3rd Floor** | 69.25d | 2025-08-21 | 2025-10-29 |  | start no earlier than 2025-08-21 | 7 day week With NGT Ban | 7568793 |
| 3048 | 37200.37300.37500.38200.39100.40600.41600.83800.972800 | Block Work | 8d | 2025-08-21 | 2025-08-29 | 3032FS+0.25d |  | 7 day week With NGT Ban | 7593243 |
| 3049 | 37200.37300.37500.38200.39100.40600.41600.83800.972900 | Door Frame Fixing | 9d | 2025-08-30 | 2025-09-08 | 3033, 3048 |  | 7 day week With NGT Ban | 7593253 |
| 3050 | 37200.37300.37500.38200.39100.40600.41600.83800.973000 | Internal Plumbing Works | 8d | 2025-08-29 | 2025-09-06 | 3034, 3048 |  | 7 day week With NGT Ban | 7593263 |
| 3051 | 37200.37300.37500.38200.39100.40600.41600.83800.973100 | Waterproofing | 10d | 2025-09-09 | 2025-09-19 | 3035, 3050 |  | 7 day week With NGT Ban | 7593273 |
| 3052 | 37200.37300.37500.38200.39100.40600.41600.83800.973200 | Internal Plaster | 8d | 2025-08-29 | 2025-09-06 | 3036FS+0.25d |  | 7 day week With NGT Ban | 7593283 |
| 3053 | 37200.37300.37500.38200.39100.40600.41600.83800.973300 | IPS flooring work | 10d | 2025-09-19 | 2025-09-29 | 3037, 3049, 3051, 3052 |  | 7 day week With NGT Ban | 7593293 |
| 3054 | 37200.37300.37500.38200.39100.40600.41600.83800.973400 | Toilet dado work | 8d | 2025-09-02 | 2025-09-10 | 3038FS+0.25d |  | 7 day week With NGT Ban | 7593303 |
| 3055 | 37200.37300.37500.38200.39100.40600.41600.83800.973500 | Toilet flooring work | 8d | 2025-09-10 | 2025-09-18 | 3039, 3054 |  | 7 day week With NGT Ban | 7593313 |
| 3056 | 37200.37300.37500.38200.39100.40600.41600.83800.973600 | Living dinning flooring | 12d | 2025-09-15 | 2025-09-27 | 3040FS+0.25d |  | 7 day week With NGT Ban | 7593323 |
| 3057 | 37200.37300.37500.38200.39100.40600.41600.83800.973700 | Aluminium door-window fixing | 12d | 2025-10-04 | 2025-10-16 | 3041FS+0.25d |  | 7 day week With NGT Ban | 7593333 |
| 3058 | 37200.37300.37500.38200.39100.40600.41600.83800.973800 | Putty primer coat | 6d | 2025-09-27 | 2025-10-03 | 3042, 3056 |  | 7 day week With NGT Ban | 7593343 |
| 3059 | 37200.37300.37500.38200.39100.40600.41600.83800.973900 | Door shutter fixing | 8d | 2025-09-27 | 2025-10-05 | 3043, 3056 |  | 7 day week With NGT Ban | 7593353 |
| 3060 | 37200.37300.37500.38200.39100.40600.41600.83800.974000 | Electrical wiring work | 8d | 2025-10-05 | 2025-10-13 | 3044, 3059 |  | 7 day week With NGT Ban | 7593363 |
| 3061 | 37200.37300.37500.38200.39100.40600.41600.83800.974100 | Painting 1st coat | 8d | 2025-10-13 | 2025-10-21 | 3045, 3058, 3059, 3060 |  | 7 day week With NGT Ban | 7593373 |
| 3062 | 37200.37300.37500.38200.39100.40600.41600.83800.974200 | False ceiling | 8d | 2025-10-21 | 2025-10-29 | 3046, 3061 |  | 7 day week With NGT Ban | 7593383 |
| 3063 | 37200.37300.37500.38200.39100.40600.41600.83700 | **4th Floor** | 73.25d | 2025-08-29 | 2025-12-25 |  | start no earlier than 2025-08-29 | 7 day week With NGT Ban | 7568803 |
| 3064 | 37200.37300.37500.38200.39100.40600.41600.83700.974300 | Block Work | 8d | 2025-08-29 | 2025-09-06 | 3048FS+0.25d |  | 7 day week With NGT Ban | 7593393 |
| 3065 | 37200.37300.37500.38200.39100.40600.41600.83700.974400 | Door Frame Fixing | 9d | 2025-09-08 | 2025-09-17 | 3049, 3064 |  | 7 day week With NGT Ban | 7593403 |
| 3066 | 37200.37300.37500.38200.39100.40600.41600.83700.974500 | Internal Plumbing Works | 8d | 2025-09-06 | 2025-09-14 | 3050, 3064 |  | 7 day week With NGT Ban | 7593413 |
| 3067 | 37200.37300.37500.38200.39100.40600.41600.83700.974600 | Waterproofing | 10d | 2025-09-19 | 2025-09-29 | 3051, 3066 |  | 7 day week With NGT Ban | 7593423 |
| 3068 | 37200.37300.37500.38200.39100.40600.41600.83700.974700 | Internal Plaster | 8d | 2025-09-06 | 2025-09-14 | 3052FS+0.25d |  | 7 day week With NGT Ban | 7593433 |
| 3069 | 37200.37300.37500.38200.39100.40600.41600.83700.974800 | IPS flooring work | 10d | 2025-09-29 | 2025-10-09 | 3053, 3065, 3067, 3068 |  | 7 day week With NGT Ban | 7593443 |
| 3070 | 37200.37300.37500.38200.39100.40600.41600.83700.974900 | Toilet dado work | 8d | 2025-09-11 | 2025-09-19 | 3054FS+0.25d |  | 7 day week With NGT Ban | 7593453 |
| 3071 | 37200.37300.37500.38200.39100.40600.41600.83700.975000 | Toilet flooring work | 8d | 2025-09-19 | 2025-09-27 | 3055, 3070 |  | 7 day week With NGT Ban | 7593463 |
| 3072 | 37200.37300.37500.38200.39100.40600.41600.83700.975100 | Living dinning flooring | 12d | 2025-09-27 | 2025-10-09 | 3056FS+0.25d |  | 7 day week With NGT Ban | 7593473 |
| 3073 | 37200.37300.37500.38200.39100.40600.41600.83700.975200 | Aluminium door-window fixing | 12d | 2025-10-16 | 2025-10-28 | 3057FS+0.25d |  | 7 day week With NGT Ban | 7593483 |
| 3074 | 37200.37300.37500.38200.39100.40600.41600.83700.975300 | Putty primer coat | 6d | 2025-10-09 | 2025-10-15 | 3058, 3072 |  | 7 day week With NGT Ban | 7593493 |
| 3075 | 37200.37300.37500.38200.39100.40600.41600.83700.975400 | Door shutter fixing | 8d | 2025-10-09 | 2025-10-17 | 3059, 3072 |  | 7 day week With NGT Ban | 7593503 |
| 3076 | 37200.37300.37500.38200.39100.40600.41600.83700.975500 | Electrical wiring work | 8d | 2025-10-17 | 2025-10-25 | 3060, 3075 |  | 7 day week With NGT Ban | 7593513 |
| 3077 | 37200.37300.37500.38200.39100.40600.41600.83700.975600 | Painting 1st coat | 8d | 2025-10-25 | 2025-12-17 | 3061, 3074, 3075, 3076 |  | 7 day week With NGT Ban | 7593523 |
| 3078 | 37200.37300.37500.38200.39100.40600.41600.83700.975700 | False ceiling | 8d | 2025-12-17 | 2025-12-25 | 3062, 3077 |  | 7 day week With NGT Ban | 7593533 |

| ID | WBS | Task | Duration | Start | Finish | Predecessors | Constraint | Calendar | Unique_Task_ID |
| --- | --- | --- | --- | --- | --- | --- | --- | --- | --- |
| 3079 | 37200.37300.37500.38200.39100.40600.41600.83600 | **5th Floor** | 77.25d | 2025-09-06 | 2026-01-06 |  | start no earlier than 2025-09-06 | 7 day week With NGT Ban | 7568813 |
| 3080 | 37200.37300.37500.38200.39100.40600.41600.83600.975800 | Block Work | 8d | 2025-09-06 | 2025-09-14 | 3064FS+0.25d |  | 7 day week With NGT Ban | 7593543 |
| 3081 | 37200.37300.37500.38200.39100.40600.41600.83600.975900 | Door Frame Fixing | 9d | 2025-09-17 | 2025-09-26 | 3065, 3080 |  | 7 day week With NGT Ban | 7593553 |
| 3082 | 37200.37300.37500.38200.39100.40600.41600.83600.976000 | Internal Plumbing Works | 8d | 2025-09-14 | 2025-09-22 | 3066, 3080 |  | 7 day week With NGT Ban | 7593563 |
| 3083 | 37200.37300.37500.38200.39100.40600.41600.83600.976100 | Waterproofing | 10d | 2025-09-29 | 2025-10-09 | 3067, 3082 |  | 7 day week With NGT Ban | 7593573 |
| 3084 | 37200.37300.37500.38200.39100.40600.41600.83600.976200 | Internal Plaster | 8d | 2025-09-14 | 2025-09-22 | 3068FS+0.25d |  | 7 day week With NGT Ban | 7593583 |
| 3085 | 37200.37300.37500.38200.39100.40600.41600.83600.976300 | IPS flooring work | 10d | 2025-10-09 | 2025-10-19 | 3069, 3081, 3083, 3084 |  | 7 day week With NGT Ban | 7593593 |
| 3086 | 37200.37300.37500.38200.39100.40600.41600.83600.976400 | Toilet dado work | 8d | 2025-10-09 | 2025-10-17 | 3070, 3083, 3084 |  | 7 day week With NGT Ban | 7593603 |
| 3087 | 37200.37300.37500.38200.39100.40600.41600.83600.976500 | Toilet flooring work | 8d | 2025-10-17 | 2025-10-25 | 3071, 3086 |  | 7 day week With NGT Ban | 7593613 |
| 3088 | 37200.37300.37500.38200.39100.40600.41600.83600.976600 | Living dinning flooring | 12d | 2025-10-09 | 2025-10-21 | 3072FS+0.25d |  | 7 day week With NGT Ban | 7593623 |
| 3089 | 37200.37300.37500.38200.39100.40600.41600.83600.976700 | Aluminium door-window fixing | 12d | 2025-10-28 | 2025-12-24 | 3073FS+0.25d |  | 7 day week With NGT Ban | 7593633 |
| 3090 | 37200.37300.37500.38200.39100.40600.41600.83600.976800 | Putty primer coat | 6d | 2025-10-21 | 2025-10-27 | 3074, 3088 |  | 7 day week With NGT Ban | 7593643 |
| 3091 | 37200.37300.37500.38200.39100.40600.41600.83600.976900 | Door shutter fixing | 8d | 2025-10-21 | 2025-10-29 | 3075, 3088 |  | 7 day week With NGT Ban | 7593653 |
| 3092 | 37200.37300.37500.38200.39100.40600.41600.83600.977000 | Electrical wiring work | 8d | 2025-10-29 | 2025-12-21 | 3076, 3091 |  | 7 day week With NGT Ban | 7593663 |
| 3093 | 37200.37300.37500.38200.39100.40600.41600.83600.977100 | Painting 1st coat | 8d | 2025-12-21 | 2025-12-29 | 3077, 3090, 3091, 3092 |  | 7 day week With NGT Ban | 7593673 |
| 3094 | 37200.37300.37500.38200.39100.40600.41600.83600.977200 | False ceiling | 8d | 2025-12-29 | 2026-01-06 | 3078, 3093 |  | 7 day week With NGT Ban | 7593683 |
| 3095 | 37200.37300.37500.38200.39100.40600.41600.83500 | **6th Floor** | 81.25d | 2025-09-14 | 2026-01-19 |  | start no earlier than 2025-09-14 | 7 day week With NGT Ban | 7568823 |
| 3096 | 37200.37300.37500.38200.39100.40600.41600.83500.977300 | Block Work | 8d | 2025-09-14 | 2025-09-22 | 3080FS+0.25d |  | 7 day week With NGT Ban | 7593693 |
| 3097 | 37200.37300.37500.38200.39100.40600.41600.83500.977400 | Door Frame Fixing | 9d | 2025-09-26 | 2025-10-05 | 2829, 3081 |  | 7 day week With NGT Ban | 7593703 |
| 3098 | 37200.37300.37500.38200.39100.40600.41600.83500.977500 | Internal Plumbing Works | 8d | 2025-09-22 | 2025-09-30 | 3082, 3096 |  | 7 day week With NGT Ban | 7593713 |
| 3099 | 37200.37300.37500.38200.39100.40600.41600.83500.977600 | Waterproofing | 10d | 2025-10-09 | 2025-10-19 | 3083, 3098 |  | 7 day week With NGT Ban | 7593723 |
| 3100 | 37200.37300.37500.38200.39100.40600.41600.83500.977700 | Internal Plaster | 8d | 2025-09-23 | 2025-10-01 | 3084FS+0.25d |  | 7 day week With NGT Ban | 7593733 |
| 3101 | 37200.37300.37500.38200.39100.40600.41600.83500.977800 | IPS flooring work | 10d | 2025-10-19 | 2025-10-29 | 3085, 3097, 3099, 3100 |  | 7 day week With NGT Ban | 7593743 |
| 3102 | 37200.37300.37500.38200.39100.40600.41600.83500.977900 | Toilet dado work | 8d | 2025-10-19 | 2025-10-27 | 3086, 3099, 3100 |  | 7 day week With NGT Ban | 7593753 |
| 3103 | 37200.37300.37500.38200.39100.40600.41600.83500.978000 | Toilet flooring work | 8d | 2025-10-27 | 2025-12-19 | 3087, 3102 |  | 7 day week With NGT Ban | 7593763 |
| 3104 | 37200.37300.37500.38200.39100.40600.41600.83500.978100 | Living dinning flooring | 12d | 2025-10-22 | 2025-12-18 | 3088FS+0.25d |  | 7 day week With NGT Ban | 7593773 |
| 3105 | 37200.37300.37500.38200.39100.40600.41600.83500.978200 | Aluminium door-window fixing | 12d | 2025-12-25 | 2026-01-06 | 3089FS+0.25d |  | 7 day week With NGT Ban | 7593783 |
| 3106 | 37200.37300.37500.38200.39100.40600.41600.83500.978300 | Putty primer coat | 6d | 2025-12-18 | 2025-12-24 | 3090, 3104 |  | 7 day week With NGT Ban | 7593793 |
| 3107 | 37200.37300.37500.38200.39100.40600.41600.83500.978400 | Door shutter fixing | 8d | 2025-12-18 | 2025-12-26 | 3091, 3104 |  | 7 day week With NGT Ban | 7593803 |
| 3108 | 37200.37300.37500.38200.39100.40600.41600.83500.978500 | Electrical wiring work | 8d | 2025-12-26 | 2026-01-03 | 3092, 3107 |  | 7 day week With NGT Ban | 7593813 |
| 3109 | 37200.37300.37500.38200.39100.40600.41600.83500.978600 | Painting 1st coat | 8d | 2026-01-03 | 2026-01-11 | 3093, 3106, 3107, 3108 |  | 7 day week With NGT Ban | 7593823 |
| 3110 | 37200.37300.37500.38200.39100.40600.41600.83500.978700 | False ceiling | 8d | 2026-01-11 | 2026-01-19 | 3094, 3109 |  | 7 day week With NGT Ban | 7593833 |

| ID | WBS | Task | Duration | Start | Finish | Predecessors | Constraint | Calendar | Unique_Task_ID |
| --- | --- | --- | --- | --- | --- | --- | --- | --- | --- |
| 3111 | 37200.37300.37500.38200.39100.40600.41600.83400 | **7th Floor** | 85.25d | 2025-09-23 | 2026-01-31 |  | start no earlier than 2025-09-23 | 7 day week With NGT Ban | 7568833 |
| 3112 | 37200.37300.37500.38200.39100.40600.41600.83400.978800 | Block Work | 8d | 2025-09-23 | 2025-10-01 | 3096FS+0.25d |  | 7 day week With NGT Ban | 7593843 |
| 3113 | 37200.37300.37500.38200.39100.40600.41600.83400.978900 | Door Frame Fixing | 9d | 2025-10-05 | 2025-10-14 | 3097, 3112 |  | 7 day week With NGT Ban | 7593853 |
| 3114 | 37200.37300.37500.38200.39100.40600.41600.83400.979000 | Internal Plumbing Works | 8d | 2025-10-01 | 2025-10-09 | 3098, 3112 |  | 7 day week With NGT Ban | 7593863 |
| 3115 | 37200.37300.37500.38200.39100.40600.41600.83400.979100 | Waterproofing | 10d | 2025-10-19 | 2025-10-29 | 3099, 3114 |  | 7 day week With NGT Ban | 7593873 |
| 3116 | 37200.37300.37500.38200.39100.40600.41600.83400.979200 | Internal Plaster | 8d | 2025-10-01 | 2025-10-09 | 3100FS+0.25d |  | 7 day week With NGT Ban | 7593883 |
| 3117 | 37200.37300.37500.38200.39100.40600.41600.83400.979300 | IPS flooring work | 10d | 2025-10-29 | 2025-12-23 | 3101, 3113, 3115, 3116 |  | 7 day week With NGT Ban | 7593893 |
| 3118 | 37200.37300.37500.38200.39100.40600.41600.83400.979400 | Toilet dado work | 8d | 2025-10-29 | 2025-12-21 | 3102, 3115, 3116 |  | 7 day week With NGT Ban | 7593903 |
| 3119 | 37200.37300.37500.38200.39100.40600.41600.83400.979500 | Toilet flooring work | 8d | 2025-12-21 | 2025-12-29 | 3103, 3118 |  | 7 day week With NGT Ban | 7593913 |
| 3120 | 37200.37300.37500.38200.39100.40600.41600.83400.979600 | Living dinning flooring | 12d | 2025-12-18 | 2025-12-30 | 3104FS+0.25d |  | 7 day week With NGT Ban | 7593923 |
| 3121 | 37200.37300.37500.38200.39100.40600.41600.83400.979700 | Aluminium door-window fixing | 12d | 2026-01-06 | 2026-01-18 | 3105FS+0.25d |  | 7 day week With NGT Ban | 7593933 |
| 3122 | 37200.37300.37500.38200.39100.40600.41600.83400.979800 | Putty primer coat | 6d | 2025-12-30 | 2026-01-05 | 3106, 3120 |  | 7 day week With NGT Ban | 7593943 |
| 3123 | 37200.37300.37500.38200.39100.40600.41600.83400.979900 | Door shutter fixing | 8d | 2025-12-30 | 2026-01-07 | 3107, 3120 |  | 7 day week With NGT Ban | 7593953 |
| 3124 | 37200.37300.37500.38200.39100.40600.41600.83400.980000 | Electrical wiring work | 8d | 2026-01-07 | 2026-01-15 | 3108, 3123 |  | 7 day week With NGT Ban | 7593963 |
| 3125 | 37200.37300.37500.38200.39100.40600.41600.83400.980100 | Painting 1st coat | 8d | 2026-01-15 | 2026-01-23 | 3109, 3122, 3123, 3124 |  | 7 day week With NGT Ban | 7593973 |
| 3126 | 37200.37300.37500.38200.39100.40600.41600.83400.980200 | False ceiling | 8d | 2026-01-23 | 2026-01-31 | 3110, 3125 |  | 7 day week With NGT Ban | 7593983 |
| 3127 | 37200.37300.37500.38200.39100.40600.41600.83300 | **8th Floor** | 89.25d | 2025-10-01 | 2026-02-12 |  | start no earlier than 2025-10-01 | 7 day week With NGT Ban | 7568843 |
| 3128 | 37200.37300.37500.38200.39100.40600.41600.83300.980300 | Block Work | 8d | 2025-10-01 | 2025-10-09 | 3112FS+0.25d |  | 7 day week With NGT Ban | 7593993 |
| 3129 | 37200.37300.37500.38200.39100.40600.41600.83300.980400 | Door Frame Fixing | 9d | 2025-10-14 | 2025-10-23 | 3113, 3128 |  | 7 day week With NGT Ban | 7594003 |
| 3130 | 37200.37300.37500.38200.39100.40600.41600.83300.980500 | Internal Plumbing Works | 8d | 2025-10-09 | 2025-10-17 | 3114, 3128 |  | 7 day week With NGT Ban | 7594013 |
| 3131 | 37200.37300.37500.38200.39100.40600.41600.83300.980600 | Waterproofing | 10d | 2025-10-29 | 2025-12-23 | 3115, 3130 |  | 7 day week With NGT Ban | 7594023 |
| 3132 | 37200.37300.37500.38200.39100.40600.41600.83300.980700 | Internal Plaster | 8d | 2025-10-09 | 2025-10-17 | 3116FS+0.25d |  | 7 day week With NGT Ban | 7594033 |
| 3133 | 37200.37300.37500.38200.39100.40600.41600.83300.980800 | IPS flooring work | 10d | 2025-12-23 | 2026-01-02 | 3117, 3129, 3131, 3132 |  | 7 day week With NGT Ban | 7594043 |
| 3134 | 37200.37300.37500.38200.39100.40600.41600.83300.980900 | Toilet dado work | 8d | 2025-12-23 | 2025-12-31 | 3118, 3131, 3132 |  | 7 day week With NGT Ban | 7594053 |
| 3135 | 37200.37300.37500.38200.39100.40600.41600.83300.981000 | Toilet flooring work | 8d | 2025-12-31 | 2026-01-08 | 3119, 3134 |  | 7 day week With NGT Ban | 7594063 |
| 3136 | 37200.37300.37500.38200.39100.40600.41600.83300.981100 | Living dinning flooring | 12d | 2025-12-30 | 2026-01-11 | 3120FS+0.25d |  | 7 day week With NGT Ban | 7594073 |
| 3137 | 37200.37300.37500.38200.39100.40600.41600.83300.981200 | Aluminium door-window fixing | 12d | 2026-01-18 | 2026-01-30 | 3121FS+0.25d |  | 7 day week With NGT Ban | 7594083 |
| 3138 | 37200.37300.37500.38200.39100.40600.41600.83300.981300 | Putty primer coat | 6d | 2026-01-11 | 2026-01-17 | 3122, 3136 |  | 7 day week With NGT Ban | 7594093 |
| 3139 | 37200.37300.37500.38200.39100.40600.41600.83300.981400 | Door shutter fixing | 8d | 2026-01-11 | 2026-01-19 | 3123, 3136 |  | 7 day week With NGT Ban | 7594103 |
| 3140 | 37200.37300.37500.38200.39100.40600.41600.83300.981500 | Electrical wiring work | 8d | 2026-01-19 | 2026-01-27 | 3124, 3139 |  | 7 day week With NGT Ban | 7594113 |
| 3141 | 37200.37300.37500.38200.39100.40600.41600.83300.981600 | Painting 1st coat | 8d | 2026-01-27 | 2026-02-04 | 3125, 3138, 3139, 3140 |  | 7 day week With NGT Ban | 7594123 |
| 3142 | 37200.37300.37500.38200.39100.40600.41600.83300.981700 | False ceiling | 8d | 2026-02-04 | 2026-02-12 | 3126, 3141 |  | 7 day week With NGT Ban | 7594133 |

| ID | WBS | Task | Duration | Start | Finish | Predecessors | Constraint | Calendar | Unique_Task_ID |
| --- | --- | --- | --- | --- | --- | --- | --- | --- | --- |
| 3143 | 37200.37300.37500.38200.39100.40600.41600.83200 | **9th Floor** | 93.25d | 2025-10-09 | 2026-02-24 |  | start no earlier than 2025-10-09 | 7 day week With NGT Ban | 7568853 |
| 3144 | 37200.37300.37500.38200.39100.40600.41600.83200.981800 | Block Work | 8d | 2025-10-09 | 2025-10-17 | 3128FS+0.25d |  | 7 day week With NGT Ban | 7594143 |
| 3145 | 37200.37300.37500.38200.39100.40600.41600.83200.981900 | Door Frame Fixing | 9d | 2025-10-23 | 2025-12-16 | 3129, 3144 |  | 7 day week With NGT Ban | 7594153 |
| 3146 | 37200.37300.37500.38200.39100.40600.41600.83200.982000 | Internal Plumbing Works | 8d | 2025-10-17 | 2025-10-25 | 3130, 3144 |  | 7 day week With NGT Ban | 7594163 |
| 3147 | 37200.37300.37500.38200.39100.40600.41600.83200.982100 | Waterproofing | 10d | 2025-12-23 | 2026-01-02 | 3131, 3146 |  | 7 day week With NGT Ban | 7594173 |
| 3148 | 37200.37300.37500.38200.39100.40600.41600.83200.982200 | Internal Plaster | 8d | 2025-10-17 | 2025-10-25 | 3132FS+0.25d |  | 7 day week With NGT Ban | 7594183 |
| 3149 | 37200.37300.37500.38200.39100.40600.41600.83200.982300 | IPS flooring work | 10d | 2026-01-02 | 2026-01-12 | 3133, 3145, 3147, 3148 |  | 7 day week With NGT Ban | 7594193 |
| 3150 | 37200.37300.37500.38200.39100.40600.41600.83200.982400 | Toilet dado work | 8d | 2026-01-02 | 2026-01-10 | 3134, 3147, 3148 |  | 7 day week With NGT Ban | 7594203 |
| 3151 | 37200.37300.37500.38200.39100.40600.41600.83200.982500 | Toilet flooring work | 8d | 2026-01-10 | 2026-01-18 | 3135, 3150 |  | 7 day week With NGT Ban | 7594213 |
| 3152 | 37200.37300.37500.38200.39100.40600.41600.83200.982600 | Living dinning flooring | 12d | 2026-01-11 | 2026-01-23 | 3136FS+0.25d |  | 7 day week With NGT Ban | 7594223 |
| 3153 | 37200.37300.37500.38200.39100.40600.41600.83200.982700 | Aluminium door-window fixing | 12d | 2026-01-30 | 2026-02-11 | 3137FS+0.25d |  | 7 day week With NGT Ban | 7594233 |
| 3154 | 37200.37300.37500.38200.39100.40600.41600.83200.982800 | Putty primer coat | 6d | 2026-01-23 | 2026-01-29 | 3138, 3152 |  | 7 day week With NGT Ban | 7594243 |
| 3155 | 37200.37300.37500.38200.39100.40600.41600.83200.982900 | Door shutter fixing | 8d | 2026-01-23 | 2026-01-31 | 3139, 3152 |  | 7 day week With NGT Ban | 7594253 |
| 3156 | 37200.37300.37500.38200.39100.40600.41600.83200.983000 | Electrical wiring work | 8d | 2026-01-31 | 2026-02-08 | 3140, 3155 |  | 7 day week With NGT Ban | 7594263 |
| 3157 | 37200.37300.37500.38200.39100.40600.41600.83200.983100 | Painting 1st coat | 8d | 2026-02-08 | 2026-02-16 | 3141, 3154, 3155, 3156 |  | 7 day week With NGT Ban | 7594273 |
| 3158 | 37200.37300.37500.38200.39100.40600.41600.83200.983200 | False ceiling | 8d | 2026-02-16 | 2026-02-24 | 3142, 3157 |  | 7 day week With NGT Ban | 7594283 |
| 3159 | 37200.37300.37500.38200.39100.40600.41600.83100 | **10th Floor** | 97.25d | 2025-10-17 | 2026-03-09 |  | start no earlier than 2025-10-17 | 7 day week With NGT Ban | 7568863 |
| 3160 | 37200.37300.37500.38200.39100.40600.41600.83100.983300 | Block Work | 8d | 2025-10-17 | 2025-10-25 | 3144FS+0.25d |  | 7 day week With NGT Ban | 7594293 |
| 3161 | 37200.37300.37500.38200.39100.40600.41600.83100.983400 | Door Frame Fixing | 9d | 2025-12-16 | 2025-12-25 | 3145, 3160 |  | 7 day week With NGT Ban | 7594303 |
| 3162 | 37200.37300.37500.38200.39100.40600.41600.83100.983500 | Internal Plumbing Works | 8d | 2025-10-25 | 2025-12-17 | 3146, 3160 |  | 7 day week With NGT Ban | 7594313 |
| 3163 | 37200.37300.37500.38200.39100.40600.41600.83100.983600 | Waterproofing | 10d | 2026-01-02 | 2026-01-12 | 3147, 3162 |  | 7 day week With NGT Ban | 7594323 |
| 3164 | 37200.37300.37500.38200.39100.40600.41600.83100.983700 | Internal Plaster | 8d | 2025-10-26 | 2025-12-18 | 3148FS+0.25d |  | 7 day week With NGT Ban | 7594333 |
| 3165 | 37200.37300.37500.38200.39100.40600.41600.83100.983800 | IPS flooring work | 10d | 2026-01-12 | 2026-01-22 | 3149, 3161, 3163, 3164 |  | 7 day week With NGT Ban | 7594343 |
| 3166 | 37200.37300.37500.38200.39100.40600.41600.83100.983900 | Toilet dado work | 8d | 2026-01-12 | 2026-01-20 | 3150, 3163, 3164 |  | 7 day week With NGT Ban | 7594353 |
| 3167 | 37200.37300.37500.38200.39100.40600.41600.83100.984000 | Toilet flooring work | 8d | 2026-01-20 | 2026-01-28 | 3151, 3166 |  | 7 day week With NGT Ban | 7594363 |
| 3168 | 37200.37300.37500.38200.39100.40600.41600.83100.984100 | Living dinning flooring | 12d | 2026-01-24 | 2026-02-05 | 3152FS+0.25d |  | 7 day week With NGT Ban | 7594373 |
| 3169 | 37200.37300.37500.38200.39100.40600.41600.83100.984200 | Aluminium door-window fixing | 12d | 2026-02-12 | 2026-02-24 | 3153FS+0.25d |  | 7 day week With NGT Ban | 7594383 |
| 3170 | 37200.37300.37500.38200.39100.40600.41600.83100.984300 | Putty primer coat | 6d | 2026-02-05 | 2026-02-11 | 3154, 3168 |  | 7 day week With NGT Ban | 7594393 |
| 3171 | 37200.37300.37500.38200.39100.40600.41600.83100.984400 | Door shutter fixing | 8d | 2026-02-05 | 2026-02-13 | 3155, 3168 |  | 7 day week With NGT Ban | 7594403 |
| 3172 | 37200.37300.37500.38200.39100.40600.41600.83100.984500 | Electrical wiring work | 8d | 2026-02-13 | 2026-02-21 | 3156, 3171 |  | 7 day week With NGT Ban | 7594413 |
| 3173 | 37200.37300.37500.38200.39100.40600.41600.83100.984600 | Painting 1st coat | 8d | 2026-02-21 | 2026-03-01 | 3157, 3170, 3171, 3172 |  | 7 day week With NGT Ban | 7594423 |
| 3174 | 37200.37300.37500.38200.39100.40600.41600.83100.984700 | False ceiling | 8d | 2026-03-01 | 2026-03-09 | 3158, 3173 |  | 7 day week With NGT Ban | 7594433 |

| ID | WBS | Task | Duration | Start | Finish | Predecessors | Constraint | Calendar | Unique_Task_ID |
| --- | --- | --- | --- | --- | --- | --- | --- | --- | --- |
| 3175 | 37200.37300.37500.38200.39100.40600.41600.83000 | **11th Floor** | 97d | 2025-10-26 | 2026-03-17 |  | start no earlier than 2025-10-26 | 7 day week With NGT Ban | 7568873 |
| 3176 | 37200.37300.37500.38200.39100.40600.41600.83000.984800 | Block Work | 8d | 2025-10-26 | 2025-12-18 | 3160FS+0.25d |  | 7 day week With NGT Ban | 7594443 |
| 3177 | 37200.37300.37500.38200.39100.40600.41600.83000.984900 | Door Frame Fixing | 9d | 2025-12-25 | 2026-01-03 | 3161, 3176 |  | 7 day week With NGT Ban | 7594453 |
| 3178 | 37200.37300.37500.38200.39100.40600.41600.83000.985000 | Internal Plumbing Works | 8d | 2025-12-18 | 2025-12-26 | 3162, 3176 |  | 7 day week With NGT Ban | 7594463 |
| 3179 | 37200.37300.37500.38200.39100.40600.41600.83000.985100 | Waterproofing | 10d | 2026-01-12 | 2026-01-22 | 3163, 3178 |  | 7 day week With NGT Ban | 7594473 |
| 3180 | 37200.37300.37500.38200.39100.40600.41600.83000.985200 | Internal Plaster | 8d | 2025-12-18 | 2025-12-26 | 3164FS+0.25d |  | 7 day week With NGT Ban | 7594483 |
| 3181 | 37200.37300.37500.38200.39100.40600.41600.83000.985300 | IPS flooring work | 10d | 2026-01-22 | 2026-02-01 | 3165, 3177, 3178, 3179 |  | 7 day week With NGT Ban | 7594493 |
| 3182 | 37200.37300.37500.38200.39100.40600.41600.83000.985400 | Toilet dado work | 8d | 2026-01-22 | 2026-01-30 | 3166, 3179, 3180 |  | 7 day week With NGT Ban | 7594503 |
| 3183 | 37200.37300.37500.38200.39100.40600.41600.83000.985500 | Toilet flooring work | 8d | 2026-01-30 | 2026-02-07 | 3167, 3182 |  | 7 day week With NGT Ban | 7594513 |
| 3184 | 37200.37300.37500.38200.39100.40600.41600.83000.985600 | Living dinning flooring | 7d | 2026-02-05 | 2026-02-12 | 3168FS+0.25d |  | 7 day week With NGT Ban | 7594523 |
| 3185 | 37200.37300.37500.38200.39100.40600.41600.83000.985700 | Aluminium door-window fixing | 12d | 2026-02-24 | 2026-03-08 | 3169FS+0.25d |  | 7 day week With NGT Ban | 7594533 |
| 3186 | 37200.37300.37500.38200.39100.40600.41600.83000.985800 | Putty primer coat | 6d | 2026-02-12 | 2026-02-18 | 3170, 3184 |  | 7 day week With NGT Ban | 7594543 |
| 3187 | 37200.37300.37500.38200.39100.40600.41600.83000.985900 | Door shutter fixing | 8d | 2026-02-13 | 2026-02-21 | 3171, 3184 |  | 7 day week With NGT Ban | 7594553 |
| 3188 | 37200.37300.37500.38200.39100.40600.41600.83000.986000 | Electrical wiring work | 8d | 2026-02-21 | 2026-03-01 | 3172, 3187 |  | 7 day week With NGT Ban | 7594563 |
| 3189 | 37200.37300.37500.38200.39100.40600.41600.83000.986100 | Painting 1st coat | 8d | 2026-03-01 | 2026-03-09 | 3173, 3186, 3187, 3188 |  | 7 day week With NGT Ban | 7594573 |
| 3190 | 37200.37300.37500.38200.39100.40600.41600.83000.986200 | False ceiling | 8d | 2026-03-09 | 2026-03-17 | 3174, 3189 |  | 7 day week With NGT Ban | 7594583 |
| 3191 | 37200.37300.37500.38200.39100.40600.41600.82900 | **12th Floor** | 100.25d | 2025-12-18 | 2026-03-28 |  | start no earlier than 2025-12-18 | 7 day week With NGT Ban | 7568883 |
| 3192 | 37200.37300.37500.38200.39100.40600.41600.82900.986300 | Block Work | 8d | 2025-12-18 | 2025-12-26 | 3176FS+0.25d |  | 7 day week With NGT Ban | 7594593 |
| 3193 | 37200.37300.37500.38200.39100.40600.41600.82900.986400 | Door Frame Fixing | 9d | 2026-01-03 | 2026-01-12 | 3177, 3192 |  | 7 day week With NGT Ban | 7594603 |
| 3194 | 37200.37300.37500.38200.39100.40600.41600.82900.986500 | Internal Plumbing Works | 8d | 2025-12-26 | 2026-01-03 | 3178, 3192 |  | 7 day week With NGT Ban | 7594613 |
| 3195 | 37200.37300.37500.38200.39100.40600.41600.82900.986600 | Waterproofing | 10d | 2026-01-22 | 2026-02-01 | 3179, 3194 |  | 7 day week With NGT Ban | 7594623 |
| 3196 | 37200.37300.37500.38200.39100.40600.41600.82900.986700 | Internal Plaster | 8d | 2025-12-26 | 2026-01-03 | 3180FS+0.25d |  | 7 day week With NGT Ban | 7594633 |
| 3197 | 37200.37300.37500.38200.39100.40600.41600.82900.986800 | IPS flooring work | 10d | 2026-02-01 | 2026-02-11 | 3181, 3193, 3194, 3195 |  | 7 day week With NGT Ban | 7594643 |
| 3198 | 37200.37300.37500.38200.39100.40600.41600.82900.986900 | Toilet dado work | 8d | 2026-02-01 | 2026-02-09 | 3182, 3195, 3196 |  | 7 day week With NGT Ban | 7594653 |
| 3199 | 37200.37300.37500.38200.39100.40600.41600.82900.987000 | Toilet flooring work | 8d | 2026-02-09 | 2026-02-17 | 3183, 3198 |  | 7 day week With NGT Ban | 7594663 |
| 3200 | 37200.37300.37500.38200.39100.40600.41600.82900.987100 | Living dinning flooring | 12d | 2026-02-12 | 2026-02-24 | 3184FS+0.25d |  | 7 day week With NGT Ban | 7594673 |
| 3201 | 37200.37300.37500.38200.39100.40600.41600.82900.987200 | Aluminium door-window fixing | 12d | 2026-03-08 | 2026-03-20 | 3185FS+0.25d |  | 7 day week With NGT Ban | 7594683 |
| 3202 | 37200.37300.37500.38200.39100.40600.41600.82900.987300 | Putty primer coat | 6d | 2026-02-24 | 2026-03-02 | 3186, 3200 |  | 7 day week With NGT Ban | 7594693 |
| 3203 | 37200.37300.37500.38200.39100.40600.41600.82900.987400 | Door shutter fixing | 8d | 2026-02-24 | 2026-03-04 | 3187, 3200 |  | 7 day week With NGT Ban | 7594703 |
| 3204 | 37200.37300.37500.38200.39100.40600.41600.82900.987500 | Electrical wiring work | 8d | 2026-03-04 | 2026-03-12 | 3188, 3203 |  | 7 day week With NGT Ban | 7594713 |
| 3205 | 37200.37300.37500.38200.39100.40600.41600.82900.987600 | Painting 1st coat | 8d | 2026-03-12 | 2026-03-20 | 3189, 3202, 3203, 3204 |  | 7 day week With NGT Ban | 7594723 |
| 3206 | 37200.37300.37500.38200.39100.40600.41600.82900.987700 | False ceiling | 8d | 2026-03-20 | 2026-03-28 | 3190, 3205 |  | 7 day week With NGT Ban | 7594733 |

| ID | WBS | Task | Duration | Start | Finish | Predecessors | Constraint | Calendar | Unique_Task_ID |
| --- | --- | --- | --- | --- | --- | --- | --- | --- | --- |
| 3207 | 37200.37300.37500.38200.39100.40600.41600.82800 | **13th Floor** | 100.25d | 2025-12-26 | 2026-04-05 |  | start no earlier than 2025-12-26 | 7 day week With NGT Ban | 7568893 |
| 3208 | 37200.37300.37500.38200.39100.40600.41600.82800.987800 | Block Work | 8d | 2025-12-26 | 2026-01-03 | 3192FS+0.25d |  | 7 day week With NGT Ban | 7594743 |
| 3209 | 37200.37300.37500.38200.39100.40600.41600.82800.987900 | Door Frame Fixing | 9d | 2026-01-12 | 2026-01-21 | 3193, 3208 |  | 7 day week With NGT Ban | 7594753 |
| 3210 | 37200.37300.37500.38200.39100.40600.41600.82800.988000 | Internal Plumbing Works | 8d | 2026-01-03 | 2026-01-11 | 3194, 3208 |  | 7 day week With NGT Ban | 7594763 |
| 3211 | 37200.37300.37500.38200.39100.40600.41600.82800.988100 | Waterproofing | 10d | 2026-02-01 | 2026-02-11 | 3195, 3210 |  | 7 day week With NGT Ban | 7594773 |
| 3212 | 37200.37300.37500.38200.39100.40600.41600.82800.988200 | Internal Plaster | 8d | 2026-01-03 | 2026-01-11 | 3196FS+0.25d |  | 7 day week With NGT Ban | 7594783 |
| 3213 | 37200.37300.37500.38200.39100.40600.41600.82800.988300 | IPS flooring work | 10d | 2026-02-11 | 2026-02-21 | 3197, 3209, 3211, 3212 |  | 7 day week With NGT Ban | 7594793 |
| 3214 | 37200.37300.37500.38200.39100.40600.41600.82800.988400 | Toilet dado work | 8d | 2026-02-11 | 2026-02-19 | 3198, 3211, 3212 |  | 7 day week With NGT Ban | 7594803 |
| 3215 | 37200.37300.37500.38200.39100.40600.41600.82800.988500 | Toilet flooring work | 8d | 2026-02-19 | 2026-02-27 | 3199, 3214 |  | 7 day week With NGT Ban | 7594813 |
| 3216 | 37200.37300.37500.38200.39100.40600.41600.82800.988600 | Living dinning flooring | 8d | 2026-02-24 | 2026-03-04 | 3200FS+0.25d |  | 7 day week With NGT Ban | 7594823 |
| 3217 | 37200.37300.37500.38200.39100.40600.41600.82800.988700 | Aluminium door-window fixing | 11d | 2026-03-20 | 2026-03-31 | 3201FS+0.25d |  | 7 day week With NGT Ban | 7594833 |
| 3218 | 37200.37300.37500.38200.39100.40600.41600.82800.988800 | Putty primer coat | 6d | 2026-03-04 | 2026-03-10 | 3202, 3216 |  | 7 day week With NGT Ban | 7594843 |
| 3219 | 37200.37300.37500.38200.39100.40600.41600.82800.988900 | Door shutter fixing | 8d | 2026-03-04 | 2026-03-12 | 3203, 3216 |  | 7 day week With NGT Ban | 7594853 |
| 3220 | 37200.37300.37500.38200.39100.40600.41600.82800.989000 | Electrical wiring work | 8d | 2026-03-12 | 2026-03-20 | 3204, 3219 |  | 7 day week With NGT Ban | 7594863 |
| 3221 | 37200.37300.37500.38200.39100.40600.41600.82800.989100 | Painting 1st coat | 8d | 2026-03-20 | 2026-03-28 | 3205, 3218, 3219, 3220 |  | 7 day week With NGT Ban | 7594873 |
| 3222 | 37200.37300.37500.38200.39100.40600.41600.82800.989200 | False ceiling | 8d | 2026-03-28 | 2026-04-05 | 3206, 3221 |  | 7 day week With NGT Ban | 7594883 |
| 3223 | 37200.37300.37500.38200.39100.40600.41600.82700 | **14th Floor** | 100.25d | 2026-01-03 | 2026-04-14 |  | start no earlier than 2026-01-03 | 7 day week With NGT Ban | 7568903 |
| 3224 | 37200.37300.37500.38200.39100.40600.41600.82700.989300 | Block Work | 8d | 2026-01-03 | 2026-01-11 | 3208FS+0.25d |  | 7 day week With NGT Ban | 7594893 |
| 3225 | 37200.37300.37500.38200.39100.40600.41600.82700.989400 | Door Frame Fixing | 9d | 2026-01-21 | 2026-01-30 | 3209, 3224 |  | 7 day week With NGT Ban | 7594903 |
| 3226 | 37200.37300.37500.38200.39100.40600.41600.82700.989500 | Internal Plumbing Works | 8d | 2026-01-11 | 2026-01-19 | 3210, 3224 |  | 7 day week With NGT Ban | 7594913 |
| 3227 | 37200.37300.37500.38200.39100.40600.41600.82700.989600 | Waterproofing | 10d | 2026-02-11 | 2026-02-21 | 3211, 3226 |  | 7 day week With NGT Ban | 7594923 |
| 3228 | 37200.37300.37500.38200.39100.40600.41600.82700.989700 | Internal Plaster | 8d | 2026-01-12 | 2026-01-20 | 3212FS+0.25d |  | 7 day week With NGT Ban | 7594933 |
| 3229 | 37200.37300.37500.38200.39100.40600.41600.82700.989800 | IPS flooring work | 10d | 2026-02-21 | 2026-03-03 | 3213, 3225, 3226, 3227 |  | 7 day week With NGT Ban | 7594943 |
| 3230 | 37200.37300.37500.38200.39100.40600.41600.82700.989900 | Toilet dado work | 8d | 2026-02-21 | 2026-03-01 | 3214, 3227, 3228 |  | 7 day week With NGT Ban | 7594953 |
| 3231 | 37200.37300.37500.38200.39100.40600.41600.82700.990000 | Toilet flooring work | 8d | 2026-03-01 | 2026-03-09 | 3215, 3230 |  | 7 day week With NGT Ban | 7594963 |
| 3232 | 37200.37300.37500.38200.39100.40600.41600.82700.990100 | Living dinning flooring | 8d | 2026-03-05 | 2026-03-13 | 3216FS+0.25d |  | 7 day week With NGT Ban | 7594973 |
| 3233 | 37200.37300.37500.38200.39100.40600.41600.82700.990200 | Aluminium door-window fixing | 12d | 2026-04-01 | 2026-04-13 | 3217FS+0.25d |  | 7 day week With NGT Ban | 7594983 |
| 3234 | 37200.37300.37500.38200.39100.40600.41600.82700.990300 | Putty primer coat | 6d | 2026-03-13 | 2026-03-19 | 3218, 3232 |  | 7 day week With NGT Ban | 7594993 |
| 3235 | 37200.37300.37500.38200.39100.40600.41600.82700.990400 | Door shutter fixing | 8d | 2026-03-13 | 2026-03-21 | 3219, 3232 |  | 7 day week With NGT Ban | 7595003 |
| 3236 | 37200.37300.37500.38200.39100.40600.41600.82700.990500 | Electrical wiring work | 8d | 2026-03-21 | 2026-03-29 | 3220, 3235 |  | 7 day week With NGT Ban | 7595013 |
| 3237 | 37200.37300.37500.38200.39100.40600.41600.82700.990600 | Painting 1st coat | 8d | 2026-03-29 | 2026-04-06 | 3221, 3234, 3235, 3236 |  | 7 day week With NGT Ban | 7595023 |
| 3238 | 37200.37300.37500.38200.39100.40600.41600.82700.990700 | False ceiling | 8d | 2026-04-06 | 2026-04-14 | 3222, 3237 |  | 7 day week With NGT Ban | 7595033 |

| ID | WBS | Task | Duration | Start | Finish | Predecessors | Constraint | Calendar | Unique_Task_ID |
| --- | --- | --- | --- | --- | --- | --- | --- | --- | --- |
| 3239 | 37200.37300.37500.38200.39100.40600.41600.82600 | **15th Floor** | 103d | 2026-01-12 | 2026-04-25 |  | start no earlier than 2026-01-12 | 7 day week With NGT Ban | 7568913 |
| 3240 | 37200.37300.37500.38200.39100.40600.41600.82600.990800 | Block Work | 8d | 2026-01-12 | 2026-01-20 | 3224FS+0.25d |  | 7 day week With NGT Ban | 7595043 |
| 3241 | 37200.37300.37500.38200.39100.40600.41600.82600.990900 | Door Frame Fixing | 9d | 2026-01-30 | 2026-02-08 | 3225, 3240 |  | 7 day week With NGT Ban | 7595053 |
| 3242 | 37200.37300.37500.38200.39100.40600.41600.82600.991000 | Internal Plumbing Works | 8d | 2026-01-20 | 2026-01-28 | 3226, 3240 |  | 7 day week With NGT Ban | 7595063 |
| 3243 | 37200.37300.37500.38200.39100.40600.41600.82600.991100 | Waterproofing | 10d | 2026-02-21 | 2026-03-03 | 3227, 3242 |  | 7 day week With NGT Ban | 7595073 |
| 3244 | 37200.37300.37500.38200.39100.40600.41600.82600.991200 | Internal Plaster | 8d | 2026-01-20 | 2026-01-28 | 3228FS+0.25d |  | 7 day week With NGT Ban | 7595083 |
| 3245 | 37200.37300.37500.38200.39100.40600.41600.82600.991300 | IPS flooring work | 10d | 2026-03-03 | 2026-03-13 | 3229, 3241, 3242, 3243 |  | 7 day week With NGT Ban | 7595093 |
| 3246 | 37200.37300.37500.38200.39100.40600.41600.82600.991400 | Toilet dado work | 8d | 2026-03-03 | 2026-03-11 | 3230, 3243, 3244 |  | 7 day week With NGT Ban | 7595103 |
| 3247 | 37200.37300.37500.38200.39100.40600.41600.82600.991500 | Toilet flooring work | 8d | 2026-03-11 | 2026-03-19 | 3231, 3246 |  | 7 day week With NGT Ban | 7595113 |
| 3248 | 37200.37300.37500.38200.39100.40600.41600.82600.991600 | Living dinning flooring | 8d | 2026-03-13 | 2026-03-21 | 3232FS+0.25d |  | 7 day week With NGT Ban | 7595123 |
| 3249 | 37200.37300.37500.38200.39100.40600.41600.82600.991700 | Aluminium door-window fixing | 12d | 2026-04-13 | 2026-04-25 | 3233, 3245, 3248 |  | 7 day week With NGT Ban | 7595133 |
| 3250 | 37200.37300.37500.38200.39100.40600.41600.82600.991800 | Putty primer coat | 6d | 2026-03-21 | 2026-03-27 | 3234, 3248 |  | 7 day week With NGT Ban | 7595143 |
| 3251 | 37200.37300.37500.38200.39100.40600.41600.82600.991900 | Door shutter fixing | 8d | 2026-03-21 | 2026-03-29 | 3235, 3248 |  | 7 day week With NGT Ban | 7595153 |
| 3252 | 37200.37300.37500.38200.39100.40600.41600.82600.992000 | Electrical wiring work | 8d | 2026-03-29 | 2026-04-06 | 3236, 3251 |  | 7 day week With NGT Ban | 7595163 |
| 3253 | 37200.37300.37500.38200.39100.40600.41600.82600.992100 | Painting 1st coat | 8d | 2026-04-06 | 2026-04-14 | 3237, 3250, 3251, 3252 |  | 7 day week With NGT Ban | 7595173 |
| 3254 | 37200.37300.37500.38200.39100.40600.41600.82600.992200 | False ceiling | 8d | 2026-04-14 | 2026-04-22 | 3238, 3253 |  | 7 day week With NGT Ban | 7595183 |
| 3255 | 37200.37300.37500.38200.39100.40600.41600.82500 | **16th Floor** | 106.75d | 2026-01-20 | 2026-05-07 |  | start no earlier than 2026-01-20 | 7 day week With NGT Ban | 7568923 |
| 3256 | 37200.37300.37500.38200.39100.40600.41600.82500.992300 | Block Work | 8d | 2026-01-20 | 2026-01-28 | 3240FS+0.25d |  | 7 day week With NGT Ban | 7595193 |
| 3257 | 37200.37300.37500.38200.39100.40600.41600.82500.992400 | Door Frame Fixing | 9d | 2026-02-08 | 2026-02-17 | 3241, 3256 |  | 7 day week With NGT Ban | 7595203 |
| 3258 | 37200.37300.37500.38200.39100.40600.41600.82500.992500 | Internal Plumbing Works | 8d | 2026-01-28 | 2026-02-05 | 3242, 3256 |  | 7 day week With NGT Ban | 7595213 |
| 3259 | 37200.37300.37500.38200.39100.40600.41600.82500.992600 | Waterproofing | 10d | 2026-03-03 | 2026-03-13 | 3243, 3258 |  | 7 day week With NGT Ban | 7595223 |
| 3260 | 37200.37300.37500.38200.39100.40600.41600.82500.992700 | Internal Plaster | 8d | 2026-01-28 | 2026-02-05 | 3244FS+0.25d |  | 7 day week With NGT Ban | 7595233 |
| 3261 | 37200.37300.37500.38200.39100.40600.41600.82500.992800 | IPS flooring work | 10d | 2026-03-13 | 2026-03-23 | 3245, 3257, 3258, 3259 |  | 7 day week With NGT Ban | 7595243 |
| 3262 | 37200.37300.37500.38200.39100.40600.41600.82500.992900 | Toilet dado work | 8d | 2026-03-13 | 2026-03-21 | 3246, 3259, 3260 |  | 7 day week With NGT Ban | 7595253 |
| 3263 | 37200.37300.37500.38200.39100.40600.41600.82500.993000 | Toilet flooring work | 8d | 2026-03-21 | 2026-03-29 | 3247, 3262 |  | 7 day week With NGT Ban | 7595263 |
| 3264 | 37200.37300.37500.38200.39100.40600.41600.82500.993100 | Living dinning flooring | 6d | 2026-03-21 | 2026-03-27 | 3248FS+0.25d |  | 7 day week With NGT Ban | 7595273 |
| 3265 | 37200.37300.37500.38200.39100.40600.41600.82500.993200 | Aluminium door-window fixing | 12d | 2026-04-25 | 2026-05-07 | 3249, 3261, 3264 |  | 7 day week With NGT Ban | 7595283 |
| 3266 | 37200.37300.37500.38200.39100.40600.41600.82500.993300 | Putty primer coat | 6d | 2026-03-27 | 2026-04-02 | 3250, 3264 |  | 7 day week With NGT Ban | 7595293 |
| 3267 | 37200.37300.37500.38200.39100.40600.41600.82500.993400 | Door shutter fixing | 8d | 2026-03-29 | 2026-04-06 | 3251, 3264 |  | 7 day week With NGT Ban | 7595303 |
| 3268 | 37200.37300.37500.38200.39100.40600.41600.82500.993500 | Electrical wiring work | 8d | 2026-04-06 | 2026-04-14 | 3252, 3267 |  | 7 day week With NGT Ban | 7595313 |
| 3269 | 37200.37300.37500.38200.39100.40600.41600.82500.993600 | Painting 1st coat | 8d | 2026-04-14 | 2026-04-22 | 3253, 3266, 3267, 3268 |  | 7 day week With NGT Ban | 7595323 |
| 3270 | 37200.37300.37500.38200.39100.40600.41600.82500.993700 | False ceiling | 8d | 2026-04-22 | 2026-04-30 | 3254, 3269 |  | 7 day week With NGT Ban | 7595333 |

| ID | WBS | Task | Duration | Start | Finish | Predecessors | Constraint | Calendar | Unique_Task_ID |
| --- | --- | --- | --- | --- | --- | --- | --- | --- | --- |
| 3271 | 37200.37300.37500.38200.39100.40600.41600.82400 | **17th Floor** | 110.5d | 2026-01-28 | 2026-05-19 |  | start no earlier than 2026-01-28 | 7 day week With NGT Ban | 7568933 |
| 3272 | 37200.37300.37500.38200.39100.40600.41600.82400.993800 | Block Work | 8d | 2026-01-28 | 2026-02-05 | 3256FS+0.25d |  | 7 day week With NGT Ban | 7595343 |
| 3273 | 37200.37300.37500.38200.39100.40600.41600.82400.993900 | Door Frame Fixing | 9d | 2026-02-17 | 2026-02-26 | 3257, 3272 |  | 7 day week With NGT Ban | 7595353 |
| 3274 | 37200.37300.37500.38200.39100.40600.41600.82400.994000 | Internal Plumbing Works | 8d | 2026-02-05 | 2026-02-13 | 3258, 3272 |  | 7 day week With NGT Ban | 7595363 |
| 3275 | 37200.37300.37500.38200.39100.40600.41600.82400.994100 | Waterproofing | 10d | 2026-03-13 | 2026-03-23 | 3259, 3274 |  | 7 day week With NGT Ban | 7595373 |
| 3276 | 37200.37300.37500.38200.39100.40600.41600.82400.994200 | Internal Plaster | 8d | 2026-02-05 | 2026-02-13 | 3260FS+0.25d |  | 7 day week With NGT Ban | 7595383 |
| 3277 | 37200.37300.37500.38200.39100.40600.41600.82400.994300 | IPS flooring work | 10d | 2026-03-23 | 2026-04-02 | 3261, 3273, 3274, 3275 |  | 7 day week With NGT Ban | 7595393 |
| 3278 | 37200.37300.37500.38200.39100.40600.41600.82400.994400 | Toilet dado work | 8d | 2026-03-23 | 2026-03-31 | 3262, 3275, 3276 |  | 7 day week With NGT Ban | 7595403 |
| 3279 | 37200.37300.37500.38200.39100.40600.41600.82400.994500 | Toilet flooring work | 8d | 2026-03-31 | 2026-04-08 | 3263, 3278 |  | 7 day week With NGT Ban | 7595413 |
| 3280 | 37200.37300.37500.38200.39100.40600.41600.82400.994600 | Living dinning flooring | 7d | 2026-03-27 | 2026-04-03 | 3264FS+0.25d |  | 7 day week With NGT Ban | 7595423 |
| 3281 | 37200.37300.37500.38200.39100.40600.41600.82400.994700 | Aluminium door-window fixing | 12d | 2026-05-07 | 2026-05-19 | 3265, 3277, 3280 |  | 7 day week With NGT Ban | 7595433 |
| 3282 | 37200.37300.37500.38200.39100.40600.41600.82400.994800 | Putty primer coat | 6d | 2026-04-03 | 2026-04-09 | 3266, 3280 |  | 7 day week With NGT Ban | 7595443 |
| 3283 | 37200.37300.37500.38200.39100.40600.41600.82400.994900 | Door shutter fixing | 8d | 2026-04-06 | 2026-04-14 | 3267, 3280 |  | 7 day week With NGT Ban | 7595453 |
| 3284 | 37200.37300.37500.38200.39100.40600.41600.82400.995000 | Electrical wiring work | 8d | 2026-04-14 | 2026-04-22 | 3268, 3283 |  | 7 day week With NGT Ban | 7595463 |
| 3285 | 37200.37300.37500.38200.39100.40600.41600.82400.995100 | Painting 1st coat | 8d | 2026-04-22 | 2026-04-30 | 3269, 3282, 3283, 3284 |  | 7 day week With NGT Ban | 7595473 |
| 3286 | 37200.37300.37500.38200.39100.40600.41600.82400.995200 | False ceiling | 8d | 2026-04-30 | 2026-05-08 | 3270, 3285 |  | 7 day week With NGT Ban | 7595483 |
| 3287 | 37200.37300.37500.38200.39100.40600.41600.82300 | **18th Floor** | 126.25d | 2026-02-05 | 2026-06-12 |  | start no earlier than 2026-02-05 | 7 day week With NGT Ban | 7568943 |
| 3288 | 37200.37300.37500.38200.39100.40600.41600.82300.995300 | Block Work | 7.94d | 2026-02-05 | 2026-02-13 | 3272FS+0.25d |  | 7 day week With NGT Ban | 7595493 |
| 3289 | 37200.37300.37500.38200.39100.40600.41600.82300.995400 | Door Frame Fixing | 8.94d | 2026-02-26 | 2026-03-07 | 3273, 3288 |  | 7 day week With NGT Ban | 7595503 |
| 3290 | 37200.37300.37500.38200.39100.40600.41600.82300.995500 | Internal Plumbing Works | 9.94d | 2026-02-13 | 2026-02-23 | 3274, 3288 |  | 7 day week With NGT Ban | 7595513 |
| 3291 | 37200.37300.37500.38200.39100.40600.41600.82300.995600 | Waterproofing | 11.94d | 2026-03-23 | 2026-04-04 | 3275, 3290 |  | 7 day week With NGT Ban | 7595523 |
| 3292 | 37200.37300.37500.38200.39100.40600.41600.82300.995700 | Internal Plaster | 8.94d | 2026-02-14 | 2026-02-23 | 3276FS+0.25d |  | 7 day week With NGT Ban | 7595533 |
| 3293 | 37200.37300.37500.38200.39100.40600.41600.82300.995800 | IPS flooring work | 8.94d | 2026-04-04 | 2026-04-13 | 3277, 3289, 3290, 3291 |  | 7 day week With NGT Ban | 7595543 |
| 3294 | 37200.37300.37500.38200.39100.40600.41600.82300.995900 | Toilet dado work | 7.94d | 2026-04-04 | 2026-04-12 | 3278, 3291, 3292 |  | 7 day week With NGT Ban | 7595553 |
| 3295 | 37200.37300.37500.38200.39100.40600.41600.82300.996000 | Toilet flooring work | 6.94d | 2026-04-12 | 2026-04-19 | 3279, 3294 |  | 7 day week With NGT Ban | 7595563 |
| 3296 | 37200.37300.37500.38200.39100.40600.41600.82300.996100 | Living dinning flooring | 11.94d | 2026-04-19 | 2026-05-01 | 3280, 3289, 3295 |  | 7 day week With NGT Ban | 7595573 |
| 3297 | 37200.37300.37500.38200.39100.40600.41600.82300.996200 | Aluminium door-window fixing | 11.94d | 2026-05-19 | 2026-05-31 | 3281, 3293, 3296 |  | 7 day week With NGT Ban | 7595583 |
| 3298 | 37200.37300.37500.38200.39100.40600.41600.82300.996300 | Putty primer coat | 5.94d | 2026-05-01 | 2026-05-07 | 3282, 3296 |  | 7 day week With NGT Ban | 7595593 |
| 3299 | 37200.37300.37500.38200.39100.40600.41600.82300.996400 | Door shutter fixing | 7.94d | 2026-05-01 | 2026-05-09 | 3283, 3296 |  | 7 day week With NGT Ban | 7595603 |
| 3300 | 37200.37300.37500.38200.39100.40600.41600.82300.996500 | Electrical wiring work | 11.94d | 2026-05-09 | 2026-05-21 | 3284, 3299 |  | 7 day week With NGT Ban | 7595613 |
| 3301 | 37200.37300.37500.38200.39100.40600.41600.82300.996600 | Painting 1st coat | 11.94d | 2026-05-21 | 2026-06-02 | 3285, 3298, 3299, 3300 |  | 7 day week With NGT Ban | 7595623 |
| 3302 | 37200.37300.37500.38200.39100.40600.41600.82300.996700 | False ceiling | 9.94d | 2026-06-02 | 2026-06-12 | 3286, 3301 |  | 7 day week With NGT Ban | 7595633 |

| ID | WBS | Task | Duration | Start | Finish | Predecessors | Constraint | Calendar | Unique_Task_ID |
| --- | --- | --- | --- | --- | --- | --- | --- | --- | --- |
| 3303 | 37200.37300.37500.38200.39100.40600.41600.82200 | **19th Floor** | 130d | 2026-02-14 | 2026-06-24 |  | start no earlier than 2026-02-14 | 7 day week With NGT Ban | 7568953 |
| 3304 | 37200.37300.37500.38200.39100.40600.41600.82200.996800 | Block Work | 7.94d | 2026-02-14 | 2026-02-21 | 3288FS+0.25d |  | 7 day week With NGT Ban | 7595643 |
| 3305 | 37200.37300.37500.38200.39100.40600.41600.82200.996900 | Door Frame Fixing | 8.94d | 2026-03-07 | 2026-03-16 | 3289, 3304 |  | 7 day week With NGT Ban | 7595653 |
| 3306 | 37200.37300.37500.38200.39100.40600.41600.82200.997000 | Internal Plumbing Works | 9.94d | 2026-02-23 | 2026-03-05 | 3290, 3304 |  | 7 day week With NGT Ban | 7595663 |
| 3307 | 37200.37300.37500.38200.39100.40600.41600.82200.997100 | Waterproofing | 11.94d | 2026-04-04 | 2026-04-16 | 3291, 3306 |  | 7 day week With NGT Ban | 7595673 |
| 3308 | 37200.37300.37500.38200.39100.40600.41600.82200.997200 | Internal Plaster | 8.94d | 2026-02-23 | 2026-03-04 | 3292FS+0.25d |  | 7 day week With NGT Ban | 7595683 |
| 3309 | 37200.37300.37500.38200.39100.40600.41600.82200.997300 | IPS flooring work | 8.94d | 2026-04-16 | 2026-04-25 | 3293, 3305, 3307, 3308 |  | 7 day week With NGT Ban | 7595693 |
| 3310 | 37200.37300.37500.38200.39100.40600.41600.82200.997400 | Toilet dado work | 7.94d | 2026-04-16 | 2026-04-24 | 3294, 3307, 3308 |  | 7 day week With NGT Ban | 7595703 |
| 3311 | 37200.37300.37500.38200.39100.40600.41600.82200.997500 | Toilet flooring work | 6.94d | 2026-04-24 | 2026-05-01 | 3295, 3310 |  | 7 day week With NGT Ban | 7595713 |
| 3312 | 37200.37300.37500.38200.39100.40600.41600.82200.997600 | Living dinning flooring | 11.94d | 2026-05-01 | 2026-05-13 | 3296, 3305, 3311 |  | 7 day week With NGT Ban | 7595723 |
| 3313 | 37200.37300.37500.38200.39100.40600.41600.82200.997700 | Aluminium door-window fixing | 11.94d | 2026-05-31 | 2026-06-11 | 3297, 3309, 3312 |  | 7 day week With NGT Ban | 7595733 |
| 3314 | 37200.37300.37500.38200.39100.40600.41600.82200.997800 | Putty primer coat | 5.94d | 2026-05-13 | 2026-05-19 | 3298, 3312 |  | 7 day week With NGT Ban | 7595743 |
| 3315 | 37200.37300.37500.38200.39100.40600.41600.82200.997900 | Door shutter fixing | 7.94d | 2026-05-13 | 2026-05-21 | 3299, 3312 |  | 7 day week With NGT Ban | 7595753 |
| 3316 | 37200.37300.37500.38200.39100.40600.41600.82200.998000 | Electrical wiring work | 11.94d | 2026-05-21 | 2026-06-02 | 3300, 3315 |  | 7 day week With NGT Ban | 7595763 |
| 3317 | 37200.37300.37500.38200.39100.40600.41600.82200.998100 | Painting 1st coat | 11.94d | 2026-06-02 | 2026-06-14 | 3301, 3314, 3315, 3316 |  | 7 day week With NGT Ban | 7595773 |
| 3318 | 37200.37300.37500.38200.39100.40600.41600.82200.998200 | False ceiling | 9.94d | 2026-06-14 | 2026-06-24 | 3302, 3317 |  | 7 day week With NGT Ban | 7595783 |
| 3319 | 37200.37300.37500.38200.39100.40600.41600.82100 | **20th Floor** | 142.69d | 2026-02-22 | 2026-07-14 |  | start no earlier than 2026-02-22 | 7 day week With NGT Ban | 7568963 |
| 3320 | 37200.37300.37500.38200.39100.40600.41600.82100.998300 | Block Work | 7.94d | 2026-02-22 | 2026-03-02 | 3304FS+0.25d |  | 7 day week With NGT Ban | 7595793 |
| 3321 | 37200.37300.37500.38200.39100.40600.41600.82100.998400 | Door Frame Fixing | 8.94d | 2026-03-16 | 2026-03-25 | 3305, 3320 |  | 7 day week With NGT Ban | 7595803 |
| 3322 | 37200.37300.37500.38200.39100.40600.41600.82100.998500 | Internal Plumbing Works | 9.94d | 2026-03-05 | 2026-03-15 | 3306, 3320 |  | 7 day week With NGT Ban | 7595813 |
| 3323 | 37200.37300.37500.38200.39100.40600.41600.82100.998600 | Waterproofing | 11.94d | 2026-04-16 | 2026-04-28 | 3307, 3322 |  | 7 day week With NGT Ban | 7595823 |
| 3324 | 37200.37300.37500.38200.39100.40600.41600.82100.998700 | Internal Plaster | 8.94d | 2026-04-28 | 2026-05-07 | 3308, 3321, 3322, 3323 |  | 7 day week With NGT Ban | 7595833 |
| 3325 | 37200.37300.37500.38200.39100.40600.41600.82100.998800 | IPS flooring work | 8.94d | 2026-05-07 | 2026-05-16 | 3309, 3321, 3323, 3324 |  | 7 day week With NGT Ban | 7595843 |
| 3326 | 37200.37300.37500.38200.39100.40600.41600.82100.998900 | Toilet dado work | 7.94d | 2026-05-07 | 2026-05-15 | 3310, 3323, 3324 |  | 7 day week With NGT Ban | 7595853 |
| 3327 | 37200.37300.37500.38200.39100.40600.41600.82100.999000 | Toilet flooring work | 6.94d | 2026-05-15 | 2026-05-22 | 3311, 3326 |  | 7 day week With NGT Ban | 7595863 |
| 3328 | 37200.37300.37500.38200.39100.40600.41600.82100.999100 | Living dinning flooring | 11.94d | 2026-05-22 | 2026-06-03 | 3312, 3321, 3327 |  | 7 day week With NGT Ban | 7595873 |
| 3329 | 37200.37300.37500.38200.39100.40600.41600.82100.999200 | Aluminium door-window fixing | 11.94d | 2026-06-12 | 2026-06-23 | 3313, 3325, 3328 |  | 7 day week With NGT Ban | 7595883 |
| 3330 | 37200.37300.37500.38200.39100.40600.41600.82100.999300 | Putty primer coat | 5.94d | 2026-06-03 | 2026-06-09 | 3314, 3328 |  | 7 day week With NGT Ban | 7595893 |
| 3331 | 37200.37300.37500.38200.39100.40600.41600.82100.999400 | Door shutter fixing | 7.94d | 2026-06-03 | 2026-06-11 | 3315, 3328 |  | 7 day week With NGT Ban | 7595903 |
| 3332 | 37200.37300.37500.38200.39100.40600.41600.82100.999500 | Electrical wiring work | 11.94d | 2026-06-11 | 2026-06-23 | 3316, 3331 |  | 7 day week With NGT Ban | 7595913 |
| 3333 | 37200.37300.37500.38200.39100.40600.41600.82100.999600 | Painting 1st coat | 11.94d | 2026-06-23 | 2026-07-04 | 3317, 3330, 3331, 3332 |  | 7 day week With NGT Ban | 7595923 |
| 3334 | 37200.37300.37500.38200.39100.40600.41600.82100.999700 | False ceiling | 9.94d | 2026-07-05 | 2026-07-14 | 3318, 3333 |  | 7 day week With NGT Ban | 7595933 |

| ID | WBS | Task | Duration | Start | Finish | Predecessors | Constraint | Calendar | Unique_Task_ID |
| --- | --- | --- | --- | --- | --- | --- | --- | --- | --- |
| 3335 | 37200.37300.37500.38200.39100.40600.41600.82000 | **21st Floor** | 107.31d | 2026-05-07 | 2026-08-22 |  | start no earlier than 2026-05-07 | 7 day week With NGT Ban | 7568973 |
| 3336 | 37200.37300.37500.38200.39100.40600.41600.82000.999800 | Block Work | 7.94d | 2026-05-07 | 2026-05-15 | 2998, 3320 |  | 7 day week With NGT Ban | 7595943 |
| 3337 | 37200.37300.37500.38200.39100.40600.41600.82000.999900 | Door Frame Fixing | 8.94d | 2026-05-15 | 2026-05-24 | 3321, 3336 |  | 7 day week With NGT Ban | 7595953 |
| 3338 | 37200.37300.37500.38200.39100.40600.41600.82000.1000000 | Internal Plumbing Works | 9.94d | 2026-05-15 | 2026-05-25 | 3322, 3336 |  | 7 day week With NGT Ban | 7595963 |
| 3339 | 37200.37300.37500.38200.39100.40600.41600.82000.1000100 | Waterproofing | 11.94d | 2026-05-25 | 2026-06-06 | 3323, 3338 |  | 7 day week With NGT Ban | 7595973 |
| 3340 | 37200.37300.37500.38200.39100.40600.41600.82000.1000200 | Internal Plaster | 8.94d | 2026-06-06 | 2026-06-15 | 3324, 3337, 3338, 3339 |  | 7 day week With NGT Ban | 7595983 |
| 3341 | 37200.37300.37500.38200.39100.40600.41600.82000.1000300 | IPS flooring work | 8.94d | 2026-06-15 | 2026-06-24 | 3325, 3337, 3339, 3340 |  | 7 day week With NGT Ban | 7595993 |
| 3342 | 37200.37300.37500.38200.39100.40600.41600.82000.1000400 | Toilet dado work | 7.94d | 2026-06-15 | 2026-06-23 | 3326, 3339, 3340 |  | 7 day week With NGT Ban | 7596003 |
| 3343 | 37200.37300.37500.38200.39100.40600.41600.82000.1000500 | Toilet flooring work | 6.94d | 2026-06-23 | 2026-06-29 | 3327, 3342 |  | 7 day week With NGT Ban | 7596013 |
| 3344 | 37200.37300.37500.38200.39100.40600.41600.82000.1000600 | Living dinning flooring | 11.94d | 2026-06-30 | 2026-07-11 | 3328, 3337, 3343 |  | 7 day week With NGT Ban | 7596023 |
| 3345 | 37200.37300.37500.38200.39100.40600.41600.82000.1000700 | Aluminium door-window fixing | 11.94d | 2026-07-11 | 2026-07-23 | 3329, 3341, 3344 |  | 7 day week With NGT Ban | 7596033 |
| 3346 | 37200.37300.37500.38200.39100.40600.41600.82000.1000800 | Putty primer coat | 5.94d | 2026-07-11 | 2026-07-17 | 3330, 3344 |  | 7 day week With NGT Ban | 7596043 |
| 3347 | 37200.37300.37500.38200.39100.40600.41600.82000.1000900 | Door shutter fixing | 7.94d | 2026-07-11 | 2026-07-19 | 3331, 3344 |  | 7 day week With NGT Ban | 7596053 |
| 3348 | 37200.37300.37500.38200.39100.40600.41600.82000.1001000 | Electrical wiring work | 11.94d | 2026-07-19 | 2026-07-31 | 3332, 3347 |  | 7 day week With NGT Ban | 7596063 |
| 3349 | 37200.37300.37500.38200.39100.40600.41600.82000.1001100 | Painting 1st coat | 11.94d | 2026-07-31 | 2026-08-12 | 3333, 3346, 3347, 3348 |  | 7 day week With NGT Ban | 7596073 |
| 3350 | 37200.37300.37500.38200.39100.40600.41600.82000.1001200 | False ceiling | 9.94d | 2026-08-12 | 2026-08-22 | 3334, 3349 |  | 7 day week With NGT Ban | 7596083 |
| 3351 | 37200.37300.37500.38200.39100.40600.41600.81900 | **22nd Floor** | 111.25d | 2026-05-15 | 2026-09-03 |  | start no earlier than 2026-05-15 | 7 day week With NGT Ban | 7568983 |
| 3352 | 37200.37300.37500.38200.39100.40600.41600.81900.1001300 | Block Work | 7.94d | 2026-05-15 | 2026-05-23 | 2999, 3336 |  | 7 day week With NGT Ban | 7596093 |
| 3353 | 37200.37300.37500.38200.39100.40600.41600.81900.1001400 | Door Frame Fixing | 8.94d | 2026-05-24 | 2026-06-02 | 3337, 3352 |  | 7 day week With NGT Ban | 7596103 |
| 3354 | 37200.37300.37500.38200.39100.40600.41600.81900.1001500 | Internal Plumbing Works | 9.94d | 2026-05-25 | 2026-06-04 | 3338, 3352 |  | 7 day week With NGT Ban | 7596113 |
| 3355 | 37200.37300.37500.38200.39100.40600.41600.81900.1001600 | Waterproofing | 11.94d | 2026-06-06 | 2026-06-18 | 3339, 3354 |  | 7 day week With NGT Ban | 7596123 |
| 3356 | 37200.37300.37500.38200.39100.40600.41600.81900.1001700 | Internal Plaster | 8.94d | 2026-06-18 | 2026-06-27 | 3340, 3353, 3354, 3355 |  | 7 day week With NGT Ban | 7596133 |
| 3357 | 37200.37300.37500.38200.39100.40600.41600.81900.1001800 | IPS flooring work | 8.94d | 2026-06-27 | 2026-07-05 | 3341, 3353, 3355, 3356 |  | 7 day week With NGT Ban | 7596143 |
| 3358 | 37200.37300.37500.38200.39100.40600.41600.81900.1001900 | Toilet dado work | 7.94d | 2026-06-27 | 2026-07-04 | 3342, 3355, 3356 |  | 7 day week With NGT Ban | 7596153 |
| 3359 | 37200.37300.37500.38200.39100.40600.41600.81900.1002000 | Toilet flooring work | 6.94d | 2026-07-05 | 2026-07-11 | 3343, 3358 |  | 7 day week With NGT Ban | 7596163 |
| 3360 | 37200.37300.37500.38200.39100.40600.41600.81900.1002100 | Living dinning flooring | 11.94d | 2026-07-11 | 2026-07-23 | 3344, 3353, 3359 |  | 7 day week With NGT Ban | 7596173 |
| 3361 | 37200.37300.37500.38200.39100.40600.41600.81900.1002200 | Aluminium door-window fixing | 11.94d | 2026-07-23 | 2026-08-04 | 3345, 3357, 3360 |  | 7 day week With NGT Ban | 7596183 |
| 3362 | 37200.37300.37500.38200.39100.40600.41600.81900.1002300 | Putty primer coat | 5.94d | 2026-07-23 | 2026-07-29 | 3346, 3360 |  | 7 day week With NGT Ban | 7596193 |
| 3363 | 37200.37300.37500.38200.39100.40600.41600.81900.1002400 | Door shutter fixing | 7.94d | 2026-07-23 | 2026-07-31 | 3347, 3360 |  | 7 day week With NGT Ban | 7596203 |
| 3364 | 37200.37300.37500.38200.39100.40600.41600.81900.1002500 | Electrical wiring work | 11.94d | 2026-07-31 | 2026-08-12 | 3348, 3363 |  | 7 day week With NGT Ban | 7596213 |
| 3365 | 37200.37300.37500.38200.39100.40600.41600.81900.1002600 | Painting 1st coat | 11.94d | 2026-08-12 | 2026-08-24 | 3349, 3362, 3363, 3364 |  | 7 day week With NGT Ban | 7596223 |
| 3366 | 37200.37300.37500.38200.39100.40600.41600.81900.1002700 | False ceiling | 9.94d | 2026-08-24 | 2026-09-03 | 3350, 3365 |  | 7 day week With NGT Ban | 7596233 |

| ID | WBS | Task | Duration | Start | Finish | Predecessors | Constraint | Calendar | Unique_Task_ID |
| --- | --- | --- | --- | --- | --- | --- | --- | --- | --- |
| 3367 | 37200.37300.37500.38200.39100.40600.41600.81800 | **23rd Floor** | 118.19d | 2026-05-23 | 2026-09-18 |  | start no earlier than 2026-05-23 | 7 day week With NGT Ban | 7568993 |
| 3368 | 37200.37300.37500.38200.39100.40600.41600.81800.1002800 | Block Work | 7.94d | 2026-05-23 | 2026-05-31 | 3000, 3352 |  | 7 day week With NGT Ban | 7596243 |
| 3369 | 37200.37300.37500.38200.39100.40600.41600.81800.1002900 | Door Frame Fixing | 8.94d | 2026-06-02 | 2026-06-11 | 3353, 3368 |  | 7 day week With NGT Ban | 7596253 |
| 3370 | 37200.37300.37500.38200.39100.40600.41600.81800.1003000 | Internal Plumbing Works | 9.94d | 2026-06-04 | 2026-06-14 | 3354, 3368 |  | 7 day week With NGT Ban | 7596263 |
| 3371 | 37200.37300.37500.38200.39100.40600.41600.81800.1003100 | Waterproofing | 11.94d | 2026-06-18 | 2026-06-30 | 3355, 3370 |  | 7 day week With NGT Ban | 7596273 |
| 3372 | 37200.37300.37500.38200.39100.40600.41600.81800.1003200 | Internal Plaster | 8.94d | 2026-06-30 | 2026-07-08 | 3356, 3369, 3370, 3371 |  | 7 day week With NGT Ban | 7596283 |
| 3373 | 37200.37300.37500.38200.39100.40600.41600.81800.1003300 | IPS flooring work | 8.94d | 2026-07-09 | 2026-07-17 | 3357, 3369, 3371, 3372 |  | 7 day week With NGT Ban | 7596293 |
| 3374 | 37200.37300.37500.38200.39100.40600.41600.81800.1003400 | Toilet dado work | 7.94d | 2026-07-09 | 2026-07-16 | 3358, 3371, 3372 |  | 7 day week With NGT Ban | 7596303 |
| 3375 | 37200.37300.37500.38200.39100.40600.41600.81800.1003500 | Toilet flooring work | 6.94d | 2026-07-16 | 2026-07-23 | 3359, 3374 |  | 7 day week With NGT Ban | 7596313 |
| 3376 | 37200.37300.37500.38200.39100.40600.41600.81800.1003600 | Living dinning flooring | 14.94d | 2026-07-23 | 2026-08-07 | 3360, 3369, 3375 |  | 7 day week With NGT Ban | 7596323 |
| 3377 | 37200.37300.37500.38200.39100.40600.41600.81800.1003700 | Aluminium door-window fixing | 14.94d | 2026-08-07 | 2026-08-22 | 3361, 3373, 3376 |  | 7 day week With NGT Ban | 7596333 |
| 3378 | 37200.37300.37500.38200.39100.40600.41600.81800.1003800 | Putty primer coat | 5.94d | 2026-08-07 | 2026-08-13 | 3362, 3376 |  | 7 day week With NGT Ban | 7596343 |
| 3379 | 37200.37300.37500.38200.39100.40600.41600.81800.1003900 | Door shutter fixing | 7.94d | 2026-08-07 | 2026-08-15 | 3363, 3376 |  | 7 day week With NGT Ban | 7596353 |
| 3380 | 37200.37300.37500.38200.39100.40600.41600.81800.1004000 | Electrical wiring work | 11.94d | 2026-08-15 | 2026-08-27 | 3364, 3379 |  | 7 day week With NGT Ban | 7596363 |
| 3381 | 37200.37300.37500.38200.39100.40600.41600.81800.1004100 | Painting 1st coat | 11.94d | 2026-08-27 | 2026-09-08 | 3365, 3378, 3379, 3380 |  | 7 day week With NGT Ban | 7596373 |
| 3382 | 37200.37300.37500.38200.39100.40600.41600.81800.1004200 | False ceiling | 9.94d | 2026-09-08 | 2026-09-18 | 3366, 3381 |  | 7 day week With NGT Ban | 7596383 |
| 3383 | 37200.37300.37500.38200.39100.40600.41600.81700 | **24th Floor** | 125.12d | 2026-05-31 | 2026-10-03 |  | start no earlier than 2026-05-31 | 7 day week With NGT Ban | 7569003 |
| 3384 | 37200.37300.37500.38200.39100.40600.41600.81700.1004300 | Block Work | 7.94d | 2026-05-31 | 2026-06-08 | 3001, 3368 |  | 7 day week With NGT Ban | 7596393 |
| 3385 | 37200.37300.37500.38200.39100.40600.41600.81700.1004400 | Door Frame Fixing | 8.94d | 2026-06-11 | 2026-06-20 | 3369, 3384 |  | 7 day week With NGT Ban | 7596403 |
| 3386 | 37200.37300.37500.38200.39100.40600.41600.81700.1004500 | Internal Plumbing Works | 9.94d | 2026-06-14 | 2026-06-24 | 3370, 3384 |  | 7 day week With NGT Ban | 7596413 |
| 3387 | 37200.37300.37500.38200.39100.40600.41600.81700.1004600 | Waterproofing | 11.94d | 2026-06-30 | 2026-07-11 | 3371, 3386 |  | 7 day week With NGT Ban | 7596423 |
| 3388 | 37200.37300.37500.38200.39100.40600.41600.81700.1004700 | Internal Plaster | 8.94d | 2026-07-12 | 2026-07-20 | 3372, 3385, 3386, 3387 |  | 7 day week With NGT Ban | 7596433 |
| 3389 | 37200.37300.37500.38200.39100.40600.41600.81700.1004800 | IPS flooring work | 8.94d | 2026-07-20 | 2026-07-29 | 3373, 3385, 3387, 3388 |  | 7 day week With NGT Ban | 7596443 |
| 3390 | 37200.37300.37500.38200.39100.40600.41600.81700.1004900 | Toilet dado work | 7.94d | 2026-07-20 | 2026-07-28 | 3374, 3387, 3388 |  | 7 day week With NGT Ban | 7596453 |
| 3391 | 37200.37300.37500.38200.39100.40600.41600.81700.1005000 | Toilet flooring work | 6.94d | 2026-07-28 | 2026-08-04 | 3375, 3390 |  | 7 day week With NGT Ban | 7596463 |
| 3392 | 37200.37300.37500.38200.39100.40600.41600.81700.1005100 | Living dinning flooring | 14.94d | 2026-08-07 | 2026-08-22 | 3376, 3385, 3391 |  | 7 day week With NGT Ban | 7596473 |
| 3393 | 37200.37300.37500.38200.39100.40600.41600.81700.1005200 | Aluminium door-window fixing | 14.94d | 2026-08-22 | 2026-09-06 | 3377, 3389, 3392 |  | 7 day week With NGT Ban | 7596483 |
| 3394 | 37200.37300.37500.38200.39100.40600.41600.81700.1005300 | Putty primer coat | 5.94d | 2026-08-22 | 2026-08-28 | 3378, 3392 |  | 7 day week With NGT Ban | 7596493 |
| 3395 | 37200.37300.37500.38200.39100.40600.41600.81700.1005400 | Door shutter fixing | 7.94d | 2026-08-22 | 2026-08-30 | 3379, 3392 |  | 7 day week With NGT Ban | 7596503 |
| 3396 | 37200.37300.37500.38200.39100.40600.41600.81700.1005500 | Electrical wiring work | 11.94d | 2026-08-30 | 2026-09-11 | 3380, 3395 |  | 7 day week With NGT Ban | 7596513 |
| 3397 | 37200.37300.37500.38200.39100.40600.41600.81700.1005600 | Painting 1st coat | 11.94d | 2026-09-11 | 2026-09-23 | 3381, 3394, 3395, 3396 |  | 7 day week With NGT Ban | 7596523 |
| 3398 | 37200.37300.37500.38200.39100.40600.41600.81700.1005700 | False ceiling | 9.94d | 2026-09-23 | 2026-10-03 | 3382, 3397 |  | 7 day week With NGT Ban | 7596533 |

| ID | WBS | Task | Duration | Start | Finish | Predecessors | Constraint | Calendar | Unique_Task_ID |
| --- | --- | --- | --- | --- | --- | --- | --- | --- | --- |
| 3399 | 37200.37300.37500.38200.39100.40600.41600.81600 | **25th Floor** | 127.31d | 2026-06-13 | 2026-10-18 |  | start no earlier than 2026-06-13 | 7 day week With NGT Ban | 7569013 |
| 3400 | 37200.37300.37500.38200.39100.40600.41600.81600.1005800 | Block Work | 7.94d | 2026-06-13 | 2026-06-21 | 3002, 3384 |  | 7 day week With NGT Ban | 7596543 |
| 3401 | 37200.37300.37500.38200.39100.40600.41600.81600.1005900 | Door Frame Fixing | 8.94d | 2026-06-21 | 2026-06-29 | 3385, 3400 |  | 7 day week With NGT Ban | 7596553 |
| 3402 | 37200.37300.37500.38200.39100.40600.41600.81600.1006000 | Internal Plumbing Works | 9.94d | 2026-06-24 | 2026-07-03 | 3386, 3400 |  | 7 day week With NGT Ban | 7596563 |
| 3403 | 37200.37300.37500.38200.39100.40600.41600.81600.1006100 | Waterproofing | 11.94d | 2026-07-12 | 2026-07-23 | 3387, 3402 |  | 7 day week With NGT Ban | 7596573 |
| 3404 | 37200.37300.37500.38200.39100.40600.41600.81600.1006200 | Internal Plaster | 8.94d | 2026-07-23 | 2026-08-01 | 3388, 3401, 3402, 3403 |  | 7 day week With NGT Ban | 7596583 |
| 3405 | 37200.37300.37500.38200.39100.40600.41600.81600.1006300 | IPS flooring work | 8.94d | 2026-08-01 | 2026-08-10 | 3389, 3401, 3403, 3404 |  | 7 day week With NGT Ban | 7596593 |
| 3406 | 37200.37300.37500.38200.39100.40600.41600.81600.1006400 | Toilet dado work | 7.94d | 2026-08-01 | 2026-08-09 | 3390, 3403, 3404 |  | 7 day week With NGT Ban | 7596603 |
| 3407 | 37200.37300.37500.38200.39100.40600.41600.81600.1006500 | Toilet flooring work | 6.94d | 2026-08-09 | 2026-08-16 | 3391, 3406 |  | 7 day week With NGT Ban | 7596613 |
| 3408 | 37200.37300.37500.38200.39100.40600.41600.81600.1006600 | Living dinning flooring | 14.94d | 2026-08-22 | 2026-09-06 | 3392, 3401, 3407 |  | 7 day week With NGT Ban | 7596623 |
| 3409 | 37200.37300.37500.38200.39100.40600.41600.81600.1006700 | Aluminium door-window fixing | 14.94d | 2026-09-06 | 2026-09-21 | 3393, 3405, 3408 |  | 7 day week With NGT Ban | 7596633 |
| 3410 | 37200.37300.37500.38200.39100.40600.41600.81600.1006800 | Putty primer coat | 5.94d | 2026-09-06 | 2026-09-12 | 3394, 3408 |  | 7 day week With NGT Ban | 7596643 |
| 3411 | 37200.37300.37500.38200.39100.40600.41600.81600.1006900 | Door shutter fixing | 7.94d | 2026-09-06 | 2026-09-14 | 3395, 3408 |  | 7 day week With NGT Ban | 7596653 |
| 3412 | 37200.37300.37500.38200.39100.40600.41600.81600.1007000 | Electrical wiring work | 11.94d | 2026-09-14 | 2026-09-26 | 3396, 3411 |  | 7 day week With NGT Ban | 7596663 |
| 3413 | 37200.37300.37500.38200.39100.40600.41600.81600.1007100 | Painting 1st coat | 11.94d | 2026-09-26 | 2026-10-08 | 3397, 3410, 3411, 3412 |  | 7 day week With NGT Ban | 7596673 |
| 3414 | 37200.37300.37500.38200.39100.40600.41600.81600.1007200 | False ceiling | 9.94d | 2026-10-08 | 2026-10-18 | 3398, 3413 |  | 7 day week With NGT Ban | 7596683 |
| 3415 | 37200.37300.37500.38200.39100.40600.41600.81500 | **26th Floor** | 130.5d | 2026-06-24 | 2026-12-17 |  | start no earlier than 2026-06-24 | 7 day week With NGT Ban | 7569023 |
| 3416 | 37200.37300.37500.38200.39100.40600.41600.81500.1007300 | Block Work | 7.94d | 2026-06-24 | 2026-07-02 | 3003, 3400 |  | 7 day week With NGT Ban | 7596693 |
| 3417 | 37200.37300.37500.38200.39100.40600.41600.81500.1007400 | Door Frame Fixing | 8.94d | 2026-07-02 | 2026-07-11 | 3401, 3416 |  | 7 day week With NGT Ban | 7596703 |
| 3418 | 37200.37300.37500.38200.39100.40600.41600.81500.1007500 | Internal Plumbing Works | 9.94d | 2026-07-04 | 2026-07-13 | 3402, 3416 |  | 7 day week With NGT Ban | 7596713 |
| 3419 | 37200.37300.37500.38200.39100.40600.41600.81500.1007600 | Waterproofing | 11.94d | 2026-07-23 | 2026-08-04 | 3403, 3418 |  | 7 day week With NGT Ban | 7596723 |
| 3420 | 37200.37300.37500.38200.39100.40600.41600.81500.1007700 | Internal Plaster | 8.94d | 2026-08-04 | 2026-08-13 | 3404, 3417, 3418, 3419 |  | 7 day week With NGT Ban | 7596733 |
| 3421 | 37200.37300.37500.38200.39100.40600.41600.81500.1007800 | IPS flooring work | 8.94d | 2026-08-13 | 2026-08-22 | 3405, 3417, 3419, 3420 |  | 7 day week With NGT Ban | 7596743 |
| 3422 | 37200.37300.37500.38200.39100.40600.41600.81500.1007900 | Toilet dado work | 7.94d | 2026-08-13 | 2026-08-21 | 3406, 3419, 3420 |  | 7 day week With NGT Ban | 7596753 |
| 3423 | 37200.37300.37500.38200.39100.40600.41600.81500.1008000 | Toilet flooring work | 6.94d | 2026-08-21 | 2026-08-28 | 3407, 3422 |  | 7 day week With NGT Ban | 7596763 |
| 3424 | 37200.37300.37500.38200.39100.40600.41600.81500.1008100 | Living dinning flooring | 14.94d | 2026-09-06 | 2026-09-21 | 3408, 3417, 3423 |  | 7 day week With NGT Ban | 7596773 |
| 3425 | 37200.37300.37500.38200.39100.40600.41600.81500.1008200 | Aluminium door-window fixing | 14.94d | 2026-09-21 | 2026-10-06 | 3409, 3421, 3424 |  | 7 day week With NGT Ban | 7596783 |
| 3426 | 37200.37300.37500.38200.39100.40600.41600.81500.1008300 | Putty primer coat | 5.94d | 2026-09-21 | 2026-09-27 | 3410, 3424 |  | 7 day week With NGT Ban | 7596793 |
| 3427 | 37200.37300.37500.38200.39100.40600.41600.81500.1008400 | Door shutter fixing | 7.94d | 2026-09-21 | 2026-09-29 | 3411, 3424 |  | 7 day week With NGT Ban | 7596803 |
| 3428 | 37200.37300.37500.38200.39100.40600.41600.81500.1008500 | Electrical wiring work | 11.94d | 2026-09-29 | 2026-10-11 | 3412, 3427 |  | 7 day week With NGT Ban | 7596813 |
| 3429 | 37200.37300.37500.38200.39100.40600.41600.81500.1008600 | Painting 1st coat | 11.94d | 2026-10-11 | 2026-10-23 | 3413, 3426, 3427, 3428 |  | 7 day week With NGT Ban | 7596823 |
| 3430 | 37200.37300.37500.38200.39100.40600.41600.81500.1008700 | False ceiling | 9.94d | 2026-10-23 | 2026-12-17 | 3414, 3429 |  | 7 day week With NGT Ban | 7596833 |

| ID | WBS | Task | Duration | Start | Finish | Predecessors | Constraint | Calendar | Unique_Task_ID |
| --- | --- | --- | --- | --- | --- | --- | --- | --- | --- |
| 3431 | 37200.37300.37500.38200.39100.40600.41600.81400 | **27th Floor** | 132.69d | 2026-07-07 | 2027-01-01 |  | start no earlier than 2026-07-07 | 7 day week With NGT Ban | 7569033 |
| 3432 | 37200.37300.37500.38200.39100.40600.41600.81400.1008800 | Block Work | 7.94d | 2026-07-07 | 2026-07-15 | 3004, 3416 |  | 7 day week With NGT Ban | 7596843 |
| 3433 | 37200.37300.37500.38200.39100.40600.41600.81400.1008900 | Door Frame Fixing | 8.94d | 2026-07-15 | 2026-07-24 | 3417, 3432 |  | 7 day week With NGT Ban | 7596853 |
| 3434 | 37200.37300.37500.38200.39100.40600.41600.81400.1009000 | Internal Plumbing Works | 9.94d | 2026-07-15 | 2026-07-25 | 3418, 3432 |  | 7 day week With NGT Ban | 7596863 |
| 3435 | 37200.37300.37500.38200.39100.40600.41600.81400.1009100 | Waterproofing | 11.94d | 2026-08-04 | 2026-08-16 | 3419, 3434 |  | 7 day week With NGT Ban | 7596873 |
| 3436 | 37200.37300.37500.38200.39100.40600.41600.81400.1009200 | Internal Plaster | 8.94d | 2026-08-16 | 2026-08-25 | 3420, 3433, 3434, 3435 |  | 7 day week With NGT Ban | 7596883 |
| 3437 | 37200.37300.37500.38200.39100.40600.41600.81400.1009300 | IPS flooring work | 8.94d | 2026-08-25 | 2026-09-03 | 3421, 3433, 3435, 3436 |  | 7 day week With NGT Ban | 7596893 |
| 3438 | 37200.37300.37500.38200.39100.40600.41600.81400.1009400 | Toilet dado work | 7.94d | 2026-08-25 | 2026-09-02 | 3422, 3435, 3436 |  | 7 day week With NGT Ban | 7596903 |
| 3439 | 37200.37300.37500.38200.39100.40600.41600.81400.1009500 | Toilet flooring work | 6.94d | 2026-09-02 | 2026-09-09 | 3423, 3438 |  | 7 day week With NGT Ban | 7596913 |
| 3440 | 37200.37300.37500.38200.39100.40600.41600.81400.1009600 | Living dinning flooring | 14.94d | 2026-09-21 | 2026-10-06 | 3424, 3433, 3439 |  | 7 day week With NGT Ban | 7596923 |
| 3441 | 37200.37300.37500.38200.39100.40600.41600.81400.1009700 | Aluminium door-window fixing | 14.94d | 2026-10-06 | 2026-10-21 | 3425, 3437, 3440 |  | 7 day week With NGT Ban | 7596933 |
| 3442 | 37200.37300.37500.38200.39100.40600.41600.81400.1009800 | Putty primer coat | 5.94d | 2026-10-06 | 2026-10-12 | 3426, 3440 |  | 7 day week With NGT Ban | 7596943 |
| 3443 | 37200.37300.37500.38200.39100.40600.41600.81400.1009900 | Door shutter fixing | 7.94d | 2026-10-06 | 2026-10-14 | 3427, 3440 |  | 7 day week With NGT Ban | 7596953 |
| 3444 | 37200.37300.37500.38200.39100.40600.41600.81400.1010000 | Electrical wiring work | 11.94d | 2026-10-14 | 2026-10-26 | 3428, 3443 |  | 7 day week With NGT Ban | 7596963 |
| 3445 | 37200.37300.37500.38200.39100.40600.41600.81400.1010100 | Painting 1st coat | 11.94d | 2026-10-26 | 2026-12-22 | 3429, 3442, 3443, 3444 |  | 7 day week With NGT Ban | 7596973 |
| 3446 | 37200.37300.37500.38200.39100.40600.41600.81400.1010200 | False ceiling | 9.94d | 2026-12-22 | 2027-01-01 | 3430, 3445 |  | 7 day week With NGT Ban | 7596983 |
| 3447 | 37200.37300.37500.38200.39100.40600.41600.81300 | **28th Floor** | 135.88d | 2026-07-19 | 2027-01-16 |  | start no earlier than 2026-07-19 | 7 day week With NGT Ban | 7569043 |
| 3448 | 37200.37300.37500.38200.39100.40600.41600.81300.1010300 | Block Work | 7.94d | 2026-07-19 | 2026-07-27 | 3005, 3432 |  | 7 day week With NGT Ban | 7596993 |
| 3449 | 37200.37300.37500.38200.39100.40600.41600.81300.1010400 | Door Frame Fixing | 8.94d | 2026-07-27 | 2026-08-05 | 3433, 3448 |  | 7 day week With NGT Ban | 7597003 |
| 3450 | 37200.37300.37500.38200.39100.40600.41600.81300.1010500 | Internal Plumbing Works | 9.94d | 2026-07-27 | 2026-08-06 | 3434, 3448 |  | 7 day week With NGT Ban | 7597013 |
| 3451 | 37200.37300.37500.38200.39100.40600.41600.81300.1010600 | Waterproofing | 11.94d | 2026-08-16 | 2026-08-28 | 3435, 3450 |  | 7 day week With NGT Ban | 7597023 |
| 3452 | 37200.37300.37500.38200.39100.40600.41600.81300.1010700 | Internal Plaster | 8.94d | 2026-08-28 | 2026-09-06 | 3436, 3449, 3450, 3451 |  | 7 day week With NGT Ban | 7597033 |
| 3453 | 37200.37300.37500.38200.39100.40600.41600.81300.1010800 | IPS flooring work | 8.94d | 2026-09-06 | 2026-09-15 | 3437, 3449, 3451, 3452 |  | 7 day week With NGT Ban | 7597043 |
| 3454 | 37200.37300.37500.38200.39100.40600.41600.81300.1010900 | Toilet dado work | 7.94d | 2026-09-06 | 2026-09-14 | 3438, 3451, 3452 |  | 7 day week With NGT Ban | 7597053 |
| 3455 | 37200.37300.37500.38200.39100.40600.41600.81300.1011000 | Toilet flooring work | 6.94d | 2026-09-14 | 2026-09-21 | 3439, 3454 |  | 7 day week With NGT Ban | 7597063 |
| 3456 | 37200.37300.37500.38200.39100.40600.41600.81300.1011100 | Living dinning flooring | 14.94d | 2026-10-06 | 2026-10-21 | 3440, 3449, 3455 |  | 7 day week With NGT Ban | 7597073 |
| 3457 | 37200.37300.37500.38200.39100.40600.41600.81300.1011200 | Aluminium door-window fixing | 14.94d | 2026-10-21 | 2026-12-20 | 3441, 3453, 3456 |  | 7 day week With NGT Ban | 7597083 |
| 3458 | 37200.37300.37500.38200.39100.40600.41600.81300.1011300 | Putty primer coat | 5.94d | 2026-10-21 | 2026-10-27 | 3442, 3456 |  | 7 day week With NGT Ban | 7597093 |
| 3459 | 37200.37300.37500.38200.39100.40600.41600.81300.1011400 | Door shutter fixing | 7.94d | 2026-10-21 | 2026-10-29 | 3443, 3456 |  | 7 day week With NGT Ban | 7597103 |
| 3460 | 37200.37300.37500.38200.39100.40600.41600.81300.1011500 | Electrical wiring work | 11.94d | 2026-10-29 | 2026-12-25 | 3444, 3459 |  | 7 day week With NGT Ban | 7597113 |
| 3461 | 37200.37300.37500.38200.39100.40600.41600.81300.1011600 | Painting 1st coat | 11.94d | 2026-12-25 | 2027-01-06 | 3445, 3458, 3459, 3460 |  | 7 day week With NGT Ban | 7597123 |
| 3462 | 37200.37300.37500.38200.39100.40600.41600.81300.1011700 | False ceiling | 9.94d | 2027-01-06 | 2027-01-16 | 3446, 3461 |  | 7 day week With NGT Ban | 7597133 |

| ID | WBS | Task | Duration | Start | Finish | Predecessors | Constraint | Calendar | Unique_Task_ID |
| --- | --- | --- | --- | --- | --- | --- | --- | --- | --- |
| 3463 | 37200.37300.37500.38200.39100.40600.41600.81200 | **29th Floor** | 136.06d | 2026-08-03 | 2027-01-31 |  | start no earlier than 2026-08-03 | 7 day week With NGT Ban | 7569053 |
| 3464 | 37200.37300.37500.38200.39100.40600.41600.81200.1011800 | Block Work | 7.94d | 2026-08-03 | 2026-08-11 | 3006, 3448 |  | 7 day week With NGT Ban | 7597143 |
| 3465 | 37200.37300.37500.38200.39100.40600.41600.81200.1011900 | Door Frame Fixing | 8.94d | 2026-08-11 | 2026-08-19 | 3449, 3464 |  | 7 day week With NGT Ban | 7597153 |
| 3466 | 37200.37300.37500.38200.39100.40600.41600.81200.1012000 | Internal Plumbing Works | 9.94d | 2026-08-11 | 2026-08-20 | 3450, 3464 |  | 7 day week With NGT Ban | 7597163 |
| 3467 | 37200.37300.37500.38200.39100.40600.41600.81200.1012100 | Waterproofing | 11.94d | 2026-08-28 | 2026-09-09 | 3451, 3466 |  | 7 day week With NGT Ban | 7597173 |
| 3468 | 37200.37300.37500.38200.39100.40600.41600.81200.1012200 | Internal Plaster | 8.94d | 2026-09-09 | 2026-09-18 | 3452, 3465, 3466, 3467 |  | 7 day week With NGT Ban | 7597183 |
| 3469 | 37200.37300.37500.38200.39100.40600.41600.81200.1012300 | IPS flooring work | 8.94d | 2026-09-18 | 2026-09-27 | 3453, 3465, 3467, 3468 |  | 7 day week With NGT Ban | 7597193 |
| 3470 | 37200.37300.37500.38200.39100.40600.41600.81200.1012400 | Toilet dado work | 7.94d | 2026-09-18 | 2026-09-26 | 3454, 3467, 3468 |  | 7 day week With NGT Ban | 7597203 |
| 3471 | 37200.37300.37500.38200.39100.40600.41600.81200.1012500 | Toilet flooring work | 6.94d | 2026-09-26 | 2026-10-03 | 3455, 3470 |  | 7 day week With NGT Ban | 7597213 |
| 3472 | 37200.37300.37500.38200.39100.40600.41600.81200.1012600 | Living dinning flooring | 14.94d | 2026-10-21 | 2026-12-20 | 3456, 3465, 3471 |  | 7 day week With NGT Ban | 7597223 |
| 3473 | 37200.37300.37500.38200.39100.40600.41600.81200.1012700 | Aluminium door-window fixing | 14.94d | 2026-12-20 | 2027-01-04 | 3457, 3469, 3472 |  | 7 day week With NGT Ban | 7597233 |
| 3474 | 37200.37300.37500.38200.39100.40600.41600.81200.1012800 | Putty primer coat | 5.94d | 2026-12-20 | 2026-12-26 | 3458, 3472 |  | 7 day week With NGT Ban | 7597243 |
| 3475 | 37200.37300.37500.38200.39100.40600.41600.81200.1012900 | Door shutter fixing | 7.94d | 2026-12-20 | 2026-12-28 | 3459, 3472 |  | 7 day week With NGT Ban | 7597253 |
| 3476 | 37200.37300.37500.38200.39100.40600.41600.81200.1013000 | Electrical wiring work | 11.94d | 2026-12-28 | 2027-01-09 | 3460, 3475 |  | 7 day week With NGT Ban | 7597263 |
| 3477 | 37200.37300.37500.38200.39100.40600.41600.81200.1013100 | Painting 1st coat | 11.94d | 2027-01-09 | 2027-01-21 | 3461, 3474, 3475, 3476 |  | 7 day week With NGT Ban | 7597273 |
| 3478 | 37200.37300.37500.38200.39100.40600.41600.81200.1013200 | False ceiling | 9.94d | 2027-01-21 | 2027-01-31 | 3462, 3477 |  | 7 day week With NGT Ban | 7597283 |
| 3479 | 37200.37300.37500.38200.39100.40600.41600.81100 | **30th Floor** | 117.5d | 2026-09-11 | 2027-02-21 |  | start no earlier than 2026-09-11 | 7 day week With NGT Ban | 7569063 |
| 3480 | 37200.37300.37500.38200.39100.40600.41600.81100.1013300 | Block Work | 7.94d | 2026-09-11 | 2026-09-19 | 3007, 3464 |  | 7 day week With NGT Ban | 7597293 |
| 3481 | 37200.37300.37500.38200.39100.40600.41600.81100.1013400 | Door Frame Fixing | 8.94d | 2026-09-19 | 2026-09-28 | 3465, 3480 |  | 7 day week With NGT Ban | 7597303 |
| 3482 | 37200.37300.37500.38200.39100.40600.41600.81100.1013500 | Internal Plumbing Works | 9.94d | 2026-09-19 | 2026-09-29 | 3466, 3480 |  | 7 day week With NGT Ban | 7597313 |
| 3483 | 37200.37300.37500.38200.39100.40600.41600.81100.1013600 | Waterproofing | 11.94d | 2026-09-29 | 2026-10-11 | 3467, 3482 |  | 7 day week With NGT Ban | 7597323 |
| 3484 | 37200.37300.37500.38200.39100.40600.41600.81100.1013700 | Internal Plaster | 8.94d | 2026-10-11 | 2026-10-20 | 3468, 3481, 3482, 3483 |  | 7 day week With NGT Ban | 7597333 |
| 3485 | 37200.37300.37500.38200.39100.40600.41600.81100.1013800 | IPS flooring work | 8.94d | 2026-10-20 | 2026-10-29 | 3469, 3481, 3483, 3484 |  | 7 day week With NGT Ban | 7597343 |
| 3486 | 37200.37300.37500.38200.39100.40600.41600.81100.1013900 | Toilet dado work | 7.94d | 2026-10-20 | 2026-10-28 | 3470, 3483, 3484 |  | 7 day week With NGT Ban | 7597353 |
| 3487 | 37200.37300.37500.38200.39100.40600.41600.81100.1014000 | Toilet flooring work | 6.94d | 2026-10-28 | 2026-12-19 | 3471, 3486 |  | 7 day week With NGT Ban | 7597363 |
| 3488 | 37200.37300.37500.38200.39100.40600.41600.81100.1014100 | Living dinning flooring | 14.94d | 2026-12-20 | 2027-01-04 | 3472, 3481, 3487 |  | 7 day week With NGT Ban | 7597373 |
| 3489 | 37200.37300.37500.38200.39100.40600.41600.81100.1014200 | Aluminium door-window fixing | 14.94d | 2027-01-04 | 2027-01-19 | 3473, 3485, 3488 |  | 7 day week With NGT Ban | 7597383 |
| 3490 | 37200.37300.37500.38200.39100.40600.41600.81100.1014300 | Putty primer coat | 5.94d | 2027-01-04 | 2027-01-10 | 3474, 3488 |  | 7 day week With NGT Ban | 7597393 |
| 3491 | 37200.37300.37500.38200.39100.40600.41600.81100.1014400 | Door shutter fixing | 7.94d | 2027-01-04 | 2027-01-12 | 3475, 3488 |  | 7 day week With NGT Ban | 7597403 |
| 3492 | 37200.37300.37500.38200.39100.40600.41600.81100.1014500 | Electrical wiring work | 14.94d | 2027-01-12 | 2027-01-27 | 3476, 3491 |  | 7 day week With NGT Ban | 7597413 |
| 3493 | 37200.37300.37500.38200.39100.40600.41600.81100.1014600 | Painting 1st coat | 14.94d | 2027-01-27 | 2027-02-11 | 3477, 3490, 3491, 3492 |  | 7 day week With NGT Ban | 7597423 |
| 3494 | 37200.37300.37500.38200.39100.40600.41600.81100.1014700 | False ceiling | 9.94d | 2027-02-11 | 2027-02-21 | 3478, 3493 |  | 7 day week With NGT Ban | 7597433 |

| ID | WBS | Task | Duration | Start | Finish | Predecessors | Constraint | Calendar | Unique_Task_ID |
| --- | --- | --- | --- | --- | --- | --- | --- | --- | --- |
| 3495 | 37200.37300.37500.38200.39100.40600.41600.81000 | **31st Floor** | 124.5d | 2026-09-19 | 2027-03-08 |  | start no earlier than 2026-09-19 | 7 day week With NGT Ban | 7569073 |
| 3496 | 37200.37300.37500.38200.39100.40600.41600.81000.1014800 | Block Work | 7.94d | 2026-09-19 | 2026-09-27 | 3008, 3480 |  | 7 day week With NGT Ban | 7597443 |
| 3497 | 37200.37300.37500.38200.39100.40600.41600.81000.1014900 | Door Frame Fixing | 8.94d | 2026-09-28 | 2026-10-07 | 3481, 3496 |  | 7 day week With NGT Ban | 7597453 |
| 3498 | 37200.37300.37500.38200.39100.40600.41600.81000.1015000 | Internal Plumbing Works | 9.94d | 2026-09-29 | 2026-10-09 | 3482, 3496 |  | 7 day week With NGT Ban | 7597463 |
| 3499 | 37200.37300.37500.38200.39100.40600.41600.81000.1015100 | Waterproofing | 11.94d | 2026-10-11 | 2026-10-23 | 3483, 3498 |  | 7 day week With NGT Ban | 7597473 |
| 3500 | 37200.37300.37500.38200.39100.40600.41600.81000.1015200 | Internal Plaster | 8.94d | 2026-10-23 | 2026-12-16 | 3484, 3497, 3498, 3499 |  | 7 day week With NGT Ban | 7597483 |
| 3501 | 37200.37300.37500.38200.39100.40600.41600.81000.1015300 | IPS flooring work | 8.94d | 2026-12-16 | 2026-12-25 | 3485, 3497, 3499, 3500 |  | 7 day week With NGT Ban | 7597493 |
| 3502 | 37200.37300.37500.38200.39100.40600.41600.81000.1015400 | Toilet dado work | 7.94d | 2026-12-16 | 2026-12-24 | 3486, 3499, 3500 |  | 7 day week With NGT Ban | 7597503 |
| 3503 | 37200.37300.37500.38200.39100.40600.41600.81000.1015500 | Toilet flooring work | 6.94d | 2026-12-24 | 2026-12-31 | 3487, 3502 |  | 7 day week With NGT Ban | 7597513 |
| 3504 | 37200.37300.37500.38200.39100.40600.41600.81000.1015600 | Living dinning flooring | 14.94d | 2027-01-04 | 2027-01-19 | 3488, 3497, 3503 |  | 7 day week With NGT Ban | 7597523 |
| 3505 | 37200.37300.37500.38200.39100.40600.41600.81000.1015700 | Aluminium door-window fixing | 11.94d | 2027-01-19 | 2027-01-31 | 3489, 3501, 3504 |  | 7 day week With NGT Ban | 7597533 |
| 3506 | 37200.37300.37500.38200.39100.40600.41600.81000.1015800 | Putty primer coat | 5.94d | 2027-01-19 | 2027-01-25 | 3490, 3504 |  | 7 day week With NGT Ban | 7597543 |
| 3507 | 37200.37300.37500.38200.39100.40600.41600.81000.1015900 | Door shutter fixing | 7.94d | 2027-01-19 | 2027-01-27 | 3491, 3504 |  | 7 day week With NGT Ban | 7597553 |
| 3508 | 37200.37300.37500.38200.39100.40600.41600.81000.1016000 | Electrical wiring work | 14.94d | 2027-01-27 | 2027-02-11 | 3492, 3507 |  | 7 day week With NGT Ban | 7597563 |
| 3509 | 37200.37300.37500.38200.39100.40600.41600.81000.1016100 | Painting 1st coat | 14.94d | 2027-02-11 | 2027-02-26 | 3493, 3506, 3507, 3508 |  | 7 day week With NGT Ban | 7597573 |
| 3510 | 37200.37300.37500.38200.39100.40600.41600.81000.1016200 | False ceiling | 9.94d | 2027-02-26 | 2027-03-08 | 3494, 3509 |  | 7 day week With NGT Ban | 7597583 |
| 3511 | 37200.37300.37500.38200.39100.40600.41600.80900 | **32nd Floor** | 131.5d | 2026-09-27 | 2027-03-22 |  | start no earlier than 2026-09-27 | 7 day week With NGT Ban | 7569083 |
| 3512 | 37200.37300.37500.38200.39100.40600.41600.80900.1016300 | Block Work | 7.94d | 2026-09-27 | 2026-10-05 | 3009, 3496 |  | 7 day week With NGT Ban | 7597593 |
| 3513 | 37200.37300.37500.38200.39100.40600.41600.80900.1016400 | Door Frame Fixing | 8.94d | 2026-10-07 | 2026-10-16 | 3497, 3512 |  | 7 day week With NGT Ban | 7597603 |
| 3514 | 37200.37300.37500.38200.39100.40600.41600.80900.1016500 | Internal Plumbing Works | 9.94d | 2026-10-09 | 2026-10-19 | 3498, 3512 |  | 7 day week With NGT Ban | 7597613 |
| 3515 | 37200.37300.37500.38200.39100.40600.41600.80900.1016600 | Waterproofing | 11.94d | 2026-10-23 | 2026-12-19 | 3499, 3514 |  | 7 day week With NGT Ban | 7597623 |
| 3516 | 37200.37300.37500.38200.39100.40600.41600.80900.1016700 | Internal Plaster | 8.94d | 2026-12-19 | 2026-12-28 | 3500, 3513, 3514, 3515 |  | 7 day week With NGT Ban | 7597633 |
| 3517 | 37200.37300.37500.38200.39100.40600.41600.80900.1016800 | IPS flooring work | 8.94d | 2026-12-28 | 2027-01-06 | 3501, 3513, 3515, 3516 |  | 7 day week With NGT Ban | 7597643 |
| 3518 | 37200.37300.37500.38200.39100.40600.41600.80900.1016900 | Toilet dado work | 7.94d | 2026-12-28 | 2027-01-05 | 3502, 3515, 3516 |  | 7 day week With NGT Ban | 7597653 |
| 3519 | 37200.37300.37500.38200.39100.40600.41600.80900.1017000 | Toilet flooring work | 6.94d | 2027-01-05 | 2027-01-12 | 3503, 3518 |  | 7 day week With NGT Ban | 7597663 |
| 3520 | 37200.37300.37500.38200.39100.40600.41600.80900.1017100 | Living dinning flooring | 14.94d | 2027-01-19 | 2027-02-03 | 3504, 3513, 3519 |  | 7 day week With NGT Ban | 7597673 |
| 3521 | 37200.37300.37500.38200.39100.40600.41600.80900.1017200 | Aluminium door-window fixing | 11.94d | 2027-02-03 | 2027-02-15 | 3505, 3517, 3520 |  | 7 day week With NGT Ban | 7597683 |
| 3522 | 37200.37300.37500.38200.39100.40600.41600.80900.1017300 | Putty primer coat | 5.94d | 2027-02-03 | 2027-02-09 | 3506, 3520 |  | 7 day week With NGT Ban | 7597693 |
| 3523 | 37200.37300.37500.38200.39100.40600.41600.80900.1017400 | Door shutter fixing | 7.94d | 2027-02-03 | 2027-02-11 | 3507, 3520 |  | 7 day week With NGT Ban | 7597703 |
| 3524 | 37200.37300.37500.38200.39100.40600.41600.80900.1017500 | Electrical wiring work | 14.94d | 2027-02-11 | 2027-02-26 | 3508, 3523 |  | 7 day week With NGT Ban | 7597713 |
| 3525 | 37200.37300.37500.38200.39100.40600.41600.80900.1017600 | Painting 1st coat | 14.94d | 2027-02-26 | 2027-03-13 | 3509, 3522, 3523, 3524 |  | 7 day week With NGT Ban | 7597723 |
| 3526 | 37200.37300.37500.38200.39100.40600.41600.80900.1017700 | False ceiling | 9.94d | 2027-03-13 | 2027-03-22 | 3510, 3525 |  | 7 day week With NGT Ban | 7597733 |

| ID | WBS | Task | Duration | Start | Finish | Predecessors | Constraint | Calendar | Unique_Task_ID |
| --- | --- | --- | --- | --- | --- | --- | --- | --- | --- |
| 3527 | 37200.37300.37500.38200.39100.40600.41600.80800 | **33rd Floor** | 135.5d | 2026-10-05 | 2027-04-03 |  | start no earlier than 2026-10-05 | 7 day week With NGT Ban | 7569093 |
| 3528 | 37200.37300.37500.38200.39100.40600.41600.80800.1017800 | Block Work | 7.94d | 2026-10-05 | 2026-10-13 | 3010, 3512 |  | 7 day week With NGT Ban | 7597743 |
| 3529 | 37200.37300.37500.38200.39100.40600.41600.80800.1017900 | Door Frame Fixing | 8.94d | 2026-10-16 | 2026-10-25 | 3513, 3528 |  | 7 day week With NGT Ban | 7597753 |
| 3530 | 37200.37300.37500.38200.39100.40600.41600.80800.1018000 | Internal Plumbing Works | 9.94d | 2026-10-19 | 2026-10-29 | 3514, 3528 |  | 7 day week With NGT Ban | 7597763 |
| 3531 | 37200.37300.37500.38200.39100.40600.41600.80800.1018100 | Waterproofing | 11.94d | 2026-12-19 | 2026-12-31 | 3515, 3530 |  | 7 day week With NGT Ban | 7597773 |
| 3532 | 37200.37300.37500.38200.39100.40600.41600.80800.1018200 | Internal Plaster | 8.94d | 2026-12-31 | 2027-01-09 | 3516, 3529, 3530, 3531 |  | 7 day week With NGT Ban | 7597783 |
| 3533 | 37200.37300.37500.38200.39100.40600.41600.80800.1018300 | IPS flooring work | 8.94d | 2027-01-09 | 2027-01-18 | 3517, 3529, 3531, 3532 |  | 7 day week With NGT Ban | 7597793 |
| 3534 | 37200.37300.37500.38200.39100.40600.41600.80800.1018400 | Toilet dado work | 7.94d | 2027-01-09 | 2027-01-17 | 3518, 3531, 3532 |  | 7 day week With NGT Ban | 7597803 |
| 3535 | 37200.37300.37500.38200.39100.40600.41600.80800.1018500 | Toilet flooring work | 6.94d | 2027-01-17 | 2027-01-24 | 3519, 3534 |  | 7 day week With NGT Ban | 7597813 |
| 3536 | 37200.37300.37500.38200.39100.40600.41600.80800.1018600 | Living dinning flooring | 14.94d | 2027-02-03 | 2027-02-18 | 3520, 3529, 3535 |  | 7 day week With NGT Ban | 7597823 |
| 3537 | 37200.37300.37500.38200.39100.40600.41600.80800.1018700 | Aluminium door-window fixing | 14.94d | 2027-02-18 | 2027-03-05 | 3521, 3533, 3536 |  | 7 day week With NGT Ban | 7597833 |
| 3538 | 37200.37300.37500.38200.39100.40600.41600.80800.1018800 | Putty primer coat | 5.94d | 2027-02-18 | 2027-02-24 | 3522, 3536 |  | 7 day week With NGT Ban | 7597843 |
| 3539 | 37200.37300.37500.38200.39100.40600.41600.80800.1018900 | Door shutter fixing | 7.94d | 2027-02-18 | 2027-02-26 | 3523, 3536 |  | 7 day week With NGT Ban | 7597853 |
| 3540 | 37200.37300.37500.38200.39100.40600.41600.80800.1019000 | Electrical wiring work | 11.94d | 2027-02-26 | 2027-03-10 | 3524, 3539 |  | 7 day week With NGT Ban | 7597863 |
| 3541 | 37200.37300.37500.38200.39100.40600.41600.80800.1019100 | Painting 1st coat | 11.94d | 2027-03-13 | 2027-03-24 | 3525, 3538, 3539, 3540 |  | 7 day week With NGT Ban | 7597873 |
| 3542 | 37200.37300.37500.38200.39100.40600.41600.80800.1019200 | False ceiling | 9.94d | 2027-03-25 | 2027-04-03 | 3526, 3541 |  | 7 day week With NGT Ban | 7597883 |
| 3543 | 37200.37300.37500.38200.39100.40600.41600.80700 | **34th Floor** | 139.5d | 2026-10-13 | 2027-04-15 |  | start no earlier than 2026-10-13 | 7 day week With NGT Ban | 7569103 |
| 3544 | 37200.37300.37500.38200.39100.40600.41600.80700.1019300 | Block Work | 7.94d | 2026-10-13 | 2026-10-21 | 3011, 3528 |  | 7 day week With NGT Ban | 7597893 |
| 3545 | 37200.37300.37500.38200.39100.40600.41600.80700.1019400 | Door Frame Fixing | 8.94d | 2026-10-25 | 2026-12-18 | 3529, 3544 |  | 7 day week With NGT Ban | 7597903 |
| 3546 | 37200.37300.37500.38200.39100.40600.41600.80700.1019500 | Internal Plumbing Works | 9.94d | 2026-10-29 | 2026-12-23 | 3530, 3544 |  | 7 day week With NGT Ban | 7597913 |
| 3547 | 37200.37300.37500.38200.39100.40600.41600.80700.1019600 | Waterproofing | 11.94d | 2026-12-31 | 2027-01-12 | 3531, 3546 |  | 7 day week With NGT Ban | 7597923 |
| 3548 | 37200.37300.37500.38200.39100.40600.41600.80700.1019700 | Internal Plaster | 8.94d | 2027-01-12 | 2027-01-21 | 3532, 3545, 3546, 3547 |  | 7 day week With NGT Ban | 7597933 |
| 3549 | 37200.37300.37500.38200.39100.40600.41600.80700.1019800 | IPS flooring work | 8.94d | 2027-01-21 | 2027-01-30 | 3533, 3545, 3547, 3548 |  | 7 day week With NGT Ban | 7597943 |
| 3550 | 37200.37300.37500.38200.39100.40600.41600.80700.1019900 | Toilet dado work | 7.94d | 2027-01-21 | 2027-01-29 | 3534, 3547, 3548 |  | 7 day week With NGT Ban | 7597953 |
| 3551 | 37200.37300.37500.38200.39100.40600.41600.80700.1020000 | Toilet flooring work | 6.94d | 2027-01-29 | 2027-02-04 | 3535, 3550 |  | 7 day week With NGT Ban | 7597963 |
| 3552 | 37200.37300.37500.38200.39100.40600.41600.80700.1020100 | Living dinning flooring | 14.94d | 2027-02-18 | 2027-03-05 | 3536, 3545, 3551 |  | 7 day week With NGT Ban | 7597973 |
| 3553 | 37200.37300.37500.38200.39100.40600.41600.80700.1020200 | Aluminium door-window fixing | 14.94d | 2027-03-05 | 2027-03-20 | 3537, 3549, 3552 |  | 7 day week With NGT Ban | 7597983 |
| 3554 | 37200.37300.37500.38200.39100.40600.41600.80700.1020300 | Putty primer coat | 5.94d | 2027-03-05 | 2027-03-11 | 3538, 3552 |  | 7 day week With NGT Ban | 7597993 |
| 3555 | 37200.37300.37500.38200.39100.40600.41600.80700.1020400 | Door shutter fixing | 7.94d | 2027-03-05 | 2027-03-13 | 3539, 3552 |  | 7 day week With NGT Ban | 7598003 |
| 3556 | 37200.37300.37500.38200.39100.40600.41600.80700.1020500 | Electrical wiring work | 11.94d | 2027-03-13 | 2027-03-24 | 3540, 3555 |  | 7 day week With NGT Ban | 7598013 |
| 3557 | 37200.37300.37500.38200.39100.40600.41600.80700.1020600 | Painting 1st coat | 11.94d | 2027-03-25 | 2027-04-05 | 3541, 3554, 3555, 3556 |  | 7 day week With NGT Ban | 7598023 |
| 3558 | 37200.37300.37500.38200.39100.40600.41600.80700.1020700 | False ceiling | 9.94d | 2027-04-05 | 2027-04-15 | 3542, 3557 |  | 7 day week With NGT Ban | 7598033 |

| ID | WBS | Task | Duration | Start | Finish | Predecessors | Constraint | Calendar | Unique_Task_ID |
| --- | --- | --- | --- | --- | --- | --- | --- | --- | --- |
| 3559 | 37200.37300.37500.38200.39100.40600.41600.80600 | **35th Floor** | 146.5d | 2026-10-21 | 2027-04-30 |  | start no earlier than 2026-10-21 | 7 day week With NGT Ban | 7569113 |
| 3560 | 37200.37300.37500.38200.39100.40600.41600.80600.1020800 | Block Work | 7.94d | 2026-10-21 | 2026-10-29 | 3012, 3544 |  | 7 day week With NGT Ban | 7598043 |
| 3561 | 37200.37300.37500.38200.39100.40600.41600.80600.1020900 | Door Frame Fixing | 8.94d | 2026-12-18 | 2026-12-27 | 3545, 3560 |  | 7 day week With NGT Ban | 7598053 |
| 3562 | 37200.37300.37500.38200.39100.40600.41600.80600.1021000 | Internal Plumbing Works | 9.94d | 2026-12-23 | 2027-01-02 | 3546, 3560 |  | 7 day week With NGT Ban | 7598063 |
| 3563 | 37200.37300.37500.38200.39100.40600.41600.80600.1021100 | Waterproofing | 11.94d | 2027-01-12 | 2027-01-24 | 3547, 3562 |  | 7 day week With NGT Ban | 7598073 |
| 3564 | 37200.37300.37500.38200.39100.40600.41600.80600.1021200 | Internal Plaster | 8.94d | 2027-01-24 | 2027-02-02 | 3548, 3561, 3562, 3563 |  | 7 day week With NGT Ban | 7598083 |
| 3565 | 37200.37300.37500.38200.39100.40600.41600.80600.1021300 | IPS flooring work | 8.94d | 2027-02-02 | 2027-02-10 | 3549, 3561, 3563, 3564 |  | 7 day week With NGT Ban | 7598093 |
| 3566 | 37200.37300.37500.38200.39100.40600.41600.80600.1021400 | Toilet dado work | 7.94d | 2027-02-02 | 2027-02-09 | 3550, 3563, 3564 |  | 7 day week With NGT Ban | 7598103 |
| 3567 | 37200.37300.37500.38200.39100.40600.41600.80600.1021500 | Toilet flooring work | 6.94d | 2027-02-10 | 2027-02-16 | 3551, 3566 |  | 7 day week With NGT Ban | 7598113 |
| 3568 | 37200.37300.37500.38200.39100.40600.41600.80600.1021600 | Living dinning flooring | 14.94d | 2027-03-05 | 2027-03-20 | 3552, 3561, 3567 |  | 7 day week With NGT Ban | 7598123 |
| 3569 | 37200.37300.37500.38200.39100.40600.41600.80600.1021700 | Aluminium door-window fixing | 14.94d | 2027-03-20 | 2027-04-03 | 3553, 3565, 3568 |  | 7 day week With NGT Ban | 7598133 |
| 3570 | 37200.37300.37500.38200.39100.40600.41600.80600.1021800 | Putty primer coat | 5.94d | 2027-03-20 | 2027-03-25 | 3554, 3568 |  | 7 day week With NGT Ban | 7598143 |
| 3571 | 37200.37300.37500.38200.39100.40600.41600.80600.1021900 | Door shutter fixing | 7.94d | 2027-03-20 | 2027-03-27 | 3555, 3568 |  | 7 day week With NGT Ban | 7598153 |
| 3572 | 37200.37300.37500.38200.39100.40600.41600.80600.1022000 | Electrical wiring work | 11.94d | 2027-03-28 | 2027-04-08 | 3556, 3571 |  | 7 day week With NGT Ban | 7598163 |
| 3573 | 37200.37300.37500.38200.39100.40600.41600.80600.1022100 | Painting 1st coat | 11.94d | 2027-04-08 | 2027-04-20 | 3557, 3570, 3571, 3572 |  | 7 day week With NGT Ban | 7598173 |
| 3574 | 37200.37300.37500.38200.39100.40600.41600.80600.1022200 | False ceiling | 9.94d | 2027-04-20 | 2027-04-30 | 3558, 3573 |  | 7 day week With NGT Ban | 7598183 |
| 3575 | 37200.37300.37500.38200.39100.40600.191100 | **Terrace Finishing** | 79.88d | 2026-07-27 | 2026-10-14 |  | start no earlier than 2026-07-27 | 7 day week With NGT Ban | 7571243 |
| 3576 | 37200.37300.37500.38200.39100.40600.191100.451800 | Terrace waterproofing | 39.94d | 2026-07-27 | 2026-09-05 | 2969 |  | 7 day week With NGT Ban | 7581563 |
| 3577 | 37200.37300.37500.38200.39100.40600.191100.451900 | Terrace finishing | 39.94d | 2026-09-05 | 2026-10-14 | 3576 |  | 7 day week With NGT Ban | 7581573 |
| 3578 | 37200.37300.37500.38200.39100.40600.99400 | **Common Area Finishing** | 279.31d | 2025-09-26 | 2026-08-16 |  | start no earlier than 2025-09-26 | 7 day week With NGT Ban | 7569273 |
| 3579 | 37200.37300.37500.38200.39100.40600.99400.452000 | Block Work | 39.94d | 2025-09-26 | 2025-12-20 | 2980FS+0.25d |  | 7 day week With NGT Ban | 7581583 |
| 3580 | 37200.37300.37500.38200.39100.40600.99400.452100 | Internal Plaster | 119.94d | 2025-12-16 | 2026-04-15 | 3585SS+17.88d |  | 7 day week With NGT Ban | 7581593 |
| 3581 | 37200.37300.37500.38200.39100.40600.99400.452200 | Staircase railing fixing | 149.94d | 2026-03-20 | 2026-08-16 | 3583SS+26.75d, 3582SS+26.75d |  | 7 day week With NGT Ban | 7581603 |
| 3582 | 37200.37300.37500.38200.39100.40600.99400.452300 | Main staircase flooring | 149.94d | 2026-02-21 | 2026-07-21 | 3583SS+13.38d |  | 7 day week With NGT Ban | 7581613 |
| 3583 | 37200.37300.37500.38200.39100.40600.99400.452400 | Fire staircase flooring | 149.94d | 2026-02-07 | 2026-07-07 | 3580SS+13.38d, 3587SS+26.75d |  | 7 day week With NGT Ban | 7581623 |
| 3584 | 37200.37300.37500.38200.39100.40600.99400.452500 | Fire door work | 59.94d | 2026-03-20 | 2026-05-18 | 3582SS+26.75d, 3583SS+26.75d |  | 7 day week With NGT Ban | 7581633 |
| 3585 | 37200.37300.37500.38200.39100.40600.99400.452600 | Electrical wiring work | 119.94d | 2025-10-14 | 2026-03-28 | 3579SS+17.88d |  | 7 day week With NGT Ban | 7581643 |
| 3586 | 37200.37300.37500.38200.39100.40600.99400.452700 | Lobby flooring | 150d | 2025-10-17 | 2026-04-30 | 3585SS+3.38d |  | 7 day week With NGT Ban | 7581653 |
| 3587 | 37200.37300.37500.38200.39100.40600.99400.452800 | Ceiling & wall putty-primer | 109.94d | 2026-01-12 | 2026-05-02 | 3580SS+26.75d |  | 7 day week With NGT Ban | 7581663 |
| 3588 | 37200.37300.37500.38200.39100.40600.99400.452900 | Ceiling & wall painting | 99.94d | 2026-01-30 | 2026-05-09 | 3587SS+17.88d |  | 7 day week With NGT Ban | 7581673 |
| 3589 | 37200.37300.37500.38200.39100.40600.99400.453000 | Light fixture supply & installation | 44.94d | 2026-03-24 | 2026-05-08 | 3588SS+53.38d |  | 7 day week With NGT Ban | 7581683 |

| ID | WBS | Task | Duration | Start | Finish | Predecessors | Constraint | Calendar | Unique_Task_ID |
| --- | --- | --- | --- | --- | --- | --- | --- | --- | --- |
| 3590 | 37200.37300.37500.38200.39100.40600.46600 | **Balcony Glass Railing** | 67.81d | 2027-05-31 | 2027-08-07 |  | start no earlier than 2027-05-31 | 7 day week With NGT Ban | 134230 |
| 3591 | 37200.37300.37500.38200.39100.40600.46600.453100 | 1st Floor | 1.94d | 2027-05-31 | 2027-06-02 | 3659 |  | 7 day week With NGT Ban | 134240 |
| 3592 | 37200.37300.37500.38200.39100.40600.46600.453200 | 2nd Floor | 1.94d | 2027-06-02 | 2027-06-04 | 3591 |  | 7 day week With NGT Ban | 134250 |
| 3593 | 37200.37300.37500.38200.39100.40600.46600.453300 | 3rd Floor | 1.94d | 2027-06-04 | 2027-06-06 | 3592 |  | 7 day week With NGT Ban | 134260 |
| 3594 | 37200.37300.37500.38200.39100.40600.46600.453400 | 4th Floor | 1.94d | 2027-06-06 | 2027-06-08 | 3593 |  | 7 day week With NGT Ban | 134270 |
| 3595 | 37200.37300.37500.38200.39100.40600.46600.453500 | 5th Floor | 1.94d | 2027-06-08 | 2027-06-10 | 3594 |  | 7 day week With NGT Ban | 134280 |
| 3596 | 37200.37300.37500.38200.39100.40600.46600.453600 | 6th Floor | 1.94d | 2027-06-10 | 2027-06-11 | 3595 |  | 7 day week With NGT Ban | 134290 |
| 3597 | 37200.37300.37500.38200.39100.40600.46600.453700 | 7th Floor | 1.94d | 2027-06-12 | 2027-06-13 | 3596 |  | 7 day week With NGT Ban | 134300 |
| 3598 | 37200.37300.37500.38200.39100.40600.46600.453800 | 8th Floor | 1.94d | 2027-06-13 | 2027-06-15 | 3597 |  | 7 day week With NGT Ban | 134310 |
| 3599 | 37200.37300.37500.38200.39100.40600.46600.453900 | 9th Floor | 1.94d | 2027-06-15 | 2027-06-17 | 3598 |  | 7 day week With NGT Ban | 134320 |
| 3600 | 37200.37300.37500.38200.39100.40600.46600.454000 | 10th Floor | 1.94d | 2027-06-17 | 2027-06-19 | 3599 |  | 7 day week With NGT Ban | 134330 |
| 3601 | 37200.37300.37500.38200.39100.40600.46600.454100 | 11th Floor | 1.94d | 2027-06-19 | 2027-06-21 | 3600 |  | 7 day week With NGT Ban | 134340 |
| 3602 | 37200.37300.37500.38200.39100.40600.46600.454200 | 12th Floor | 1.94d | 2027-06-21 | 2027-06-23 | 3601 |  | 7 day week With NGT Ban | 134350 |
| 3603 | 37200.37300.37500.38200.39100.40600.46600.454300 | 13th Floor | 1.94d | 2027-06-23 | 2027-06-25 | 3602 |  | 7 day week With NGT Ban | 134360 |
| 3604 | 37200.37300.37500.38200.39100.40600.46600.454400 | 14th Floor | 1.94d | 2027-06-25 | 2027-06-27 | 3603 |  | 7 day week With NGT Ban | 134370 |
| 3605 | 37200.37300.37500.38200.39100.40600.46600.454500 | 15th Floor | 1.94d | 2027-06-27 | 2027-06-29 | 3604 |  | 7 day week With NGT Ban | 134380 |
| 3606 | 37200.37300.37500.38200.39100.40600.46600.454600 | 16th Floor | 1.94d | 2027-06-29 | 2027-07-01 | 3605 |  | 7 day week With NGT Ban | 134390 |
| 3607 | 37200.37300.37500.38200.39100.40600.46600.454700 | 17th Floor | 1.94d | 2027-07-01 | 2027-07-03 | 3606 |  | 7 day week With NGT Ban | 134400 |
| 3608 | 37200.37300.37500.38200.39100.40600.46600.454800 | 18th Floor | 1.94d | 2027-07-03 | 2027-07-05 | 3607 |  | 7 day week With NGT Ban | 134410 |
| 3609 | 37200.37300.37500.38200.39100.40600.46600.454900 | 19th Floor | 1.94d | 2027-07-05 | 2027-07-07 | 3608 |  | 7 day week With NGT Ban | 134420 |
| 3610 | 37200.37300.37500.38200.39100.40600.46600.455000 | 20th Floor | 1.94d | 2027-07-07 | 2027-07-09 | 3609 |  | 7 day week With NGT Ban | 134430 |
| 3611 | 37200.37300.37500.38200.39100.40600.46600.455100 | 21st Floor | 1.94d | 2027-07-09 | 2027-07-11 | 3610 |  | 7 day week With NGT Ban | 134440 |
| 3612 | 37200.37300.37500.38200.39100.40600.46600.455200 | 22nd Floor | 1.94d | 2027-07-11 | 2027-07-12 | 3611 |  | 7 day week With NGT Ban | 134450 |
| 3613 | 37200.37300.37500.38200.39100.40600.46600.455300 | 23rd Floor | 1.94d | 2027-07-13 | 2027-07-14 | 3612 |  | 7 day week With NGT Ban | 134460 |
| 3614 | 37200.37300.37500.38200.39100.40600.46600.455400 | 24th Floor | 1.94d | 2027-07-14 | 2027-07-16 | 3613 |  | 7 day week With NGT Ban | 134470 |
| 3615 | 37200.37300.37500.38200.39100.40600.46600.455500 | 25th Floor | 1.94d | 2027-07-16 | 2027-07-18 | 3614 |  | 7 day week With NGT Ban | 134480 |
| 3616 | 37200.37300.37500.38200.39100.40600.46600.455600 | 26th Floor | 1.94d | 2027-07-18 | 2027-07-20 | 3615 |  | 7 day week With NGT Ban | 134490 |
| 3617 | 37200.37300.37500.38200.39100.40600.46600.455700 | 27th Floor | 1.94d | 2027-07-20 | 2027-07-22 | 3616 |  | 7 day week With NGT Ban | 134500 |
| 3618 | 37200.37300.37500.38200.39100.40600.46600.455800 | 28th Floor | 1.94d | 2027-07-22 | 2027-07-24 | 3617 |  | 7 day week With NGT Ban | 134510 |
| 3619 | 37200.37300.37500.38200.39100.40600.46600.455900 | 29th Floor | 1.94d | 2027-07-24 | 2027-07-26 | 3618 |  | 7 day week With NGT Ban | 134520 |
| 3620 | 37200.37300.37500.38200.39100.40600.46600.456000 | 30th Floor | 1.94d | 2027-07-26 | 2027-07-28 | 3619 |  | 7 day week With NGT Ban | 134530 |
| 3621 | 37200.37300.37500.38200.39100.40600.46600.456100 | 31st Floor | 1.94d | 2027-07-28 | 2027-07-30 | 3620 |  | 7 day week With NGT Ban | 134540 |
| 3622 | 37200.37300.37500.38200.39100.40600.46600.456200 | 32nd Floor | 1.94d | 2027-07-30 | 2027-08-01 | 3621 |  | 7 day week With NGT Ban | 134550 |
| 3623 | 37200.37300.37500.38200.39100.40600.46600.456300 | 33rd Floor | 1.94d | 2027-08-01 | 2027-08-03 | 3622 |  | 7 day week With NGT Ban | 134560 |
| 3624 | 37200.37300.37500.38200.39100.40600.46600.456400 | 34th Floor | 1.94d | 2027-08-03 | 2027-08-05 | 3623 |  | 7 day week With NGT Ban | 134570 |
| 3625 | 37200.37300.37500.38200.39100.40600.46600.456500 | 35th Floor | 1.94d | 2027-08-05 | 2027-08-07 | 3624 |  | 7 day week With NGT Ban | 134580 |

| ID | WBS | Task | Duration | Start | Finish | Predecessors | Constraint | Calendar | Unique_Task_ID |
| --- | --- | --- | --- | --- | --- | --- | --- | --- | --- |
| 3626 | 37200.37300.37500.38200.95400 | **MEP work** | 634.12d | 2026-02-07 | 2027-12-18 |  | start no earlier than 2026-02-07 | 7 day week With NGT Ban | 7569123 |
| 3627 | 37200.37300.37500.38200.95400.97500 | **Electrical work** | 233.25d | 2026-09-04 | 2027-06-09 |  | start no earlier than 2026-09-04 | 7 day week With NGT Ban | 7569193 |
| 3628 | 37200.37300.37500.38200.95400.97500.286700 | Cable Tray | 89.94d | 2026-09-04 | 2027-01-17 | 2974 |  | 7 day week With NGT Ban | 7574403 |
| 3629 | 37200.37300.37500.38200.95400.97500.286800 | Cable, main & sub main | 79.94d | 2026-10-14 | 2027-02-16 | 3628SS+40d |  | 7 day week With NGT Ban | 7574413 |
| 3630 | 37200.37300.37500.38200.95400.97500.286900 | LT panel & DB | 119.94d | 2027-01-17 | 2027-05-17 | 3628 |  | 7 day week With NGT Ban | 7574423 |
| 3631 | 37200.37300.37500.38200.95400.97500.287000 | Rising main | 89.94d | 2027-03-11 | 2027-06-09 | 3628FS+53.38d |  | 7 day week With NGT Ban | 7574433 |
| 3632 | 37200.37300.37500.38200.95400.97500.287100 | EARTHING Works | 59.94d | 2027-01-30 | 2027-03-31 | 3628FS+13.38d |  | 7 day week With NGT Ban | 7574443 |
| 3633 | 37200.37300.37500.38200.95400.97500.287200 | Advance lightening protection | 59.94d | 2026-10-15 | 2027-01-27 | 3577 |  | 7 day week With NGT Ban | 7574453 |
| 3634 | 37200.37300.37500.38200.95400.97500.287300 | Inverter | 34.94d | 2027-03-31 | 2027-05-05 | 3632 |  | 7 day week With NGT Ban | 7574463 |
| 3635 | 37200.37300.37500.38200.95400.97500.287400 | Energy meter | 59.94d | 2027-02-16 | 2027-04-17 | 3629 |  | 7 day week With NGT Ban | 7574473 |
| 3636 | 37200.37300.37500.38200.95400.97500.287500 | Exhast fan | 59.94d | 2027-02-07 | 2027-04-08 | 3569FF+4.5d |  | 7 day week With NGT Ban | 7574483 |
| 3637 | 37200.37300.37500.38200.95400.97500.287600 | FTTH | 59.94d | 2027-03-22 | 2027-05-21 | 3632FS-9d |  | 7 day week With NGT Ban | 7574493 |
| 3638 | 37200.37300.37500.38200.95400.97500.287700 | Security System - FA & PA | 54.94d | 2027-03-27 | 2027-05-21 | 3637FF |  | 7 day week With NGT Ban | 7574503 |
| 3639 | 37200.37300.37500.38200.95400.97500.287800 | Solar water heater | 59.94d | 2026-10-15 | 2027-01-27 | 3577 |  | 7 day week With NGT Ban | 7574513 |
| 3640 | 37200.37300.37500.38200.95400.122300 | **Plumbing wrok** | 430.88d | 2026-03-06 | 2027-06-25 |  | start no earlier than 2026-03-06 | 7 day week With NGT Ban | 7569433 |
| 3641 | 37200.37300.37500.38200.95400.122300.287900 | Terrace looping | 44.94d | 2026-09-05 | 2026-10-19 | 3576 |  | 7 day week With NGT Ban | 7574523 |
| 3642 | 37200.37300.37500.38200.95400.122300.288000 | Shaft Plumbing | 119.94d | 2026-10-20 | 2027-04-02 | 3641 |  | 7 day week With NGT Ban | 7574533 |
| 3643 | 37200.37300.37500.38200.95400.122300.288100 | CP sanitary fixture supply | 74.94d | 2027-04-11 | 2027-06-25 | 3564, 3567FS+53.38d |  | 7 day week With NGT Ban | 7574543 |
| 3644 | 37200.37300.37500.38200.95400.122300.288200 | Cold & flushing water supply | 89.94d | 2026-03-06 | 2026-06-04 | 3580SS+80d |  | 7 day week With NGT Ban | 7574553 |
| 3645 | 37200.37300.37500.38200.95400.122300.288300 | Misc work | 29.94d | 2026-05-26 | 2026-06-25 | 3644FS-9d |  | 7 day week With NGT Ban | 7574563 |
| 3646 | 37200.37300.37500.38200.95400.128900 | **Fire fighting work** | 329.19d | 2026-02-07 | 2027-02-16 |  | start no earlier than 2026-02-07 | 7 day week With NGT Ban | 7569553 |
| 3647 | 37200.37300.37500.38200.95400.128900.288400 | Fire hydrant work | 89.94d | 2026-02-07 | 2026-05-08 | 3580SS+53.38d |  | 7 day week With NGT Ban | 7574573 |
| 3648 | 37200.37300.37500.38200.95400.128900.288500 | Sprinkler & piping work | 89.94d | 2026-06-04 | 2026-09-02 | 3647FS+26.75d |  | 7 day week With NGT Ban | 7574583 |
| 3649 | 37200.37300.37500.38200.95400.128900.288600 | Shaft Downtake works | 89.94d | 2026-09-05 | 2027-01-17 | 3576 |  | 7 day week With NGT Ban | 7574593 |
| 3650 | 37200.37300.37500.38200.95400.128900.288700 | Connection to pump room | 29.94d | 2027-01-18 | 2027-02-16 | 3649 |  | 7 day week With NGT Ban | 7574603 |

| ID | WBS | Task | Duration | Start | Finish | Predecessors | Complete | Constraint | Calendar | Unique_Task_ID |
| --- | --- | --- | --- | --- | --- | --- | --- | --- | --- | --- |
| 3651 | 37200.37300.37500.38200.95400.183800 | **Lift work** | 169.81d | 2026-09-04 | 2027-04-07 |  |  | start no earlier than 2026-09-04 | 7 day week With NGT Ban | 7571223 |
| 3652 | 37200.37300.37500.38200.95400.183800.288800 | Lift Shaft Handover | 39.94d | 2026-09-04 | 2026-10-14 | 2974 |  |  | 7 day week With NGT Ban | 7574613 |
| 3653 | 37200.37300.37500.38200.95400.183800.288900 | Lift installation work | 44.94d | 2026-10-14 | 2027-01-12 | 3652 |  |  | 7 day week With NGT Ban | 7574623 |
| 3654 | 37200.37300.37500.38200.95400.183800.289000 | Lift testing and commissioning | 84.94d | 2027-01-12 | 2027-04-07 | 3653 |  |  | 7 day week With NGT Ban | 7574633 |
| 3655 | 37200.37300.37500.38200.95400.193800 | **AC work** | 99.94d | 2027-09-09 | 2027-12-18 |  |  | start no earlier than 2027-09-09 | 7 day week With NGT Ban | 7571333 |
| 3656 | 37200.37300.37500.38200.95400.193800.289100 | Split AC | 99.94d | 2027-09-09 | 2027-12-18 | 3672FS-26.75d |  |  | 7 day week With NGT Ban | 7574643 |
| 3657 | 37200.37300.37500.38200.126100 | **Tower Completion** | 253.88d | 2026-10-18 | 2027-08-13 |  |  | start no earlier than 2026-10-18 | 7 day week With NGT Ban | 7569473 |
| 3658 | 37200.37300.37500.38200.126100.226000 | SURFACE PREPARATION | 79.94d | 2026-10-18 | 2027-02-20 | 3012FS+1.88d |  |  | 7 day week With NGT Ban | 7571763 |
| 3659 | 37200.37300.37500.38200.126100.226100 | External Painting | 99.94d | 2027-02-20 | 2027-05-31 | 3658 |  |  | 7 day week With NGT Ban | 7571773 |
| 3660 | 37200.37300.37500.38200.126100.226200 | Final coat of painting | 74d | 2027-05-31 | 2027-08-13 | 3659 |  |  | 7 day week With NGT Ban | 7571783 |
| 3661 | 37200.37300.37500.38200.126100.226300 | Misc. work | 59.94d | 2027-05-31 | 2027-07-30 | 3659 |  |  | 7 day week With NGT Ban | 7571793 |
| 3662 | 37200.37300.37500.38200.192900 | **Basement lobby** | 60d | 2026-04-30 | 2026-06-29 |  |  | start no earlier than 2026-04-30 | 7 day week With NGT Ban | 7571353 |
| 3663 | 37200.37300.37500.38200.192900.226400 | Basement lobby | 60d | 2026-04-30 | 2026-06-29 | 3586 |  |  | 7 day week With NGT Ban | 7571803 |
| 3664 | 37200.37300.37500.38200.114000 | **Post OC activities** | 333.94d | 2027-04-08 | 2028-03-07 |  |  | start no earlier than 2027-04-08 | 7 day week With NGT Ban | 7569323 |
| 3665 | 37200.37300.37500.38200.114000.226500 | Wardrobe installation | 179.94d | 2027-09-09 | 2028-03-07 | 3672FS-26.75d |  |  | 7 day week With NGT Ban | 7571813 |
| 3666 | 37200.37300.37500.38200.114000.226600 | CP & SANITARYWARE | 119.94d | 2027-09-09 | 2028-01-07 | 3672FS-26.75d |  |  | 7 day week With NGT Ban | 7571823 |
| 3667 | 37200.37300.37500.38200.114000.226700 | Wooden Flooring | 179.94d | 2027-09-09 | 2028-03-07 | 3672FS-26.75d |  |  | 7 day week With NGT Ban | 7571833 |
| 3668 | 37200.37300.37500.38200.114000.226800 | Electrical Fixtures And Fittings | 119.94d | 2027-04-08 | 2027-08-06 | 3572 |  |  | 7 day week With NGT Ban | 7571843 |
| 3669 | 37200.37300.37500.38200.114000.226900 | Modular Kitchen | 179.94d | 2027-09-09 | 2028-03-07 | 3665SS |  |  | 7 day week With NGT Ban | 7571853 |
| 3670 | 37200.37300.37500.38200.114000.227000 | Final Coat Paint | 89.94d | 2027-09-23 | 2027-12-22 | 3672FS-13.38d |  |  | 7 day week With NGT Ban | 7571863 |
| 3671 | 37200.37300.37500.38200.216300 | OC Application/Readiness | 0d | 2027-08-13 | 2027-08-13 | 2974, 3581FS+7.12d, 3643, 3589, 3574, 3584, 3625, 3630, 3631, 3633, 3634, 3635, 3636, 3638, 3639, 3642, 3645, 3648, 3650, 3654, 3660, 3661, 3663 |  |  | 7 day week With NGT Ban | 7571433 |
| 3672 | 37200.37300.37500.38200.216400 | OC Receipt | 0.94d | 2027-10-05 | 2027-10-06 | 3671FS+53.38d |  |  | 7 day week With NGT Ban | 7571443 |
| 3673 | 37200.37300.37500.38200.216500 | Offer To Possession | 29.94d | 2028-03-07 | 2028-04-06 | 3665, 3666, 3667, 3668, 3669, 3670 |  |  | 7 day week With NGT Ban | 7571453 |
| 3674 | 37200.37300.37500.38300 | **Tower 1** | 1450.06d | 2023-09-30 | 2028-03-02 |  | 4% | start no earlier than 2023-09-30 | 7 day week With NGT Ban | 122910 |
| 3675 | 37200.37300.37500.38300.96900 | **Substructure** | 628.06d | 2023-09-30 | 2025-09-02 |  | 63% | start no earlier than 2023-09-30 | 7 day week With NGT Ban | 123350 |
| 3676 | 37200.37300.37500.38300.96900.114100 | **Soil Bed Preparation** | 553.5d | 2023-09-30 | 2025-06-19 |  | 77% | start no earlier than 2023-09-30 | 7 day week With NGT Ban | 123370 |
| 3677 | 37200.37300.37500.38300.96900.114100.198500 | Test Piling | 74.94d | 2023-09-30 | 2024-01-27 |  | 100% | start no earlier than 2023-09-30 | 7 day week With NGT Ban | 124030 |
| 3678 | 37200.37300.37500.38300.96900.114100.198400 | Excavation | 29.94d | 2024-01-10 | 2024-02-08 | 7SS+36.74d | 100% | start no earlier than 2024-01-10 | 7 day week With NGT Ban | 124040 |
| 3679 | 37200.37300.37500.38300.96900.114100.198300 | Main Piling Work | 182.56d | 2024-04-12 | 2024-10-11 | 7FS+227.55d | 100% | start no earlier than 2024-04-12 | 7 day week With NGT Ban | 124050 |
| 3680 | 37200.37300.37500.38300.96900.114100.289200 | Anti-termite | 4.94d | 2025-04-01 | 2025-04-05 | 3679FF-92.8d |  |  | 7 day week With NGT Ban | 124060 |
| 3681 | 37200.37300.37500.38300.96900.114100.198100 | PCC | 9.81d | 2024-10-18 | 2024-10-27 | 3678FS+55.05d, 3680SS+12.95d | 100% | start no earlier than 2024-10-18 | 7 day week With NGT Ban | 124070 |
| 3682 | 37200.37300.37500.38300.96900.114100.1339000 | Backfilling | 20.06d | 2025-04-01 | 2025-04-21 |  |  | start no earlier than 2025-04-01 | 7 day week With NGT Ban | 124071 |
| 3683 | 37200.37300.37500.38300.96900.114100.289300 | Backfilling | 59.94d | 2025-04-21 | 2025-06-19 | 3696, 3682 |  |  | 7 day week With NGT Ban | 124080 |

| ID | WBS | Task | Duration | Start | Finish | Predecessors | Complete | Constraint | Calendar | Unique_Task_ID |
| --- | --- | --- | --- | --- | --- | --- | --- | --- | --- | --- |
| 3684 | 37200.37300.37500.38300.96900.101800 | **RCC Structure** | 118.5d | 2024-12-05 | 2025-03-29 |  | 100% | start no earlier than 2024-12-05 | 7 day week With NGT Ban | 123360 |
| 3685 | 37200.37300.37500.38300.96900.101800.146700 | **Raft Foundation** | 30.5d | 2024-12-05 | 2024-12-31 |  | 100% | start no earlier than 2024-12-05 | 7 day week With NGT Ban | 123840 |
| 3686 | 37200.37300.37500.38300.96900.101800.146700.205700 | Reinforcement | 30d | 2024-12-05 | 2024-12-31 | 3681FS-29.5d | 100% | start no earlier than 2024-12-05 | 7 day week With NGT Ban | 124750 |
| 3687 | 37200.37300.37500.38300.96900.101800.146700.205800 | Formwork | 11d | 2024-12-17 | 2024-12-29 | 3686FF+5d | 100% | start no earlier than 2024-12-17 | 7 day week With NGT Ban | 124760 |
| 3688 | 37200.37300.37500.38300.96900.101800.146700.205900 | Concreting | 4d | 2024-12-28 | 2024-12-31 | 3687FF-2d | 100% | start no earlier than 2024-12-28 | 7 day week With NGT Ban | 124770 |
| 3689 | 37200.37300.37500.38300.96900.101800.146800 | **Basement 1 Slab** | 32d | 2025-01-01 | 2025-02-01 |  | 100% | start no earlier than 2025-01-01 | 7 day week With NGT Ban | 123830 |
| 3690 | 37200.37300.37500.38300.96900.101800.146800.206000 | Reinforcement | 23d | 2025-01-01 | 2025-02-01 | 3688FS+1d | 100% | start no earlier than 2025-01-01 | 7 day week With NGT Ban | 124780 |
| 3691 | 37200.37300.37500.38300.96900.101800.146800.207200 | Formwork | 23d | 2025-01-03 | 2025-02-01 | 3690FF | 100% | start no earlier than 2025-01-03 | 7 day week With NGT Ban | 124790 |
| 3692 | 37200.37300.37500.38300.96900.101800.146800.207300 | Concreting | 1.25d | 2025-01-25 | 2025-02-01 | 3691FF-0.75d | 100% | start no earlier than 2025-01-25 | 7 day week With NGT Ban | 124800 |
| 3693 | 37200.37300.37500.38300.96900.101800.146900 | **Basement 2 Slab/GF** | 26d | 2025-01-26 | 2025-02-20 |  | 100% | start no earlier than 2025-01-26 | 7 day week With NGT Ban | 123820 |
| 3694 | 37200.37300.37500.38300.96900.101800.146900.207400 | Reinforcement | 22d | 2025-01-26 | 2025-02-16 | 3692FS-6.25d | 100% | start no earlier than 2025-01-26 | 7 day week With NGT Ban | 124810 |
| 3695 | 37200.37300.37500.38300.96900.101800.146900.207500 | Formwork | 22d | 2025-01-29 | 2025-02-19 | 3694FF+3d | 100% | start no earlier than 2025-01-29 | 7 day week With NGT Ban | 124820 |
| 3696 | 37200.37300.37500.38300.96900.101800.146900.207600 | Concreting | 2d | 2025-02-19 | 2025-02-20 | 3695FS-1d | 100% | start no earlier than 2025-02-19 | 7 day week With NGT Ban | 124830 |
| 3697 | 37200.37300.37500.38300.96900.101800.147000 | **Podium /Ground Floor Slab** | 38d | 2025-02-20 | 2025-03-29 |  | 100% | start no earlier than 2025-02-20 | 7 day week With NGT Ban | 123810 |
| 3698 | 37200.37300.37500.38300.96900.101800.147000.207700 | Reinforcement | 20d | 2025-02-20 | 2025-03-27 | 3696 | 100% | start no earlier than 2025-02-20 | 7 day week With NGT Ban | 124840 |
| 3699 | 37200.37300.37500.38300.96900.101800.147000.207800 | Formwork | 18d | 2025-02-26 | 2025-03-28 | 3698FF+0.75d | 100% | start no earlier than 2025-02-26 | 7 day week With NGT Ban | 124850 |
| 3700 | 37200.37300.37500.38300.96900.101800.147000.207900 | Concreting | 2d | 2025-03-28 | 2025-03-29 | 3699 | 100% | start no earlier than 2025-03-28 | 7 day week With NGT Ban | 124860 |
| 3701 | 37200.37300.37500.38300.96900.129000 | **Substructure Finishing** | 129.81d | 2025-04-25 | 2025-09-02 |  |  | start no earlier than 2025-04-25 | 7 day week With NGT Ban | 123410 |
| 3702 | 37200.37300.37500.38300.96900.129000.289400 | Masonary work | 44.94d | 2025-04-25 | 2025-06-09 | 3700FS+26.75d |  |  | 7 day week With NGT Ban | 124090 |
| 3703 | 37200.37300.37500.38300.96900.129000.289500 | Plaster | 39.94d | 2025-06-09 | 2025-07-19 | 3702 |  |  | 7 day week With NGT Ban | 124100 |
| 3704 | 37200.37300.37500.38300.96900.129000.289600 | Structural steel | 59.94d | 2025-05-22 | 2025-07-21 | 3700FS+53.38d |  |  | 7 day week With NGT Ban | 124110 |
| 3705 | 37200.37300.37500.38300.96900.129000.289700 | White Wash | 44.94d | 2025-07-19 | 2025-09-02 | 3703 |  |  | 7 day week With NGT Ban | 124120 |
| 3706 | 37200.37300.37500.38300.38900 | **Superstructure** | 730.94d | 2025-03-31 | 2027-06-29 |  |  | start no earlier than 2025-03-31 | 7 day week With NGT Ban | 122920 |
| 3707 | 37200.37300.37500.38300.38900.43700 | **RCC structure** | 439.38d | 2025-03-31 | 2026-07-28 |  |  | start no earlier than 2025-03-31 | 7 day week With NGT Ban | 122950 |
| 3708 | 37200.37300.37500.38300.38900.43700.147100 | **1st floor slab** | 24d | 2025-03-31 | 2025-04-23 |  | 4% | start no earlier than 2025-03-31 | 7 day week With NGT Ban | 123430 |
| 3709 | 37200.37300.37500.38300.38900.43700.147100.208000 | Reinforcement | 20d | 2025-03-31 | 2025-04-19 | 3700FS+1d | 10% | start no earlier than 2025-03-31 | 7 day week With NGT Ban | 124870 |
| 3710 | 37200.37300.37500.38300.38900.43700.147100.456600 | Wall conduiting | 4d | 2025-04-01 | 2025-04-05 | 3709SS+2.75d |  |  | 7 day week With NGT Ban | 124880 |
| 3711 | 37200.37300.37500.38300.38900.43700.147100.456700 | Formwork | 21d | 2025-04-02 | 2025-04-22 | 3709SS+3d |  |  | 7 day week With NGT Ban | 124890 |
| 3712 | 37200.37300.37500.38300.38900.43700.147100.456800 | Concreting | 1d | 2025-04-23 | 2025-04-23 | 3711 |  |  | 7 day week With NGT Ban | 124900 |

| ID | WBS | Task | Duration | Start | Finish | Predecessors | Constraint | Calendar | Unique_Task_ID |
| --- | --- | --- | --- | --- | --- | --- | --- | --- | --- |
| 3713 | 37200.37300.37500.38300.38900.43700.147200 | **2nd floor slab** | 21d | 2025-04-25 | 2025-05-15 |  | start no earlier than 2025-04-25 | 7 day week With NGT Ban | 123440 |
| 3714 | 37200.37300.37500.38300.38900.43700.147200.456900 | Reinforcement | 20d | 2025-04-25 | 2025-05-14 | 3712FS+1d |  | 7 day week With NGT Ban | 124910 |
| 3715 | 37200.37300.37500.38300.38900.43700.147200.457000 | Wall conduiting | 4d | 2025-04-27 | 2025-05-01 | 3710, 3714SS+2.75d |  | 7 day week With NGT Ban | 124920 |
| 3716 | 37200.37300.37500.38300.38900.43700.147200.457100 | Formwork | 17d | 2025-04-28 | 2025-05-14 | 3714SS+3d |  | 7 day week With NGT Ban | 124930 |
| 3717 | 37200.37300.37500.38300.38900.43700.147200.457200 | Concreting | 1d | 2025-05-15 | 2025-05-15 | 3716 |  | 7 day week With NGT Ban | 124940 |
| 3718 | 37200.37300.37500.38300.38900.43700.147300 | **3rd floor slab** | 15d | 2025-05-17 | 2025-05-31 |  | start no earlier than 2025-05-17 | 7 day week With NGT Ban | 123450 |
| 3719 | 37200.37300.37500.38300.38900.43700.147300.457300 | Reinforcement | 11d | 2025-05-17 | 2025-05-27 | 3717FS+1d |  | 7 day week With NGT Ban | 124950 |
| 3720 | 37200.37300.37500.38300.38900.43700.147300.457400 | Wall conduiting | 3d | 2025-05-19 | 2025-05-22 | 3715, 3719SS+2.75d |  | 7 day week With NGT Ban | 124960 |
| 3721 | 37200.37300.37500.38300.38900.43700.147300.457500 | Formwork | 11d | 2025-05-20 | 2025-05-30 | 3719SS+3d |  | 7 day week With NGT Ban | 124970 |
| 3722 | 37200.37300.37500.38300.38900.43700.147300.457600 | Concreting | 1d | 2025-05-31 | 2025-05-31 | 3721 |  | 7 day week With NGT Ban | 124980 |
| 3723 | 37200.37300.37500.38300.38900.43700.147400 | **4th floor slab** | 9d | 2025-06-02 | 2025-06-10 |  | start no earlier than 2025-06-02 | 7 day week With NGT Ban | 123460 |
| 3724 | 37200.37300.37500.38300.38900.43700.147400.457700 | Reinforcement | 8d | 2025-06-02 | 2025-06-09 | 3722FS+1d |  | 7 day week With NGT Ban | 124990 |
| 3725 | 37200.37300.37500.38300.38900.43700.147400.457800 | Wall conduiting | 3d | 2025-06-03 | 2025-06-05 | 3720, 3724SS+1d |  | 7 day week With NGT Ban | 125000 |
| 3726 | 37200.37300.37500.38300.38900.43700.147400.457900 | Formwork | 7d | 2025-06-03 | 2025-06-09 | 3724SS+1d |  | 7 day week With NGT Ban | 125010 |
| 3727 | 37200.37300.37500.38300.38900.43700.147400.458000 | Concreting | 1d | 2025-06-10 | 2025-06-10 | 3726 |  | 7 day week With NGT Ban | 125020 |
| 3728 | 37200.37300.37500.38300.38900.43700.147500 | **5th floor slab** | 9d | 2025-06-12 | 2025-06-20 |  | start no earlier than 2025-06-12 | 7 day week With NGT Ban | 123470 |
| 3729 | 37200.37300.37500.38300.38900.43700.147500.458100 | Reinforcement | 8d | 2025-06-12 | 2025-06-19 | 3727FS+1d |  | 7 day week With NGT Ban | 125030 |
| 3730 | 37200.37300.37500.38300.38900.43700.147500.458200 | Wall conduiting | 3d | 2025-06-13 | 2025-06-15 | 3725, 3729SS+1d |  | 7 day week With NGT Ban | 125040 |
| 3731 | 37200.37300.37500.38300.38900.43700.147500.458300 | Formwork | 7d | 2025-06-13 | 2025-06-19 | 3729SS+1d |  | 7 day week With NGT Ban | 125050 |
| 3732 | 37200.37300.37500.38300.38900.43700.147500.458400 | Concreting | 1d | 2025-06-20 | 2025-06-20 | 3731 |  | 7 day week With NGT Ban | 125060 |
| 3733 | 37200.37300.37500.38300.38900.43700.147600 | **6th floor slab** | 9d | 2025-06-22 | 2025-06-30 |  | start no earlier than 2025-06-22 | 7 day week With NGT Ban | 123480 |
| 3734 | 37200.37300.37500.38300.38900.43700.147600.458500 | Reinforcement | 8d | 2025-06-22 | 2025-06-29 | 3732FS+1d |  | 7 day week With NGT Ban | 125070 |
| 3735 | 37200.37300.37500.38300.38900.43700.147600.458600 | Wall conduiting | 3d | 2025-06-23 | 2025-06-25 | 3730, 3734SS+1d |  | 7 day week With NGT Ban | 125080 |
| 3736 | 37200.37300.37500.38300.38900.43700.147600.458700 | Formwork | 7d | 2025-06-23 | 2025-06-29 | 3734SS+1d |  | 7 day week With NGT Ban | 125090 |
| 3737 | 37200.37300.37500.38300.38900.43700.147600.458800 | Concreting | 1d | 2025-06-30 | 2025-06-30 | 3736 |  | 7 day week With NGT Ban | 125100 |

| ID | WBS | Task | Duration | Start | Finish | Predecessors | Constraint | Calendar | Unique_Task_ID |
| --- | --- | --- | --- | --- | --- | --- | --- | --- | --- |
| 3738 | 37200.37300.37500.38300.38900.43700.147700 | **7th floor slab** | 9d | 2025-07-02 | 2025-07-10 |  | start no earlier than 2025-07-02 | 7 day week With NGT Ban | 123490 |
| 3739 | 37200.37300.37500.38300.38900.43700.147700.458900 | Reinforcement | 8d | 2025-07-02 | 2025-07-09 | 3737FS+1d |  | 7 day week With NGT Ban | 125110 |
| 3740 | 37200.37300.37500.38300.38900.43700.147700.459000 | Wall conduiting | 3d | 2025-07-03 | 2025-07-05 | 3735, 3739SS+1d |  | 7 day week With NGT Ban | 125120 |
| 3741 | 37200.37300.37500.38300.38900.43700.147700.459100 | Formwork | 7d | 2025-07-03 | 2025-07-09 | 3739SS+1d |  | 7 day week With NGT Ban | 125130 |
| 3742 | 37200.37300.37500.38300.38900.43700.147700.459200 | Concreting | 1d | 2025-07-10 | 2025-07-10 | 3741 |  | 7 day week With NGT Ban | 125140 |
| 3743 | 37200.37300.37500.38300.38900.43700.147800 | **8th floor slab** | 12d | 2025-07-12 | 2025-07-23 |  | start no earlier than 2025-07-12 | 7 day week With NGT Ban | 123500 |
| 3744 | 37200.37300.37500.38300.38900.43700.147800.459300 | Reinforcement | 10d | 2025-07-12 | 2025-07-21 | 3742FS+1d |  | 7 day week With NGT Ban | 125150 |
| 3745 | 37200.37300.37500.38300.38900.43700.147800.459400 | Wall conduiting | 3d | 2025-07-13 | 2025-07-15 | 3740, 3744SS+1d |  | 7 day week With NGT Ban | 125160 |
| 3746 | 37200.37300.37500.38300.38900.43700.147800.459500 | Formwork | 10d | 2025-07-13 | 2025-07-22 | 3744SS+1d |  | 7 day week With NGT Ban | 125170 |
| 3747 | 37200.37300.37500.38300.38900.43700.147800.459600 | Concreting | 1d | 2025-07-23 | 2025-07-23 | 3746 |  | 7 day week With NGT Ban | 125180 |
| 3748 | 37200.37300.37500.38300.38900.43700.147900 | **9th floor slab** | 9d | 2025-07-25 | 2025-08-02 |  | start no earlier than 2025-07-25 | 7 day week With NGT Ban | 123510 |
| 3749 | 37200.37300.37500.38300.38900.43700.147900.459700 | Reinforcement | 8d | 2025-07-25 | 2025-08-01 | 3747FS+1d |  | 7 day week With NGT Ban | 125190 |
| 3750 | 37200.37300.37500.38300.38900.43700.147900.459800 | Wall conduiting | 3d | 2025-07-26 | 2025-07-28 | 3745, 3749SS+1d |  | 7 day week With NGT Ban | 125200 |
| 3751 | 37200.37300.37500.38300.38900.43700.147900.459900 | Formwork | 7d | 2025-07-26 | 2025-08-01 | 3749SS+1d |  | 7 day week With NGT Ban | 125210 |
| 3752 | 37200.37300.37500.38300.38900.43700.147900.460000 | Concreting | 1d | 2025-08-02 | 2025-08-02 | 3751 |  | 7 day week With NGT Ban | 125220 |
| 3753 | 37200.37300.37500.38300.38900.43700.148000 | **10th floor slab** | 9d | 2025-08-04 | 2025-08-12 |  | start no earlier than 2025-08-04 | 7 day week With NGT Ban | 123520 |
| 3754 | 37200.37300.37500.38300.38900.43700.148000.460100 | Reinforcement | 8d | 2025-08-04 | 2025-08-11 | 3752FS+1d |  | 7 day week With NGT Ban | 125230 |
| 3755 | 37200.37300.37500.38300.38900.43700.148000.460200 | Wall conduiting | 3d | 2025-08-05 | 2025-08-07 | 3750, 3754SS+1d |  | 7 day week With NGT Ban | 125240 |
| 3756 | 37200.37300.37500.38300.38900.43700.148000.460300 | Formwork | 7d | 2025-08-05 | 2025-08-11 | 3754SS+1d |  | 7 day week With NGT Ban | 125250 |
| 3757 | 37200.37300.37500.38300.38900.43700.148000.460400 | Concreting | 1d | 2025-08-12 | 2025-08-12 | 3756 |  | 7 day week With NGT Ban | 125260 |
| 3758 | 37200.37300.37500.38300.38900.43700.148100 | **11th floor slab** | 9d | 2025-08-14 | 2025-08-22 |  | start no earlier than 2025-08-14 | 7 day week With NGT Ban | 123530 |
| 3759 | 37200.37300.37500.38300.38900.43700.148100.460500 | Reinforcement | 8d | 2025-08-14 | 2025-08-21 | 3757FS+1d |  | 7 day week With NGT Ban | 125270 |
| 3760 | 37200.37300.37500.38300.38900.43700.148100.460600 | Wall conduiting | 3d | 2025-08-15 | 2025-08-17 | 3755, 3759SS+1d |  | 7 day week With NGT Ban | 125280 |
| 3761 | 37200.37300.37500.38300.38900.43700.148100.460700 | Formwork | 7d | 2025-08-15 | 2025-08-21 | 3759SS+1d |  | 7 day week With NGT Ban | 125290 |
| 3762 | 37200.37300.37500.38300.38900.43700.148100.460800 | Concreting | 1d | 2025-08-22 | 2025-08-22 | 3761 |  | 7 day week With NGT Ban | 125300 |

| ID | WBS | Task | Duration | Start | Finish | Predecessors | Constraint | Calendar | Unique_Task_ID |
| --- | --- | --- | --- | --- | --- | --- | --- | --- | --- |
| 3763 | 37200.37300.37500.38300.38900.43700.148200 | **12th floor slab** | 9d | 2025-08-24 | 2025-09-01 |  | start no earlier than 2025-08-24 | 7 day week With NGT Ban | 123540 |
| 3764 | 37200.37300.37500.38300.38900.43700.148200.460900 | Reinforcement | 8d | 2025-08-24 | 2025-08-31 | 3762FS+1d |  | 7 day week With NGT Ban | 125310 |
| 3765 | 37200.37300.37500.38300.38900.43700.148200.461000 | Wall conduiting | 3d | 2025-08-25 | 2025-08-27 | 3760, 3764SS+1d |  | 7 day week With NGT Ban | 125320 |
| 3766 | 37200.37300.37500.38300.38900.43700.148200.461100 | Formwork | 7d | 2025-08-25 | 2025-08-31 | 3764SS+1d |  | 7 day week With NGT Ban | 125330 |
| 3767 | 37200.37300.37500.38300.38900.43700.148200.461200 | Concreting | 1d | 2025-09-01 | 2025-09-01 | 3766 |  | 7 day week With NGT Ban | 125340 |
| 3768 | 37200.37300.37500.38300.38900.43700.148300 | **13th floor slab** | 9d | 2025-09-03 | 2025-09-11 |  | start no earlier than 2025-09-03 | 7 day week With NGT Ban | 123550 |
| 3769 | 37200.37300.37500.38300.38900.43700.148300.461300 | Reinforcement | 8d | 2025-09-03 | 2025-09-10 | 3767FS+1d |  | 7 day week With NGT Ban | 125350 |
| 3770 | 37200.37300.37500.38300.38900.43700.148300.461400 | Wall conduiting | 3d | 2025-09-04 | 2025-09-06 | 3765, 3769SS+1d |  | 7 day week With NGT Ban | 125360 |
| 3771 | 37200.37300.37500.38300.38900.43700.148300.461500 | Formwork | 7d | 2025-09-04 | 2025-09-10 | 3769SS+1d |  | 7 day week With NGT Ban | 125370 |
| 3772 | 37200.37300.37500.38300.38900.43700.148300.461600 | Concreting | 1d | 2025-09-11 | 2025-09-11 | 3771 |  | 7 day week With NGT Ban | 125380 |
| 3773 | 37200.37300.37500.38300.38900.43700.148400 | **14th floor slab** | 9d | 2025-09-13 | 2025-09-21 |  | start no earlier than 2025-09-13 | 7 day week With NGT Ban | 123560 |
| 3774 | 37200.37300.37500.38300.38900.43700.148400.461700 | Reinforcement | 8d | 2025-09-13 | 2025-09-20 | 3772FS+1d |  | 7 day week With NGT Ban | 125390 |
| 3775 | 37200.37300.37500.38300.38900.43700.148400.461800 | Wall conduiting | 3d | 2025-09-14 | 2025-09-16 | 3770, 3774SS+1d |  | 7 day week With NGT Ban | 125400 |
| 3776 | 37200.37300.37500.38300.38900.43700.148400.461900 | Formwork | 7d | 2025-09-14 | 2025-09-20 | 3774SS+1d |  | 7 day week With NGT Ban | 125410 |
| 3777 | 37200.37300.37500.38300.38900.43700.148400.462000 | Concreting | 1d | 2025-09-21 | 2025-09-21 | 3776 |  | 7 day week With NGT Ban | 125420 |
| 3778 | 37200.37300.37500.38300.38900.43700.148500 | **15th floor slab** | 9d | 2025-09-23 | 2025-10-01 |  | start no earlier than 2025-09-23 | 7 day week With NGT Ban | 123570 |
| 3779 | 37200.37300.37500.38300.38900.43700.148500.462100 | Reinforcement | 8d | 2025-09-23 | 2025-09-30 | 3777FS+1d |  | 7 day week With NGT Ban | 125430 |
| 3780 | 37200.37300.37500.38300.38900.43700.148500.462200 | Wall conduiting | 3d | 2025-09-24 | 2025-09-26 | 3775, 3779SS+1d |  | 7 day week With NGT Ban | 125440 |
| 3781 | 37200.37300.37500.38300.38900.43700.148500.462300 | Formwork | 7d | 2025-09-24 | 2025-09-30 | 3779SS+1d |  | 7 day week With NGT Ban | 125450 |
| 3782 | 37200.37300.37500.38300.38900.43700.148500.462400 | Concreting | 1d | 2025-10-01 | 2025-10-01 | 3781 |  | 7 day week With NGT Ban | 125460 |
| 3783 | 37200.37300.37500.38300.38900.43700.148600 | **16th floor slab** | 12d | 2025-10-03 | 2025-10-14 |  | start no earlier than 2025-10-03 | 7 day week With NGT Ban | 123580 |
| 3784 | 37200.37300.37500.38300.38900.43700.148600.462500 | Reinforcement | 10d | 2025-10-03 | 2025-10-12 | 3782FS+1d |  | 7 day week With NGT Ban | 125470 |
| 3785 | 37200.37300.37500.38300.38900.43700.148600.462600 | Wall conduiting | 3d | 2025-10-04 | 2025-10-06 | 3780, 3784SS+1d |  | 7 day week With NGT Ban | 125480 |
| 3786 | 37200.37300.37500.38300.38900.43700.148600.462700 | Formwork | 10d | 2025-10-04 | 2025-10-13 | 3784SS+1d |  | 7 day week With NGT Ban | 125490 |
| 3787 | 37200.37300.37500.38300.38900.43700.148600.462800 | Concreting | 1d | 2025-10-14 | 2025-10-14 | 3786 |  | 7 day week With NGT Ban | 125500 |

| ID | WBS | Task | Duration | Start | Finish | Predecessors | Constraint | Calendar | Unique_Task_ID |
| --- | --- | --- | --- | --- | --- | --- | --- | --- | --- |
| 3788 | 37200.37300.37500.38300.38900.43700.148700 | **17th floor slab** | 9d | 2025-10-16 | 2025-10-24 |  | start no earlier than 2025-10-16 | 7 day week With NGT Ban | 123590 |
| 3789 | 37200.37300.37500.38300.38900.43700.148700.462900 | Reinforcement | 8d | 2025-10-16 | 2025-10-23 | 3787FS+1d |  | 7 day week With NGT Ban | 125510 |
| 3790 | 37200.37300.37500.38300.38900.43700.148700.463000 | Wall conduiting | 3d | 2025-10-17 | 2025-10-19 | 3785, 3789SS+1d |  | 7 day week With NGT Ban | 125520 |
| 3791 | 37200.37300.37500.38300.38900.43700.148700.463100 | Formwork | 7d | 2025-10-17 | 2025-10-23 | 3789SS+1d |  | 7 day week With NGT Ban | 125530 |
| 3792 | 37200.37300.37500.38300.38900.43700.148700.463200 | Concreting | 1d | 2025-10-24 | 2025-10-24 | 3791 |  | 7 day week With NGT Ban | 125540 |
| 3793 | 37200.37300.37500.38300.38900.43700.148800 | **18th floor slab** | 9d | 2025-10-26 | 2025-12-18 |  | start no earlier than 2025-10-26 | 7 day week With NGT Ban | 123600 |
| 3794 | 37200.37300.37500.38300.38900.43700.148800.463300 | Reinforcement | 8d | 2025-10-26 | 2025-12-17 | 3792FS+1d |  | 7 day week With NGT Ban | 125550 |
| 3795 | 37200.37300.37500.38300.38900.43700.148800.463400 | Wall conduiting | 3d | 2025-10-27 | 2025-10-29 | 3790, 3794SS+1d |  | 7 day week With NGT Ban | 125560 |
| 3796 | 37200.37300.37500.38300.38900.43700.148800.463500 | Formwork | 7d | 2025-10-27 | 2025-12-17 | 3794SS+1d |  | 7 day week With NGT Ban | 125570 |
| 3797 | 37200.37300.37500.38300.38900.43700.148800.463600 | Concreting | 1d | 2025-12-18 | 2025-12-18 | 3796 |  | 7 day week With NGT Ban | 125580 |
| 3798 | 37200.37300.37500.38300.38900.43700.148900 | **19th floor slab** | 8d | 2025-12-20 | 2025-12-27 |  | start no earlier than 2025-12-20 | 7 day week With NGT Ban | 123610 |
| 3799 | 37200.37300.37500.38300.38900.43700.148900.463700 | Reinforcement | 7d | 2025-12-20 | 2025-12-26 | 3797FS+1d |  | 7 day week With NGT Ban | 125590 |
| 3800 | 37200.37300.37500.38300.38900.43700.148900.463800 | Wall conduiting | 3d | 2025-12-21 | 2025-12-23 | 3795, 3799SS+1d |  | 7 day week With NGT Ban | 125600 |
| 3801 | 37200.37300.37500.38300.38900.43700.148900.463900 | Formwork | 6d | 2025-12-21 | 2025-12-26 | 3799SS+1d |  | 7 day week With NGT Ban | 125610 |
| 3802 | 37200.37300.37500.38300.38900.43700.148900.464000 | Concreting | 1d | 2025-12-27 | 2025-12-27 | 3801 |  | 7 day week With NGT Ban | 125620 |
| 3803 | 37200.37300.37500.38300.38900.43700.149000 | **20th floor slab** | 8d | 2025-12-30 | 2026-01-06 |  | start no earlier than 2025-12-30 | 7 day week With NGT Ban | 123620 |
| 3804 | 37200.37300.37500.38300.38900.43700.149000.464100 | Reinforcement | 7d | 2025-12-30 | 2026-01-05 | 3802FS+2d |  | 7 day week With NGT Ban | 125630 |
| 3805 | 37200.37300.37500.38300.38900.43700.149000.464200 | Wall conduiting | 3d | 2025-12-31 | 2026-01-02 | 3800, 3804SS+1d |  | 7 day week With NGT Ban | 125640 |
| 3806 | 37200.37300.37500.38300.38900.43700.149000.464300 | Formwork | 6d | 2025-12-31 | 2026-01-05 | 3804SS+1d |  | 7 day week With NGT Ban | 125650 |
| 3807 | 37200.37300.37500.38300.38900.43700.149000.464400 | Concreting | 1d | 2026-01-06 | 2026-01-06 | 3806 |  | 7 day week With NGT Ban | 125660 |
| 3808 | 37200.37300.37500.38300.38900.43700.149100 | **21st floor slab** | 8d | 2026-01-08 | 2026-01-15 |  | start no earlier than 2026-01-08 | 7 day week With NGT Ban | 123630 |
| 3809 | 37200.37300.37500.38300.38900.43700.149100.464500 | Reinforcement | 7d | 2026-01-08 | 2026-01-14 | 3807FS+1d |  | 7 day week With NGT Ban | 125670 |
| 3810 | 37200.37300.37500.38300.38900.43700.149100.464600 | Wall conduiting | 3d | 2026-01-09 | 2026-01-11 | 3805, 3809SS+1d |  | 7 day week With NGT Ban | 125680 |
| 3811 | 37200.37300.37500.38300.38900.43700.149100.464700 | Formwork | 6d | 2026-01-09 | 2026-01-14 | 3809SS+1d |  | 7 day week With NGT Ban | 125690 |
| 3812 | 37200.37300.37500.38300.38900.43700.149100.464800 | Concreting | 1d | 2026-01-15 | 2026-01-15 | 3811 |  | 7 day week With NGT Ban | 125700 |

| ID | WBS | Task | Duration | Start | Finish | Predecessors | Constraint | Calendar | Unique_Task_ID |
| --- | --- | --- | --- | --- | --- | --- | --- | --- | --- |
| 3813 | 37200.37300.37500.38300.38900.43700.149200 | **22nd floor slab** | 8d | 2026-01-17 | 2026-01-24 |  | start no earlier than 2026-01-17 | 7 day week With NGT Ban | 123640 |
| 3814 | 37200.37300.37500.38300.38900.43700.149200.464900 | Reinforcement | 7d | 2026-01-17 | 2026-01-23 | 3812FS+1d |  | 7 day week With NGT Ban | 125710 |
| 3815 | 37200.37300.37500.38300.38900.43700.149200.465000 | Wall conduiting | 3d | 2026-01-18 | 2026-01-20 | 3810, 3814SS+1d |  | 7 day week With NGT Ban | 125720 |
| 3816 | 37200.37300.37500.38300.38900.43700.149200.465100 | Formwork | 6d | 2026-01-18 | 2026-01-23 | 3814SS+1d |  | 7 day week With NGT Ban | 125730 |
| 3817 | 37200.37300.37500.38300.38900.43700.149200.465200 | Concreting | 1d | 2026-01-24 | 2026-01-24 | 3816 |  | 7 day week With NGT Ban | 125740 |
| 3818 | 37200.37300.37500.38300.38900.43700.149300 | **23rd floor slab** | 8d | 2026-01-26 | 2026-02-02 |  | start no earlier than 2026-01-26 | 7 day week With NGT Ban | 123650 |
| 3819 | 37200.37300.37500.38300.38900.43700.149300.465300 | Reinforcement | 7d | 2026-01-26 | 2026-02-01 | 3817FS+1d |  | 7 day week With NGT Ban | 125750 |
| 3820 | 37200.37300.37500.38300.38900.43700.149300.465400 | Wall conduiting | 3d | 2026-01-27 | 2026-01-29 | 3815, 3819SS+1d |  | 7 day week With NGT Ban | 125760 |
| 3821 | 37200.37300.37500.38300.38900.43700.149300.465500 | Formwork | 6d | 2026-01-27 | 2026-02-01 | 3819SS+1d |  | 7 day week With NGT Ban | 125770 |
| 3822 | 37200.37300.37500.38300.38900.43700.149300.465600 | Concreting | 1d | 2026-02-02 | 2026-02-02 | 3821 |  | 7 day week With NGT Ban | 125780 |
| 3823 | 37200.37300.37500.38300.38900.43700.149400 | **24th floor slab** | 12d | 2026-02-04 | 2026-02-15 |  | start no earlier than 2026-02-04 | 7 day week With NGT Ban | 123660 |
| 3824 | 37200.37300.37500.38300.38900.43700.149400.465700 | Reinforcement | 10d | 2026-02-04 | 2026-02-13 | 3822FS+1d |  | 7 day week With NGT Ban | 125790 |
| 3825 | 37200.37300.37500.38300.38900.43700.149400.465800 | Wall conduiting | 3d | 2026-02-05 | 2026-02-07 | 3820, 3824SS+1d |  | 7 day week With NGT Ban | 125800 |
| 3826 | 37200.37300.37500.38300.38900.43700.149400.465900 | Formwork | 10d | 2026-02-05 | 2026-02-14 | 3824SS+1d |  | 7 day week With NGT Ban | 125810 |
| 3827 | 37200.37300.37500.38300.38900.43700.149400.466000 | Concreting | 1d | 2026-02-15 | 2026-02-15 | 3826 |  | 7 day week With NGT Ban | 125820 |
| 3828 | 37200.37300.37500.38300.38900.43700.149500 | **25th floor slab** | 12d | 2026-02-17 | 2026-02-28 |  | start no earlier than 2026-02-17 | 7 day week With NGT Ban | 123670 |
| 3829 | 37200.37300.37500.38300.38900.43700.149500.466100 | Reinforcement | 10d | 2026-02-17 | 2026-02-26 | 3827FS+1d |  | 7 day week With NGT Ban | 125830 |
| 3830 | 37200.37300.37500.38300.38900.43700.149500.466200 | Wall conduiting | 3d | 2026-02-18 | 2026-02-20 | 3825, 3829SS+1d |  | 7 day week With NGT Ban | 125840 |
| 3831 | 37200.37300.37500.38300.38900.43700.149500.466300 | Formwork | 10d | 2026-02-18 | 2026-02-27 | 3829SS+1d |  | 7 day week With NGT Ban | 125850 |
| 3832 | 37200.37300.37500.38300.38900.43700.149500.466400 | Concreting | 1d | 2026-02-28 | 2026-02-28 | 3831 |  | 7 day week With NGT Ban | 125860 |
| 3833 | 37200.37300.37500.38300.38900.43700.149600 | **26th floor slab** | 8d | 2026-03-02 | 2026-03-09 |  | start no earlier than 2026-03-02 | 7 day week With NGT Ban | 123680 |
| 3834 | 37200.37300.37500.38300.38900.43700.149600.466500 | Reinforcement | 7d | 2026-03-02 | 2026-03-08 | 3832FS+1d |  | 7 day week With NGT Ban | 125870 |
| 3835 | 37200.37300.37500.38300.38900.43700.149600.466600 | Wall conduiting | 3d | 2026-03-03 | 2026-03-05 | 3830, 3834SS+1d |  | 7 day week With NGT Ban | 125880 |
| 3836 | 37200.37300.37500.38300.38900.43700.149600.466700 | Formwork | 6d | 2026-03-03 | 2026-03-08 | 3834SS+1d |  | 7 day week With NGT Ban | 125890 |
| 3837 | 37200.37300.37500.38300.38900.43700.149600.466800 | Concreting | 1d | 2026-03-09 | 2026-03-09 | 3836 |  | 7 day week With NGT Ban | 125900 |

| ID | WBS | Task | Duration | Start | Finish | Predecessors | Constraint | Calendar | Unique_Task_ID |
| --- | --- | --- | --- | --- | --- | --- | --- | --- | --- |
| 3838 | 37200.37300.37500.38300.38900.43700.149700 | **27th floor slab** | 8d | 2026-03-11 | 2026-03-18 |  | start no earlier than 2026-03-11 | 7 day week With NGT Ban | 123690 |
| 3839 | 37200.37300.37500.38300.38900.43700.149700.466900 | Reinforcement | 7d | 2026-03-11 | 2026-03-17 | 3837FS+1d |  | 7 day week With NGT Ban | 125910 |
| 3840 | 37200.37300.37500.38300.38900.43700.149700.467000 | Wall conduiting | 3d | 2026-03-12 | 2026-03-14 | 3835, 3839SS+1d |  | 7 day week With NGT Ban | 125920 |
| 3841 | 37200.37300.37500.38300.38900.43700.149700.467100 | Formwork | 6d | 2026-03-12 | 2026-03-17 | 3839SS+1d |  | 7 day week With NGT Ban | 125930 |
| 3842 | 37200.37300.37500.38300.38900.43700.149700.467200 | Concreting | 1d | 2026-03-18 | 2026-03-18 | 3841 |  | 7 day week With NGT Ban | 125940 |
| 3843 | 37200.37300.37500.38300.38900.43700.149800 | **28th floor slab** | 8d | 2026-03-20 | 2026-03-27 |  | start no earlier than 2026-03-20 | 7 day week With NGT Ban | 123700 |
| 3844 | 37200.37300.37500.38300.38900.43700.149800.467300 | Reinforcement | 7d | 2026-03-20 | 2026-03-26 | 3842FS+1d |  | 7 day week With NGT Ban | 125950 |
| 3845 | 37200.37300.37500.38300.38900.43700.149800.467400 | Wall conduiting | 3d | 2026-03-21 | 2026-03-23 | 3840, 3844SS+1d |  | 7 day week With NGT Ban | 125960 |
| 3846 | 37200.37300.37500.38300.38900.43700.149800.467500 | Formwork | 6d | 2026-03-21 | 2026-03-26 | 3844SS+1d |  | 7 day week With NGT Ban | 125970 |
| 3847 | 37200.37300.37500.38300.38900.43700.149800.467600 | Concreting | 1d | 2026-03-27 | 2026-03-27 | 3846 |  | 7 day week With NGT Ban | 125980 |
| 3848 | 37200.37300.37500.38300.38900.43700.149900 | **29th floor slab** | 8d | 2026-03-28 | 2026-04-04 |  | start no earlier than 2026-03-28 | 7 day week With NGT Ban | 123710 |
| 3849 | 37200.37300.37500.38300.38900.43700.149900.467700 | Reinforcement | 7d | 2026-03-28 | 2026-04-03 | 3847 |  | 7 day week With NGT Ban | 125990 |
| 3850 | 37200.37300.37500.38300.38900.43700.149900.467800 | Wall conduiting | 3d | 2026-03-29 | 2026-03-31 | 3845, 3849SS+1d |  | 7 day week With NGT Ban | 126000 |
| 3851 | 37200.37300.37500.38300.38900.43700.149900.467900 | Formwork | 6d | 2026-03-29 | 2026-04-03 | 3849SS+1d |  | 7 day week With NGT Ban | 126010 |
| 3852 | 37200.37300.37500.38300.38900.43700.149900.468000 | Concreting | 1d | 2026-04-04 | 2026-04-04 | 3851 |  | 7 day week With NGT Ban | 126020 |
| 3853 | 37200.37300.37500.38300.38900.43700.150000 | **30th floor slab** | 8d | 2026-04-05 | 2026-04-12 |  | start no earlier than 2026-04-05 | 7 day week With NGT Ban | 123720 |
| 3854 | 37200.37300.37500.38300.38900.43700.150000.468100 | Reinforcement | 7d | 2026-04-05 | 2026-04-11 | 3852 |  | 7 day week With NGT Ban | 126030 |
| 3855 | 37200.37300.37500.38300.38900.43700.150000.468200 | Wall conduiting | 3d | 2026-04-06 | 2026-04-08 | 3850, 3854SS+1d |  | 7 day week With NGT Ban | 126040 |
| 3856 | 37200.37300.37500.38300.38900.43700.150000.468300 | Formwork | 6d | 2026-04-06 | 2026-04-11 | 3854SS+1d |  | 7 day week With NGT Ban | 126050 |
| 3857 | 37200.37300.37500.38300.38900.43700.150000.468400 | Concreting | 1d | 2026-04-12 | 2026-04-12 | 3856 |  | 7 day week With NGT Ban | 126060 |
| 3858 | 37200.37300.37500.38300.38900.43700.150100 | **31st floor slab** | 10d | 2026-04-13 | 2026-04-22 |  | start no earlier than 2026-04-13 | 7 day week With NGT Ban | 123730 |
| 3859 | 37200.37300.37500.38300.38900.43700.150100.468500 | Reinforcement | 7d | 2026-04-13 | 2026-04-19 | 3857 |  | 7 day week With NGT Ban | 126070 |
| 3860 | 37200.37300.37500.38300.38900.43700.150100.468600 | Wall conduiting | 3d | 2026-04-14 | 2026-04-16 | 3855, 3859SS+1d |  | 7 day week With NGT Ban | 126080 |
| 3861 | 37200.37300.37500.38300.38900.43700.150100.468700 | Formwork | 8d | 2026-04-14 | 2026-04-21 | 3859SS+1d |  | 7 day week With NGT Ban | 126090 |
| 3862 | 37200.37300.37500.38300.38900.43700.150100.468800 | Concreting | 1d | 2026-04-22 | 2026-04-22 | 3861 |  | 7 day week With NGT Ban | 126100 |

| ID | WBS | Task | Duration | Start | Finish | Predecessors | Constraint | Calendar | Unique_Task_ID |
| --- | --- | --- | --- | --- | --- | --- | --- | --- | --- |
| 3863 | 37200.37300.37500.38300.38900.43700.150200 | **32nd floor slab** | 10d | 2026-04-23 | 2026-05-02 |  | start no earlier than 2026-04-23 | 7 day week With NGT Ban | 123740 |
| 3864 | 37200.37300.37500.38300.38900.43700.150200.468900 | Reinforcement | 7d | 2026-04-23 | 2026-04-29 | 3862 |  | 7 day week With NGT Ban | 126110 |
| 3865 | 37200.37300.37500.38300.38900.43700.150200.469000 | Wall conduiting | 3d | 2026-04-24 | 2026-04-26 | 3860, 3864SS+1d |  | 7 day week With NGT Ban | 126120 |
| 3866 | 37200.37300.37500.38300.38900.43700.150200.469100 | Formwork | 8d | 2026-04-24 | 2026-05-01 | 3864SS+1d |  | 7 day week With NGT Ban | 126130 |
| 3867 | 37200.37300.37500.38300.38900.43700.150200.469200 | Concreting | 1d | 2026-05-02 | 2026-05-02 | 3866 |  | 7 day week With NGT Ban | 126140 |
| 3868 | 37200.37300.37500.38300.38900.43700.150300 | **33rd floor slab** | 10.88d | 2026-05-03 | 2026-05-13 |  | start no earlier than 2026-05-03 | 7 day week With NGT Ban | 123750 |
| 3869 | 37200.37300.37500.38300.38900.43700.150300.469300 | Reinforcement | 8.94d | 2026-05-03 | 2026-05-11 | 3867 |  | 7 day week With NGT Ban | 126150 |
| 3870 | 37200.37300.37500.38300.38900.43700.150300.469400 | Wall conduiting | 1.94d | 2026-05-04 | 2026-05-05 | 3865, 3869SS+1d |  | 7 day week With NGT Ban | 126160 |
| 3871 | 37200.37300.37500.38300.38900.43700.150300.469500 | Formwork | 8.94d | 2026-05-04 | 2026-05-12 | 3869SS+1d |  | 7 day week With NGT Ban | 126170 |
| 3872 | 37200.37300.37500.38300.38900.43700.150300.469600 | Concreting | 0.94d | 2026-05-12 | 2026-05-13 | 3871 |  | 7 day week With NGT Ban | 126180 |
| 3873 | 37200.37300.37500.38300.38900.43700.150400 | **34th floor slab** | 11.88d | 2026-05-13 | 2026-05-25 |  | start no earlier than 2026-05-13 | 7 day week With NGT Ban | 123760 |
| 3874 | 37200.37300.37500.38300.38900.43700.150400.469700 | Reinforcement | 9.94d | 2026-05-13 | 2026-05-23 | 3872 |  | 7 day week With NGT Ban | 126190 |
| 3875 | 37200.37300.37500.38300.38900.43700.150400.469800 | Wall conduiting | 1.94d | 2026-05-14 | 2026-05-16 | 3870, 3874SS+1d |  | 7 day week With NGT Ban | 126200 |
| 3876 | 37200.37300.37500.38300.38900.43700.150400.469900 | Formwork | 9.94d | 2026-05-14 | 2026-05-24 | 3874SS+1d |  | 7 day week With NGT Ban | 126210 |
| 3877 | 37200.37300.37500.38300.38900.43700.150400.470000 | Concreting | 0.94d | 2026-05-24 | 2026-05-25 | 3876 |  | 7 day week With NGT Ban | 126220 |
| 3878 | 37200.37300.37500.38300.38900.43700.150500 | **35th floor slab** | 10.88d | 2026-05-25 | 2026-06-05 |  | start no earlier than 2026-05-25 | 7 day week With NGT Ban | 123770 |
| 3879 | 37200.37300.37500.38300.38900.43700.150500.470100 | Reinforcement | 8.94d | 2026-05-25 | 2026-06-03 | 3877 |  | 7 day week With NGT Ban | 126230 |
| 3880 | 37200.37300.37500.38300.38900.43700.150500.470200 | Wall conduiting | 1.94d | 2026-05-26 | 2026-05-28 | 3875, 3879SS+1d |  | 7 day week With NGT Ban | 126240 |
| 3881 | 37200.37300.37500.38300.38900.43700.150500.470300 | Formwork | 7.94d | 2026-05-27 | 2026-06-04 | 3880SS+1d |  | 7 day week With NGT Ban | 126250 |
| 3882 | 37200.37300.37500.38300.38900.43700.150500.470400 | Concreting | 0.94d | 2026-06-04 | 2026-06-05 | 3881 |  | 7 day week With NGT Ban | 126260 |
| 3883 | 37200.37300.37500.38300.38900.43700.150600 | **Terrace floor slab** | 13.88d | 2026-06-05 | 2026-06-19 |  | start no earlier than 2026-06-05 | 7 day week With NGT Ban | 123780 |
| 3884 | 37200.37300.37500.38300.38900.43700.150600.470500 | Reinforcement | 10.94d | 2026-06-05 | 2026-06-16 | 3882 |  | 7 day week With NGT Ban | 126270 |
| 3885 | 37200.37300.37500.38300.38900.43700.150600.470600 | Wall conduiting | 1.94d | 2026-06-06 | 2026-06-08 | 3880, 3884SS+1d |  | 7 day week With NGT Ban | 126280 |
| 3886 | 37200.37300.37500.38300.38900.43700.150600.470700 | Formwork | 11.94d | 2026-06-06 | 2026-06-18 | 3884SS+1d |  | 7 day week With NGT Ban | 126290 |
| 3887 | 37200.37300.37500.38300.38900.43700.150600.470800 | Concreting | 0.94d | 2026-06-18 | 2026-06-19 | 3886 |  | 7 day week With NGT Ban | 126300 |

| ID | WBS | Task | Duration | Start | Finish | Predecessors | Constraint | Calendar | Unique_Task_ID |
| --- | --- | --- | --- | --- | --- | --- | --- | --- | --- |
| 3888 | 37200.37300.37500.38300.38900.43700.150700 | **OHT & Mumty** | 38.88d | 2026-06-19 | 2026-07-28 |  | start no earlier than 2026-06-19 | 7 day week With NGT Ban | 123790 |
| 3889 | 37200.37300.37500.38300.38900.43700.150700.470900 | Reinforcement | 29.94d | 2026-06-19 | 2026-07-19 | 3887 |  | 7 day week With NGT Ban | 126310 |
| 3890 | 37200.37300.37500.38300.38900.43700.150700.471000 | Wall conduiting | 4.94d | 2026-06-20 | 2026-06-25 | 3885, 3889SS+1d |  | 7 day week With NGT Ban | 126320 |
| 3891 | 37200.37300.37500.38300.38900.43700.150700.471100 | Formwork | 32.94d | 2026-06-22 | 2026-07-25 | 3889SS+3d |  | 7 day week With NGT Ban | 126330 |
| 3892 | 37200.37300.37500.38300.38900.43700.150700.471200 | Concreting | 2.94d | 2026-07-25 | 2026-07-28 | 3891 |  | 7 day week With NGT Ban | 126340 |
| 3893 | 37200.37300.37500.38300.38900.45200 | **Post Pour Activities** | 419.12d | 2025-06-01 | 2026-09-08 |  | start no earlier than 2025-06-01 | 7 day week With NGT Ban | 122960 |
| 3894 | 37200.37300.37500.38300.38900.45200.289800 | 1st Floor | 7d | 2025-06-01 | 2025-06-08 | 3722FS+0.25d |  | 7 day week With NGT Ban | 124130 |
| 3895 | 37200.37300.37500.38300.38900.45200.289900 | 2nd Floor | 7d | 2025-07-11 | 2025-07-17 | 3894, 3742 |  | 7 day week With NGT Ban | 124140 |
| 3896 | 37200.37300.37500.38300.38900.45200.290000 | 3rd Floor | 7d | 2025-07-24 | 2025-07-30 | 3895, 3747 |  | 7 day week With NGT Ban | 124150 |
| 3897 | 37200.37300.37500.38300.38900.45200.290100 | 4th Floor | 7d | 2025-08-03 | 2025-08-09 | 3896, 3752 |  | 7 day week With NGT Ban | 124160 |
| 3898 | 37200.37300.37500.38300.38900.45200.290200 | 5th Floor | 7d | 2025-08-13 | 2025-08-19 | 3897, 3757 |  | 7 day week With NGT Ban | 124170 |
| 3899 | 37200.37300.37500.38300.38900.45200.290300 | 6th Floor | 7d | 2025-08-23 | 2025-08-29 | 3898, 3762 |  | 7 day week With NGT Ban | 124180 |
| 3900 | 37200.37300.37500.38300.38900.45200.290400 | 7th Floor | 7d | 2025-09-02 | 2025-09-08 | 3899, 3767 |  | 7 day week With NGT Ban | 124190 |
| 3901 | 37200.37300.37500.38300.38900.45200.290500 | 8th Floor | 7d | 2025-09-12 | 2025-09-18 | 3900, 3772 |  | 7 day week With NGT Ban | 124200 |
| 3902 | 37200.37300.37500.38300.38900.45200.290600 | 9th Floor | 7d | 2025-09-22 | 2025-09-28 | 3901, 3777 |  | 7 day week With NGT Ban | 124210 |
| 3903 | 37200.37300.37500.38300.38900.45200.290700 | 10th Floor | 7d | 2025-10-02 | 2025-10-08 | 3902, 3782 |  | 7 day week With NGT Ban | 124220 |
| 3904 | 37200.37300.37500.38300.38900.45200.290800 | 11th Floor | 7d | 2025-10-15 | 2025-10-21 | 3903, 3787 |  | 7 day week With NGT Ban | 124230 |
| 3905 | 37200.37300.37500.38300.38900.45200.290900 | 12th Floor | 7d | 2025-10-25 | 2025-10-31 | 3904, 3792 |  | 7 day week With NGT Ban | 124240 |
| 3906 | 37200.37300.37500.38300.38900.45200.291000 | 13th Floor | 7d | 2025-12-19 | 2025-12-25 | 3905, 3797 |  | 7 day week With NGT Ban | 124250 |
| 3907 | 37200.37300.37500.38300.38900.45200.291100 | 14th Floor | 7d | 2025-12-28 | 2026-01-03 | 3906, 3802 |  | 7 day week With NGT Ban | 124260 |
| 3908 | 37200.37300.37500.38300.38900.45200.291200 | 15th Floor | 7d | 2026-01-07 | 2026-01-13 | 3907, 3807 |  | 7 day week With NGT Ban | 124270 |
| 3909 | 37200.37300.37500.38300.38900.45200.291300 | 16th Floor | 7d | 2026-01-16 | 2026-01-22 | 3908, 3812 |  | 7 day week With NGT Ban | 124280 |
| 3910 | 37200.37300.37500.38300.38900.45200.291400 | 17th Floor | 7d | 2026-01-25 | 2026-01-31 | 3909, 3817 |  | 7 day week With NGT Ban | 124290 |
| 3911 | 37200.37300.37500.38300.38900.45200.291500 | 18th Floor | 7d | 2026-02-03 | 2026-02-09 | 3910, 3822 |  | 7 day week With NGT Ban | 124300 |
| 3912 | 37200.37300.37500.38300.38900.45200.291600 | 19th Floor | 7d | 2026-02-16 | 2026-02-22 | 3911, 3827 |  | 7 day week With NGT Ban | 124310 |
| 3913 | 37200.37300.37500.38300.38900.45200.291700 | 20th Floor | 7d | 2026-03-01 | 2026-03-07 | 3912, 3832 |  | 7 day week With NGT Ban | 124320 |
| 3914 | 37200.37300.37500.38300.38900.45200.291800 | 21st Floor | 7d | 2026-03-10 | 2026-03-16 | 3913, 3837 |  | 7 day week With NGT Ban | 124330 |
| 3915 | 37200.37300.37500.38300.38900.45200.291900 | 22nd Floor | 7d | 2026-03-19 | 2026-03-25 | 3914, 3842 |  | 7 day week With NGT Ban | 124340 |
| 3916 | 37200.37300.37500.38300.38900.45200.292000 | 23rd Floor | 7d | 2026-03-28 | 2026-04-03 | 3915, 3847 |  | 7 day week With NGT Ban | 124350 |
| 3917 | 37200.37300.37500.38300.38900.45200.292100 | 24th Floor | 7d | 2026-04-05 | 2026-04-11 | 3916, 3852 |  | 7 day week With NGT Ban | 124360 |
| 3918 | 37200.37300.37500.38300.38900.45200.292200 | 25th Floor | 7d | 2026-04-13 | 2026-04-19 | 3917, 3857 |  | 7 day week With NGT Ban | 124370 |
| 3919 | 37200.37300.37500.38300.38900.45200.292300 | 26th Floor | 7d | 2026-04-23 | 2026-04-29 | 3918, 3862 |  | 7 day week With NGT Ban | 124380 |
| 3920 | 37200.37300.37500.38300.38900.45200.292400 | 27th Floor | 7d | 2026-05-03 | 2026-05-09 | 3919, 3867 |  | 7 day week With NGT Ban | 124390 |
| 3921 | 37200.37300.37500.38300.38900.45200.292500 | 28th Floor | 7d | 2026-05-13 | 2026-05-20 | 3920, 3872 |  | 7 day week With NGT Ban | 124400 |
| 3922 | 37200.37300.37500.38300.38900.45200.292600 | 29th Floor | 7d | 2026-05-25 | 2026-06-01 | 3921, 3877 |  | 7 day week With NGT Ban | 124410 |
| 3923 | 37200.37300.37500.38300.38900.45200.292700 | 30th Floor | 7d | 2026-06-05 | 2026-06-12 | 3922, 3882 |  | 7 day week With NGT Ban | 124420 |
| 3924 | 37200.37300.37500.38300.38900.45200.292800 | 31st Floor | 7d | 2026-06-19 | 2026-06-26 | 3923, 3887 |  | 7 day week With NGT Ban | 124430 |
| 3925 | 37200.37300.37500.38300.38900.45200.292900 | 32nd Flood | 7d | 2026-07-28 | 2026-08-04 | 3924, 3892 |  | 7 day week With NGT Ban | 124440 |
| 3926 | 37200.37300.37500.38300.38900.45200.293000 | 33rd Floor | 7d | 2026-08-04 | 2026-08-11 | 3925 |  | 7 day week With NGT Ban | 124450 |
| 3927 | 37200.37300.37500.38300.38900.45200.293100 | 34th Floor | 7d | 2026-08-11 | 2026-08-18 | 3926 |  | 7 day week With NGT Ban | 124460 |
| 3928 | 37200.37300.37500.38300.38900.45200.293200 | 35th Floor | 7d | 2026-08-18 | 2026-08-25 | 3927 |  | 7 day week With NGT Ban | 124470 |
| 3929 | 37200.37300.37500.38300.38900.45200.293300 | Terrace | 7d | 2026-08-25 | 2026-09-01 | 3928 |  | 7 day week With NGT Ban | 124480 |
| 3930 | 37200.37300.37500.38300.38900.45200.293400 | Mumty & Machine Room | 7d | 2026-09-01 | 2026-09-08 | 3929, 3890 |  | 7 day week With NGT Ban | 124490 |

| ID | WBS | Task | Duration | Start | Finish | Predecessors | Constraint | Calendar | Unique_Task_ID |
| --- | --- | --- | --- | --- | --- | --- | --- | --- | --- |
| 3931 | 37200.37300.37500.38300.38900.40700 | **Finishing work** | 661.44d | 2025-06-08 | 2027-06-29 |  | start no earlier than 2025-06-08 | 7 day week With NGT Ban | 122930 |
| 3932 | 37200.37300.37500.38300.38900.40700.41700 | **Flat finishing** | 561.88d | 2025-06-08 | 2027-03-22 |  | start no earlier than 2025-06-08 | 7 day week With NGT Ban | 122940 |
| 3933 | 37200.37300.37500.38300.38900.40700.41700.62200 | **1st Floor** | 86d | 2025-06-08 | 2025-09-02 |  | start no earlier than 2025-06-08 | 7 day week With NGT Ban | 122980 |
| 3934 | 37200.37300.37500.38300.38900.40700.41700.62200.1022300 | Block Work | 8d | 2025-06-08 | 2025-06-16 | 3894FS+0.25d |  | 7 day week With NGT Ban | 126480 |
| 3935 | 37200.37300.37500.38300.38900.40700.41700.62200.1022400 | Door Frame Fixing | 9d | 2025-06-16 | 2025-06-25 | 3934 |  | 7 day week With NGT Ban | 126500 |
| 3936 | 37200.37300.37500.38300.38900.40700.41700.62200.1022500 | Internal Plumbing Works | 8d | 2025-06-16 | 2025-06-24 | 3934 |  | 7 day week With NGT Ban | 126510 |
| 3937 | 37200.37300.37500.38300.38900.40700.41700.62200.1022600 | Waterproofing | 10d | 2025-06-24 | 2025-07-04 | 3936 |  | 7 day week With NGT Ban | 126520 |
| 3938 | 37200.37300.37500.38300.38900.40700.41700.62200.1022700 | Internal Plaster | 8d | 2025-06-17 | 2025-06-25 | 3934FS+1d |  | 7 day week With NGT Ban | 126530 |
| 3939 | 37200.37300.37500.38300.38900.40700.41700.62200.1022800 | IPS flooring work | 10d | 2025-07-04 | 2025-07-14 | 3935, 3936, 3937 |  | 7 day week With NGT Ban | 126540 |
| 3940 | 37200.37300.37500.38300.38900.40700.41700.62200.1022900 | Toilet dado work | 8d | 2025-07-04 | 2025-07-12 | 3937, 3938 |  | 7 day week With NGT Ban | 126550 |
| 3941 | 37200.37300.37500.38300.38900.40700.41700.62200.1023000 | Toilet flooring work | 8d | 2025-07-12 | 2025-07-20 | 3940 |  | 7 day week With NGT Ban | 126560 |
| 3942 | 37200.37300.37500.38300.38900.40700.41700.62200.1023100 | Living dinning flooring | 12d | 2025-07-20 | 2025-08-01 | 3935, 3941 |  | 7 day week With NGT Ban | 126570 |
| 3943 | 37200.37300.37500.38300.38900.40700.41700.62200.1023200 | Aluminium door-window fixing | 12d | 2025-08-01 | 2025-08-13 | 3939, 3942 |  | 7 day week With NGT Ban | 126580 |
| 3944 | 37200.37300.37500.38300.38900.40700.41700.62200.1023300 | Putty primer coat | 6d | 2025-08-01 | 2025-08-07 | 3942 |  | 7 day week With NGT Ban | 126590 |
| 3945 | 37200.37300.37500.38300.38900.40700.41700.62200.1023400 | Door shutter fixing | 8d | 2025-08-01 | 2025-08-09 | 3942 |  | 7 day week With NGT Ban | 126600 |
| 3946 | 37200.37300.37500.38300.38900.40700.41700.62200.1023500 | Electrical wiring work | 8d | 2025-08-09 | 2025-08-17 | 3945 |  | 7 day week With NGT Ban | 126610 |
| 3947 | 37200.37300.37500.38300.38900.40700.41700.62200.1023600 | Painting 1st coat | 8d | 2025-08-17 | 2025-08-25 | 3944, 3945, 3946 |  | 7 day week With NGT Ban | 126620 |
| 3948 | 37200.37300.37500.38300.38900.40700.41700.62200.1023700 | False ceiling | 8d | 2025-08-25 | 2025-09-02 | 3947 |  | 7 day week With NGT Ban | 126630 |
| 3949 | 37200.37300.37500.38300.38900.40700.41700.62100 | **2nd Floor** | 86d | 2025-06-16 | 2025-09-10 |  | start no earlier than 2025-06-16 | 7 day week With NGT Ban | 122990 |
| 3950 | 37200.37300.37500.38300.38900.40700.41700.62100.1023800 | Block Work | 8d | 2025-06-16 | 2025-06-24 | 3934FS+0.25d |  | 7 day week With NGT Ban | 126640 |
| 3951 | 37200.37300.37500.38300.38900.40700.41700.62100.1023900 | Door Frame Fixing | 9d | 2025-06-25 | 2025-07-04 | 3935, 3950 |  | 7 day week With NGT Ban | 126660 |
| 3952 | 37200.37300.37500.38300.38900.40700.41700.62100.1024000 | Internal Plumbing Works | 8d | 2025-06-24 | 2025-07-02 | 3936, 3950 |  | 7 day week With NGT Ban | 126670 |
| 3953 | 37200.37300.37500.38300.38900.40700.41700.62100.1024100 | Waterproofing | 10d | 2025-07-04 | 2025-07-14 | 3937, 3952 |  | 7 day week With NGT Ban | 126680 |
| 3954 | 37200.37300.37500.38300.38900.40700.41700.62100.1024200 | Internal Plaster | 8d | 2025-06-25 | 2025-07-03 | 3938FS+0.25d |  | 7 day week With NGT Ban | 126690 |
| 3955 | 37200.37300.37500.38300.38900.40700.41700.62100.1024300 | IPS flooring work | 10d | 2025-07-14 | 2025-07-24 | 3939, 3951, 3952, 3953 |  | 7 day week With NGT Ban | 126700 |
| 3956 | 37200.37300.37500.38300.38900.40700.41700.62100.1024400 | Toilet dado work | 8d | 2025-07-14 | 2025-07-22 | 3940, 3953, 3954 |  | 7 day week With NGT Ban | 126710 |
| 3957 | 37200.37300.37500.38300.38900.40700.41700.62100.1024500 | Toilet flooring work | 8d | 2025-07-22 | 2025-07-30 | 3941, 3956 |  | 7 day week With NGT Ban | 126720 |
| 3958 | 37200.37300.37500.38300.38900.40700.41700.62100.1024600 | Living dinning flooring | 8d | 2025-08-01 | 2025-08-09 | 3942FS+0.25d |  | 7 day week With NGT Ban | 126730 |
| 3959 | 37200.37300.37500.38300.38900.40700.41700.62100.1024700 | Aluminium door-window fixing | 8d | 2025-08-13 | 2025-08-21 | 3943FS+0.25d |  | 7 day week With NGT Ban | 126740 |
| 3960 | 37200.37300.37500.38300.38900.40700.41700.62100.1024800 | Putty primer coat | 6d | 2025-08-09 | 2025-08-15 | 3944, 3958 |  | 7 day week With NGT Ban | 126750 |
| 3961 | 37200.37300.37500.38300.38900.40700.41700.62100.1024900 | Door shutter fixing | 8d | 2025-08-09 | 2025-08-17 | 3945, 3958 |  | 7 day week With NGT Ban | 126760 |
| 3962 | 37200.37300.37500.38300.38900.40700.41700.62100.1025000 | Electrical wiring work | 8d | 2025-08-17 | 2025-08-25 | 3946, 3961 |  | 7 day week With NGT Ban | 126770 |
| 3963 | 37200.37300.37500.38300.38900.40700.41700.62100.1025100 | Painting 1st coat | 8d | 2025-08-25 | 2025-09-02 | 3947, 3960, 3961, 3962 |  | 7 day week With NGT Ban | 126780 |
| 3964 | 37200.37300.37500.38300.38900.40700.41700.62100.1025200 | False ceiling | 8d | 2025-09-02 | 2025-09-10 | 3948, 3963 |  | 7 day week With NGT Ban | 126790 |

| ID | WBS | Task | Duration | Start | Finish | Predecessors | Constraint | Calendar | Unique_Task_ID |
| --- | --- | --- | --- | --- | --- | --- | --- | --- | --- |
| 3965 | 37200.37300.37500.38300.38900.40700.41700.62000 | **3rd Floor** | 86d | 2025-06-25 | 2025-09-18 |  | start no earlier than 2025-06-25 | 7 day week With NGT Ban | 123000 |
| 3966 | 37200.37300.37500.38300.38900.40700.41700.62000.1025300 | Block Work | 8d | 2025-06-25 | 2025-07-02 | 3950FS+0.25d |  | 7 day week With NGT Ban | 126800 |
| 3967 | 37200.37300.37500.38300.38900.40700.41700.62000.1025400 | Door Frame Fixing | 9d | 2025-07-04 | 2025-07-13 | 3951, 3966 |  | 7 day week With NGT Ban | 126820 |
| 3968 | 37200.37300.37500.38300.38900.40700.41700.62000.1025500 | Internal Plumbing Works | 8d | 2025-07-03 | 2025-07-10 | 3952, 3966 |  | 7 day week With NGT Ban | 126830 |
| 3969 | 37200.37300.37500.38300.38900.40700.41700.62000.1025600 | Waterproofing | 10d | 2025-07-14 | 2025-07-24 | 3953, 3968 |  | 7 day week With NGT Ban | 126840 |
| 3970 | 37200.37300.37500.38300.38900.40700.41700.62000.1025700 | Internal Plaster | 8d | 2025-07-04 | 2025-07-11 | 3954FS+0.25d |  | 7 day week With NGT Ban | 126850 |
| 3971 | 37200.37300.37500.38300.38900.40700.41700.62000.1025800 | IPS flooring work | 10d | 2025-07-24 | 2025-08-03 | 3955, 3967, 3969, 3970 |  | 7 day week With NGT Ban | 126860 |
| 3972 | 37200.37300.37500.38300.38900.40700.41700.62000.1025900 | Toilet dado work | 8d | 2025-07-24 | 2025-08-01 | 3956, 3969, 3970 |  | 7 day week With NGT Ban | 126870 |
| 3973 | 37200.37300.37500.38300.38900.40700.41700.62000.1026000 | Toilet flooring work | 8d | 2025-08-01 | 2025-08-09 | 3957, 3972 |  | 7 day week With NGT Ban | 126880 |
| 3974 | 37200.37300.37500.38300.38900.40700.41700.62000.1026100 | Living dinning flooring | 8d | 2025-08-10 | 2025-08-17 | 3958FS+0.25d |  | 7 day week With NGT Ban | 126890 |
| 3975 | 37200.37300.37500.38300.38900.40700.41700.62000.1026200 | Aluminium door-window fixing | 8d | 2025-08-22 | 2025-08-29 | 3959FS+0.25d |  | 7 day week With NGT Ban | 126900 |
| 3976 | 37200.37300.37500.38300.38900.40700.41700.62000.1026300 | Putty primer coat | 6d | 2025-08-18 | 2025-08-23 | 3960, 3974 |  | 7 day week With NGT Ban | 126910 |
| 3977 | 37200.37300.37500.38300.38900.40700.41700.62000.1026400 | Door shutter fixing | 8d | 2025-08-18 | 2025-08-25 | 3961, 3974 |  | 7 day week With NGT Ban | 126920 |
| 3978 | 37200.37300.37500.38300.38900.40700.41700.62000.1026500 | Electrical wiring work | 8d | 2025-08-26 | 2025-09-02 | 3962, 3977 |  | 7 day week With NGT Ban | 126930 |
| 3979 | 37200.37300.37500.38300.38900.40700.41700.62000.1026600 | Painting 1st coat | 8d | 2025-09-03 | 2025-09-10 | 3963, 3976, 3977, 3978 |  | 7 day week With NGT Ban | 126940 |
| 3980 | 37200.37300.37500.38300.38900.40700.41700.62000.1026700 | False ceiling | 8d | 2025-09-11 | 2025-09-18 | 3964, 3979 |  | 7 day week With NGT Ban | 126950 |
| 3981 | 37200.37300.37500.38300.38900.40700.41700.61800 | **4th Floor** | 90d | 2025-07-03 | 2025-10-01 |  | start no earlier than 2025-07-03 | 7 day week With NGT Ban | 123010 |
| 3982 | 37200.37300.37500.38300.38900.40700.41700.61800.1026800 | Block Work | 8d | 2025-07-03 | 2025-07-11 | 3966FS+0.25d |  | 7 day week With NGT Ban | 126960 |
| 3983 | 37200.37300.37500.38300.38900.40700.41700.61800.1026900 | Door Frame Fixing | 9d | 2025-07-13 | 2025-07-22 | 3967, 3982 |  | 7 day week With NGT Ban | 126980 |
| 3984 | 37200.37300.37500.38300.38900.40700.41700.61800.1027000 | Internal Plumbing Works | 8d | 2025-07-11 | 2025-07-19 | 3968, 3982 |  | 7 day week With NGT Ban | 126990 |
| 3985 | 37200.37300.37500.38300.38900.40700.41700.61800.1027100 | Waterproofing | 10d | 2025-07-24 | 2025-08-03 | 3969, 3984 |  | 7 day week With NGT Ban | 127000 |
| 3986 | 37200.37300.37500.38300.38900.40700.41700.61800.1027200 | Internal Plaster | 8d | 2025-07-12 | 2025-07-20 | 3970FS+0.25d |  | 7 day week With NGT Ban | 127010 |
| 3987 | 37200.37300.37500.38300.38900.40700.41700.61800.1027300 | IPS flooring work | 10d | 2025-08-03 | 2025-08-13 | 3971, 3983, 3985, 3986 |  | 7 day week With NGT Ban | 127020 |
| 3988 | 37200.37300.37500.38300.38900.40700.41700.61800.1027400 | Toilet dado work | 8d | 2025-08-03 | 2025-08-11 | 3972, 3985, 3986 |  | 7 day week With NGT Ban | 127030 |
| 3989 | 37200.37300.37500.38300.38900.40700.41700.61800.1027500 | Toilet flooring work | 8d | 2025-08-11 | 2025-08-19 | 3973, 3988 |  | 7 day week With NGT Ban | 127040 |
| 3990 | 37200.37300.37500.38300.38900.40700.41700.61800.1027600 | Living dinning flooring | 12d | 2025-08-18 | 2025-08-30 | 3974FS+0.25d |  | 7 day week With NGT Ban | 127050 |
| 3991 | 37200.37300.37500.38300.38900.40700.41700.61800.1027700 | Aluminium door-window fixing | 12d | 2025-08-30 | 2025-09-11 | 3975FS+0.25d |  | 7 day week With NGT Ban | 127060 |
| 3992 | 37200.37300.37500.38300.38900.40700.41700.61800.1027800 | Putty primer coat | 6d | 2025-08-30 | 2025-09-05 | 3976, 3990 |  | 7 day week With NGT Ban | 127070 |
| 3993 | 37200.37300.37500.38300.38900.40700.41700.61800.1027900 | Door shutter fixing | 8d | 2025-08-30 | 2025-09-07 | 3977, 3990 |  | 7 day week With NGT Ban | 127080 |
| 3994 | 37200.37300.37500.38300.38900.40700.41700.61800.1028000 | Electrical wiring work | 8d | 2025-09-07 | 2025-09-15 | 3978, 3993 |  | 7 day week With NGT Ban | 127090 |
| 3995 | 37200.37300.37500.38300.38900.40700.41700.61800.1028100 | Painting 1st coat | 8d | 2025-09-15 | 2025-09-23 | 3979, 3992, 3993, 3994 |  | 7 day week With NGT Ban | 127100 |
| 3996 | 37200.37300.37500.38300.38900.40700.41700.61800.1028200 | False ceiling | 8d | 2025-09-23 | 2025-10-01 | 3980, 3995 |  | 7 day week With NGT Ban | 127110 |

| ID | WBS | Task | Duration | Start | Finish | Predecessors | Constraint | Calendar | Unique_Task_ID |
| --- | --- | --- | --- | --- | --- | --- | --- | --- | --- |
| 3997 | 37200.37300.37500.38300.38900.40700.41700.61700 | **5th Floor** | 94d | 2025-07-11 | 2025-10-13 |  | start no earlier than 2025-07-11 | 7 day week With NGT Ban | 123020 |
| 3998 | 37200.37300.37500.38300.38900.40700.41700.61700.1028300 | Block Work | 8d | 2025-07-11 | 2025-07-19 | 3982FS+0.25d |  | 7 day week With NGT Ban | 127120 |
| 3999 | 37200.37300.37500.38300.38900.40700.41700.61700.1028400 | Door Frame Fixing | 9d | 2025-07-22 | 2025-07-31 | 3983, 3998 |  | 7 day week With NGT Ban | 127140 |
| 4000 | 37200.37300.37500.38300.38900.40700.41700.61700.1028500 | Internal Plumbing Works | 8d | 2025-07-19 | 2025-07-27 | 3984, 3998 |  | 7 day week With NGT Ban | 127150 |
| 4001 | 37200.37300.37500.38300.38900.40700.41700.61700.1028600 | Waterproofing | 10d | 2025-08-03 | 2025-08-13 | 3985, 4000 |  | 7 day week With NGT Ban | 127160 |
| 4002 | 37200.37300.37500.38300.38900.40700.41700.61700.1028700 | Internal Plaster | 8d | 2025-07-20 | 2025-07-28 | 3986FS+0.25d |  | 7 day week With NGT Ban | 127170 |
| 4003 | 37200.37300.37500.38300.38900.40700.41700.61700.1028800 | IPS flooring work | 10d | 2025-08-13 | 2025-08-23 | 3987, 3999, 4001, 4002 |  | 7 day week With NGT Ban | 127180 |
| 4004 | 37200.37300.37500.38300.38900.40700.41700.61700.1028900 | Toilet dado work | 8d | 2025-08-13 | 2025-08-21 | 3988, 4001, 4002 |  | 7 day week With NGT Ban | 127190 |
| 4005 | 37200.37300.37500.38300.38900.40700.41700.61700.1029000 | Toilet flooring work | 8d | 2025-08-21 | 2025-08-29 | 3989, 4004 |  | 7 day week With NGT Ban | 127200 |
| 4006 | 37200.37300.37500.38300.38900.40700.41700.61700.1029100 | Living dinning flooring | 12d | 2025-08-30 | 2025-09-11 | 3990FS+0.25d |  | 7 day week With NGT Ban | 127210 |
| 4007 | 37200.37300.37500.38300.38900.40700.41700.61700.1029200 | Aluminium door-window fixing | 12d | 2025-09-11 | 2025-09-23 | 3991FS+0.25d |  | 7 day week With NGT Ban | 127220 |
| 4008 | 37200.37300.37500.38300.38900.40700.41700.61700.1029300 | Putty primer coat | 6d | 2025-09-11 | 2025-09-17 | 3992, 4006 |  | 7 day week With NGT Ban | 127230 |
| 4009 | 37200.37300.37500.38300.38900.40700.41700.61700.1029400 | Door shutter fixing | 8d | 2025-09-11 | 2025-09-19 | 3993, 4006 |  | 7 day week With NGT Ban | 127240 |
| 4010 | 37200.37300.37500.38300.38900.40700.41700.61700.1029500 | Electrical wiring work | 8d | 2025-09-19 | 2025-09-27 | 3994, 4009 |  | 7 day week With NGT Ban | 127250 |
| 4011 | 37200.37300.37500.38300.38900.40700.41700.61700.1029600 | Painting 1st coat | 8d | 2025-09-27 | 2025-10-05 | 3995, 4008, 4009, 4010 |  | 7 day week With NGT Ban | 127260 |
| 4012 | 37200.37300.37500.38300.38900.40700.41700.61700.1029700 | False ceiling | 8d | 2025-10-05 | 2025-10-13 | 3996, 4011 |  | 7 day week With NGT Ban | 127270 |
| 4013 | 37200.37300.37500.38300.38900.40700.41700.61600 | **6th Floor** | 98d | 2025-07-19 | 2025-10-25 |  | start no earlier than 2025-07-19 | 7 day week With NGT Ban | 123030 |
| 4014 | 37200.37300.37500.38300.38900.40700.41700.61600.1029800 | Block Work | 8d | 2025-07-19 | 2025-07-27 | 3998FS+0.25d |  | 7 day week With NGT Ban | 127280 |
| 4015 | 37200.37300.37500.38300.38900.40700.41700.61600.1029900 | Door Frame Fixing | 9d | 2025-07-31 | 2025-08-09 | 3747, 3999 |  | 7 day week With NGT Ban | 127300 |
| 4016 | 37200.37300.37500.38300.38900.40700.41700.61600.1030000 | Internal Plumbing Works | 8d | 2025-07-27 | 2025-08-04 | 4000, 4014 |  | 7 day week With NGT Ban | 127310 |
| 4017 | 37200.37300.37500.38300.38900.40700.41700.61600.1030100 | Waterproofing | 10d | 2025-08-13 | 2025-08-23 | 4001, 4016 |  | 7 day week With NGT Ban | 127320 |
| 4018 | 37200.37300.37500.38300.38900.40700.41700.61600.1030200 | Internal Plaster | 8d | 2025-07-28 | 2025-08-05 | 4002FS+0.25d |  | 7 day week With NGT Ban | 127330 |
| 4019 | 37200.37300.37500.38300.38900.40700.41700.61600.1030300 | IPS flooring work | 10d | 2025-08-23 | 2025-09-02 | 4003, 4015, 4017, 4018 |  | 7 day week With NGT Ban | 127340 |
| 4020 | 37200.37300.37500.38300.38900.40700.41700.61600.1030400 | Toilet dado work | 8d | 2025-08-23 | 2025-08-31 | 4004, 4017, 4018 |  | 7 day week With NGT Ban | 127350 |
| 4021 | 37200.37300.37500.38300.38900.40700.41700.61600.1030500 | Toilet flooring work | 8d | 2025-08-31 | 2025-09-08 | 4005, 4020 |  | 7 day week With NGT Ban | 127360 |
| 4022 | 37200.37300.37500.38300.38900.40700.41700.61600.1030600 | Living dinning flooring | 12d | 2025-09-11 | 2025-09-23 | 4006FS+0.25d |  | 7 day week With NGT Ban | 127370 |
| 4023 | 37200.37300.37500.38300.38900.40700.41700.61600.1030700 | Aluminium door-window fixing | 12d | 2025-09-23 | 2025-10-05 | 4007FS+0.25d |  | 7 day week With NGT Ban | 127380 |
| 4024 | 37200.37300.37500.38300.38900.40700.41700.61600.1030800 | Putty primer coat | 6d | 2025-09-23 | 2025-09-29 | 4008, 4022 |  | 7 day week With NGT Ban | 127390 |
| 4025 | 37200.37300.37500.38300.38900.40700.41700.61600.1030900 | Door shutter fixing | 8d | 2025-09-23 | 2025-10-01 | 4009, 4022 |  | 7 day week With NGT Ban | 127400 |
| 4026 | 37200.37300.37500.38300.38900.40700.41700.61600.1031000 | Electrical wiring work | 8d | 2025-10-01 | 2025-10-09 | 4010, 4025 |  | 7 day week With NGT Ban | 127410 |
| 4027 | 37200.37300.37500.38300.38900.40700.41700.61600.1031100 | Painting 1st coat | 8d | 2025-10-09 | 2025-10-17 | 4011, 4024, 4025, 4026 |  | 7 day week With NGT Ban | 127420 |
| 4028 | 37200.37300.37500.38300.38900.40700.41700.61600.1031200 | False ceiling | 8d | 2025-10-17 | 2025-10-25 | 4012, 4027 |  | 7 day week With NGT Ban | 127430 |

| ID | WBS | Task | Duration | Start | Finish | Predecessors | Constraint | Calendar | Unique_Task_ID |
| --- | --- | --- | --- | --- | --- | --- | --- | --- | --- |
| 4029 | 37200.37300.37500.38300.38900.40700.41700.61500 | **7th Floor** | 102d | 2025-07-28 | 2025-12-21 |  | start no earlier than 2025-07-28 | 7 day week With NGT Ban | 123040 |
| 4030 | 37200.37300.37500.38300.38900.40700.41700.61500.1031300 | Block Work | 8d | 2025-07-28 | 2025-08-04 | 4014FS+0.25d |  | 7 day week With NGT Ban | 127440 |
| 4031 | 37200.37300.37500.38300.38900.40700.41700.61500.1031400 | Door Frame Fixing | 9d | 2025-08-09 | 2025-08-18 | 4015, 4030 |  | 7 day week With NGT Ban | 127460 |
| 4032 | 37200.37300.37500.38300.38900.40700.41700.61500.1031500 | Internal Plumbing Works | 8d | 2025-08-05 | 2025-08-12 | 4016, 4030 |  | 7 day week With NGT Ban | 127470 |
| 4033 | 37200.37300.37500.38300.38900.40700.41700.61500.1031600 | Waterproofing | 10d | 2025-08-23 | 2025-09-02 | 4017, 4032 |  | 7 day week With NGT Ban | 127480 |
| 4034 | 37200.37300.37500.38300.38900.40700.41700.61500.1031700 | Internal Plaster | 8d | 2025-08-06 | 2025-08-13 | 4018FS+0.25d |  | 7 day week With NGT Ban | 127490 |
| 4035 | 37200.37300.37500.38300.38900.40700.41700.61500.1031800 | IPS flooring work | 10d | 2025-09-02 | 2025-09-12 | 4019, 4031, 4033, 4034 |  | 7 day week With NGT Ban | 127500 |
| 4036 | 37200.37300.37500.38300.38900.40700.41700.61500.1031900 | Toilet dado work | 8d | 2025-09-02 | 2025-09-10 | 4020, 4033, 4034 |  | 7 day week With NGT Ban | 127510 |
| 4037 | 37200.37300.37500.38300.38900.40700.41700.61500.1032000 | Toilet flooring work | 8d | 2025-09-10 | 2025-09-18 | 4021, 4036 |  | 7 day week With NGT Ban | 127520 |
| 4038 | 37200.37300.37500.38300.38900.40700.41700.61500.1032100 | Living dinning flooring | 12d | 2025-09-24 | 2025-10-05 | 4022FS+0.25d |  | 7 day week With NGT Ban | 127530 |
| 4039 | 37200.37300.37500.38300.38900.40700.41700.61500.1032200 | Aluminium door-window fixing | 12d | 2025-10-06 | 2025-10-17 | 4023FS+0.25d |  | 7 day week With NGT Ban | 127540 |
| 4040 | 37200.37300.37500.38300.38900.40700.41700.61500.1032300 | Putty primer coat | 6d | 2025-10-06 | 2025-10-11 | 4024, 4038 |  | 7 day week With NGT Ban | 127550 |
| 4041 | 37200.37300.37500.38300.38900.40700.41700.61500.1032400 | Door shutter fixing | 8d | 2025-10-06 | 2025-10-13 | 4025, 4038 |  | 7 day week With NGT Ban | 127560 |
| 4042 | 37200.37300.37500.38300.38900.40700.41700.61500.1032500 | Electrical wiring work | 8d | 2025-10-14 | 2025-10-21 | 4026, 4041 |  | 7 day week With NGT Ban | 127570 |
| 4043 | 37200.37300.37500.38300.38900.40700.41700.61500.1032600 | Painting 1st coat | 8d | 2025-10-22 | 2025-10-29 | 4027, 4040, 4041, 4042 |  | 7 day week With NGT Ban | 127580 |
| 4044 | 37200.37300.37500.38300.38900.40700.41700.61500.1032700 | False ceiling | 8d | 2025-10-30 | 2025-12-21 | 4028, 4043 |  | 7 day week With NGT Ban | 127590 |
| 4045 | 37200.37300.37500.38300.38900.40700.41700.61400 | **8th Floor** | 106d | 2025-08-05 | 2026-01-03 |  | start no earlier than 2025-08-05 | 7 day week With NGT Ban | 123050 |
| 4046 | 37200.37300.37500.38300.38900.40700.41700.61400.1032800 | Block Work | 8d | 2025-08-05 | 2025-08-13 | 4030FS+0.25d |  | 7 day week With NGT Ban | 127600 |
| 4047 | 37200.37300.37500.38300.38900.40700.41700.61400.1032900 | Door Frame Fixing | 9d | 2025-08-18 | 2025-08-27 | 4031, 4046 |  | 7 day week With NGT Ban | 127620 |
| 4048 | 37200.37300.37500.38300.38900.40700.41700.61400.1033000 | Internal Plumbing Works | 8d | 2025-08-13 | 2025-08-21 | 4032, 4046 |  | 7 day week With NGT Ban | 127630 |
| 4049 | 37200.37300.37500.38300.38900.40700.41700.61400.1033100 | Waterproofing | 10d | 2025-09-02 | 2025-09-12 | 4033, 4048 |  | 7 day week With NGT Ban | 127640 |
| 4050 | 37200.37300.37500.38300.38900.40700.41700.61400.1033200 | Internal Plaster | 8d | 2025-08-14 | 2025-08-22 | 4034FS+0.25d |  | 7 day week With NGT Ban | 127650 |
| 4051 | 37200.37300.37500.38300.38900.40700.41700.61400.1033300 | IPS flooring work | 10d | 2025-09-12 | 2025-09-22 | 4035, 4047, 4049, 4050 |  | 7 day week With NGT Ban | 127660 |
| 4052 | 37200.37300.37500.38300.38900.40700.41700.61400.1033400 | Toilet dado work | 8d | 2025-09-12 | 2025-09-20 | 4036, 4049, 4050 |  | 7 day week With NGT Ban | 127670 |
| 4053 | 37200.37300.37500.38300.38900.40700.41700.61400.1033500 | Toilet flooring work | 8d | 2025-09-20 | 2025-09-28 | 4037, 4052 |  | 7 day week With NGT Ban | 127680 |
| 4054 | 37200.37300.37500.38300.38900.40700.41700.61400.1033600 | Living dinning flooring | 12d | 2025-10-06 | 2025-10-18 | 4038FS+0.25d |  | 7 day week With NGT Ban | 127690 |
| 4055 | 37200.37300.37500.38300.38900.40700.41700.61400.1033700 | Aluminium door-window fixing | 12d | 2025-10-18 | 2025-10-30 | 4039FS+0.25d |  | 7 day week With NGT Ban | 127700 |
| 4056 | 37200.37300.37500.38300.38900.40700.41700.61400.1033800 | Putty primer coat | 6d | 2025-10-18 | 2025-10-24 | 4040, 4054 |  | 7 day week With NGT Ban | 127710 |
| 4057 | 37200.37300.37500.38300.38900.40700.41700.61400.1033900 | Door shutter fixing | 8d | 2025-10-18 | 2025-10-26 | 4041, 4054 |  | 7 day week With NGT Ban | 127720 |
| 4058 | 37200.37300.37500.38300.38900.40700.41700.61400.1034000 | Electrical wiring work | 8d | 2025-10-26 | 2025-12-18 | 4042, 4057 |  | 7 day week With NGT Ban | 127730 |
| 4059 | 37200.37300.37500.38300.38900.40700.41700.61400.1034100 | Painting 1st coat | 8d | 2025-12-18 | 2025-12-26 | 4043, 4056, 4057, 4058 |  | 7 day week With NGT Ban | 127740 |
| 4060 | 37200.37300.37500.38300.38900.40700.41700.61400.1034200 | False ceiling | 8d | 2025-12-26 | 2026-01-03 | 4044, 4059 |  | 7 day week With NGT Ban | 127750 |

| ID | WBS | Task | Duration | Start | Finish | Predecessors | Constraint | Calendar | Unique_Task_ID |
| --- | --- | --- | --- | --- | --- | --- | --- | --- | --- |
| 4061 | 37200.37300.37500.38300.38900.40700.41700.61300 | **9th Floor** | 106d | 2025-08-13 | 2026-01-11 |  | start no earlier than 2025-08-13 | 7 day week With NGT Ban | 123060 |
| 4062 | 37200.37300.37500.38300.38900.40700.41700.61300.1034300 | Block Work | 7d | 2025-08-13 | 2025-08-20 | 4046FS+0.25d |  | 7 day week With NGT Ban | 127760 |
| 4063 | 37200.37300.37500.38300.38900.40700.41700.61300.1034400 | Door Frame Fixing | 9d | 2025-08-27 | 2025-09-05 | 4047, 4062 |  | 7 day week With NGT Ban | 127780 |
| 4064 | 37200.37300.37500.38300.38900.40700.41700.61300.1034500 | Internal Plumbing Works | 8d | 2025-08-21 | 2025-08-29 | 4048, 4062 |  | 7 day week With NGT Ban | 127790 |
| 4065 | 37200.37300.37500.38300.38900.40700.41700.61300.1034600 | Waterproofing | 10d | 2025-09-12 | 2025-09-22 | 4049, 4064 |  | 7 day week With NGT Ban | 127800 |
| 4066 | 37200.37300.37500.38300.38900.40700.41700.61300.1034700 | Internal Plaster | 7d | 2025-08-22 | 2025-08-29 | 4050FS+0.25d |  | 7 day week With NGT Ban | 127810 |
| 4067 | 37200.37300.37500.38300.38900.40700.41700.61300.1034800 | IPS flooring work | 10d | 2025-09-22 | 2025-10-02 | 4051, 4063, 4065, 4066 |  | 7 day week With NGT Ban | 127820 |
| 4068 | 37200.37300.37500.38300.38900.40700.41700.61300.1034900 | Toilet dado work | 8d | 2025-09-22 | 2025-09-30 | 4052, 4065, 4066 |  | 7 day week With NGT Ban | 127830 |
| 4069 | 37200.37300.37500.38300.38900.40700.41700.61300.1035000 | Toilet flooring work | 8d | 2025-09-30 | 2025-10-08 | 4053, 4068 |  | 7 day week With NGT Ban | 127840 |
| 4070 | 37200.37300.37500.38300.38900.40700.41700.61300.1035100 | Living dinning flooring | 8d | 2025-10-18 | 2025-10-26 | 4054FS+0.25d |  | 7 day week With NGT Ban | 127850 |
| 4071 | 37200.37300.37500.38300.38900.40700.41700.61300.1035200 | Aluminium door-window fixing | 8d | 2025-10-30 | 2025-12-22 | 4055FS+0.25d |  | 7 day week With NGT Ban | 127860 |
| 4072 | 37200.37300.37500.38300.38900.40700.41700.61300.1035300 | Putty primer coat | 6d | 2025-10-26 | 2025-12-16 | 4056, 4070 |  | 7 day week With NGT Ban | 127870 |
| 4073 | 37200.37300.37500.38300.38900.40700.41700.61300.1035400 | Door shutter fixing | 8d | 2025-10-26 | 2025-12-18 | 4057, 4070 |  | 7 day week With NGT Ban | 127880 |
| 4074 | 37200.37300.37500.38300.38900.40700.41700.61300.1035500 | Electrical wiring work | 8d | 2025-12-18 | 2025-12-26 | 4058, 4073 |  | 7 day week With NGT Ban | 127890 |
| 4075 | 37200.37300.37500.38300.38900.40700.41700.61300.1035600 | Painting 1st coat | 8d | 2025-12-26 | 2026-01-03 | 4059, 4072, 4073, 4074 |  | 7 day week With NGT Ban | 127900 |
| 4076 | 37200.37300.37500.38300.38900.40700.41700.61300.1035700 | False ceiling | 8d | 2026-01-03 | 2026-01-11 | 4060, 4075 |  | 7 day week With NGT Ban | 127910 |
| 4077 | 37200.37300.37500.38300.38900.40700.41700.61200 | **10th Floor** | 107d | 2025-08-20 | 2026-01-19 |  | start no earlier than 2025-08-20 | 7 day week With NGT Ban | 123070 |
| 4078 | 37200.37300.37500.38300.38900.40700.41700.61200.1035800 | Block Work | 7d | 2025-08-20 | 2025-08-27 | 4062FS+0.25d |  | 7 day week With NGT Ban | 127920 |
| 4079 | 37200.37300.37500.38300.38900.40700.41700.61200.1035900 | Door Frame Fixing | 9d | 2025-09-05 | 2025-09-14 | 4063, 4078 |  | 7 day week With NGT Ban | 127940 |
| 4080 | 37200.37300.37500.38300.38900.40700.41700.61200.1036000 | Internal Plumbing Works | 8d | 2025-08-29 | 2025-09-06 | 4064, 4078 |  | 7 day week With NGT Ban | 127950 |
| 4081 | 37200.37300.37500.38300.38900.40700.41700.61200.1036100 | Waterproofing | 10d | 2025-09-22 | 2025-10-02 | 4065, 4080 |  | 7 day week With NGT Ban | 127960 |
| 4082 | 37200.37300.37500.38300.38900.40700.41700.61200.1036200 | Internal Plaster | 7d | 2025-08-29 | 2025-09-05 | 4066FS+0.25d |  | 7 day week With NGT Ban | 127970 |
| 4083 | 37200.37300.37500.38300.38900.40700.41700.61200.1036300 | IPS flooring work | 10d | 2025-10-02 | 2025-10-12 | 4067, 4079, 4081, 4082 |  | 7 day week With NGT Ban | 127980 |
| 4084 | 37200.37300.37500.38300.38900.40700.41700.61200.1036400 | Toilet dado work | 8d | 2025-10-02 | 2025-10-10 | 4068, 4081, 4082 |  | 7 day week With NGT Ban | 127990 |
| 4085 | 37200.37300.37500.38300.38900.40700.41700.61200.1036500 | Toilet flooring work | 8d | 2025-10-10 | 2025-10-18 | 4069, 4084 |  | 7 day week With NGT Ban | 128000 |
| 4086 | 37200.37300.37500.38300.38900.40700.41700.61200.1036600 | Living dinning flooring | 8d | 2025-10-26 | 2025-12-18 | 4070FS+0.25d |  | 7 day week With NGT Ban | 128010 |
| 4087 | 37200.37300.37500.38300.38900.40700.41700.61200.1036700 | Aluminium door-window fixing | 8d | 2025-12-22 | 2025-12-30 | 4071FS+0.25d |  | 7 day week With NGT Ban | 128020 |
| 4088 | 37200.37300.37500.38300.38900.40700.41700.61200.1036800 | Putty primer coat | 6d | 2025-12-18 | 2025-12-24 | 4072, 4086 |  | 7 day week With NGT Ban | 128030 |
| 4089 | 37200.37300.37500.38300.38900.40700.41700.61200.1036900 | Door shutter fixing | 8d | 2025-12-18 | 2025-12-26 | 4073, 4086 |  | 7 day week With NGT Ban | 128040 |
| 4090 | 37200.37300.37500.38300.38900.40700.41700.61200.1037000 | Electrical wiring work | 8d | 2025-12-26 | 2026-01-03 | 4074, 4089 |  | 7 day week With NGT Ban | 128050 |
| 4091 | 37200.37300.37500.38300.38900.40700.41700.61200.1037100 | Painting 1st coat | 8d | 2026-01-03 | 2026-01-11 | 4075, 4088, 4089, 4090 |  | 7 day week With NGT Ban | 128060 |
| 4092 | 37200.37300.37500.38300.38900.40700.41700.61200.1037200 | False ceiling | 8d | 2026-01-11 | 2026-01-19 | 4076, 4091 |  | 7 day week With NGT Ban | 128070 |

| ID | WBS | Task | Duration | Start | Finish | Predecessors | Constraint | Calendar | Unique_Task_ID |
| --- | --- | --- | --- | --- | --- | --- | --- | --- | --- |
| 4093 | 37200.37300.37500.38300.38900.40700.41700.61100 | **11th Floor** | 108d | 2025-08-28 | 2026-01-27 |  | start no earlier than 2025-08-28 | 7 day week With NGT Ban | 123080 |
| 4094 | 37200.37300.37500.38300.38900.40700.41700.61100.1037300 | Block Work | 7d | 2025-08-28 | 2025-09-03 | 4078FS+0.25d |  | 7 day week With NGT Ban | 128080 |
| 4095 | 37200.37300.37500.38300.38900.40700.41700.61100.1037400 | Door Frame Fixing | 9d | 2025-09-14 | 2025-09-23 | 4079, 4094 |  | 7 day week With NGT Ban | 128100 |
| 4096 | 37200.37300.37500.38300.38900.40700.41700.61100.1037500 | Internal Plumbing Works | 8d | 2025-09-06 | 2025-09-14 | 4080, 4094 |  | 7 day week With NGT Ban | 128110 |
| 4097 | 37200.37300.37500.38300.38900.40700.41700.61100.1037600 | Waterproofing | 10d | 2025-10-02 | 2025-10-12 | 4081, 4096 |  | 7 day week With NGT Ban | 128120 |
| 4098 | 37200.37300.37500.38300.38900.40700.41700.61100.1037700 | Internal Plaster | 7d | 2025-09-06 | 2025-09-12 | 4082FS+0.25d |  | 7 day week With NGT Ban | 128130 |
| 4099 | 37200.37300.37500.38300.38900.40700.41700.61100.1037800 | IPS flooring work | 10d | 2025-10-12 | 2025-10-22 | 4083, 4095, 4096, 4097 |  | 7 day week With NGT Ban | 128140 |
| 4100 | 37200.37300.37500.38300.38900.40700.41700.61100.1037900 | Toilet dado work | 8d | 2025-10-12 | 2025-10-20 | 4084, 4097, 4098 |  | 7 day week With NGT Ban | 128150 |
| 4101 | 37200.37300.37500.38300.38900.40700.41700.61100.1038000 | Toilet flooring work | 8d | 2025-10-20 | 2025-10-28 | 4085, 4100 |  | 7 day week With NGT Ban | 128160 |
| 4102 | 37200.37300.37500.38300.38900.40700.41700.61100.1038100 | Living dinning flooring | 8d | 2025-12-19 | 2025-12-26 | 4086FS+0.25d |  | 7 day week With NGT Ban | 128170 |
| 4103 | 37200.37300.37500.38300.38900.40700.41700.61100.1038200 | Aluminium door-window fixing | 8d | 2025-12-31 | 2026-01-07 | 4087FS+0.25d |  | 7 day week With NGT Ban | 128180 |
| 4104 | 37200.37300.37500.38300.38900.40700.41700.61100.1038300 | Putty primer coat | 6d | 2025-12-27 | 2026-01-01 | 4088, 4102 |  | 7 day week With NGT Ban | 128190 |
| 4105 | 37200.37300.37500.38300.38900.40700.41700.61100.1038400 | Door shutter fixing | 8d | 2025-12-27 | 2026-01-03 | 4089, 4102 |  | 7 day week With NGT Ban | 128200 |
| 4106 | 37200.37300.37500.38300.38900.40700.41700.61100.1038500 | Electrical wiring work | 8d | 2026-01-04 | 2026-01-11 | 4090, 4105 |  | 7 day week With NGT Ban | 128210 |
| 4107 | 37200.37300.37500.38300.38900.40700.41700.61100.1038600 | Painting 1st coat | 8d | 2026-01-12 | 2026-01-19 | 4091, 4104, 4105, 4106 |  | 7 day week With NGT Ban | 128220 |
| 4108 | 37200.37300.37500.38300.38900.40700.41700.61100.1038700 | False ceiling | 8d | 2026-01-20 | 2026-01-27 | 4092, 4107 |  | 7 day week With NGT Ban | 128230 |
| 4109 | 37200.37300.37500.38300.38900.40700.41700.61000 | **12th Floor** | 109d | 2025-09-04 | 2026-02-05 |  | start no earlier than 2025-09-04 | 7 day week With NGT Ban | 123090 |
| 4110 | 37200.37300.37500.38300.38900.40700.41700.61000.1038800 | Block Work | 7d | 2025-09-04 | 2025-09-11 | 4094FS+0.25d |  | 7 day week With NGT Ban | 128240 |
| 4111 | 37200.37300.37500.38300.38900.40700.41700.61000.1038900 | Door Frame Fixing | 9d | 2025-09-23 | 2025-10-02 | 4095, 4110 |  | 7 day week With NGT Ban | 128260 |
| 4112 | 37200.37300.37500.38300.38900.40700.41700.61000.1039000 | Internal Plumbing Works | 8d | 2025-09-14 | 2025-09-22 | 4096, 4110 |  | 7 day week With NGT Ban | 128270 |
| 4113 | 37200.37300.37500.38300.38900.40700.41700.61000.1039100 | Waterproofing | 10d | 2025-10-12 | 2025-10-22 | 4097, 4112 |  | 7 day week With NGT Ban | 128280 |
| 4114 | 37200.37300.37500.38300.38900.40700.41700.61000.1039200 | Internal Plaster | 7d | 2025-09-13 | 2025-09-20 | 4098FS+0.25d |  | 7 day week With NGT Ban | 128290 |
| 4115 | 37200.37300.37500.38300.38900.40700.41700.61000.1039300 | IPS flooring work | 10d | 2025-10-22 | 2025-12-16 | 4099, 4111, 4112, 4113 |  | 7 day week With NGT Ban | 128300 |
| 4116 | 37200.37300.37500.38300.38900.40700.41700.61000.1039400 | Toilet dado work | 8d | 2025-10-22 | 2025-10-30 | 4100, 4113, 4114 |  | 7 day week With NGT Ban | 128310 |
| 4117 | 37200.37300.37500.38300.38900.40700.41700.61000.1039500 | Toilet flooring work | 8d | 2025-10-30 | 2025-12-22 | 4101, 4116 |  | 7 day week With NGT Ban | 128320 |
| 4118 | 37200.37300.37500.38300.38900.40700.41700.61000.1039600 | Living dinning flooring | 8d | 2025-12-27 | 2026-01-04 | 4102FS+0.25d |  | 7 day week With NGT Ban | 128330 |
| 4119 | 37200.37300.37500.38300.38900.40700.41700.61000.1039700 | Aluminium door-window fixing | 8d | 2026-01-08 | 2026-01-16 | 4103FS+0.25d |  | 7 day week With NGT Ban | 128340 |
| 4120 | 37200.37300.37500.38300.38900.40700.41700.61000.1039800 | Putty primer coat | 6d | 2026-01-04 | 2026-01-10 | 4104, 4118 |  | 7 day week With NGT Ban | 128350 |
| 4121 | 37200.37300.37500.38300.38900.40700.41700.61000.1039900 | Door shutter fixing | 8d | 2026-01-04 | 2026-01-12 | 4105, 4118 |  | 7 day week With NGT Ban | 128360 |
| 4122 | 37200.37300.37500.38300.38900.40700.41700.61000.1040000 | Electrical wiring work | 8d | 2026-01-12 | 2026-01-20 | 4106, 4121 |  | 7 day week With NGT Ban | 128370 |
| 4123 | 37200.37300.37500.38300.38900.40700.41700.61000.1040100 | Painting 1st coat | 8d | 2026-01-20 | 2026-01-28 | 4107, 4120, 4121, 4122 |  | 7 day week With NGT Ban | 128380 |
| 4124 | 37200.37300.37500.38300.38900.40700.41700.61000.1040200 | False ceiling | 8d | 2026-01-28 | 2026-02-05 | 4108, 4123 |  | 7 day week With NGT Ban | 128390 |

| ID | WBS | Task | Duration | Start | Finish | Predecessors | Constraint | Calendar | Unique_Task_ID |
| --- | --- | --- | --- | --- | --- | --- | --- | --- | --- |
| 4125 | 37200.37300.37500.38300.38900.40700.41700.60900 | **13th Floor** | 110d | 2025-09-11 | 2026-02-13 |  | start no earlier than 2025-09-11 | 7 day week With NGT Ban | 123100 |
| 4126 | 37200.37300.37500.38300.38900.40700.41700.60900.1040300 | Block Work | 7d | 2025-09-11 | 2025-09-18 | 4110FS+0.25d |  | 7 day week With NGT Ban | 128400 |
| 4127 | 37200.37300.37500.38300.38900.40700.41700.60900.1040400 | Door Frame Fixing | 9d | 2025-10-02 | 2025-10-11 | 4111, 4126 |  | 7 day week With NGT Ban | 128420 |
| 4128 | 37200.37300.37500.38300.38900.40700.41700.60900.1040500 | Internal Plumbing Works | 8d | 2025-09-22 | 2025-09-30 | 4112, 4126 |  | 7 day week With NGT Ban | 128430 |
| 4129 | 37200.37300.37500.38300.38900.40700.41700.60900.1040600 | Waterproofing | 10d | 2025-10-22 | 2025-12-16 | 4113, 4128 |  | 7 day week With NGT Ban | 128440 |
| 4130 | 37200.37300.37500.38300.38900.40700.41700.60900.1040700 | Internal Plaster | 7d | 2025-09-20 | 2025-09-27 | 4114FS+0.25d |  | 7 day week With NGT Ban | 128450 |
| 4131 | 37200.37300.37500.38300.38900.40700.41700.60900.1040800 | IPS flooring work | 10d | 2025-12-16 | 2025-12-26 | 4115, 4127, 4129, 4130 |  | 7 day week With NGT Ban | 128460 |
| 4132 | 37200.37300.37500.38300.38900.40700.41700.60900.1040900 | Toilet dado work | 8d | 2025-12-16 | 2025-12-24 | 4116, 4129, 4130 |  | 7 day week With NGT Ban | 128470 |
| 4133 | 37200.37300.37500.38300.38900.40700.41700.60900.1041000 | Toilet flooring work | 8d | 2025-12-24 | 2026-01-01 | 4117, 4132 |  | 7 day week With NGT Ban | 128480 |
| 4134 | 37200.37300.37500.38300.38900.40700.41700.60900.1041100 | Living dinning flooring | 8d | 2026-01-04 | 2026-01-12 | 4118FS+0.25d |  | 7 day week With NGT Ban | 128490 |
| 4135 | 37200.37300.37500.38300.38900.40700.41700.60900.1041200 | Aluminium door-window fixing | 8d | 2026-01-16 | 2026-01-24 | 4119FS+0.25d |  | 7 day week With NGT Ban | 128500 |
| 4136 | 37200.37300.37500.38300.38900.40700.41700.60900.1041300 | Putty primer coat | 6d | 2026-01-12 | 2026-01-18 | 4120, 4134 |  | 7 day week With NGT Ban | 128510 |
| 4137 | 37200.37300.37500.38300.38900.40700.41700.60900.1041400 | Door shutter fixing | 8d | 2026-01-12 | 2026-01-20 | 4121, 4134 |  | 7 day week With NGT Ban | 128520 |
| 4138 | 37200.37300.37500.38300.38900.40700.41700.60900.1041500 | Electrical wiring work | 8d | 2026-01-20 | 2026-01-28 | 4122, 4137 |  | 7 day week With NGT Ban | 128530 |
| 4139 | 37200.37300.37500.38300.38900.40700.41700.60900.1041600 | Painting 1st coat | 8d | 2026-01-28 | 2026-02-05 | 4123, 4136, 4137, 4138 |  | 7 day week With NGT Ban | 128540 |
| 4140 | 37200.37300.37500.38300.38900.40700.41700.60900.1041700 | False ceiling | 8d | 2026-02-05 | 2026-02-13 | 4124, 4139 |  | 7 day week With NGT Ban | 128550 |
| 4141 | 37200.37300.37500.38300.38900.40700.41700.60800 | **14th Floor** | 111d | 2025-09-18 | 2026-02-21 |  | start no earlier than 2025-09-18 | 7 day week With NGT Ban | 123110 |
| 4142 | 37200.37300.37500.38300.38900.40700.41700.60800.1041800 | Block Work | 8d | 2025-09-18 | 2025-09-26 | 4126FS+0.25d |  | 7 day week With NGT Ban | 128560 |
| 4143 | 37200.37300.37500.38300.38900.40700.41700.60800.1041900 | Door Frame Fixing | 9d | 2025-10-11 | 2025-10-20 | 4127, 4142 |  | 7 day week With NGT Ban | 128580 |
| 4144 | 37200.37300.37500.38300.38900.40700.41700.60800.1042000 | Internal Plumbing Works | 8d | 2025-09-30 | 2025-10-08 | 4128, 4142 |  | 7 day week With NGT Ban | 128590 |
| 4145 | 37200.37300.37500.38300.38900.40700.41700.60800.1042100 | Waterproofing | 10d | 2025-12-16 | 2025-12-26 | 4129, 4144 |  | 7 day week With NGT Ban | 128600 |
| 4146 | 37200.37300.37500.38300.38900.40700.41700.60800.1042200 | Internal Plaster | 8d | 2025-09-27 | 2025-10-05 | 4130FS+0.25d |  | 7 day week With NGT Ban | 128610 |
| 4147 | 37200.37300.37500.38300.38900.40700.41700.60800.1042300 | IPS flooring work | 10d | 2025-12-26 | 2026-01-05 | 4131, 4143, 4144, 4145 |  | 7 day week With NGT Ban | 128620 |
| 4148 | 37200.37300.37500.38300.38900.40700.41700.60800.1042400 | Toilet dado work | 8d | 2025-12-26 | 2026-01-03 | 4132, 4145, 4146 |  | 7 day week With NGT Ban | 128630 |
| 4149 | 37200.37300.37500.38300.38900.40700.41700.60800.1042500 | Toilet flooring work | 8d | 2026-01-03 | 2026-01-11 | 4133, 4148 |  | 7 day week With NGT Ban | 128640 |
| 4150 | 37200.37300.37500.38300.38900.40700.41700.60800.1042600 | Living dinning flooring | 8d | 2026-01-12 | 2026-01-20 | 4134FS+0.25d |  | 7 day week With NGT Ban | 128650 |
| 4151 | 37200.37300.37500.38300.38900.40700.41700.60800.1042700 | Aluminium door-window fixing | 8d | 2026-01-24 | 2026-02-01 | 4135FS+0.25d |  | 7 day week With NGT Ban | 128660 |
| 4152 | 37200.37300.37500.38300.38900.40700.41700.60800.1042800 | Putty primer coat | 6d | 2026-01-20 | 2026-01-26 | 4136, 4150 |  | 7 day week With NGT Ban | 128670 |
| 4153 | 37200.37300.37500.38300.38900.40700.41700.60800.1042900 | Door shutter fixing | 8d | 2026-01-20 | 2026-01-28 | 4137, 4150 |  | 7 day week With NGT Ban | 128680 |
| 4154 | 37200.37300.37500.38300.38900.40700.41700.60800.1043000 | Electrical wiring work | 8d | 2026-01-28 | 2026-02-05 | 4138, 4153 |  | 7 day week With NGT Ban | 128690 |
| 4155 | 37200.37300.37500.38300.38900.40700.41700.60800.1043100 | Painting 1st coat | 8d | 2026-02-05 | 2026-02-13 | 4139, 4152, 4153, 4154 |  | 7 day week With NGT Ban | 128700 |
| 4156 | 37200.37300.37500.38300.38900.40700.41700.60800.1043200 | False ceiling | 8d | 2026-02-13 | 2026-02-21 | 4140, 4155 |  | 7 day week With NGT Ban | 128710 |

| ID | WBS | Task | Duration | Start | Finish | Predecessors | Constraint | Calendar | Unique_Task_ID |
| --- | --- | --- | --- | --- | --- | --- | --- | --- | --- |
| 4157 | 37200.37300.37500.38300.38900.40700.41700.60700 | **15th Floor** | 111d | 2025-09-27 | 2026-03-01 |  | start no earlier than 2025-09-27 | 7 day week With NGT Ban | 123120 |
| 4158 | 37200.37300.37500.38300.38900.40700.41700.60700.1043300 | Block Work | 8d | 2025-09-27 | 2025-10-04 | 4142FS+0.25d |  | 7 day week With NGT Ban | 128720 |
| 4159 | 37200.37300.37500.38300.38900.40700.41700.60700.1043400 | Door Frame Fixing | 9d | 2025-10-20 | 2025-10-29 | 4143, 4158 |  | 7 day week With NGT Ban | 128740 |
| 4160 | 37200.37300.37500.38300.38900.40700.41700.60700.1043500 | Internal Plumbing Works | 8d | 2025-10-08 | 2025-10-16 | 4144, 4158 |  | 7 day week With NGT Ban | 128750 |
| 4161 | 37200.37300.37500.38300.38900.40700.41700.60700.1043600 | Waterproofing | 10d | 2025-12-26 | 2026-01-05 | 4145, 4160 |  | 7 day week With NGT Ban | 128760 |
| 4162 | 37200.37300.37500.38300.38900.40700.41700.60700.1043700 | Internal Plaster | 8d | 2025-10-06 | 2025-10-13 | 4146FS+0.25d |  | 7 day week With NGT Ban | 128770 |
| 4163 | 37200.37300.37500.38300.38900.40700.41700.60700.1043800 | IPS flooring work | 10d | 2026-01-05 | 2026-01-15 | 4147, 4159, 4160, 4161 |  | 7 day week With NGT Ban | 128780 |
| 4164 | 37200.37300.37500.38300.38900.40700.41700.60700.1043900 | Toilet dado work | 8d | 2026-01-05 | 2026-01-13 | 4148, 4161, 4162 |  | 7 day week With NGT Ban | 128790 |
| 4165 | 37200.37300.37500.38300.38900.40700.41700.60700.1044000 | Toilet flooring work | 8d | 2026-01-13 | 2026-01-21 | 4149, 4164 |  | 7 day week With NGT Ban | 128800 |
| 4166 | 37200.37300.37500.38300.38900.40700.41700.60700.1044100 | Living dinning flooring | 8d | 2026-01-21 | 2026-01-28 | 4150FS+0.25d |  | 7 day week With NGT Ban | 128810 |
| 4167 | 37200.37300.37500.38300.38900.40700.41700.60700.1044200 | Aluminium door-window fixing | 8d | 2026-02-02 | 2026-02-09 | 4151FS+0.25d |  | 7 day week With NGT Ban | 128820 |
| 4168 | 37200.37300.37500.38300.38900.40700.41700.60700.1044300 | Putty primer coat | 6d | 2026-01-29 | 2026-02-03 | 4152, 4166 |  | 7 day week With NGT Ban | 128830 |
| 4169 | 37200.37300.37500.38300.38900.40700.41700.60700.1044400 | Door shutter fixing | 8d | 2026-01-29 | 2026-02-05 | 4153, 4166 |  | 7 day week With NGT Ban | 128840 |
| 4170 | 37200.37300.37500.38300.38900.40700.41700.60700.1044500 | Electrical wiring work | 8d | 2026-02-06 | 2026-02-13 | 4154, 4169 |  | 7 day week With NGT Ban | 128850 |
| 4171 | 37200.37300.37500.38300.38900.40700.41700.60700.1044600 | Painting 1st coat | 8d | 2026-02-14 | 2026-02-21 | 4155, 4168, 4169, 4170 |  | 7 day week With NGT Ban | 128860 |
| 4172 | 37200.37300.37500.38300.38900.40700.41700.60700.1044700 | False ceiling | 8d | 2026-02-22 | 2026-03-01 | 4156, 4171 |  | 7 day week With NGT Ban | 128870 |
| 4173 | 37200.37300.37500.38300.38900.40700.41700.60600 | **16th Floor** | 111d | 2025-10-05 | 2026-03-10 |  | start no earlier than 2025-10-05 | 7 day week With NGT Ban | 123130 |
| 4174 | 37200.37300.37500.38300.38900.40700.41700.60600.1044800 | Block Work | 8d | 2025-10-05 | 2025-10-13 | 4158FS+0.25d |  | 7 day week With NGT Ban | 128880 |
| 4175 | 37200.37300.37500.38300.38900.40700.41700.60600.1044900 | Door Frame Fixing | 9d | 2025-10-29 | 2025-12-22 | 4159, 4174 |  | 7 day week With NGT Ban | 128900 |
| 4176 | 37200.37300.37500.38300.38900.40700.41700.60600.1045000 | Internal Plumbing Works | 8d | 2025-10-16 | 2025-10-24 | 4160, 4174 |  | 7 day week With NGT Ban | 128910 |
| 4177 | 37200.37300.37500.38300.38900.40700.41700.60600.1045100 | Waterproofing | 10d | 2026-01-05 | 2026-01-15 | 4161, 4176 |  | 7 day week With NGT Ban | 128920 |
| 4178 | 37200.37300.37500.38300.38900.40700.41700.60600.1045200 | Internal Plaster | 8d | 2025-10-14 | 2025-10-22 | 4162FS+0.25d |  | 7 day week With NGT Ban | 128930 |
| 4179 | 37200.37300.37500.38300.38900.40700.41700.60600.1045300 | IPS flooring work | 10d | 2026-01-15 | 2026-01-25 | 4163, 4175, 4176, 4177 |  | 7 day week With NGT Ban | 128940 |
| 4180 | 37200.37300.37500.38300.38900.40700.41700.60600.1045400 | Toilet dado work | 12d | 2026-01-15 | 2026-01-27 | 4164, 4177, 4178 |  | 7 day week With NGT Ban | 128950 |
| 4181 | 37200.37300.37500.38300.38900.40700.41700.60600.1045500 | Toilet flooring work | 12d | 2026-01-27 | 2026-02-08 | 4165, 4180 |  | 7 day week With NGT Ban | 128960 |
| 4182 | 37200.37300.37500.38300.38900.40700.41700.60600.1045600 | Living dinning flooring | 8d | 2026-01-29 | 2026-02-06 | 4166FS+0.25d |  | 7 day week With NGT Ban | 128970 |
| 4183 | 37200.37300.37500.38300.38900.40700.41700.60600.1045700 | Aluminium door-window fixing | 8d | 2026-02-10 | 2026-02-18 | 4167FS+0.25d |  | 7 day week With NGT Ban | 128980 |
| 4184 | 37200.37300.37500.38300.38900.40700.41700.60600.1045800 | Putty primer coat | 6d | 2026-02-06 | 2026-02-12 | 4168, 4182 |  | 7 day week With NGT Ban | 128990 |
| 4185 | 37200.37300.37500.38300.38900.40700.41700.60600.1045900 | Door shutter fixing | 8d | 2026-02-06 | 2026-02-14 | 4169, 4182 |  | 7 day week With NGT Ban | 129000 |
| 4186 | 37200.37300.37500.38300.38900.40700.41700.60600.1046000 | Electrical wiring work | 8d | 2026-02-14 | 2026-02-22 | 4170, 4185 |  | 7 day week With NGT Ban | 129010 |
| 4187 | 37200.37300.37500.38300.38900.40700.41700.60600.1046100 | Painting 1st coat | 8d | 2026-02-22 | 2026-03-02 | 4171, 4184, 4185, 4186 |  | 7 day week With NGT Ban | 129020 |
| 4188 | 37200.37300.37500.38300.38900.40700.41700.60600.1046200 | False ceiling | 8d | 2026-03-02 | 2026-03-10 | 4172, 4187 |  | 7 day week With NGT Ban | 129030 |

| ID | WBS | Task | Duration | Start | Finish | Predecessors | Constraint | Calendar | Unique_Task_ID |
| --- | --- | --- | --- | --- | --- | --- | --- | --- | --- |
| 4189 | 37200.37300.37500.38300.38900.40700.41700.60500 | **17th Floor** | 111d | 2025-10-13 | 2026-03-18 |  | start no earlier than 2025-10-13 | 7 day week With NGT Ban | 123140 |
| 4190 | 37200.37300.37500.38300.38900.40700.41700.60500.1046300 | Block Work | 7d | 2025-10-13 | 2025-10-20 | 4174FS+0.25d |  | 7 day week With NGT Ban | 129040 |
| 4191 | 37200.37300.37500.38300.38900.40700.41700.60500.1046400 | Door Frame Fixing | 9d | 2025-10-20 | 2025-10-29 | 4190FS+0.25d |  | 7 day week With NGT Ban | 129060 |
| 4192 | 37200.37300.37500.38300.38900.40700.41700.60500.1046500 | Internal Plumbing Works | 8d | 2025-10-24 | 2025-12-16 | 4176, 4190 |  | 7 day week With NGT Ban | 129070 |
| 4193 | 37200.37300.37500.38300.38900.40700.41700.60500.1046600 | Waterproofing | 10d | 2026-01-15 | 2026-01-25 | 4177, 4192 |  | 7 day week With NGT Ban | 129080 |
| 4194 | 37200.37300.37500.38300.38900.40700.41700.60500.1046700 | Internal Plaster | 7d | 2025-10-22 | 2025-10-29 | 4178FS+0.25d |  | 7 day week With NGT Ban | 129090 |
| 4195 | 37200.37300.37500.38300.38900.40700.41700.60500.1046800 | IPS flooring work | 10d | 2026-01-25 | 2026-02-04 | 4179, 4191, 4192, 4193 |  | 7 day week With NGT Ban | 129100 |
| 4196 | 37200.37300.37500.38300.38900.40700.41700.60500.1046900 | Toilet dado work | 8d | 2026-01-27 | 2026-02-04 | 4180, 4193, 4194 |  | 7 day week With NGT Ban | 129110 |
| 4197 | 37200.37300.37500.38300.38900.40700.41700.60500.1047000 | Toilet flooring work | 8d | 2026-02-08 | 2026-02-16 | 4181, 4196 |  | 7 day week With NGT Ban | 129120 |
| 4198 | 37200.37300.37500.38300.38900.40700.41700.60500.1047100 | Living dinning flooring | 8d | 2026-02-06 | 2026-02-14 | 4182FS+0.25d |  | 7 day week With NGT Ban | 129130 |
| 4199 | 37200.37300.37500.38300.38900.40700.41700.60500.1047200 | Aluminium door-window fixing | 8d | 2026-02-18 | 2026-02-26 | 4183FS+0.25d |  | 7 day week With NGT Ban | 129140 |
| 4200 | 37200.37300.37500.38300.38900.40700.41700.60500.1047300 | Putty primer coat | 6d | 2026-02-14 | 2026-02-20 | 4184, 4198 |  | 7 day week With NGT Ban | 129150 |
| 4201 | 37200.37300.37500.38300.38900.40700.41700.60500.1047400 | Door shutter fixing | 8d | 2026-02-14 | 2026-02-22 | 4185, 4198 |  | 7 day week With NGT Ban | 129160 |
| 4202 | 37200.37300.37500.38300.38900.40700.41700.60500.1047500 | Electrical wiring work | 8d | 2026-02-22 | 2026-03-02 | 4186, 4201 |  | 7 day week With NGT Ban | 129170 |
| 4203 | 37200.37300.37500.38300.38900.40700.41700.60500.1047600 | Painting 1st coat | 8d | 2026-03-02 | 2026-03-10 | 4187, 4200, 4201, 4202 |  | 7 day week With NGT Ban | 129180 |
| 4204 | 37200.37300.37500.38300.38900.40700.41700.60500.1047700 | False ceiling | 8d | 2026-03-10 | 2026-03-18 | 4188, 4203 |  | 7 day week With NGT Ban | 129190 |
| 4205 | 37200.37300.37500.38300.38900.40700.41700.60400 | **18th Floor** | 116d | 2025-10-20 | 2026-03-30 |  | start no earlier than 2025-10-20 | 7 day week With NGT Ban | 122970 |
| 4206 | 37200.37300.37500.38300.38900.40700.41700.60400.1047800 | Block Work | 8d | 2025-10-20 | 2025-10-28 | 4190FS+0.25d |  | 7 day week With NGT Ban | 129200 |
| 4207 | 37200.37300.37500.38300.38900.40700.41700.60400.1047900 | Door Frame Fixing | 9d | 2025-10-29 | 2025-12-22 | 4191, 4206 |  | 7 day week With NGT Ban | 129230 |
| 4208 | 37200.37300.37500.38300.38900.40700.41700.60400.1048000 | Internal Plumbing Works | 8d | 2025-12-16 | 2025-12-24 | 4192, 4206 |  | 7 day week With NGT Ban | 129240 |
| 4209 | 37200.37300.37500.38300.38900.40700.41700.60400.1048100 | Waterproofing | 10d | 2026-01-25 | 2026-02-04 | 4193, 4208 |  | 7 day week With NGT Ban | 129250 |
| 4210 | 37200.37300.37500.38300.38900.40700.41700.60400.1048200 | Internal Plaster | 8d | 2025-10-29 | 2025-12-21 | 4194FS+0.25d |  | 7 day week With NGT Ban | 129260 |
| 4211 | 37200.37300.37500.38300.38900.40700.41700.60400.1048300 | IPS flooring work | 10d | 2026-02-04 | 2026-02-14 | 4195, 4207, 4208, 4209 |  | 7 day week With NGT Ban | 129270 |
| 4212 | 37200.37300.37500.38300.38900.40700.41700.60400.1048400 | Toilet dado work | 8d | 2026-02-04 | 2026-02-12 | 4196, 4209, 4210 |  | 7 day week With NGT Ban | 129280 |
| 4213 | 37200.37300.37500.38300.38900.40700.41700.60400.1048500 | Toilet flooring work | 8d | 2026-02-16 | 2026-02-24 | 4197, 4212 |  | 7 day week With NGT Ban | 129290 |
| 4214 | 37200.37300.37500.38300.38900.40700.41700.60400.1048600 | Living dinning flooring | 12d | 2026-02-14 | 2026-02-26 | 4198FS+0.25d |  | 7 day week With NGT Ban | 129300 |
| 4215 | 37200.37300.37500.38300.38900.40700.41700.60400.1048700 | Aluminium door-window fixing | 12d | 2026-02-26 | 2026-03-10 | 4199FS+0.25d |  | 7 day week With NGT Ban | 129310 |
| 4216 | 37200.37300.37500.38300.38900.40700.41700.60400.1048800 | Putty primer coat | 6d | 2026-02-26 | 2026-03-04 | 4200, 4214 |  | 7 day week With NGT Ban | 129320 |
| 4217 | 37200.37300.37500.38300.38900.40700.41700.60400.1048900 | Door shutter fixing | 8d | 2026-02-26 | 2026-03-06 | 4201, 4214 |  | 7 day week With NGT Ban | 129330 |
| 4218 | 37200.37300.37500.38300.38900.40700.41700.60400.1049000 | Electrical wiring work | 8d | 2026-03-06 | 2026-03-14 | 4202, 4217 |  | 7 day week With NGT Ban | 129340 |
| 4219 | 37200.37300.37500.38300.38900.40700.41700.60400.1049100 | Painting 1st coat | 8d | 2026-03-14 | 2026-03-22 | 4203, 4216, 4217, 4218 |  | 7 day week With NGT Ban | 129350 |
| 4220 | 37200.37300.37500.38300.38900.40700.41700.60400.1049200 | False ceiling | 8d | 2026-03-22 | 2026-03-30 | 4204, 4219 |  | 7 day week With NGT Ban | 129360 |

| ID | WBS | Task | Duration | Start | Finish | Predecessors | Constraint | Calendar | Unique_Task_ID |
| --- | --- | --- | --- | --- | --- | --- | --- | --- | --- |
| 4221 | 37200.37300.37500.38300.38900.40700.41700.60200 | **19th Floor** | 115.75d | 2025-10-29 | 2026-04-07 |  | start no earlier than 2025-10-29 | 7 day week With NGT Ban | 123150 |
| 4222 | 37200.37300.37500.38300.38900.40700.41700.60200.1049300 | Block Work | 8d | 2025-10-29 | 2025-12-20 | 4206FS+0.25d |  | 7 day week With NGT Ban | 129370 |
| 4223 | 37200.37300.37500.38300.38900.40700.41700.60200.1049400 | Door Frame Fixing | 9d | 2025-12-22 | 2025-12-31 | 4207, 4222 |  | 7 day week With NGT Ban | 129390 |
| 4224 | 37200.37300.37500.38300.38900.40700.41700.60200.1049500 | Internal Plumbing Works | 8d | 2025-12-24 | 2026-01-01 | 4208, 4222 |  | 7 day week With NGT Ban | 129400 |
| 4225 | 37200.37300.37500.38300.38900.40700.41700.60200.1049600 | Waterproofing | 10d | 2026-02-04 | 2026-02-14 | 4209, 4224 |  | 7 day week With NGT Ban | 129410 |
| 4226 | 37200.37300.37500.38300.38900.40700.41700.60200.1049700 | Internal Plaster | 8d | 2025-12-22 | 2025-12-29 | 4210FS+0.25d |  | 7 day week With NGT Ban | 129420 |
| 4227 | 37200.37300.37500.38300.38900.40700.41700.60200.1049800 | IPS flooring work | 10d | 2026-02-14 | 2026-02-24 | 4211, 4223, 4225, 4226 |  | 7 day week With NGT Ban | 129430 |
| 4228 | 37200.37300.37500.38300.38900.40700.41700.60200.1049900 | Toilet dado work | 8d | 2026-02-14 | 2026-02-22 | 4212, 4225, 4226 |  | 7 day week With NGT Ban | 129440 |
| 4229 | 37200.37300.37500.38300.38900.40700.41700.60200.1050000 | Toilet flooring work | 8d | 2026-02-24 | 2026-03-04 | 4213, 4228 |  | 7 day week With NGT Ban | 129450 |
| 4230 | 37200.37300.37500.38300.38900.40700.41700.60200.1050100 | Living dinning flooring | 7d | 2026-02-27 | 2026-03-05 | 4214FS+0.25d |  | 7 day week With NGT Ban | 129460 |
| 4231 | 37200.37300.37500.38300.38900.40700.41700.60200.1050200 | Aluminium door-window fixing | 12d | 2026-03-10 | 2026-03-22 | 4215, 4227, 4230 |  | 7 day week With NGT Ban | 129470 |
| 4232 | 37200.37300.37500.38300.38900.40700.41700.60200.1050300 | Putty primer coat | 6d | 2026-03-06 | 2026-03-11 | 4216, 4230 |  | 7 day week With NGT Ban | 129480 |
| 4233 | 37200.37300.37500.38300.38900.40700.41700.60200.1050400 | Door shutter fixing | 8d | 2026-03-06 | 2026-03-14 | 4217, 4230 |  | 7 day week With NGT Ban | 129490 |
| 4234 | 37200.37300.37500.38300.38900.40700.41700.60200.1050500 | Electrical wiring work | 8d | 2026-03-14 | 2026-03-22 | 4218, 4233 |  | 7 day week With NGT Ban | 129500 |
| 4235 | 37200.37300.37500.38300.38900.40700.41700.60200.1050600 | Painting 1st coat | 8d | 2026-03-22 | 2026-03-30 | 4219, 4232, 4233, 4234 |  | 7 day week With NGT Ban | 129510 |
| 4236 | 37200.37300.37500.38300.38900.40700.41700.60200.1050700 | False ceiling | 8d | 2026-03-30 | 2026-04-07 | 4220, 4235 |  | 7 day week With NGT Ban | 129520 |
| 4237 | 37200.37300.37500.38300.38900.40700.41700.60000 | **20th Floor** | 115.5d | 2025-12-21 | 2026-04-15 |  | start no earlier than 2025-12-21 | 7 day week With NGT Ban | 123160 |
| 4238 | 37200.37300.37500.38300.38900.40700.41700.60000.1050800 | Block Work | 8d | 2025-12-21 | 2025-12-29 | 4222FS+0.25d |  | 7 day week With NGT Ban | 129530 |
| 4239 | 37200.37300.37500.38300.38900.40700.41700.60000.1050900 | Door Frame Fixing | 9d | 2025-12-31 | 2026-01-09 | 4223, 4238 |  | 7 day week With NGT Ban | 129550 |
| 4240 | 37200.37300.37500.38300.38900.40700.41700.60000.1051000 | Internal Plumbing Works | 8d | 2026-01-01 | 2026-01-09 | 4224, 4238 |  | 7 day week With NGT Ban | 129560 |
| 4241 | 37200.37300.37500.38300.38900.40700.41700.60000.1051100 | Waterproofing | 10d | 2026-02-14 | 2026-02-24 | 4225, 4240 |  | 7 day week With NGT Ban | 129570 |
| 4242 | 37200.37300.37500.38300.38900.40700.41700.60000.1051200 | Internal Plaster | 8d | 2025-12-30 | 2026-01-07 | 4226FS+0.25d |  | 7 day week With NGT Ban | 129580 |
| 4243 | 37200.37300.37500.38300.38900.40700.41700.60000.1051300 | IPS flooring work | 10d | 2026-02-24 | 2026-03-06 | 4227, 4239, 4241, 4242 |  | 7 day week With NGT Ban | 129590 |
| 4244 | 37200.37300.37500.38300.38900.40700.41700.60000.1051400 | Toilet dado work | 8d | 2026-02-24 | 2026-03-04 | 4228, 4241, 4242 |  | 7 day week With NGT Ban | 129600 |
| 4245 | 37200.37300.37500.38300.38900.40700.41700.60000.1051500 | Toilet flooring work | 8d | 2026-03-04 | 2026-03-12 | 4229, 4244 |  | 7 day week With NGT Ban | 129610 |
| 4246 | 37200.37300.37500.38300.38900.40700.41700.60000.1051600 | Living dinning flooring | 8d | 2026-03-06 | 2026-03-14 | 4230FS+0.25d |  | 7 day week With NGT Ban | 129620 |
| 4247 | 37200.37300.37500.38300.38900.40700.41700.60000.1051700 | Aluminium door-window fixing | 12d | 2026-03-22 | 2026-04-03 | 4231, 4243, 4246 |  | 7 day week With NGT Ban | 129630 |
| 4248 | 37200.37300.37500.38300.38900.40700.41700.60000.1051800 | Putty primer coat | 6d | 2026-03-14 | 2026-03-20 | 4232, 4246 |  | 7 day week With NGT Ban | 129640 |
| 4249 | 37200.37300.37500.38300.38900.40700.41700.60000.1051900 | Door shutter fixing | 8d | 2026-03-14 | 2026-03-22 | 4233, 4246 |  | 7 day week With NGT Ban | 129650 |
| 4250 | 37200.37300.37500.38300.38900.40700.41700.60000.1052000 | Electrical wiring work | 8d | 2026-03-22 | 2026-03-30 | 4234, 4249 |  | 7 day week With NGT Ban | 129660 |
| 4251 | 37200.37300.37500.38300.38900.40700.41700.60000.1052100 | Painting 1st coat | 8d | 2026-03-30 | 2026-04-07 | 4235, 4248, 4249, 4250 |  | 7 day week With NGT Ban | 129670 |
| 4252 | 37200.37300.37500.38300.38900.40700.41700.60000.1052200 | False ceiling | 8d | 2026-04-07 | 2026-04-15 | 4236, 4251 |  | 7 day week With NGT Ban | 129680 |

| ID | WBS | Task | Duration | Start | Finish | Predecessors | Constraint | Calendar | Unique_Task_ID |
| --- | --- | --- | --- | --- | --- | --- | --- | --- | --- |
| 4253 | 37200.37300.37500.38300.38900.40700.41700.59800 | **21st Floor** | 115.25d | 2025-12-29 | 2026-04-23 |  | start no earlier than 2025-12-29 | 7 day week With NGT Ban | 123170 |
| 4254 | 37200.37300.37500.38300.38900.40700.41700.59800.1052300 | Block Work | 8d | 2025-12-29 | 2026-01-06 | 4238FS+0.25d |  | 7 day week With NGT Ban | 129690 |
| 4255 | 37200.37300.37500.38300.38900.40700.41700.59800.1052400 | Door Frame Fixing | 9d | 2026-01-09 | 2026-01-18 | 4239, 4254 |  | 7 day week With NGT Ban | 129710 |
| 4256 | 37200.37300.37500.38300.38900.40700.41700.59800.1052500 | Internal Plumbing Works | 8d | 2026-01-09 | 2026-01-17 | 4240, 4254 |  | 7 day week With NGT Ban | 129720 |
| 4257 | 37200.37300.37500.38300.38900.40700.41700.59800.1052600 | Waterproofing | 10d | 2026-02-24 | 2026-03-06 | 4241, 4256 |  | 7 day week With NGT Ban | 129730 |
| 4258 | 37200.37300.37500.38300.38900.40700.41700.59800.1052700 | Internal Plaster | 8d | 2026-01-07 | 2026-01-15 | 4242FS+0.25d |  | 7 day week With NGT Ban | 129740 |
| 4259 | 37200.37300.37500.38300.38900.40700.41700.59800.1052800 | IPS flooring work | 10d | 2026-03-06 | 2026-03-16 | 4243, 4255, 4257, 4258 |  | 7 day week With NGT Ban | 129750 |
| 4260 | 37200.37300.37500.38300.38900.40700.41700.59800.1052900 | Toilet dado work | 8d | 2026-03-06 | 2026-03-14 | 4244, 4257, 4258 |  | 7 day week With NGT Ban | 129760 |
| 4261 | 37200.37300.37500.38300.38900.40700.41700.59800.1053000 | Toilet flooring work | 8d | 2026-03-14 | 2026-03-22 | 4245, 4260 |  | 7 day week With NGT Ban | 129770 |
| 4262 | 37200.37300.37500.38300.38900.40700.41700.59800.1053100 | Living dinning flooring | 7d | 2026-03-14 | 2026-03-21 | 4246FS+0.25d |  | 7 day week With NGT Ban | 129780 |
| 4263 | 37200.37300.37500.38300.38900.40700.41700.59800.1053200 | Aluminium door-window fixing | 12d | 2026-04-03 | 2026-04-15 | 4247, 4259, 4262 |  | 7 day week With NGT Ban | 129790 |
| 4264 | 37200.37300.37500.38300.38900.40700.41700.59800.1053300 | Putty primer coat | 6d | 2026-03-21 | 2026-03-27 | 4248, 4262 |  | 7 day week With NGT Ban | 129800 |
| 4265 | 37200.37300.37500.38300.38900.40700.41700.59800.1053400 | Door shutter fixing | 8d | 2026-03-22 | 2026-03-30 | 4249, 4262 |  | 7 day week With NGT Ban | 129810 |
| 4266 | 37200.37300.37500.38300.38900.40700.41700.59800.1053500 | Electrical wiring work | 8d | 2026-03-30 | 2026-04-07 | 4250, 4265 |  | 7 day week With NGT Ban | 129820 |
| 4267 | 37200.37300.37500.38300.38900.40700.41700.59800.1053600 | Painting 1st coat | 8d | 2026-04-07 | 2026-04-15 | 4251, 4264, 4265, 4266 |  | 7 day week With NGT Ban | 129830 |
| 4268 | 37200.37300.37500.38300.38900.40700.41700.59800.1053700 | False ceiling | 8d | 2026-04-15 | 2026-04-23 | 4252, 4267 |  | 7 day week With NGT Ban | 129840 |
| 4269 | 37200.37300.37500.38300.38900.40700.41700.59700 | **22nd Floor** | 115d | 2026-01-06 | 2026-05-01 |  | start no earlier than 2026-01-06 | 7 day week With NGT Ban | 123180 |
| 4270 | 37200.37300.37500.38300.38900.40700.41700.59700.1053800 | Block Work | 8d | 2026-01-06 | 2026-01-14 | 4254FS+0.25d |  | 7 day week With NGT Ban | 129850 |
| 4271 | 37200.37300.37500.38300.38900.40700.41700.59700.1053900 | Door Frame Fixing | 9d | 2026-01-18 | 2026-01-27 | 4255, 4270 |  | 7 day week With NGT Ban | 129870 |
| 4272 | 37200.37300.37500.38300.38900.40700.41700.59700.1054000 | Internal Plumbing Works | 8d | 2026-01-17 | 2026-01-25 | 4256, 4270 |  | 7 day week With NGT Ban | 129880 |
| 4273 | 37200.37300.37500.38300.38900.40700.41700.59700.1054100 | Waterproofing | 10d | 2026-03-06 | 2026-03-16 | 4257, 4272 |  | 7 day week With NGT Ban | 129890 |
| 4274 | 37200.37300.37500.38300.38900.40700.41700.59700.1054200 | Internal Plaster | 8d | 2026-01-15 | 2026-01-23 | 4258FS+0.25d |  | 7 day week With NGT Ban | 129900 |
| 4275 | 37200.37300.37500.38300.38900.40700.41700.59700.1054300 | IPS flooring work | 10d | 2026-03-16 | 2026-03-26 | 4259, 4271, 4273, 4274 |  | 7 day week With NGT Ban | 129910 |
| 4276 | 37200.37300.37500.38300.38900.40700.41700.59700.1054400 | Toilet dado work | 8d | 2026-03-16 | 2026-03-24 | 4260, 4273, 4274 |  | 7 day week With NGT Ban | 129920 |
| 4277 | 37200.37300.37500.38300.38900.40700.41700.59700.1054500 | Toilet flooring work | 8d | 2026-03-24 | 2026-04-01 | 4261, 4276 |  | 7 day week With NGT Ban | 129930 |
| 4278 | 37200.37300.37500.38300.38900.40700.41700.59700.1054600 | Living dinning flooring | 8d | 2026-03-21 | 2026-03-29 | 4262FS+0.25d |  | 7 day week With NGT Ban | 129940 |
| 4279 | 37200.37300.37500.38300.38900.40700.41700.59700.1054700 | Aluminium door-window fixing | 12d | 2026-04-15 | 2026-04-27 | 4263, 4275, 4278 |  | 7 day week With NGT Ban | 129950 |
| 4280 | 37200.37300.37500.38300.38900.40700.41700.59700.1054800 | Putty primer coat | 6d | 2026-03-29 | 2026-04-04 | 4264, 4278 |  | 7 day week With NGT Ban | 129960 |
| 4281 | 37200.37300.37500.38300.38900.40700.41700.59700.1054900 | Door shutter fixing | 8d | 2026-03-30 | 2026-04-07 | 4265, 4278 |  | 7 day week With NGT Ban | 129970 |
| 4282 | 37200.37300.37500.38300.38900.40700.41700.59700.1055000 | Electrical wiring work | 8d | 2026-04-07 | 2026-04-15 | 4266, 4281 |  | 7 day week With NGT Ban | 129980 |
| 4283 | 37200.37300.37500.38300.38900.40700.41700.59700.1055100 | Painting 1st coat | 8d | 2026-04-15 | 2026-04-23 | 4267, 4280, 4281, 4282 |  | 7 day week With NGT Ban | 129990 |
| 4284 | 37200.37300.37500.38300.38900.40700.41700.59700.1055200 | False ceiling | 8d | 2026-04-23 | 2026-05-01 | 4268, 4283 |  | 7 day week With NGT Ban | 130000 |

| ID | WBS | Task | Duration | Start | Finish | Predecessors | Constraint | Calendar | Unique_Task_ID |
| --- | --- | --- | --- | --- | --- | --- | --- | --- | --- |
| 4285 | 37200.37300.37500.38300.38900.40700.41700.59600 | **23rd Floor** | 130.5d | 2026-01-15 | 2026-05-25 |  | start no earlier than 2026-01-15 | 7 day week With NGT Ban | 123190 |
| 4286 | 37200.37300.37500.38300.38900.40700.41700.59600.1055300 | Block Work | 8d | 2026-01-15 | 2026-01-22 | 4270FS+0.25d |  | 7 day week With NGT Ban | 130010 |
| 4287 | 37200.37300.37500.38300.38900.40700.41700.59600.1055400 | Door Frame Fixing | 9d | 2026-01-27 | 2026-02-05 | 4271, 4286 |  | 7 day week With NGT Ban | 7598193 |
| 4288 | 37200.37300.37500.38300.38900.40700.41700.59600.1055500 | Internal Plumbing Works | 8d | 2026-01-25 | 2026-02-02 | 4272, 4286 |  | 7 day week With NGT Ban | 7598203 |
| 4289 | 37200.37300.37500.38300.38900.40700.41700.59600.1055600 | Waterproofing | 10d | 2026-03-16 | 2026-03-26 | 4273, 4288 |  | 7 day week With NGT Ban | 7598213 |
| 4290 | 37200.37300.37500.38300.38900.40700.41700.59600.1055700 | Internal Plaster | 8d | 2026-01-24 | 2026-01-31 | 4274FS+0.25d |  | 7 day week With NGT Ban | 130060 |
| 4291 | 37200.37300.37500.38300.38900.40700.41700.59600.1055800 | IPS flooring work | 10d | 2026-03-26 | 2026-04-05 | 4275, 4287, 4289, 4290 |  | 7 day week With NGT Ban | 130070 |
| 4292 | 37200.37300.37500.38300.38900.40700.41700.59600.1055900 | Toilet dado work | 8d | 2026-03-26 | 2026-04-03 | 4276, 4289, 4290 |  | 7 day week With NGT Ban | 130080 |
| 4293 | 37200.37300.37500.38300.38900.40700.41700.59600.1056000 | Toilet flooring work | 8d | 2026-04-03 | 2026-04-11 | 4277, 4292 |  | 7 day week With NGT Ban | 130090 |
| 4294 | 37200.37300.37500.38300.38900.40700.41700.59600.1056100 | Living dinning flooring | 12d | 2026-04-11 | 2026-04-23 | 4278, 4287, 4293 |  | 7 day week With NGT Ban | 130100 |
| 4295 | 37200.37300.37500.38300.38900.40700.41700.59600.1056200 | Aluminium door-window fixing | 12d | 2026-04-27 | 2026-05-09 | 4279, 4291, 4294 |  | 7 day week With NGT Ban | 130110 |
| 4296 | 37200.37300.37500.38300.38900.40700.41700.59600.1056300 | Putty primer coat | 6d | 2026-04-23 | 2026-04-29 | 4280, 4294 |  | 7 day week With NGT Ban | 130120 |
| 4297 | 37200.37300.37500.38300.38900.40700.41700.59600.1056400 | Door shutter fixing | 8d | 2026-04-23 | 2026-05-01 | 4281, 4294 |  | 7 day week With NGT Ban | 130130 |
| 4298 | 37200.37300.37500.38300.38900.40700.41700.59600.1056500 | Electrical wiring work | 8d | 2026-05-01 | 2026-05-09 | 4282, 4297 |  | 7 day week With NGT Ban | 130140 |
| 4299 | 37200.37300.37500.38300.38900.40700.41700.59600.1056600 | Painting 1st coat | 8d | 2026-05-09 | 2026-05-17 | 4283, 4296, 4297, 4298 |  | 7 day week With NGT Ban | 130150 |
| 4300 | 37200.37300.37500.38300.38900.40700.41700.59600.1056700 | False ceiling | 8d | 2026-05-17 | 2026-05-25 | 4284, 4299 |  | 7 day week With NGT Ban | 130160 |
| 4301 | 37200.37300.37500.38300.38900.40700.41700.59500 | **24th Floor** | 146.94d | 2026-01-23 | 2026-06-19 |  | start no earlier than 2026-01-23 | 7 day week With NGT Ban | 123200 |
| 4302 | 37200.37300.37500.38300.38900.40700.41700.59500.1056800 | Block Work | 7.94d | 2026-01-23 | 2026-01-31 | 4286FS+0.25d |  | 7 day week With NGT Ban | 130170 |
| 4303 | 37200.37300.37500.38300.38900.40700.41700.59500.1056900 | Door Frame Fixing | 8.94d | 2026-02-05 | 2026-02-14 | 4287, 4302 |  | 7 day week With NGT Ban | 130190 |
| 4304 | 37200.37300.37500.38300.38900.40700.41700.59500.1057000 | Internal Plumbing Works | 9.94d | 2026-02-02 | 2026-02-12 | 4288, 4302 |  | 7 day week With NGT Ban | 130200 |
| 4305 | 37200.37300.37500.38300.38900.40700.41700.59500.1057100 | Waterproofing | 11.94d | 2026-03-26 | 2026-04-07 | 4289, 4304 |  | 7 day week With NGT Ban | 130210 |
| 4306 | 37200.37300.37500.38300.38900.40700.41700.59500.1057200 | Internal Plaster | 8.94d | 2026-02-01 | 2026-02-10 | 4290FS+0.25d |  | 7 day week With NGT Ban | 130220 |
| 4307 | 37200.37300.37500.38300.38900.40700.41700.59500.1057300 | IPS flooring work | 8.94d | 2026-04-07 | 2026-04-16 | 4291, 4303, 4305, 4306 |  | 7 day week With NGT Ban | 130230 |
| 4308 | 37200.37300.37500.38300.38900.40700.41700.59500.1057400 | Toilet dado work | 7.94d | 2026-04-07 | 2026-04-15 | 4292, 4305, 4306 |  | 7 day week With NGT Ban | 130240 |
| 4309 | 37200.37300.37500.38300.38900.40700.41700.59500.1057500 | Toilet flooring work | 6.94d | 2026-04-15 | 2026-04-22 | 4293, 4308 |  | 7 day week With NGT Ban | 130250 |
| 4310 | 37200.37300.37500.38300.38900.40700.41700.59500.1057600 | Living dinning flooring | 14.94d | 2026-04-23 | 2026-05-08 | 4294, 4303, 4309 |  | 7 day week With NGT Ban | 130260 |
| 4311 | 37200.37300.37500.38300.38900.40700.41700.59500.1057700 | Aluminium door-window fixing | 14.94d | 2026-05-09 | 2026-05-24 | 4295, 4307, 4310 |  | 7 day week With NGT Ban | 130270 |
| 4312 | 37200.37300.37500.38300.38900.40700.41700.59500.1057800 | Putty primer coat | 5.94d | 2026-05-08 | 2026-05-14 | 4296, 4310 |  | 7 day week With NGT Ban | 130280 |
| 4313 | 37200.37300.37500.38300.38900.40700.41700.59500.1057900 | Door shutter fixing | 7.94d | 2026-05-08 | 2026-05-16 | 4297, 4310 |  | 7 day week With NGT Ban | 130290 |
| 4314 | 37200.37300.37500.38300.38900.40700.41700.59500.1058000 | Electrical wiring work | 11.94d | 2026-05-16 | 2026-05-28 | 4298, 4313 |  | 7 day week With NGT Ban | 130300 |
| 4315 | 37200.37300.37500.38300.38900.40700.41700.59500.1058100 | Painting 1st coat | 11.94d | 2026-05-28 | 2026-06-09 | 4299, 4312, 4313, 4314 |  | 7 day week With NGT Ban | 130310 |
| 4316 | 37200.37300.37500.38300.38900.40700.41700.59500.1058200 | False ceiling | 9.94d | 2026-06-09 | 2026-06-19 | 4300, 4315 |  | 7 day week With NGT Ban | 130320 |

| ID | WBS | Task | Duration | Start | Finish | Predecessors | Constraint | Calendar | Unique_Task_ID |
| --- | --- | --- | --- | --- | --- | --- | --- | --- | --- |
| 4317 | 37200.37300.37500.38300.38900.40700.41700.59400 | **25th Floor** | 153.69d | 2026-01-31 | 2026-07-04 |  | start no earlier than 2026-01-31 | 7 day week With NGT Ban | 123210 |
| 4318 | 37200.37300.37500.38300.38900.40700.41700.59400.1058300 | Block Work | 7.94d | 2026-01-31 | 2026-02-08 | 4302FS+0.25d |  | 7 day week With NGT Ban | 130330 |
| 4319 | 37200.37300.37500.38300.38900.40700.41700.59400.1058400 | Door Frame Fixing | 8.94d | 2026-02-14 | 2026-02-23 | 4303, 4318 |  | 7 day week With NGT Ban | 130350 |
| 4320 | 37200.37300.37500.38300.38900.40700.41700.59400.1058500 | Internal Plumbing Works | 9.94d | 2026-02-12 | 2026-02-22 | 4304, 4318 |  | 7 day week With NGT Ban | 130360 |
| 4321 | 37200.37300.37500.38300.38900.40700.41700.59400.1058600 | Waterproofing | 11.94d | 2026-04-07 | 2026-04-19 | 4305, 4320 |  | 7 day week With NGT Ban | 130370 |
| 4322 | 37200.37300.37500.38300.38900.40700.41700.59400.1058700 | Internal Plaster | 8.94d | 2026-02-10 | 2026-02-19 | 4306FS+0.25d |  | 7 day week With NGT Ban | 130380 |
| 4323 | 37200.37300.37500.38300.38900.40700.41700.59400.1058800 | IPS flooring work | 8.94d | 2026-04-19 | 2026-04-28 | 4307, 4319, 4321, 4322 |  | 7 day week With NGT Ban | 130390 |
| 4324 | 37200.37300.37500.38300.38900.40700.41700.59400.1058900 | Toilet dado work | 7.94d | 2026-04-19 | 2026-04-27 | 4308, 4321, 4322 |  | 7 day week With NGT Ban | 130400 |
| 4325 | 37200.37300.37500.38300.38900.40700.41700.59400.1059000 | Toilet flooring work | 6.94d | 2026-04-27 | 2026-05-04 | 4309, 4324 |  | 7 day week With NGT Ban | 130410 |
| 4326 | 37200.37300.37500.38300.38900.40700.41700.59400.1059100 | Living dinning flooring | 14.94d | 2026-05-08 | 2026-05-23 | 4310, 4319, 4325 |  | 7 day week With NGT Ban | 130420 |
| 4327 | 37200.37300.37500.38300.38900.40700.41700.59400.1059200 | Aluminium door-window fixing | 14.94d | 2026-05-24 | 2026-06-08 | 4311, 4323, 4326 |  | 7 day week With NGT Ban | 130430 |
| 4328 | 37200.37300.37500.38300.38900.40700.41700.59400.1059300 | Putty primer coat | 5.94d | 2026-05-23 | 2026-05-29 | 4312, 4326 |  | 7 day week With NGT Ban | 130440 |
| 4329 | 37200.37300.37500.38300.38900.40700.41700.59400.1059400 | Door shutter fixing | 7.94d | 2026-05-23 | 2026-05-31 | 4313, 4326 |  | 7 day week With NGT Ban | 130450 |
| 4330 | 37200.37300.37500.38300.38900.40700.41700.59400.1059500 | Electrical wiring work | 11.94d | 2026-05-31 | 2026-06-12 | 4314, 4329 |  | 7 day week With NGT Ban | 130460 |
| 4331 | 37200.37300.37500.38300.38900.40700.41700.59400.1059600 | Painting 1st coat | 11.94d | 2026-06-12 | 2026-06-24 | 4315, 4328, 4329, 4330 |  | 7 day week With NGT Ban | 130470 |
| 4332 | 37200.37300.37500.38300.38900.40700.41700.59400.1059700 | False ceiling | 9.94d | 2026-06-24 | 2026-07-04 | 4316, 4331 |  | 7 day week With NGT Ban | 130480 |
| 4333 | 37200.37300.37500.38300.38900.40700.41700.90400 | **26th Floor** | 191.88d | 2026-02-19 | 2026-08-30 |  | start no earlier than 2026-02-19 | 7 day week With NGT Ban | 123220 |
| 4334 | 37200.37300.37500.38300.38900.40700.41700.90400.1059800 | Block Work | 7.94d | 2026-05-21 | 2026-05-29 | 3921FS+0.25d, 4318FS+0.25d |  | 7 day week With NGT Ban | 130490 |
| 4335 | 37200.37300.37500.38300.38900.40700.41700.90400.1059900 | Door Frame Fixing | 8.94d | 2026-05-29 | 2026-06-06 | 4319, 4334 |  | 7 day week With NGT Ban | 130510 |
| 4336 | 37200.37300.37500.38300.38900.40700.41700.90400.1060000 | Internal Plumbing Works | 9.94d | 2026-05-29 | 2026-06-07 | 4320, 4334 |  | 7 day week With NGT Ban | 130520 |
| 4337 | 37200.37300.37500.38300.38900.40700.41700.90400.1060100 | Waterproofing | 11.94d | 2026-06-08 | 2026-06-19 | 4321, 4336 |  | 7 day week With NGT Ban | 130530 |
| 4338 | 37200.37300.37500.38300.38900.40700.41700.90400.1060200 | Internal Plaster | 8.94d | 2026-02-19 | 2026-02-28 | 4322FS+0.25d |  | 7 day week With NGT Ban | 130540 |
| 4339 | 37200.37300.37500.38300.38900.40700.41700.90400.1060300 | IPS flooring work | 8.94d | 2026-06-19 | 2026-06-28 | 4323, 4335, 4337, 4338 |  | 7 day week With NGT Ban | 130550 |
| 4340 | 37200.37300.37500.38300.38900.40700.41700.90400.1060400 | Toilet dado work | 7.94d | 2026-06-19 | 2026-06-27 | 4324, 4337, 4338 |  | 7 day week With NGT Ban | 130560 |
| 4341 | 37200.37300.37500.38300.38900.40700.41700.90400.1060500 | Toilet flooring work | 6.94d | 2026-06-27 | 2026-07-04 | 4325, 4340 |  | 7 day week With NGT Ban | 130570 |
| 4342 | 37200.37300.37500.38300.38900.40700.41700.90400.1060600 | Living dinning flooring | 14.94d | 2026-07-04 | 2026-07-19 | 4326, 4335, 4341 |  | 7 day week With NGT Ban | 130580 |
| 4343 | 37200.37300.37500.38300.38900.40700.41700.90400.1060700 | Aluminium door-window fixing | 14.94d | 2026-07-19 | 2026-08-03 | 4327, 4339, 4342 |  | 7 day week With NGT Ban | 130590 |
| 4344 | 37200.37300.37500.38300.38900.40700.41700.90400.1060800 | Putty primer coat | 5.94d | 2026-07-19 | 2026-07-25 | 4328, 4342 |  | 7 day week With NGT Ban | 130600 |
| 4345 | 37200.37300.37500.38300.38900.40700.41700.90400.1060900 | Door shutter fixing | 7.94d | 2026-07-19 | 2026-07-27 | 4329, 4342 |  | 7 day week With NGT Ban | 130610 |
| 4346 | 37200.37300.37500.38300.38900.40700.41700.90400.1061000 | Electrical wiring work | 11.94d | 2026-07-27 | 2026-08-08 | 4330, 4345 |  | 7 day week With NGT Ban | 130620 |
| 4347 | 37200.37300.37500.38300.38900.40700.41700.90400.1061100 | Painting 1st coat | 11.94d | 2026-08-08 | 2026-08-20 | 4331, 4344, 4345, 4346 |  | 7 day week With NGT Ban | 130630 |
| 4348 | 37200.37300.37500.38300.38900.40700.41700.90400.1061200 | False ceiling | 9.94d | 2026-08-20 | 2026-08-30 | 4332, 4347 |  | 7 day week With NGT Ban | 130640 |

| ID | WBS | Task | Duration | Start | Finish | Predecessors | Constraint | Calendar | Unique_Task_ID |
| --- | --- | --- | --- | --- | --- | --- | --- | --- | --- |
| 4349 | 37200.37300.37500.38300.38900.40700.41700.90500 | **27th Floor** | 110.62d | 2026-06-01 | 2026-09-20 |  | start no earlier than 2026-06-01 | 7 day week With NGT Ban | 123230 |
| 4350 | 37200.37300.37500.38300.38900.40700.41700.90500.1061300 | Block Work | 7.94d | 2026-06-01 | 2026-06-09 | 3922, 4334 |  | 7 day week With NGT Ban | 130650 |
| 4351 | 37200.37300.37500.38300.38900.40700.41700.90500.1061400 | Door Frame Fixing | 8.94d | 2026-06-09 | 2026-06-18 | 4335, 4350 |  | 7 day week With NGT Ban | 130670 |
| 4352 | 37200.37300.37500.38300.38900.40700.41700.90500.1061500 | Internal Plumbing Works | 9.94d | 2026-06-09 | 2026-06-19 | 4336, 4350 |  | 7 day week With NGT Ban | 130680 |
| 4353 | 37200.37300.37500.38300.38900.40700.41700.90500.1061600 | Waterproofing | 11.94d | 2026-06-19 | 2026-07-01 | 4337, 4352 |  | 7 day week With NGT Ban | 130690 |
| 4354 | 37200.37300.37500.38300.38900.40700.41700.90500.1061700 | Internal Plaster | 8.94d | 2026-07-01 | 2026-07-10 | 4338, 4351, 4352, 4353 |  | 7 day week With NGT Ban | 130700 |
| 4355 | 37200.37300.37500.38300.38900.40700.41700.90500.1061800 | IPS flooring work | 8.94d | 2026-07-10 | 2026-07-19 | 4339, 4351, 4353, 4354 |  | 7 day week With NGT Ban | 130710 |
| 4356 | 37200.37300.37500.38300.38900.40700.41700.90500.1061900 | Toilet dado work | 7.94d | 2026-07-10 | 2026-07-18 | 4340, 4353, 4354 |  | 7 day week With NGT Ban | 130720 |
| 4357 | 37200.37300.37500.38300.38900.40700.41700.90500.1062000 | Toilet flooring work | 6.94d | 2026-07-18 | 2026-07-25 | 4341, 4356 |  | 7 day week With NGT Ban | 130730 |
| 4358 | 37200.37300.37500.38300.38900.40700.41700.90500.1062100 | Living dinning flooring | 14.94d | 2026-07-25 | 2026-08-09 | 4342, 4351, 4357 |  | 7 day week With NGT Ban | 130740 |
| 4359 | 37200.37300.37500.38300.38900.40700.41700.90500.1062200 | Aluminium door-window fixing | 14.94d | 2026-08-09 | 2026-08-24 | 4343, 4355, 4358 |  | 7 day week With NGT Ban | 130750 |
| 4360 | 37200.37300.37500.38300.38900.40700.41700.90500.1062300 | Putty primer coat | 5.94d | 2026-08-09 | 2026-08-15 | 4344, 4358 |  | 7 day week With NGT Ban | 130760 |
| 4361 | 37200.37300.37500.38300.38900.40700.41700.90500.1062400 | Door shutter fixing | 7.94d | 2026-08-09 | 2026-08-17 | 4345, 4358 |  | 7 day week With NGT Ban | 130770 |
| 4362 | 37200.37300.37500.38300.38900.40700.41700.90500.1062500 | Electrical wiring work | 11.94d | 2026-08-17 | 2026-08-29 | 4346, 4361 |  | 7 day week With NGT Ban | 130780 |
| 4363 | 37200.37300.37500.38300.38900.40700.41700.90500.1062600 | Painting 1st coat | 11.94d | 2026-08-29 | 2026-09-10 | 4347, 4360, 4361, 4362 |  | 7 day week With NGT Ban | 130790 |
| 4364 | 37200.37300.37500.38300.38900.40700.41700.90500.1062700 | False ceiling | 9.94d | 2026-09-10 | 2026-09-20 | 4348, 4363 |  | 7 day week With NGT Ban | 130800 |
| 4365 | 37200.37300.37500.38300.38900.40700.41700.90600 | **28th Floor** | 114.69d | 2026-06-12 | 2026-10-05 |  | start no earlier than 2026-06-12 | 7 day week With NGT Ban | 123240 |
| 4366 | 37200.37300.37500.38300.38900.40700.41700.90600.1062800 | Block Work | 7.94d | 2026-06-12 | 2026-06-20 | 3923, 4350 |  | 7 day week With NGT Ban | 130810 |
| 4367 | 37200.37300.37500.38300.38900.40700.41700.90600.1062900 | Door Frame Fixing | 8.94d | 2026-06-20 | 2026-06-29 | 4351, 4366 |  | 7 day week With NGT Ban | 130830 |
| 4368 | 37200.37300.37500.38300.38900.40700.41700.90600.1063000 | Internal Plumbing Works | 9.94d | 2026-06-20 | 2026-06-30 | 4352, 4366 |  | 7 day week With NGT Ban | 130840 |
| 4369 | 37200.37300.37500.38300.38900.40700.41700.90600.1063100 | Waterproofing | 11.94d | 2026-07-01 | 2026-07-13 | 4353, 4368 |  | 7 day week With NGT Ban | 130850 |
| 4370 | 37200.37300.37500.38300.38900.40700.41700.90600.1063200 | Internal Plaster | 8.94d | 2026-07-13 | 2026-07-22 | 4354, 4367, 4368, 4369 |  | 7 day week With NGT Ban | 130860 |
| 4371 | 37200.37300.37500.38300.38900.40700.41700.90600.1063300 | IPS flooring work | 8.94d | 2026-07-22 | 2026-07-31 | 4355, 4367, 4369, 4370 |  | 7 day week With NGT Ban | 130870 |
| 4372 | 37200.37300.37500.38300.38900.40700.41700.90600.1063400 | Toilet dado work | 7.94d | 2026-07-22 | 2026-07-30 | 4356, 4369, 4370 |  | 7 day week With NGT Ban | 130880 |
| 4373 | 37200.37300.37500.38300.38900.40700.41700.90600.1063500 | Toilet flooring work | 6.94d | 2026-07-30 | 2026-08-06 | 4357, 4372 |  | 7 day week With NGT Ban | 130890 |
| 4374 | 37200.37300.37500.38300.38900.40700.41700.90600.1063600 | Living dinning flooring | 14.94d | 2026-08-09 | 2026-08-24 | 4358, 4367, 4373 |  | 7 day week With NGT Ban | 130900 |
| 4375 | 37200.37300.37500.38300.38900.40700.41700.90600.1063700 | Aluminium door-window fixing | 14.94d | 2026-08-24 | 2026-09-08 | 4359, 4371, 4374 |  | 7 day week With NGT Ban | 130910 |
| 4376 | 37200.37300.37500.38300.38900.40700.41700.90600.1063800 | Putty primer coat | 5.94d | 2026-08-24 | 2026-08-30 | 4360, 4374 |  | 7 day week With NGT Ban | 130920 |
| 4377 | 37200.37300.37500.38300.38900.40700.41700.90600.1063900 | Door shutter fixing | 7.94d | 2026-08-24 | 2026-09-01 | 4361, 4374 |  | 7 day week With NGT Ban | 130930 |
| 4378 | 37200.37300.37500.38300.38900.40700.41700.90600.1064000 | Electrical wiring work | 11.94d | 2026-09-01 | 2026-09-13 | 4362, 4377 |  | 7 day week With NGT Ban | 130940 |
| 4379 | 37200.37300.37500.38300.38900.40700.41700.90600.1064100 | Painting 1st coat | 11.94d | 2026-09-13 | 2026-09-25 | 4363, 4376, 4377, 4378 |  | 7 day week With NGT Ban | 130950 |
| 4380 | 37200.37300.37500.38300.38900.40700.41700.90600.1064200 | False ceiling | 9.94d | 2026-09-25 | 2026-10-05 | 4364, 4379 |  | 7 day week With NGT Ban | 130960 |

| ID | WBS | Task | Duration | Start | Finish | Predecessors | Constraint | Calendar | Unique_Task_ID |
| --- | --- | --- | --- | --- | --- | --- | --- | --- | --- |
| 4381 | 37200.37300.37500.38300.38900.40700.41700.90700 | **29th Floor** | 115.75d | 2026-06-26 | 2026-10-20 |  | start no earlier than 2026-06-26 | 7 day week With NGT Ban | 123250 |
| 4382 | 37200.37300.37500.38300.38900.40700.41700.90700.1064300 | Block Work | 7.94d | 2026-06-26 | 2026-07-04 | 3924, 4366 |  | 7 day week With NGT Ban | 130970 |
| 4383 | 37200.37300.37500.38300.38900.40700.41700.90700.1064400 | Door Frame Fixing | 8.94d | 2026-07-04 | 2026-07-13 | 4367, 4382 |  | 7 day week With NGT Ban | 130990 |
| 4384 | 37200.37300.37500.38300.38900.40700.41700.90700.1064500 | Internal Plumbing Works | 9.94d | 2026-07-04 | 2026-07-14 | 4368, 4382 |  | 7 day week With NGT Ban | 131000 |
| 4385 | 37200.37300.37500.38300.38900.40700.41700.90700.1064600 | Waterproofing | 11.94d | 2026-07-14 | 2026-07-26 | 4369, 4384 |  | 7 day week With NGT Ban | 131010 |
| 4386 | 37200.37300.37500.38300.38900.40700.41700.90700.1064700 | Internal Plaster | 8.94d | 2026-07-26 | 2026-08-04 | 4370, 4383, 4384, 4385 |  | 7 day week With NGT Ban | 131020 |
| 4387 | 37200.37300.37500.38300.38900.40700.41700.90700.1064800 | IPS flooring work | 8.94d | 2026-08-04 | 2026-08-13 | 4371, 4383, 4385, 4386 |  | 7 day week With NGT Ban | 131030 |
| 4388 | 37200.37300.37500.38300.38900.40700.41700.90700.1064900 | Toilet dado work | 7.94d | 2026-08-04 | 2026-08-12 | 4372, 4385, 4386 |  | 7 day week With NGT Ban | 131040 |
| 4389 | 37200.37300.37500.38300.38900.40700.41700.90700.1065000 | Toilet flooring work | 6.94d | 2026-08-12 | 2026-08-19 | 4373, 4388 |  | 7 day week With NGT Ban | 131050 |
| 4390 | 37200.37300.37500.38300.38900.40700.41700.90700.1065100 | Living dinning flooring | 14.94d | 2026-08-24 | 2026-09-08 | 4374, 4383, 4389 |  | 7 day week With NGT Ban | 131060 |
| 4391 | 37200.37300.37500.38300.38900.40700.41700.90700.1065200 | Aluminium door-window fixing | 14.94d | 2026-09-08 | 2026-09-23 | 4375, 4387, 4390 |  | 7 day week With NGT Ban | 131070 |
| 4392 | 37200.37300.37500.38300.38900.40700.41700.90700.1065300 | Putty primer coat | 5.94d | 2026-09-08 | 2026-09-14 | 4376, 4390 |  | 7 day week With NGT Ban | 131080 |
| 4393 | 37200.37300.37500.38300.38900.40700.41700.90700.1065400 | Door shutter fixing | 7.94d | 2026-09-08 | 2026-09-16 | 4377, 4390 |  | 7 day week With NGT Ban | 131090 |
| 4394 | 37200.37300.37500.38300.38900.40700.41700.90700.1065500 | Electrical wiring work | 11.94d | 2026-09-16 | 2026-09-28 | 4378, 4393 |  | 7 day week With NGT Ban | 131100 |
| 4395 | 37200.37300.37500.38300.38900.40700.41700.90700.1065600 | Painting 1st coat | 11.94d | 2026-09-28 | 2026-10-10 | 4379, 4392, 4393, 4394 |  | 7 day week With NGT Ban | 131110 |
| 4396 | 37200.37300.37500.38300.38900.40700.41700.90700.1065700 | False ceiling | 9.94d | 2026-10-10 | 2026-10-20 | 4380, 4395 |  | 7 day week With NGT Ban | 131120 |
| 4397 | 37200.37300.37500.38300.38900.40700.41700.90800 | **30th Floor** | 116.31d | 2026-08-04 | 2027-01-12 |  | start no earlier than 2026-08-04 | 7 day week With NGT Ban | 123260 |
| 4398 | 37200.37300.37500.38300.38900.40700.41700.90800.1065800 | Block Work | 7.94d | 2026-08-04 | 2026-08-12 | 3925, 4382 |  | 7 day week With NGT Ban | 131130 |
| 4399 | 37200.37300.37500.38300.38900.40700.41700.90800.1065900 | Door Frame Fixing | 8.94d | 2026-08-12 | 2026-08-21 | 4383, 4398 |  | 7 day week With NGT Ban | 131150 |
| 4400 | 37200.37300.37500.38300.38900.40700.41700.90800.1066000 | Internal Plumbing Works | 9.94d | 2026-08-12 | 2026-08-22 | 4384, 4398 |  | 7 day week With NGT Ban | 131160 |
| 4401 | 37200.37300.37500.38300.38900.40700.41700.90800.1066100 | Waterproofing | 11.94d | 2026-08-22 | 2026-09-03 | 4385, 4400 |  | 7 day week With NGT Ban | 131170 |
| 4402 | 37200.37300.37500.38300.38900.40700.41700.90800.1066200 | Internal Plaster | 8.94d | 2026-09-03 | 2026-09-12 | 4386, 4399, 4400, 4401 |  | 7 day week With NGT Ban | 131180 |
| 4403 | 37200.37300.37500.38300.38900.40700.41700.90800.1066300 | IPS flooring work | 8.94d | 2026-09-12 | 2026-09-21 | 4387, 4399, 4401, 4402 |  | 7 day week With NGT Ban | 131190 |
| 4404 | 37200.37300.37500.38300.38900.40700.41700.90800.1066400 | Toilet dado work | 7.94d | 2026-09-12 | 2026-09-20 | 4388, 4401, 4402 |  | 7 day week With NGT Ban | 131200 |
| 4405 | 37200.37300.37500.38300.38900.40700.41700.90800.1066500 | Toilet flooring work | 6.94d | 2026-09-20 | 2026-09-26 | 4389, 4404 |  | 7 day week With NGT Ban | 131210 |
| 4406 | 37200.37300.37500.38300.38900.40700.41700.90800.1066600 | Living dinning flooring | 14.94d | 2026-09-27 | 2026-10-11 | 4390, 4399, 4405 |  | 7 day week With NGT Ban | 131220 |
| 4407 | 37200.37300.37500.38300.38900.40700.41700.90800.1066700 | Aluminium door-window fixing | 14.94d | 2026-10-11 | 2026-10-26 | 4391, 4403, 4406 |  | 7 day week With NGT Ban | 131230 |
| 4408 | 37200.37300.37500.38300.38900.40700.41700.90800.1066800 | Putty primer coat | 5.94d | 2026-10-11 | 2026-10-17 | 4392, 4406 |  | 7 day week With NGT Ban | 131240 |
| 4409 | 37200.37300.37500.38300.38900.40700.41700.90800.1066900 | Door shutter fixing | 7.94d | 2026-10-11 | 2026-10-19 | 4393, 4406 |  | 7 day week With NGT Ban | 131250 |
| 4410 | 37200.37300.37500.38300.38900.40700.41700.90800.1067000 | Electrical wiring work | 14.94d | 2026-10-19 | 2026-12-18 | 4394, 4409 |  | 7 day week With NGT Ban | 131260 |
| 4411 | 37200.37300.37500.38300.38900.40700.41700.90800.1067100 | Painting 1st coat | 14.94d | 2026-12-18 | 2027-01-02 | 4395, 4408, 4409, 4410 |  | 7 day week With NGT Ban | 131270 |
| 4412 | 37200.37300.37500.38300.38900.40700.41700.90800.1067200 | False ceiling | 9.94d | 2027-01-02 | 2027-01-12 | 4396, 4411 |  | 7 day week With NGT Ban | 131280 |

| ID | WBS | Task | Duration | Start | Finish | Predecessors | Constraint | Calendar | Unique_Task_ID |
| --- | --- | --- | --- | --- | --- | --- | --- | --- | --- |
| 4413 | 37200.37300.37500.38300.38900.40700.41700.90900 | **31st Floor** | 123.31d | 2026-08-12 | 2027-01-27 |  | start no earlier than 2026-08-12 | 7 day week With NGT Ban | 123270 |
| 4414 | 37200.37300.37500.38300.38900.40700.41700.90900.1067300 | Block Work | 7.94d | 2026-08-12 | 2026-08-20 | 3926, 4398 |  | 7 day week With NGT Ban | 131290 |
| 4415 | 37200.37300.37500.38300.38900.40700.41700.90900.1067400 | Door Frame Fixing | 8.94d | 2026-08-21 | 2026-08-30 | 4399, 4414 |  | 7 day week With NGT Ban | 131310 |
| 4416 | 37200.37300.37500.38300.38900.40700.41700.90900.1067500 | Internal Plumbing Works | 9.94d | 2026-08-22 | 2026-09-01 | 4400, 4414 |  | 7 day week With NGT Ban | 131320 |
| 4417 | 37200.37300.37500.38300.38900.40700.41700.90900.1067600 | Waterproofing | 11.94d | 2026-09-03 | 2026-09-15 | 4401, 4416 |  | 7 day week With NGT Ban | 131330 |
| 4418 | 37200.37300.37500.38300.38900.40700.41700.90900.1067700 | Internal Plaster | 8.94d | 2026-09-15 | 2026-09-24 | 4402, 4415, 4416, 4417 |  | 7 day week With NGT Ban | 131340 |
| 4419 | 37200.37300.37500.38300.38900.40700.41700.90900.1067800 | IPS flooring work | 8.94d | 2026-09-24 | 2026-10-02 | 4403, 4415, 4417, 4418 |  | 7 day week With NGT Ban | 131350 |
| 4420 | 37200.37300.37500.38300.38900.40700.41700.90900.1067900 | Toilet dado work | 7.94d | 2026-09-24 | 2026-10-01 | 4404, 4417, 4418 |  | 7 day week With NGT Ban | 131360 |
| 4421 | 37200.37300.37500.38300.38900.40700.41700.90900.1068000 | Toilet flooring work | 6.94d | 2026-10-02 | 2026-10-08 | 4405, 4420 |  | 7 day week With NGT Ban | 131370 |
| 4422 | 37200.37300.37500.38300.38900.40700.41700.90900.1068100 | Living dinning flooring | 14.94d | 2026-10-11 | 2026-10-26 | 4406, 4415, 4421 |  | 7 day week With NGT Ban | 131380 |
| 4423 | 37200.37300.37500.38300.38900.40700.41700.90900.1068200 | Aluminium door-window fixing | 11.94d | 2026-10-26 | 2026-12-22 | 4407, 4419, 4422 |  | 7 day week With NGT Ban | 131390 |
| 4424 | 37200.37300.37500.38300.38900.40700.41700.90900.1068300 | Putty primer coat | 5.94d | 2026-10-26 | 2026-12-16 | 4408, 4422 |  | 7 day week With NGT Ban | 131400 |
| 4425 | 37200.37300.37500.38300.38900.40700.41700.90900.1068400 | Door shutter fixing | 7.94d | 2026-10-26 | 2026-12-18 | 4409, 4422 |  | 7 day week With NGT Ban | 131410 |
| 4426 | 37200.37300.37500.38300.38900.40700.41700.90900.1068500 | Electrical wiring work | 14.94d | 2026-12-18 | 2027-01-02 | 4410, 4425 |  | 7 day week With NGT Ban | 131420 |
| 4427 | 37200.37300.37500.38300.38900.40700.41700.90900.1068600 | Painting 1st coat | 14.94d | 2027-01-02 | 2027-01-17 | 4411, 4424, 4425, 4426 |  | 7 day week With NGT Ban | 131430 |
| 4428 | 37200.37300.37500.38300.38900.40700.41700.90900.1068700 | False ceiling | 9.94d | 2027-01-17 | 2027-01-27 | 4412, 4427 |  | 7 day week With NGT Ban | 131440 |
| 4429 | 37200.37300.37500.38300.38900.40700.41700.91000 | **32nd Floor** | 130.31d | 2026-08-20 | 2027-02-11 |  | start no earlier than 2026-08-20 | 7 day week With NGT Ban | 123280 |
| 4430 | 37200.37300.37500.38300.38900.40700.41700.91000.1068800 | Block Work | 7.94d | 2026-08-20 | 2026-08-28 | 3927, 4414 |  | 7 day week With NGT Ban | 131450 |
| 4431 | 37200.37300.37500.38300.38900.40700.41700.91000.1068900 | Door Frame Fixing | 8.94d | 2026-08-30 | 2026-09-08 | 4415, 4430 |  | 7 day week With NGT Ban | 131470 |
| 4432 | 37200.37300.37500.38300.38900.40700.41700.91000.1069000 | Internal Plumbing Works | 9.94d | 2026-09-01 | 2026-09-11 | 4416, 4430 |  | 7 day week With NGT Ban | 131480 |
| 4433 | 37200.37300.37500.38300.38900.40700.41700.91000.1069100 | Waterproofing | 11.94d | 2026-09-15 | 2026-09-27 | 4417, 4432 |  | 7 day week With NGT Ban | 131490 |
| 4434 | 37200.37300.37500.38300.38900.40700.41700.91000.1069200 | Internal Plaster | 8.94d | 2026-09-27 | 2026-10-05 | 4418, 4431, 4432, 4433 |  | 7 day week With NGT Ban | 131500 |
| 4435 | 37200.37300.37500.38300.38900.40700.41700.91000.1069300 | IPS flooring work | 8.94d | 2026-10-06 | 2026-10-14 | 4419, 4431, 4433, 4434 |  | 7 day week With NGT Ban | 131510 |
| 4436 | 37200.37300.37500.38300.38900.40700.41700.91000.1069400 | Toilet dado work | 7.94d | 2026-10-06 | 2026-10-13 | 4420, 4433, 4434 |  | 7 day week With NGT Ban | 131520 |
| 4437 | 37200.37300.37500.38300.38900.40700.41700.91000.1069500 | Toilet flooring work | 6.94d | 2026-10-13 | 2026-10-20 | 4421, 4436 |  | 7 day week With NGT Ban | 131530 |
| 4438 | 37200.37300.37500.38300.38900.40700.41700.91000.1069600 | Living dinning flooring | 14.94d | 2026-10-26 | 2026-12-25 | 4422, 4431, 4437 |  | 7 day week With NGT Ban | 131540 |
| 4439 | 37200.37300.37500.38300.38900.40700.41700.91000.1069700 | Aluminium door-window fixing | 11.94d | 2026-12-25 | 2027-01-06 | 4423, 4435, 4438 |  | 7 day week With NGT Ban | 131550 |
| 4440 | 37200.37300.37500.38300.38900.40700.41700.91000.1069800 | Putty primer coat | 5.94d | 2026-12-25 | 2026-12-31 | 4424, 4438 |  | 7 day week With NGT Ban | 131560 |
| 4441 | 37200.37300.37500.38300.38900.40700.41700.91000.1069900 | Door shutter fixing | 7.94d | 2026-12-25 | 2027-01-02 | 4425, 4438 |  | 7 day week With NGT Ban | 131570 |
| 4442 | 37200.37300.37500.38300.38900.40700.41700.91000.1070000 | Electrical wiring work | 14.94d | 2027-01-02 | 2027-01-17 | 4426, 4441 |  | 7 day week With NGT Ban | 131580 |
| 4443 | 37200.37300.37500.38300.38900.40700.41700.91000.1070100 | Painting 1st coat | 14.94d | 2027-01-17 | 2027-02-01 | 4427, 4440, 4441, 4442 |  | 7 day week With NGT Ban | 131590 |
| 4444 | 37200.37300.37500.38300.38900.40700.41700.91000.1070200 | False ceiling | 9.94d | 2027-02-01 | 2027-02-11 | 4428, 4443 |  | 7 day week With NGT Ban | 131600 |

| ID | WBS | Task | Duration | Start | Finish | Predecessors | Constraint | Calendar | Unique_Task_ID |
| --- | --- | --- | --- | --- | --- | --- | --- | --- | --- |
| 4445 | 37200.37300.37500.38300.38900.40700.41700.91100 | **33rd Floor** | 134.31d | 2026-08-28 | 2027-02-23 |  | start no earlier than 2026-08-28 | 7 day week With NGT Ban | 123290 |
| 4446 | 37200.37300.37500.38300.38900.40700.41700.91100.1070300 | Block Work | 7.94d | 2026-08-28 | 2026-09-05 | 3928, 4430 |  | 7 day week With NGT Ban | 131610 |
| 4447 | 37200.37300.37500.38300.38900.40700.41700.91100.1070400 | Door Frame Fixing | 8.94d | 2026-09-08 | 2026-09-17 | 4431, 4446 |  | 7 day week With NGT Ban | 131630 |
| 4448 | 37200.37300.37500.38300.38900.40700.41700.91100.1070500 | Internal Plumbing Works | 9.94d | 2026-09-11 | 2026-09-21 | 4432, 4446 |  | 7 day week With NGT Ban | 131640 |
| 4449 | 37200.37300.37500.38300.38900.40700.41700.91100.1070600 | Waterproofing | 11.94d | 2026-09-27 | 2026-10-08 | 4433, 4448 |  | 7 day week With NGT Ban | 131650 |
| 4450 | 37200.37300.37500.38300.38900.40700.41700.91100.1070700 | Internal Plaster | 8.94d | 2026-10-09 | 2026-10-17 | 4434, 4447, 4448, 4449 |  | 7 day week With NGT Ban | 131660 |
| 4451 | 37200.37300.37500.38300.38900.40700.41700.91100.1070800 | IPS flooring work | 8.94d | 2026-10-17 | 2026-10-26 | 4435, 4447, 4449, 4450 |  | 7 day week With NGT Ban | 131670 |
| 4452 | 37200.37300.37500.38300.38900.40700.41700.91100.1070900 | Toilet dado work | 7.94d | 2026-10-17 | 2026-10-25 | 4436, 4449, 4450 |  | 7 day week With NGT Ban | 131680 |
| 4453 | 37200.37300.37500.38300.38900.40700.41700.91100.1071000 | Toilet flooring work | 6.94d | 2026-10-25 | 2026-12-16 | 4437, 4452 |  | 7 day week With NGT Ban | 131690 |
| 4454 | 37200.37300.37500.38300.38900.40700.41700.91100.1071100 | Living dinning flooring | 14.94d | 2026-12-25 | 2027-01-09 | 4438, 4447, 4453 |  | 7 day week With NGT Ban | 131700 |
| 4455 | 37200.37300.37500.38300.38900.40700.41700.91100.1071200 | Aluminium door-window fixing | 14.94d | 2027-01-09 | 2027-01-24 | 4439, 4451, 4454 |  | 7 day week With NGT Ban | 131710 |
| 4456 | 37200.37300.37500.38300.38900.40700.41700.91100.1071300 | Putty primer coat | 5.94d | 2027-01-09 | 2027-01-15 | 4440, 4454 |  | 7 day week With NGT Ban | 131720 |
| 4457 | 37200.37300.37500.38300.38900.40700.41700.91100.1071400 | Door shutter fixing | 7.94d | 2027-01-09 | 2027-01-17 | 4441, 4454 |  | 7 day week With NGT Ban | 131730 |
| 4458 | 37200.37300.37500.38300.38900.40700.41700.91100.1071500 | Electrical wiring work | 11.94d | 2027-01-17 | 2027-01-29 | 4442, 4457 |  | 7 day week With NGT Ban | 131740 |
| 4459 | 37200.37300.37500.38300.38900.40700.41700.91100.1071600 | Painting 1st coat | 11.94d | 2027-02-01 | 2027-02-13 | 4443, 4456, 4457, 4458 |  | 7 day week With NGT Ban | 131750 |
| 4460 | 37200.37300.37500.38300.38900.40700.41700.91100.1071700 | False ceiling | 9.94d | 2027-02-13 | 2027-02-23 | 4444, 4459 |  | 7 day week With NGT Ban | 131760 |
| 4461 | 37200.37300.37500.38300.38900.40700.41700.91200 | **34th Floor** | 138.31d | 2026-09-05 | 2027-03-07 |  | start no earlier than 2026-09-05 | 7 day week With NGT Ban | 123300 |
| 4462 | 37200.37300.37500.38300.38900.40700.41700.91200.1071800 | Block Work | 7.94d | 2026-09-05 | 2026-09-13 | 3929, 4446 |  | 7 day week With NGT Ban | 131770 |
| 4463 | 37200.37300.37500.38300.38900.40700.41700.91200.1071900 | Door Frame Fixing | 8.94d | 2026-09-17 | 2026-09-25 | 4447, 4462 |  | 7 day week With NGT Ban | 131790 |
| 4464 | 37200.37300.37500.38300.38900.40700.41700.91200.1072000 | Internal Plumbing Works | 9.94d | 2026-09-21 | 2026-09-30 | 4448, 4462 |  | 7 day week With NGT Ban | 131800 |
| 4465 | 37200.37300.37500.38300.38900.40700.41700.91200.1072100 | Waterproofing | 11.94d | 2026-10-09 | 2026-10-20 | 4449, 4464 |  | 7 day week With NGT Ban | 131810 |
| 4466 | 37200.37300.37500.38300.38900.40700.41700.91200.1072200 | Internal Plaster | 8.94d | 2026-10-20 | 2026-10-29 | 4450, 4463, 4464, 4465 |  | 7 day week With NGT Ban | 131820 |
| 4467 | 37200.37300.37500.38300.38900.40700.41700.91200.1072300 | IPS flooring work | 8.94d | 2026-10-29 | 2026-12-22 | 4451, 4463, 4465, 4466 |  | 7 day week With NGT Ban | 131830 |
| 4468 | 37200.37300.37500.38300.38900.40700.41700.91200.1072400 | Toilet dado work | 7.94d | 2026-10-29 | 2026-12-21 | 4452, 4465, 4466 |  | 7 day week With NGT Ban | 131840 |
| 4469 | 37200.37300.37500.38300.38900.40700.41700.91200.1072500 | Toilet flooring work | 6.94d | 2026-12-21 | 2026-12-28 | 4453, 4468 |  | 7 day week With NGT Ban | 131850 |
| 4470 | 37200.37300.37500.38300.38900.40700.41700.91200.1072600 | Living dinning flooring | 14.94d | 2027-01-09 | 2027-01-24 | 4454, 4463, 4469 |  | 7 day week With NGT Ban | 131860 |
| 4471 | 37200.37300.37500.38300.38900.40700.41700.91200.1072700 | Aluminium door-window fixing | 14.94d | 2027-01-24 | 2027-02-08 | 4455, 4467, 4470 |  | 7 day week With NGT Ban | 131870 |
| 4472 | 37200.37300.37500.38300.38900.40700.41700.91200.1072800 | Putty primer coat | 5.94d | 2027-01-24 | 2027-01-30 | 4456, 4470 |  | 7 day week With NGT Ban | 131880 |
| 4473 | 37200.37300.37500.38300.38900.40700.41700.91200.1072900 | Door shutter fixing | 7.94d | 2027-01-24 | 2027-02-01 | 4457, 4470 |  | 7 day week With NGT Ban | 131890 |
| 4474 | 37200.37300.37500.38300.38900.40700.41700.91200.1073000 | Electrical wiring work | 11.94d | 2027-02-01 | 2027-02-13 | 4458, 4473 |  | 7 day week With NGT Ban | 131900 |
| 4475 | 37200.37300.37500.38300.38900.40700.41700.91200.1073100 | Painting 1st coat | 11.94d | 2027-02-13 | 2027-02-25 | 4459, 4472, 4473, 4474 |  | 7 day week With NGT Ban | 131910 |
| 4476 | 37200.37300.37500.38300.38900.40700.41700.91200.1073200 | False ceiling | 9.94d | 2027-02-25 | 2027-03-07 | 4460, 4475 |  | 7 day week With NGT Ban | 131920 |

| ID | WBS | Task | Duration | Start | Finish | Predecessors | Constraint | Calendar | Unique_Task_ID |
| --- | --- | --- | --- | --- | --- | --- | --- | --- | --- |
| 4477 | 37200.37300.37500.38300.38900.40700.41700.91300 | **35th Floor** | 145.31d | 2026-09-13 | 2027-03-22 |  | start no earlier than 2026-09-13 | 7 day week With NGT Ban | 123310 |
| 4478 | 37200.37300.37500.38300.38900.40700.41700.91300.1073300 | Block Work | 7.94d | 2026-09-13 | 2026-09-20 | 3930, 4462 |  | 7 day week With NGT Ban | 131930 |
| 4479 | 37200.37300.37500.38300.38900.40700.41700.91300.1073400 | Door Frame Fixing | 8.94d | 2026-09-26 | 2026-10-04 | 4463, 4478 |  | 7 day week With NGT Ban | 131950 |
| 4480 | 37200.37300.37500.38300.38900.40700.41700.91300.1073500 | Internal Plumbing Works | 9.94d | 2026-10-01 | 2026-10-10 | 4464, 4478 |  | 7 day week With NGT Ban | 131960 |
| 4481 | 37200.37300.37500.38300.38900.40700.41700.91300.1073600 | Waterproofing | 11.94d | 2026-10-20 | 2026-12-16 | 4465, 4480 |  | 7 day week With NGT Ban | 131970 |
| 4482 | 37200.37300.37500.38300.38900.40700.41700.91300.1073700 | Internal Plaster | 8.94d | 2026-12-16 | 2026-12-25 | 4466, 4479, 4480, 4481 |  | 7 day week With NGT Ban | 131980 |
| 4483 | 37200.37300.37500.38300.38900.40700.41700.91300.1073800 | IPS flooring work | 8.94d | 2026-12-25 | 2027-01-03 | 4467, 4479, 4481, 4482 |  | 7 day week With NGT Ban | 131990 |
| 4484 | 37200.37300.37500.38300.38900.40700.41700.91300.1073900 | Toilet dado work | 7.94d | 2026-12-25 | 2027-01-02 | 4468, 4481, 4482 |  | 7 day week With NGT Ban | 132000 |
| 4485 | 37200.37300.37500.38300.38900.40700.41700.91300.1074000 | Toilet flooring work | 6.94d | 2027-01-02 | 2027-01-09 | 4469, 4484 |  | 7 day week With NGT Ban | 132010 |
| 4486 | 37200.37300.37500.38300.38900.40700.41700.91300.1074100 | Living dinning flooring | 14.94d | 2027-01-24 | 2027-02-08 | 4470, 4479, 4485 |  | 7 day week With NGT Ban | 132020 |
| 4487 | 37200.37300.37500.38300.38900.40700.41700.91300.1074200 | Aluminium door-window fixing | 14.94d | 2027-02-08 | 2027-02-23 | 4471, 4483, 4486 |  | 7 day week With NGT Ban | 132030 |
| 4488 | 37200.37300.37500.38300.38900.40700.41700.91300.1074300 | Putty primer coat | 5.94d | 2027-02-08 | 2027-02-14 | 4472, 4486 |  | 7 day week With NGT Ban | 132040 |
| 4489 | 37200.37300.37500.38300.38900.40700.41700.91300.1074400 | Door shutter fixing | 7.94d | 2027-02-08 | 2027-02-16 | 4473, 4486 |  | 7 day week With NGT Ban | 132050 |
| 4490 | 37200.37300.37500.38300.38900.40700.41700.91300.1074500 | Electrical wiring work | 11.94d | 2027-02-16 | 2027-02-28 | 4474, 4489 |  | 7 day week With NGT Ban | 132060 |
| 4491 | 37200.37300.37500.38300.38900.40700.41700.91300.1074600 | Painting 1st coat | 11.94d | 2027-02-28 | 2027-03-12 | 4475, 4488, 4489, 4490 |  | 7 day week With NGT Ban | 132070 |
| 4492 | 37200.37300.37500.38300.38900.40700.41700.91300.1074700 | False ceiling | 9.94d | 2027-03-12 | 2027-03-22 | 4476, 4491 |  | 7 day week With NGT Ban | 132080 |
| 4493 | 37200.37300.37500.38300.38900.40700.190800 | **Terrace Finishing** | 79.88d | 2026-06-19 | 2026-09-07 |  | start no earlier than 2026-06-19 | 7 day week With NGT Ban | 123850 |
| 4494 | 37200.37300.37500.38300.38900.40700.190800.471300 | Terrace waterproofing | 39.94d | 2026-06-19 | 2026-07-29 | 3887 |  | 7 day week With NGT Ban | 126350 |
| 4495 | 37200.37300.37500.38300.38900.40700.190800.471400 | Terrace finishing | 39.94d | 2026-07-29 | 2026-09-07 | 4494 |  | 7 day week With NGT Ban | 126360 |
| 4496 | 37200.37300.37500.38300.38900.40700.99300 | **Common Area Finishing** | 279.31d | 2025-08-20 | 2026-07-10 |  | start no earlier than 2025-08-20 | 7 day week With NGT Ban | 123340 |
| 4497 | 37200.37300.37500.38300.38900.40700.99300.471500 | Block Work | 39.94d | 2025-08-20 | 2025-09-29 | 3898FS+0.25d |  | 7 day week With NGT Ban | 126370 |
| 4498 | 37200.37300.37500.38300.38900.40700.99300.471600 | Internal Plaster | 119.94d | 2025-09-25 | 2026-03-08 | 4503SS+17.88d |  | 7 day week With NGT Ban | 126380 |
| 4499 | 37200.37300.37500.38300.38900.40700.99300.471700 | Staircase railing fixing | 149.94d | 2026-02-10 | 2026-07-10 | 4501SS+26.75d, 4500SS+26.75d |  | 7 day week With NGT Ban | 126390 |
| 4500 | 37200.37300.37500.38300.38900.40700.99300.471800 | Main staircase flooring | 149.94d | 2026-01-14 | 2026-06-13 | 4501SS+13.38d |  | 7 day week With NGT Ban | 126400 |
| 4501 | 37200.37300.37500.38300.38900.40700.99300.471900 | Fire staircase flooring | 149.94d | 2026-01-01 | 2026-05-31 | 4498SS+13.38d, 4505SS+26.75d |  | 7 day week With NGT Ban | 126410 |
| 4502 | 37200.37300.37500.38300.38900.40700.99300.472000 | Fire door work | 59.94d | 2026-02-10 | 2026-04-11 | 4500SS+26.75d, 4501SS+26.75d |  | 7 day week With NGT Ban | 126420 |
| 4503 | 37200.37300.37500.38300.38900.40700.99300.472100 | Electrical wiring work | 119.94d | 2025-09-07 | 2026-02-19 | 4497SS+17.88d |  | 7 day week With NGT Ban | 126430 |
| 4504 | 37200.37300.37500.38300.38900.40700.99300.472200 | Lobby flooring | 150d | 2025-09-10 | 2026-03-24 | 4503SS+3.38d |  | 7 day week With NGT Ban | 126440 |
| 4505 | 37200.37300.37500.38300.38900.40700.99300.472300 | Ceiling & wall putty-primer | 109.94d | 2025-10-21 | 2026-03-25 | 4498SS+26.75d |  | 7 day week With NGT Ban | 126450 |
| 4506 | 37200.37300.37500.38300.38900.40700.99300.472400 | Ceiling & wall painting | 99.94d | 2025-12-23 | 2026-04-02 | 4505SS+17.88d |  | 7 day week With NGT Ban | 126460 |
| 4507 | 37200.37300.37500.38300.38900.40700.99300.472500 | Light fixture supply & installation | 44.94d | 2026-02-15 | 2026-03-31 | 4506SS+53.38d |  | 7 day week With NGT Ban | 126470 |

| ID | WBS | Task | Duration | Start | Finish | Predecessors | Constraint | Calendar | Unique_Task_ID |
| --- | --- | --- | --- | --- | --- | --- | --- | --- | --- |
| 4508 | 37200.37300.37500.38300.38900.40700.46500 | **Balcony Glass Railing** | 67.81d | 2027-04-23 | 2027-06-29 |  | start no earlier than 2027-04-23 | 7 day week With NGT Ban | 134590 |
| 4509 | 37200.37300.37500.38300.38900.40700.46500.472600 | 1st Floor | 1.94d | 2027-04-23 | 2027-04-25 | 4577 |  | 7 day week With NGT Ban | 134600 |
| 4510 | 37200.37300.37500.38300.38900.40700.46500.472700 | 2nd Floor | 1.94d | 2027-04-25 | 2027-04-26 | 4509 |  | 7 day week With NGT Ban | 134610 |
| 4511 | 37200.37300.37500.38300.38900.40700.46500.472800 | 3rd Floor | 1.94d | 2027-04-27 | 2027-04-28 | 4510 |  | 7 day week With NGT Ban | 134620 |
| 4512 | 37200.37300.37500.38300.38900.40700.46500.472900 | 4th Floor | 1.94d | 2027-04-28 | 2027-04-30 | 4511 |  | 7 day week With NGT Ban | 134630 |
| 4513 | 37200.37300.37500.38300.38900.40700.46500.473000 | 5th Floor | 1.94d | 2027-04-30 | 2027-05-02 | 4512 |  | 7 day week With NGT Ban | 134640 |
| 4514 | 37200.37300.37500.38300.38900.40700.46500.473100 | 6th Floor | 1.94d | 2027-05-02 | 2027-05-04 | 4513 |  | 7 day week With NGT Ban | 134650 |
| 4515 | 37200.37300.37500.38300.38900.40700.46500.473200 | 7th Floor | 1.94d | 2027-05-04 | 2027-05-06 | 4514 |  | 7 day week With NGT Ban | 134660 |
| 4516 | 37200.37300.37500.38300.38900.40700.46500.473300 | 8th Floor | 1.94d | 2027-05-06 | 2027-05-08 | 4515 |  | 7 day week With NGT Ban | 134670 |
| 4517 | 37200.37300.37500.38300.38900.40700.46500.473400 | 9th Floor | 1.94d | 2027-05-08 | 2027-05-10 | 4516 |  | 7 day week With NGT Ban | 134680 |
| 4518 | 37200.37300.37500.38300.38900.40700.46500.473500 | 10th Floor | 1.94d | 2027-05-10 | 2027-05-12 | 4517 |  | 7 day week With NGT Ban | 134690 |
| 4519 | 37200.37300.37500.38300.38900.40700.46500.473600 | 11th Floor | 1.94d | 2027-05-12 | 2027-05-14 | 4518 |  | 7 day week With NGT Ban | 134700 |
| 4520 | 37200.37300.37500.38300.38900.40700.46500.473700 | 12th Floor | 1.94d | 2027-05-14 | 2027-05-16 | 4519 |  | 7 day week With NGT Ban | 134710 |
| 4521 | 37200.37300.37500.38300.38900.40700.46500.473800 | 13th Floor | 1.94d | 2027-05-16 | 2027-05-18 | 4520 |  | 7 day week With NGT Ban | 134720 |
| 4522 | 37200.37300.37500.38300.38900.40700.46500.473900 | 14th Floor | 1.94d | 2027-05-18 | 2027-05-20 | 4521 |  | 7 day week With NGT Ban | 134730 |
| 4523 | 37200.37300.37500.38300.38900.40700.46500.474000 | 15th Floor | 1.94d | 2027-05-20 | 2027-05-22 | 4522 |  | 7 day week With NGT Ban | 134740 |
| 4524 | 37200.37300.37500.38300.38900.40700.46500.474100 | 16th Floor | 1.94d | 2027-05-22 | 2027-05-24 | 4523 |  | 7 day week With NGT Ban | 134750 |
| 4525 | 37200.37300.37500.38300.38900.40700.46500.474200 | 17th Floor | 1.94d | 2027-05-24 | 2027-05-26 | 4524 |  | 7 day week With NGT Ban | 134760 |
| 4526 | 37200.37300.37500.38300.38900.40700.46500.474300 | 18th Floor | 1.94d | 2027-05-26 | 2027-05-27 | 4525 |  | 7 day week With NGT Ban | 134770 |
| 4527 | 37200.37300.37500.38300.38900.40700.46500.474400 | 19th Floor | 1.94d | 2027-05-28 | 2027-05-29 | 4526 |  | 7 day week With NGT Ban | 134780 |
| 4528 | 37200.37300.37500.38300.38900.40700.46500.474500 | 20th Floor | 1.94d | 2027-05-29 | 2027-05-31 | 4527 |  | 7 day week With NGT Ban | 134790 |
| 4529 | 37200.37300.37500.38300.38900.40700.46500.474600 | 21st Floor | 1.94d | 2027-05-31 | 2027-06-02 | 4528 |  | 7 day week With NGT Ban | 134800 |
| 4530 | 37200.37300.37500.38300.38900.40700.46500.474700 | 22nd Floor | 1.94d | 2027-06-02 | 2027-06-04 | 4529 |  | 7 day week With NGT Ban | 134810 |
| 4531 | 37200.37300.37500.38300.38900.40700.46500.474800 | 23rd Floor | 1.94d | 2027-06-04 | 2027-06-06 | 4530 |  | 7 day week With NGT Ban | 134820 |
| 4532 | 37200.37300.37500.38300.38900.40700.46500.474900 | 24th Floor | 1.94d | 2027-06-06 | 2027-06-08 | 4531 |  | 7 day week With NGT Ban | 134830 |
| 4533 | 37200.37300.37500.38300.38900.40700.46500.475000 | 25th Floor | 1.94d | 2027-06-08 | 2027-06-10 | 4532 |  | 7 day week With NGT Ban | 134840 |
| 4534 | 37200.37300.37500.38300.38900.40700.46500.475100 | 26th Floor | 1.94d | 2027-06-10 | 2027-06-12 | 4533 |  | 7 day week With NGT Ban | 134850 |
| 4535 | 37200.37300.37500.38300.38900.40700.46500.475200 | 27th Floor | 1.94d | 2027-06-12 | 2027-06-14 | 4534 |  | 7 day week With NGT Ban | 134860 |
| 4536 | 37200.37300.37500.38300.38900.40700.46500.475300 | 28th Floor | 1.94d | 2027-06-14 | 2027-06-16 | 4535 |  | 7 day week With NGT Ban | 134870 |
| 4537 | 37200.37300.37500.38300.38900.40700.46500.475400 | 29th Floor | 1.94d | 2027-06-16 | 2027-06-18 | 4536 |  | 7 day week With NGT Ban | 134880 |
| 4538 | 37200.37300.37500.38300.38900.40700.46500.475500 | 30th Floor | 1.94d | 2027-06-18 | 2027-06-20 | 4537 |  | 7 day week With NGT Ban | 134890 |
| 4539 | 37200.37300.37500.38300.38900.40700.46500.475600 | 31st Floor | 1.94d | 2027-06-20 | 2027-06-22 | 4538 |  | 7 day week With NGT Ban | 134900 |
| 4540 | 37200.37300.37500.38300.38900.40700.46500.475700 | 32nd Floor | 1.94d | 2027-06-22 | 2027-06-24 | 4539 |  | 7 day week With NGT Ban | 134910 |
| 4541 | 37200.37300.37500.38300.38900.40700.46500.475800 | 33rd Floor | 1.94d | 2027-06-24 | 2027-06-26 | 4540 |  | 7 day week With NGT Ban | 134920 |
| 4542 | 37200.37300.37500.38300.38900.40700.46500.475900 | 34th Floor | 1.94d | 2027-06-26 | 2027-06-27 | 4541 |  | 7 day week With NGT Ban | 134930 |
| 4543 | 37200.37300.37500.38300.38900.40700.46500.476000 | 35th Floor | 1.94d | 2027-06-28 | 2027-06-29 | 4542 |  | 7 day week With NGT Ban | 134940 |

| ID | WBS | Task | Duration | Start | Finish | Predecessors | Constraint | Calendar | Unique_Task_ID |
| --- | --- | --- | --- | --- | --- | --- | --- | --- | --- |
| 4544 | 37200.37300.37500.38300.95500 | **MEP work** | 636.25d | 2026-01-01 | 2027-11-13 |  | start no earlier than 2026-01-01 | 7 day week With NGT Ban | 123320 |
| 4545 | 37200.37300.37500.38300.95500.97600 | **Electrical work** | 233.25d | 2026-07-28 | 2027-05-02 |  | start no earlier than 2026-07-28 | 7 day week With NGT Ban | 123330 |
| 4546 | 37200.37300.37500.38300.95500.97600.293500 | Cable Tray | 89.94d | 2026-07-28 | 2026-10-26 | 3892 |  | 7 day week With NGT Ban | 124500 |
| 4547 | 37200.37300.37500.38300.95500.97600.293600 | Cable, main & sub main | 79.94d | 2026-09-06 | 2027-01-09 | 4546SS+40d |  | 7 day week With NGT Ban | 124510 |
| 4548 | 37200.37300.37500.38300.95500.97600.293700 | LT panel & DB | 119.94d | 2026-10-26 | 2027-04-09 | 4546 |  | 7 day week With NGT Ban | 124520 |
| 4549 | 37200.37300.37500.38300.95500.97600.293800 | Rising main | 89.94d | 2027-02-01 | 2027-05-02 | 4546FS+53.38d |  | 7 day week With NGT Ban | 124530 |
| 4550 | 37200.37300.37500.38300.95500.97600.293900 | EARTHING Works | 59.94d | 2026-12-23 | 2027-02-21 | 4546FS+13.38d |  | 7 day week With NGT Ban | 124540 |
| 4551 | 37200.37300.37500.38300.95500.97600.294000 | Advance lightening protection | 59.94d | 2026-09-07 | 2026-12-21 | 4495 |  | 7 day week With NGT Ban | 124550 |
| 4552 | 37200.37300.37500.38300.95500.97600.294100 | Inverter | 34.94d | 2027-02-21 | 2027-03-28 | 4550 |  | 7 day week With NGT Ban | 124560 |
| 4553 | 37200.37300.37500.38300.95500.97600.294200 | Energy meter | 59.94d | 2027-01-09 | 2027-03-10 | 4547 |  | 7 day week With NGT Ban | 124570 |
| 4554 | 37200.37300.37500.38300.95500.97600.294300 | Exhast fan | 59.94d | 2026-12-30 | 2027-02-28 | 4487FF+4.5d |  | 7 day week With NGT Ban | 124580 |
| 4555 | 37200.37300.37500.38300.95500.97600.294400 | FTTH | 59.94d | 2027-02-12 | 2027-04-13 | 4550FS-9d |  | 7 day week With NGT Ban | 124590 |
| 4556 | 37200.37300.37500.38300.95500.97600.294500 | Security System - FA & PA | 54.94d | 2027-02-17 | 2027-04-13 | 4555FF |  | 7 day week With NGT Ban | 124600 |
| 4557 | 37200.37300.37500.38300.95500.97600.294600 | Solar water heater | 59.94d | 2026-09-07 | 2026-12-21 | 4495 |  | 7 day week With NGT Ban | 124610 |
| 4558 | 37200.37300.37500.38300.95500.122400 | **Plumbing wrok** | 430d | 2026-01-28 | 2027-05-17 |  | start no earlier than 2026-01-28 | 7 day week With NGT Ban | 123380 |
| 4559 | 37200.37300.37500.38300.95500.122400.294700 | Terrace looping | 44.94d | 2026-07-29 | 2026-09-12 | 4494 |  | 7 day week With NGT Ban | 124620 |
| 4560 | 37200.37300.37500.38300.95500.122400.294800 | Shaft Plumbing | 119.94d | 2026-09-12 | 2027-02-24 | 4559 |  | 7 day week With NGT Ban | 124630 |
| 4561 | 37200.37300.37500.38300.95500.122400.294900 | CP sanitary fixture supply | 74.94d | 2027-03-04 | 2027-05-17 | 4482, 4485FS+53.38d |  | 7 day week With NGT Ban | 124640 |
| 4562 | 37200.37300.37500.38300.95500.122400.295000 | Cold & flushing water supply | 89.94d | 2026-01-28 | 2026-04-27 | 4498SS+80d |  | 7 day week With NGT Ban | 124650 |
| 4563 | 37200.37300.37500.38300.95500.122400.295100 | Misc work | 29.94d | 2026-04-18 | 2026-05-18 | 4562FS-9d |  | 7 day week With NGT Ban | 124660 |
| 4564 | 37200.37300.37500.38300.95500.129100 | **Fire fighting work** | 328.94d | 2026-01-01 | 2027-01-10 |  | start no earlier than 2026-01-01 | 7 day week With NGT Ban | 123420 |
| 4565 | 37200.37300.37500.38300.95500.129100.295200 | Fire hydrant work | 89.94d | 2026-01-01 | 2026-04-01 | 4498SS+53.38d |  | 7 day week With NGT Ban | 124670 |
| 4566 | 37200.37300.37500.38300.95500.129100.295300 | Sprinkler & piping work | 89.94d | 2026-04-28 | 2026-07-26 | 4565FS+26.75d |  | 7 day week With NGT Ban | 124680 |
| 4567 | 37200.37300.37500.38300.95500.129100.295400 | Shaft Downtake works | 89.94d | 2026-07-29 | 2026-10-27 | 4494 |  | 7 day week With NGT Ban | 124690 |
| 4568 | 37200.37300.37500.38300.95500.129100.295500 | Connection to pump room | 29.94d | 2026-10-27 | 2027-01-10 | 4567 |  | 7 day week With NGT Ban | 124700 |

| ID | WBS | Task | Duration | Start | Finish | Predecessors | Constraint | Calendar | Unique_Task_ID |
| --- | --- | --- | --- | --- | --- | --- | --- | --- | --- |
| 4569 | 37200.37300.37500.38300.95500.184000 | **Lift work** | 169.81d | 2026-07-28 | 2027-02-28 |  | start no earlier than 2026-07-28 | 7 day week With NGT Ban | 123800 |
| 4570 | 37200.37300.37500.38300.95500.184000.295600 | Lift Shaft Handover | 39.94d | 2026-07-28 | 2026-09-06 | 3892 |  | 7 day week With NGT Ban | 124710 |
| 4571 | 37200.37300.37500.38300.95500.184000.295700 | Lift installation work | 44.94d | 2026-09-06 | 2026-10-21 | 4570 |  | 7 day week With NGT Ban | 124720 |
| 4572 | 37200.37300.37500.38300.95500.184000.295800 | Lift testing and commissioning | 84.94d | 2026-10-21 | 2027-02-28 | 4571 |  | 7 day week With NGT Ban | 124730 |
| 4573 | 37200.37300.37500.38300.95500.193900 | **AC work** | 89.94d | 2027-08-15 | 2027-11-13 |  | start no earlier than 2027-08-15 | 7 day week With NGT Ban | 123870 |
| 4574 | 37200.37300.37500.38300.95500.193900.295900 | Split AC | 89.94d | 2027-08-15 | 2027-11-13 | 4590FS-26.75d |  | 7 day week With NGT Ban | 124740 |
| 4575 | 37200.37300.37500.38300.126200 | **Tower Completion** | 266.88d | 2026-09-10 | 2027-07-19 |  | start no earlier than 2026-09-10 | 7 day week With NGT Ban | 123400 |
| 4576 | 37200.37300.37500.38300.126200.227100 | SURFACE PREPARATION | 79.94d | 2026-09-10 | 2027-01-13 | 3930FS+1.88d |  | 7 day week With NGT Ban | 123910 |
| 4577 | 37200.37300.37500.38300.126200.227200 | External Painting | 99.94d | 2027-01-13 | 2027-04-23 | 4576 |  | 7 day week With NGT Ban | 123920 |
| 4578 | 37200.37300.37500.38300.126200.227300 | Final coat of painting | 87d | 2027-04-23 | 2027-07-19 | 4577 |  | 7 day week With NGT Ban | 123930 |
| 4579 | 37200.37300.37500.38300.126200.227400 | Misc. work | 59.94d | 2027-04-23 | 2027-06-22 | 4577 |  | 7 day week With NGT Ban | 123940 |
| 4580 | 37200.37300.37500.38300.192800 | **Basement lobby** | 60d | 2026-03-24 | 2026-05-23 |  | start no earlier than 2026-03-24 | 7 day week With NGT Ban | 123880 |
| 4581 | 37200.37300.37500.38300.192800.227500 | Basement lobby | 60d | 2026-03-24 | 2026-05-23 | 4504 |  | 7 day week With NGT Ban | 123970 |
| 4582 | 37200.37300.37500.38300.113900 | **Post OC activities** | 338.12d | 2027-02-28 | 2028-02-01 |  | start no earlier than 2027-02-28 | 7 day week With NGT Ban | 123390 |
| 4583 | 37200.37300.37500.38300.113900.227600 | Wardrobe installation | 169.94d | 2027-08-15 | 2028-02-01 | 4590FS-26.75d |  | 7 day week With NGT Ban | 123980 |
| 4584 | 37200.37300.37500.38300.113900.227700 | CP & SANITARYWARE | 109.94d | 2027-08-15 | 2027-12-03 | 4590FS-26.75d |  | 7 day week With NGT Ban | 123990 |
| 4585 | 37200.37300.37500.38300.113900.227800 | Wooden Flooring | 169.94d | 2027-08-15 | 2028-02-01 | 4590FS-26.75d |  | 7 day week With NGT Ban | 124000 |
| 4586 | 37200.37300.37500.38300.113900.227900 | Electrical Fixtures And Fittings | 86d | 2027-02-28 | 2027-05-25 | 4490 |  | 7 day week With NGT Ban | 124010 |
| 4587 | 37200.37300.37500.38300.113900.228000 | Modular Kitchen | 169.94d | 2027-08-15 | 2028-02-01 | 4583SS |  | 7 day week With NGT Ban | 124011 |
| 4588 | 37200.37300.37500.38300.113900.228100 | Final Coat Paint | 89.94d | 2027-08-29 | 2027-11-26 | 4590FS-13.38d, 4507 |  | 7 day week With NGT Ban | 124020 |
| 4589 | 37200.37300.37500.38300.216600 | OC Application/Readiness | 0d | 2027-07-19 | 2027-07-19 | 3892, 4499FS+7.12d, 4561, 4618, 3683, 3704, 3705, 4581, 4578, 4579, 4572, 4568, 4566, 4563, 4560, 4557, 4556, 4554, 4553, 4552, 4551, 4549, 4548, 4543, 4502, 4492 |  | 7 day week With NGT Ban | 123890 |
| 4590 | 37200.37300.37500.38300.216700 | OC Receipt | 0.94d | 2027-09-10 | 2027-09-11 | 4589FS+53.38d |  | 7 day week With NGT Ban | 123900 |
| 4591 | 37200.37300.37500.38300.216800 | Offer To Possession | 29.94d | 2028-02-01 | 2028-03-02 | 4583, 4584, 4585, 4586, 4587, 4588, 4574 |  | 7 day week With NGT Ban | 132370 |
| 4592 | 37200.37300.37500.101600 | **External Infrastructure** | 280.5d | 2026-06-19 | 2027-05-10 |  | start no earlier than 2026-06-19 | 7 day week With NGT Ban | 132100 |
| 4593 | 37200.37300.37500.101600.192700 | **External Firefightning Work** | 209.94d | 2026-07-07 | 2027-03-19 |  | start no earlier than 2026-07-07 | 7 day week With NGT Ban | 132110 |
| 4594 | 37200.37300.37500.101600.192700.228200 | Excavation, Pipe Laying, Hyderent errection , Fitting , Testing & Commissioning | 209.94d | 2026-07-07 | 2027-03-19 | 4601FF |  | 7 day week With NGT Ban | 7571873 |

| ID | WBS | Task | Duration | Start | Finish | Predecessors | Complete | Constraint | Calendar | Unique_Task_ID |
| --- | --- | --- | --- | --- | --- | --- | --- | --- | --- | --- |
| 4595 | 37200.37300.37500.101600.112900 | **External Plumbing** | 236.81d | 2026-06-19 | 2027-03-28 |  |  | start no earlier than 2026-06-19 | 7 day week With NGT Ban | 132120 |
| 4596 | 37200.37300.37500.101600.112900.194000 | **External Plumbing - Sewer** | 209.94d | 2026-06-19 | 2027-03-01 |  |  | start no earlier than 2026-06-19 | 7 day week With NGT Ban | 132130 |
| 4597 | 37200.37300.37500.101600.112900.194000.296000 | Excavation, Pipe Laying, Filling , Testing & Commissioning | 209.94d | 2026-06-19 | 2027-03-01 | 3887 |  |  | 7 day week With NGT Ban | 7574653 |
| 4598 | 37200.37300.37500.101600.112900.194100 | **External Plumbing - Watersupply** | 209.94d | 2026-07-16 | 2027-03-28 |  |  | start no earlier than 2026-07-16 | 7 day week With NGT Ban | 132140 |
| 4599 | 37200.37300.37500.101600.112900.194100.296100 | Excavation, Pipe Laying, Filling , Testing & Commissioning | 209.94d | 2026-07-16 | 2027-03-28 | 4594FF+9d |  |  | 7 day week With NGT Ban | 7574663 |
| 4600 | 37200.37300.37500.101600.112900.194200 | **External Plumbing - Storm Water** | 209.94d | 2026-07-07 | 2027-03-19 |  |  | start no earlier than 2026-07-07 | 7 day week With NGT Ban | 132150 |
| 4601 | 37200.37300.37500.101600.112900.194200.296200 | Excavation, PCC, BBM , IPS, Cover fixing, Curing | 209.94d | 2026-07-07 | 2027-03-19 | 4597SS+17.88d |  |  | 7 day week With NGT Ban | 7574673 |
| 4602 | 37200.37300.37500.101600.112900.194300 | **Rain water Harvesting work** | 209.94d | 2026-07-07 | 2027-03-19 |  |  | start no earlier than 2026-07-07 | 7 day week With NGT Ban | 132160 |
| 4603 | 37200.37300.37500.101600.112900.194300.296300 | Rain water Harvesting work | 209.94d | 2026-07-07 | 2027-03-19 | 4601FF |  |  | 7 day week With NGT Ban | 7574683 |
| 4604 | 37200.37300.37500.101600.112700 | **External Electrical Work** | 253.75d | 2026-07-16 | 2027-05-10 |  |  | start no earlier than 2026-07-16 | 7 day week With NGT Ban | 132170 |
| 4605 | 37200.37300.37500.101600.112700.228300 | HV INSTALLATION | 89.94d | 2026-07-16 | 2026-10-14 | 3887FS+26.75d |  |  | 7 day week With NGT Ban | 7571883 |
| 4606 | 37200.37300.37500.101600.112700.228400 | HT CABLES & LT CONTROL CABLES | 89.94d | 2026-10-14 | 2027-02-26 | 4605 |  |  | 7 day week With NGT Ban | 132172 |
| 4607 | 37200.37300.37500.101600.112700.228500 | Street Light Fixing | 37.44d | 2026-10-23 | 2027-01-13 | 4606SS+9d |  |  | 7 day week With NGT Ban | 132173 |
| 4608 | 37200.37300.37500.101600.112700.228600 | Street Light Fixing | 37.38d | 2027-01-13 | 2027-02-19 | 4607 |  |  | 7 day week With NGT Ban | 8112234 |
| 4609 | 37200.37300.37500.101600.112700.228700 | External Road | 89.94d | 2026-10-26 | 2027-03-10 | 4613FF, 12, 931, 1848 |  |  | 7 day week With NGT Ban | 132176 |
| 4610 | 37200.37300.37500.101600.112700.228800 | Completion of External Infrastructure | 0.94d | 2027-03-28 | 2027-03-29 | 4612, 4609, 4599, 4603 |  |  | 7 day week With NGT Ban | 132177 |
| 4611 | 37200.37300.37500.101600.112700.228900 | D.G Set supply and installation | 5.94d | 2027-05-05 | 2027-05-10 |  |  | start no earlier than 2027-05-05 | 7 day week With NGT Ban | 132187 |
| 4612 | 37200.37300.37500.101600.216900 | Soft Scape Work | 119.94d | 2026-10-04 | 2027-03-18 | 4608FF+26.75d |  |  | 7 day week With NGT Ban | 132175 |
| 4613 | 37200.37300.37500.101600.217000 | Hard Scape Work | 209.94d | 2026-06-28 | 2027-03-10 | 4637FS+26.75d |  |  | 7 day week With NGT Ban | 132174 |
| 4614 | 37200.37300.37500.48400 | **NTA works** | 1035.99d | 2024-06-01 | 2027-08-01 |  | 23% | start no earlier than 2024-06-01 | 7 day week With NGT Ban | 132180 |
| 4615 | 37200.37300.37500.48400.204600 | Excavation | 139.94d | 2024-06-01 | 2025-06-09 |  | 50% | start no earlier than 2024-06-01 | 7 day week With NGT Ban | 7571463 |
| 4616 | 37200.37300.37500.48400.217100 | Main Pile Work | 199.94d | 2025-04-01 | 2025-10-17 | 3679SS+30d |  |  | 7 day week With NGT Ban | 7571473 |
| 4617 | 37200.37300.37500.48400.217200 | Backfilling | 89.94d | 2025-04-07 | 2025-07-06 | 4630SS+6.25d |  |  | 7 day week With NGT Ban | 132182 |
| 4618 | 37200.37300.37500.48400.217300 | Boundary Wall | 198.94d | 2025-07-06 | 2026-03-07 | 4617 |  |  | 7 day week With NGT Ban | 132183 |

| ID | WBS | Task | Duration | Start | Finish | Predecessors | Complete | Constraint | Calendar | Unique_Task_ID |
| --- | --- | --- | --- | --- | --- | --- | --- | --- | --- | --- |
| 4619 | 37200.37300.37500.48400.101700 | **RCC Works - Nontower area** | 748.39d | 2024-07-01 | 2026-10-02 |  | 31% | start no earlier than 2024-07-01 | 7 day week With NGT Ban | 132190 |
| 4620 | 37200.37300.37500.48400.101700.115000 | **NTA Raft/Footing** | 748.39d | 2024-07-01 | 2026-10-02 |  | 63% | start no earlier than 2024-07-01 | 7 day week With NGT Ban | 132200 |
| 4621 | 37200.37300.37500.48400.101700.115000.296400 | Anti Termite | 14.94d | 2025-04-01 | 2025-04-15 | 4615FS-273.44d |  |  | 7 day week With NGT Ban | 7574693 |
| 4622 | 37200.37300.37500.48400.101700.115000.196200 | PCC | 565.94d | 2024-07-01 | 2026-09-12 | 4615FS-365.14d | 69% | start no earlier than 2024-07-01 | 7 day week With NGT Ban | 132202 |
| 4623 | 37200.37300.37500.48400.101700.115000.196100 | Reinforcement | 669.94d | 2024-08-06 | 2026-09-30 | 4622SS+25d | 59% | start no earlier than 2024-08-06 | 7 day week With NGT Ban | 132203 |
| 4624 | 37200.37300.37500.48400.101700.115000.195800 | Shuttering | 662.73d | 2024-08-23 | 2026-10-02 | 4623SS+44.6d | 60% | start no earlier than 2024-08-23 | 7 day week With NGT Ban | 132204 |
| 4625 | 37200.37300.37500.48400.101700.115000.195600 | Concreting | 478.75d | 2024-09-17 | 2026-04-04 | 4624SS+25d, 4625FS-488.71d | 69% | start no earlier than 2024-09-17 | 7 day week With NGT Ban | 132205 |
| 4626 | 37200.37300.37500.48400.101700.129200 | **Retaining wall** | 506.94d | 2025-02-01 | 2026-08-06 |  | 14% | start no earlier than 2025-02-01 | 7 day week With NGT Ban | 132210 |
| 4627 | 37200.37300.37500.48400.101700.129200.195500 | Reinforcement | 389.94d | 2025-02-01 | 2026-08-06 | 4622SS+30d | 25% | must start on 2025-07-22 | 7 day week With NGT Ban | 7574703 |
| 4628 | 37200.37300.37500.48400.101700.129200.195400 | Shuttering | 339.94d | 2025-03-03 | 2026-06-11 | 4627SS+20d | 18% | must start on 2025-07-14 | 7 day week With NGT Ban | 132212 |
| 4629 | 37200.37300.37500.48400.101700.129200.195700 | Concreting | 321.94d | 2025-03-10 | 2026-03-22 | 4622SS+20d, 4628SS+5d | 8% | start no earlier than 2025-03-10 | 7 day week With NGT Ban | 132213 |
| 4630 | 37200.37300.37500.48400.101700.129200.296500 | Retaining wall waterproofing | 278.94d | 2025-04-01 | 2026-02-18 | 4629SS+9d |  |  | 7 day week With NGT Ban | 132214 |
| 4631 | 37200.37300.37500.48400.101700.129300 | **NTA Basement B2 slab** | 642.38d | 2024-09-30 | 2026-09-17 |  | 14% | start no earlier than 2024-09-30 | 7 day week With NGT Ban | 132220 |
| 4632 | 37200.37300.37500.48400.101700.129300.195900 | Reinforcement | 227.94d | 2025-02-13 | 2026-04-03 |  | 12% | start no earlier than 2025-02-13 | 7 day week With NGT Ban | 8023154 |
| 4633 | 37200.37300.37500.48400.101700.129300.196000 | Reinforcement | 157.5d | 2024-10-02 | 2026-08-31 | 4629SS-451.26d, 4625SS-37.1d, 4632 | 4% |  | 7 day week With NGT Ban | 7574713 |
| 4634 | 37200.37300.37500.48400.101700.129300.196300 | Shuttering | 367.94d | 2024-09-30 | 2026-07-23 |  | 26% | start no earlier than 2024-09-30 | 7 day week With NGT Ban | 132222 |
| 4635 | 37200.37300.37500.48400.101700.129300.296600 | Shuttering | 55.94d | 2026-07-23 | 2026-09-17 | 4632FF+26.75d, 4634 |  | must start on 2026-04-02 | 7 day week With NGT Ban | 8112244 |
| 4636 | 37200.37300.37500.48400.101700.129300.196400 | Concreting | 77.94d | 2025-07-15 | 2025-09-30 |  | 8% | start no earlier than 2025-07-15 | 7 day week With NGT Ban | 8023174 |
| 4637 | 37200.37300.37500.48400.101700.129300.296700 | Concreting | 41.94d | 2026-04-20 | 2026-06-01 | 4635FF+4.5d, 4636 |  |  | 7 day week With NGT Ban | 9446464 |
| 4638 | 37200.37300.37500.48400.101700.129300.196500 | Concreting | 101.4d | 2024-10-16 | 2026-09-04 | 4637 | 6% |  | 7 day week With NGT Ban | 132223 |
| 4639 | 37200.37300.37500.48400.101700.184100 | **NTA Basement B1 slab** | 372.19d | 2025-07-01 | 2026-08-22 |  | 1% | start no earlier than 2025-07-01 | 7 day week With NGT Ban | 132230 |
| 4640 | 37200.37300.37500.48400.101700.184100.196600 | Reinforcement | 41.94d | 2025-07-01 | 2025-08-12 | 4637FS-23.62d | 9% | must start on 2025-07-01 | 7 day week With NGT Ban | 7574723 |
| 4641 | 37200.37300.37500.48400.101700.184100.296800 | Reinforcement | 50.64d | 2025-08-13 | 2025-10-02 | 4640 |  |  | 7 day week With NGT Ban | 9446444 |
| 4642 | 37200.37300.37500.48400.101700.184100.296900 | Reinforcement | 3.16d | 2025-10-02 | 2025-10-05 | 4641 |  |  | 7 day week With NGT Ban | 9514496 |
| 4643 | 37200.37300.37500.48400.101700.184100.297000 | Reinforcement | 26d | 2025-12-16 | 2026-01-10 | 4642 |  |  | 7 day week With NGT Ban | 9514486 |
| 4644 | 37200.37300.37500.48400.101700.184100.297100 | Reinforcement | 113d | 2026-01-11 | 2026-05-03 | 4643 |  |  | 7 day week With NGT Ban | 9446454 |
| 4645 | 37200.37300.37500.48400.101700.184100.196700 | Shuttering | 210.94d | 2026-01-23 | 2026-08-22 | 4644FF-1.88d | 1% |  | 7 day week With NGT Ban | 132232 |
| 4646 | 37200.37300.37500.48400.101700.184100.297200 | Concreting | 44.14d | 2025-07-01 | 2025-08-14 |  |  | must start on 2025-06-30 | 7 day week With NGT Ban | 132233 |
| 4647 | 37200.37300.37500.48400.101700.184100.297300 | Concreting | 35.37d | 2025-08-14 | 2025-09-18 | 4646 |  |  | 7 day week With NGT Ban | 9446434 |
| 4648 | 37200.37300.37500.48400.101700.184100.297400 | Concreting | 67d | 2025-09-18 | 2026-01-08 | 4647 |  | must start on 2025-09-14 | 7 day week With NGT Ban | 9514476 |
| 4649 | 37200.37300.37500.48400.101700.184100.297500 | Concreting | 45.05d | 2026-01-08 | 2026-02-22 | 4648 |  | must start on 2026-01-05 | 7 day week With NGT Ban | 9514506 |
| 4650 | 37200.37300.37500.48400.101700.184100.297600 | Concreting | 97d | 2026-02-22 | 2026-05-30 | 4645FF+4.5d, 4649 |  |  | 7 day week With NGT Ban | 9514466 |

| ID | WBS | Task | Duration | Start | Finish | Predecessors | Complete | Constraint | Calendar | Unique_Task_ID |
| --- | --- | --- | --- | --- | --- | --- | --- | --- | --- | --- |
| 4651 | 37200.37300.37500.48400.101700.184200 | **NTA Podium slab** | 185.62d | 2026-03-21 | 2026-09-22 |  |  | start no earlier than 2026-03-21 | 7 day week With NGT Ban | 132240 |
| 4652 | 37200.37300.37500.48400.101700.184200.297700 | Reinforcement | 180d | 2026-03-21 | 2026-09-17 | 4650SS+30d |  |  | 7 day week With NGT Ban | 7574733 |
| 4653 | 37200.37300.37500.48400.101700.184200.297800 | Shuttering | 180d | 2026-03-21 | 2026-09-17 | 4652FF+0.62d |  |  | 7 day week With NGT Ban | 132242 |
| 4654 | 37200.37300.37500.48400.101700.184200.297900 | Concreting | 180d | 2026-03-26 | 2026-09-22 | 4653FF+5d |  |  | 7 day week With NGT Ban | 132243 |
| 4655 | 37200.37300.37500.48400.126300 | **Basement and Podium Block work and Plaster finishing** | 523.49d | 2025-07-01 | 2027-03-06 |  |  | start no earlier than 2025-07-01 | 7 day week With NGT Ban | 132250 |
| 4656 | 37200.37300.37500.48400.126300.229000 | Brick work/plaster | 100d | 2025-09-20 | 2026-02-12 | 4648SS+5.43d |  |  | 7 day week With NGT Ban | 7571893 |
| 4657 | 37200.37300.37500.48400.126300.229100 | Finishing work-White Goods | 60d | 2027-01-05 | 2027-03-06 | 4658 |  |  | 7 day week With NGT Ban | 132252 |
| 4658 | 37200.37300.37500.48400.126300.229200 | Painting (1st Coat) | 60d | 2026-09-22 | 2027-01-05 | 4659, 4654 |  |  | 7 day week With NGT Ban | 132253 |
| 4659 | 37200.37300.37500.48400.126300.229300 | Vacuum Dewatered Flooring | 90d | 2025-07-01 | 2025-09-29 | 4654FS+26.75d |  | must start on 2025-07-01 | 7 day week With NGT Ban | 132254 |
| 4660 | 37200.37300.37500.48400.102700 | **Basement and Podium services** | 490.06d | 2026-02-12 | 2027-08-01 |  |  | start no earlier than 2026-02-12 | 7 day week With NGT Ban | 132260 |
| 4661 | 37200.37300.37500.48400.102700.229400 | Waterproofing | 165d | 2026-09-22 | 2027-04-20 | 4654FS+0.25d |  |  | 7 day week With NGT Ban | 132280 |
| 4662 | 37200.37300.37500.48400.102700.229500 | Plumbing | 240d | 2026-02-25 | 2026-10-23 | 4656FS+13.38d |  |  | 7 day week With NGT Ban | 7571903 |
| 4663 | 37200.37300.37500.48400.102700.229600 | Fire fighting | 240d | 2026-02-12 | 2026-10-10 | 4656 |  |  | 7 day week With NGT Ban | 132270 |
| 4664 | 37200.37300.37500.48400.102700.229700 | Ventilation | 240d | 2026-10-19 | 2027-07-31 | 4658SS+26.75d |  |  | 7 day week With NGT Ban | 132290 |
| 4665 | 37200.37300.37500.48400.102700.229800 | Electrification | 250d | 2026-03-11 | 2026-12-31 | 4663SS+26.75d |  |  | 7 day week With NGT Ban | 132300 |
| 4666 | 37200.37300.37500.48400.102700.229900 | Security installations | 90d | 2026-12-31 | 2027-03-31 | 4665 |  |  | 7 day week With NGT Ban | 132310 |
| 4667 | 37200.37300.37500.48400.102700.230000 | Stack parking (no of car parks) | 120d | 2027-02-09 | 2027-06-09 | 4665FS+40d |  |  | 7 day week With NGT Ban | 132320 |
| 4668 | 37200.37300.37500.48400.102700.230100 | Completion of NTA | 1d | 2027-07-31 | 2027-08-01 | 4657, 4661, 4662, 4664, 4666, 4667 |  |  | 7 day week With NGT Ban | 132330 |
| 4669 | 37200.37300.37500.191500 | **CLUB HOUSE** | 372.4d | 2025-07-07 | 2026-08-28 |  |  | start no earlier than 2025-07-07 | 7 day week With NGT Ban | 8023144 |
| 4670 | 37200.37300.37500.191500.217400 | Club house Structure | 79.6d | 2025-07-07 | 2025-09-24 |  |  | must start on 2025-07-07 | 7 day week With NGT Ban | 8278224 |
| 4671 | 37200.37300.37500.191500.217500 | Club house Structure | 119.34d | 2026-04-05 | 2026-08-02 | 4670 |  |  | 7 day week With NGT Ban | 8278225 |
| 4672 | 37200.37300.37500.191500.217600 | Club Finishing | 180d | 2026-03-01 | 2026-08-28 |  |  | start no earlier than 2026-03-01 | 7 day week With NGT Ban | 8278234 |
| 4673 | 37200.37300.107100 | **OC of Whole Project** | 1134.06d | 2025-04-01 | 2028-08-07 |  |  | start no earlier than 2025-04-01 | 7 day week With NGT Ban | 132790 |
| 4674 | 37200.37300.107100.214900 | OC of Plot A all 5 Towers | 1d | 2027-10-06 | 2027-10-07 | 921, 1838, 2755, 3672, 4590, 4668, 4610 |  |  | 7 day week With NGT Ban | 132800 |
| 4675 | 37200.37300.107100.1339600 | OC Reciept | 24.56d | 2025-07-29 | 2025-08-22 |  |  | start no earlier than 2025-07-29 | 7 day week With NGT Ban | 8852454 |
| 4676 | 37200.37300.107100.215000 | OC Reciept | 1d | 2027-11-30 | 2027-12-01 | 4674FS+53.38d, 4675 |  |  | 7 day week With NGT Ban | 132810 |
| 4677 | 37200.37300.107100.215100 | Possession | 90d | 2028-05-09 | 2028-08-07 | 4676FS+160d |  |  | 7 day week With NGT Ban | 132820 |
| 4678 | 37200.37300.107100.1339500 | On Completion of MEP Services for retail Unit (Installation of unit electric points) | 5.44d | 2025-04-01 | 2025-04-06 |  |  | start no earlier than 2025-04-01 | 7 day week With NGT Ban | 9323714 |
| 4679 | 37200.37300.107100.1339400 | On Application of Occupancy Certificate | 9.94d | 2025-04-01 | 2025-04-10 |  |  | start no earlier than 2025-04-01 | 7 day week With NGT Ban | 9323724 |
| 4680 | 37200.37300.107100.1339300 | On Notice of Possession | 21.19d | 2025-04-01 | 2025-04-22 |  |  | start no earlier than 2025-04-01 | 7 day week With NGT Ban | 9323734 |
| 4681 | 37200.37300.107100.1339200 | On completion of Retail structure | 9.94d | 2025-04-01 | 2025-04-10 |  |  | start no earlier than 2025-04-01 | 7 day week With NGT Ban | 9323744 |
| 4682 | 37200.37300.208800 | Escalation | 51.94d | 2025-04-01 | 2025-05-22 |  |  | start no earlier than 2025-04-01 | 7 day week With NGT Ban | 8852424 |
| 4683 | 37200.37300.208900 | Additional Pile | 99.81d | 2024-09-03 | 2025-05-20 | 4682SS-179.5d | 49% |  | 7 day week With NGT Ban | 8852434 |
| 4684 | 37200.37300.209000 | Additional Pile | 4.94d | 2025-05-20 | 2025-05-25 | 4683 |  |  | 7 day week With NGT Ban | 8852435 |
| 4685 | 37200.37300.202700 | Soilder Piling | 552.44d | 2024-10-10 | 2027-03-26 | 4683SS-68d | 4% | must start on 2025-07-15 | 7 day week With NGT Ban | 8852444 |
| 4686 | 37200.37300.202800 | MS Bucket Work | 90d | 2025-01-01 | 2025-05-01 |  | 70% | start no earlier than 2025-01-01 | Indian Calendar | 9726456 |

| ID | WBS | Task | Duration | Start | Finish | Constraint | Calendar | Unique_Task_ID |
| --- | --- | --- | --- | --- | --- | --- | --- | --- |
| 4690 | 37200.40200 | **Milestones** | 1d | 2025-04-10 | 2025-04-10 | start no earlier than 2025-04-10 | Yashwantpur Finshing | 10014170 |
| 4691 | 37200.40200.1345300 | On Completion of Tower Raft for Tower 1 | 1d | 2025-04-10 | 2025-04-10 | start no earlier than 2025-04-10 | Indian Calendar | 10014179 |
| 4692 | 37200.40200.1345200 | On Completion of Ground Floor for Tower 1 | 1d | 2025-04-10 | 2025-04-10 | start no earlier than 2025-04-10 | Indian Calendar | 10014189 |
| 4693 | 37200.40200.1345100 | On Completion of 10th Floor Slab for Tower 1 | 1d | 2025-04-10 | 2025-04-10 | start no earlier than 2025-04-10 | Indian Calendar | 10014199 |
| 4694 | 37200.40200.1345000 | On Completion of 15th Floor slab for Tower 1 | 1d | 2025-04-10 | 2025-04-10 | start no earlier than 2025-04-10 | Indian Calendar | 10014209 |
| 4695 | 37200.40200.1344900 | On Completion of 20th Floor slab for Tower 1 | 1d | 2025-04-10 | 2025-04-10 | start no earlier than 2025-04-10 | Indian Calendar | 10014219 |
| 4696 | 37200.40200.1344800 | On Completion of 25th Floor Slab for Tower 1 | 1d | 2025-04-10 | 2025-04-10 | start no earlier than 2025-04-10 | Indian Calendar | 10014229 |
| 4697 | 37200.40200.1344700 | On Completion of Terrace Slab for Tower 1 | 1d | 2025-04-10 | 2025-04-10 | start no earlier than 2025-04-10 | Indian Calendar | 10014239 |
| 4698 | 37200.40200.1344600 | On Completion of Unit Internal plaster for Tower 1 | 1d | 2025-04-10 | 2025-04-10 | start no earlier than 2025-04-10 | Indian Calendar | 10014249 |
| 4699 | 37200.40200.1344500 | On Completion of unit Flooring for Tower 1 | 1d | 2025-04-10 | 2025-04-10 | start no earlier than 2025-04-10 | Indian Calendar | 10014259 |
| 4700 | 37200.40200.1344400 | On Application of Occupancy Certificate for Tower 1 | 1d | 2025-04-10 | 2025-04-10 | start no earlier than 2025-04-10 | Indian Calendar | 10014269 |
| 4701 | 37200.40200.1344300 | On Offer of Possession for Tower 1 | 1d | 2025-04-10 | 2025-04-10 | start no earlier than 2025-04-10 | Indian Calendar | 10014279 |
| 4702 | 37200.40200.1344200 | On Completion of Tower Raft for Tower 2 | 1d | 2025-04-10 | 2025-04-10 | start no earlier than 2025-04-10 | Indian Calendar | 10014289 |
| 4703 | 37200.40200.1344100 | On Completion of Ground Floor for Tower 2 | 1d | 2025-04-10 | 2025-04-10 | start no earlier than 2025-04-10 | Indian Calendar | 10014299 |
| 4704 | 37200.40200.1344000 | On Completion of 10th Floor Slab for Tower 2 | 1d | 2025-04-10 | 2025-04-10 | start no earlier than 2025-04-10 | Indian Calendar | 10014309 |
| 4705 | 37200.40200.1343900 | On Completion of 15th Floor slab for Tower 2 | 1d | 2025-04-10 | 2025-04-10 | start no earlier than 2025-04-10 | Indian Calendar | 10014319 |
| 4706 | 37200.40200.1343800 | On Completion of 20th Floor slab for Tower 2 | 1d | 2025-04-10 | 2025-04-10 | start no earlier than 2025-04-10 | Indian Calendar | 10014329 |
| 4707 | 37200.40200.1343700 | On Completion of 25th Floor Slab for Tower 2 | 1d | 2025-04-10 | 2025-04-10 | start no earlier than 2025-04-10 | Indian Calendar | 10014339 |
| 4708 | 37200.40200.1343600 | On Completion of Terrace Slab for Tower 2 | 1d | 2025-04-10 | 2025-04-10 | start no earlier than 2025-04-10 | Indian Calendar | 10014349 |
| 4709 | 37200.40200.1343500 | On Completion of Unit Internal plaster for Tower 2 | 1d | 2025-04-10 | 2025-04-10 | start no earlier than 2025-04-10 | Indian Calendar | 10014359 |
| 4710 | 37200.40200.1343400 | On Completion of unit Flooring for Tower 2 | 1d | 2025-04-10 | 2025-04-10 | start no earlier than 2025-04-10 | Indian Calendar | 10014369 |
| 4711 | 37200.40200.1343300 | On Application of Occupancy Certificate for Tower 2 | 1d | 2025-04-10 | 2025-04-10 | start no earlier than 2025-04-10 | Indian Calendar | 10014379 |
| 4712 | 37200.40200.1343200 | On Offer of Possession for Tower 2 | 1d | 2025-04-10 | 2025-04-10 | start no earlier than 2025-04-10 | Indian Calendar | 10014389 |
| 4713 | 37200.40200.1343100 | On Completion of Tower Raft for Tower 3 | 1d | 2025-04-10 | 2025-04-10 | start no earlier than 2025-04-10 | Indian Calendar | 10014399 |
| 4714 | 37200.40200.1343000 | On Completion of Ground Floor for Tower 3 | 1d | 2025-04-10 | 2025-04-10 | start no earlier than 2025-04-10 | Indian Calendar | 10014409 |
| 4715 | 37200.40200.1342900 | On Completion of 10th Floor Slab for Tower 3 | 1d | 2025-04-10 | 2025-04-10 | start no earlier than 2025-04-10 | Indian Calendar | 10014419 |
| 4716 | 37200.40200.1342800 | On Completion of 15th Floor slab for Tower 3 | 1d | 2025-04-10 | 2025-04-10 | start no earlier than 2025-04-10 | Indian Calendar | 10014429 |
| 4717 | 37200.40200.1342700 | On Completion of 20th Floor slab for Tower 3 | 1d | 2025-04-10 | 2025-04-10 | start no earlier than 2025-04-10 | Indian Calendar | 10014439 |
| 4718 | 37200.40200.1342600 | On Completion of 25th Floor Slab for Tower 3 | 1d | 2025-04-10 | 2025-04-10 | start no earlier than 2025-04-10 | Indian Calendar | 10014449 |
| 4719 | 37200.40200.1342500 | On Completion of Terrace Slab for Tower 3 | 1d | 2025-04-10 | 2025-04-10 | start no earlier than 2025-04-10 | Indian Calendar | 10014459 |
| 4720 | 37200.40200.1342400 | On Completion of Unit Internal plaster for Tower 3 | 1d | 2025-04-10 | 2025-04-10 | start no earlier than 2025-04-10 | Indian Calendar | 10014469 |
| 4721 | 37200.40200.1342300 | On Completion of unit Flooring for Tower 3 | 1d | 2025-04-10 | 2025-04-10 | start no earlier than 2025-04-10 | Indian Calendar | 10014479 |
| 4722 | 37200.40200.1342200 | On Application of Occupancy Certificate for Tower 3 | 1d | 2025-04-10 | 2025-04-10 | start no earlier than 2025-04-10 | Indian Calendar | 10014489 |
| 4723 | 37200.40200.1342100 | On Offer of Possession for Tower 3 | 1d | 2025-04-10 | 2025-04-10 | start no earlier than 2025-04-10 | Indian Calendar | 10014499 |
| 4724 | 37200.40200.1342000 | On Completion of Tower Raft for Tower 4 | 1d | 2025-04-10 | 2025-04-10 | start no earlier than 2025-04-10 | Indian Calendar | 10014509 |
| 4725 | 37200.40200.1341900 | On Completion of Ground Floor for Tower 4 | 1d | 2025-04-10 | 2025-04-10 | start no earlier than 2025-04-10 | Indian Calendar | 10014519 |
| 4726 | 37200.40200.1341800 | On Completion of 10th Floor Slab for Tower 4 | 1d | 2025-04-10 | 2025-04-10 | start no earlier than 2025-04-10 | Indian Calendar | 10014529 |
| 4727 | 37200.40200.1341700 | On Completion of 15th Floor slab for Tower 4 | 1d | 2025-04-10 | 2025-04-10 | start no earlier than 2025-04-10 | Indian Calendar | 10014539 |
| 4728 | 37200.40200.1341600 | On Completion of 20th Floor slab for Tower 4 | 1d | 2025-04-10 | 2025-04-10 | start no earlier than 2025-04-10 | Indian Calendar | 10014549 |
| 4729 | 37200.40200.1341500 | On Completion of 25th Floor Slab for Tower 4 | 1d | 2025-04-10 | 2025-04-10 | start no earlier than 2025-04-10 | Indian Calendar | 10014559 |
| 4730 | 37200.40200.1341400 | On Completion of Terrace Slab for Tower 4 | 1d | 2025-04-10 | 2025-04-10 | start no earlier than 2025-04-10 | Indian Calendar | 10014569 |
| 4731 | 37200.40200.1341300 | On Completion of Unit Internal plaster for Tower 4 | 1d | 2025-04-10 | 2025-04-10 | start no earlier than 2025-04-10 | Indian Calendar | 10014579 |
| 4732 | 37200.40200.1341200 | On Completion of unit Flooring for Tower 4 | 1d | 2025-04-10 | 2025-04-10 | start no earlier than 2025-04-10 | Indian Calendar | 10014589 |
| 4733 | 37200.40200.1341100 | On Application of Occupancy Certificate for Tower 4 | 1d | 2025-04-10 | 2025-04-10 | start no earlier than 2025-04-10 | Indian Calendar | 10014599 |
| 4734 | 37200.40200.1341000 | On Offer of Possession for Tower 4 | 1d | 2025-04-10 | 2025-04-10 | start no earlier than 2025-04-10 | Indian Calendar | 10014609 |
| 4735 | 37200.40200.1340900 | On Completion of Tower Raft for Tower 5 | 1d | 2025-04-10 | 2025-04-10 | start no earlier than 2025-04-10 | Indian Calendar | 10014619 |
| 4736 | 37200.40200.1340800 | On Completion of Ground Floor for Tower 5 | 1d | 2025-04-10 | 2025-04-10 | start no earlier than 2025-04-10 | Indian Calendar | 10014629 |
| 4737 | 37200.40200.1340700 | On Completion of 10th Floor Slab for Tower 5 | 1d | 2025-04-10 | 2025-04-10 | start no earlier than 2025-04-10 | Indian Calendar | 10014639 |
| 4738 | 37200.40200.1340600 | On Completion of 15th Floor slab for Tower 5 | 1d | 2025-04-10 | 2025-04-10 | start no earlier than 2025-04-10 | Indian Calendar | 10014649 |
| 4739 | 37200.40200.1340500 | On Completion of 20th Floor slab for Tower 5 | 1d | 2025-04-10 | 2025-04-10 | start no earlier than 2025-04-10 | Indian Calendar | 10014659 |
| 4740 | 37200.40200.1340400 | On Completion of 25th Floor Slab for Tower 5 | 1d | 2025-04-10 | 2025-04-10 | start no earlier than 2025-04-10 | Indian Calendar | 10014669 |
| 4741 | 37200.40200.1340300 | On Completion of Terrace Slab for Tower 5 | 1d | 2025-04-10 | 2025-04-10 | start no earlier than 2025-04-10 | Indian Calendar | 10014679 |
| 4742 | 37200.40200.1340200 | On Completion of Unit Internal plaster for Tower 5 | 1d | 2025-04-10 | 2025-04-10 | start no earlier than 2025-04-10 | Indian Calendar | 10014689 |
| 4743 | 37200.40200.1340100 | On Completion of unit Flooring for Tower 5 | 1d | 2025-04-10 | 2025-04-10 | start no earlier than 2025-04-10 | Indian Calendar | 10014699 |
| 4744 | 37200.40200.1340000 | On Application of Occupancy Certificate for Tower 5 | 1d | 2025-04-10 | 2025-04-10 | start no earlier than 2025-04-10 | Indian Calendar | 10014709 |
| 4745 | 37200.40200.1339900 | On Offer of Possession for Tower 5 | 1d | 2025-04-10 | 2025-04-10 | start no earlier than 2025-04-10 | Indian Calendar | 10014719 |
