Schedule from MS Project XML, 2024-03-23 to 2029-07-19.

## Calendars

- Standard: Mon-Fri 08:00-12:00, 13:00-17:00; Sat-Sun off. Exceptions (off unless hours are given): 2024-03-29 to 2024-04-01, 2024-05-06, 2024-05-27, 2024-08-26, 2024-12-23 to 2025-01-05, 2025-04-18 to 2025-04-21, 2025-05-05, 2025-05-26, 2025-08-25, 2025-12-22 to 2026-01-04, 2026-03-27 to 2026-03-30, 2026-05-04, 2026-05-23 to 2026-05-25, 2026-08-29 to 2026-08-31, 2026-12-21 to 2027-01-03, 2027-04-16 to 2027-04-19, 2027-05-01 to 2027-05-03, 2027-05-29 to 2027-05-31, 2027-08-30, 2027-12-25 to 2028-01-09, 2028-03-31 to 2028-04-03, 2028-04-29 to 2028-05-01, 2028-05-27 to 2028-05-29, 2028-08-26 to 2028-08-28, 2028-12-23 to 2029-01-07, 2029-03-23 to 2029-03-26, 2029-05-07, 2029-05-28.
- 7 day week No holidays: Mon-Sun 08:00-12:00, 13:00-17:00.
- Indian Calendar: Mon-Sat 08:00-12:00, 13:00-17:00; Sun off. Exceptions (off unless hours are given): 2024-07-01 to 2024-07-06 08:00-10:00, 14:00-17:00, 2024-07-07, 2024-07-08 to 2024-07-13 08:00-10:00, 14:00-17:00, 2024-07-14, 2024-07-15 to 2024-07-20 08:00-10:00, 14:00-17:00, 2024-07-21, 2024-07-22 to 2024-07-27 08:00-10:00, 14:00-17:00, 2024-07-28, 2024-07-29 to 2024-07-31 08:00-10:00, 14:00-17:00, 2024-08-01 to 2024-08-03 08:00-10:00, 11:00-12:00, 13:00-17:00, 2024-08-04, 2024-08-05 to 2024-08-10 08:00-10:00, 11:00-12:00, 13:00-17:00, 2024-08-11, 2024-08-12 to 2024-08-17 08:00-10:00, 11:00-12:00, 13:00-17:00, 2024-08-18, 2024-08-19 to 2024-08-24 08:00-10:00, 11:00-12:00, 13:00-17:00, 2024-08-25, 2024-08-26 to 2024-08-31 08:00-10:00, 11:00-12:00, 13:00-17:00, 2024-09-01, 2024-09-02 to 2024-09-07 08:00-10:00, 11:00-12:00, 13:00-17:00, 2024-09-08, 2024-09-09 to 2024-09-14 08:00-10:00, 11:00-12:00, 13:00-17:00, 2024-09-15, 2024-09-16 to 2024-09-21 08:00-10:00, 11:00-12:00, 13:00-17:00, 2024-09-22, 2024-09-23 to 2024-09-28 08:00-10:00, 11:00-12:00, 13:00-17:00, 2024-09-29, 2024-09-30 08:00-10:00, 11:00-12:00, 13:00-17:00.
- Zenith: Mon-Sun 08:00-12:00, 13:00-17:00. Exceptions (off unless hours are given): 2024-11-01 to 2024-12-15, 2025-11-01 to 2025-12-15, 2026-11-01 to 2026-12-15, 2027-11-01 to 2027-12-15, 2028-11-01 to 2028-12-15.
- Yashwantpur Finshing: Mon-Fri 08:00-12:00, 13:00-17:00; Sat-Sun off.

## Resources

| Resource |
| --- |
| Aristocrat |
| Project Costs |
| Zenith |
| Project Costs |

## Schedule

| ID | WBS | Task | Duration | Start | Finish | Predecessors | Complete | Constraint | Calendar | Unique_Task_ID |
| --- | --- | --- | --- | --- | --- | --- | --- | --- | --- | --- |
| 1 | 36900 | **Zenith / Sec 89** | 1944.38ed | 2024-03-23 | 2029-07-19 |  | 2% | start no earlier than 2024-03-23 |  | 8647514 |
| 2 | 36900.37000 | **Godrej Zenith** | 1720d | 2024-03-23 | 2029-07-19 |  | 2% | start no earlier than 2024-03-23 | Zenith | 8647524 |
| 3 | 36900.37000.37100 | **Phase 01** | 1506d | 2024-03-23 | 2028-12-17 |  | 3% | start no earlier than 2024-03-23 | Zenith | 8647534 |
| 4 | 36900.37000.37100.137400 | **Pre-Contract Work** | 112d | 2024-05-30 | 2024-09-18 |  | 100% | start no earlier than 2024-05-30 | Zenith | 8652824 |
| 5 | 36900.37000.37100.137400.222000 | **Tender Drawing Release** | 1d | 2024-05-30 | 2024-05-30 |  | 100% | start no earlier than 2024-05-30 | Zenith | 8656934 |
| 6 | 36900.37000.37100.137400.222000.231600 | Core & Shell | 1d | 2024-05-30 | 2024-05-30 |  | 100% | start no earlier than 2024-05-30 | Zenith | 8731954 |
| 7 | 36900.37000.37100.137400.221900 | **BOQ Release** | 22d | 2024-05-31 | 2024-06-21 |  | 100% | start no earlier than 2024-05-31 | Zenith | 8656944 |
| 8 | 36900.37000.37100.137400.221900.231500 | Core & Shell | 22d | 2024-05-31 | 2024-06-21 | 6 | 100% | start no earlier than 2024-05-31 | Zenith | 8731944 |
| 9 | 36900.37000.37100.137400.221800 | **Work Award** | 87d | 2024-06-24 | 2024-09-18 |  | 100% | start no earlier than 2024-06-24 | Zenith | 8656954 |
| 10 | 36900.37000.37100.137400.221800.231400 | Core & Shell | 87d | 2024-06-24 | 2024-09-18 | 8FS+1d | 100% | start no earlier than 2024-06-24 | Zenith | 8731934 |
| 11 | 36900.37000.37100.37900 | **Tower 04** | 1474.6d | 2024-04-01 | 2028-10-11 |  | 3% | start no earlier than 2024-04-01 | Zenith | 8647594 |
| 12 | 36900.37000.37100.37900.63100 | **Sub-Structure Works** | 520.6d | 2024-04-01 | 2025-10-18 |  | 61% | start no earlier than 2024-04-01 | Zenith | 8648354 |
| 13 | 36900.37000.37100.37900.63100.142500 | **Soil Bed Preparation** | 196d | 2024-04-01 | 2024-10-13 |  | 100% | start no earlier than 2024-04-01 | Zenith | 8652804 |
| 14 | 36900.37000.37100.37900.63100.142500.232100 | Excavation (2m) | 71d | 2024-04-01 | 2024-06-10 |  | 100% | must start on 2024-04-01 | Zenith | 8726684 |
| 15 | 36900.37000.37100.37900.63100.142500.232000 | Soldier Piling shop drawing approval | 21d | 2024-04-15 | 2024-07-09 | 14FF+25d | 100% | start no earlier than 2024-04-15 | Zenith | 8726674 |
| 16 | 36900.37000.37100.37900.63100.142500.231900 | Mobilization & Soldier Piling with Excavation (4m) | 102d | 2024-06-14 | 2024-09-28 | 15FS+87d | 100% | start no earlier than 2024-06-14 | Zenith | 8726664 |
| 17 | 36900.37000.37100.37900.63100.142500.231800 | Balance B3 bulk Excavation | 57d | 2024-05-15 | 2024-09-29 | 16FS-133d | 100% | start no earlier than 2024-05-15 | Zenith | 8726654 |
| 18 | 36900.37000.37100.37900.63100.142500.231700 | Soil dressing & ATT | 10d | 2024-10-04 | 2024-10-13 | 17FS+8d | 100% | start no earlier than 2024-10-04 | Zenith | 8726644 |
| 19 | 36900.37000.37100.37900.63100.119100 | **Structure Works** | 187.6d | 2024-10-11 | 2025-05-31 |  | 59% | start no earlier than 2024-10-11 | Zenith | 8651744 |
| 20 | 36900.37000.37100.37900.63100.119100.142200 | **Raft Foundation** | 62d | 2024-10-11 | 2025-01-25 |  | 100% | start no earlier than 2024-10-11 | Zenith | 8652624 |
| 21 | 36900.37000.37100.37900.63100.119100.142200.244400 | PCC | 7d | 2024-10-11 | 2024-10-23 | 10FS+15d, 18 | 100% | start no earlier than 2024-10-11 | Zenith | 8696184 |
| 22 | 36900.37000.37100.37900.63100.119100.142200.244300 | Column/SW layout marking | 1d | 2024-10-31 | 2024-11-10 | 21 | 100% | start no earlier than 2024-10-31 | Zenith | 8696174 |
| 23 | 36900.37000.37100.37900.63100.119100.142200.244200 | Reinforcement | 59d | 2024-10-12 | 2025-01-23 | 22FS+2d | 100% | start no earlier than 2024-10-12 | Zenith | 8696164 |
| 24 | 36900.37000.37100.37900.63100.119100.142200.244100 | Formwork (Conventional) | 3d | 2025-01-21 | 2025-01-23 | 23FF+3d | 100% | start no earlier than 2025-01-21 | Zenith | 8696154 |
| 25 | 36900.37000.37100.37900.63100.119100.142200.244000 | Concreting | 3d | 2025-01-23 | 2025-01-25 | 24FF+3d | 100% | start no earlier than 2025-01-23 | Zenith | 8696144 |

| ID | WBS | Task | Duration | Start | Finish | Predecessors | Complete | Constraint | Calendar | Unique_Task_ID |
| --- | --- | --- | --- | --- | --- | --- | --- | --- | --- | --- |
| 26 | 36900.37000.37100.37900.63100.119100.132300 | **Basement 03 Roof Slab (Dummy/Stitch Slab)** | 6d | 2025-03-24 | 2025-03-29 |  | 100% | start no earlier than 2025-03-24 | Zenith | 8652584 |
| 27 | 36900.37000.37100.37900.63100.119100.132300.243900 | Column/SW Reinforcement | 1d | 2025-03-24 | 2025-03-24 | 25 | 100% | start no earlier than 2025-03-24 | Zenith | 8696134 |
| 28 | 36900.37000.37100.37900.63100.119100.132300.243800 | SW Formwork (Conventional) | 1d | 2025-03-25 | 2025-03-25 | 27SS+1d | 100% | start no earlier than 2025-03-25 | Zenith | 8696124 |
| 29 | 36900.37000.37100.37900.63100.119100.132300.243700 | Column/SW Concreting | 1d | 2025-03-26 | 2025-03-26 | 28SS+1d | 100% | start no earlier than 2025-03-26 | Zenith | 8696114 |
| 30 | 36900.37000.37100.37900.63100.119100.132300.243600 | Slab Formwork (Conventional) | 1d | 2025-03-27 | 2025-03-27 | 29SS+1d | 100% | start no earlier than 2025-03-27 | Zenith | 8696104 |
| 31 | 36900.37000.37100.37900.63100.119100.132300.243500 | Slab Reinforcement + Conduting | 1d | 2025-03-28 | 2025-03-28 | 30 | 100% | start no earlier than 2025-03-28 | Zenith | 8696094 |
| 32 | 36900.37000.37100.37900.63100.119100.132300.243400 | Concreting | 1d | 2025-03-29 | 2025-03-29 | 31 | 100% | start no earlier than 2025-03-29 | Zenith | 8696084 |
| 33 | 36900.37000.37100.37900.63100.119100.132400 | **Basement 02 Roof Slab** | 64.6d | 2025-02-06 | 2025-04-11 |  | 83% | start no earlier than 2025-02-06 | Zenith | 8652574 |
| 34 | 36900.37000.37100.37900.63100.119100.132400.243300 | Column/SW Reinforcement | 13d | 2025-02-06 | 2025-03-02 | 32FS-21d | 100% | start no earlier than 2025-02-06 | Zenith | 8696074 |
| 35 | 36900.37000.37100.37900.63100.119100.132400.243200 | SW Formwork (Conventional) | 12d | 2025-02-19 | 2025-03-19 | 34SS+11d | 100% | start no earlier than 2025-02-19 | Zenith | 8696064 |
| 36 | 36900.37000.37100.37900.63100.119100.132400.243100 | Column/SW Concreting | 10d | 2025-02-25 | 2025-03-20 | 35SS+6d | 100% | start no earlier than 2025-02-25 | Zenith | 8696054 |
| 37 | 36900.37000.37100.37900.63100.119100.132400.243000 | Slab Formwork (Conventional) | 10d | 2025-03-02 | 2025-03-30 | 36SS+5d | 100% | start no earlier than 2025-03-02 | Zenith | 8696044 |
| 38 | 36900.37000.37100.37900.63100.119100.132400.242900 | Slab Reinforcement + Conduting | 12d | 2025-03-24 | 2025-04-05 | 37 | 58% | start no earlier than 2025-03-24 | Zenith | 8696034 |
| 39 | 36900.37000.37100.37900.63100.119100.132400.242800 | Concreting | 6d | 2025-03-30 | 2025-04-11 | 38FS-6.4d | 6% |  | Zenith | 8696024 |
| 40 | 36900.37000.37100.37900.63100.119100.142300 | **Basement 01 Roof Slab** | 25d | 2025-04-11 | 2025-05-06 |  |  | start no earlier than 2025-04-11 | Zenith | 8652564 |
| 41 | 36900.37000.37100.37900.63100.119100.142300.881600 | Column/SW Reinforcement | 9d | 2025-04-11 | 2025-04-20 | 39 |  |  | Zenith | 8696014 |
| 42 | 36900.37000.37100.37900.63100.119100.142300.881700 | SW Formwork (Conventional) | 9d | 2025-04-15 | 2025-04-24 | 41SS+4d |  |  | Zenith | 8696004 |
| 43 | 36900.37000.37100.37900.63100.119100.142300.881800 | Column/SW Concreting | 9d | 2025-04-19 | 2025-04-28 | 42SS+4d |  |  | Zenith | 8695994 |
| 44 | 36900.37000.37100.37900.63100.119100.142300.881900 | Slab Formwork (Conventional) | 9d | 2025-04-23 | 2025-05-02 | 43SS+4d |  |  | Zenith | 8695984 |
| 45 | 36900.37000.37100.37900.63100.119100.142300.882000 | Slab Reinforcement + Conduting | 3d | 2025-05-02 | 2025-05-05 | 44 |  |  | Zenith | 8695974 |
| 46 | 36900.37000.37100.37900.63100.119100.142300.882100 | Concreting | 1d | 2025-05-05 | 2025-05-06 | 45 |  |  | Zenith | 8695964 |
| 47 | 36900.37000.37100.37900.63100.119100.142400 | **Podium Slab/Ground Roof Floor Slab** | 25d | 2025-05-06 | 2025-05-31 |  |  | start no earlier than 2025-05-06 | Zenith | 8652554 |
| 48 | 36900.37000.37100.37900.63100.119100.142400.882200 | Column/SW Reinforcement | 9d | 2025-05-06 | 2025-05-15 | 46 |  |  | Zenith | 8695954 |
| 49 | 36900.37000.37100.37900.63100.119100.142400.882300 | SW Formwork (Conventional) | 9d | 2025-05-10 | 2025-05-19 | 48SS+4d |  |  | Zenith | 8695944 |
| 50 | 36900.37000.37100.37900.63100.119100.142400.882400 | Column/SW Concreting | 9d | 2025-05-14 | 2025-05-23 | 49SS+4d |  |  | Zenith | 8695934 |
| 51 | 36900.37000.37100.37900.63100.119100.142400.882500 | Slab Formwork (Conventional) | 9d | 2025-05-18 | 2025-05-27 | 50SS+4d |  |  | Zenith | 8695924 |
| 52 | 36900.37000.37100.37900.63100.119100.142400.882600 | Slab Reinforcement + Conduting | 3d | 2025-05-27 | 2025-05-30 | 51 |  |  | Zenith | 8695914 |
| 53 | 36900.37000.37100.37900.63100.119100.142400.882700 | Concreting | 1d | 2025-05-30 | 2025-05-31 | 52 |  |  | Zenith | 8695904 |

| ID | WBS | Task | Duration | Start | Finish | Predecessors | Constraint | Calendar | Unique_Task_ID |
| --- | --- | --- | --- | --- | --- | --- | --- | --- | --- |
| 54 | 36900.37000.37100.37900.63100.207200 | **Substructure Finishes** | 110d | 2025-06-30 | 2025-10-18 |  | start no earlier than 2025-06-30 | Zenith | 8654544 |
| 55 | 36900.37000.37100.37900.63100.207200.780900 | Masonary Work | 35d | 2025-06-30 | 2025-08-04 | 53FS+30d |  | Zenith | 8726634 |
| 56 | 36900.37000.37100.37900.63100.207200.781000 | Plaster Work | 30d | 2025-08-04 | 2025-09-03 | 55 |  | Zenith | 8726624 |
| 57 | 36900.37000.37100.37900.63100.207200.781100 | Structural Steel work | 50d | 2025-07-30 | 2025-09-18 | 53FS+60d |  | Zenith | 8726614 |
| 58 | 36900.37000.37100.37900.63100.207200.781200 | White Wash & Misc. | 35d | 2025-09-13 | 2025-10-18 | 56FS+10d |  | Zenith | 8726604 |
| 59 | 36900.37000.37100.37900.38900 | **Superstructure** | 608d | 2025-05-31 | 2027-04-29 |  | start no earlier than 2025-05-31 | Zenith | 8647684 |
| 60 | 36900.37000.37100.37900.38900.44800 | **RCC structure** | 385d | 2025-05-31 | 2026-08-04 |  | start no earlier than 2025-05-31 | Zenith | 8647954 |
| 61 | 36900.37000.37100.37900.38900.44800.207000 | **1st Floor Roof slab** | 24d | 2025-05-31 | 2025-06-24 |  | start no earlier than 2025-05-31 | Zenith | 8655934 |
| 62 | 36900.37000.37100.37900.38900.44800.207000.882800 | Reinforcement | 19d | 2025-05-31 | 2025-06-19 | 53 |  | Zenith | 8695894 |
| 63 | 36900.37000.37100.37900.38900.44800.207000.882900 | Conduiting | 19d | 2025-06-03 | 2025-06-22 | 62SS+3d |  | Zenith | 8695884 |
| 64 | 36900.37000.37100.37900.38900.44800.207000.883000 | Formwork | 19d | 2025-06-04 | 2025-06-23 | 62SS+4d |  | Zenith | 8695874 |
| 65 | 36900.37000.37100.37900.38900.44800.207000.883100 | Concreting | 1d | 2025-06-23 | 2025-06-24 | 63FS+1d, 64 |  | Zenith | 8695864 |
| 66 | 36900.37000.37100.37900.38900.44800.207100 | **2nd Floor Roof slab** | 21d | 2025-06-24 | 2025-07-15 |  | start no earlier than 2025-06-24 | Zenith | 8655914 |
| 67 | 36900.37000.37100.37900.38900.44800.207100.883200 | Reinforcement | 16d | 2025-06-24 | 2025-07-10 | 65 |  | Zenith | 8695854 |
| 68 | 36900.37000.37100.37900.38900.44800.207100.883300 | Conduiting | 16d | 2025-06-27 | 2025-07-13 | 67SS+3d |  | Zenith | 8695844 |
| 69 | 36900.37000.37100.37900.38900.44800.207100.883400 | Formwork | 16d | 2025-06-28 | 2025-07-14 | 67SS+4d |  | Zenith | 8695834 |
| 70 | 36900.37000.37100.37900.38900.44800.207100.883500 | Concreting | 1d | 2025-07-14 | 2025-07-15 | 68FS+1d, 69 |  | Zenith | 8695824 |
| 71 | 36900.37000.37100.37900.38900.44800.207300 | **3rd Floor Roof slab** | 15d | 2025-07-15 | 2025-07-30 |  | start no earlier than 2025-07-15 | Zenith | 8655904 |
| 72 | 36900.37000.37100.37900.38900.44800.207300.883600 | Reinforcement | 10d | 2025-07-15 | 2025-07-25 | 70 |  | Zenith | 8695814 |
| 73 | 36900.37000.37100.37900.38900.44800.207300.883700 | Conduiting | 10d | 2025-07-18 | 2025-07-28 | 72SS+3d |  | Zenith | 8695804 |
| 74 | 36900.37000.37100.37900.38900.44800.207300.883800 | Formwork | 10d | 2025-07-19 | 2025-07-29 | 72SS+4d |  | Zenith | 8695794 |
| 75 | 36900.37000.37100.37900.38900.44800.207300.883900 | Concreting | 1d | 2025-07-29 | 2025-07-30 | 73FS+1d, 74 |  | Zenith | 8695784 |
| 76 | 36900.37000.37100.37900.38900.44800.207400 | **4th floor roof slab** | 9d | 2025-07-30 | 2025-08-08 |  | start no earlier than 2025-07-30 | Zenith | 8655884 |
| 77 | 36900.37000.37100.37900.38900.44800.207400.884000 | Reinforcement | 6d | 2025-07-30 | 2025-08-05 | 75 |  | Zenith | 8695774 |
| 78 | 36900.37000.37100.37900.38900.44800.207400.884100 | Conduiting | 6d | 2025-07-31 | 2025-08-06 | 77SS+1d |  | Zenith | 8695764 |
| 79 | 36900.37000.37100.37900.38900.44800.207400.884200 | Formwork | 6d | 2025-08-01 | 2025-08-07 | 77SS+2d |  | Zenith | 8695754 |
| 80 | 36900.37000.37100.37900.38900.44800.207400.884300 | Concreting | 1d | 2025-08-07 | 2025-08-08 | 78FS+1d, 79 |  | Zenith | 8695744 |

| ID | WBS | Task | Duration | Start | Finish | Predecessors | Constraint | Calendar | Unique_Task_ID |
| --- | --- | --- | --- | --- | --- | --- | --- | --- | --- |
| 81 | 36900.37000.37100.37900.38900.44800.207900 | **5th floor roof slab** | 9d | 2025-08-08 | 2025-08-17 |  | start no earlier than 2025-08-08 | Zenith | 8655874 |
| 82 | 36900.37000.37100.37900.38900.44800.207900.884400 | Reinforcement | 6d | 2025-08-08 | 2025-08-14 | 80 |  | Zenith | 8695734 |
| 83 | 36900.37000.37100.37900.38900.44800.207900.884500 | Conduiting | 6d | 2025-08-09 | 2025-08-15 | 82SS+1d |  | Zenith | 8695724 |
| 84 | 36900.37000.37100.37900.38900.44800.207900.884600 | Formwork | 6d | 2025-08-10 | 2025-08-16 | 82SS+2d |  | Zenith | 8695714 |
| 85 | 36900.37000.37100.37900.38900.44800.207900.884700 | Concreting | 1d | 2025-08-16 | 2025-08-17 | 83FS+1d, 84 |  | Zenith | 8695704 |
| 86 | 36900.37000.37100.37900.38900.44800.208000 | **6th floor roof slab** | 9d | 2025-08-17 | 2025-08-26 |  | start no earlier than 2025-08-17 | Zenith | 8655864 |
| 87 | 36900.37000.37100.37900.38900.44800.208000.884800 | Reinforcement | 6d | 2025-08-17 | 2025-08-23 | 85 |  | Zenith | 8695694 |
| 88 | 36900.37000.37100.37900.38900.44800.208000.884900 | Conduiting | 6d | 2025-08-18 | 2025-08-24 | 87SS+1d |  | Zenith | 8695684 |
| 89 | 36900.37000.37100.37900.38900.44800.208000.885000 | Formwork | 6d | 2025-08-19 | 2025-08-25 | 87SS+2d |  | Zenith | 8695674 |
| 90 | 36900.37000.37100.37900.38900.44800.208000.885100 | Concreting | 1d | 2025-08-25 | 2025-08-26 | 88FS+1d, 89 |  | Zenith | 8695664 |
| 91 | 36900.37000.37100.37900.38900.44800.208100 | **7th floor roof slab** | 9d | 2025-08-26 | 2025-09-04 |  | start no earlier than 2025-08-26 | Zenith | 8655854 |
| 92 | 36900.37000.37100.37900.38900.44800.208100.885200 | Reinforcement | 6d | 2025-08-26 | 2025-09-01 | 90 |  | Zenith | 8695654 |
| 93 | 36900.37000.37100.37900.38900.44800.208100.885300 | Conduiting | 6d | 2025-08-27 | 2025-09-02 | 92SS+1d |  | Zenith | 8695644 |
| 94 | 36900.37000.37100.37900.38900.44800.208100.885400 | Formwork | 6d | 2025-08-28 | 2025-09-03 | 92SS+2d |  | Zenith | 8695634 |
| 95 | 36900.37000.37100.37900.38900.44800.208100.885500 | Concreting | 1d | 2025-09-03 | 2025-09-04 | 93FS+1d, 94 |  | Zenith | 8695624 |
| 96 | 36900.37000.37100.37900.38900.44800.208500 | **8th floor roof slab** | 9d | 2025-09-04 | 2025-09-13 |  | start no earlier than 2025-09-04 | Zenith | 8655844 |
| 97 | 36900.37000.37100.37900.38900.44800.208500.885600 | Reinforcement | 6d | 2025-09-04 | 2025-09-10 | 95 |  | Zenith | 8695614 |
| 98 | 36900.37000.37100.37900.38900.44800.208500.885700 | Conduiting | 6d | 2025-09-05 | 2025-09-11 | 97SS+1d |  | Zenith | 8695604 |
| 99 | 36900.37000.37100.37900.38900.44800.208500.885800 | Formwork | 6d | 2025-09-06 | 2025-09-12 | 97SS+2d |  | Zenith | 8695594 |
| 100 | 36900.37000.37100.37900.38900.44800.208500.885900 | Concreting | 1d | 2025-09-12 | 2025-09-13 | 98FS+1d, 99 |  | Zenith | 8695584 |
| 101 | 36900.37000.37100.37900.38900.44800.208700 | **9th floor roof slab** | 9d | 2025-09-13 | 2025-09-22 |  | start no earlier than 2025-09-13 | Zenith | 8655834 |
| 102 | 36900.37000.37100.37900.38900.44800.208700.886000 | Reinforcement | 6d | 2025-09-13 | 2025-09-19 | 100 |  | Zenith | 8695574 |
| 103 | 36900.37000.37100.37900.38900.44800.208700.886100 | Conduiting | 6d | 2025-09-14 | 2025-09-20 | 102SS+1d |  | Zenith | 8695564 |
| 104 | 36900.37000.37100.37900.38900.44800.208700.886200 | Formwork | 6d | 2025-09-15 | 2025-09-21 | 102SS+2d |  | Zenith | 8695554 |
| 105 | 36900.37000.37100.37900.38900.44800.208700.886300 | Concreting | 1d | 2025-09-21 | 2025-09-22 | 103FS+1d, 104 |  | Zenith | 8695544 |

| ID | WBS | Task | Duration | Start | Finish | Predecessors | Constraint | Calendar | Unique_Task_ID |
| --- | --- | --- | --- | --- | --- | --- | --- | --- | --- |
| 106 | 36900.37000.37100.37900.38900.44800.208800 | **10th floor roof slab** | 9d | 2025-09-22 | 2025-10-01 |  | start no earlier than 2025-09-22 | Zenith | 8655824 |
| 107 | 36900.37000.37100.37900.38900.44800.208800.886400 | Reinforcement | 6d | 2025-09-22 | 2025-09-28 | 105 |  | Zenith | 8695534 |
| 108 | 36900.37000.37100.37900.38900.44800.208800.886500 | Conduiting | 6d | 2025-09-23 | 2025-09-29 | 107SS+1d |  | Zenith | 8695524 |
| 109 | 36900.37000.37100.37900.38900.44800.208800.886600 | Formwork | 6d | 2025-09-24 | 2025-09-30 | 107SS+2d |  | Zenith | 8695514 |
| 110 | 36900.37000.37100.37900.38900.44800.208800.886700 | Concreting | 1d | 2025-09-30 | 2025-10-01 | 108FS+1d, 109 |  | Zenith | 8695504 |
| 111 | 36900.37000.37100.37900.38900.44800.209400 | **11th floor roof slab** | 9d | 2025-10-01 | 2025-10-10 |  | start no earlier than 2025-10-01 | Zenith | 8655804 |
| 112 | 36900.37000.37100.37900.38900.44800.209400.886800 | Reinforcement | 6d | 2025-10-01 | 2025-10-07 | 110 |  | Zenith | 8695494 |
| 113 | 36900.37000.37100.37900.38900.44800.209400.886900 | Conduiting | 6d | 2025-10-02 | 2025-10-08 | 112SS+1d |  | Zenith | 8695484 |
| 114 | 36900.37000.37100.37900.38900.44800.209400.887000 | Formwork | 6d | 2025-10-03 | 2025-10-09 | 112SS+2d |  | Zenith | 8695474 |
| 115 | 36900.37000.37100.37900.38900.44800.209400.887100 | Concreting | 1d | 2025-10-09 | 2025-10-10 | 113FS+1d, 114 |  | Zenith | 8695464 |
| 116 | 36900.37000.37100.37900.38900.44800.209600 | **12th floor roof slab** | 9d | 2025-10-10 | 2025-10-19 |  | start no earlier than 2025-10-10 | Zenith | 8655794 |
| 117 | 36900.37000.37100.37900.38900.44800.209600.887200 | Reinforcement | 6d | 2025-10-10 | 2025-10-16 | 115 |  | Zenith | 8695454 |
| 118 | 36900.37000.37100.37900.38900.44800.209600.887300 | Conduiting | 6d | 2025-10-11 | 2025-10-17 | 117SS+1d |  | Zenith | 8695444 |
| 119 | 36900.37000.37100.37900.38900.44800.209600.887400 | Formwork | 6d | 2025-10-12 | 2025-10-18 | 117SS+2d |  | Zenith | 8695434 |
| 120 | 36900.37000.37100.37900.38900.44800.209600.887500 | Concreting | 1d | 2025-10-18 | 2025-10-19 | 118FS+1d, 119 |  | Zenith | 8695424 |
| 121 | 36900.37000.37100.37900.38900.44800.209700 | **13th floor roof slab** | 9d | 2025-10-19 | 2025-10-28 |  | start no earlier than 2025-10-19 | Zenith | 8655784 |
| 122 | 36900.37000.37100.37900.38900.44800.209700.887600 | Reinforcement | 6d | 2025-10-19 | 2025-10-25 | 120 |  | Zenith | 8695414 |
| 123 | 36900.37000.37100.37900.38900.44800.209700.887700 | Conduiting | 6d | 2025-10-20 | 2025-10-26 | 122SS+1d |  | Zenith | 8695404 |
| 124 | 36900.37000.37100.37900.38900.44800.209700.887800 | Formwork | 6d | 2025-10-21 | 2025-10-27 | 122SS+2d |  | Zenith | 8695394 |
| 125 | 36900.37000.37100.37900.38900.44800.209700.887900 | Concreting | 1d | 2025-10-27 | 2025-10-28 | 123FS+1d, 124 |  | Zenith | 8695384 |
| 126 | 36900.37000.37100.37900.38900.44800.209800 | **14th floor roof slab** | 9d | 2025-10-28 | 2025-12-21 |  | start no earlier than 2025-10-28 | Zenith | 8655774 |
| 127 | 36900.37000.37100.37900.38900.44800.209800.888000 | Reinforcement | 6d | 2025-10-28 | 2025-12-18 | 125 |  | Zenith | 8695374 |
| 128 | 36900.37000.37100.37900.38900.44800.209800.888100 | Conduiting | 6d | 2025-10-29 | 2025-12-19 | 127SS+1d |  | Zenith | 8695364 |
| 129 | 36900.37000.37100.37900.38900.44800.209800.888200 | Formwork | 6d | 2025-10-30 | 2025-12-20 | 127SS+2d |  | Zenith | 8695354 |
| 130 | 36900.37000.37100.37900.38900.44800.209800.888300 | Concreting | 1d | 2025-12-20 | 2025-12-21 | 128FS+1d, 129 |  | Zenith | 8695344 |

| ID | WBS | Task | Duration | Start | Finish | Predecessors | Constraint | Calendar | Unique_Task_ID |
| --- | --- | --- | --- | --- | --- | --- | --- | --- | --- |
| 131 | 36900.37000.37100.37900.38900.44800.209900 | **15th floor roof slab** | 9d | 2025-12-21 | 2025-12-30 |  | start no earlier than 2025-12-21 | Zenith | 8655764 |
| 132 | 36900.37000.37100.37900.38900.44800.209900.888400 | Reinforcement | 6d | 2025-12-21 | 2025-12-27 | 130 |  | Zenith | 8695334 |
| 133 | 36900.37000.37100.37900.38900.44800.209900.888500 | Conduiting | 6d | 2025-12-22 | 2025-12-28 | 132SS+1d |  | Zenith | 8695324 |
| 134 | 36900.37000.37100.37900.38900.44800.209900.888600 | Formwork | 6d | 2025-12-23 | 2025-12-29 | 132SS+2d |  | Zenith | 8695314 |
| 135 | 36900.37000.37100.37900.38900.44800.209900.888700 | Concreting | 1d | 2025-12-29 | 2025-12-30 | 133FS+1d, 134 |  | Zenith | 8695304 |
| 136 | 36900.37000.37100.37900.38900.44800.210000 | **16th floor roof slab** | 9d | 2025-12-30 | 2026-01-08 |  | start no earlier than 2025-12-30 | Zenith | 8655754 |
| 137 | 36900.37000.37100.37900.38900.44800.210000.888800 | Reinforcement | 6d | 2025-12-30 | 2026-01-05 | 135 |  | Zenith | 8695294 |
| 138 | 36900.37000.37100.37900.38900.44800.210000.888900 | Conduiting | 6d | 2025-12-31 | 2026-01-06 | 137SS+1d |  | Zenith | 8695284 |
| 139 | 36900.37000.37100.37900.38900.44800.210000.889000 | Formwork | 6d | 2026-01-01 | 2026-01-07 | 137SS+2d |  | Zenith | 8695274 |
| 140 | 36900.37000.37100.37900.38900.44800.210000.889100 | Concreting | 1d | 2026-01-07 | 2026-01-08 | 138, 139 |  | Zenith | 8695264 |
| 141 | 36900.37000.37100.37900.38900.44800.210700 | **17th floor roof slab** | 9d | 2026-01-08 | 2026-01-17 |  | start no earlier than 2026-01-08 | Zenith | 8655744 |
| 142 | 36900.37000.37100.37900.38900.44800.210700.889200 | Reinforcement | 6d | 2026-01-08 | 2026-01-14 | 140 |  | Zenith | 8695254 |
| 143 | 36900.37000.37100.37900.38900.44800.210700.889300 | Conduiting | 6d | 2026-01-09 | 2026-01-15 | 142SS+1d |  | Zenith | 8695244 |
| 144 | 36900.37000.37100.37900.38900.44800.210700.889400 | Formwork | 6d | 2026-01-10 | 2026-01-16 | 142SS+2d |  | Zenith | 8695234 |
| 145 | 36900.37000.37100.37900.38900.44800.210700.889500 | Concreting | 1d | 2026-01-16 | 2026-01-17 | 143FS+1d, 144 |  | Zenith | 8695224 |
| 146 | 36900.37000.37100.37900.38900.44800.210800 | **18th floor roof slab** | 8d | 2026-01-17 | 2026-01-25 |  | start no earlier than 2026-01-17 | Zenith | 8655724 |
| 147 | 36900.37000.37100.37900.38900.44800.210800.889600 | Reinforcement | 5d | 2026-01-17 | 2026-01-22 | 145 |  | Zenith | 8695214 |
| 148 | 36900.37000.37100.37900.38900.44800.210800.889700 | Conduiting | 5d | 2026-01-18 | 2026-01-23 | 147SS+1d |  | Zenith | 8695204 |
| 149 | 36900.37000.37100.37900.38900.44800.210800.889800 | Formwork | 5d | 2026-01-19 | 2026-01-24 | 147SS+2d |  | Zenith | 8695194 |
| 150 | 36900.37000.37100.37900.38900.44800.210800.889900 | Concreting | 1d | 2026-01-24 | 2026-01-25 | 148FS+1d, 149 |  | Zenith | 8695184 |
| 151 | 36900.37000.37100.37900.38900.44800.211300 | **19th floor roof slab** | 8d | 2026-01-25 | 2026-02-02 |  | start no earlier than 2026-01-25 | Zenith | 8655714 |
| 152 | 36900.37000.37100.37900.38900.44800.211300.890000 | Reinforcement | 5d | 2026-01-25 | 2026-01-30 | 150 |  | Zenith | 8695174 |
| 153 | 36900.37000.37100.37900.38900.44800.211300.890100 | Conduiting | 5d | 2026-01-26 | 2026-01-31 | 152SS+1d |  | Zenith | 8695164 |
| 154 | 36900.37000.37100.37900.38900.44800.211300.890200 | Formwork | 5d | 2026-01-27 | 2026-02-01 | 152SS+2d |  | Zenith | 8695154 |
| 155 | 36900.37000.37100.37900.38900.44800.211300.890300 | Concreting | 1d | 2026-02-01 | 2026-02-02 | 153FS+1d, 154 |  | Zenith | 8695144 |

| ID | WBS | Task | Duration | Start | Finish | Predecessors | Constraint | Calendar | Unique_Task_ID |
| --- | --- | --- | --- | --- | --- | --- | --- | --- | --- |
| 156 | 36900.37000.37100.37900.38900.44800.211400 | **20th floor roof slab** | 8d | 2026-02-02 | 2026-02-10 |  | start no earlier than 2026-02-02 | Zenith | 8655704 |
| 157 | 36900.37000.37100.37900.38900.44800.211400.890400 | Reinforcement | 5d | 2026-02-02 | 2026-02-07 | 155 |  | Zenith | 8695134 |
| 158 | 36900.37000.37100.37900.38900.44800.211400.890500 | Conduiting | 5d | 2026-02-03 | 2026-02-08 | 157SS+1d |  | Zenith | 8695124 |
| 159 | 36900.37000.37100.37900.38900.44800.211400.890600 | Formwork | 5d | 2026-02-04 | 2026-02-09 | 157SS+2d |  | Zenith | 8695114 |
| 160 | 36900.37000.37100.37900.38900.44800.211400.890700 | Concreting | 1d | 2026-02-09 | 2026-02-10 | 158FS+1d, 159 |  | Zenith | 8695104 |
| 161 | 36900.37000.37100.37900.38900.44800.211500 | **21st floor roof slab** | 8d | 2026-02-10 | 2026-02-18 |  | start no earlier than 2026-02-10 | Zenith | 8655584 |
| 162 | 36900.37000.37100.37900.38900.44800.211500.890800 | Reinforcement | 5d | 2026-02-10 | 2026-02-15 | 160 |  | Zenith | 8695094 |
| 163 | 36900.37000.37100.37900.38900.44800.211500.890900 | Conduiting | 5d | 2026-02-11 | 2026-02-16 | 162SS+1d |  | Zenith | 8695084 |
| 164 | 36900.37000.37100.37900.38900.44800.211500.891000 | Formwork | 5d | 2026-02-12 | 2026-02-17 | 162SS+2d |  | Zenith | 8695074 |
| 165 | 36900.37000.37100.37900.38900.44800.211500.891100 | Concreting | 1d | 2026-02-17 | 2026-02-18 | 163FS+1d, 164 |  | Zenith | 8695064 |
| 166 | 36900.37000.37100.37900.38900.44800.211800 | **22nd floor roof slab** | 8d | 2026-02-18 | 2026-02-26 |  | start no earlier than 2026-02-18 | Zenith | 8655484 |
| 167 | 36900.37000.37100.37900.38900.44800.211800.891200 | Reinforcement | 5d | 2026-02-18 | 2026-02-23 | 165 |  | Zenith | 8695054 |
| 168 | 36900.37000.37100.37900.38900.44800.211800.891300 | Conduiting | 5d | 2026-02-19 | 2026-02-24 | 167SS+1d |  | Zenith | 8695044 |
| 169 | 36900.37000.37100.37900.38900.44800.211800.891400 | Formwork | 5d | 2026-02-20 | 2026-02-25 | 167SS+2d |  | Zenith | 8695034 |
| 170 | 36900.37000.37100.37900.38900.44800.211800.891500 | Concreting | 1d | 2026-02-25 | 2026-02-26 | 168FS+1d, 169 |  | Zenith | 8695024 |
| 171 | 36900.37000.37100.37900.38900.44800.211900 | **23rd floor roof slab** | 8d | 2026-02-26 | 2026-03-06 |  | start no earlier than 2026-02-26 | Zenith | 8655464 |
| 172 | 36900.37000.37100.37900.38900.44800.211900.891600 | Reinforcement | 5d | 2026-02-26 | 2026-03-03 | 170 |  | Zenith | 8695014 |
| 173 | 36900.37000.37100.37900.38900.44800.211900.891700 | Conduiting | 5d | 2026-02-27 | 2026-03-04 | 172SS+1d |  | Zenith | 8695004 |
| 174 | 36900.37000.37100.37900.38900.44800.211900.891800 | Formwork | 5d | 2026-02-28 | 2026-03-05 | 172SS+2d |  | Zenith | 8694994 |
| 175 | 36900.37000.37100.37900.38900.44800.211900.891900 | Concreting | 1d | 2026-03-05 | 2026-03-06 | 173FS+1d, 174 |  | Zenith | 8694984 |
| 176 | 36900.37000.37100.37900.38900.44800.213000 | **24th floor roof slab** | 8d | 2026-03-06 | 2026-03-14 |  | start no earlier than 2026-03-06 | Zenith | 8655454 |
| 177 | 36900.37000.37100.37900.38900.44800.213000.892000 | Reinforcement | 5d | 2026-03-06 | 2026-03-11 | 175 |  | Zenith | 8694974 |
| 178 | 36900.37000.37100.37900.38900.44800.213000.892100 | Conduiting | 5d | 2026-03-07 | 2026-03-12 | 177SS+1d |  | Zenith | 8694964 |
| 179 | 36900.37000.37100.37900.38900.44800.213000.892200 | Formwork | 5d | 2026-03-08 | 2026-03-13 | 177SS+2d |  | Zenith | 8694954 |
| 180 | 36900.37000.37100.37900.38900.44800.213000.892300 | Concreting | 1d | 2026-03-13 | 2026-03-14 | 178FS+1d, 179 |  | Zenith | 8694944 |

| ID | WBS | Task | Duration | Start | Finish | Predecessors | Constraint | Calendar | Unique_Task_ID |
| --- | --- | --- | --- | --- | --- | --- | --- | --- | --- |
| 181 | 36900.37000.37100.37900.38900.44800.213100 | **25th floor roof slab** | 8d | 2026-03-14 | 2026-03-22 |  | start no earlier than 2026-03-14 | Zenith | 8655424 |
| 182 | 36900.37000.37100.37900.38900.44800.213100.892400 | Reinforcement | 5d | 2026-03-14 | 2026-03-19 | 180 |  | Zenith | 8694934 |
| 183 | 36900.37000.37100.37900.38900.44800.213100.892500 | Conduiting | 5d | 2026-03-15 | 2026-03-20 | 182SS+1d |  | Zenith | 8694924 |
| 184 | 36900.37000.37100.37900.38900.44800.213100.892600 | Formwork | 5d | 2026-03-16 | 2026-03-21 | 182SS+2d |  | Zenith | 8694914 |
| 185 | 36900.37000.37100.37900.38900.44800.213100.892700 | Concreting | 1d | 2026-03-21 | 2026-03-22 | 183FS+1d, 184 |  | Zenith | 8694904 |
| 186 | 36900.37000.37100.37900.38900.44800.213700 | **26th floor roof slab** | 8d | 2026-03-22 | 2026-03-30 |  | start no earlier than 2026-03-22 | Zenith | 8654804 |
| 187 | 36900.37000.37100.37900.38900.44800.213700.892800 | Reinforcement | 5d | 2026-03-22 | 2026-03-27 | 185 |  | Zenith | 8694894 |
| 188 | 36900.37000.37100.37900.38900.44800.213700.892900 | Conduiting | 5d | 2026-03-23 | 2026-03-28 | 187SS+1d |  | Zenith | 8694884 |
| 189 | 36900.37000.37100.37900.38900.44800.213700.893000 | Formwork | 5d | 2026-03-24 | 2026-03-29 | 187SS+2d |  | Zenith | 8694874 |
| 190 | 36900.37000.37100.37900.38900.44800.213700.893100 | Concreting | 1d | 2026-03-29 | 2026-03-30 | 188FS+1d, 189 |  | Zenith | 8694864 |
| 191 | 36900.37000.37100.37900.38900.44800.213800 | **27th floor roof slab** | 8d | 2026-03-30 | 2026-04-07 |  | start no earlier than 2026-03-30 | Zenith | 8654794 |
| 192 | 36900.37000.37100.37900.38900.44800.213800.893200 | Reinforcement | 5d | 2026-03-30 | 2026-04-04 | 190 |  | Zenith | 8694854 |
| 193 | 36900.37000.37100.37900.38900.44800.213800.893300 | Conduiting | 5d | 2026-03-31 | 2026-04-05 | 192SS+1d |  | Zenith | 8694844 |
| 194 | 36900.37000.37100.37900.38900.44800.213800.893400 | Formwork | 5d | 2026-04-01 | 2026-04-06 | 192SS+2d |  | Zenith | 8694834 |
| 195 | 36900.37000.37100.37900.38900.44800.213800.894000 | Concreting | 1d | 2026-04-06 | 2026-04-07 | 193FS+1d, 194 |  | Zenith | 8694824 |
| 196 | 36900.37000.37100.37900.38900.44800.214100 | **28th floor roof slab** | 8d | 2026-04-07 | 2026-04-15 |  | start no earlier than 2026-04-07 | Zenith | 8654754 |
| 197 | 36900.37000.37100.37900.38900.44800.214100.894100 | Reinforcement | 5d | 2026-04-07 | 2026-04-12 | 195 |  | Zenith | 8694814 |
| 198 | 36900.37000.37100.37900.38900.44800.214100.894200 | Conduiting | 5d | 2026-04-08 | 2026-04-13 | 197SS+1d |  | Zenith | 8694804 |
| 199 | 36900.37000.37100.37900.38900.44800.214100.894300 | Formwork | 5d | 2026-04-09 | 2026-04-14 | 197SS+2d |  | Zenith | 8694794 |
| 200 | 36900.37000.37100.37900.38900.44800.214100.894400 | Concreting | 1d | 2026-04-14 | 2026-04-15 | 198FS+1d, 199 |  | Zenith | 8694784 |
| 201 | 36900.37000.37100.37900.38900.44800.214200 | **29th floor roof slab** | 8d | 2026-04-15 | 2026-04-23 |  | start no earlier than 2026-04-15 | Zenith | 8654734 |
| 202 | 36900.37000.37100.37900.38900.44800.214200.894500 | Reinforcement | 5d | 2026-04-15 | 2026-04-20 | 200 |  | Zenith | 8694774 |
| 203 | 36900.37000.37100.37900.38900.44800.214200.894600 | Conduiting | 5d | 2026-04-16 | 2026-04-21 | 202SS+1d |  | Zenith | 8694764 |
| 204 | 36900.37000.37100.37900.38900.44800.214200.894700 | Formwork | 5d | 2026-04-17 | 2026-04-22 | 202SS+2d |  | Zenith | 8694754 |
| 205 | 36900.37000.37100.37900.38900.44800.214200.894800 | Concreting | 1d | 2026-04-22 | 2026-04-23 | 203FS+1d, 204 |  | Zenith | 8694744 |

| ID | WBS | Task | Duration | Start | Finish | Predecessors | Constraint | Calendar | Unique_Task_ID |
| --- | --- | --- | --- | --- | --- | --- | --- | --- | --- |
| 206 | 36900.37000.37100.37900.38900.44800.214300 | **30th floor roof slab** | 10d | 2026-04-23 | 2026-05-03 |  | start no earlier than 2026-04-23 | Zenith | 8654714 |
| 207 | 36900.37000.37100.37900.38900.44800.214300.894900 | Reinforcement | 7d | 2026-04-23 | 2026-04-30 | 205 |  | Zenith | 8694734 |
| 208 | 36900.37000.37100.37900.38900.44800.214300.895000 | Conduiting | 7d | 2026-04-24 | 2026-05-01 | 207SS+1d |  | Zenith | 8694724 |
| 209 | 36900.37000.37100.37900.38900.44800.214300.895100 | Formwork | 7d | 2026-04-25 | 2026-05-02 | 207SS+2d |  | Zenith | 8694714 |
| 210 | 36900.37000.37100.37900.38900.44800.214300.895200 | Concreting | 1d | 2026-05-02 | 2026-05-03 | 208FS+1d, 209 |  | Zenith | 8694704 |
| 211 | 36900.37000.37100.37900.38900.44800.214700 | **31st floor roof slab** | 10d | 2026-05-03 | 2026-05-13 |  | start no earlier than 2026-05-03 | Zenith | 8654704 |
| 212 | 36900.37000.37100.37900.38900.44800.214700.895300 | Reinforcement | 7d | 2026-05-03 | 2026-05-10 | 210 |  | Zenith | 8694694 |
| 213 | 36900.37000.37100.37900.38900.44800.214700.895400 | Conduiting | 7d | 2026-05-04 | 2026-05-11 | 212SS+1d |  | Zenith | 8694684 |
| 214 | 36900.37000.37100.37900.38900.44800.214700.895500 | Formwork | 7d | 2026-05-05 | 2026-05-12 | 212SS+2d |  | Zenith | 8694674 |
| 215 | 36900.37000.37100.37900.38900.44800.214700.895600 | Concreting | 1d | 2026-05-12 | 2026-05-13 | 213FS+1d, 214 |  | Zenith | 8694664 |
| 216 | 36900.37000.37100.37900.38900.44800.215000 | **32nd floor roof slab** | 10d | 2026-05-13 | 2026-05-23 |  | start no earlier than 2026-05-13 | Zenith | 8654694 |
| 217 | 36900.37000.37100.37900.38900.44800.215000.895700 | Reinforcement | 7d | 2026-05-13 | 2026-05-20 | 215 |  | Zenith | 8694654 |
| 218 | 36900.37000.37100.37900.38900.44800.215000.895800 | Conduiting | 7d | 2026-05-14 | 2026-05-21 | 217SS+1d |  | Zenith | 8694644 |
| 219 | 36900.37000.37100.37900.38900.44800.215000.895900 | Formwork | 7d | 2026-05-15 | 2026-05-22 | 217SS+2d |  | Zenith | 8694634 |
| 220 | 36900.37000.37100.37900.38900.44800.215000.896000 | Concreting | 1d | 2026-05-22 | 2026-05-23 | 218FS+1d, 219 |  | Zenith | 8694624 |
| 221 | 36900.37000.37100.37900.38900.44800.215100 | **33rd floor roof slab** | 10d | 2026-05-23 | 2026-06-02 |  | start no earlier than 2026-05-23 | Zenith | 8654664 |
| 222 | 36900.37000.37100.37900.38900.44800.215100.896100 | Reinforcement | 7d | 2026-05-23 | 2026-05-30 | 220 |  | Zenith | 8694614 |
| 223 | 36900.37000.37100.37900.38900.44800.215100.896200 | Conduiting | 7d | 2026-05-24 | 2026-05-31 | 222SS+1d |  | Zenith | 8694604 |
| 224 | 36900.37000.37100.37900.38900.44800.215100.896300 | Formwork | 7d | 2026-05-25 | 2026-06-01 | 222SS+2d |  | Zenith | 8694594 |
| 225 | 36900.37000.37100.37900.38900.44800.215100.896400 | Concreting | 1d | 2026-06-01 | 2026-06-02 | 223FS+1d, 224 |  | Zenith | 8694584 |
| 226 | 36900.37000.37100.37900.38900.44800.215200 | **34th floor roof slab** | 10d | 2026-06-02 | 2026-06-12 |  | start no earlier than 2026-06-02 | Zenith | 8654644 |
| 227 | 36900.37000.37100.37900.38900.44800.215200.896500 | Reinforcement | 7d | 2026-06-02 | 2026-06-09 | 225 |  | Zenith | 8694574 |
| 228 | 36900.37000.37100.37900.38900.44800.215200.896600 | Conduiting | 7d | 2026-06-03 | 2026-06-10 | 227SS+1d |  | Zenith | 8694564 |
| 229 | 36900.37000.37100.37900.38900.44800.215200.896700 | Formwork | 7d | 2026-06-04 | 2026-06-11 | 227SS+2d |  | Zenith | 8694554 |
| 230 | 36900.37000.37100.37900.38900.44800.215200.896800 | Concreting | 1d | 2026-06-11 | 2026-06-12 | 228FS+1d, 229 |  | Zenith | 8694544 |

| ID | WBS | Task | Duration | Start | Finish | Predecessors | Constraint | Calendar | Unique_Task_ID |
| --- | --- | --- | --- | --- | --- | --- | --- | --- | --- |
| 231 | 36900.37000.37100.37900.38900.44800.215300 | **Terrace floor slab** | 18d | 2026-06-12 | 2026-06-30 |  | start no earlier than 2026-06-12 | Zenith | 8654624 |
| 232 | 36900.37000.37100.37900.38900.44800.215300.896900 | Reinforcement | 14d | 2026-06-12 | 2026-06-26 | 230 |  | Zenith | 8694534 |
| 233 | 36900.37000.37100.37900.38900.44800.215300.897000 | Conduiting | 14d | 2026-06-13 | 2026-06-27 | 232SS+1d |  | Zenith | 8694524 |
| 234 | 36900.37000.37100.37900.38900.44800.215300.897100 | Formwork | 14d | 2026-06-14 | 2026-06-28 | 232SS+2d |  | Zenith | 8694514 |
| 235 | 36900.37000.37100.37900.38900.44800.215300.897200 | Concreting | 2d | 2026-06-28 | 2026-06-30 | 233FS+1d, 234 |  | Zenith | 8694504 |
| 236 | 36900.37000.37100.37900.38900.44800.215700 | **OHT, Mumty & Machine Room, Parapet** | 35d | 2026-06-30 | 2026-08-04 |  | start no earlier than 2026-06-30 | Zenith | 8654614 |
| 237 | 36900.37000.37100.37900.38900.44800.215700.897300 | Reinforcement | 20d | 2026-06-30 | 2026-07-20 | 235 |  | Zenith | 8694494 |
| 238 | 36900.37000.37100.37900.38900.44800.215700.897400 | Flanges fixing & Conduiting | 10d | 2026-07-01 | 2026-07-11 | 237SS+1d |  | Zenith | 8694484 |
| 239 | 36900.37000.37100.37900.38900.44800.215700.897500 | Formwork | 25d | 2026-07-06 | 2026-07-31 | 237SS+6d |  | Zenith | 8694474 |
| 240 | 36900.37000.37100.37900.38900.44800.215700.897600 | Concreting | 4d | 2026-07-31 | 2026-08-04 | 238FS+5d, 239 |  | Zenith | 8694464 |
| 241 | 36900.37000.37100.37900.38900.47600 | **Post Pour Activities** | 323d | 2025-08-08 | 2026-08-11 |  | start no earlier than 2025-08-08 | Zenith | 8648064 |
| 242 | 36900.37000.37100.37900.38900.47600.781300 | 1st Floor | 7d | 2025-08-08 | 2025-08-15 | 80 |  | Zenith | 8726594 |
| 243 | 36900.37000.37100.37900.38900.47600.781400 | 2nd Floor | 7d | 2025-08-17 | 2025-08-24 | 242FS+0.25d, 85FS+0.25d |  | Zenith | 8726584 |
| 244 | 36900.37000.37100.37900.38900.47600.781500 | 3rd Floor | 7d | 2025-08-26 | 2025-09-02 | 243FS+0.25d, 90FS+0.25d |  | Zenith | 8726574 |
| 245 | 36900.37000.37100.37900.38900.47600.781600 | 4th Floor | 7d | 2025-09-04 | 2025-09-11 | 244FS+0.25d, 95FS+0.25d |  | Zenith | 8726564 |
| 246 | 36900.37000.37100.37900.38900.47600.781700 | 5th Floor | 7d | 2025-09-13 | 2025-09-20 | 245FS+0.25d, 100FS+0.25d |  | Zenith | 8726554 |
| 247 | 36900.37000.37100.37900.38900.47600.781800 | 6th Floor | 7d | 2025-09-22 | 2025-09-29 | 246FS+0.25d, 105FS+0.25d |  | Zenith | 8726544 |
| 248 | 36900.37000.37100.37900.38900.47600.781900 | 7th Floor | 7d | 2025-10-01 | 2025-10-08 | 247FS+0.25d, 110FS+0.25d |  | Zenith | 8726534 |
| 249 | 36900.37000.37100.37900.38900.47600.782000 | 8th Floor | 7d | 2025-10-10 | 2025-10-17 | 248FS+0.25d, 115FS+0.25d |  | Zenith | 8726524 |
| 250 | 36900.37000.37100.37900.38900.47600.782100 | 9th Floor | 7d | 2025-10-19 | 2025-10-26 | 249FS+0.25d, 120FS+0.25d |  | Zenith | 8726514 |
| 251 | 36900.37000.37100.37900.38900.47600.782200 | 10th Floor | 7d | 2025-10-28 | 2025-12-19 | 250FS+0.25d, 125FS+0.25d |  | Zenith | 8726504 |
| 252 | 36900.37000.37100.37900.38900.47600.782300 | 11th Floor | 7d | 2025-12-21 | 2025-12-28 | 251FS+0.25d, 130FS+0.25d |  | Zenith | 8726494 |
| 253 | 36900.37000.37100.37900.38900.47600.782400 | 12th Floor | 7d | 2025-12-30 | 2026-01-06 | 252FS+0.25d, 135FS+0.25d |  | Zenith | 8726484 |
| 254 | 36900.37000.37100.37900.38900.47600.782500 | 13th Floor | 7d | 2026-01-08 | 2026-01-15 | 253FS+0.25d, 140FS+0.25d |  | Zenith | 8726474 |
| 255 | 36900.37000.37100.37900.38900.47600.782600 | 14th Floor | 7d | 2026-01-17 | 2026-01-24 | 254FS+0.25d, 145FS+0.25d |  | Zenith | 8726464 |
| 256 | 36900.37000.37100.37900.38900.47600.782700 | 15th Floor | 7d | 2026-01-25 | 2026-02-01 | 255FS+0.25d, 150FS+0.25d |  | Zenith | 8726454 |
| 257 | 36900.37000.37100.37900.38900.47600.782800 | 16th Floor | 7d | 2026-02-02 | 2026-02-09 | 256FS+0.25d, 155FS+0.25d |  | Zenith | 8726444 |
| 258 | 36900.37000.37100.37900.38900.47600.782900 | 17th Floor | 7d | 2026-02-10 | 2026-02-17 | 257FS+0.25d, 160FS+0.25d |  | Zenith | 8726434 |
| 259 | 36900.37000.37100.37900.38900.47600.783000 | 18th Floor | 7d | 2026-02-18 | 2026-02-25 | 258FS+0.25d, 165FS+0.25d |  | Zenith | 8726424 |
| 260 | 36900.37000.37100.37900.38900.47600.783100 | 19th Floor | 7d | 2026-02-26 | 2026-03-05 | 259FS+0.25d, 170FS+0.25d |  | Zenith | 8726414 |
| 261 | 36900.37000.37100.37900.38900.47600.783200 | 20th Floor | 7d | 2026-03-06 | 2026-03-13 | 260FS+0.25d, 175FS+0.25d |  | Zenith | 8726404 |
| 262 | 36900.37000.37100.37900.38900.47600.783300 | 21st Floor | 7d | 2026-03-14 | 2026-03-21 | 261FS+0.25d, 180FS+0.25d |  | Zenith | 8726394 |
| 263 | 36900.37000.37100.37900.38900.47600.783400 | 22nd Floor | 7d | 2026-03-22 | 2026-03-29 | 262FS+0.25d, 185FS+0.25d |  | Zenith | 8726384 |
| 264 | 36900.37000.37100.37900.38900.47600.783500 | 23rd Floor | 7d | 2026-03-30 | 2026-04-06 | 263FS+0.25d, 190FS+0.25d |  | Zenith | 8726374 |
| 265 | 36900.37000.37100.37900.38900.47600.783600 | 24th Floor | 7d | 2026-04-07 | 2026-04-14 | 264FS+0.25d, 195FS+0.25d |  | Zenith | 8726364 |
| 266 | 36900.37000.37100.37900.38900.47600.783700 | 25th Floor | 7d | 2026-04-15 | 2026-04-22 | 265FS+0.25d, 200FS+0.25d |  | Zenith | 8726354 |
| 267 | 36900.37000.37100.37900.38900.47600.783800 | 26th Floor | 7d | 2026-04-23 | 2026-04-30 | 266FS+0.25d, 205FS+0.25d |  | Zenith | 8726344 |
| 268 | 36900.37000.37100.37900.38900.47600.783900 | 27th Floor | 7d | 2026-05-03 | 2026-05-10 | 267FS+0.25d, 210FS+0.25d |  | Zenith | 8726334 |
| 269 | 36900.37000.37100.37900.38900.47600.784000 | 28th Floor | 7d | 2026-05-13 | 2026-05-20 | 268FS+0.25d, 215FS+0.25d |  | Zenith | 8726324 |
| 270 | 36900.37000.37100.37900.38900.47600.784100 | 29th Floor | 7d | 2026-05-23 | 2026-05-30 | 269FS+0.25d, 220FS+0.25d |  | Zenith | 8726314 |
| 271 | 36900.37000.37100.37900.38900.47600.784200 | 30th Floor | 7d | 2026-06-02 | 2026-06-09 | 270FS+0.25d, 225FS+0.25d |  | Zenith | 8726304 |
| 272 | 36900.37000.37100.37900.38900.47600.784300 | 31st Floor | 7d | 2026-06-12 | 2026-06-19 | 271FS+0.25d, 230FS+0.25d |  | Zenith | 8726294 |
| 273 | 36900.37000.37100.37900.38900.47600.784400 | 32nd Flood | 7d | 2026-06-30 | 2026-07-07 | 272FS+0.25d, 235 |  | Zenith | 8726284 |
| 274 | 36900.37000.37100.37900.38900.47600.784500 | 33rd Floor | 7d | 2026-07-07 | 2026-07-14 | 273 |  | Zenith | 8726274 |
| 275 | 36900.37000.37100.37900.38900.47600.784600 | 34th Floor | 7d | 2026-07-14 | 2026-07-21 | 274 |  | Zenith | 8726264 |
| 276 | 36900.37000.37100.37900.38900.47600.784700 | 35th Floor | 7d | 2026-07-21 | 2026-07-28 | 275 |  | Zenith | 8726254 |
| 277 | 36900.37000.37100.37900.38900.47600.784800 | Terrace | 7d | 2026-07-28 | 2026-08-04 | 276 |  | Zenith | 8726244 |
| 278 | 36900.37000.37100.37900.38900.47600.784900 | Mumty & Machine Room | 7d | 2026-08-04 | 2026-08-11 | 277 |  | Zenith | 8726234 |

| ID | WBS | Task | Duration | Start | Finish | Predecessors | Constraint | Calendar | Unique_Task_ID |
| --- | --- | --- | --- | --- | --- | --- | --- | --- | --- |
| 279 | 36900.37000.37100.37900.38900.40700 | **Finishing work** | 532d | 2025-08-15 | 2027-04-29 |  | start no earlier than 2025-08-15 | Zenith | 8647754 |
| 280 | 36900.37000.37100.37900.38900.40700.41700 | **Flat finishing** | 532d | 2025-08-15 | 2027-04-29 |  | start no earlier than 2025-08-15 | Zenith | 8647874 |
| 281 | 36900.37000.37100.37900.38900.40700.41700.82600 | **1st Floor roof** | 79d | 2025-08-15 | 2025-12-17 |  | start no earlier than 2025-08-15 | Zenith | 8648444 |
| 282 | 36900.37000.37100.37900.38900.40700.41700.82600.1284800 | Block Work | 6d | 2025-08-15 | 2025-08-21 | 242 |  | Zenith | 8656994 |
| 283 | 36900.37000.37100.37900.38900.40700.41700.82600.1284900 | Fire sprinkler pipe fixing | 5d | 2025-08-21 | 2025-08-26 | 282 |  | Zenith | 8657004 |
| 284 | 36900.37000.37100.37900.38900.40700.41700.82600.1285000 | Internal Plumbing Works | 5d | 2025-08-21 | 2025-08-26 | 282 |  | Zenith | 8657014 |
| 285 | 36900.37000.37100.37900.38900.40700.41700.82600.1285100 | Waterproofing | 5d | 2025-08-26 | 2025-08-31 | 284 |  | Zenith | 8657024 |
| 286 | 36900.37000.37100.37900.38900.40700.41700.82600.1285200 | Internal Plaster | 9d | 2025-08-27 | 2025-09-05 | 284, 285FF+5d |  | Zenith | 8657034 |
| 287 | 36900.37000.37100.37900.38900.40700.41700.82600.1285300 | IPS flooring work | 7d | 2025-09-05 | 2025-09-12 | 286 |  | Zenith | 8657044 |
| 288 | 36900.37000.37100.37900.38900.40700.41700.82600.1285400 | Toilet dado work | 6d | 2025-09-05 | 2025-09-11 | 285, 286 |  | Zenith | 8657054 |
| 289 | 36900.37000.37100.37900.38900.40700.41700.82600.1285500 | Toilet flooring work | 7d | 2025-09-11 | 2025-09-18 | 288 |  | Zenith | 8657064 |
| 290 | 36900.37000.37100.37900.38900.40700.41700.82600.1285600 | False Cieling panel fixing | 7d | 2025-09-18 | 2025-09-25 | 289 |  | Zenith | 8657074 |
| 291 | 36900.37000.37100.37900.38900.40700.41700.82600.1285700 | Living dinning flooring | 7d | 2025-09-18 | 2025-09-25 | 289 |  | Zenith | 8657084 |
| 292 | 36900.37000.37100.37900.38900.40700.41700.82600.1285800 | Putty primer coat | 8d | 2025-09-25 | 2025-10-03 | 291 |  | Zenith | 8657094 |
| 293 | 36900.37000.37100.37900.38900.40700.41700.82600.1285900 | Aluminium door-window fixing | 12d | 2025-09-25 | 2025-10-07 | 287, 291 |  | Zenith | 8657104 |
| 294 | 36900.37000.37100.37900.38900.40700.41700.82600.1286000 | Door shutter fixing (Pre Hung) | 8d | 2025-10-03 | 2025-10-11 | 292 |  | Zenith | 8657114 |
| 295 | 36900.37000.37100.37900.38900.40700.41700.82600.1286100 | Electrical wiring work | 10d | 2025-10-11 | 2025-10-21 | 294 |  | Zenith | 8657124 |
| 296 | 36900.37000.37100.37900.38900.40700.41700.82600.1286200 | Painting 1st coat | 12d | 2025-10-21 | 2025-12-17 | 295 |  | Zenith | 8657134 |
| 297 | 36900.37000.37100.37900.38900.40700.41700.82700 | **2nd floor roof** | 81.75d | 2025-08-24 | 2025-12-29 |  | start no earlier than 2025-08-24 | Zenith | 8648454 |
| 298 | 36900.37000.37100.37900.38900.40700.41700.82700.1286300 | Block Work | 6d | 2025-08-24 | 2025-08-30 | 243, 282 |  | Zenith | 8657144 |
| 299 | 36900.37000.37100.37900.38900.40700.41700.82700.1286400 | Fire sprinkler pipe fixing | 5d | 2025-08-30 | 2025-09-04 | 283, 298 |  | Zenith | 8657154 |
| 300 | 36900.37000.37100.37900.38900.40700.41700.82700.1286500 | Internal Plumbing Works | 5d | 2025-08-30 | 2025-09-04 | 284, 298 |  | Zenith | 8657164 |
| 301 | 36900.37000.37100.37900.38900.40700.41700.82700.1286600 | Waterproofing | 5d | 2025-09-04 | 2025-09-09 | 285, 300 |  | Zenith | 8657174 |
| 302 | 36900.37000.37100.37900.38900.40700.41700.82700.1286700 | Internal Plaster | 9d | 2025-09-05 | 2025-09-14 | 286, 300, 301FF+5d |  | Zenith | 8657184 |
| 303 | 36900.37000.37100.37900.38900.40700.41700.82700.1286800 | IPS flooring work | 7d | 2025-09-14 | 2025-09-21 | 287, 302 |  | Zenith | 8657194 |
| 304 | 36900.37000.37100.37900.38900.40700.41700.82700.1286900 | Toilet dado work | 6d | 2025-09-14 | 2025-09-20 | 288, 301, 302 |  | Zenith | 8657204 |
| 305 | 36900.37000.37100.37900.38900.40700.41700.82700.1287000 | Toilet flooring work | 7d | 2025-09-20 | 2025-09-27 | 289, 304 |  | Zenith | 8657214 |
| 306 | 36900.37000.37100.37900.38900.40700.41700.82700.1287100 | False Cieling panel fixing | 7d | 2025-09-27 | 2025-10-04 | 290, 305 |  | Zenith | 8657224 |
| 307 | 36900.37000.37100.37900.38900.40700.41700.82700.1287200 | Living dinning flooring | 7d | 2025-09-27 | 2025-10-04 | 291, 305 |  | Zenith | 8657234 |
| 308 | 36900.37000.37100.37900.38900.40700.41700.82700.1287300 | Putty primer coat | 8d | 2025-10-04 | 2025-10-12 | 292, 307 |  | Zenith | 8657244 |
| 309 | 36900.37000.37100.37900.38900.40700.41700.82700.1287400 | Aluminium door-window fixing | 12d | 2025-10-07 | 2025-10-19 | 293, 303, 307 |  | Zenith | 8657254 |
| 310 | 36900.37000.37100.37900.38900.40700.41700.82700.1287500 | Door shutter fixing (Pre Hung) | 8d | 2025-10-12 | 2025-10-20 | 294, 308 |  | Zenith | 8657264 |
| 311 | 36900.37000.37100.37900.38900.40700.41700.82700.1287600 | Electrical wiring work | 10d | 2025-10-21 | 2025-10-31 | 295, 310 |  | Zenith | 8657274 |
| 312 | 36900.37000.37100.37900.38900.40700.41700.82700.1287700 | Painting 1st coat | 12d | 2025-12-17 | 2025-12-29 | 296, 311 |  | Zenith | 8657284 |

| ID | WBS | Task | Duration | Start | Finish | Predecessors | Constraint | Calendar | Unique_Task_ID |
| --- | --- | --- | --- | --- | --- | --- | --- | --- | --- |
| 313 | 36900.37000.37100.37900.38900.40700.41700.82800 | **3rd floor roof** | 84.75d | 2025-09-02 | 2026-01-10 |  | start no earlier than 2025-09-02 | Zenith | 8648464 |
| 314 | 36900.37000.37100.37900.38900.40700.41700.82800.1287800 | Block Work | 6d | 2025-09-02 | 2025-09-08 | 244, 298 |  | Zenith | 8657294 |
| 315 | 36900.37000.37100.37900.38900.40700.41700.82800.1287900 | Fire sprinkler pipe fixing | 5d | 2025-09-08 | 2025-09-13 | 299, 314 |  | Zenith | 8657304 |
| 316 | 36900.37000.37100.37900.38900.40700.41700.82800.1288000 | Internal Plumbing Works | 5d | 2025-09-08 | 2025-09-13 | 300, 314 |  | Zenith | 8657314 |
| 317 | 36900.37000.37100.37900.38900.40700.41700.82800.1288100 | Waterproofing | 5d | 2025-09-13 | 2025-09-18 | 301, 316 |  | Zenith | 8657324 |
| 318 | 36900.37000.37100.37900.38900.40700.41700.82800.1288200 | Internal Plaster | 9d | 2025-09-14 | 2025-09-23 | 302, 316, 317FF+5d |  | Zenith | 8657334 |
| 319 | 36900.37000.37100.37900.38900.40700.41700.82800.1288300 | IPS flooring work | 7d | 2025-09-23 | 2025-09-30 | 303, 318 |  | Zenith | 8657344 |
| 320 | 36900.37000.37100.37900.38900.40700.41700.82800.1288400 | Toilet dado work | 6d | 2025-09-23 | 2025-09-29 | 304, 317, 318 |  | Zenith | 8657354 |
| 321 | 36900.37000.37100.37900.38900.40700.41700.82800.1288500 | Toilet flooring work | 7d | 2025-09-29 | 2025-10-06 | 305, 320 |  | Zenith | 8657364 |
| 322 | 36900.37000.37100.37900.38900.40700.41700.82800.1288600 | False Cieling panel fixing | 7d | 2025-10-06 | 2025-10-13 | 306, 321 |  | Zenith | 8657374 |
| 323 | 36900.37000.37100.37900.38900.40700.41700.82800.1288700 | Living dinning flooring | 7d | 2025-10-06 | 2025-10-13 | 307, 321 |  | Zenith | 8657384 |
| 324 | 36900.37000.37100.37900.38900.40700.41700.82800.1288800 | Putty primer coat | 8d | 2025-10-13 | 2025-10-21 | 308, 323 |  | Zenith | 8657394 |
| 325 | 36900.37000.37100.37900.38900.40700.41700.82800.1288900 | Aluminium door-window fixing | 12d | 2025-10-19 | 2025-10-31 | 309, 319, 323 |  | Zenith | 8657404 |
| 326 | 36900.37000.37100.37900.38900.40700.41700.82800.1289000 | Door shutter fixing (Pre Hung) | 8d | 2025-10-21 | 2025-10-29 | 310, 324 |  | Zenith | 8657414 |
| 327 | 36900.37000.37100.37900.38900.40700.41700.82800.1289100 | Electrical wiring work | 10d | 2025-10-31 | 2025-12-25 | 311, 326 |  | Zenith | 8657424 |
| 328 | 36900.37000.37100.37900.38900.40700.41700.82800.1289200 | Painting 1st coat | 12d | 2025-12-29 | 2026-01-10 | 312, 327 |  | Zenith | 8657434 |
| 329 | 36900.37000.37100.37900.38900.40700.41700.82900 | **4th floor roof** | 87.75d | 2025-09-11 | 2026-01-22 |  | start no earlier than 2025-09-11 | Zenith | 8648474 |
| 330 | 36900.37000.37100.37900.38900.40700.41700.82900.1289300 | Block Work | 6d | 2025-09-11 | 2025-09-17 | 245, 314 |  | Zenith | 8657444 |
| 331 | 36900.37000.37100.37900.38900.40700.41700.82900.1289400 | Fire sprinkler pipe fixing | 5d | 2025-09-17 | 2025-09-22 | 315, 330 |  | Zenith | 8657454 |
| 332 | 36900.37000.37100.37900.38900.40700.41700.82900.1289500 | Internal Plumbing Works | 5d | 2025-09-17 | 2025-09-22 | 316, 330 |  | Zenith | 8657464 |
| 333 | 36900.37000.37100.37900.38900.40700.41700.82900.1289600 | Waterproofing | 5d | 2025-09-22 | 2025-09-27 | 317, 332 |  | Zenith | 8657474 |
| 334 | 36900.37000.37100.37900.38900.40700.41700.82900.1289700 | Internal Plaster | 9d | 2025-09-23 | 2025-10-02 | 318, 332, 333FF+5d |  | Zenith | 8657484 |
| 335 | 36900.37000.37100.37900.38900.40700.41700.82900.1289800 | IPS flooring work | 7d | 2025-10-02 | 2025-10-09 | 319, 334 |  | Zenith | 8657494 |
| 336 | 36900.37000.37100.37900.38900.40700.41700.82900.1289900 | Toilet dado work | 6d | 2025-10-02 | 2025-10-08 | 320, 333, 334 |  | Zenith | 8657504 |
| 337 | 36900.37000.37100.37900.38900.40700.41700.82900.1290000 | Toilet flooring work | 7d | 2025-10-08 | 2025-10-15 | 321, 336 |  | Zenith | 8657514 |
| 338 | 36900.37000.37100.37900.38900.40700.41700.82900.1290100 | False Cieling panel fixing | 7d | 2025-10-15 | 2025-10-22 | 322, 337 |  | Zenith | 8657524 |
| 339 | 36900.37000.37100.37900.38900.40700.41700.82900.1290200 | Living dinning flooring | 7d | 2025-10-15 | 2025-10-22 | 323, 337 |  | Zenith | 8657534 |
| 340 | 36900.37000.37100.37900.38900.40700.41700.82900.1290300 | Putty primer coat | 8d | 2025-10-22 | 2025-10-30 | 324, 339 |  | Zenith | 8657544 |
| 341 | 36900.37000.37100.37900.38900.40700.41700.82900.1290400 | Aluminium door-window fixing | 12d | 2025-10-31 | 2025-12-27 | 325, 335, 339 |  | Zenith | 8657554 |
| 342 | 36900.37000.37100.37900.38900.40700.41700.82900.1290500 | Door shutter fixing (Pre Hung) | 8d | 2025-10-30 | 2025-12-22 | 326, 340 |  | Zenith | 8657564 |
| 343 | 36900.37000.37100.37900.38900.40700.41700.82900.1290600 | Electrical wiring work | 10d | 2025-12-25 | 2026-01-04 | 327, 342 |  | Zenith | 8657574 |
| 344 | 36900.37000.37100.37900.38900.40700.41700.82900.1290700 | Painting 1st coat | 12d | 2026-01-10 | 2026-01-22 | 328, 343 |  | Zenith | 8657584 |

| ID | WBS | Task | Duration | Start | Finish | Predecessors | Constraint | Calendar | Unique_Task_ID |
| --- | --- | --- | --- | --- | --- | --- | --- | --- | --- |
| 345 | 36900.37000.37100.37900.38900.40700.41700.83000 | **5th floor roof** | 90.75d | 2025-09-20 | 2026-02-03 |  | start no earlier than 2025-09-20 | Zenith | 8648484 |
| 346 | 36900.37000.37100.37900.38900.40700.41700.83000.1290800 | Block Work | 6d | 2025-09-20 | 2025-09-26 | 246, 330 |  | Zenith | 8657594 |
| 347 | 36900.37000.37100.37900.38900.40700.41700.83000.1290900 | Fire sprinkler pipe fixing | 5d | 2025-09-26 | 2025-10-01 | 331, 346 |  | Zenith | 8657604 |
| 348 | 36900.37000.37100.37900.38900.40700.41700.83000.1291000 | Internal Plumbing Works | 5d | 2025-09-26 | 2025-10-01 | 332, 346 |  | Zenith | 8657614 |
| 349 | 36900.37000.37100.37900.38900.40700.41700.83000.1291100 | Waterproofing | 5d | 2025-10-01 | 2025-10-06 | 333, 348 |  | Zenith | 8657624 |
| 350 | 36900.37000.37100.37900.38900.40700.41700.83000.1291200 | Internal Plaster | 9d | 2025-10-02 | 2025-10-11 | 334, 348, 349FF+5d |  | Zenith | 8657634 |
| 351 | 36900.37000.37100.37900.38900.40700.41700.83000.1291300 | IPS flooring work | 7d | 2025-10-11 | 2025-10-18 | 335, 350 |  | Zenith | 8657644 |
| 352 | 36900.37000.37100.37900.38900.40700.41700.83000.1291400 | Toilet dado work | 6d | 2025-10-11 | 2025-10-17 | 336, 349, 350 |  | Zenith | 8657654 |
| 353 | 36900.37000.37100.37900.38900.40700.41700.83000.1291500 | Toilet flooring work | 7d | 2025-10-17 | 2025-10-24 | 337, 352 |  | Zenith | 8657664 |
| 354 | 36900.37000.37100.37900.38900.40700.41700.83000.1291600 | False Cieling panel fixing | 7d | 2025-10-24 | 2025-10-31 | 338, 353 |  | Zenith | 8657674 |
| 355 | 36900.37000.37100.37900.38900.40700.41700.83000.1291700 | Living dinning flooring | 7d | 2025-10-24 | 2025-10-31 | 339, 353 |  | Zenith | 8657684 |
| 356 | 36900.37000.37100.37900.38900.40700.41700.83000.1291800 | Putty primer coat | 8d | 2025-10-31 | 2025-12-23 | 340, 355 |  | Zenith | 8657694 |
| 357 | 36900.37000.37100.37900.38900.40700.41700.83000.1291900 | Aluminium door-window fixing | 12d | 2025-12-27 | 2026-01-08 | 341, 351, 355 |  | Zenith | 8657704 |
| 358 | 36900.37000.37100.37900.38900.40700.41700.83000.1292000 | Door shutter fixing (Pre Hung) | 8d | 2025-12-23 | 2025-12-31 | 342, 356 |  | Zenith | 8657714 |
| 359 | 36900.37000.37100.37900.38900.40700.41700.83000.1292100 | Electrical wiring work | 10d | 2026-01-04 | 2026-01-14 | 343, 358 |  | Zenith | 8657724 |
| 360 | 36900.37000.37100.37900.38900.40700.41700.83000.1292200 | Painting 1st coat | 12d | 2026-01-22 | 2026-02-03 | 344, 359 |  | Zenith | 8657734 |
| 361 | 36900.37000.37100.37900.38900.40700.41700.83100 | **6th floor roof** | 93.75d | 2025-09-29 | 2026-02-15 |  | start no earlier than 2025-09-29 | Zenith | 8648494 |
| 362 | 36900.37000.37100.37900.38900.40700.41700.83100.1292300 | Block Work | 6d | 2025-09-29 | 2025-10-05 | 247, 346 |  | Zenith | 8657744 |
| 363 | 36900.37000.37100.37900.38900.40700.41700.83100.1292400 | Fire sprinkler pipe fixing | 5d | 2025-10-05 | 2025-10-10 | 347, 362 |  | Zenith | 8657754 |
| 364 | 36900.37000.37100.37900.38900.40700.41700.83100.1292500 | Internal Plumbing Works | 5d | 2025-10-05 | 2025-10-10 | 348, 362 |  | Zenith | 8657764 |
| 365 | 36900.37000.37100.37900.38900.40700.41700.83100.1292600 | Waterproofing | 5d | 2025-10-10 | 2025-10-15 | 349, 364 |  | Zenith | 8657774 |
| 366 | 36900.37000.37100.37900.38900.40700.41700.83100.1292700 | Internal Plaster | 9d | 2025-10-11 | 2025-10-20 | 350, 364, 365FF+5d |  | Zenith | 8657784 |
| 367 | 36900.37000.37100.37900.38900.40700.41700.83100.1292800 | IPS flooring work | 7d | 2025-10-20 | 2025-10-27 | 351, 366 |  | Zenith | 8657794 |
| 368 | 36900.37000.37100.37900.38900.40700.41700.83100.1292900 | Toilet dado work | 6d | 2025-10-20 | 2025-10-26 | 352, 365, 366 |  | Zenith | 8657804 |
| 369 | 36900.37000.37100.37900.38900.40700.41700.83100.1293000 | Toilet flooring work | 7d | 2025-10-26 | 2025-12-17 | 353, 368 |  | Zenith | 8657814 |
| 370 | 36900.37000.37100.37900.38900.40700.41700.83100.1293100 | False Cieling panel fixing | 7d | 2025-12-17 | 2025-12-24 | 354, 369 |  | Zenith | 8657824 |
| 371 | 36900.37000.37100.37900.38900.40700.41700.83100.1293200 | Living dinning flooring | 7d | 2025-12-17 | 2025-12-24 | 355, 369 |  | Zenith | 8657834 |
| 372 | 36900.37000.37100.37900.38900.40700.41700.83100.1293300 | Putty primer coat | 8d | 2025-12-24 | 2026-01-01 | 356, 371 |  | Zenith | 8657844 |
| 373 | 36900.37000.37100.37900.38900.40700.41700.83100.1293400 | Aluminium door-window fixing | 12d | 2026-01-08 | 2026-01-20 | 357, 367, 371 |  | Zenith | 8657854 |
| 374 | 36900.37000.37100.37900.38900.40700.41700.83100.1293500 | Door shutter fixing (Pre Hung) | 8d | 2026-01-01 | 2026-01-09 | 358, 372 |  | Zenith | 8657864 |
| 375 | 36900.37000.37100.37900.38900.40700.41700.83100.1293600 | Electrical wiring work | 10d | 2026-01-14 | 2026-01-24 | 359, 374 |  | Zenith | 8657874 |
| 376 | 36900.37000.37100.37900.38900.40700.41700.83100.1293700 | Painting 1st coat | 12d | 2026-02-03 | 2026-02-15 | 360, 375 |  | Zenith | 8657884 |

| ID | WBS | Task | Duration | Start | Finish | Predecessors | Constraint | Calendar | Unique_Task_ID |
| --- | --- | --- | --- | --- | --- | --- | --- | --- | --- |
| 377 | 36900.37000.37100.37900.38900.40700.41700.83200 | **7th floor roof** | 96.75d | 2025-10-08 | 2026-02-27 |  | start no earlier than 2025-10-08 | Zenith | 8648504 |
| 378 | 36900.37000.37100.37900.38900.40700.41700.83200.1293800 | Block Work | 6d | 2025-10-08 | 2025-10-14 | 248, 362 |  | Zenith | 8657894 |
| 379 | 36900.37000.37100.37900.38900.40700.41700.83200.1293900 | Fire sprinkler pipe fixing | 5d | 2025-10-14 | 2025-10-19 | 363, 378 |  | Zenith | 8657904 |
| 380 | 36900.37000.37100.37900.38900.40700.41700.83200.1294000 | Internal Plumbing Works | 5d | 2025-10-14 | 2025-10-19 | 364, 378 |  | Zenith | 8657914 |
| 381 | 36900.37000.37100.37900.38900.40700.41700.83200.1294100 | Waterproofing | 5d | 2025-10-19 | 2025-10-24 | 365, 380 |  | Zenith | 8657924 |
| 382 | 36900.37000.37100.37900.38900.40700.41700.83200.1294200 | Internal Plaster | 9d | 2025-10-20 | 2025-10-29 | 366, 380, 381FF+5d |  | Zenith | 8657934 |
| 383 | 36900.37000.37100.37900.38900.40700.41700.83200.1294300 | IPS flooring work | 7d | 2025-10-29 | 2025-12-20 | 367, 382 |  | Zenith | 8657944 |
| 384 | 36900.37000.37100.37900.38900.40700.41700.83200.1294400 | Toilet dado work | 6d | 2025-10-29 | 2025-12-19 | 368, 381, 382 |  | Zenith | 8657954 |
| 385 | 36900.37000.37100.37900.38900.40700.41700.83200.1294500 | Toilet flooring work | 7d | 2025-12-19 | 2025-12-26 | 369, 384 |  | Zenith | 8657964 |
| 386 | 36900.37000.37100.37900.38900.40700.41700.83200.1294600 | False Cieling panel fixing | 7d | 2025-12-26 | 2026-01-02 | 370, 385 |  | Zenith | 8657974 |
| 387 | 36900.37000.37100.37900.38900.40700.41700.83200.1294700 | Living dinning flooring | 7d | 2025-12-26 | 2026-01-02 | 371, 385 |  | Zenith | 8657984 |
| 388 | 36900.37000.37100.37900.38900.40700.41700.83200.1294800 | Putty primer coat | 8d | 2026-01-02 | 2026-01-10 | 372, 387 |  | Zenith | 8657994 |
| 389 | 36900.37000.37100.37900.38900.40700.41700.83200.1294900 | Aluminium door-window fixing | 12d | 2026-01-20 | 2026-02-01 | 373, 383, 387 |  | Zenith | 8658004 |
| 390 | 36900.37000.37100.37900.38900.40700.41700.83200.1295000 | Door shutter fixing (Pre Hung) | 8d | 2026-01-10 | 2026-01-18 | 374, 388 |  | Zenith | 8658014 |
| 391 | 36900.37000.37100.37900.38900.40700.41700.83200.1295100 | Electrical wiring work | 10d | 2026-01-24 | 2026-02-03 | 375, 390 |  | Zenith | 8658024 |
| 392 | 36900.37000.37100.37900.38900.40700.41700.83200.1295200 | Painting 1st coat | 12d | 2026-02-15 | 2026-02-27 | 376, 391 |  | Zenith | 8658034 |
| 393 | 36900.37000.37100.37900.38900.40700.41700.83300 | **8th floor roof** | 99.75d | 2025-10-17 | 2026-03-11 |  | start no earlier than 2025-10-17 | Zenith | 8648514 |
| 394 | 36900.37000.37100.37900.38900.40700.41700.83300.1295300 | Block Work | 6d | 2025-10-17 | 2025-10-23 | 249, 378 |  | Zenith | 8658044 |
| 395 | 36900.37000.37100.37900.38900.40700.41700.83300.1295400 | Fire sprinkler pipe fixing | 5d | 2025-10-23 | 2025-10-28 | 379, 394 |  | Zenith | 8658054 |
| 396 | 36900.37000.37100.37900.38900.40700.41700.83300.1295500 | Internal Plumbing Works | 5d | 2025-10-23 | 2025-10-28 | 380, 394 |  | Zenith | 8658064 |
| 397 | 36900.37000.37100.37900.38900.40700.41700.83300.1295600 | Waterproofing | 5d | 2025-10-28 | 2025-12-17 | 381, 396 |  | Zenith | 8658074 |
| 398 | 36900.37000.37100.37900.38900.40700.41700.83300.1295700 | Internal Plaster | 9d | 2025-10-29 | 2025-12-22 | 382, 396, 397FF+5d |  | Zenith | 8658084 |
| 399 | 36900.37000.37100.37900.38900.40700.41700.83300.1295800 | IPS flooring work | 7d | 2025-12-22 | 2025-12-29 | 383, 398 |  | Zenith | 8658094 |
| 400 | 36900.37000.37100.37900.38900.40700.41700.83300.1295900 | Toilet dado work | 6d | 2025-12-22 | 2025-12-28 | 384, 397, 398 |  | Zenith | 8658104 |
| 401 | 36900.37000.37100.37900.38900.40700.41700.83300.1296000 | Toilet flooring work | 7d | 2025-12-28 | 2026-01-04 | 385, 400 |  | Zenith | 8658114 |
| 402 | 36900.37000.37100.37900.38900.40700.41700.83300.1296100 | False Cieling panel fixing | 7d | 2026-01-04 | 2026-01-11 | 386, 401 |  | Zenith | 8658124 |
| 403 | 36900.37000.37100.37900.38900.40700.41700.83300.1296200 | Living dinning flooring | 7d | 2026-01-04 | 2026-01-11 | 387, 401 |  | Zenith | 8658134 |
| 404 | 36900.37000.37100.37900.38900.40700.41700.83300.1296300 | Putty primer coat | 8d | 2026-01-11 | 2026-01-19 | 388, 403 |  | Zenith | 8658144 |
| 405 | 36900.37000.37100.37900.38900.40700.41700.83300.1296400 | Aluminium door-window fixing | 12d | 2026-02-01 | 2026-02-13 | 389, 399, 403 |  | Zenith | 8658154 |
| 406 | 36900.37000.37100.37900.38900.40700.41700.83300.1296500 | Door shutter fixing (Pre Hung) | 8d | 2026-01-19 | 2026-01-27 | 390, 404 |  | Zenith | 8658164 |
| 407 | 36900.37000.37100.37900.38900.40700.41700.83300.1296600 | Electrical wiring work | 10d | 2026-02-03 | 2026-02-13 | 391, 406 |  | Zenith | 8658174 |
| 408 | 36900.37000.37100.37900.38900.40700.41700.83300.1296700 | Painting 1st coat | 12d | 2026-02-27 | 2026-03-11 | 392, 407 |  | Zenith | 8658184 |

| ID | WBS | Task | Duration | Start | Finish | Predecessors | Constraint | Calendar | Unique_Task_ID |
| --- | --- | --- | --- | --- | --- | --- | --- | --- | --- |
| 409 | 36900.37000.37100.37900.38900.40700.41700.83400 | **9th floor roof** | 102.75d | 2025-10-26 | 2026-03-23 |  | start no earlier than 2025-10-26 | Zenith | 8648524 |
| 410 | 36900.37000.37100.37900.38900.40700.41700.83400.1296800 | Block Work | 6d | 2025-10-26 | 2025-12-16 | 250, 394 |  | Zenith | 8658194 |
| 411 | 36900.37000.37100.37900.38900.40700.41700.83400.1296900 | Fire sprinkler pipe fixing | 5d | 2025-12-16 | 2025-12-21 | 395, 410 |  | Zenith | 8658204 |
| 412 | 36900.37000.37100.37900.38900.40700.41700.83400.1297000 | Internal Plumbing Works | 5d | 2025-12-16 | 2025-12-21 | 396, 410 |  | Zenith | 8658214 |
| 413 | 36900.37000.37100.37900.38900.40700.41700.83400.1297100 | Waterproofing | 5d | 2025-12-21 | 2025-12-26 | 397, 412 |  | Zenith | 8658224 |
| 414 | 36900.37000.37100.37900.38900.40700.41700.83400.1297200 | Internal Plaster | 9d | 2025-12-22 | 2025-12-31 | 398, 412, 413FF+5d |  | Zenith | 8658234 |
| 415 | 36900.37000.37100.37900.38900.40700.41700.83400.1297300 | IPS flooring work | 7d | 2025-12-31 | 2026-01-07 | 399, 414 |  | Zenith | 8658244 |
| 416 | 36900.37000.37100.37900.38900.40700.41700.83400.1297400 | Toilet dado work | 6d | 2025-12-31 | 2026-01-06 | 400, 413, 414 |  | Zenith | 8658254 |
| 417 | 36900.37000.37100.37900.38900.40700.41700.83400.1297500 | Toilet flooring work | 7d | 2026-01-06 | 2026-01-13 | 401, 416 |  | Zenith | 8658264 |
| 418 | 36900.37000.37100.37900.38900.40700.41700.83400.1297600 | False Cieling panel fixing | 7d | 2026-01-13 | 2026-01-20 | 402, 417 |  | Zenith | 8658274 |
| 419 | 36900.37000.37100.37900.38900.40700.41700.83400.1297700 | Living dinning flooring | 7d | 2026-01-13 | 2026-01-20 | 403, 417 |  | Zenith | 8658284 |
| 420 | 36900.37000.37100.37900.38900.40700.41700.83400.1297800 | Putty primer coat | 8d | 2026-01-20 | 2026-01-28 | 404, 419 |  | Zenith | 8658294 |
| 421 | 36900.37000.37100.37900.38900.40700.41700.83400.1297900 | Aluminium door-window fixing | 12d | 2026-02-13 | 2026-02-25 | 405, 415, 419 |  | Zenith | 8658304 |
| 422 | 36900.37000.37100.37900.38900.40700.41700.83400.1298000 | Door shutter fixing (Pre Hung) | 8d | 2026-01-28 | 2026-02-05 | 406, 420 |  | Zenith | 8658314 |
| 423 | 36900.37000.37100.37900.38900.40700.41700.83400.1298100 | Electrical wiring work | 10d | 2026-02-13 | 2026-02-23 | 407, 422 |  | Zenith | 8658324 |
| 424 | 36900.37000.37100.37900.38900.40700.41700.83400.1298200 | Painting 1st coat | 12d | 2026-03-11 | 2026-03-23 | 408, 423 |  | Zenith | 8658334 |
| 425 | 36900.37000.37100.37900.38900.40700.41700.83500 | **10th floor roof** | 105.75d | 2025-12-19 | 2026-04-04 |  | start no earlier than 2025-12-19 | Zenith | 8648534 |
| 426 | 36900.37000.37100.37900.38900.40700.41700.83500.1298300 | Block Work | 6d | 2025-12-19 | 2025-12-25 | 251, 410 |  | Zenith | 8658344 |
| 427 | 36900.37000.37100.37900.38900.40700.41700.83500.1298400 | Fire sprinkler pipe fixing | 5d | 2025-12-25 | 2025-12-30 | 411, 426 |  | Zenith | 8658354 |
| 428 | 36900.37000.37100.37900.38900.40700.41700.83500.1298500 | Internal Plumbing Works | 5d | 2025-12-25 | 2025-12-30 | 412, 426 |  | Zenith | 8658364 |
| 429 | 36900.37000.37100.37900.38900.40700.41700.83500.1298600 | Waterproofing | 5d | 2025-12-30 | 2026-01-04 | 413, 428 |  | Zenith | 8658374 |
| 430 | 36900.37000.37100.37900.38900.40700.41700.83500.1298700 | Internal Plaster | 9d | 2025-12-31 | 2026-01-09 | 414, 428, 429FF+5d |  | Zenith | 8658384 |
| 431 | 36900.37000.37100.37900.38900.40700.41700.83500.1298800 | IPS flooring work | 7d | 2026-01-09 | 2026-01-16 | 415, 430 |  | Zenith | 8658394 |
| 432 | 36900.37000.37100.37900.38900.40700.41700.83500.1298900 | Toilet dado work | 6d | 2026-01-09 | 2026-01-15 | 416, 429, 430 |  | Zenith | 8658404 |
| 433 | 36900.37000.37100.37900.38900.40700.41700.83500.1299000 | Toilet flooring work | 7d | 2026-01-15 | 2026-01-22 | 417, 432 |  | Zenith | 8658414 |
| 434 | 36900.37000.37100.37900.38900.40700.41700.83500.1299100 | False Cieling panel fixing | 7d | 2026-01-22 | 2026-01-29 | 418, 433 |  | Zenith | 8658424 |
| 435 | 36900.37000.37100.37900.38900.40700.41700.83500.1299200 | Living dinning flooring | 7d | 2026-01-22 | 2026-01-29 | 419, 433 |  | Zenith | 8658434 |
| 436 | 36900.37000.37100.37900.38900.40700.41700.83500.1299300 | Putty primer coat | 8d | 2026-01-29 | 2026-02-06 | 420, 435 |  | Zenith | 8658444 |
| 437 | 36900.37000.37100.37900.38900.40700.41700.83500.1299400 | Aluminium door-window fixing | 12d | 2026-02-25 | 2026-03-09 | 421, 431, 435 |  | Zenith | 8658454 |
| 438 | 36900.37000.37100.37900.38900.40700.41700.83500.1299500 | Door shutter fixing (Pre Hung) | 8d | 2026-02-06 | 2026-02-14 | 422, 436 |  | Zenith | 8658464 |
| 439 | 36900.37000.37100.37900.38900.40700.41700.83500.1299600 | Electrical wiring work | 10d | 2026-02-23 | 2026-03-05 | 423, 438 |  | Zenith | 8658474 |
| 440 | 36900.37000.37100.37900.38900.40700.41700.83500.1299700 | Painting 1st coat | 12d | 2026-03-23 | 2026-04-04 | 424, 439 |  | Zenith | 8658484 |

| ID | WBS | Task | Duration | Start | Finish | Predecessors | Constraint | Calendar | Unique_Task_ID |
| --- | --- | --- | --- | --- | --- | --- | --- | --- | --- |
| 441 | 36900.37000.37100.37900.38900.40700.41700.83600 | **11th floor roof** | 108.75d | 2025-12-28 | 2026-04-16 |  | start no earlier than 2025-12-28 | Zenith | 8648544 |
| 442 | 36900.37000.37100.37900.38900.40700.41700.83600.1299800 | Block Work | 6d | 2025-12-28 | 2026-01-03 | 252, 426 |  | Zenith | 8658494 |
| 443 | 36900.37000.37100.37900.38900.40700.41700.83600.1299900 | Fire sprinkler pipe fixing | 5d | 2026-01-03 | 2026-01-08 | 427, 442 |  | Zenith | 8658504 |
| 444 | 36900.37000.37100.37900.38900.40700.41700.83600.1300000 | Internal Plumbing Works | 5d | 2026-01-03 | 2026-01-08 | 428, 442 |  | Zenith | 8658514 |
| 445 | 36900.37000.37100.37900.38900.40700.41700.83600.1300100 | Waterproofing | 5d | 2026-01-08 | 2026-01-13 | 429, 444 |  | Zenith | 8658524 |
| 446 | 36900.37000.37100.37900.38900.40700.41700.83600.1300200 | Internal Plaster | 9d | 2026-01-09 | 2026-01-18 | 430, 444, 445FF+5d |  | Zenith | 8658534 |
| 447 | 36900.37000.37100.37900.38900.40700.41700.83600.1300300 | IPS flooring work | 7d | 2026-01-18 | 2026-01-25 | 431, 446 |  | Zenith | 8658544 |
| 448 | 36900.37000.37100.37900.38900.40700.41700.83600.1300400 | Toilet dado work | 6d | 2026-01-18 | 2026-01-24 | 432, 445, 446 |  | Zenith | 8658554 |
| 449 | 36900.37000.37100.37900.38900.40700.41700.83600.1300500 | Toilet flooring work | 7d | 2026-01-24 | 2026-01-31 | 433, 448 |  | Zenith | 8658564 |
| 450 | 36900.37000.37100.37900.38900.40700.41700.83600.1300600 | False Cieling panel fixing | 7d | 2026-01-31 | 2026-02-07 | 434, 449 |  | Zenith | 8658574 |
| 451 | 36900.37000.37100.37900.38900.40700.41700.83600.1300700 | Living dinning flooring | 7d | 2026-01-31 | 2026-02-07 | 435, 449 |  | Zenith | 8658584 |
| 452 | 36900.37000.37100.37900.38900.40700.41700.83600.1300800 | Putty primer coat | 8d | 2026-02-07 | 2026-02-15 | 436, 451 |  | Zenith | 8658594 |
| 453 | 36900.37000.37100.37900.38900.40700.41700.83600.1300900 | Aluminium door-window fixing | 12d | 2026-03-09 | 2026-03-21 | 437, 447, 451 |  | Zenith | 8658604 |
| 454 | 36900.37000.37100.37900.38900.40700.41700.83600.1301000 | Door shutter fixing (Pre Hung) | 8d | 2026-02-15 | 2026-02-23 | 438, 452 |  | Zenith | 8658614 |
| 455 | 36900.37000.37100.37900.38900.40700.41700.83600.1301100 | Electrical wiring work | 10d | 2026-03-05 | 2026-03-15 | 439, 454 |  | Zenith | 8658624 |
| 456 | 36900.37000.37100.37900.38900.40700.41700.83600.1301200 | Painting 1st coat | 12d | 2026-04-04 | 2026-04-16 | 440, 455 |  | Zenith | 8658634 |
| 457 | 36900.37000.37100.37900.38900.40700.41700.83700 | **12th floor roof** | 111.75d | 2026-01-06 | 2026-04-28 |  | start no earlier than 2026-01-06 | Zenith | 8648554 |
| 458 | 36900.37000.37100.37900.38900.40700.41700.83700.1301300 | Block Work | 6d | 2026-01-06 | 2026-01-12 | 253, 442 |  | Zenith | 8658644 |
| 459 | 36900.37000.37100.37900.38900.40700.41700.83700.1301400 | Fire sprinkler pipe fixing | 5d | 2026-01-12 | 2026-01-17 | 443, 458 |  | Zenith | 8658654 |
| 460 | 36900.37000.37100.37900.38900.40700.41700.83700.1301500 | Internal Plumbing Works | 5d | 2026-01-12 | 2026-01-17 | 444, 458 |  | Zenith | 8658664 |
| 461 | 36900.37000.37100.37900.38900.40700.41700.83700.1301600 | Waterproofing | 5d | 2026-01-17 | 2026-01-22 | 445, 460 |  | Zenith | 8658674 |
| 462 | 36900.37000.37100.37900.38900.40700.41700.83700.1301700 | Internal Plaster | 9d | 2026-01-18 | 2026-01-27 | 446, 460, 461FF+5d |  | Zenith | 8658684 |
| 463 | 36900.37000.37100.37900.38900.40700.41700.83700.1301800 | IPS flooring work | 7d | 2026-01-27 | 2026-02-03 | 447, 462 |  | Zenith | 8658694 |
| 464 | 36900.37000.37100.37900.38900.40700.41700.83700.1301900 | Toilet dado work | 6d | 2026-01-27 | 2026-02-02 | 448, 461, 462 |  | Zenith | 8658704 |
| 465 | 36900.37000.37100.37900.38900.40700.41700.83700.1302000 | Toilet flooring work | 7d | 2026-02-02 | 2026-02-09 | 449, 464 |  | Zenith | 8658714 |
| 466 | 36900.37000.37100.37900.38900.40700.41700.83700.1302100 | False Cieling panel fixing | 7d | 2026-02-09 | 2026-02-16 | 450, 465 |  | Zenith | 8658724 |
| 467 | 36900.37000.37100.37900.38900.40700.41700.83700.1302200 | Living dinning flooring | 7d | 2026-02-09 | 2026-02-16 | 451, 465 |  | Zenith | 8658734 |
| 468 | 36900.37000.37100.37900.38900.40700.41700.83700.1302300 | Putty primer coat | 8d | 2026-02-16 | 2026-02-24 | 452, 467 |  | Zenith | 8658744 |
| 469 | 36900.37000.37100.37900.38900.40700.41700.83700.1302400 | Aluminium door-window fixing | 12d | 2026-03-21 | 2026-04-02 | 453, 463, 467 |  | Zenith | 8658754 |
| 470 | 36900.37000.37100.37900.38900.40700.41700.83700.1302500 | Door shutter fixing (Pre Hung) | 8d | 2026-02-24 | 2026-03-04 | 454, 468 |  | Zenith | 8658764 |
| 471 | 36900.37000.37100.37900.38900.40700.41700.83700.1302600 | Electrical wiring work | 10d | 2026-03-15 | 2026-03-25 | 455, 470 |  | Zenith | 8658774 |
| 472 | 36900.37000.37100.37900.38900.40700.41700.83700.1302700 | Painting 1st coat | 12d | 2026-04-16 | 2026-04-28 | 456, 471 |  | Zenith | 8658784 |

| ID | WBS | Task | Duration | Start | Finish | Predecessors | Constraint | Calendar | Unique_Task_ID |
| --- | --- | --- | --- | --- | --- | --- | --- | --- | --- |
| 473 | 36900.37000.37100.37900.38900.40700.41700.83800 | **13th floor roof** | 114.75d | 2026-01-15 | 2026-05-10 |  | start no earlier than 2026-01-15 | Zenith | 8648564 |
| 474 | 36900.37000.37100.37900.38900.40700.41700.83800.1302800 | Block Work | 6d | 2026-01-15 | 2026-01-21 | 254, 458 |  | Zenith | 8658794 |
| 475 | 36900.37000.37100.37900.38900.40700.41700.83800.1302900 | Fire sprinkler pipe fixing | 5d | 2026-01-21 | 2026-01-26 | 459, 474 |  | Zenith | 8658804 |
| 476 | 36900.37000.37100.37900.38900.40700.41700.83800.1303000 | Internal Plumbing Works | 5d | 2026-01-21 | 2026-01-26 | 460, 474 |  | Zenith | 8658814 |
| 477 | 36900.37000.37100.37900.38900.40700.41700.83800.1303100 | Waterproofing | 5d | 2026-01-26 | 2026-01-31 | 461, 476 |  | Zenith | 8658824 |
| 478 | 36900.37000.37100.37900.38900.40700.41700.83800.1303200 | Internal Plaster | 9d | 2026-01-27 | 2026-02-05 | 462, 476, 477FF+5d |  | Zenith | 8658834 |
| 479 | 36900.37000.37100.37900.38900.40700.41700.83800.1303300 | IPS flooring work | 7d | 2026-02-05 | 2026-02-12 | 463, 478 |  | Zenith | 8658844 |
| 480 | 36900.37000.37100.37900.38900.40700.41700.83800.1303400 | Toilet dado work | 6d | 2026-02-05 | 2026-02-11 | 464, 477, 478 |  | Zenith | 8658854 |
| 481 | 36900.37000.37100.37900.38900.40700.41700.83800.1303500 | Toilet flooring work | 7d | 2026-02-11 | 2026-02-18 | 465, 480 |  | Zenith | 8658864 |
| 482 | 36900.37000.37100.37900.38900.40700.41700.83800.1303600 | False Cieling panel fixing | 7d | 2026-02-18 | 2026-02-25 | 466, 481 |  | Zenith | 8658874 |
| 483 | 36900.37000.37100.37900.38900.40700.41700.83800.1303700 | Living dinning flooring | 7d | 2026-02-18 | 2026-02-25 | 467, 481 |  | Zenith | 8658884 |
| 484 | 36900.37000.37100.37900.38900.40700.41700.83800.1303800 | Putty primer coat | 8d | 2026-02-25 | 2026-03-05 | 468, 483 |  | Zenith | 8658894 |
| 485 | 36900.37000.37100.37900.38900.40700.41700.83800.1303900 | Aluminium door-window fixing | 12d | 2026-04-02 | 2026-04-14 | 469, 479, 483 |  | Zenith | 8658904 |
| 486 | 36900.37000.37100.37900.38900.40700.41700.83800.1304000 | Door shutter fixing (Pre Hung) | 8d | 2026-03-05 | 2026-03-13 | 470, 484 |  | Zenith | 8658914 |
| 487 | 36900.37000.37100.37900.38900.40700.41700.83800.1304100 | Electrical wiring work | 10d | 2026-03-25 | 2026-04-04 | 471, 486 |  | Zenith | 8658924 |
| 488 | 36900.37000.37100.37900.38900.40700.41700.83800.1304200 | Painting 1st coat | 12d | 2026-04-28 | 2026-05-10 | 472, 487 |  | Zenith | 8658934 |
| 489 | 36900.37000.37100.37900.38900.40700.41700.83900 | **14th floor roof** | 117.75d | 2026-01-24 | 2026-05-22 |  | start no earlier than 2026-01-24 | Zenith | 8648574 |
| 490 | 36900.37000.37100.37900.38900.40700.41700.83900.1304300 | Block Work | 6d | 2026-01-24 | 2026-01-30 | 255, 474 |  | Zenith | 8658944 |
| 491 | 36900.37000.37100.37900.38900.40700.41700.83900.1304400 | Fire sprinkler pipe fixing | 5d | 2026-01-30 | 2026-02-04 | 475, 490 |  | Zenith | 8658954 |
| 492 | 36900.37000.37100.37900.38900.40700.41700.83900.1304500 | Internal Plumbing Works | 5d | 2026-01-30 | 2026-02-04 | 476, 490 |  | Zenith | 8658964 |
| 493 | 36900.37000.37100.37900.38900.40700.41700.83900.1304600 | Waterproofing | 5d | 2026-02-04 | 2026-02-09 | 477, 492 |  | Zenith | 8658974 |
| 494 | 36900.37000.37100.37900.38900.40700.41700.83900.1304700 | Internal Plaster | 9d | 2026-02-05 | 2026-02-14 | 478, 492, 493FF+5d |  | Zenith | 8658984 |
| 495 | 36900.37000.37100.37900.38900.40700.41700.83900.1304800 | IPS flooring work | 7d | 2026-02-14 | 2026-02-21 | 479, 494 |  | Zenith | 8658994 |
| 496 | 36900.37000.37100.37900.38900.40700.41700.83900.1304900 | Toilet dado work | 6d | 2026-02-14 | 2026-02-20 | 480, 493, 494 |  | Zenith | 8659004 |
| 497 | 36900.37000.37100.37900.38900.40700.41700.83900.1305000 | Toilet flooring work | 7d | 2026-02-20 | 2026-02-27 | 481, 496 |  | Zenith | 8659014 |
| 498 | 36900.37000.37100.37900.38900.40700.41700.83900.1305100 | False Cieling panel fixing | 7d | 2026-02-27 | 2026-03-06 | 482, 497 |  | Zenith | 8659024 |
| 499 | 36900.37000.37100.37900.38900.40700.41700.83900.1305200 | Living dinning flooring | 7d | 2026-02-27 | 2026-03-06 | 483, 497 |  | Zenith | 8659034 |
| 500 | 36900.37000.37100.37900.38900.40700.41700.83900.1305300 | Putty primer coat | 8d | 2026-03-06 | 2026-03-14 | 484, 499 |  | Zenith | 8659044 |
| 501 | 36900.37000.37100.37900.38900.40700.41700.83900.1305400 | Aluminium door-window fixing | 12d | 2026-04-14 | 2026-04-26 | 485, 495, 499 |  | Zenith | 8659054 |
| 502 | 36900.37000.37100.37900.38900.40700.41700.83900.1305500 | Door shutter fixing (Pre Hung) | 8d | 2026-03-14 | 2026-03-22 | 486, 500 |  | Zenith | 8659064 |
| 503 | 36900.37000.37100.37900.38900.40700.41700.83900.1305600 | Electrical wiring work | 10d | 2026-04-04 | 2026-04-14 | 487, 502 |  | Zenith | 8659074 |
| 504 | 36900.37000.37100.37900.38900.40700.41700.83900.1305700 | Painting 1st coat | 12d | 2026-05-10 | 2026-05-22 | 488, 503 |  | Zenith | 8659084 |

| ID | WBS | Task | Duration | Start | Finish | Predecessors | Constraint | Calendar | Unique_Task_ID |
| --- | --- | --- | --- | --- | --- | --- | --- | --- | --- |
| 505 | 36900.37000.37100.37900.38900.40700.41700.84000 | **15th floor roof** | 121.75d | 2026-02-01 | 2026-06-03 |  | start no earlier than 2026-02-01 | Zenith | 8648584 |
| 506 | 36900.37000.37100.37900.38900.40700.41700.84000.1305800 | Block Work | 6d | 2026-02-01 | 2026-02-07 | 256, 490 |  | Zenith | 8659094 |
| 507 | 36900.37000.37100.37900.38900.40700.41700.84000.1305900 | Fire sprinkler pipe fixing | 5d | 2026-02-07 | 2026-02-12 | 491, 506 |  | Zenith | 8659104 |
| 508 | 36900.37000.37100.37900.38900.40700.41700.84000.1306000 | Internal Plumbing Works | 5d | 2026-02-07 | 2026-02-12 | 492, 506 |  | Zenith | 8659114 |
| 509 | 36900.37000.37100.37900.38900.40700.41700.84000.1306100 | Waterproofing | 5d | 2026-02-12 | 2026-02-17 | 493, 508 |  | Zenith | 8659124 |
| 510 | 36900.37000.37100.37900.38900.40700.41700.84000.1306200 | Internal Plaster | 9d | 2026-02-14 | 2026-02-23 | 494, 508, 509FF+5d |  | Zenith | 8659134 |
| 511 | 36900.37000.37100.37900.38900.40700.41700.84000.1306300 | IPS flooring work | 7d | 2026-02-23 | 2026-03-02 | 495, 510 |  | Zenith | 8659144 |
| 512 | 36900.37000.37100.37900.38900.40700.41700.84000.1306400 | Toilet dado work | 6d | 2026-02-23 | 2026-03-01 | 496, 509, 510 |  | Zenith | 8659154 |
| 513 | 36900.37000.37100.37900.38900.40700.41700.84000.1306500 | Toilet flooring work | 7d | 2026-03-01 | 2026-03-08 | 497, 512 |  | Zenith | 8659164 |
| 514 | 36900.37000.37100.37900.38900.40700.41700.84000.1306600 | False Cieling panel fixing | 7d | 2026-03-08 | 2026-03-15 | 498, 513 |  | Zenith | 8659174 |
| 515 | 36900.37000.37100.37900.38900.40700.41700.84000.1306700 | Living dinning flooring | 7d | 2026-03-08 | 2026-03-15 | 499, 513 |  | Zenith | 8659184 |
| 516 | 36900.37000.37100.37900.38900.40700.41700.84000.1306800 | Aluminium door-window fixing | 8d | 2026-04-26 | 2026-05-04 | 501, 511, 515 |  | Zenith | 8659194 |
| 517 | 36900.37000.37100.37900.38900.40700.41700.84000.1306900 | Putty primer coat | 12d | 2026-03-15 | 2026-03-27 | 500, 515 |  | Zenith | 8659204 |
| 518 | 36900.37000.37100.37900.38900.40700.41700.84000.1307000 | Door shutter fixing (Pre Hung) | 8d | 2026-03-27 | 2026-04-04 | 502, 517 |  | Zenith | 8659214 |
| 519 | 36900.37000.37100.37900.38900.40700.41700.84000.1307100 | Electrical wiring work | 10d | 2026-04-14 | 2026-04-24 | 503, 518 |  | Zenith | 8659224 |
| 520 | 36900.37000.37100.37900.38900.40700.41700.84000.1307200 | Painting 1st coat | 12d | 2026-05-22 | 2026-06-03 | 504, 519 |  | Zenith | 8659234 |
| 521 | 36900.37000.37100.37900.38900.40700.41700.84100 | **16th floor roof** | 125.75d | 2026-02-09 | 2026-06-15 |  | start no earlier than 2026-02-09 | Zenith | 8648594 |
| 522 | 36900.37000.37100.37900.38900.40700.41700.84100.1307300 | Block Work | 6d | 2026-02-09 | 2026-02-15 | 257, 506 |  | Zenith | 8659244 |
| 523 | 36900.37000.37100.37900.38900.40700.41700.84100.1307400 | Fire sprinkler pipe fixing | 5d | 2026-02-15 | 2026-02-20 | 507, 522 |  | Zenith | 8659254 |
| 524 | 36900.37000.37100.37900.38900.40700.41700.84100.1307500 | Internal Plumbing Works | 5d | 2026-02-15 | 2026-02-20 | 508, 522 |  | Zenith | 8659264 |
| 525 | 36900.37000.37100.37900.38900.40700.41700.84100.1307600 | Waterproofing | 5d | 2026-02-20 | 2026-02-25 | 509, 524 |  | Zenith | 8659274 |
| 526 | 36900.37000.37100.37900.38900.40700.41700.84100.1307700 | Internal Plaster | 9d | 2026-02-23 | 2026-03-04 | 510, 524, 525FF+5d |  | Zenith | 8659284 |
| 527 | 36900.37000.37100.37900.38900.40700.41700.84100.1307800 | IPS flooring work | 7d | 2026-03-04 | 2026-03-11 | 511, 526 |  | Zenith | 8659294 |
| 528 | 36900.37000.37100.37900.38900.40700.41700.84100.1307900 | Toilet dado work | 6d | 2026-03-04 | 2026-03-10 | 512, 525, 526 |  | Zenith | 8659304 |
| 529 | 36900.37000.37100.37900.38900.40700.41700.84100.1308000 | Toilet flooring work | 7d | 2026-03-10 | 2026-03-17 | 513, 528 |  | Zenith | 8659314 |
| 530 | 36900.37000.37100.37900.38900.40700.41700.84100.1308100 | False Cieling panel fixing | 7d | 2026-03-17 | 2026-03-24 | 514, 529 |  | Zenith | 8659324 |
| 531 | 36900.37000.37100.37900.38900.40700.41700.84100.1308200 | Living dinning flooring | 7d | 2026-03-17 | 2026-03-24 | 515, 529 |  | Zenith | 8659334 |
| 532 | 36900.37000.37100.37900.38900.40700.41700.84100.1308300 | Putty primer coat | 8d | 2026-03-27 | 2026-04-04 | 517, 531 |  | Zenith | 8659344 |
| 533 | 36900.37000.37100.37900.38900.40700.41700.84100.1308400 | Aluminium door-window fixing | 12d | 2026-05-04 | 2026-05-16 | 516, 527, 531 |  | Zenith | 8659354 |
| 534 | 36900.37000.37100.37900.38900.40700.41700.84100.1308500 | Door shutter fixing (Pre Hung) | 8d | 2026-04-04 | 2026-04-12 | 518, 532 |  | Zenith | 8659364 |
| 535 | 36900.37000.37100.37900.38900.40700.41700.84100.1308600 | Electrical wiring work | 10d | 2026-04-24 | 2026-05-04 | 519, 534 |  | Zenith | 8659374 |
| 536 | 36900.37000.37100.37900.38900.40700.41700.84100.1308700 | Painting 1st coat | 12d | 2026-06-03 | 2026-06-15 | 520, 535 |  | Zenith | 8659384 |

| ID | WBS | Task | Duration | Start | Finish | Predecessors | Constraint | Calendar | Unique_Task_ID |
| --- | --- | --- | --- | --- | --- | --- | --- | --- | --- |
| 537 | 36900.37000.37100.37900.38900.40700.41700.84200 | **17th floor roof** | 129.75d | 2026-02-17 | 2026-06-27 |  | start no earlier than 2026-02-17 | Zenith | 8648604 |
| 538 | 36900.37000.37100.37900.38900.40700.41700.84200.1308800 | Block Work | 6d | 2026-02-17 | 2026-02-23 | 258, 522 |  | Zenith | 8659394 |
| 539 | 36900.37000.37100.37900.38900.40700.41700.84200.1308900 | Fire sprinkler pipe fixing | 5d | 2026-02-23 | 2026-02-28 | 523, 538 |  | Zenith | 8659404 |
| 540 | 36900.37000.37100.37900.38900.40700.41700.84200.1309000 | Internal Plumbing Works | 5d | 2026-02-23 | 2026-02-28 | 524, 538 |  | Zenith | 8659414 |
| 541 | 36900.37000.37100.37900.38900.40700.41700.84200.1309100 | Waterproofing | 5d | 2026-02-28 | 2026-03-05 | 525, 540 |  | Zenith | 8659424 |
| 542 | 36900.37000.37100.37900.38900.40700.41700.84200.1309200 | Internal Plaster | 9d | 2026-03-01 | 2026-03-10 | 526FS-4d, 540FS+0.25d, 541FF+5d |  | Zenith | 8659434 |
| 543 | 36900.37000.37100.37900.38900.40700.41700.84200.1309300 | IPS flooring work | 7d | 2026-03-11 | 2026-03-18 | 527, 542 |  | Zenith | 8659444 |
| 544 | 36900.37000.37100.37900.38900.40700.41700.84200.1309400 | Toilet dado work | 6d | 2026-03-10 | 2026-03-16 | 528, 541, 542 |  | Zenith | 8659454 |
| 545 | 36900.37000.37100.37900.38900.40700.41700.84200.1309500 | Toilet flooring work | 7d | 2026-03-17 | 2026-03-24 | 529, 544 |  | Zenith | 8659464 |
| 546 | 36900.37000.37100.37900.38900.40700.41700.84200.1309600 | False Cieling panel fixing | 7d | 2026-03-24 | 2026-03-31 | 530, 545 |  | Zenith | 8659474 |
| 547 | 36900.37000.37100.37900.38900.40700.41700.84200.1309700 | Living dinning flooring | 7d | 2026-03-24 | 2026-03-31 | 531, 545 |  | Zenith | 8659484 |
| 548 | 36900.37000.37100.37900.38900.40700.41700.84200.1309800 | Putty primer coat | 8d | 2026-04-04 | 2026-04-12 | 532, 547 |  | Zenith | 8659494 |
| 549 | 36900.37000.37100.37900.38900.40700.41700.84200.1309900 | Aluminium door-window fixing | 12d | 2026-05-16 | 2026-05-28 | 533, 543, 547 |  | Zenith | 8659504 |
| 550 | 36900.37000.37100.37900.38900.40700.41700.84200.1310000 | Door shutter fixing (Pre Hung) | 8d | 2026-04-12 | 2026-04-20 | 534, 548 |  | Zenith | 8659514 |
| 551 | 36900.37000.37100.37900.38900.40700.41700.84200.1310100 | Electrical wiring work | 10d | 2026-05-04 | 2026-05-14 | 535, 550 |  | Zenith | 8659524 |
| 552 | 36900.37000.37100.37900.38900.40700.41700.84200.1310200 | Painting 1st coat | 12d | 2026-06-15 | 2026-06-27 | 536, 551 |  | Zenith | 8659534 |
| 553 | 36900.37000.37100.37900.38900.40700.41700.84300 | **18th floor roof** | 133.75d | 2026-02-25 | 2026-07-09 |  | start no earlier than 2026-02-25 | Zenith | 8648614 |
| 554 | 36900.37000.37100.37900.38900.40700.41700.84300.1310300 | Block Work | 6d | 2026-02-25 | 2026-03-03 | 259, 538 |  | Zenith | 8659544 |
| 555 | 36900.37000.37100.37900.38900.40700.41700.84300.1310400 | Fire sprinkler pipe fixing | 5d | 2026-03-03 | 2026-03-08 | 539, 554 |  | Zenith | 8659554 |
| 556 | 36900.37000.37100.37900.38900.40700.41700.84300.1310500 | Internal Plumbing Works | 5d | 2026-03-03 | 2026-03-08 | 540, 554 |  | Zenith | 8659564 |
| 557 | 36900.37000.37100.37900.38900.40700.41700.84300.1310600 | Waterproofing | 5d | 2026-03-08 | 2026-03-13 | 541, 556 |  | Zenith | 8659574 |
| 558 | 36900.37000.37100.37900.38900.40700.41700.84300.1310700 | Internal Plaster | 9d | 2026-03-09 | 2026-03-18 | 542FS-4d, 556FS+0.25d, 557FF+5d |  | Zenith | 8659584 |
| 559 | 36900.37000.37100.37900.38900.40700.41700.84300.1310800 | IPS flooring work | 7d | 2026-03-18 | 2026-03-25 | 543, 558 |  | Zenith | 8659594 |
| 560 | 36900.37000.37100.37900.38900.40700.41700.84300.1310900 | Toilet dado work | 6d | 2026-03-18 | 2026-03-24 | 544, 557, 558 |  | Zenith | 8659604 |
| 561 | 36900.37000.37100.37900.38900.40700.41700.84300.1311000 | Toilet flooring work | 7d | 2026-03-24 | 2026-03-31 | 545, 560 |  | Zenith | 8659614 |
| 562 | 36900.37000.37100.37900.38900.40700.41700.84300.1311100 | False Cieling panel fixing | 7d | 2026-03-31 | 2026-04-07 | 546, 561 |  | Zenith | 8659624 |
| 563 | 36900.37000.37100.37900.38900.40700.41700.84300.1311200 | Living dinning flooring | 7d | 2026-03-31 | 2026-04-07 | 547, 561 |  | Zenith | 8659634 |
| 564 | 36900.37000.37100.37900.38900.40700.41700.84300.1311300 | Putty primer coat | 8d | 2026-04-12 | 2026-04-20 | 548, 563 |  | Zenith | 8659644 |
| 565 | 36900.37000.37100.37900.38900.40700.41700.84300.1311400 | Aluminium door-window fixing | 12d | 2026-05-28 | 2026-06-09 | 549, 559, 563 |  | Zenith | 8659654 |
| 566 | 36900.37000.37100.37900.38900.40700.41700.84300.1311500 | Door shutter fixing (Pre Hung) | 8d | 2026-04-20 | 2026-04-28 | 550, 564 |  | Zenith | 8659664 |
| 567 | 36900.37000.37100.37900.38900.40700.41700.84300.1311600 | Electrical wiring work | 10d | 2026-05-14 | 2026-05-24 | 551, 566 |  | Zenith | 8659674 |
| 568 | 36900.37000.37100.37900.38900.40700.41700.84300.1311700 | Painting 1st coat | 12d | 2026-06-27 | 2026-07-09 | 552, 567 |  | Zenith | 8659684 |

| ID | WBS | Task | Duration | Start | Finish | Predecessors | Constraint | Calendar | Unique_Task_ID |
| --- | --- | --- | --- | --- | --- | --- | --- | --- | --- |
| 569 | 36900.37000.37100.37900.38900.40700.41700.84400 | **19th floor roof** | 137.75d | 2026-03-05 | 2026-07-21 |  | start no earlier than 2026-03-05 | Zenith | 8648624 |
| 570 | 36900.37000.37100.37900.38900.40700.41700.84400.1311800 | Block Work | 6d | 2026-03-05 | 2026-03-11 | 260, 554 |  | Zenith | 8659694 |
| 571 | 36900.37000.37100.37900.38900.40700.41700.84400.1311900 | Fire sprinkler pipe fixing | 4d | 2026-03-11 | 2026-03-15 | 555, 570 |  | Zenith | 8659704 |
| 572 | 36900.37000.37100.37900.38900.40700.41700.84400.1312000 | Internal Plumbing Works | 4d | 2026-03-11 | 2026-03-15 | 556, 570 |  | Zenith | 8659714 |
| 573 | 36900.37000.37100.37900.38900.40700.41700.84400.1312100 | Waterproofing | 4d | 2026-03-15 | 2026-03-19 | 557, 572 |  | Zenith | 8659724 |
| 574 | 36900.37000.37100.37900.38900.40700.41700.84400.1312200 | Internal Plaster | 9d | 2026-03-16 | 2026-03-25 | 558FS-4d, 572FS+0.25d, 573FF+5d |  | Zenith | 8659734 |
| 575 | 36900.37000.37100.37900.38900.40700.41700.84400.1312300 | IPS flooring work | 7d | 2026-03-25 | 2026-04-01 | 559, 574 |  | Zenith | 8659744 |
| 576 | 36900.37000.37100.37900.38900.40700.41700.84400.1312400 | Toilet dado work | 6d | 2026-03-25 | 2026-03-31 | 560, 573, 574 |  | Zenith | 8659754 |
| 577 | 36900.37000.37100.37900.38900.40700.41700.84400.1312500 | Toilet flooring work | 7d | 2026-03-31 | 2026-04-07 | 561, 576 |  | Zenith | 8659764 |
| 578 | 36900.37000.37100.37900.38900.40700.41700.84400.1312600 | False Cieling panel fixing | 7d | 2026-04-07 | 2026-04-14 | 562, 577 |  | Zenith | 8659774 |
| 579 | 36900.37000.37100.37900.38900.40700.41700.84400.1312700 | Living dinning flooring | 7d | 2026-04-07 | 2026-04-14 | 563, 577 |  | Zenith | 8659784 |
| 580 | 36900.37000.37100.37900.38900.40700.41700.84400.1312800 | Putty primer coat | 8d | 2026-04-20 | 2026-04-28 | 564, 579 |  | Zenith | 8659794 |
| 581 | 36900.37000.37100.37900.38900.40700.41700.84400.1312900 | Aluminium door-window fixing | 12d | 2026-06-09 | 2026-06-21 | 565, 575, 579 |  | Zenith | 8659804 |
| 582 | 36900.37000.37100.37900.38900.40700.41700.84400.1313000 | Door shutter fixing (Pre Hung) | 8d | 2026-04-28 | 2026-05-06 | 566, 580 |  | Zenith | 8659814 |
| 583 | 36900.37000.37100.37900.38900.40700.41700.84400.1313100 | Electrical wiring work | 10d | 2026-05-24 | 2026-06-03 | 567, 582 |  | Zenith | 8659824 |
| 584 | 36900.37000.37100.37900.38900.40700.41700.84400.1313200 | Painting 1st coat | 12d | 2026-07-09 | 2026-07-21 | 568, 583 |  | Zenith | 8659834 |
| 585 | 36900.37000.37100.37900.38900.40700.41700.84500 | **20th floor roof** | 141.75d | 2026-03-13 | 2026-08-02 |  | start no earlier than 2026-03-13 | Zenith | 8648634 |
| 586 | 36900.37000.37100.37900.38900.40700.41700.84500.1313300 | Block Work | 6d | 2026-03-13 | 2026-03-19 | 261, 570 |  | Zenith | 8659844 |
| 587 | 36900.37000.37100.37900.38900.40700.41700.84500.1313400 | Fire sprinkler pipe fixing | 4d | 2026-03-19 | 2026-03-23 | 571, 586 |  | Zenith | 8659854 |
| 588 | 36900.37000.37100.37900.38900.40700.41700.84500.1313500 | Internal Plumbing Works | 4d | 2026-03-19 | 2026-03-23 | 572, 586 |  | Zenith | 8659864 |
| 589 | 36900.37000.37100.37900.38900.40700.41700.84500.1313600 | Waterproofing | 4d | 2026-03-23 | 2026-03-27 | 573, 588 |  | Zenith | 8659874 |
| 590 | 36900.37000.37100.37900.38900.40700.41700.84500.1313700 | Internal Plaster | 9d | 2026-03-24 | 2026-04-02 | 574FS-4d, 588FS+0.25d, 589FF+5d |  | Zenith | 8659884 |
| 591 | 36900.37000.37100.37900.38900.40700.41700.84500.1313800 | IPS flooring work | 7d | 2026-04-02 | 2026-04-09 | 575, 590 |  | Zenith | 8659894 |
| 592 | 36900.37000.37100.37900.38900.40700.41700.84500.1313900 | Toilet dado work | 6d | 2026-04-02 | 2026-04-08 | 576, 589, 590 |  | Zenith | 8659904 |
| 593 | 36900.37000.37100.37900.38900.40700.41700.84500.1314000 | Toilet flooring work | 7d | 2026-04-08 | 2026-04-15 | 577, 592 |  | Zenith | 8659914 |
| 594 | 36900.37000.37100.37900.38900.40700.41700.84500.1314100 | False Cieling panel fixing | 7d | 2026-04-15 | 2026-04-22 | 578, 593 |  | Zenith | 8659924 |
| 595 | 36900.37000.37100.37900.38900.40700.41700.84500.1314200 | Living dinning flooring | 7d | 2026-04-15 | 2026-04-22 | 579, 593 |  | Zenith | 8659934 |
| 596 | 36900.37000.37100.37900.38900.40700.41700.84500.1314300 | Putty primer coat | 8d | 2026-04-28 | 2026-05-06 | 580, 595 |  | Zenith | 8659944 |
| 597 | 36900.37000.37100.37900.38900.40700.41700.84500.1314400 | Aluminium door-window fixing | 12d | 2026-06-21 | 2026-07-03 | 581, 591, 595 |  | Zenith | 8659954 |
| 598 | 36900.37000.37100.37900.38900.40700.41700.84500.1314500 | Door shutter fixing (Pre Hung) | 8d | 2026-05-06 | 2026-05-14 | 582, 596 |  | Zenith | 8659964 |
| 599 | 36900.37000.37100.37900.38900.40700.41700.84500.1314600 | Electrical wiring work | 10d | 2026-06-03 | 2026-06-13 | 583, 598 |  | Zenith | 8659974 |
| 600 | 36900.37000.37100.37900.38900.40700.41700.84500.1314700 | Painting 1st coat | 12d | 2026-07-21 | 2026-08-02 | 584, 599 |  | Zenith | 8659984 |

| ID | WBS | Task | Duration | Start | Finish | Predecessors | Constraint | Calendar | Unique_Task_ID |
| --- | --- | --- | --- | --- | --- | --- | --- | --- | --- |
| 601 | 36900.37000.37100.37900.38900.40700.41700.84600 | **21st floor roof** | 145.75d | 2026-03-21 | 2026-08-14 |  | start no earlier than 2026-03-21 | Zenith | 8648644 |
| 602 | 36900.37000.37100.37900.38900.40700.41700.84600.1314800 | Block Work | 6d | 2026-03-21 | 2026-03-27 | 262, 586 |  | Zenith | 8659994 |
| 603 | 36900.37000.37100.37900.38900.40700.41700.84600.1314900 | Fire sprinkler pipe fixing | 4d | 2026-03-27 | 2026-03-31 | 587, 602 |  | Zenith | 8660004 |
| 604 | 36900.37000.37100.37900.38900.40700.41700.84600.1315000 | Internal Plumbing Works | 4d | 2026-03-27 | 2026-03-31 | 588, 602 |  | Zenith | 8660014 |
| 605 | 36900.37000.37100.37900.38900.40700.41700.84600.1315100 | Waterproofing | 4d | 2026-03-31 | 2026-04-04 | 589, 604 |  | Zenith | 8660024 |
| 606 | 36900.37000.37100.37900.38900.40700.41700.84600.1315200 | Internal Plaster | 10d | 2026-03-30 | 2026-04-09 | 590FS-5d, 604FS-3d, 605FF+5d |  | Zenith | 8660034 |
| 607 | 36900.37000.37100.37900.38900.40700.41700.84600.1315300 | IPS flooring work | 7d | 2026-04-09 | 2026-04-16 | 591, 606 |  | Zenith | 8660044 |
| 608 | 36900.37000.37100.37900.38900.40700.41700.84600.1315400 | Toilet dado work | 6d | 2026-04-09 | 2026-04-15 | 592, 605, 606 |  | Zenith | 8660054 |
| 609 | 36900.37000.37100.37900.38900.40700.41700.84600.1315500 | Toilet flooring work | 7d | 2026-04-15 | 2026-04-22 | 593, 608 |  | Zenith | 8660064 |
| 610 | 36900.37000.37100.37900.38900.40700.41700.84600.1315600 | False Cieling panel fixing | 7d | 2026-04-22 | 2026-04-29 | 594, 609 |  | Zenith | 8660074 |
| 611 | 36900.37000.37100.37900.38900.40700.41700.84600.1315700 | Living dinning flooring | 7d | 2026-04-22 | 2026-04-29 | 595, 609 |  | Zenith | 8660084 |
| 612 | 36900.37000.37100.37900.38900.40700.41700.84600.1315800 | Putty primer coat | 8d | 2026-05-06 | 2026-05-14 | 596, 611 |  | Zenith | 8660094 |
| 613 | 36900.37000.37100.37900.38900.40700.41700.84600.1315900 | Aluminium door-window fixing | 12d | 2026-07-03 | 2026-07-15 | 597, 607, 611 |  | Zenith | 8660104 |
| 614 | 36900.37000.37100.37900.38900.40700.41700.84600.1316000 | Door shutter fixing (Pre Hung) | 8d | 2026-05-14 | 2026-05-22 | 598, 612 |  | Zenith | 8660114 |
| 615 | 36900.37000.37100.37900.38900.40700.41700.84600.1316100 | Electrical wiring work | 10d | 2026-06-13 | 2026-06-23 | 599, 614 |  | Zenith | 8660124 |
| 616 | 36900.37000.37100.37900.38900.40700.41700.84600.1316200 | Painting 1st coat | 12d | 2026-08-02 | 2026-08-14 | 600, 615 |  | Zenith | 8660134 |
| 617 | 36900.37000.37100.37900.38900.40700.41700.84700 | **22nd floor roof** | 149.75d | 2026-03-29 | 2026-08-26 |  | start no earlier than 2026-03-29 | Zenith | 8648654 |
| 618 | 36900.37000.37100.37900.38900.40700.41700.84700.1316300 | Block Work | 6d | 2026-03-29 | 2026-04-04 | 263, 602 |  | Zenith | 8660144 |
| 619 | 36900.37000.37100.37900.38900.40700.41700.84700.1316400 | Fire sprinkler pipe fixing | 4d | 2026-04-04 | 2026-04-08 | 603, 618 |  | Zenith | 8660154 |
| 620 | 36900.37000.37100.37900.38900.40700.41700.84700.1316500 | Internal Plumbing Works | 4d | 2026-04-04 | 2026-04-08 | 604, 618 |  | Zenith | 8660164 |
| 621 | 36900.37000.37100.37900.38900.40700.41700.84700.1316600 | Waterproofing | 4d | 2026-04-08 | 2026-04-12 | 605, 620 |  | Zenith | 8660174 |
| 622 | 36900.37000.37100.37900.38900.40700.41700.84700.1316700 | Internal Plaster | 10d | 2026-04-07 | 2026-04-17 | 606FS-4d, 620FS-3d, 621FF+5d |  | Zenith | 8660184 |
| 623 | 36900.37000.37100.37900.38900.40700.41700.84700.1316800 | IPS flooring work | 7d | 2026-04-17 | 2026-04-24 | 607, 622 |  | Zenith | 8660194 |
| 624 | 36900.37000.37100.37900.38900.40700.41700.84700.1316900 | Toilet dado work | 6d | 2026-04-17 | 2026-04-23 | 608, 621, 622 |  | Zenith | 8660204 |
| 625 | 36900.37000.37100.37900.38900.40700.41700.84700.1317000 | Toilet flooring work | 7d | 2026-04-23 | 2026-04-30 | 609, 624 |  | Zenith | 8660214 |
| 626 | 36900.37000.37100.37900.38900.40700.41700.84700.1317100 | False Cieling panel fixing | 7d | 2026-04-30 | 2026-05-07 | 610, 625 |  | Zenith | 8660224 |
| 627 | 36900.37000.37100.37900.38900.40700.41700.84700.1317200 | Living dinning flooring | 7d | 2026-04-30 | 2026-05-07 | 611, 625 |  | Zenith | 8660234 |
| 628 | 36900.37000.37100.37900.38900.40700.41700.84700.1317300 | Putty primer coat | 8d | 2026-05-14 | 2026-05-22 | 612, 627 |  | Zenith | 8660244 |
| 629 | 36900.37000.37100.37900.38900.40700.41700.84700.1317400 | Aluminium door-window fixing | 12d | 2026-07-15 | 2026-07-27 | 613, 623, 627 |  | Zenith | 8660254 |
| 630 | 36900.37000.37100.37900.38900.40700.41700.84700.1317500 | Door shutter fixing (Pre Hung) | 8d | 2026-05-22 | 2026-05-30 | 614, 628 |  | Zenith | 8660264 |
| 631 | 36900.37000.37100.37900.38900.40700.41700.84700.1317600 | Electrical wiring work | 10d | 2026-06-23 | 2026-07-03 | 615, 630 |  | Zenith | 8660274 |
| 632 | 36900.37000.37100.37900.38900.40700.41700.84700.1317700 | Painting 1st coat | 12d | 2026-08-14 | 2026-08-26 | 616, 631 |  | Zenith | 8660284 |

| ID | WBS | Task | Duration | Start | Finish | Predecessors | Constraint | Calendar | Unique_Task_ID |
| --- | --- | --- | --- | --- | --- | --- | --- | --- | --- |
| 633 | 36900.37000.37100.37900.38900.40700.41700.84800 | **23rd floor roof** | 153.75d | 2026-04-06 | 2026-09-07 |  | start no earlier than 2026-04-06 | Zenith | 8648664 |
| 634 | 36900.37000.37100.37900.38900.40700.41700.84800.1317800 | Block Work | 6d | 2026-04-06 | 2026-04-12 | 264, 618 |  | Zenith | 8660294 |
| 635 | 36900.37000.37100.37900.38900.40700.41700.84800.1317900 | Fire sprinkler pipe fixing | 5d | 2026-04-12 | 2026-04-17 | 619, 634 |  | Zenith | 8660304 |
| 636 | 36900.37000.37100.37900.38900.40700.41700.84800.1318000 | Internal Plumbing Works | 5d | 2026-04-12 | 2026-04-17 | 620, 634 |  | Zenith | 8660314 |
| 637 | 36900.37000.37100.37900.38900.40700.41700.84800.1318100 | Waterproofing | 5d | 2026-04-17 | 2026-04-22 | 621, 636 |  | Zenith | 8660324 |
| 638 | 36900.37000.37100.37900.38900.40700.41700.84800.1318200 | Internal Plaster | 9d | 2026-04-18 | 2026-04-27 | 622, 636, 637FF+5d |  | Zenith | 8660334 |
| 639 | 36900.37000.37100.37900.38900.40700.41700.84800.1318300 | IPS flooring work | 7d | 2026-04-27 | 2026-05-04 | 623, 638 |  | Zenith | 8660344 |
| 640 | 36900.37000.37100.37900.38900.40700.41700.84800.1318400 | Toilet dado work | 6d | 2026-04-27 | 2026-05-03 | 624, 637, 638 |  | Zenith | 8660354 |
| 641 | 36900.37000.37100.37900.38900.40700.41700.84800.1318500 | Toilet flooring work | 7d | 2026-05-03 | 2026-05-10 | 625, 640 |  | Zenith | 8660364 |
| 642 | 36900.37000.37100.37900.38900.40700.41700.84800.1318600 | False Cieling panel fixing | 7d | 2026-05-10 | 2026-05-17 | 626, 641 |  | Zenith | 8660374 |
| 643 | 36900.37000.37100.37900.38900.40700.41700.84800.1318700 | Living dinning flooring | 7d | 2026-05-10 | 2026-05-17 | 627, 641 |  | Zenith | 8660384 |
| 644 | 36900.37000.37100.37900.38900.40700.41700.84800.1318800 | Putty primer coat | 8d | 2026-05-22 | 2026-05-30 | 628, 643 |  | Zenith | 8660394 |
| 645 | 36900.37000.37100.37900.38900.40700.41700.84800.1318900 | Aluminium door-window fixing | 12d | 2026-07-27 | 2026-08-08 | 629, 639, 643 |  | Zenith | 8660404 |
| 646 | 36900.37000.37100.37900.38900.40700.41700.84800.1319000 | Door shutter fixing (Pre Hung) | 8d | 2026-05-30 | 2026-06-07 | 630, 644 |  | Zenith | 8660414 |
| 647 | 36900.37000.37100.37900.38900.40700.41700.84800.1319100 | Electrical wiring work | 10d | 2026-07-03 | 2026-07-13 | 631, 646 |  | Zenith | 8660424 |
| 648 | 36900.37000.37100.37900.38900.40700.41700.84800.1319200 | Painting 1st coat | 12d | 2026-08-26 | 2026-09-07 | 632, 647 |  | Zenith | 8660434 |
| 649 | 36900.37000.37100.37900.38900.40700.41700.84900 | **24th floor roof** | 157.75d | 2026-04-14 | 2026-09-19 |  | start no earlier than 2026-04-14 | Zenith | 8648674 |
| 650 | 36900.37000.37100.37900.38900.40700.41700.84900.1319300 | Block Work | 6d | 2026-04-14 | 2026-04-20 | 265, 634 |  | Zenith | 8660444 |
| 651 | 36900.37000.37100.37900.38900.40700.41700.84900.1319400 | Fire sprinkler pipe fixing | 5d | 2026-04-20 | 2026-04-25 | 635, 650 |  | Zenith | 8660454 |
| 652 | 36900.37000.37100.37900.38900.40700.41700.84900.1319500 | Internal Plumbing Works | 5d | 2026-04-20 | 2026-04-25 | 636, 650 |  | Zenith | 8660464 |
| 653 | 36900.37000.37100.37900.38900.40700.41700.84900.1319600 | Waterproofing | 5d | 2026-04-25 | 2026-04-30 | 637, 652 |  | Zenith | 8660474 |
| 654 | 36900.37000.37100.37900.38900.40700.41700.84900.1319700 | Internal Plaster | 9d | 2026-04-27 | 2026-05-06 | 638, 652, 653FF+5d |  | Zenith | 8660484 |
| 655 | 36900.37000.37100.37900.38900.40700.41700.84900.1319800 | IPS flooring work | 7d | 2026-05-06 | 2026-05-13 | 639, 654 |  | Zenith | 8660494 |
| 656 | 36900.37000.37100.37900.38900.40700.41700.84900.1319900 | Toilet dado work | 6d | 2026-05-06 | 2026-05-12 | 640, 653, 654 |  | Zenith | 8660504 |
| 657 | 36900.37000.37100.37900.38900.40700.41700.84900.1320000 | Toilet flooring work | 7d | 2026-05-12 | 2026-05-19 | 641, 656 |  | Zenith | 8660514 |
| 658 | 36900.37000.37100.37900.38900.40700.41700.84900.1320100 | False Cieling panel fixing | 7d | 2026-05-19 | 2026-05-26 | 642, 657 |  | Zenith | 8660524 |
| 659 | 36900.37000.37100.37900.38900.40700.41700.84900.1320200 | Living dinning flooring | 7d | 2026-05-19 | 2026-05-26 | 643, 657 |  | Zenith | 8660534 |
| 660 | 36900.37000.37100.37900.38900.40700.41700.84900.1320300 | Putty primer coat | 8d | 2026-05-30 | 2026-06-07 | 644, 659 |  | Zenith | 8660544 |
| 661 | 36900.37000.37100.37900.38900.40700.41700.84900.1320400 | Aluminium door-window fixing | 12d | 2026-08-08 | 2026-08-20 | 645, 655, 659 |  | Zenith | 8660554 |
| 662 | 36900.37000.37100.37900.38900.40700.41700.84900.1320500 | Door shutter fixing (Pre Hung) | 8d | 2026-06-07 | 2026-06-15 | 646, 660 |  | Zenith | 8660564 |
| 663 | 36900.37000.37100.37900.38900.40700.41700.84900.1320600 | Electrical wiring work | 10d | 2026-07-13 | 2026-07-23 | 647, 662 |  | Zenith | 8660574 |
| 664 | 36900.37000.37100.37900.38900.40700.41700.84900.1320700 | Painting 1st coat | 12d | 2026-09-07 | 2026-09-19 | 648, 663 |  | Zenith | 8660584 |

| ID | WBS | Task | Duration | Start | Finish | Predecessors | Constraint | Calendar | Unique_Task_ID |
| --- | --- | --- | --- | --- | --- | --- | --- | --- | --- |
| 665 | 36900.37000.37100.37900.38900.40700.41700.85000 | **25th floor roof** | 161.75d | 2026-04-22 | 2026-10-01 |  | start no earlier than 2026-04-22 | Zenith | 8648684 |
| 666 | 36900.37000.37100.37900.38900.40700.41700.85000.1320800 | Block Work | 6d | 2026-04-22 | 2026-04-28 | 266, 650 |  | Zenith | 8660594 |
| 667 | 36900.37000.37100.37900.38900.40700.41700.85000.1320900 | Fire sprinkler pipe fixing | 5d | 2026-04-28 | 2026-05-03 | 651, 666 |  | Zenith | 8660604 |
| 668 | 36900.37000.37100.37900.38900.40700.41700.85000.1321000 | Internal Plumbing Works | 5d | 2026-04-28 | 2026-05-03 | 652, 666 |  | Zenith | 8660614 |
| 669 | 36900.37000.37100.37900.38900.40700.41700.85000.1321100 | Waterproofing | 5d | 2026-05-03 | 2026-05-08 | 653, 668 |  | Zenith | 8660624 |
| 670 | 36900.37000.37100.37900.38900.40700.41700.85000.1321200 | Internal Plaster | 9d | 2026-05-06 | 2026-05-15 | 654, 668, 669FF+5d |  | Zenith | 8660634 |
| 671 | 36900.37000.37100.37900.38900.40700.41700.85000.1321300 | IPS flooring work | 7d | 2026-05-15 | 2026-05-22 | 655, 670 |  | Zenith | 8660644 |
| 672 | 36900.37000.37100.37900.38900.40700.41700.85000.1321400 | Toilet dado work | 6d | 2026-05-15 | 2026-05-21 | 656, 669, 670 |  | Zenith | 8660654 |
| 673 | 36900.37000.37100.37900.38900.40700.41700.85000.1321500 | Toilet flooring work | 7d | 2026-05-21 | 2026-05-28 | 657, 672 |  | Zenith | 8660664 |
| 674 | 36900.37000.37100.37900.38900.40700.41700.85000.1321600 | False Cieling panel fixing | 7d | 2026-05-28 | 2026-06-04 | 658, 673 |  | Zenith | 8660674 |
| 675 | 36900.37000.37100.37900.38900.40700.41700.85000.1321700 | Living dinning flooring | 7d | 2026-05-28 | 2026-06-04 | 659, 673 |  | Zenith | 8660684 |
| 676 | 36900.37000.37100.37900.38900.40700.41700.85000.1321800 | Putty primer coat | 8d | 2026-06-07 | 2026-06-15 | 660, 675 |  | Zenith | 8660694 |
| 677 | 36900.37000.37100.37900.38900.40700.41700.85000.1321900 | Aluminium door-window fixing | 12d | 2026-08-20 | 2026-09-01 | 661, 671, 675 |  | Zenith | 8660704 |
| 678 | 36900.37000.37100.37900.38900.40700.41700.85000.1322000 | Door shutter fixing (Pre Hung) | 8d | 2026-06-15 | 2026-06-23 | 662, 676 |  | Zenith | 8660714 |
| 679 | 36900.37000.37100.37900.38900.40700.41700.85000.1322100 | Electrical wiring work | 10d | 2026-07-23 | 2026-08-02 | 663, 678 |  | Zenith | 8660724 |
| 680 | 36900.37000.37100.37900.38900.40700.41700.85000.1322200 | Painting 1st coat | 12d | 2026-09-19 | 2026-10-01 | 664, 679 |  | Zenith | 8660734 |
| 681 | 36900.37000.37100.37900.38900.40700.41700.85100 | **26th floor roof** | 165.75d | 2026-04-30 | 2026-10-13 |  | start no earlier than 2026-04-30 | Zenith | 8648694 |
| 682 | 36900.37000.37100.37900.38900.40700.41700.85100.1322300 | Block Work | 7d | 2026-04-30 | 2026-05-07 | 267, 666 |  | Zenith | 8660744 |
| 683 | 36900.37000.37100.37900.38900.40700.41700.85100.1322400 | Fire sprinkler pipe fixing | 7d | 2026-05-07 | 2026-05-14 | 667, 682 |  | Zenith | 8660754 |
| 684 | 36900.37000.37100.37900.38900.40700.41700.85100.1322500 | Internal Plumbing Works | 7d | 2026-05-07 | 2026-05-14 | 668, 682 |  | Zenith | 8660764 |
| 685 | 36900.37000.37100.37900.38900.40700.41700.85100.1322600 | Waterproofing | 7d | 2026-05-14 | 2026-05-21 | 669, 684 |  | Zenith | 8660774 |
| 686 | 36900.37000.37100.37900.38900.40700.41700.85100.1322700 | Internal Plaster | 7d | 2026-05-19 | 2026-05-26 | 670, 684, 685FF+5d |  | Zenith | 8660784 |
| 687 | 36900.37000.37100.37900.38900.40700.41700.85100.1322800 | IPS flooring work | 7d | 2026-05-26 | 2026-06-02 | 671, 686 |  | Zenith | 8660794 |
| 688 | 36900.37000.37100.37900.38900.40700.41700.85100.1322900 | Toilet dado work | 6d | 2026-05-26 | 2026-06-01 | 672, 685, 686 |  | Zenith | 8660804 |
| 689 | 36900.37000.37100.37900.38900.40700.41700.85100.1323000 | Toilet flooring work | 7d | 2026-06-01 | 2026-06-08 | 673, 688 |  | Zenith | 8660814 |
| 690 | 36900.37000.37100.37900.38900.40700.41700.85100.1323100 | False Cieling panel fixing | 7d | 2026-06-08 | 2026-06-15 | 674, 689 |  | Zenith | 8660824 |
| 691 | 36900.37000.37100.37900.38900.40700.41700.85100.1323200 | Living dinning flooring | 7d | 2026-06-08 | 2026-06-15 | 675, 689 |  | Zenith | 8660834 |
| 692 | 36900.37000.37100.37900.38900.40700.41700.85100.1323300 | Putty primer coat | 8d | 2026-06-15 | 2026-06-23 | 676, 691 |  | Zenith | 8660844 |
| 693 | 36900.37000.37100.37900.38900.40700.41700.85100.1323400 | Aluminium door-window fixing | 12d | 2026-09-01 | 2026-09-13 | 677, 687, 691 |  | Zenith | 8660854 |
| 694 | 36900.37000.37100.37900.38900.40700.41700.85100.1323500 | Door shutter fixing (Pre Hung) | 8d | 2026-06-23 | 2026-07-01 | 678, 692 |  | Zenith | 8660864 |
| 695 | 36900.37000.37100.37900.38900.40700.41700.85100.1323600 | Electrical wiring work | 10d | 2026-08-02 | 2026-08-12 | 679, 694 |  | Zenith | 8660874 |
| 696 | 36900.37000.37100.37900.38900.40700.41700.85100.1323700 | Painting 1st coat | 12d | 2026-10-01 | 2026-10-13 | 680, 695 |  | Zenith | 8660884 |

| ID | WBS | Task | Duration | Start | Finish | Predecessors | Constraint | Calendar | Unique_Task_ID |
| --- | --- | --- | --- | --- | --- | --- | --- | --- | --- |
| 697 | 36900.37000.37100.37900.38900.40700.41700.85200 | **27th floor roof** | 167.75d | 2026-05-10 | 2026-10-25 |  | start no earlier than 2026-05-10 | Zenith | 8648704 |
| 698 | 36900.37000.37100.37900.38900.40700.41700.85200.1323800 | Block Work | 7d | 2026-05-10 | 2026-05-17 | 268, 682 |  | Zenith | 8660894 |
| 699 | 36900.37000.37100.37900.38900.40700.41700.85200.1323900 | Fire sprinkler pipe fixing | 7d | 2026-05-17 | 2026-05-24 | 683, 698 |  | Zenith | 8660904 |
| 700 | 36900.37000.37100.37900.38900.40700.41700.85200.1324000 | Internal Plumbing Works | 7d | 2026-05-17 | 2026-05-24 | 684, 698 |  | Zenith | 8660914 |
| 701 | 36900.37000.37100.37900.38900.40700.41700.85200.1324100 | Waterproofing | 7d | 2026-05-24 | 2026-05-31 | 685, 700 |  | Zenith | 8660924 |
| 702 | 36900.37000.37100.37900.38900.40700.41700.85200.1324200 | Internal Plaster | 7d | 2026-05-29 | 2026-06-05 | 686, 700, 701FF+5d |  | Zenith | 8660934 |
| 703 | 36900.37000.37100.37900.38900.40700.41700.85200.1324300 | IPS flooring work | 7d | 2026-06-05 | 2026-06-12 | 687, 702 |  | Zenith | 8660944 |
| 704 | 36900.37000.37100.37900.38900.40700.41700.85200.1324400 | Toilet dado work | 6d | 2026-06-05 | 2026-06-11 | 688, 701, 702 |  | Zenith | 8660954 |
| 705 | 36900.37000.37100.37900.38900.40700.41700.85200.1324500 | Toilet flooring work | 7d | 2026-06-11 | 2026-06-18 | 689, 704 |  | Zenith | 8660964 |
| 706 | 36900.37000.37100.37900.38900.40700.41700.85200.1324600 | False Cieling panel fixing | 7d | 2026-06-18 | 2026-06-25 | 690, 705 |  | Zenith | 8660974 |
| 707 | 36900.37000.37100.37900.38900.40700.41700.85200.1324700 | Living dinning flooring | 7d | 2026-06-18 | 2026-06-25 | 691, 705 |  | Zenith | 8660984 |
| 708 | 36900.37000.37100.37900.38900.40700.41700.85200.1324800 | Putty primer coat | 8d | 2026-06-25 | 2026-07-03 | 692, 707 |  | Zenith | 8660994 |
| 709 | 36900.37000.37100.37900.38900.40700.41700.85200.1324900 | Aluminium door-window fixing | 12d | 2026-09-13 | 2026-09-25 | 693, 703, 707 |  | Zenith | 8661004 |
| 710 | 36900.37000.37100.37900.38900.40700.41700.85200.1325000 | Door shutter fixing (Pre Hung) | 8d | 2026-07-03 | 2026-07-11 | 694, 708 |  | Zenith | 8661014 |
| 711 | 36900.37000.37100.37900.38900.40700.41700.85200.1325100 | Electrical wiring work | 10d | 2026-08-12 | 2026-08-22 | 695, 710 |  | Zenith | 8661024 |
| 712 | 36900.37000.37100.37900.38900.40700.41700.85200.1325200 | Painting 1st coat | 12d | 2026-10-13 | 2026-10-25 | 696, 711 |  | Zenith | 8661034 |
| 713 | 36900.37000.37100.37900.38900.40700.41700.85300 | **28th floor roof** | 169.75d | 2026-05-20 | 2026-12-21 |  | start no earlier than 2026-05-20 | Zenith | 8648714 |
| 714 | 36900.37000.37100.37900.38900.40700.41700.85300.1325300 | Block Work | 7d | 2026-05-20 | 2026-05-27 | 269, 698 |  | Zenith | 8661044 |
| 715 | 36900.37000.37100.37900.38900.40700.41700.85300.1325400 | Fire sprinkler pipe fixing | 7d | 2026-05-27 | 2026-06-03 | 699, 714 |  | Zenith | 8661054 |
| 716 | 36900.37000.37100.37900.38900.40700.41700.85300.1325500 | Internal Plumbing Works | 7d | 2026-05-27 | 2026-06-03 | 700, 714 |  | Zenith | 8661064 |
| 717 | 36900.37000.37100.37900.38900.40700.41700.85300.1325600 | Waterproofing | 7d | 2026-06-03 | 2026-06-10 | 701, 716 |  | Zenith | 8661074 |
| 718 | 36900.37000.37100.37900.38900.40700.41700.85300.1325700 | Internal Plaster | 7d | 2026-06-08 | 2026-06-15 | 702, 716, 717FF+5d |  | Zenith | 8661084 |
| 719 | 36900.37000.37100.37900.38900.40700.41700.85300.1325800 | IPS flooring work | 7d | 2026-06-15 | 2026-06-22 | 703, 718 |  | Zenith | 8661094 |
| 720 | 36900.37000.37100.37900.38900.40700.41700.85300.1325900 | Toilet dado work | 6d | 2026-06-15 | 2026-06-21 | 704, 717, 718 |  | Zenith | 8661104 |
| 721 | 36900.37000.37100.37900.38900.40700.41700.85300.1326000 | Toilet flooring work | 7d | 2026-06-21 | 2026-06-28 | 705, 720 |  | Zenith | 8661114 |
| 722 | 36900.37000.37100.37900.38900.40700.41700.85300.1326100 | False Cieling panel fixing | 7d | 2026-06-28 | 2026-07-05 | 706, 721 |  | Zenith | 8661124 |
| 723 | 36900.37000.37100.37900.38900.40700.41700.85300.1326200 | Living dinning flooring | 7d | 2026-06-28 | 2026-07-05 | 707, 721 |  | Zenith | 8661134 |
| 724 | 36900.37000.37100.37900.38900.40700.41700.85300.1326300 | Putty primer coat | 8d | 2026-07-05 | 2026-07-13 | 708, 723 |  | Zenith | 8661144 |
| 725 | 36900.37000.37100.37900.38900.40700.41700.85300.1326400 | Aluminium door-window fixing | 12d | 2026-09-25 | 2026-10-07 | 709, 719, 723 |  | Zenith | 8661154 |
| 726 | 36900.37000.37100.37900.38900.40700.41700.85300.1326500 | Door shutter fixing (Pre Hung) | 8d | 2026-07-13 | 2026-07-21 | 710, 724 |  | Zenith | 8661164 |
| 727 | 36900.37000.37100.37900.38900.40700.41700.85300.1326600 | Electrical wiring work | 10d | 2026-08-22 | 2026-09-01 | 711, 726 |  | Zenith | 8661174 |
| 728 | 36900.37000.37100.37900.38900.40700.41700.85300.1326700 | Painting 1st coat | 12d | 2026-10-25 | 2026-12-21 | 712, 727 |  | Zenith | 8661184 |

| ID | WBS | Task | Duration | Start | Finish | Predecessors | Constraint | Calendar | Unique_Task_ID |
| --- | --- | --- | --- | --- | --- | --- | --- | --- | --- |
| 729 | 36900.37000.37100.37900.38900.40700.41700.85400 | **29th floor roof** | 171.75d | 2026-05-30 | 2027-01-02 |  | start no earlier than 2026-05-30 | Zenith | 8648724 |
| 730 | 36900.37000.37100.37900.38900.40700.41700.85400.1326800 | Block Work | 7d | 2026-05-30 | 2026-06-06 | 270, 714 |  | Zenith | 8661194 |
| 731 | 36900.37000.37100.37900.38900.40700.41700.85400.1326900 | Fire sprinkler pipe fixing | 7d | 2026-06-06 | 2026-06-13 | 715, 730 |  | Zenith | 8661204 |
| 732 | 36900.37000.37100.37900.38900.40700.41700.85400.1327000 | Internal Plumbing Works | 7d | 2026-06-06 | 2026-06-13 | 716, 730 |  | Zenith | 8661214 |
| 733 | 36900.37000.37100.37900.38900.40700.41700.85400.1327100 | Waterproofing | 7d | 2026-06-13 | 2026-06-20 | 717, 732 |  | Zenith | 8661224 |
| 734 | 36900.37000.37100.37900.38900.40700.41700.85400.1327200 | Internal Plaster | 7d | 2026-06-18 | 2026-06-25 | 718, 732, 733FF+5d |  | Zenith | 8661234 |
| 735 | 36900.37000.37100.37900.38900.40700.41700.85400.1327300 | IPS flooring work | 7d | 2026-06-25 | 2026-07-02 | 719, 734 |  | Zenith | 8661244 |
| 736 | 36900.37000.37100.37900.38900.40700.41700.85400.1327400 | Toilet dado work | 6d | 2026-06-25 | 2026-07-01 | 720, 733, 734 |  | Zenith | 8661254 |
| 737 | 36900.37000.37100.37900.38900.40700.41700.85400.1327500 | Toilet flooring work | 7d | 2026-07-01 | 2026-07-08 | 721, 736 |  | Zenith | 8661264 |
| 738 | 36900.37000.37100.37900.38900.40700.41700.85400.1327600 | False Cieling panel fixing | 7d | 2026-07-08 | 2026-07-15 | 722, 737 |  | Zenith | 8661274 |
| 739 | 36900.37000.37100.37900.38900.40700.41700.85400.1327700 | Living dinning flooring | 7d | 2026-07-08 | 2026-07-15 | 723, 737 |  | Zenith | 8661284 |
| 740 | 36900.37000.37100.37900.38900.40700.41700.85400.1327800 | Putty primer coat | 8d | 2026-07-15 | 2026-07-23 | 724, 739 |  | Zenith | 8661294 |
| 741 | 36900.37000.37100.37900.38900.40700.41700.85400.1327900 | Aluminium door-window fixing | 12d | 2026-10-07 | 2026-10-19 | 725, 735, 739 |  | Zenith | 8661304 |
| 742 | 36900.37000.37100.37900.38900.40700.41700.85400.1328000 | Door shutter fixing (Pre Hung) | 8d | 2026-07-23 | 2026-07-31 | 726, 740 |  | Zenith | 8661314 |
| 743 | 36900.37000.37100.37900.38900.40700.41700.85400.1328100 | Electrical wiring work | 10d | 2026-09-01 | 2026-09-11 | 727, 742 |  | Zenith | 8661324 |
| 744 | 36900.37000.37100.37900.38900.40700.41700.85400.1328200 | Painting 1st coat | 12d | 2026-12-21 | 2027-01-02 | 728, 743 |  | Zenith | 8661334 |
| 745 | 36900.37000.37100.37900.38900.40700.41700.85500 | **30th floor roof** | 173.75d | 2026-06-09 | 2027-01-14 |  | start no earlier than 2026-06-09 | Zenith | 8648734 |
| 746 | 36900.37000.37100.37900.38900.40700.41700.85500.1328300 | Block Work | 7d | 2026-06-09 | 2026-06-16 | 271, 730 |  | Zenith | 8661344 |
| 747 | 36900.37000.37100.37900.38900.40700.41700.85500.1328400 | Fire sprinkler pipe fixing | 7d | 2026-06-16 | 2026-06-23 | 731, 746 |  | Zenith | 8661354 |
| 748 | 36900.37000.37100.37900.38900.40700.41700.85500.1328500 | Internal Plumbing Works | 7d | 2026-06-16 | 2026-06-23 | 732, 746 |  | Zenith | 8661364 |
| 749 | 36900.37000.37100.37900.38900.40700.41700.85500.1328600 | Waterproofing | 7d | 2026-06-23 | 2026-06-30 | 733, 748 |  | Zenith | 8661374 |
| 750 | 36900.37000.37100.37900.38900.40700.41700.85500.1328700 | Internal Plaster | 7d | 2026-06-28 | 2026-07-05 | 734, 748, 749FF+5d |  | Zenith | 8661384 |
| 751 | 36900.37000.37100.37900.38900.40700.41700.85500.1328800 | IPS flooring work | 7d | 2026-07-05 | 2026-07-12 | 735, 750 |  | Zenith | 8661394 |
| 752 | 36900.37000.37100.37900.38900.40700.41700.85500.1328900 | Toilet dado work | 6d | 2026-07-05 | 2026-07-11 | 736, 749, 750 |  | Zenith | 8661404 |
| 753 | 36900.37000.37100.37900.38900.40700.41700.85500.1329000 | Toilet flooring work | 7d | 2026-07-11 | 2026-07-18 | 737, 752 |  | Zenith | 8661414 |
| 754 | 36900.37000.37100.37900.38900.40700.41700.85500.1329100 | False Cieling panel fixing | 7d | 2026-07-18 | 2026-07-25 | 738, 753 |  | Zenith | 8661424 |
| 755 | 36900.37000.37100.37900.38900.40700.41700.85500.1329200 | Living dinning flooring | 7d | 2026-07-18 | 2026-07-25 | 739, 753 |  | Zenith | 8661434 |
| 756 | 36900.37000.37100.37900.38900.40700.41700.85500.1329300 | Putty primer coat | 8d | 2026-07-25 | 2026-08-02 | 740, 755 |  | Zenith | 8661444 |
| 757 | 36900.37000.37100.37900.38900.40700.41700.85500.1329400 | Aluminium door-window fixing | 12d | 2026-10-19 | 2026-10-31 | 741, 751, 755 |  | Zenith | 8661454 |
| 758 | 36900.37000.37100.37900.38900.40700.41700.85500.1329500 | Door shutter fixing (Pre Hung) | 8d | 2026-08-02 | 2026-08-10 | 742, 756 |  | Zenith | 8661464 |
| 759 | 36900.37000.37100.37900.38900.40700.41700.85500.1329600 | Electrical wiring work | 10d | 2026-09-11 | 2026-09-21 | 743, 758 |  | Zenith | 8661474 |
| 760 | 36900.37000.37100.37900.38900.40700.41700.85500.1329700 | Painting 1st coat | 12d | 2027-01-02 | 2027-01-14 | 744, 759 |  | Zenith | 8661484 |

| ID | WBS | Task | Duration | Start | Finish | Predecessors | Constraint | Calendar | Unique_Task_ID |
| --- | --- | --- | --- | --- | --- | --- | --- | --- | --- |
| 761 | 36900.37000.37100.37900.38900.40700.41700.85600 | **31st floor roof** | 175.75d | 2026-06-19 | 2027-01-26 |  | start no earlier than 2026-06-19 | Zenith | 8648744 |
| 762 | 36900.37000.37100.37900.38900.40700.41700.85600.1329800 | Block Work | 7d | 2026-06-19 | 2026-06-26 | 272, 746 |  | Zenith | 8661494 |
| 763 | 36900.37000.37100.37900.38900.40700.41700.85600.1329900 | Fire sprinkler pipe fixing | 7d | 2026-06-26 | 2026-07-03 | 747, 762 |  | Zenith | 8661504 |
| 764 | 36900.37000.37100.37900.38900.40700.41700.85600.1330000 | Internal Plumbing Works | 7d | 2026-06-26 | 2026-07-03 | 748, 762 |  | Zenith | 8661514 |
| 765 | 36900.37000.37100.37900.38900.40700.41700.85600.1330100 | Waterproofing | 7d | 2026-07-03 | 2026-07-10 | 749, 764 |  | Zenith | 8661524 |
| 766 | 36900.37000.37100.37900.38900.40700.41700.85600.1330200 | Internal Plaster | 7d | 2026-07-08 | 2026-07-15 | 750, 764, 765FF+5d |  | Zenith | 8661534 |
| 767 | 36900.37000.37100.37900.38900.40700.41700.85600.1330300 | IPS flooring work | 7d | 2026-07-15 | 2026-07-22 | 751, 766 |  | Zenith | 8661544 |
| 768 | 36900.37000.37100.37900.38900.40700.41700.85600.1330400 | Toilet dado work | 6d | 2026-07-15 | 2026-07-21 | 752, 765, 766 |  | Zenith | 8661554 |
| 769 | 36900.37000.37100.37900.38900.40700.41700.85600.1330500 | Toilet flooring work | 7d | 2026-07-21 | 2026-07-28 | 753, 768 |  | Zenith | 8661564 |
| 770 | 36900.37000.37100.37900.38900.40700.41700.85600.1330600 | False Cieling panel fixing | 7d | 2026-07-28 | 2026-08-04 | 754, 769 |  | Zenith | 8661574 |
| 771 | 36900.37000.37100.37900.38900.40700.41700.85600.1330700 | Living dinning flooring | 7d | 2026-07-28 | 2026-08-04 | 755, 769 |  | Zenith | 8661584 |
| 772 | 36900.37000.37100.37900.38900.40700.41700.85600.1330800 | Putty primer coat | 8d | 2026-08-04 | 2026-08-12 | 756, 771 |  | Zenith | 8661594 |
| 773 | 36900.37000.37100.37900.38900.40700.41700.85600.1330900 | Aluminium door-window fixing | 12d | 2026-10-31 | 2026-12-27 | 757, 767, 771 |  | Zenith | 8661604 |
| 774 | 36900.37000.37100.37900.38900.40700.41700.85600.1331000 | Door shutter fixing (Pre Hung) | 8d | 2026-08-12 | 2026-08-20 | 758, 772 |  | Zenith | 8661614 |
| 775 | 36900.37000.37100.37900.38900.40700.41700.85600.1331100 | Electrical wiring work | 10d | 2026-09-21 | 2026-10-01 | 759, 774 |  | Zenith | 8661624 |
| 776 | 36900.37000.37100.37900.38900.40700.41700.85600.1331200 | Painting 1st coat | 12d | 2027-01-14 | 2027-01-26 | 760, 775 |  | Zenith | 8661634 |
| 777 | 36900.37000.37100.37900.38900.40700.41700.85700 | **32nd floor roof** | 170d | 2026-07-07 | 2027-02-07 |  | start no earlier than 2026-07-07 | Zenith | 8648754 |
| 778 | 36900.37000.37100.37900.38900.40700.41700.85700.1331300 | Block Work | 7d | 2026-07-07 | 2026-07-14 | 273, 762 |  | Zenith | 8661644 |
| 779 | 36900.37000.37100.37900.38900.40700.41700.85700.1331400 | Fire sprinkler pipe fixing | 7d | 2026-07-14 | 2026-07-21 | 763, 778 |  | Zenith | 8661654 |
| 780 | 36900.37000.37100.37900.38900.40700.41700.85700.1331500 | Internal Plumbing Works | 7d | 2026-07-14 | 2026-07-21 | 764, 778 |  | Zenith | 8661664 |
| 781 | 36900.37000.37100.37900.38900.40700.41700.85700.1331600 | Waterproofing | 7d | 2026-07-21 | 2026-07-28 | 765, 780 |  | Zenith | 8661674 |
| 782 | 36900.37000.37100.37900.38900.40700.41700.85700.1331700 | Internal Plaster | 7d | 2026-07-26 | 2026-08-02 | 766, 780, 781FF+5d |  | Zenith | 8661684 |
| 783 | 36900.37000.37100.37900.38900.40700.41700.85700.1331800 | IPS flooring work | 7d | 2026-08-02 | 2026-08-09 | 767, 782 |  | Zenith | 8661694 |
| 784 | 36900.37000.37100.37900.38900.40700.41700.85700.1331900 | Toilet dado work | 6d | 2026-08-02 | 2026-08-08 | 768, 781, 782 |  | Zenith | 8661704 |
| 785 | 36900.37000.37100.37900.38900.40700.41700.85700.1332000 | Toilet flooring work | 7d | 2026-08-08 | 2026-08-15 | 769, 784 |  | Zenith | 8661714 |
| 786 | 36900.37000.37100.37900.38900.40700.41700.85700.1332100 | False Cieling panel fixing | 7d | 2026-08-15 | 2026-08-22 | 770, 785 |  | Zenith | 8661724 |
| 787 | 36900.37000.37100.37900.38900.40700.41700.85700.1332200 | Living dinning flooring | 7d | 2026-08-15 | 2026-08-22 | 771, 785 |  | Zenith | 8661734 |
| 788 | 36900.37000.37100.37900.38900.40700.41700.85700.1332300 | Putty primer coat | 8d | 2026-08-22 | 2026-08-30 | 772, 787 |  | Zenith | 8661744 |
| 789 | 36900.37000.37100.37900.38900.40700.41700.85700.1332400 | Aluminium door-window fixing | 12d | 2026-12-27 | 2027-01-08 | 773, 783, 787 |  | Zenith | 8661754 |
| 790 | 36900.37000.37100.37900.38900.40700.41700.85700.1332500 | Door shutter fixing (Pre Hung) | 8d | 2026-08-30 | 2026-09-07 | 774, 788 |  | Zenith | 8661764 |
| 791 | 36900.37000.37100.37900.38900.40700.41700.85700.1332600 | Electrical wiring work | 10d | 2026-10-01 | 2026-10-11 | 775, 790 |  | Zenith | 8661774 |
| 792 | 36900.37000.37100.37900.38900.40700.41700.85700.1332700 | Painting 1st coat | 12d | 2027-01-26 | 2027-02-07 | 776, 791 |  | Zenith | 8661784 |

| ID | WBS | Task | Duration | Start | Finish | Predecessors | Constraint | Calendar | Unique_Task_ID |
| --- | --- | --- | --- | --- | --- | --- | --- | --- | --- |
| 793 | 36900.37000.37100.37900.38900.40700.41700.85800 | **33rd floor roof** | 175d | 2026-07-14 | 2027-02-19 |  | start no earlier than 2026-07-14 | Zenith | 8648764 |
| 794 | 36900.37000.37100.37900.38900.40700.41700.85800.1332800 | Block Work | 8d | 2026-07-14 | 2026-07-22 | 274, 778 |  | Zenith | 8661794 |
| 795 | 36900.37000.37100.37900.38900.40700.41700.85800.1332900 | Fire sprinkler pipe fixing | 6d | 2026-07-22 | 2026-07-28 | 779, 794 |  | Zenith | 8661804 |
| 796 | 36900.37000.37100.37900.38900.40700.41700.85800.1333000 | Internal Plumbing Works | 8d | 2026-07-22 | 2026-07-30 | 780, 794 |  | Zenith | 8661814 |
| 797 | 36900.37000.37100.37900.38900.40700.41700.85800.1333100 | Waterproofing | 8d | 2026-07-30 | 2026-08-07 | 781, 796 |  | Zenith | 8661824 |
| 798 | 36900.37000.37100.37900.38900.40700.41700.85800.1333200 | Internal Plaster | 8d | 2026-08-04 | 2026-08-12 | 782, 796, 797FF+5d |  | Zenith | 8661834 |
| 799 | 36900.37000.37100.37900.38900.40700.41700.85800.1333300 | IPS flooring work | 8d | 2026-08-12 | 2026-08-20 | 783, 798 |  | Zenith | 8661844 |
| 800 | 36900.37000.37100.37900.38900.40700.41700.85800.1333400 | Toilet dado work | 6d | 2026-08-12 | 2026-08-18 | 784, 797, 798 |  | Zenith | 8661854 |
| 801 | 36900.37000.37100.37900.38900.40700.41700.85800.1333500 | Toilet flooring work | 7d | 2026-08-18 | 2026-08-25 | 785, 800 |  | Zenith | 8661864 |
| 802 | 36900.37000.37100.37900.38900.40700.41700.85800.1333600 | False Cieling panel fixing | 8d | 2026-08-25 | 2026-09-02 | 786, 801 |  | Zenith | 8661874 |
| 803 | 36900.37000.37100.37900.38900.40700.41700.85800.1333700 | Living dinning flooring | 8d | 2026-08-25 | 2026-09-02 | 787, 801 |  | Zenith | 8661884 |
| 804 | 36900.37000.37100.37900.38900.40700.41700.85800.1333800 | Putty primer coat | 10d | 2026-09-02 | 2026-09-12 | 788, 803 |  | Zenith | 8661894 |
| 805 | 36900.37000.37100.37900.38900.40700.41700.85800.1333900 | Aluminium door-window fixing | 12d | 2027-01-08 | 2027-01-20 | 789, 799, 803 |  | Zenith | 8661904 |
| 806 | 36900.37000.37100.37900.38900.40700.41700.85800.1334000 | Door shutter fixing (Pre Hung) | 8d | 2026-09-12 | 2026-09-20 | 790, 804 |  | Zenith | 8661914 |
| 807 | 36900.37000.37100.37900.38900.40700.41700.85800.1334100 | Electrical wiring work | 10d | 2026-10-11 | 2026-10-21 | 791, 806 |  | Zenith | 8661924 |
| 808 | 36900.37000.37100.37900.38900.40700.41700.85800.1334200 | Painting 1st coat | 12d | 2027-02-07 | 2027-02-19 | 792, 807 |  | Zenith | 8661934 |
| 809 | 36900.37000.37100.37900.38900.40700.41700.85900 | **34th floor roof** | 179d | 2026-07-22 | 2027-03-03 |  | start no earlier than 2026-07-22 | Zenith | 8648774 |
| 810 | 36900.37000.37100.37900.38900.40700.41700.85900.1334300 | Block Work | 8d | 2026-07-22 | 2026-07-30 | 275, 794 |  | Zenith | 8661944 |
| 811 | 36900.37000.37100.37900.38900.40700.41700.85900.1334400 | Fire sprinkler pipe fixing | 6d | 2026-07-30 | 2026-08-05 | 795, 810 |  | Zenith | 8661954 |
| 812 | 36900.37000.37100.37900.38900.40700.41700.85900.1334500 | Internal Plumbing Works | 8d | 2026-07-30 | 2026-08-07 | 796, 810 |  | Zenith | 8661964 |
| 813 | 36900.37000.37100.37900.38900.40700.41700.85900.1334600 | Waterproofing | 8d | 2026-08-07 | 2026-08-15 | 797, 812 |  | Zenith | 8661974 |
| 814 | 36900.37000.37100.37900.38900.40700.41700.85900.1334700 | Internal Plaster | 8d | 2026-08-12 | 2026-08-20 | 798, 812, 813FF+5d |  | Zenith | 8661984 |
| 815 | 36900.37000.37100.37900.38900.40700.41700.85900.1334800 | IPS flooring work | 8d | 2026-08-20 | 2026-08-28 | 799, 814 |  | Zenith | 8661994 |
| 816 | 36900.37000.37100.37900.38900.40700.41700.85900.1334900 | Toilet dado work | 6d | 2026-08-20 | 2026-08-26 | 800, 813, 814 |  | Zenith | 8662004 |
| 817 | 36900.37000.37100.37900.38900.40700.41700.85900.1335000 | Toilet flooring work | 7d | 2026-08-26 | 2026-09-02 | 801, 816 |  | Zenith | 8662014 |
| 818 | 36900.37000.37100.37900.38900.40700.41700.85900.1335100 | False Cieling panel fixing | 8d | 2026-09-02 | 2026-09-10 | 802, 817 |  | Zenith | 8662024 |
| 819 | 36900.37000.37100.37900.38900.40700.41700.85900.1335200 | Living dinning flooring | 8d | 2026-09-02 | 2026-09-10 | 803, 817 |  | Zenith | 8662034 |
| 820 | 36900.37000.37100.37900.38900.40700.41700.85900.1335300 | Putty primer coat | 10d | 2026-09-12 | 2026-09-22 | 804, 819 |  | Zenith | 8662044 |
| 821 | 36900.37000.37100.37900.38900.40700.41700.85900.1335400 | Aluminium door-window fixing | 12d | 2027-01-20 | 2027-02-01 | 805, 815, 819 |  | Zenith | 8662054 |
| 822 | 36900.37000.37100.37900.38900.40700.41700.85900.1335500 | Door shutter fixing (Pre Hung) | 8d | 2026-09-22 | 2026-09-30 | 806, 820 |  | Zenith | 8662064 |
| 823 | 36900.37000.37100.37900.38900.40700.41700.85900.1335600 | Electrical wiring work | 10d | 2026-10-21 | 2026-10-31 | 807, 822 |  | Zenith | 8662074 |
| 824 | 36900.37000.37100.37900.38900.40700.41700.85900.1335700 | Painting 1st coat | 12d | 2027-02-19 | 2027-03-03 | 808, 823 |  | Zenith | 8662084 |

| ID | WBS | Task | Duration | Start | Finish | Predecessors | Constraint | Calendar | Unique_Task_ID |
| --- | --- | --- | --- | --- | --- | --- | --- | --- | --- |
| 825 | 36900.37000.37100.37900.38900.40700.41700.53600 | **35th Floor** | 228d | 2026-07-30 | 2027-04-29 |  | start no earlier than 2026-07-30 | Zenith | 8648264 |
| 826 | 36900.37000.37100.37900.38900.40700.41700.53600.1335800 | Block Work | 8d | 2026-07-30 | 2026-08-07 | 276, 810 |  | Zenith | 8662094 |
| 827 | 36900.37000.37100.37900.38900.40700.41700.53600.1335900 | Fire sprinkler pipe fixing | 6d | 2026-08-07 | 2026-08-13 | 811, 826 |  | Zenith | 8662104 |
| 828 | 36900.37000.37100.37900.38900.40700.41700.53600.1336000 | Internal Plumbing Works | 8d | 2026-08-07 | 2026-08-15 | 812, 826 |  | Zenith | 8662114 |
| 829 | 36900.37000.37100.37900.38900.40700.41700.53600.1336100 | Waterproofing | 8d | 2026-08-15 | 2026-08-23 | 813, 828 |  | Zenith | 8662124 |
| 830 | 36900.37000.37100.37900.38900.40700.41700.53600.1336200 | Internal Plaster | 8d | 2026-08-20 | 2026-08-28 | 814, 828, 829FF+5d |  | Zenith | 8662134 |
| 831 | 36900.37000.37100.37900.38900.40700.41700.53600.1336300 | IPS flooring work | 8d | 2026-08-28 | 2026-09-05 | 815, 829, 830 |  | Zenith | 8662144 |
| 832 | 36900.37000.37100.37900.38900.40700.41700.53600.1336400 | Toilet dado work | 6d | 2026-09-05 | 2026-09-11 | 816, 831 |  | Zenith | 8662154 |
| 833 | 36900.37000.37100.37900.38900.40700.41700.53600.1336500 | Toilet flooring work | 7d | 2026-09-11 | 2026-09-18 | 817, 832 |  | Zenith | 8662164 |
| 834 | 36900.37000.37100.37900.38900.40700.41700.53600.1336600 | False ceiling | 8d | 2026-09-18 | 2026-09-26 | 818, 833 |  | Zenith | 8662174 |
| 835 | 36900.37000.37100.37900.38900.40700.41700.53600.1336700 | Living dinning flooring | 8d | 2026-09-18 | 2026-09-26 | 819, 833 |  | Zenith | 8662184 |
| 836 | 36900.37000.37100.37900.38900.40700.41700.53600.1336800 | Putty Primer coat | 10d | 2026-09-26 | 2026-10-06 | 820, 827, 834, 835 |  | Zenith | 8662194 |
| 837 | 36900.37000.37100.37900.38900.40700.41700.53600.1336900 | Aluminium door-window fixing | 12d | 2027-02-01 | 2027-02-13 | 821, 831, 835 |  | Zenith | 8662204 |
| 838 | 36900.37000.37100.37900.38900.40700.41700.53600.1337000 | Door shutter fixing (Pre Hung) | 8d | 2026-10-06 | 2026-10-14 | 822, 836 |  | Zenith | 8662214 |
| 839 | 36900.37000.37100.37900.38900.40700.41700.53600.1337100 | Electrical wiring work | 10d | 2026-10-31 | 2026-12-25 | 823, 838 |  | Zenith | 8662224 |
| 840 | 36900.37000.37100.37900.38900.40700.41700.53600.1337200 | Painting 1st coat | 12d | 2027-03-03 | 2027-03-15 | 824, 839 |  | Zenith | 8662234 |
| 841 | 36900.37000.37100.37900.38900.40700.41700.53600.1337300 | Misc. Works | 45d | 2027-03-15 | 2027-04-29 | 840 |  | Zenith | 8662244 |
| 842 | 36900.37000.37100.37900.38900.40700.223500 | **Terrace Finishing** | 116d | 2026-08-06 | 2027-01-14 |  | start no earlier than 2026-08-06 | Zenith | 8656664 |
| 843 | 36900.37000.37100.37900.38900.40700.223500.897700 | Terrace waterproofing | 40d | 2026-08-06 | 2026-09-15 | 240FS+2d |  | Zenith | 8694454 |
| 844 | 36900.37000.37100.37900.38900.40700.223500.897800 | Terrace finishing | 75d | 2026-09-16 | 2027-01-14 | 843FS+1d |  | Zenith | 8694444 |
| 845 | 36900.37000.37100.37900.38900.40700.48600 | **Balcony Railing** | 337.75d | 2025-09-26 | 2026-10-14 |  | start no earlier than 2025-09-26 | Zenith | 8648134 |
| 846 | 36900.37000.37100.37900.38900.40700.48600.897900 | 1st Floor | 8d | 2025-09-26 | 2025-10-04 | 307FF |  | Zenith | 8694434 |
| 847 | 36900.37000.37100.37900.38900.40700.48600.898000 | 2nd Floor | 8d | 2025-10-13 | 2025-10-21 | 846, 323 |  | Zenith | 8694424 |
| 848 | 36900.37000.37100.37900.38900.40700.48600.898100 | 3rd Floor | 8d | 2025-10-22 | 2025-10-30 | 847, 339 |  | Zenith | 8694414 |
| 849 | 36900.37000.37100.37900.38900.40700.48600.898200 | 4th Floor | 8d | 2025-10-31 | 2025-12-23 | 848, 355 |  | Zenith | 8694404 |
| 850 | 36900.37000.37100.37900.38900.40700.48600.898300 | 5th Floor | 8d | 2025-12-24 | 2026-01-01 | 849, 371 |  | Zenith | 8694394 |
| 851 | 36900.37000.37100.37900.38900.40700.48600.898400 | 6th Floor | 8d | 2026-01-02 | 2026-01-10 | 850, 387 |  | Zenith | 8694384 |
| 852 | 36900.37000.37100.37900.38900.40700.48600.898500 | 7th Floor | 8d | 2026-01-11 | 2026-01-19 | 851, 403 |  | Zenith | 8694374 |
| 853 | 36900.37000.37100.37900.38900.40700.48600.898600 | 8th Floor | 8d | 2026-01-20 | 2026-01-28 | 852, 419 |  | Zenith | 8694364 |
| 854 | 36900.37000.37100.37900.38900.40700.48600.898700 | 9th Floor | 8d | 2026-01-29 | 2026-02-06 | 853, 435 |  | Zenith | 8694354 |
| 855 | 36900.37000.37100.37900.38900.40700.48600.898800 | 10th Floor | 8d | 2026-02-07 | 2026-02-15 | 854, 451 |  | Zenith | 8694344 |
| 856 | 36900.37000.37100.37900.38900.40700.48600.898900 | 11th Floor | 8d | 2026-02-16 | 2026-02-24 | 855, 467 |  | Zenith | 8694334 |
| 857 | 36900.37000.37100.37900.38900.40700.48600.899000 | 12th Floor | 8d | 2026-02-25 | 2026-03-05 | 856, 483 |  | Zenith | 8694324 |
| 858 | 36900.37000.37100.37900.38900.40700.48600.899100 | 13th Floor | 8d | 2026-03-06 | 2026-03-14 | 857, 499 |  | Zenith | 8694314 |
| 859 | 36900.37000.37100.37900.38900.40700.48600.899200 | 14th Floor | 8d | 2026-03-15 | 2026-03-23 | 858, 515 |  | Zenith | 8694304 |
| 860 | 36900.37000.37100.37900.38900.40700.48600.899300 | 15th Floor | 8d | 2026-03-24 | 2026-04-01 | 859, 531 |  | Zenith | 8694294 |
| 861 | 36900.37000.37100.37900.38900.40700.48600.899400 | 16th Floor | 8d | 2026-04-01 | 2026-04-09 | 860, 547 |  | Zenith | 8694284 |
| 862 | 36900.37000.37100.37900.38900.40700.48600.899500 | 17th Floor | 8d | 2026-04-09 | 2026-04-17 | 861, 563 |  | Zenith | 8694274 |
| 863 | 36900.37000.37100.37900.38900.40700.48600.899600 | 18th Floor | 8d | 2026-04-17 | 2026-04-25 | 862, 579 |  | Zenith | 8694264 |
| 864 | 36900.37000.37100.37900.38900.40700.48600.899700 | 19th Floor | 8d | 2026-04-25 | 2026-05-03 | 863, 595 |  | Zenith | 8694254 |
| 865 | 36900.37000.37100.37900.38900.40700.48600.899800 | 20th Floor | 8d | 2026-05-03 | 2026-05-11 | 864, 611 |  | Zenith | 8694244 |
| 866 | 36900.37000.37100.37900.38900.40700.48600.899900 | 21st Floor | 8d | 2026-05-11 | 2026-05-19 | 865, 627 |  | Zenith | 8694234 |
| 867 | 36900.37000.37100.37900.38900.40700.48600.900000 | 22nd Floor | 8d | 2026-05-19 | 2026-05-27 | 866, 643 |  | Zenith | 8694224 |
| 868 | 36900.37000.37100.37900.38900.40700.48600.900100 | 23rd Floor | 8d | 2026-05-27 | 2026-06-04 | 867, 659 |  | Zenith | 8694214 |
| 869 | 36900.37000.37100.37900.38900.40700.48600.900200 | 24th Floor | 8d | 2026-06-04 | 2026-06-12 | 868, 675 |  | Zenith | 8694204 |
| 870 | 36900.37000.37100.37900.38900.40700.48600.900300 | 25th Floor | 8d | 2026-06-15 | 2026-06-23 | 869, 691 |  | Zenith | 8694194 |
| 871 | 36900.37000.37100.37900.38900.40700.48600.900400 | 26th Floor | 8d | 2026-06-25 | 2026-07-03 | 870, 707 |  | Zenith | 8694184 |
| 872 | 36900.37000.37100.37900.38900.40700.48600.900500 | 27th Floor | 8d | 2026-07-05 | 2026-07-13 | 871, 723 |  | Zenith | 8694174 |
| 873 | 36900.37000.37100.37900.38900.40700.48600.900600 | 28th Floor | 8d | 2026-07-15 | 2026-07-23 | 872, 739 |  | Zenith | 8694164 |
| 874 | 36900.37000.37100.37900.38900.40700.48600.900700 | 29th Floor | 8d | 2026-07-25 | 2026-08-02 | 873, 755 |  | Zenith | 8694154 |
| 875 | 36900.37000.37100.37900.38900.40700.48600.900800 | 30th Floor | 8d | 2026-08-04 | 2026-08-12 | 874, 771 |  | Zenith | 8694144 |
| 876 | 36900.37000.37100.37900.38900.40700.48600.900900 | 31st Floor | 8d | 2026-08-22 | 2026-08-30 | 875, 787 |  | Zenith | 8694134 |
| 877 | 36900.37000.37100.37900.38900.40700.48600.901000 | 32nd Floor | 8d | 2026-09-02 | 2026-09-10 | 876, 803 |  | Zenith | 8694124 |
| 878 | 36900.37000.37100.37900.38900.40700.48600.901100 | 33rd Floor | 8d | 2026-09-10 | 2026-09-18 | 877, 819 |  | Zenith | 8694114 |
| 879 | 36900.37000.37100.37900.38900.40700.48600.901200 | 34th Floor | 8d | 2026-09-26 | 2026-10-04 | 878, 835 |  | Zenith | 8694104 |
| 880 | 36900.37000.37100.37900.38900.40700.48600.901300 | 35th Floor | 10d | 2026-10-04 | 2026-10-14 | 879 |  | Zenith | 8694094 |

| ID | WBS | Task | Duration | Start | Finish | Predecessors | Constraint | Calendar | Unique_Task_ID |
| --- | --- | --- | --- | --- | --- | --- | --- | --- | --- |
| 881 | 36900.37000.37100.37900.38900.40700.117300 | **Common Area Finishing** | 294.75d | 2026-03-15 | 2027-02-18 |  | start no earlier than 2026-03-15 | Zenith | 8651784 |
| 882 | 36900.37000.37100.37900.38900.40700.117300.901400 | Masonary Work | 40d | 2026-03-15 | 2026-04-24 | 515 |  | Zenith | 8694084 |
| 883 | 36900.37000.37100.37900.38900.40700.117300.901500 | Fire sprinkler pipe fixing | 40d | 2026-04-24 | 2026-06-03 | 882 |  | Zenith | 8694074 |
| 884 | 36900.37000.37100.37900.38900.40700.117300.901600 | Corridoor, staircase, shaft Plaster & whitewash | 120d | 2026-04-24 | 2026-08-22 | 882 |  | Zenith | 8694064 |
| 885 | 36900.37000.37100.37900.38900.40700.117300.901700 | Staircase railing fixing | 100d | 2026-04-24 | 2026-08-02 | 882 |  | Zenith | 8694054 |
| 886 | 36900.37000.37100.37900.38900.40700.117300.901800 | Fire staircase flooring | 120d | 2026-05-04 | 2026-09-01 | 885FF+30d |  | Zenith | 8694044 |
| 887 | 36900.37000.37100.37900.38900.40700.117300.901900 | Main staircase flooring | 120d | 2026-05-04 | 2026-09-01 | 885FF+30d |  | Zenith | 8694034 |
| 888 | 36900.37000.37100.37900.38900.40700.117300.902000 | Fire door work | 45d | 2026-09-01 | 2026-10-16 | 886 |  | Zenith | 8694024 |
| 889 | 36900.37000.37100.37900.38900.40700.117300.902100 | Lobby flooring & Corridor | 120d | 2026-06-03 | 2026-10-01 | 887FF+30d |  | Zenith | 8694014 |
| 890 | 36900.37000.37100.37900.38900.40700.117300.902200 | Ceiling & wall putty | 120d | 2026-07-08 | 2026-12-20 | 888FF+15d, 889FF+30d, 836FF+30d |  | Zenith | 8694004 |
| 891 | 36900.37000.37100.37900.38900.40700.117300.902300 | Electrical wiring work | 120d | 2026-07-23 | 2027-01-04 | 890FF+15d |  | Zenith | 8693994 |
| 892 | 36900.37000.37100.37900.38900.40700.117300.902400 | Ceiling & wall painting | 120d | 2026-08-12 | 2027-01-24 | 883FS+20d, 890SS+20d, 891FF+20d |  | Zenith | 8693984 |
| 893 | 36900.37000.37100.37900.38900.40700.117300.902500 | Light fixture supply & installation | 45d | 2027-01-04 | 2027-02-18 | 890, 892FF+25d |  | Zenith | 8693974 |
| 894 | 36900.37000.37100.37900.122300 | **MEP work** | 296.75d | 2026-06-08 | 2027-05-16 |  | start no earlier than 2026-06-08 | Zenith | 8651854 |
| 895 | 36900.37000.37100.37900.122300.126400 | **Electrical work** | 240d | 2026-08-04 | 2027-05-16 |  | start no earlier than 2026-08-04 | Zenith | 8652034 |
| 896 | 36900.37000.37100.37900.122300.126400.785000 | Cable Tray | 90d | 2026-08-04 | 2026-12-17 | 240 |  | Zenith | 8726224 |
| 897 | 36900.37000.37100.37900.122300.126400.785100 | Cable, main & sub main | 60d | 2026-09-18 | 2027-01-01 | 896SS+45d |  | Zenith | 8726214 |
| 898 | 36900.37000.37100.37900.122300.126400.785200 | LT panel & DB | 90d | 2026-12-17 | 2027-03-17 | 896 |  | Zenith | 8726204 |
| 899 | 36900.37000.37100.37900.122300.126400.785300 | Rising main | 90d | 2027-01-01 | 2027-04-01 | 896FS+15d |  | Zenith | 8726194 |
| 900 | 36900.37000.37100.37900.122300.126400.785400 | Earthing Works | 60d | 2027-01-06 | 2027-03-07 | 896FS+20d |  | Zenith | 8726184 |
| 901 | 36900.37000.37100.37900.122300.126400.785500 | Energy meter | 60d | 2027-03-17 | 2027-05-16 | 897, 900FS+10d |  | Zenith | 8726174 |
| 902 | 36900.37000.37100.37900.122300.126400.785600 | HVAC & Exhast fan | 120d | 2026-10-28 | 2027-04-11 | 896FS-5d |  | Zenith | 8726164 |
| 903 | 36900.37000.37100.37900.122300.126400.785700 | FTTH | 60d | 2027-03-02 | 2027-05-01 | 898FS-15d |  | Zenith | 8726154 |
| 904 | 36900.37000.37100.37900.122300.126400.785800 | Security System - FA & PA | 60d | 2027-03-17 | 2027-05-16 | 898, 899FF+10d, 902FF+2d, 903FF |  | Zenith | 8726144 |

| ID | WBS | Task | Duration | Start | Finish | Predecessors | Constraint | Calendar | Unique_Task_ID |
| --- | --- | --- | --- | --- | --- | --- | --- | --- | --- |
| 905 | 36900.37000.37100.37900.122300.143000 | **Plumbing work** | 175d | 2026-09-15 | 2027-04-23 |  | start no earlier than 2026-09-15 | Zenith | 8652734 |
| 906 | 36900.37000.37100.37900.122300.143000.785900 | Terrace looping | 45d | 2026-09-15 | 2026-10-30 | 843 |  | Zenith | 8726134 |
| 907 | 36900.37000.37100.37900.122300.143000.786000 | Shaft Plumbing | 70d | 2026-10-30 | 2027-02-22 | 906, 884FS-30d |  | Zenith | 8726124 |
| 908 | 36900.37000.37100.37900.122300.143000.786100 | CP sanitary fixture base work | 45d | 2027-02-22 | 2027-04-08 | 907 |  | Zenith | 8726114 |
| 909 | 36900.37000.37100.37900.122300.143000.786200 | Cold & flushing water supply | 45d | 2027-02-22 | 2027-04-08 | 907 |  | Zenith | 8726104 |
| 910 | 36900.37000.37100.37900.122300.143000.786300 | Misc work | 30d | 2027-03-24 | 2027-04-23 | 908FS-15d, 909FS-15d |  | Zenith | 8726094 |
| 911 | 36900.37000.37100.37900.122300.205800 | **Fire fighting work** | 203.75d | 2026-06-08 | 2027-02-12 |  | start no earlier than 2026-06-08 | Zenith | 8654594 |
| 912 | 36900.37000.37100.37900.122300.205800.786400 | Fire hydrant work | 75d | 2026-06-08 | 2026-08-22 | 884SS+45d |  | Zenith | 8726084 |
| 913 | 36900.37000.37100.37900.122300.205800.786500 | Pipe connection & sprinkler installation | 45d | 2026-12-29 | 2027-02-12 | 912FS+1d, 915FF+15d |  | Zenith | 8726074 |
| 914 | 36900.37000.37100.37900.122300.205800.786600 | Shaft Downtake works | 60d | 2026-09-15 | 2026-12-29 | 843, 884FS-60d |  | Zenith | 8726064 |
| 915 | 36900.37000.37100.37900.122300.205800.786700 | Connection to pump room | 30d | 2026-12-29 | 2027-01-28 | 914 |  | Zenith | 8726054 |
| 916 | 36900.37000.37100.37900.122300.218200 | **Lift work** | 160d | 2026-08-16 | 2027-03-09 |  | start no earlier than 2026-08-16 | Zenith | 8656634 |
| 917 | 36900.37000.37100.37900.122300.218200.786800 | Lift Shaft/Pit Handover | 40d | 2026-08-16 | 2026-09-25 | 278FS+5d |  | Zenith | 8726044 |
| 918 | 36900.37000.37100.37900.122300.218200.786900 | Lift installation work | 60d | 2026-09-25 | 2027-01-08 | 917 |  | Zenith | 8726034 |
| 919 | 36900.37000.37100.37900.122300.218200.787000 | Lift testing and commissioning | 60d | 2027-01-08 | 2027-03-09 | 918, 889 |  | Zenith | 8726024 |
| 920 | 36900.37000.37100.37900.227600 | **Basement lobby** | 90d | 2026-10-10 | 2027-02-22 |  | start no earlier than 2026-10-10 | Zenith | 8656984 |
| 921 | 36900.37000.37100.37900.227600.371400 | Basement lobby | 90d | 2026-10-10 | 2027-02-22 | 917FS+15d, 57FS+15d, 58FS+15d |  | Zenith | 8731924 |
| 922 | 36900.37000.37100.37900.221700 | **External Paint Works** | 167d | 2026-10-14 | 2027-05-14 |  | start no earlier than 2026-10-14 | Zenith | 8656844 |
| 923 | 36900.37000.37100.37900.221700.371500 | Surface prepration with Primer | 60d | 2026-10-14 | 2027-01-27 | 278FS+2d, 880 |  | Zenith | 8731914 |
| 924 | 36900.37000.37100.37900.221700.371600 | External Painting (Texture & first coat) | 90d | 2027-02-13 | 2027-05-14 | 923FF+10d, 837 |  | Zenith | 8731904 |
| 925 | 36900.37000.37100.37900.271300 | OC Application/Readiness | 2d | 2027-07-28 | 2027-07-30 | 235FF+350d, 924, 913FS+30d, 910, 921FS+30d, 919, 904, 901, 844FS+30d, 841FS+15d, 890FS+0.25d, 880, 837FS+0.25d |  | Zenith | 8735474 |
| 926 | 36900.37000.37100.37900.271400 | OC Receipt | 60d | 2027-07-30 | 2027-09-28 | 925 |  | Zenith | 8735464 |
| 927 | 36900.37000.37100.37900.125500 | **Post OC activities** | 517d | 2027-03-05 | 2028-09-17 |  | start no earlier than 2027-03-05 | Zenith | 8652014 |
| 928 | 36900.37000.37100.37900.125500.371700 | CP & Sanitaryware | 150d | 2027-09-28 | 2028-04-10 | 926 |  | Zenith | 8731894 |
| 929 | 36900.37000.37100.37900.125500.371800 | Electrical Fixtures And Fittings | 150d | 2027-09-28 | 2028-04-10 | 926 |  | Zenith | 8731884 |
| 930 | 36900.37000.37100.37900.125500.371900 | Final coat paint external | 100d | 2027-09-28 | 2028-02-20 | 926 |  | Zenith | 8731874 |
| 931 | 36900.37000.37100.37900.125500.372000 | Final Coat Paint Internal | 150d | 2027-09-28 | 2028-04-10 | 926, 840 |  | Zenith | 8731864 |
| 932 | 36900.37000.37100.37900.125500.372100 | Balcony Railing Glass Fixing | 120d | 2028-04-10 | 2028-08-08 | 931, 880FS+30d |  | Zenith | 8731854 |
| 933 | 36900.37000.37100.37900.125500.372200 | MEP other | 150d | 2027-03-05 | 2027-08-02 | 893FS+15d |  | Zenith | 8731844 |
| 934 | 36900.37000.37100.37900.125500.372300 | Wooden Flooring | 180d | 2027-09-13 | 2028-04-25 | 931FF+15d |  | Zenith | 8731834 |
| 935 | 36900.37000.37100.37900.125500.372400 | Split AC Units installation | 100d | 2028-05-10 | 2028-08-18 | 934FS+15d |  | Zenith | 8731824 |
| 936 | 36900.37000.37100.37900.125500.372500 | Misc. works (Modular kitchen & others) | 180d | 2028-03-21 | 2028-09-17 | 935FF+30d |  | Zenith | 8731814 |
| 937 | 36900.37000.37100.37900.271500 | Offer To Possession | 182d | 2028-04-12 | 2028-10-11 | 926FS+152d, 928FF+20d, 929FF+20d, 930FF+20d, 935FF+10d, 933FF+30d, 932FF+15d, 936FF+15d |  | Zenith | 8735454 |

| ID | WBS | Task | Duration | Start | Finish | Predecessors | Complete | Constraint | Calendar | Unique_Task_ID |
| --- | --- | --- | --- | --- | --- | --- | --- | --- | --- | --- |
| 938 | 36900.37000.37100.38000 | **Tower 02** | 1477d | 2024-04-11 | 2028-10-23 |  | 3% | start no earlier than 2024-04-11 | Zenith | 8647574 |
| 939 | 36900.37000.37100.38000.63200 | **Sub-Structure Works** | 524d | 2024-04-11 | 2025-10-31 |  | 58% | start no earlier than 2024-04-11 | Zenith | 8648364 |
| 940 | 36900.37000.37100.38000.63200.141800 | **Soil Bed Preparation** | 194d | 2024-04-11 | 2024-10-21 |  | 100% | start no earlier than 2024-04-11 | Zenith | 8652724 |
| 941 | 36900.37000.37100.38000.63200.141800.231300 | Excavation (2m) | 66d | 2024-04-11 | 2024-06-15 | 14SS+10d | 100% | start no earlier than 2024-04-11 | Zenith | 8726014 |
| 942 | 36900.37000.37100.38000.63200.141800.231200 | Soldier Piling shop drawing approval | 19d | 2024-04-15 | 2024-07-09 | 941 | 100% | start no earlier than 2024-04-15 | Zenith | 8726004 |
| 943 | 36900.37000.37100.38000.63200.141800.231100 | Mobilization & Soldier Piling with Excavation (4m) | 89d | 2024-05-19 | 2024-09-25 | 942FS+5d | 100% | start no earlier than 2024-05-19 | Zenith | 8725994 |
| 944 | 36900.37000.37100.38000.63200.141800.231000 | Balance B3 bulk Excavation | 51d | 2024-05-25 | 2024-09-26 | 943FS-111d | 100% | start no earlier than 2024-05-25 | Zenith | 8725984 |
| 945 | 36900.37000.37100.38000.63200.141800.230900 | Soil dressing & ATT | 5d | 2024-10-10 | 2024-10-21 | 944FS+8d | 100% | start no earlier than 2024-10-10 | Zenith | 8725974 |
| 946 | 36900.37000.37100.38000.63200.119200 | **Structure Works** | 196d | 2024-10-16 | 2025-06-13 |  | 55% | start no earlier than 2024-10-16 | Zenith | 8651824 |
| 947 | 36900.37000.37100.38000.63200.119200.142000 | **Raft Foundation** | 90.7d | 2024-10-16 | 2025-02-28 |  | 100% | start no earlier than 2024-10-16 | Zenith | 8652854 |
| 948 | 36900.37000.37100.38000.63200.119200.142000.242600 | PCC | 3d | 2024-10-24 | 2024-10-26 | 945, 21SS+16d | 100% | start no earlier than 2024-10-24 | Zenith | 8693964 |
| 949 | 36900.37000.37100.38000.63200.119200.142000.242500 | Column/SW layout marking | 24d | 2024-10-16 | 2025-01-06 | 948 | 100% | start no earlier than 2024-10-16 | Zenith | 8693954 |
| 950 | 36900.37000.37100.38000.63200.119200.142000.242400 | Reinforcement | 39d | 2024-12-30 | 2025-02-25 | 949FS-12.2d | 100% | start no earlier than 2024-12-30 | Zenith | 8693944 |
| 951 | 36900.37000.37100.38000.63200.119200.142000.242300 | Formwork (Conventional) | 59d | 2024-12-30 | 2025-02-26 | 950FF+3d | 100% | start no earlier than 2024-12-30 | Zenith | 8693934 |
| 952 | 36900.37000.37100.38000.63200.119200.142000.242200 | Concreting | 2d | 2025-02-26 | 2025-02-28 | 951 | 100% | start no earlier than 2025-02-26 | Zenith | 8693924 |
| 953 | 36900.37000.37100.38000.63200.119200.132200 | **Basement 03 Roof Slab (Dummy/Stitch Slab)** | 7d | 2025-03-24 | 2025-03-30 |  | 100% | start no earlier than 2025-03-24 | Zenith | 8652534 |
| 954 | 36900.37000.37100.38000.63200.119200.132200.241800 | Column/SW Reinforcement | 1d | 2025-03-24 | 2025-03-24 | 952 | 100% | start no earlier than 2025-03-24 | Zenith | 8693914 |
| 955 | 36900.37000.37100.38000.63200.119200.132200.241700 | SW Formwork (Conventional) | 1d | 2025-03-25 | 2025-03-25 | 954SS+1d | 100% | start no earlier than 2025-03-25 | Zenith | 8693904 |
| 956 | 36900.37000.37100.38000.63200.119200.132200.241600 | Column/SW Concreting | 1d | 2025-03-26 | 2025-03-26 | 955SS+1d | 100% | start no earlier than 2025-03-26 | Zenith | 8693894 |
| 957 | 36900.37000.37100.38000.63200.119200.132200.241500 | Slab Formwork (Conventional) | 1d | 2025-03-27 | 2025-03-27 | 956SS+1d | 100% | start no earlier than 2025-03-27 | Zenith | 8693884 |
| 958 | 36900.37000.37100.38000.63200.119200.132200.241400 | Slab Reinforcement + Conduting | 1d | 2025-03-28 | 2025-03-28 | 957 | 100% | start no earlier than 2025-03-28 | Zenith | 8693874 |
| 959 | 36900.37000.37100.38000.63200.119200.132200.241300 | Concreting | 2d | 2025-03-29 | 2025-03-30 | 958 | 100% | start no earlier than 2025-03-29 | Zenith | 8693864 |
| 960 | 36900.37000.37100.38000.63200.119200.141900 | **Basement 02 Roof Slab** | 44d | 2025-03-12 | 2025-04-24 |  | 17% | start no earlier than 2025-03-12 | Zenith | 8652524 |
| 961 | 36900.37000.37100.38000.63200.119200.141900.241200 | Column/SW Reinforcement | 8d | 2025-03-12 | 2025-04-01 | 959FS-20d | 87% |  | Zenith | 8693854 |
| 962 | 36900.37000.37100.38000.63200.119200.141900.902600 | SW Formwork (Conventional) | 9d | 2025-04-03 | 2025-04-11 | 961SS+22d |  |  | Zenith | 8693844 |
| 963 | 36900.37000.37100.38000.63200.119200.141900.902700 | Column/SW Concreting | 9d | 2025-04-07 | 2025-04-15 | 962SS+4d |  |  | Zenith | 8693834 |
| 964 | 36900.37000.37100.38000.63200.119200.141900.902800 | Slab Formwork (Conventional) | 9d | 2025-04-12 | 2025-04-20 | 963SS+5d |  |  | Zenith | 8693824 |
| 965 | 36900.37000.37100.38000.63200.119200.141900.902900 | Slab Reinforcement + Conduting | 3d | 2025-04-21 | 2025-04-23 | 964 |  |  | Zenith | 8693814 |
| 966 | 36900.37000.37100.38000.63200.119200.141900.903000 | Concreting | 1d | 2025-04-24 | 2025-04-24 | 965 |  |  | Zenith | 8693804 |

| ID | WBS | Task | Duration | Start | Finish | Predecessors | Constraint | Calendar | Unique_Task_ID |
| --- | --- | --- | --- | --- | --- | --- | --- | --- | --- |
| 967 | 36900.37000.37100.38000.63200.119200.141700 | **Basement 01 Roof Slab** | 25d | 2025-04-25 | 2025-05-19 |  | start no earlier than 2025-04-25 | Zenith | 8652514 |
| 968 | 36900.37000.37100.38000.63200.119200.141700.903100 | Column/SW Reinforcement | 9d | 2025-04-25 | 2025-05-03 | 966 |  | Zenith | 8693794 |
| 969 | 36900.37000.37100.38000.63200.119200.141700.903200 | SW Formwork (Conventional) | 9d | 2025-04-29 | 2025-05-07 | 968SS+4d |  | Zenith | 8693784 |
| 970 | 36900.37000.37100.38000.63200.119200.141700.903300 | Column/SW Concreting | 9d | 2025-05-03 | 2025-05-11 | 969SS+4d |  | Zenith | 8693774 |
| 971 | 36900.37000.37100.38000.63200.119200.141700.903400 | Slab Formwork (Conventional) | 9d | 2025-05-07 | 2025-05-15 | 970SS+4d |  | Zenith | 8693764 |
| 972 | 36900.37000.37100.38000.63200.119200.141700.903500 | Slab Reinforcement + Conduting | 3d | 2025-05-16 | 2025-05-18 | 971 |  | Zenith | 8693754 |
| 973 | 36900.37000.37100.38000.63200.119200.141700.903600 | Concreting | 1d | 2025-05-19 | 2025-05-19 | 972 |  | Zenith | 8693744 |
| 974 | 36900.37000.37100.38000.63200.119200.141600 | **Podium Slab/Ground Roof Floor Slab** | 25d | 2025-05-20 | 2025-06-13 |  | start no earlier than 2025-05-20 | Zenith | 8652504 |
| 975 | 36900.37000.37100.38000.63200.119200.141600.903700 | Column/SW Reinforcement | 9d | 2025-05-20 | 2025-05-28 | 973 |  | Zenith | 8693734 |
| 976 | 36900.37000.37100.38000.63200.119200.141600.903800 | SW Formwork (Conventional) | 9d | 2025-05-24 | 2025-06-01 | 975SS+4d |  | Zenith | 8693724 |
| 977 | 36900.37000.37100.38000.63200.119200.141600.903900 | Column/SW Concreting | 9d | 2025-05-28 | 2025-06-05 | 976SS+4d |  | Zenith | 8693714 |
| 978 | 36900.37000.37100.38000.63200.119200.141600.904000 | Slab Formwork (Conventional) | 9d | 2025-06-01 | 2025-06-09 | 977SS+4d |  | Zenith | 8693704 |
| 979 | 36900.37000.37100.38000.63200.119200.141600.904100 | Slab Reinforcement + Conduting | 3d | 2025-06-10 | 2025-06-12 | 978 |  | Zenith | 8693694 |
| 980 | 36900.37000.37100.38000.63200.119200.141600.904200 | Concreting | 1d | 2025-06-13 | 2025-06-13 | 979 |  | Zenith | 8693684 |
| 981 | 36900.37000.37100.38000.63200.204600 | **Substructure Finishes** | 110d | 2025-07-14 | 2025-10-31 |  | start no earlier than 2025-07-14 | Zenith | 8656064 |
| 982 | 36900.37000.37100.38000.63200.204600.787100 | Masonary Work | 35d | 2025-07-14 | 2025-08-17 | 980FS+30d |  | Zenith | 8725964 |
| 983 | 36900.37000.37100.38000.63200.204600.787200 | Plaster Work | 30d | 2025-08-18 | 2025-09-16 | 982 |  | Zenith | 8725954 |
| 984 | 36900.37000.37100.38000.63200.204600.787300 | Structural Steel work | 50d | 2025-08-13 | 2025-10-01 | 980FS+60d |  | Zenith | 8725944 |
| 985 | 36900.37000.37100.38000.63200.204600.787400 | White Wash & Misc. | 35d | 2025-09-27 | 2025-10-31 | 983FS+10d |  | Zenith | 8725934 |
| 986 | 36900.37000.37100.38000.39000 | **Superstructure** | 626d | 2025-06-14 | 2027-05-30 |  | start no earlier than 2025-06-14 | Zenith | 8647694 |
| 987 | 36900.37000.37100.38000.39000.44900 | **RCC structure** | 385d | 2025-06-14 | 2026-08-17 |  | start no earlier than 2025-06-14 | Zenith | 8647944 |
| 988 | 36900.37000.37100.38000.39000.44900.204400 | **1st Floor Roof slab** | 24d | 2025-06-14 | 2025-07-07 |  | start no earlier than 2025-06-14 | Zenith | 8654044 |
| 989 | 36900.37000.37100.38000.39000.44900.204400.904300 | Reinforcement | 19d | 2025-06-14 | 2025-07-02 | 980 |  | Zenith | 8693674 |
| 990 | 36900.37000.37100.38000.39000.44900.204400.904400 | Conduiting | 19d | 2025-06-17 | 2025-07-05 | 989SS+3d |  | Zenith | 8693664 |
| 991 | 36900.37000.37100.38000.39000.44900.204400.904500 | Formwork | 19d | 2025-06-18 | 2025-07-06 | 989SS+4d |  | Zenith | 8693654 |
| 992 | 36900.37000.37100.38000.39000.44900.204400.904600 | Concreting | 1d | 2025-07-07 | 2025-07-07 | 990FS+1d, 991 |  | Zenith | 8693644 |

| ID | WBS | Task | Duration | Start | Finish | Predecessors | Constraint | Calendar | Unique_Task_ID |
| --- | --- | --- | --- | --- | --- | --- | --- | --- | --- |
| 993 | 36900.37000.37100.38000.39000.44900.204300 | **2nd Floor Roof slab** | 21d | 2025-07-08 | 2025-07-28 |  | start no earlier than 2025-07-08 | Zenith | 8654034 |
| 994 | 36900.37000.37100.38000.39000.44900.204300.904700 | Reinforcement | 16d | 2025-07-08 | 2025-07-23 | 992 |  | Zenith | 8693634 |
| 995 | 36900.37000.37100.38000.39000.44900.204300.904800 | Conduiting | 16d | 2025-07-11 | 2025-07-26 | 994SS+3d |  | Zenith | 8693624 |
| 996 | 36900.37000.37100.38000.39000.44900.204300.904900 | Formwork | 16d | 2025-07-12 | 2025-07-27 | 994SS+4d |  | Zenith | 8693614 |
| 997 | 36900.37000.37100.38000.39000.44900.204300.905000 | Concreting | 1d | 2025-07-28 | 2025-07-28 | 995FS+1d, 996 |  | Zenith | 8693604 |
| 998 | 36900.37000.37100.38000.39000.44900.204100 | **3rd Floor Roof slab** | 15d | 2025-07-29 | 2025-08-12 |  | start no earlier than 2025-07-29 | Zenith | 8654024 |
| 999 | 36900.37000.37100.38000.39000.44900.204100.905100 | Reinforcement | 10d | 2025-07-29 | 2025-08-07 | 997 |  | Zenith | 8693594 |
| 1000 | 36900.37000.37100.38000.39000.44900.204100.905200 | Conduiting | 10d | 2025-08-01 | 2025-08-10 | 999SS+3d |  | Zenith | 8693584 |
| 1001 | 36900.37000.37100.38000.39000.44900.204100.905300 | Formwork | 10d | 2025-08-02 | 2025-08-11 | 999SS+4d |  | Zenith | 8693574 |
| 1002 | 36900.37000.37100.38000.39000.44900.204100.905400 | Concreting | 1d | 2025-08-12 | 2025-08-12 | 1000FS+1d, 1001 |  | Zenith | 8693564 |
| 1003 | 36900.37000.37100.38000.39000.44900.204000 | **4th floor roof slab** | 9d | 2025-08-13 | 2025-08-21 |  | start no earlier than 2025-08-13 | Zenith | 8654014 |
| 1004 | 36900.37000.37100.38000.39000.44900.204000.905500 | Reinforcement | 6d | 2025-08-13 | 2025-08-18 | 1002 |  | Zenith | 8693554 |
| 1005 | 36900.37000.37100.38000.39000.44900.204000.905600 | Conduiting | 6d | 2025-08-14 | 2025-08-19 | 1004SS+1d |  | Zenith | 8693544 |
| 1006 | 36900.37000.37100.38000.39000.44900.204000.905700 | Formwork | 6d | 2025-08-15 | 2025-08-20 | 1004SS+2d |  | Zenith | 8693534 |
| 1007 | 36900.37000.37100.38000.39000.44900.204000.905800 | Concreting | 1d | 2025-08-21 | 2025-08-21 | 1005FS+1d, 1006 |  | Zenith | 8693524 |
| 1008 | 36900.37000.37100.38000.39000.44900.203800 | **5th floor roof slab** | 9d | 2025-08-22 | 2025-08-30 |  | start no earlier than 2025-08-22 | Zenith | 8654004 |
| 1009 | 36900.37000.37100.38000.39000.44900.203800.905900 | Reinforcement | 6d | 2025-08-22 | 2025-08-27 | 1007 |  | Zenith | 8693514 |
| 1010 | 36900.37000.37100.38000.39000.44900.203800.906000 | Conduiting | 6d | 2025-08-23 | 2025-08-28 | 1009SS+1d |  | Zenith | 8693504 |
| 1011 | 36900.37000.37100.38000.39000.44900.203800.906100 | Formwork | 6d | 2025-08-24 | 2025-08-29 | 1009SS+2d |  | Zenith | 8693494 |
| 1012 | 36900.37000.37100.38000.39000.44900.203800.906200 | Concreting | 1d | 2025-08-30 | 2025-08-30 | 1010FS+1d, 1011 |  | Zenith | 8693484 |
| 1013 | 36900.37000.37100.38000.39000.44900.203000 | **6th floor roof slab** | 9d | 2025-08-31 | 2025-09-08 |  | start no earlier than 2025-08-31 | Zenith | 8653994 |
| 1014 | 36900.37000.37100.38000.39000.44900.203000.906300 | Reinforcement | 6d | 2025-08-31 | 2025-09-05 | 1012 |  | Zenith | 8693474 |
| 1015 | 36900.37000.37100.38000.39000.44900.203000.906400 | Conduiting | 6d | 2025-09-01 | 2025-09-06 | 1014SS+1d |  | Zenith | 8693464 |
| 1016 | 36900.37000.37100.38000.39000.44900.203000.906500 | Formwork | 6d | 2025-09-02 | 2025-09-07 | 1014SS+2d |  | Zenith | 8693454 |
| 1017 | 36900.37000.37100.38000.39000.44900.203000.906600 | Concreting | 1d | 2025-09-08 | 2025-09-08 | 1015FS+1d, 1016 |  | Zenith | 8693444 |

| ID | WBS | Task | Duration | Start | Finish | Predecessors | Constraint | Calendar | Unique_Task_ID |
| --- | --- | --- | --- | --- | --- | --- | --- | --- | --- |
| 1018 | 36900.37000.37100.38000.39000.44900.202900 | **7th floor roof slab** | 9d | 2025-09-09 | 2025-09-17 |  | start no earlier than 2025-09-09 | Zenith | 8653974 |
| 1019 | 36900.37000.37100.38000.39000.44900.202900.906700 | Reinforcement | 6d | 2025-09-09 | 2025-09-14 | 1017 |  | Zenith | 8693434 |
| 1020 | 36900.37000.37100.38000.39000.44900.202900.906800 | Conduiting | 6d | 2025-09-10 | 2025-09-15 | 1019SS+1d |  | Zenith | 8693424 |
| 1021 | 36900.37000.37100.38000.39000.44900.202900.906900 | Formwork | 6d | 2025-09-11 | 2025-09-16 | 1019SS+2d |  | Zenith | 8693414 |
| 1022 | 36900.37000.37100.38000.39000.44900.202900.907000 | Concreting | 1d | 2025-09-17 | 2025-09-17 | 1020FS+1d, 1021 |  | Zenith | 8693404 |
| 1023 | 36900.37000.37100.38000.39000.44900.202700 | **8th floor roof slab** | 9d | 2025-09-18 | 2025-09-26 |  | start no earlier than 2025-09-18 | Zenith | 8653964 |
| 1024 | 36900.37000.37100.38000.39000.44900.202700.907100 | Reinforcement | 6d | 2025-09-18 | 2025-09-23 | 1022 |  | Zenith | 8693394 |
| 1025 | 36900.37000.37100.38000.39000.44900.202700.907200 | Conduiting | 6d | 2025-09-19 | 2025-09-24 | 1024SS+1d |  | Zenith | 8693384 |
| 1026 | 36900.37000.37100.38000.39000.44900.202700.907300 | Formwork | 6d | 2025-09-20 | 2025-09-25 | 1024SS+2d |  | Zenith | 8693374 |
| 1027 | 36900.37000.37100.38000.39000.44900.202700.907400 | Concreting | 1d | 2025-09-26 | 2025-09-26 | 1025FS+1d, 1026 |  | Zenith | 8693364 |
| 1028 | 36900.37000.37100.38000.39000.44900.202400 | **9th floor roof slab** | 9d | 2025-09-27 | 2025-10-05 |  | start no earlier than 2025-09-27 | Zenith | 8653954 |
| 1029 | 36900.37000.37100.38000.39000.44900.202400.907500 | Reinforcement | 6d | 2025-09-27 | 2025-10-02 | 1027 |  | Zenith | 8693354 |
| 1030 | 36900.37000.37100.38000.39000.44900.202400.907600 | Conduiting | 6d | 2025-09-28 | 2025-10-03 | 1029SS+1d |  | Zenith | 8693344 |
| 1031 | 36900.37000.37100.38000.39000.44900.202400.907700 | Formwork | 6d | 2025-09-29 | 2025-10-04 | 1029SS+2d |  | Zenith | 8693334 |
| 1032 | 36900.37000.37100.38000.39000.44900.202400.907800 | Concreting | 1d | 2025-10-05 | 2025-10-05 | 1030FS+1d, 1031 |  | Zenith | 8693324 |
| 1033 | 36900.37000.37100.38000.39000.44900.202100 | **10th floor roof slab** | 9d | 2025-10-06 | 2025-10-14 |  | start no earlier than 2025-10-06 | Zenith | 8653944 |
| 1034 | 36900.37000.37100.38000.39000.44900.202100.907900 | Reinforcement | 6d | 2025-10-06 | 2025-10-11 | 1032 |  | Zenith | 8693314 |
| 1035 | 36900.37000.37100.38000.39000.44900.202100.908000 | Conduiting | 6d | 2025-10-07 | 2025-10-12 | 1034SS+1d |  | Zenith | 8693304 |
| 1036 | 36900.37000.37100.38000.39000.44900.202100.908100 | Formwork | 6d | 2025-10-08 | 2025-10-13 | 1034SS+2d |  | Zenith | 8693294 |
| 1037 | 36900.37000.37100.38000.39000.44900.202100.908200 | Concreting | 1d | 2025-10-14 | 2025-10-14 | 1035FS+1d, 1036 |  | Zenith | 8693284 |
| 1038 | 36900.37000.37100.38000.39000.44900.202000 | **11th floor roof slab** | 9d | 2025-10-15 | 2025-10-23 |  | start no earlier than 2025-10-15 | Zenith | 8653924 |
| 1039 | 36900.37000.37100.38000.39000.44900.202000.908300 | Reinforcement | 6d | 2025-10-15 | 2025-10-20 | 1037 |  | Zenith | 8693274 |
| 1040 | 36900.37000.37100.38000.39000.44900.202000.908400 | Conduiting | 6d | 2025-10-16 | 2025-10-21 | 1039SS+1d |  | Zenith | 8693264 |
| 1041 | 36900.37000.37100.38000.39000.44900.202000.908500 | Formwork | 6d | 2025-10-17 | 2025-10-22 | 1039SS+2d |  | Zenith | 8693254 |
| 1042 | 36900.37000.37100.38000.39000.44900.202000.908600 | Concreting | 1d | 2025-10-23 | 2025-10-23 | 1040FS+1d, 1041 |  | Zenith | 8693244 |

| ID | WBS | Task | Duration | Start | Finish | Predecessors | Constraint | Calendar | Unique_Task_ID |
| --- | --- | --- | --- | --- | --- | --- | --- | --- | --- |
| 1043 | 36900.37000.37100.38000.39000.44900.201900 | **12th floor roof slab** | 9d | 2025-10-24 | 2025-12-16 |  | start no earlier than 2025-10-24 | Zenith | 8653914 |
| 1044 | 36900.37000.37100.38000.39000.44900.201900.908700 | Reinforcement | 6d | 2025-10-24 | 2025-10-29 | 1042 |  | Zenith | 8693234 |
| 1045 | 36900.37000.37100.38000.39000.44900.201900.908800 | Conduiting | 6d | 2025-10-25 | 2025-10-30 | 1044SS+1d |  | Zenith | 8693224 |
| 1046 | 36900.37000.37100.38000.39000.44900.201900.908900 | Formwork | 6d | 2025-10-26 | 2025-10-31 | 1044SS+2d |  | Zenith | 8693214 |
| 1047 | 36900.37000.37100.38000.39000.44900.201900.909000 | Concreting | 1d | 2025-12-16 | 2025-12-16 | 1045FS+1d, 1046 |  | Zenith | 8693204 |
| 1048 | 36900.37000.37100.38000.39000.44900.201200 | **13th floor roof slab** | 9d | 2025-12-17 | 2025-12-25 |  | start no earlier than 2025-12-17 | Zenith | 8653804 |
| 1049 | 36900.37000.37100.38000.39000.44900.201200.909100 | Reinforcement | 6d | 2025-12-17 | 2025-12-22 | 1047 |  | Zenith | 8693194 |
| 1050 | 36900.37000.37100.38000.39000.44900.201200.909200 | Conduiting | 6d | 2025-12-18 | 2025-12-23 | 1049SS+1d |  | Zenith | 8693184 |
| 1051 | 36900.37000.37100.38000.39000.44900.201200.909300 | Formwork | 6d | 2025-12-19 | 2025-12-24 | 1049SS+2d |  | Zenith | 8693174 |
| 1052 | 36900.37000.37100.38000.39000.44900.201200.909400 | Concreting | 1d | 2025-12-25 | 2025-12-25 | 1050FS+1d, 1051 |  | Zenith | 8693164 |
| 1053 | 36900.37000.37100.38000.39000.44900.200500 | **14th floor roof slab** | 9d | 2025-12-26 | 2026-01-03 |  | start no earlier than 2025-12-26 | Zenith | 8653794 |
| 1054 | 36900.37000.37100.38000.39000.44900.200500.909500 | Reinforcement | 6d | 2025-12-26 | 2025-12-31 | 1052 |  | Zenith | 8693154 |
| 1055 | 36900.37000.37100.38000.39000.44900.200500.909600 | Conduiting | 6d | 2025-12-27 | 2026-01-01 | 1054SS+1d |  | Zenith | 8693144 |
| 1056 | 36900.37000.37100.38000.39000.44900.200500.909700 | Formwork | 6d | 2025-12-28 | 2026-01-02 | 1054SS+2d |  | Zenith | 8693134 |
| 1057 | 36900.37000.37100.38000.39000.44900.200500.909800 | Concreting | 1d | 2026-01-03 | 2026-01-03 | 1055FS+1d, 1056 |  | Zenith | 8693124 |
| 1058 | 36900.37000.37100.38000.39000.44900.200400 | **15th floor roof slab** | 9d | 2026-01-04 | 2026-01-12 |  | start no earlier than 2026-01-04 | Zenith | 8653784 |
| 1059 | 36900.37000.37100.38000.39000.44900.200400.909900 | Reinforcement | 6d | 2026-01-04 | 2026-01-09 | 1057 |  | Zenith | 8693114 |
| 1060 | 36900.37000.37100.38000.39000.44900.200400.910000 | Conduiting | 6d | 2026-01-05 | 2026-01-10 | 1059SS+1d |  | Zenith | 8693104 |
| 1061 | 36900.37000.37100.38000.39000.44900.200400.910100 | Formwork | 6d | 2026-01-06 | 2026-01-11 | 1059SS+2d |  | Zenith | 8693094 |
| 1062 | 36900.37000.37100.38000.39000.44900.200400.910200 | Concreting | 1d | 2026-01-12 | 2026-01-12 | 1060FS+1d, 1061 |  | Zenith | 8693084 |
| 1063 | 36900.37000.37100.38000.39000.44900.200100 | **16th floor roof slab** | 9d | 2026-01-13 | 2026-01-21 |  | start no earlier than 2026-01-13 | Zenith | 8653774 |
| 1064 | 36900.37000.37100.38000.39000.44900.200100.910300 | Reinforcement | 6d | 2026-01-13 | 2026-01-18 | 1062 |  | Zenith | 8693074 |
| 1065 | 36900.37000.37100.38000.39000.44900.200100.910400 | Conduiting | 6d | 2026-01-14 | 2026-01-19 | 1064SS+1d |  | Zenith | 8693064 |
| 1066 | 36900.37000.37100.38000.39000.44900.200100.910500 | Formwork | 6d | 2026-01-15 | 2026-01-20 | 1064SS+2d |  | Zenith | 8693054 |
| 1067 | 36900.37000.37100.38000.39000.44900.200100.910600 | Concreting | 1d | 2026-01-21 | 2026-01-21 | 1065, 1066 |  | Zenith | 8693044 |

| ID | WBS | Task | Duration | Start | Finish | Predecessors | Constraint | Calendar | Unique_Task_ID |
| --- | --- | --- | --- | --- | --- | --- | --- | --- | --- |
| 1068 | 36900.37000.37100.38000.39000.44900.199100 | **17th floor roof slab** | 9d | 2026-01-22 | 2026-01-30 |  | start no earlier than 2026-01-22 | Zenith | 8653764 |
| 1069 | 36900.37000.37100.38000.39000.44900.199100.910700 | Reinforcement | 6d | 2026-01-22 | 2026-01-27 | 1067 |  | Zenith | 8693034 |
| 1070 | 36900.37000.37100.38000.39000.44900.199100.910800 | Conduiting | 6d | 2026-01-23 | 2026-01-28 | 1069SS+1d |  | Zenith | 8693024 |
| 1071 | 36900.37000.37100.38000.39000.44900.199100.910900 | Formwork | 6d | 2026-01-24 | 2026-01-29 | 1069SS+2d |  | Zenith | 8693014 |
| 1072 | 36900.37000.37100.38000.39000.44900.199100.911000 | Concreting | 1d | 2026-01-30 | 2026-01-30 | 1070FS+1d, 1071 |  | Zenith | 8693004 |
| 1073 | 36900.37000.37100.38000.39000.44900.198900 | **18th floor roof slab** | 8d | 2026-01-31 | 2026-02-07 |  | start no earlier than 2026-01-31 | Zenith | 8653744 |
| 1074 | 36900.37000.37100.38000.39000.44900.198900.911100 | Reinforcement | 5d | 2026-01-31 | 2026-02-04 | 1072 |  | Zenith | 8692994 |
| 1075 | 36900.37000.37100.38000.39000.44900.198900.911200 | Conduiting | 5d | 2026-02-01 | 2026-02-05 | 1074SS+1d |  | Zenith | 8692984 |
| 1076 | 36900.37000.37100.38000.39000.44900.198900.911300 | Formwork | 5d | 2026-02-02 | 2026-02-06 | 1074SS+2d |  | Zenith | 8692974 |
| 1077 | 36900.37000.37100.38000.39000.44900.198900.911400 | Concreting | 1d | 2026-02-07 | 2026-02-07 | 1075FS+1d, 1076 |  | Zenith | 8692964 |
| 1078 | 36900.37000.37100.38000.39000.44900.198800 | **19th floor roof slab** | 8d | 2026-02-08 | 2026-02-15 |  | start no earlier than 2026-02-08 | Zenith | 8653724 |
| 1079 | 36900.37000.37100.38000.39000.44900.198800.911500 | Reinforcement | 5d | 2026-02-08 | 2026-02-12 | 1077 |  | Zenith | 8692954 |
| 1080 | 36900.37000.37100.38000.39000.44900.198800.911600 | Conduiting | 5d | 2026-02-09 | 2026-02-13 | 1079SS+1d |  | Zenith | 8692944 |
| 1081 | 36900.37000.37100.38000.39000.44900.198800.911700 | Formwork | 5d | 2026-02-10 | 2026-02-14 | 1079SS+2d |  | Zenith | 8692934 |
| 1082 | 36900.37000.37100.38000.39000.44900.198800.911800 | Concreting | 1d | 2026-02-15 | 2026-02-15 | 1080FS+1d, 1081 |  | Zenith | 8692924 |
| 1083 | 36900.37000.37100.38000.39000.44900.198700 | **20th floor roof slab** | 8d | 2026-02-16 | 2026-02-23 |  | start no earlier than 2026-02-16 | Zenith | 8653714 |
| 1084 | 36900.37000.37100.38000.39000.44900.198700.911900 | Reinforcement | 5d | 2026-02-16 | 2026-02-20 | 1082 |  | Zenith | 8692914 |
| 1085 | 36900.37000.37100.38000.39000.44900.198700.912000 | Conduiting | 5d | 2026-02-17 | 2026-02-21 | 1084SS+1d |  | Zenith | 8692904 |
| 1086 | 36900.37000.37100.38000.39000.44900.198700.912100 | Formwork | 5d | 2026-02-18 | 2026-02-22 | 1084SS+2d |  | Zenith | 8692894 |
| 1087 | 36900.37000.37100.38000.39000.44900.198700.912200 | Concreting | 1d | 2026-02-23 | 2026-02-23 | 1085FS+1d, 1086 |  | Zenith | 8692884 |
| 1088 | 36900.37000.37100.38000.39000.44900.198600 | **21st floor roof slab** | 8d | 2026-02-24 | 2026-03-03 |  | start no earlier than 2026-02-24 | Zenith | 8653704 |
| 1089 | 36900.37000.37100.38000.39000.44900.198600.912300 | Reinforcement | 5d | 2026-02-24 | 2026-02-28 | 1087 |  | Zenith | 8692874 |
| 1090 | 36900.37000.37100.38000.39000.44900.198600.912400 | Conduiting | 5d | 2026-02-25 | 2026-03-01 | 1089SS+1d |  | Zenith | 8692864 |
| 1091 | 36900.37000.37100.38000.39000.44900.198600.912500 | Formwork | 5d | 2026-02-26 | 2026-03-02 | 1089SS+2d |  | Zenith | 8692854 |
| 1092 | 36900.37000.37100.38000.39000.44900.198600.912600 | Concreting | 1d | 2026-03-03 | 2026-03-03 | 1090FS+1d, 1091 |  | Zenith | 8692844 |

| ID | WBS | Task | Duration | Start | Finish | Predecessors | Constraint | Calendar | Unique_Task_ID |
| --- | --- | --- | --- | --- | --- | --- | --- | --- | --- |
| 1093 | 36900.37000.37100.38000.39000.44900.198400 | **22nd floor roof slab** | 8d | 2026-03-04 | 2026-03-11 |  | start no earlier than 2026-03-04 | Zenith | 8653694 |
| 1094 | 36900.37000.37100.38000.39000.44900.198400.912700 | Reinforcement | 5d | 2026-03-04 | 2026-03-08 | 1092 |  | Zenith | 8692834 |
| 1095 | 36900.37000.37100.38000.39000.44900.198400.912800 | Conduiting | 5d | 2026-03-05 | 2026-03-09 | 1094SS+1d |  | Zenith | 8692824 |
| 1096 | 36900.37000.37100.38000.39000.44900.198400.912900 | Formwork | 5d | 2026-03-06 | 2026-03-10 | 1094SS+2d |  | Zenith | 8692814 |
| 1097 | 36900.37000.37100.38000.39000.44900.198400.913000 | Concreting | 1d | 2026-03-11 | 2026-03-11 | 1095FS+1d, 1096 |  | Zenith | 8692804 |
| 1098 | 36900.37000.37100.38000.39000.44900.198300 | **23rd floor roof slab** | 8d | 2026-03-12 | 2026-03-19 |  | start no earlier than 2026-03-12 | Zenith | 8653684 |
| 1099 | 36900.37000.37100.38000.39000.44900.198300.913100 | Reinforcement | 5d | 2026-03-12 | 2026-03-16 | 1097 |  | Zenith | 8692794 |
| 1100 | 36900.37000.37100.38000.39000.44900.198300.913200 | Conduiting | 5d | 2026-03-13 | 2026-03-17 | 1099SS+1d |  | Zenith | 8692784 |
| 1101 | 36900.37000.37100.38000.39000.44900.198300.913300 | Formwork | 5d | 2026-03-14 | 2026-03-18 | 1099SS+2d |  | Zenith | 8692774 |
| 1102 | 36900.37000.37100.38000.39000.44900.198300.913400 | Concreting | 1d | 2026-03-19 | 2026-03-19 | 1100FS+1d, 1101 |  | Zenith | 8692764 |
| 1103 | 36900.37000.37100.38000.39000.44900.198200 | **24th floor roof slab** | 8d | 2026-03-20 | 2026-03-27 |  | start no earlier than 2026-03-20 | Zenith | 8653664 |
| 1104 | 36900.37000.37100.38000.39000.44900.198200.913500 | Reinforcement | 5d | 2026-03-20 | 2026-03-24 | 1102 |  | Zenith | 8692754 |
| 1105 | 36900.37000.37100.38000.39000.44900.198200.913600 | Conduiting | 5d | 2026-03-21 | 2026-03-25 | 1104SS+1d |  | Zenith | 8692744 |
| 1106 | 36900.37000.37100.38000.39000.44900.198200.913700 | Formwork | 5d | 2026-03-22 | 2026-03-26 | 1104SS+2d |  | Zenith | 8692734 |
| 1107 | 36900.37000.37100.38000.39000.44900.198200.913800 | Concreting | 1d | 2026-03-27 | 2026-03-27 | 1105FS+1d, 1106 |  | Zenith | 8692724 |
| 1108 | 36900.37000.37100.38000.39000.44900.198100 | **25th floor roof slab** | 8d | 2026-03-28 | 2026-04-04 |  | start no earlier than 2026-03-28 | Zenith | 8653654 |
| 1109 | 36900.37000.37100.38000.39000.44900.198100.913900 | Reinforcement | 5d | 2026-03-28 | 2026-04-01 | 1107 |  | Zenith | 8692714 |
| 1110 | 36900.37000.37100.38000.39000.44900.198100.914000 | Conduiting | 5d | 2026-03-29 | 2026-04-02 | 1109SS+1d |  | Zenith | 8692704 |
| 1111 | 36900.37000.37100.38000.39000.44900.198100.914100 | Formwork | 5d | 2026-03-30 | 2026-04-03 | 1109SS+2d |  | Zenith | 8692694 |
| 1112 | 36900.37000.37100.38000.39000.44900.198100.914200 | Concreting | 1d | 2026-04-04 | 2026-04-04 | 1110FS+1d, 1111 |  | Zenith | 8692684 |
| 1113 | 36900.37000.37100.38000.39000.44900.197800 | **26th floor roof slab** | 8d | 2026-04-05 | 2026-04-12 |  | start no earlier than 2026-04-05 | Zenith | 8653644 |
| 1114 | 36900.37000.37100.38000.39000.44900.197800.914300 | Reinforcement | 5d | 2026-04-05 | 2026-04-09 | 1112 |  | Zenith | 8692674 |
| 1115 | 36900.37000.37100.38000.39000.44900.197800.914400 | Conduiting | 5d | 2026-04-06 | 2026-04-10 | 1114SS+1d |  | Zenith | 8692664 |
| 1116 | 36900.37000.37100.38000.39000.44900.197800.914500 | Formwork | 5d | 2026-04-07 | 2026-04-11 | 1114SS+2d |  | Zenith | 8692654 |
| 1117 | 36900.37000.37100.38000.39000.44900.197800.914600 | Concreting | 1d | 2026-04-12 | 2026-04-12 | 1115FS+1d, 1116 |  | Zenith | 8692644 |

| ID | WBS | Task | Duration | Start | Finish | Predecessors | Constraint | Calendar | Unique_Task_ID |
| --- | --- | --- | --- | --- | --- | --- | --- | --- | --- |
| 1118 | 36900.37000.37100.38000.39000.44900.196900 | **27th floor roof slab** | 8d | 2026-04-13 | 2026-04-20 |  | start no earlier than 2026-04-13 | Zenith | 8653634 |
| 1119 | 36900.37000.37100.38000.39000.44900.196900.914700 | Reinforcement | 5d | 2026-04-13 | 2026-04-17 | 1117 |  | Zenith | 8692634 |
| 1120 | 36900.37000.37100.38000.39000.44900.196900.914800 | Conduiting | 5d | 2026-04-14 | 2026-04-18 | 1119SS+1d |  | Zenith | 8692624 |
| 1121 | 36900.37000.37100.38000.39000.44900.196900.914900 | Formwork | 5d | 2026-04-15 | 2026-04-19 | 1119SS+2d |  | Zenith | 8692614 |
| 1122 | 36900.37000.37100.38000.39000.44900.196900.915000 | Concreting | 1d | 2026-04-20 | 2026-04-20 | 1120FS+1d, 1121 |  | Zenith | 8692604 |
| 1123 | 36900.37000.37100.38000.39000.44900.195700 | **28th floor roof slab** | 8d | 2026-04-21 | 2026-04-28 |  | start no earlier than 2026-04-21 | Zenith | 8653624 |
| 1124 | 36900.37000.37100.38000.39000.44900.195700.915100 | Reinforcement | 5d | 2026-04-21 | 2026-04-25 | 1122 |  | Zenith | 8692594 |
| 1125 | 36900.37000.37100.38000.39000.44900.195700.915200 | Conduiting | 5d | 2026-04-22 | 2026-04-26 | 1124SS+1d |  | Zenith | 8692584 |
| 1126 | 36900.37000.37100.38000.39000.44900.195700.915300 | Formwork | 5d | 2026-04-23 | 2026-04-27 | 1124SS+2d |  | Zenith | 8692574 |
| 1127 | 36900.37000.37100.38000.39000.44900.195700.915400 | Concreting | 1d | 2026-04-28 | 2026-04-28 | 1125FS+1d, 1126 |  | Zenith | 8692564 |
| 1128 | 36900.37000.37100.38000.39000.44900.195600 | **29th floor roof slab** | 8d | 2026-04-29 | 2026-05-06 |  | start no earlier than 2026-04-29 | Zenith | 8653614 |
| 1129 | 36900.37000.37100.38000.39000.44900.195600.915500 | Reinforcement | 5d | 2026-04-29 | 2026-05-03 | 1127 |  | Zenith | 8692554 |
| 1130 | 36900.37000.37100.38000.39000.44900.195600.915600 | Conduiting | 5d | 2026-04-30 | 2026-05-04 | 1129SS+1d |  | Zenith | 8692544 |
| 1131 | 36900.37000.37100.38000.39000.44900.195600.915700 | Formwork | 5d | 2026-05-01 | 2026-05-05 | 1129SS+2d |  | Zenith | 8692534 |
| 1132 | 36900.37000.37100.38000.39000.44900.195600.915800 | Concreting | 1d | 2026-05-06 | 2026-05-06 | 1130FS+1d, 1131 |  | Zenith | 8692524 |
| 1133 | 36900.37000.37100.38000.39000.44900.195000 | **30th floor roof slab** | 10d | 2026-05-07 | 2026-05-16 |  | start no earlier than 2026-05-07 | Zenith | 8653604 |
| 1134 | 36900.37000.37100.38000.39000.44900.195000.915900 | Reinforcement | 7d | 2026-05-07 | 2026-05-13 | 1132 |  | Zenith | 8692514 |
| 1135 | 36900.37000.37100.38000.39000.44900.195000.916000 | Conduiting | 7d | 2026-05-08 | 2026-05-14 | 1134SS+1d |  | Zenith | 8692504 |
| 1136 | 36900.37000.37100.38000.39000.44900.195000.916100 | Formwork | 7d | 2026-05-09 | 2026-05-15 | 1134SS+2d |  | Zenith | 8692494 |
| 1137 | 36900.37000.37100.38000.39000.44900.195000.916200 | Concreting | 1d | 2026-05-16 | 2026-05-16 | 1135FS+1d, 1136 |  | Zenith | 8692484 |
| 1138 | 36900.37000.37100.38000.39000.44900.194000 | **31st floor roof slab** | 10d | 2026-05-17 | 2026-05-26 |  | start no earlier than 2026-05-17 | Zenith | 8653594 |
| 1139 | 36900.37000.37100.38000.39000.44900.194000.916300 | Reinforcement | 7d | 2026-05-17 | 2026-05-23 | 1137 |  | Zenith | 8692474 |
| 1140 | 36900.37000.37100.38000.39000.44900.194000.916400 | Conduiting | 7d | 2026-05-18 | 2026-05-24 | 1139SS+1d |  | Zenith | 8692464 |
| 1141 | 36900.37000.37100.38000.39000.44900.194000.916500 | Formwork | 7d | 2026-05-19 | 2026-05-25 | 1139SS+2d |  | Zenith | 8692454 |
| 1142 | 36900.37000.37100.38000.39000.44900.194000.916600 | Concreting | 1d | 2026-05-26 | 2026-05-26 | 1140FS+1d, 1141 |  | Zenith | 8692444 |

| ID | WBS | Task | Duration | Start | Finish | Predecessors | Constraint | Calendar | Unique_Task_ID |
| --- | --- | --- | --- | --- | --- | --- | --- | --- | --- |
| 1143 | 36900.37000.37100.38000.39000.44900.193900 | **32nd floor roof slab** | 10d | 2026-05-27 | 2026-06-05 |  | start no earlier than 2026-05-27 | Zenith | 8653584 |
| 1144 | 36900.37000.37100.38000.39000.44900.193900.916700 | Reinforcement | 7d | 2026-05-27 | 2026-06-02 | 1142 |  | Zenith | 8692434 |
| 1145 | 36900.37000.37100.38000.39000.44900.193900.916800 | Conduiting | 7d | 2026-05-28 | 2026-06-03 | 1144SS+1d |  | Zenith | 8692424 |
| 1146 | 36900.37000.37100.38000.39000.44900.193900.916900 | Formwork | 7d | 2026-05-29 | 2026-06-04 | 1144SS+2d |  | Zenith | 8692414 |
| 1147 | 36900.37000.37100.38000.39000.44900.193900.917000 | Concreting | 1d | 2026-06-05 | 2026-06-05 | 1145FS+1d, 1146 |  | Zenith | 8692404 |
| 1148 | 36900.37000.37100.38000.39000.44900.192900 | **33rd floor roof slab** | 10d | 2026-06-06 | 2026-06-15 |  | start no earlier than 2026-06-06 | Zenith | 8653564 |
| 1149 | 36900.37000.37100.38000.39000.44900.192900.917100 | Reinforcement | 7d | 2026-06-06 | 2026-06-12 | 1147 |  | Zenith | 8692394 |
| 1150 | 36900.37000.37100.38000.39000.44900.192900.917200 | Conduiting | 7d | 2026-06-07 | 2026-06-13 | 1149SS+1d |  | Zenith | 8692384 |
| 1151 | 36900.37000.37100.38000.39000.44900.192900.917300 | Formwork | 7d | 2026-06-08 | 2026-06-14 | 1149SS+2d |  | Zenith | 8692374 |
| 1152 | 36900.37000.37100.38000.39000.44900.192900.917400 | Concreting | 1d | 2026-06-15 | 2026-06-15 | 1150FS+1d, 1151 |  | Zenith | 8692364 |
| 1153 | 36900.37000.37100.38000.39000.44900.192800 | **34th floor roof slab** | 10d | 2026-06-16 | 2026-06-25 |  | start no earlier than 2026-06-16 | Zenith | 8653554 |
| 1154 | 36900.37000.37100.38000.39000.44900.192800.917500 | Reinforcement | 7d | 2026-06-16 | 2026-06-22 | 1152 |  | Zenith | 8692354 |
| 1155 | 36900.37000.37100.38000.39000.44900.192800.917600 | Conduiting | 7d | 2026-06-17 | 2026-06-23 | 1154SS+1d |  | Zenith | 8692344 |
| 1156 | 36900.37000.37100.38000.39000.44900.192800.917700 | Formwork | 7d | 2026-06-18 | 2026-06-24 | 1154SS+2d |  | Zenith | 8692334 |
| 1157 | 36900.37000.37100.38000.39000.44900.192800.917800 | Concreting | 1d | 2026-06-25 | 2026-06-25 | 1155FS+1d, 1156 |  | Zenith | 8692324 |
| 1158 | 36900.37000.37100.38000.39000.44900.192100 | **Terrace floor slab** | 18d | 2026-06-26 | 2026-07-13 |  | start no earlier than 2026-06-26 | Zenith | 8653544 |
| 1159 | 36900.37000.37100.38000.39000.44900.192100.917900 | Reinforcement | 14d | 2026-06-26 | 2026-07-09 | 1157 |  | Zenith | 8692314 |
| 1160 | 36900.37000.37100.38000.39000.44900.192100.918000 | Conduiting | 14d | 2026-06-27 | 2026-07-10 | 1159SS+1d |  | Zenith | 8692304 |
| 1161 | 36900.37000.37100.38000.39000.44900.192100.918100 | Formwork | 14d | 2026-06-28 | 2026-07-11 | 1159SS+2d |  | Zenith | 8692294 |
| 1162 | 36900.37000.37100.38000.39000.44900.192100.918200 | Concreting | 2d | 2026-07-12 | 2026-07-13 | 1160FS+1d, 1161 |  | Zenith | 8692284 |
| 1163 | 36900.37000.37100.38000.39000.44900.192000 | **OHT, Mumty & Machine Room, Parapet** | 35d | 2026-07-14 | 2026-08-17 |  | start no earlier than 2026-07-14 | Zenith | 8653534 |
| 1164 | 36900.37000.37100.38000.39000.44900.192000.918300 | Reinforcement | 20d | 2026-07-14 | 2026-08-02 | 1162 |  | Zenith | 8692274 |
| 1165 | 36900.37000.37100.38000.39000.44900.192000.918400 | Flanges fixing & Conduiting | 10d | 2026-07-15 | 2026-07-24 | 1164SS+1d |  | Zenith | 8692264 |
| 1166 | 36900.37000.37100.38000.39000.44900.192000.918500 | Formwork | 25d | 2026-07-20 | 2026-08-13 | 1164SS+6d |  | Zenith | 8692254 |
| 1167 | 36900.37000.37100.38000.39000.44900.192000.918600 | Concreting | 4d | 2026-08-14 | 2026-08-17 | 1165FS+5d, 1166 |  | Zenith | 8692244 |

| ID | WBS | Task | Duration | Start | Finish | Predecessors | Constraint | Calendar | Unique_Task_ID |
| --- | --- | --- | --- | --- | --- | --- | --- | --- | --- |
| 1168 | 36900.37000.37100.38000.39000.47500 | **Post Pour Activities** | 323.25d | 2025-08-22 | 2026-08-25 |  | start no earlier than 2025-08-22 | Zenith | 8648034 |
| 1169 | 36900.37000.37100.38000.39000.47500.787500 | 1st Floor | 7d | 2025-08-22 | 2025-08-28 | 1007 |  | Zenith | 8725924 |
| 1170 | 36900.37000.37100.38000.39000.47500.787600 | 2nd Floor | 7d | 2025-08-31 | 2025-09-07 | 1169FS+0.25d, 1012FS+0.25d |  | Zenith | 8725914 |
| 1171 | 36900.37000.37100.38000.39000.47500.787700 | 3rd Floor | 7d | 2025-09-09 | 2025-09-16 | 1170FS+0.25d, 1017FS+0.25d |  | Zenith | 8725904 |
| 1172 | 36900.37000.37100.38000.39000.47500.787800 | 4th Floor | 7d | 2025-09-18 | 2025-09-25 | 1171FS+0.25d, 1022FS+0.25d |  | Zenith | 8725894 |
| 1173 | 36900.37000.37100.38000.39000.47500.787900 | 5th Floor | 7d | 2025-09-27 | 2025-10-04 | 1172FS+0.25d, 1027FS+0.25d |  | Zenith | 8725884 |
| 1174 | 36900.37000.37100.38000.39000.47500.788000 | 6th Floor | 7d | 2025-10-06 | 2025-10-13 | 1173FS+0.25d, 1032FS+0.25d |  | Zenith | 8725874 |
| 1175 | 36900.37000.37100.38000.39000.47500.788100 | 7th Floor | 7d | 2025-10-15 | 2025-10-22 | 1174FS+0.25d, 1037FS+0.25d |  | Zenith | 8725864 |
| 1176 | 36900.37000.37100.38000.39000.47500.788200 | 8th Floor | 7d | 2025-10-24 | 2025-10-31 | 1175FS+0.25d, 1042FS+0.25d |  | Zenith | 8725854 |
| 1177 | 36900.37000.37100.38000.39000.47500.788300 | 9th Floor | 7d | 2025-12-17 | 2025-12-24 | 1176FS+0.25d, 1047FS+0.25d |  | Zenith | 8725844 |
| 1178 | 36900.37000.37100.38000.39000.47500.788400 | 10th Floor | 7d | 2025-12-26 | 2026-01-02 | 1177FS+0.25d, 1052FS+0.25d |  | Zenith | 8725834 |
| 1179 | 36900.37000.37100.38000.39000.47500.788500 | 11th Floor | 7d | 2026-01-04 | 2026-01-11 | 1178FS+0.25d, 1057FS+0.25d |  | Zenith | 8725824 |
| 1180 | 36900.37000.37100.38000.39000.47500.788600 | 12th Floor | 7d | 2026-01-13 | 2026-01-20 | 1179FS+0.25d, 1062FS+0.25d |  | Zenith | 8725814 |
| 1181 | 36900.37000.37100.38000.39000.47500.788700 | 13th Floor | 7d | 2026-01-22 | 2026-01-29 | 1180FS+0.25d, 1067FS+0.25d |  | Zenith | 8725804 |
| 1182 | 36900.37000.37100.38000.39000.47500.788800 | 14th Floor | 7d | 2026-01-31 | 2026-02-07 | 1181FS+0.25d, 1072FS+0.25d |  | Zenith | 8725794 |
| 1183 | 36900.37000.37100.38000.39000.47500.788900 | 15th Floor | 7d | 2026-02-08 | 2026-02-15 | 1182FS+0.25d, 1077FS+0.25d |  | Zenith | 8725784 |
| 1184 | 36900.37000.37100.38000.39000.47500.789000 | 16th Floor | 7d | 2026-02-16 | 2026-02-23 | 1183FS+0.25d, 1082FS+0.25d |  | Zenith | 8725774 |
| 1185 | 36900.37000.37100.38000.39000.47500.789100 | 17th Floor | 7d | 2026-02-24 | 2026-03-03 | 1184FS+0.25d, 1087FS+0.25d |  | Zenith | 8725764 |
| 1186 | 36900.37000.37100.38000.39000.47500.789200 | 18th Floor | 7d | 2026-03-04 | 2026-03-11 | 1185FS+0.25d, 1092FS+0.25d |  | Zenith | 8725754 |
| 1187 | 36900.37000.37100.38000.39000.47500.789300 | 19th Floor | 7d | 2026-03-12 | 2026-03-19 | 1186FS+0.25d, 1097FS+0.25d |  | Zenith | 8725744 |
| 1188 | 36900.37000.37100.38000.39000.47500.789400 | 20th Floor | 7d | 2026-03-20 | 2026-03-27 | 1187FS+0.25d, 1102FS+0.25d |  | Zenith | 8725734 |
| 1189 | 36900.37000.37100.38000.39000.47500.789500 | 21st Floor | 7d | 2026-03-28 | 2026-04-04 | 1188FS+0.25d, 1107FS+0.25d |  | Zenith | 8725724 |
| 1190 | 36900.37000.37100.38000.39000.47500.789600 | 22nd Floor | 7d | 2026-04-05 | 2026-04-12 | 1189FS+0.25d, 1112FS+0.25d |  | Zenith | 8725714 |
| 1191 | 36900.37000.37100.38000.39000.47500.789700 | 23rd Floor | 7d | 2026-04-13 | 2026-04-20 | 1190FS+0.25d, 1117FS+0.25d |  | Zenith | 8725704 |
| 1192 | 36900.37000.37100.38000.39000.47500.789800 | 24th Floor | 7d | 2026-04-21 | 2026-04-28 | 1191FS+0.25d, 1122FS+0.25d |  | Zenith | 8725694 |
| 1193 | 36900.37000.37100.38000.39000.47500.789900 | 25th Floor | 7d | 2026-04-29 | 2026-05-06 | 1192FS+0.25d, 1127FS+0.25d |  | Zenith | 8725684 |
| 1194 | 36900.37000.37100.38000.39000.47500.790000 | 26th Floor | 7d | 2026-05-07 | 2026-05-14 | 1193FS+0.25d, 1132FS+0.25d |  | Zenith | 8725674 |
| 1195 | 36900.37000.37100.38000.39000.47500.790100 | 27th Floor | 7d | 2026-05-17 | 2026-05-24 | 1194FS+0.25d, 1137FS+0.25d |  | Zenith | 8725664 |
| 1196 | 36900.37000.37100.38000.39000.47500.790200 | 28th Floor | 7d | 2026-05-27 | 2026-06-03 | 1195FS+0.25d, 1142FS+0.25d |  | Zenith | 8725654 |
| 1197 | 36900.37000.37100.38000.39000.47500.790300 | 29th Floor | 7d | 2026-06-06 | 2026-06-13 | 1196FS+0.25d, 1147FS+0.25d |  | Zenith | 8725644 |
| 1198 | 36900.37000.37100.38000.39000.47500.790400 | 30th Floor | 7d | 2026-06-16 | 2026-06-23 | 1197FS+0.25d, 1152FS+0.25d |  | Zenith | 8725634 |
| 1199 | 36900.37000.37100.38000.39000.47500.790500 | 31st Floor | 7d | 2026-06-26 | 2026-07-03 | 1198FS+0.25d, 1157FS+0.25d |  | Zenith | 8725624 |
| 1200 | 36900.37000.37100.38000.39000.47500.790600 | 32nd Flood | 7d | 2026-07-14 | 2026-07-21 | 1199FS+0.25d, 1162FS+0.25d |  | Zenith | 8725614 |
| 1201 | 36900.37000.37100.38000.39000.47500.790700 | 33rd Floor | 7d | 2026-07-21 | 2026-07-28 | 1200 |  | Zenith | 8725604 |
| 1202 | 36900.37000.37100.38000.39000.47500.790800 | 34th Floor | 7d | 2026-07-28 | 2026-08-04 | 1201 |  | Zenith | 8725594 |
| 1203 | 36900.37000.37100.38000.39000.47500.790900 | 35th Floor | 7d | 2026-08-04 | 2026-08-11 | 1202 |  | Zenith | 8725584 |
| 1204 | 36900.37000.37100.38000.39000.47500.791000 | Terrace | 7d | 2026-08-11 | 2026-08-18 | 1203 |  | Zenith | 8725574 |
| 1205 | 36900.37000.37100.38000.39000.47500.791100 | Mumty & Machine Room | 7d | 2026-08-18 | 2026-08-25 | 1204 |  | Zenith | 8725564 |

| ID | WBS | Task | Duration | Start | Finish | Predecessors | Constraint | Calendar | Unique_Task_ID |
| --- | --- | --- | --- | --- | --- | --- | --- | --- | --- |
| 1206 | 36900.37000.37100.38000.39000.40800 | **Finishing work** | 550d | 2025-08-29 | 2027-05-30 |  | start no earlier than 2025-08-29 | Zenith | 8647764 |
| 1207 | 36900.37000.37100.38000.39000.40800.41900 | **Flat finishing** | 550d | 2025-08-29 | 2027-05-30 |  | start no earlier than 2025-08-29 | Zenith | 8647854 |
| 1208 | 36900.37000.37100.38000.39000.40800.41900.86000 | **1st Floor roof** | 79d | 2025-08-29 | 2025-12-30 |  | start no earlier than 2025-08-29 | Zenith | 8648784 |
| 1209 | 36900.37000.37100.38000.39000.40800.41900.86000.1337400 | Block Work | 6d | 2025-08-29 | 2025-09-03 | 1169 |  | Zenith | 8662254 |
| 1210 | 36900.37000.37100.38000.39000.40800.41900.86000.1337500 | Fire sprinkler pipe fixing | 5d | 2025-09-04 | 2025-09-08 | 1209 |  | Zenith | 8662264 |
| 1211 | 36900.37000.37100.38000.39000.40800.41900.86000.1337600 | Internal Plumbing Works | 5d | 2025-09-04 | 2025-09-08 | 1209 |  | Zenith | 8662274 |
| 1212 | 36900.37000.37100.38000.39000.40800.41900.86000.1337700 | Waterproofing | 5d | 2025-09-09 | 2025-09-13 | 1211 |  | Zenith | 8662284 |
| 1213 | 36900.37000.37100.38000.39000.40800.41900.86000.1337800 | Internal Plaster | 9d | 2025-09-10 | 2025-09-18 | 1211, 1212FF+5d |  | Zenith | 8662294 |
| 1214 | 36900.37000.37100.38000.39000.40800.41900.86000.1337900 | IPS flooring work | 7d | 2025-09-19 | 2025-09-25 | 1213 |  | Zenith | 8662304 |
| 1215 | 36900.37000.37100.38000.39000.40800.41900.86000.1338000 | Toilet dado work | 6d | 2025-09-19 | 2025-09-24 | 1212, 1213 |  | Zenith | 8662314 |
| 1216 | 36900.37000.37100.38000.39000.40800.41900.86000.1338100 | Toilet flooring work | 7d | 2025-09-25 | 2025-10-01 | 1215 |  | Zenith | 8662324 |
| 1217 | 36900.37000.37100.38000.39000.40800.41900.86000.1338200 | False Cieling panel fixing | 7d | 2025-10-02 | 2025-10-08 | 1216 |  | Zenith | 8662334 |
| 1218 | 36900.37000.37100.38000.39000.40800.41900.86000.1338300 | Living dinning flooring | 7d | 2025-10-02 | 2025-10-08 | 1216 |  | Zenith | 8662344 |
| 1219 | 36900.37000.37100.38000.39000.40800.41900.86000.1338400 | Putty primer coat | 8d | 2025-10-09 | 2025-10-16 | 1218 |  | Zenith | 8662354 |
| 1220 | 36900.37000.37100.38000.39000.40800.41900.86000.1338500 | Aluminium door-window fixing | 12d | 2025-10-09 | 2025-10-20 | 1214, 1218 |  | Zenith | 8662364 |
| 1221 | 36900.37000.37100.38000.39000.40800.41900.86000.1338600 | Door shutter fixing (Pre Hung) | 8d | 2025-10-17 | 2025-10-24 | 1219 |  | Zenith | 8662374 |
| 1222 | 36900.37000.37100.38000.39000.40800.41900.86000.1338700 | Electrical wiring work | 10d | 2025-10-25 | 2025-12-18 | 1221 |  | Zenith | 8662384 |
| 1223 | 36900.37000.37100.38000.39000.40800.41900.86000.1338800 | Painting 1st coat | 12d | 2025-12-19 | 2025-12-30 | 1222 |  | Zenith | 8662394 |
| 1224 | 36900.37000.37100.38000.39000.40800.41900.86100 | **2nd floor roof** | 81.75d | 2025-09-07 | 2026-01-11 |  | start no earlier than 2025-09-07 | Zenith | 8648794 |
| 1225 | 36900.37000.37100.38000.39000.40800.41900.86100.1338900 | Block Work | 6d | 2025-09-07 | 2025-09-13 | 1170, 1209 |  | Zenith | 8662404 |
| 1226 | 36900.37000.37100.38000.39000.40800.41900.86100.1339000 | Fire sprinkler pipe fixing | 5d | 2025-09-13 | 2025-09-18 | 1210, 1225 |  | Zenith | 8662414 |
| 1227 | 36900.37000.37100.38000.39000.40800.41900.86100.1339100 | Internal Plumbing Works | 5d | 2025-09-13 | 2025-09-18 | 1211, 1225 |  | Zenith | 8662424 |
| 1228 | 36900.37000.37100.38000.39000.40800.41900.86100.1339200 | Waterproofing | 5d | 2025-09-18 | 2025-09-23 | 1212, 1227 |  | Zenith | 8662434 |
| 1229 | 36900.37000.37100.38000.39000.40800.41900.86100.1339300 | Internal Plaster | 9d | 2025-09-19 | 2025-09-28 | 1213, 1227, 1228FF+5d |  | Zenith | 8662444 |
| 1230 | 36900.37000.37100.38000.39000.40800.41900.86100.1339400 | IPS flooring work | 7d | 2025-09-28 | 2025-10-05 | 1214, 1229 |  | Zenith | 8662454 |
| 1231 | 36900.37000.37100.38000.39000.40800.41900.86100.1339500 | Toilet dado work | 6d | 2025-09-28 | 2025-10-04 | 1215, 1228, 1229 |  | Zenith | 8662464 |
| 1232 | 36900.37000.37100.38000.39000.40800.41900.86100.1339600 | Toilet flooring work | 7d | 2025-10-04 | 2025-10-11 | 1216, 1231 |  | Zenith | 8662474 |
| 1233 | 36900.37000.37100.38000.39000.40800.41900.86100.1339700 | False Cieling panel fixing | 7d | 2025-10-11 | 2025-10-18 | 1217, 1232 |  | Zenith | 8662484 |
| 1234 | 36900.37000.37100.38000.39000.40800.41900.86100.1339800 | Living dinning flooring | 7d | 2025-10-11 | 2025-10-18 | 1218, 1232 |  | Zenith | 8662494 |
| 1235 | 36900.37000.37100.38000.39000.40800.41900.86100.1339900 | Putty primer coat | 8d | 2025-10-18 | 2025-10-26 | 1219, 1234 |  | Zenith | 8662504 |
| 1236 | 36900.37000.37100.38000.39000.40800.41900.86100.1340000 | Aluminium door-window fixing | 12d | 2025-10-21 | 2025-12-16 | 1220, 1230, 1234 |  | Zenith | 8662514 |
| 1237 | 36900.37000.37100.38000.39000.40800.41900.86100.1340100 | Door shutter fixing (Pre Hung) | 8d | 2025-10-26 | 2025-12-18 | 1221, 1235 |  | Zenith | 8662524 |
| 1238 | 36900.37000.37100.38000.39000.40800.41900.86100.1340200 | Electrical wiring work | 10d | 2025-12-19 | 2025-12-28 | 1222, 1237 |  | Zenith | 8662534 |
| 1239 | 36900.37000.37100.38000.39000.40800.41900.86100.1340300 | Painting 1st coat | 12d | 2025-12-31 | 2026-01-11 | 1223, 1238 |  | Zenith | 8662544 |

| ID | WBS | Task | Duration | Start | Finish | Predecessors | Constraint | Calendar | Unique_Task_ID |
| --- | --- | --- | --- | --- | --- | --- | --- | --- | --- |
| 1240 | 36900.37000.37100.38000.39000.40800.41900.86200 | **3rd floor roof** | 84.75d | 2025-09-16 | 2026-01-23 |  | start no earlier than 2025-09-16 | Zenith | 8648804 |
| 1241 | 36900.37000.37100.38000.39000.40800.41900.86200.1340400 | Block Work | 6d | 2025-09-16 | 2025-09-22 | 1171, 1225 |  | Zenith | 8662554 |
| 1242 | 36900.37000.37100.38000.39000.40800.41900.86200.1340500 | Fire sprinkler pipe fixing | 5d | 2025-09-22 | 2025-09-27 | 1226, 1241 |  | Zenith | 8662564 |
| 1243 | 36900.37000.37100.38000.39000.40800.41900.86200.1340600 | Internal Plumbing Works | 5d | 2025-09-22 | 2025-09-27 | 1227, 1241 |  | Zenith | 8662574 |
| 1244 | 36900.37000.37100.38000.39000.40800.41900.86200.1340700 | Waterproofing | 5d | 2025-09-27 | 2025-10-02 | 1228, 1243 |  | Zenith | 8662584 |
| 1245 | 36900.37000.37100.38000.39000.40800.41900.86200.1340800 | Internal Plaster | 9d | 2025-09-28 | 2025-10-07 | 1229, 1243, 1244FF+5d |  | Zenith | 8662594 |
| 1246 | 36900.37000.37100.38000.39000.40800.41900.86200.1340900 | IPS flooring work | 7d | 2025-10-07 | 2025-10-14 | 1230, 1245 |  | Zenith | 8662604 |
| 1247 | 36900.37000.37100.38000.39000.40800.41900.86200.1341000 | Toilet dado work | 6d | 2025-10-07 | 2025-10-13 | 1231, 1244, 1245 |  | Zenith | 8662614 |
| 1248 | 36900.37000.37100.38000.39000.40800.41900.86200.1341100 | Toilet flooring work | 7d | 2025-10-13 | 2025-10-20 | 1232, 1247 |  | Zenith | 8662624 |
| 1249 | 36900.37000.37100.38000.39000.40800.41900.86200.1341200 | False Cieling panel fixing | 7d | 2025-10-20 | 2025-10-27 | 1233, 1248 |  | Zenith | 8662634 |
| 1250 | 36900.37000.37100.38000.39000.40800.41900.86200.1341300 | Living dinning flooring | 7d | 2025-10-20 | 2025-10-27 | 1234, 1248 |  | Zenith | 8662644 |
| 1251 | 36900.37000.37100.38000.39000.40800.41900.86200.1341400 | Putty primer coat | 8d | 2025-10-27 | 2025-12-19 | 1235, 1250 |  | Zenith | 8662654 |
| 1252 | 36900.37000.37100.38000.39000.40800.41900.86200.1341500 | Aluminium door-window fixing | 12d | 2025-12-17 | 2025-12-28 | 1236, 1246, 1250 |  | Zenith | 8662664 |
| 1253 | 36900.37000.37100.38000.39000.40800.41900.86200.1341600 | Door shutter fixing (Pre Hung) | 8d | 2025-12-19 | 2025-12-27 | 1237, 1251 |  | Zenith | 8662674 |
| 1254 | 36900.37000.37100.38000.39000.40800.41900.86200.1341700 | Electrical wiring work | 10d | 2025-12-29 | 2026-01-07 | 1238, 1253 |  | Zenith | 8662684 |
| 1255 | 36900.37000.37100.38000.39000.40800.41900.86200.1341800 | Painting 1st coat | 12d | 2026-01-12 | 2026-01-23 | 1239, 1254 |  | Zenith | 8662694 |
| 1256 | 36900.37000.37100.38000.39000.40800.41900.86300 | **4th floor roof** | 87.75d | 2025-09-25 | 2026-02-04 |  | start no earlier than 2025-09-25 | Zenith | 8648814 |
| 1257 | 36900.37000.37100.38000.39000.40800.41900.86300.1341900 | Block Work | 6d | 2025-09-25 | 2025-10-01 | 1172, 1241 |  | Zenith | 8662704 |
| 1258 | 36900.37000.37100.38000.39000.40800.41900.86300.1342000 | Fire sprinkler pipe fixing | 5d | 2025-10-01 | 2025-10-06 | 1242, 1257 |  | Zenith | 8662714 |
| 1259 | 36900.37000.37100.38000.39000.40800.41900.86300.1342100 | Internal Plumbing Works | 5d | 2025-10-01 | 2025-10-06 | 1243, 1257 |  | Zenith | 8662724 |
| 1260 | 36900.37000.37100.38000.39000.40800.41900.86300.1342200 | Waterproofing | 5d | 2025-10-06 | 2025-10-11 | 1244, 1259 |  | Zenith | 8662734 |
| 1261 | 36900.37000.37100.38000.39000.40800.41900.86300.1342300 | Internal Plaster | 9d | 2025-10-07 | 2025-10-16 | 1245, 1259, 1260FF+5d |  | Zenith | 8662744 |
| 1262 | 36900.37000.37100.38000.39000.40800.41900.86300.1342400 | IPS flooring work | 7d | 2025-10-16 | 2025-10-23 | 1246, 1261 |  | Zenith | 8662754 |
| 1263 | 36900.37000.37100.38000.39000.40800.41900.86300.1342500 | Toilet dado work | 6d | 2025-10-16 | 2025-10-22 | 1247, 1260, 1261 |  | Zenith | 8662764 |
| 1264 | 36900.37000.37100.38000.39000.40800.41900.86300.1342600 | Toilet flooring work | 7d | 2025-10-22 | 2025-10-29 | 1248, 1263 |  | Zenith | 8662774 |
| 1265 | 36900.37000.37100.38000.39000.40800.41900.86300.1342700 | False Cieling panel fixing | 7d | 2025-10-29 | 2025-12-20 | 1249, 1264 |  | Zenith | 8662784 |
| 1266 | 36900.37000.37100.38000.39000.40800.41900.86300.1342800 | Living dinning flooring | 7d | 2025-10-29 | 2025-12-20 | 1250, 1264 |  | Zenith | 8662794 |
| 1267 | 36900.37000.37100.38000.39000.40800.41900.86300.1342900 | Putty primer coat | 8d | 2025-12-20 | 2025-12-28 | 1251, 1266 |  | Zenith | 8662804 |
| 1268 | 36900.37000.37100.38000.39000.40800.41900.86300.1343000 | Aluminium door-window fixing | 12d | 2025-12-29 | 2026-01-09 | 1252, 1262, 1266 |  | Zenith | 8662814 |
| 1269 | 36900.37000.37100.38000.39000.40800.41900.86300.1343100 | Door shutter fixing (Pre Hung) | 8d | 2025-12-28 | 2026-01-05 | 1253, 1267 |  | Zenith | 8662824 |
| 1270 | 36900.37000.37100.38000.39000.40800.41900.86300.1343200 | Electrical wiring work | 10d | 2026-01-08 | 2026-01-17 | 1254, 1269 |  | Zenith | 8662834 |
| 1271 | 36900.37000.37100.38000.39000.40800.41900.86300.1343300 | Painting 1st coat | 12d | 2026-01-24 | 2026-02-04 | 1255, 1270 |  | Zenith | 8662844 |

| ID | WBS | Task | Duration | Start | Finish | Predecessors | Constraint | Calendar | Unique_Task_ID |
| --- | --- | --- | --- | --- | --- | --- | --- | --- | --- |
| 1272 | 36900.37000.37100.38000.39000.40800.41900.86400 | **5th floor roof** | 90.75d | 2025-10-04 | 2026-02-16 |  | start no earlier than 2025-10-04 | Zenith | 8648824 |
| 1273 | 36900.37000.37100.38000.39000.40800.41900.86400.1343400 | Block Work | 6d | 2025-10-04 | 2025-10-10 | 1173, 1257 |  | Zenith | 8662854 |
| 1274 | 36900.37000.37100.38000.39000.40800.41900.86400.1343500 | Fire sprinkler pipe fixing | 5d | 2025-10-10 | 2025-10-15 | 1258, 1273 |  | Zenith | 8662864 |
| 1275 | 36900.37000.37100.38000.39000.40800.41900.86400.1343600 | Internal Plumbing Works | 5d | 2025-10-10 | 2025-10-15 | 1259, 1273 |  | Zenith | 8662874 |
| 1276 | 36900.37000.37100.38000.39000.40800.41900.86400.1343700 | Waterproofing | 5d | 2025-10-15 | 2025-10-20 | 1260, 1275 |  | Zenith | 8662884 |
| 1277 | 36900.37000.37100.38000.39000.40800.41900.86400.1343800 | Internal Plaster | 9d | 2025-10-16 | 2025-10-25 | 1261, 1275, 1276FF+5d |  | Zenith | 8662894 |
| 1278 | 36900.37000.37100.38000.39000.40800.41900.86400.1343900 | IPS flooring work | 7d | 2025-10-25 | 2025-12-16 | 1262, 1277 |  | Zenith | 8662904 |
| 1279 | 36900.37000.37100.38000.39000.40800.41900.86400.1344000 | Toilet dado work | 6d | 2025-10-25 | 2025-10-31 | 1263, 1276, 1277 |  | Zenith | 8662914 |
| 1280 | 36900.37000.37100.38000.39000.40800.41900.86400.1344100 | Toilet flooring work | 7d | 2025-10-31 | 2025-12-22 | 1264, 1279 |  | Zenith | 8662924 |
| 1281 | 36900.37000.37100.38000.39000.40800.41900.86400.1344200 | False Cieling panel fixing | 7d | 2025-12-22 | 2025-12-29 | 1265, 1280 |  | Zenith | 8662934 |
| 1282 | 36900.37000.37100.38000.39000.40800.41900.86400.1344300 | Living dinning flooring | 7d | 2025-12-22 | 2025-12-29 | 1266, 1280 |  | Zenith | 8662944 |
| 1283 | 36900.37000.37100.38000.39000.40800.41900.86400.1344400 | Putty primer coat | 8d | 2025-12-29 | 2026-01-06 | 1267, 1282 |  | Zenith | 8662954 |
| 1284 | 36900.37000.37100.38000.39000.40800.41900.86400.1344500 | Aluminium door-window fixing | 12d | 2026-01-10 | 2026-01-21 | 1268, 1278, 1282 |  | Zenith | 8662964 |
| 1285 | 36900.37000.37100.38000.39000.40800.41900.86400.1344600 | Door shutter fixing (Pre Hung) | 8d | 2026-01-06 | 2026-01-14 | 1269, 1283 |  | Zenith | 8662974 |
| 1286 | 36900.37000.37100.38000.39000.40800.41900.86400.1344700 | Electrical wiring work | 10d | 2026-01-18 | 2026-01-27 | 1270, 1285 |  | Zenith | 8662984 |
| 1287 | 36900.37000.37100.38000.39000.40800.41900.86400.1344800 | Painting 1st coat | 12d | 2026-02-05 | 2026-02-16 | 1271, 1286 |  | Zenith | 8662994 |
| 1288 | 36900.37000.37100.38000.39000.40800.41900.86500 | **6th floor roof** | 93.75d | 2025-10-13 | 2026-02-28 |  | start no earlier than 2025-10-13 | Zenith | 8648834 |
| 1289 | 36900.37000.37100.38000.39000.40800.41900.86500.1344900 | Block Work | 6d | 2025-10-13 | 2025-10-19 | 1174, 1273 |  | Zenith | 8663004 |
| 1290 | 36900.37000.37100.38000.39000.40800.41900.86500.1345000 | Fire sprinkler pipe fixing | 5d | 2025-10-19 | 2025-10-24 | 1274, 1289 |  | Zenith | 8663014 |
| 1291 | 36900.37000.37100.38000.39000.40800.41900.86500.1345100 | Internal Plumbing Works | 5d | 2025-10-19 | 2025-10-24 | 1275, 1289 |  | Zenith | 8663024 |
| 1292 | 36900.37000.37100.38000.39000.40800.41900.86500.1345200 | Waterproofing | 5d | 2025-10-24 | 2025-10-29 | 1276, 1291 |  | Zenith | 8663034 |
| 1293 | 36900.37000.37100.38000.39000.40800.41900.86500.1345300 | Internal Plaster | 9d | 2025-10-25 | 2025-12-18 | 1277, 1291, 1292FF+5d |  | Zenith | 8663044 |
| 1294 | 36900.37000.37100.38000.39000.40800.41900.86500.1345400 | IPS flooring work | 7d | 2025-12-18 | 2025-12-25 | 1278, 1293 |  | Zenith | 8663054 |
| 1295 | 36900.37000.37100.38000.39000.40800.41900.86500.1345500 | Toilet dado work | 6d | 2025-12-18 | 2025-12-24 | 1279, 1292, 1293 |  | Zenith | 8663064 |
| 1296 | 36900.37000.37100.38000.39000.40800.41900.86500.1345600 | Toilet flooring work | 7d | 2025-12-24 | 2025-12-31 | 1280, 1295 |  | Zenith | 8663074 |
| 1297 | 36900.37000.37100.38000.39000.40800.41900.86500.1345700 | False Cieling panel fixing | 7d | 2025-12-31 | 2026-01-07 | 1281, 1296 |  | Zenith | 8663084 |
| 1298 | 36900.37000.37100.38000.39000.40800.41900.86500.1345800 | Living dinning flooring | 7d | 2025-12-31 | 2026-01-07 | 1282, 1296 |  | Zenith | 8663094 |
| 1299 | 36900.37000.37100.38000.39000.40800.41900.86500.1345900 | Putty primer coat | 8d | 2026-01-07 | 2026-01-15 | 1283, 1298 |  | Zenith | 8663104 |
| 1300 | 36900.37000.37100.38000.39000.40800.41900.86500.1346000 | Aluminium door-window fixing | 12d | 2026-01-22 | 2026-02-02 | 1284, 1294, 1298 |  | Zenith | 8663114 |
| 1301 | 36900.37000.37100.38000.39000.40800.41900.86500.1346100 | Door shutter fixing (Pre Hung) | 8d | 2026-01-15 | 2026-01-23 | 1285, 1299 |  | Zenith | 8663124 |
| 1302 | 36900.37000.37100.38000.39000.40800.41900.86500.1346200 | Electrical wiring work | 10d | 2026-01-28 | 2026-02-06 | 1286, 1301 |  | Zenith | 8663134 |
| 1303 | 36900.37000.37100.38000.39000.40800.41900.86500.1346300 | Painting 1st coat | 12d | 2026-02-17 | 2026-02-28 | 1287, 1302 |  | Zenith | 8663144 |

| ID | WBS | Task | Duration | Start | Finish | Predecessors | Constraint | Calendar | Unique_Task_ID |
| --- | --- | --- | --- | --- | --- | --- | --- | --- | --- |
| 1304 | 36900.37000.37100.38000.39000.40800.41900.86600 | **7th floor roof** | 96.75d | 2025-10-22 | 2026-03-12 |  | start no earlier than 2025-10-22 | Zenith | 8648844 |
| 1305 | 36900.37000.37100.38000.39000.40800.41900.86600.1346400 | Block Work | 6d | 2025-10-22 | 2025-10-28 | 1175, 1289 |  | Zenith | 8663154 |
| 1306 | 36900.37000.37100.38000.39000.40800.41900.86600.1346500 | Fire sprinkler pipe fixing | 5d | 2025-10-28 | 2025-12-17 | 1290, 1305 |  | Zenith | 8663164 |
| 1307 | 36900.37000.37100.38000.39000.40800.41900.86600.1346600 | Internal Plumbing Works | 5d | 2025-10-28 | 2025-12-17 | 1291, 1305 |  | Zenith | 8663174 |
| 1308 | 36900.37000.37100.38000.39000.40800.41900.86600.1346700 | Waterproofing | 5d | 2025-12-17 | 2025-12-22 | 1292, 1307 |  | Zenith | 8663184 |
| 1309 | 36900.37000.37100.38000.39000.40800.41900.86600.1346800 | Internal Plaster | 9d | 2025-12-18 | 2025-12-27 | 1293, 1307, 1308FF+5d |  | Zenith | 8663194 |
| 1310 | 36900.37000.37100.38000.39000.40800.41900.86600.1346900 | IPS flooring work | 7d | 2025-12-27 | 2026-01-03 | 1294, 1309 |  | Zenith | 8663204 |
| 1311 | 36900.37000.37100.38000.39000.40800.41900.86600.1347000 | Toilet dado work | 6d | 2025-12-27 | 2026-01-02 | 1295, 1308, 1309 |  | Zenith | 8663214 |
| 1312 | 36900.37000.37100.38000.39000.40800.41900.86600.1347100 | Toilet flooring work | 7d | 2026-01-02 | 2026-01-09 | 1296, 1311 |  | Zenith | 8663224 |
| 1313 | 36900.37000.37100.38000.39000.40800.41900.86600.1347200 | False Cieling panel fixing | 7d | 2026-01-09 | 2026-01-16 | 1297, 1312 |  | Zenith | 8663234 |
| 1314 | 36900.37000.37100.38000.39000.40800.41900.86600.1347300 | Living dinning flooring | 7d | 2026-01-09 | 2026-01-16 | 1298, 1312 |  | Zenith | 8663244 |
| 1315 | 36900.37000.37100.38000.39000.40800.41900.86600.1347400 | Putty primer coat | 8d | 2026-01-16 | 2026-01-24 | 1299, 1314 |  | Zenith | 8663254 |
| 1316 | 36900.37000.37100.38000.39000.40800.41900.86600.1347500 | Aluminium door-window fixing | 12d | 2026-02-03 | 2026-02-14 | 1300, 1310, 1314 |  | Zenith | 8663264 |
| 1317 | 36900.37000.37100.38000.39000.40800.41900.86600.1347600 | Door shutter fixing (Pre Hung) | 8d | 2026-01-24 | 2026-02-01 | 1301, 1315 |  | Zenith | 8663274 |
| 1318 | 36900.37000.37100.38000.39000.40800.41900.86600.1347700 | Electrical wiring work | 10d | 2026-02-07 | 2026-02-16 | 1302, 1317 |  | Zenith | 8663284 |
| 1319 | 36900.37000.37100.38000.39000.40800.41900.86600.1347800 | Painting 1st coat | 12d | 2026-03-01 | 2026-03-12 | 1303, 1318 |  | Zenith | 8663294 |
| 1320 | 36900.37000.37100.38000.39000.40800.41900.86700 | **8th floor roof** | 99.75d | 2025-10-31 | 2026-03-24 |  | start no earlier than 2025-10-31 | Zenith | 8648854 |
| 1321 | 36900.37000.37100.38000.39000.40800.41900.86700.1347900 | Block Work | 6d | 2025-10-31 | 2025-12-21 | 1176, 1305 |  | Zenith | 8663304 |
| 1322 | 36900.37000.37100.38000.39000.40800.41900.86700.1348000 | Fire sprinkler pipe fixing | 5d | 2025-12-21 | 2025-12-26 | 1306, 1321 |  | Zenith | 8663314 |
| 1323 | 36900.37000.37100.38000.39000.40800.41900.86700.1348100 | Internal Plumbing Works | 5d | 2025-12-21 | 2025-12-26 | 1307, 1321 |  | Zenith | 8663324 |
| 1324 | 36900.37000.37100.38000.39000.40800.41900.86700.1348200 | Waterproofing | 5d | 2025-12-26 | 2025-12-31 | 1308, 1323 |  | Zenith | 8663334 |
| 1325 | 36900.37000.37100.38000.39000.40800.41900.86700.1348300 | Internal Plaster | 9d | 2025-12-27 | 2026-01-05 | 1309, 1323, 1324FF+5d |  | Zenith | 8663344 |
| 1326 | 36900.37000.37100.38000.39000.40800.41900.86700.1348400 | IPS flooring work | 7d | 2026-01-05 | 2026-01-12 | 1310, 1325 |  | Zenith | 8663354 |
| 1327 | 36900.37000.37100.38000.39000.40800.41900.86700.1348500 | Toilet dado work | 6d | 2026-01-05 | 2026-01-11 | 1311, 1324, 1325 |  | Zenith | 8663364 |
| 1328 | 36900.37000.37100.38000.39000.40800.41900.86700.1348600 | Toilet flooring work | 7d | 2026-01-11 | 2026-01-18 | 1312, 1327 |  | Zenith | 8663374 |
| 1329 | 36900.37000.37100.38000.39000.40800.41900.86700.1348700 | False Cieling panel fixing | 7d | 2026-01-18 | 2026-01-25 | 1313, 1328 |  | Zenith | 8663384 |
| 1330 | 36900.37000.37100.38000.39000.40800.41900.86700.1348800 | Living dinning flooring | 7d | 2026-01-18 | 2026-01-25 | 1314, 1328 |  | Zenith | 8663394 |
| 1331 | 36900.37000.37100.38000.39000.40800.41900.86700.1348900 | Putty primer coat | 8d | 2026-01-25 | 2026-02-02 | 1315, 1330 |  | Zenith | 8663404 |
| 1332 | 36900.37000.37100.38000.39000.40800.41900.86700.1349000 | Aluminium door-window fixing | 12d | 2026-02-15 | 2026-02-26 | 1316, 1326, 1330 |  | Zenith | 8663414 |
| 1333 | 36900.37000.37100.38000.39000.40800.41900.86700.1349100 | Door shutter fixing (Pre Hung) | 8d | 2026-02-02 | 2026-02-10 | 1317, 1331 |  | Zenith | 8663424 |
| 1334 | 36900.37000.37100.38000.39000.40800.41900.86700.1349200 | Electrical wiring work | 10d | 2026-02-17 | 2026-02-26 | 1318, 1333 |  | Zenith | 8663434 |
| 1335 | 36900.37000.37100.38000.39000.40800.41900.86700.1349300 | Painting 1st coat | 12d | 2026-03-13 | 2026-03-24 | 1319, 1334 |  | Zenith | 8663444 |

| ID | WBS | Task | Duration | Start | Finish | Predecessors | Constraint | Calendar | Unique_Task_ID |
| --- | --- | --- | --- | --- | --- | --- | --- | --- | --- |
| 1336 | 36900.37000.37100.38000.39000.40800.41900.86800 | **9th floor roof** | 102.75d | 2025-12-24 | 2026-04-05 |  | start no earlier than 2025-12-24 | Zenith | 8648864 |
| 1337 | 36900.37000.37100.38000.39000.40800.41900.86800.1349400 | Block Work | 6d | 2025-12-24 | 2025-12-30 | 1177, 1321 |  | Zenith | 8663454 |
| 1338 | 36900.37000.37100.38000.39000.40800.41900.86800.1349500 | Fire sprinkler pipe fixing | 5d | 2025-12-30 | 2026-01-04 | 1322, 1337 |  | Zenith | 8663464 |
| 1339 | 36900.37000.37100.38000.39000.40800.41900.86800.1349600 | Internal Plumbing Works | 5d | 2025-12-30 | 2026-01-04 | 1323, 1337 |  | Zenith | 8663474 |
| 1340 | 36900.37000.37100.38000.39000.40800.41900.86800.1349700 | Waterproofing | 5d | 2026-01-04 | 2026-01-09 | 1324, 1339 |  | Zenith | 8663484 |
| 1341 | 36900.37000.37100.38000.39000.40800.41900.86800.1349800 | Internal Plaster | 9d | 2026-01-05 | 2026-01-14 | 1325, 1339, 1340FF+5d |  | Zenith | 8663494 |
| 1342 | 36900.37000.37100.38000.39000.40800.41900.86800.1349900 | IPS flooring work | 7d | 2026-01-14 | 2026-01-21 | 1326, 1341 |  | Zenith | 8663504 |
| 1343 | 36900.37000.37100.38000.39000.40800.41900.86800.1350000 | Toilet dado work | 6d | 2026-01-14 | 2026-01-20 | 1327, 1340, 1341 |  | Zenith | 8663514 |
| 1344 | 36900.37000.37100.38000.39000.40800.41900.86800.1350100 | Toilet flooring work | 7d | 2026-01-20 | 2026-01-27 | 1328, 1343 |  | Zenith | 8663524 |
| 1345 | 36900.37000.37100.38000.39000.40800.41900.86800.1350200 | False Cieling panel fixing | 7d | 2026-01-27 | 2026-02-03 | 1329, 1344 |  | Zenith | 8663534 |
| 1346 | 36900.37000.37100.38000.39000.40800.41900.86800.1350300 | Living dinning flooring | 7d | 2026-01-27 | 2026-02-03 | 1330, 1344 |  | Zenith | 8663544 |
| 1347 | 36900.37000.37100.38000.39000.40800.41900.86800.1350400 | Putty primer coat | 8d | 2026-02-03 | 2026-02-11 | 1331, 1346 |  | Zenith | 8663554 |
| 1348 | 36900.37000.37100.38000.39000.40800.41900.86800.1350500 | Aluminium door-window fixing | 12d | 2026-02-27 | 2026-03-10 | 1332, 1342, 1346 |  | Zenith | 8663564 |
| 1349 | 36900.37000.37100.38000.39000.40800.41900.86800.1350600 | Door shutter fixing (Pre Hung) | 8d | 2026-02-11 | 2026-02-19 | 1333, 1347 |  | Zenith | 8663574 |
| 1350 | 36900.37000.37100.38000.39000.40800.41900.86800.1350700 | Electrical wiring work | 10d | 2026-02-27 | 2026-03-08 | 1334, 1349 |  | Zenith | 8663584 |
| 1351 | 36900.37000.37100.38000.39000.40800.41900.86800.1350800 | Painting 1st coat | 12d | 2026-03-25 | 2026-04-05 | 1335, 1350 |  | Zenith | 8663594 |
| 1352 | 36900.37000.37100.38000.39000.40800.41900.86900 | **10th floor roof** | 105.75d | 2026-01-02 | 2026-04-17 |  | start no earlier than 2026-01-02 | Zenith | 8648874 |
| 1353 | 36900.37000.37100.38000.39000.40800.41900.86900.1350900 | Block Work | 6d | 2026-01-02 | 2026-01-08 | 1178, 1337 |  | Zenith | 8663604 |
| 1354 | 36900.37000.37100.38000.39000.40800.41900.86900.1351000 | Fire sprinkler pipe fixing | 5d | 2026-01-08 | 2026-01-13 | 1338, 1353 |  | Zenith | 8663614 |
| 1355 | 36900.37000.37100.38000.39000.40800.41900.86900.1351100 | Internal Plumbing Works | 5d | 2026-01-08 | 2026-01-13 | 1339, 1353 |  | Zenith | 8663624 |
| 1356 | 36900.37000.37100.38000.39000.40800.41900.86900.1351200 | Waterproofing | 5d | 2026-01-13 | 2026-01-18 | 1340, 1355 |  | Zenith | 8663634 |
| 1357 | 36900.37000.37100.38000.39000.40800.41900.86900.1351300 | Internal Plaster | 9d | 2026-01-14 | 2026-01-23 | 1341, 1355, 1356FF+5d |  | Zenith | 8663644 |
| 1358 | 36900.37000.37100.38000.39000.40800.41900.86900.1351400 | IPS flooring work | 7d | 2026-01-23 | 2026-01-30 | 1342, 1357 |  | Zenith | 8663654 |
| 1359 | 36900.37000.37100.38000.39000.40800.41900.86900.1351500 | Toilet dado work | 6d | 2026-01-23 | 2026-01-29 | 1343, 1356, 1357 |  | Zenith | 8663664 |
| 1360 | 36900.37000.37100.38000.39000.40800.41900.86900.1351600 | Toilet flooring work | 7d | 2026-01-29 | 2026-02-05 | 1344, 1359 |  | Zenith | 8663674 |
| 1361 | 36900.37000.37100.38000.39000.40800.41900.86900.1351700 | False Cieling panel fixing | 7d | 2026-02-05 | 2026-02-12 | 1345, 1360 |  | Zenith | 8663684 |
| 1362 | 36900.37000.37100.38000.39000.40800.41900.86900.1351800 | Living dinning flooring | 7d | 2026-02-05 | 2026-02-12 | 1346, 1360 |  | Zenith | 8663694 |
| 1363 | 36900.37000.37100.38000.39000.40800.41900.86900.1351900 | Putty primer coat | 8d | 2026-02-12 | 2026-02-20 | 1347, 1362 |  | Zenith | 8663704 |
| 1364 | 36900.37000.37100.38000.39000.40800.41900.86900.1352000 | Aluminium door-window fixing | 12d | 2026-03-11 | 2026-03-22 | 1348, 1358, 1362 |  | Zenith | 8663714 |
| 1365 | 36900.37000.37100.38000.39000.40800.41900.86900.1352100 | Door shutter fixing (Pre Hung) | 8d | 2026-02-20 | 2026-02-28 | 1349, 1363 |  | Zenith | 8663724 |
| 1366 | 36900.37000.37100.38000.39000.40800.41900.86900.1352200 | Electrical wiring work | 10d | 2026-03-09 | 2026-03-18 | 1350, 1365 |  | Zenith | 8663734 |
| 1367 | 36900.37000.37100.38000.39000.40800.41900.86900.1352300 | Painting 1st coat | 12d | 2026-04-06 | 2026-04-17 | 1351, 1366 |  | Zenith | 8663744 |

| ID | WBS | Task | Duration | Start | Finish | Predecessors | Constraint | Calendar | Unique_Task_ID |
| --- | --- | --- | --- | --- | --- | --- | --- | --- | --- |
| 1368 | 36900.37000.37100.38000.39000.40800.41900.87000 | **11th floor roof** | 108.75d | 2026-01-11 | 2026-04-29 |  | start no earlier than 2026-01-11 | Zenith | 8648884 |
| 1369 | 36900.37000.37100.38000.39000.40800.41900.87000.1352400 | Block Work | 6d | 2026-01-11 | 2026-01-17 | 1179, 1353 |  | Zenith | 8663754 |
| 1370 | 36900.37000.37100.38000.39000.40800.41900.87000.1352500 | Fire sprinkler pipe fixing | 5d | 2026-01-17 | 2026-01-22 | 1354, 1369 |  | Zenith | 8663764 |
| 1371 | 36900.37000.37100.38000.39000.40800.41900.87000.1352600 | Internal Plumbing Works | 5d | 2026-01-17 | 2026-01-22 | 1355, 1369 |  | Zenith | 8663774 |
| 1372 | 36900.37000.37100.38000.39000.40800.41900.87000.1352700 | Waterproofing | 5d | 2026-01-22 | 2026-01-27 | 1356, 1371 |  | Zenith | 8663784 |
| 1373 | 36900.37000.37100.38000.39000.40800.41900.87000.1352800 | Internal Plaster | 9d | 2026-01-23 | 2026-02-01 | 1357, 1371, 1372FF+5d |  | Zenith | 8663794 |
| 1374 | 36900.37000.37100.38000.39000.40800.41900.87000.1352900 | IPS flooring work | 7d | 2026-02-01 | 2026-02-08 | 1358, 1373 |  | Zenith | 8663804 |
| 1375 | 36900.37000.37100.38000.39000.40800.41900.87000.1353000 | Toilet dado work | 6d | 2026-02-01 | 2026-02-07 | 1359, 1372, 1373 |  | Zenith | 8663814 |
| 1376 | 36900.37000.37100.38000.39000.40800.41900.87000.1353100 | Toilet flooring work | 7d | 2026-02-07 | 2026-02-14 | 1360, 1375 |  | Zenith | 8663824 |
| 1377 | 36900.37000.37100.38000.39000.40800.41900.87000.1353200 | False Cieling panel fixing | 7d | 2026-02-14 | 2026-02-21 | 1361, 1376 |  | Zenith | 8663834 |
| 1378 | 36900.37000.37100.38000.39000.40800.41900.87000.1353300 | Living dinning flooring | 7d | 2026-02-14 | 2026-02-21 | 1362, 1376 |  | Zenith | 8663844 |
| 1379 | 36900.37000.37100.38000.39000.40800.41900.87000.1353400 | Putty primer coat | 8d | 2026-02-21 | 2026-03-01 | 1363, 1378 |  | Zenith | 8663854 |
| 1380 | 36900.37000.37100.38000.39000.40800.41900.87000.1353500 | Aluminium door-window fixing | 12d | 2026-03-23 | 2026-04-03 | 1364, 1374, 1378 |  | Zenith | 8663864 |
| 1381 | 36900.37000.37100.38000.39000.40800.41900.87000.1353600 | Door shutter fixing (Pre Hung) | 8d | 2026-03-01 | 2026-03-09 | 1365, 1379 |  | Zenith | 8663874 |
| 1382 | 36900.37000.37100.38000.39000.40800.41900.87000.1353700 | Electrical wiring work | 10d | 2026-03-19 | 2026-03-28 | 1366, 1381 |  | Zenith | 8663884 |
| 1383 | 36900.37000.37100.38000.39000.40800.41900.87000.1353800 | Painting 1st coat | 12d | 2026-04-18 | 2026-04-29 | 1367, 1382 |  | Zenith | 8663894 |
| 1384 | 36900.37000.37100.38000.39000.40800.41900.87100 | **12th floor roof** | 111.75d | 2026-01-20 | 2026-05-11 |  | start no earlier than 2026-01-20 | Zenith | 8648894 |
| 1385 | 36900.37000.37100.38000.39000.40800.41900.87100.1353900 | Block Work | 6d | 2026-01-20 | 2026-01-26 | 1180, 1369 |  | Zenith | 8663904 |
| 1386 | 36900.37000.37100.38000.39000.40800.41900.87100.1354000 | Fire sprinkler pipe fixing | 5d | 2026-01-26 | 2026-01-31 | 1370, 1385 |  | Zenith | 8663914 |
| 1387 | 36900.37000.37100.38000.39000.40800.41900.87100.1354100 | Internal Plumbing Works | 5d | 2026-01-26 | 2026-01-31 | 1371, 1385 |  | Zenith | 8663924 |
| 1388 | 36900.37000.37100.38000.39000.40800.41900.87100.1354200 | Waterproofing | 5d | 2026-01-31 | 2026-02-05 | 1372, 1387 |  | Zenith | 8663934 |
| 1389 | 36900.37000.37100.38000.39000.40800.41900.87100.1354300 | Internal Plaster | 9d | 2026-02-01 | 2026-02-10 | 1373, 1387, 1388FF+5d |  | Zenith | 8663944 |
| 1390 | 36900.37000.37100.38000.39000.40800.41900.87100.1354400 | IPS flooring work | 7d | 2026-02-10 | 2026-02-17 | 1374, 1389 |  | Zenith | 8663954 |
| 1391 | 36900.37000.37100.38000.39000.40800.41900.87100.1354500 | Toilet dado work | 6d | 2026-02-10 | 2026-02-16 | 1375, 1388, 1389 |  | Zenith | 8663964 |
| 1392 | 36900.37000.37100.38000.39000.40800.41900.87100.1354600 | Toilet flooring work | 7d | 2026-02-16 | 2026-02-23 | 1376, 1391 |  | Zenith | 8663974 |
| 1393 | 36900.37000.37100.38000.39000.40800.41900.87100.1354700 | False Cieling panel fixing | 7d | 2026-02-23 | 2026-03-02 | 1377, 1392 |  | Zenith | 8663984 |
| 1394 | 36900.37000.37100.38000.39000.40800.41900.87100.1354800 | Living dinning flooring | 7d | 2026-02-23 | 2026-03-02 | 1378, 1392 |  | Zenith | 8663994 |
| 1395 | 36900.37000.37100.38000.39000.40800.41900.87100.1354900 | Putty primer coat | 8d | 2026-03-02 | 2026-03-10 | 1379, 1394 |  | Zenith | 8664004 |
| 1396 | 36900.37000.37100.38000.39000.40800.41900.87100.1355000 | Aluminium door-window fixing | 12d | 2026-04-04 | 2026-04-15 | 1380, 1390, 1394 |  | Zenith | 8664014 |
| 1397 | 36900.37000.37100.38000.39000.40800.41900.87100.1355100 | Door shutter fixing (Pre Hung) | 8d | 2026-03-10 | 2026-03-18 | 1381, 1395 |  | Zenith | 8664024 |
| 1398 | 36900.37000.37100.38000.39000.40800.41900.87100.1355200 | Electrical wiring work | 10d | 2026-03-29 | 2026-04-07 | 1382, 1397 |  | Zenith | 8664034 |
| 1399 | 36900.37000.37100.38000.39000.40800.41900.87100.1355300 | Painting 1st coat | 12d | 2026-04-30 | 2026-05-11 | 1383, 1398 |  | Zenith | 8664044 |

| ID | WBS | Task | Duration | Start | Finish | Predecessors | Constraint | Calendar | Unique_Task_ID |
| --- | --- | --- | --- | --- | --- | --- | --- | --- | --- |
| 1400 | 36900.37000.37100.38000.39000.40800.41900.87200 | **13th floor roof** | 114.75d | 2026-01-29 | 2026-05-23 |  | start no earlier than 2026-01-29 | Zenith | 8648904 |
| 1401 | 36900.37000.37100.38000.39000.40800.41900.87200.1355400 | Block Work | 6d | 2026-01-29 | 2026-02-04 | 1181, 1385 |  | Zenith | 8664054 |
| 1402 | 36900.37000.37100.38000.39000.40800.41900.87200.1355500 | Fire sprinkler pipe fixing | 5d | 2026-02-04 | 2026-02-09 | 1386, 1401 |  | Zenith | 8664064 |
| 1403 | 36900.37000.37100.38000.39000.40800.41900.87200.1355600 | Internal Plumbing Works | 5d | 2026-02-04 | 2026-02-09 | 1387, 1401 |  | Zenith | 8664074 |
| 1404 | 36900.37000.37100.38000.39000.40800.41900.87200.1355700 | Waterproofing | 5d | 2026-02-09 | 2026-02-14 | 1388, 1403 |  | Zenith | 8664084 |
| 1405 | 36900.37000.37100.38000.39000.40800.41900.87200.1355800 | Internal Plaster | 9d | 2026-02-10 | 2026-02-19 | 1389, 1403, 1404FF+5d |  | Zenith | 8664094 |
| 1406 | 36900.37000.37100.38000.39000.40800.41900.87200.1355900 | IPS flooring work | 7d | 2026-02-19 | 2026-02-26 | 1390, 1405 |  | Zenith | 8664104 |
| 1407 | 36900.37000.37100.38000.39000.40800.41900.87200.1356000 | Toilet dado work | 6d | 2026-02-19 | 2026-02-25 | 1391, 1404, 1405 |  | Zenith | 8664114 |
| 1408 | 36900.37000.37100.38000.39000.40800.41900.87200.1356100 | Toilet flooring work | 7d | 2026-02-25 | 2026-03-04 | 1392, 1407 |  | Zenith | 8664124 |
| 1409 | 36900.37000.37100.38000.39000.40800.41900.87200.1356200 | False Cieling panel fixing | 7d | 2026-03-04 | 2026-03-11 | 1393, 1408 |  | Zenith | 8664134 |
| 1410 | 36900.37000.37100.38000.39000.40800.41900.87200.1356300 | Living dinning flooring | 7d | 2026-03-04 | 2026-03-11 | 1394, 1408 |  | Zenith | 8664144 |
| 1411 | 36900.37000.37100.38000.39000.40800.41900.87200.1356400 | Putty primer coat | 8d | 2026-03-11 | 2026-03-19 | 1395, 1410 |  | Zenith | 8664154 |
| 1412 | 36900.37000.37100.38000.39000.40800.41900.87200.1356500 | Aluminium door-window fixing | 12d | 2026-04-16 | 2026-04-27 | 1396, 1406, 1410 |  | Zenith | 8664164 |
| 1413 | 36900.37000.37100.38000.39000.40800.41900.87200.1356600 | Door shutter fixing (Pre Hung) | 8d | 2026-03-19 | 2026-03-27 | 1397, 1411 |  | Zenith | 8664174 |
| 1414 | 36900.37000.37100.38000.39000.40800.41900.87200.1356700 | Electrical wiring work | 10d | 2026-04-08 | 2026-04-17 | 1398, 1413 |  | Zenith | 8664184 |
| 1415 | 36900.37000.37100.38000.39000.40800.41900.87200.1356800 | Painting 1st coat | 12d | 2026-05-12 | 2026-05-23 | 1399, 1414 |  | Zenith | 8664194 |
| 1416 | 36900.37000.37100.38000.39000.40800.41900.87300 | **14th floor roof** | 117.75d | 2026-02-07 | 2026-06-04 |  | start no earlier than 2026-02-07 | Zenith | 8648914 |
| 1417 | 36900.37000.37100.38000.39000.40800.41900.87300.1356900 | Block Work | 6d | 2026-02-07 | 2026-02-13 | 1182, 1401 |  | Zenith | 8664204 |
| 1418 | 36900.37000.37100.38000.39000.40800.41900.87300.1357000 | Fire sprinkler pipe fixing | 5d | 2026-02-13 | 2026-02-18 | 1402, 1417 |  | Zenith | 8664214 |
| 1419 | 36900.37000.37100.38000.39000.40800.41900.87300.1357100 | Internal Plumbing Works | 5d | 2026-02-13 | 2026-02-18 | 1403, 1417 |  | Zenith | 8664224 |
| 1420 | 36900.37000.37100.38000.39000.40800.41900.87300.1357200 | Waterproofing | 5d | 2026-02-18 | 2026-02-23 | 1404, 1419 |  | Zenith | 8664234 |
| 1421 | 36900.37000.37100.38000.39000.40800.41900.87300.1357300 | Internal Plaster | 9d | 2026-02-19 | 2026-02-28 | 1405, 1419, 1420FF+5d |  | Zenith | 8664244 |
| 1422 | 36900.37000.37100.38000.39000.40800.41900.87300.1357400 | IPS flooring work | 7d | 2026-02-28 | 2026-03-07 | 1406, 1421 |  | Zenith | 8664254 |
| 1423 | 36900.37000.37100.38000.39000.40800.41900.87300.1357500 | Toilet dado work | 6d | 2026-02-28 | 2026-03-06 | 1407, 1420, 1421 |  | Zenith | 8664264 |
| 1424 | 36900.37000.37100.38000.39000.40800.41900.87300.1357600 | Toilet flooring work | 7d | 2026-03-06 | 2026-03-13 | 1408, 1423 |  | Zenith | 8664274 |
| 1425 | 36900.37000.37100.38000.39000.40800.41900.87300.1357700 | False Cieling panel fixing | 7d | 2026-03-13 | 2026-03-20 | 1409, 1424 |  | Zenith | 8664284 |
| 1426 | 36900.37000.37100.38000.39000.40800.41900.87300.1357800 | Living dinning flooring | 7d | 2026-03-13 | 2026-03-20 | 1410, 1424 |  | Zenith | 8664294 |
| 1427 | 36900.37000.37100.38000.39000.40800.41900.87300.1357900 | Putty primer coat | 8d | 2026-03-20 | 2026-03-28 | 1411, 1426 |  | Zenith | 8664304 |
| 1428 | 36900.37000.37100.38000.39000.40800.41900.87300.1358000 | Aluminium door-window fixing | 12d | 2026-04-28 | 2026-05-09 | 1412, 1422, 1426 |  | Zenith | 8664314 |
| 1429 | 36900.37000.37100.38000.39000.40800.41900.87300.1358100 | Door shutter fixing (Pre Hung) | 8d | 2026-03-28 | 2026-04-05 | 1413, 1427 |  | Zenith | 8664324 |
| 1430 | 36900.37000.37100.38000.39000.40800.41900.87300.1358200 | Electrical wiring work | 10d | 2026-04-18 | 2026-04-27 | 1414, 1429 |  | Zenith | 8664334 |
| 1431 | 36900.37000.37100.38000.39000.40800.41900.87300.1358300 | Painting 1st coat | 12d | 2026-05-24 | 2026-06-04 | 1415, 1430 |  | Zenith | 8664344 |

| ID | WBS | Task | Duration | Start | Finish | Predecessors | Constraint | Calendar | Unique_Task_ID |
| --- | --- | --- | --- | --- | --- | --- | --- | --- | --- |
| 1432 | 36900.37000.37100.38000.39000.40800.41900.87400 | **15th floor roof** | 121.75d | 2026-02-15 | 2026-06-16 |  | start no earlier than 2026-02-15 | Zenith | 8648924 |
| 1433 | 36900.37000.37100.38000.39000.40800.41900.87400.1358400 | Block Work | 6d | 2026-02-15 | 2026-02-21 | 1183, 1417 |  | Zenith | 8664354 |
| 1434 | 36900.37000.37100.38000.39000.40800.41900.87400.1358500 | Fire sprinkler pipe fixing | 5d | 2026-02-21 | 2026-02-26 | 1418, 1433 |  | Zenith | 8664364 |
| 1435 | 36900.37000.37100.38000.39000.40800.41900.87400.1358600 | Internal Plumbing Works | 5d | 2026-02-21 | 2026-02-26 | 1419, 1433 |  | Zenith | 8664374 |
| 1436 | 36900.37000.37100.38000.39000.40800.41900.87400.1358700 | Waterproofing | 5d | 2026-02-26 | 2026-03-03 | 1420, 1435 |  | Zenith | 8664384 |
| 1437 | 36900.37000.37100.38000.39000.40800.41900.87400.1358800 | Internal Plaster | 9d | 2026-02-28 | 2026-03-09 | 1421, 1435, 1436FF+5d |  | Zenith | 8664394 |
| 1438 | 36900.37000.37100.38000.39000.40800.41900.87400.1358900 | IPS flooring work | 7d | 2026-03-09 | 2026-03-16 | 1422, 1437 |  | Zenith | 8664404 |
| 1439 | 36900.37000.37100.38000.39000.40800.41900.87400.1359000 | Toilet dado work | 6d | 2026-03-09 | 2026-03-15 | 1423, 1436, 1437 |  | Zenith | 8664414 |
| 1440 | 36900.37000.37100.38000.39000.40800.41900.87400.1359100 | Toilet flooring work | 7d | 2026-03-15 | 2026-03-22 | 1424, 1439 |  | Zenith | 8664424 |
| 1441 | 36900.37000.37100.38000.39000.40800.41900.87400.1359200 | False Cieling panel fixing | 7d | 2026-03-22 | 2026-03-29 | 1425, 1440 |  | Zenith | 8664434 |
| 1442 | 36900.37000.37100.38000.39000.40800.41900.87400.1359300 | Living dinning flooring | 7d | 2026-03-22 | 2026-03-29 | 1426, 1440 |  | Zenith | 8664444 |
| 1443 | 36900.37000.37100.38000.39000.40800.41900.87400.1359400 | Aluminium door-window fixing | 8d | 2026-05-10 | 2026-05-17 | 1428, 1438, 1442 |  | Zenith | 8664454 |
| 1444 | 36900.37000.37100.38000.39000.40800.41900.87400.1359500 | Putty primer coat | 12d | 2026-03-29 | 2026-04-10 | 1427, 1442 |  | Zenith | 8664464 |
| 1445 | 36900.37000.37100.38000.39000.40800.41900.87400.1359600 | Door shutter fixing (Pre Hung) | 8d | 2026-04-10 | 2026-04-18 | 1429, 1444 |  | Zenith | 8664474 |
| 1446 | 36900.37000.37100.38000.39000.40800.41900.87400.1359700 | Electrical wiring work | 10d | 2026-04-28 | 2026-05-07 | 1430, 1445 |  | Zenith | 8664484 |
| 1447 | 36900.37000.37100.38000.39000.40800.41900.87400.1359800 | Painting 1st coat | 12d | 2026-06-05 | 2026-06-16 | 1431, 1446 |  | Zenith | 8664494 |
| 1448 | 36900.37000.37100.38000.39000.40800.41900.87500 | **16th floor roof** | 125.75d | 2026-02-23 | 2026-06-28 |  | start no earlier than 2026-02-23 | Zenith | 8648934 |
| 1449 | 36900.37000.37100.38000.39000.40800.41900.87500.1359900 | Block Work | 6d | 2026-02-23 | 2026-03-01 | 1184, 1433 |  | Zenith | 8664504 |
| 1450 | 36900.37000.37100.38000.39000.40800.41900.87500.1360000 | Fire sprinkler pipe fixing | 5d | 2026-03-01 | 2026-03-06 | 1434, 1449 |  | Zenith | 8664514 |
| 1451 | 36900.37000.37100.38000.39000.40800.41900.87500.1360100 | Internal Plumbing Works | 5d | 2026-03-01 | 2026-03-06 | 1435, 1449 |  | Zenith | 8664524 |
| 1452 | 36900.37000.37100.38000.39000.40800.41900.87500.1360200 | Waterproofing | 5d | 2026-03-06 | 2026-03-11 | 1436, 1451 |  | Zenith | 8664534 |
| 1453 | 36900.37000.37100.38000.39000.40800.41900.87500.1360300 | Internal Plaster | 9d | 2026-03-09 | 2026-03-18 | 1437, 1451, 1452FF+5d |  | Zenith | 8664544 |
| 1454 | 36900.37000.37100.38000.39000.40800.41900.87500.1360400 | IPS flooring work | 7d | 2026-03-18 | 2026-03-25 | 1438, 1453 |  | Zenith | 8664554 |
| 1455 | 36900.37000.37100.38000.39000.40800.41900.87500.1360500 | Toilet dado work | 6d | 2026-03-18 | 2026-03-24 | 1439, 1452, 1453 |  | Zenith | 8664564 |
| 1456 | 36900.37000.37100.38000.39000.40800.41900.87500.1360600 | Toilet flooring work | 7d | 2026-03-24 | 2026-03-31 | 1440, 1455 |  | Zenith | 8664574 |
| 1457 | 36900.37000.37100.38000.39000.40800.41900.87500.1360700 | False Cieling panel fixing | 7d | 2026-03-31 | 2026-04-07 | 1441, 1456 |  | Zenith | 8664584 |
| 1458 | 36900.37000.37100.38000.39000.40800.41900.87500.1360800 | Living dinning flooring | 7d | 2026-03-31 | 2026-04-07 | 1442, 1456 |  | Zenith | 8664594 |
| 1459 | 36900.37000.37100.38000.39000.40800.41900.87500.1360900 | Putty primer coat | 8d | 2026-04-10 | 2026-04-18 | 1444, 1458 |  | Zenith | 8664604 |
| 1460 | 36900.37000.37100.38000.39000.40800.41900.87500.1361000 | Aluminium door-window fixing | 12d | 2026-05-18 | 2026-05-29 | 1443, 1454, 1458 |  | Zenith | 8664614 |
| 1461 | 36900.37000.37100.38000.39000.40800.41900.87500.1361100 | Door shutter fixing (Pre Hung) | 8d | 2026-04-18 | 2026-04-26 | 1445, 1459 |  | Zenith | 8664624 |
| 1462 | 36900.37000.37100.38000.39000.40800.41900.87500.1361200 | Electrical wiring work | 10d | 2026-05-08 | 2026-05-17 | 1446, 1461 |  | Zenith | 8664634 |
| 1463 | 36900.37000.37100.38000.39000.40800.41900.87500.1361300 | Painting 1st coat | 12d | 2026-06-17 | 2026-06-28 | 1447, 1462 |  | Zenith | 8664644 |

| ID | WBS | Task | Duration | Start | Finish | Predecessors | Constraint | Calendar | Unique_Task_ID |
| --- | --- | --- | --- | --- | --- | --- | --- | --- | --- |
| 1464 | 36900.37000.37100.38000.39000.40800.41900.87600 | **17th floor roof** | 129.75d | 2026-03-03 | 2026-07-10 |  | start no earlier than 2026-03-03 | Zenith | 8648944 |
| 1465 | 36900.37000.37100.38000.39000.40800.41900.87600.1361400 | Block Work | 6d | 2026-03-03 | 2026-03-09 | 1185, 1449 |  | Zenith | 8664654 |
| 1466 | 36900.37000.37100.38000.39000.40800.41900.87600.1361500 | Fire sprinkler pipe fixing | 5d | 2026-03-09 | 2026-03-14 | 1450, 1465 |  | Zenith | 8664664 |
| 1467 | 36900.37000.37100.38000.39000.40800.41900.87600.1361600 | Internal Plumbing Works | 5d | 2026-03-09 | 2026-03-14 | 1451, 1465 |  | Zenith | 8664674 |
| 1468 | 36900.37000.37100.38000.39000.40800.41900.87600.1361700 | Waterproofing | 5d | 2026-03-14 | 2026-03-19 | 1452, 1467 |  | Zenith | 8664684 |
| 1469 | 36900.37000.37100.38000.39000.40800.41900.87600.1361800 | Internal Plaster | 9d | 2026-03-18 | 2026-03-27 | 1453, 1467, 1468FF+5d |  | Zenith | 8664694 |
| 1470 | 36900.37000.37100.38000.39000.40800.41900.87600.1361900 | IPS flooring work | 7d | 2026-03-27 | 2026-04-03 | 1454, 1469 |  | Zenith | 8664704 |
| 1471 | 36900.37000.37100.38000.39000.40800.41900.87600.1362000 | Toilet dado work | 6d | 2026-03-27 | 2026-04-02 | 1455, 1468, 1469 |  | Zenith | 8664714 |
| 1472 | 36900.37000.37100.38000.39000.40800.41900.87600.1362100 | Toilet flooring work | 7d | 2026-04-02 | 2026-04-09 | 1456, 1471 |  | Zenith | 8664724 |
| 1473 | 36900.37000.37100.38000.39000.40800.41900.87600.1362200 | False Cieling panel fixing | 7d | 2026-04-09 | 2026-04-16 | 1457, 1472 |  | Zenith | 8664734 |
| 1474 | 36900.37000.37100.38000.39000.40800.41900.87600.1362300 | Living dinning flooring | 7d | 2026-04-09 | 2026-04-16 | 1458, 1472 |  | Zenith | 8664744 |
| 1475 | 36900.37000.37100.38000.39000.40800.41900.87600.1362400 | Putty primer coat | 8d | 2026-04-18 | 2026-04-26 | 1459, 1474 |  | Zenith | 8664754 |
| 1476 | 36900.37000.37100.38000.39000.40800.41900.87600.1362500 | Aluminium door-window fixing | 12d | 2026-05-30 | 2026-06-10 | 1460, 1470, 1474 |  | Zenith | 8664764 |
| 1477 | 36900.37000.37100.38000.39000.40800.41900.87600.1362600 | Door shutter fixing (Pre Hung) | 8d | 2026-04-26 | 2026-05-04 | 1461, 1475 |  | Zenith | 8664774 |
| 1478 | 36900.37000.37100.38000.39000.40800.41900.87600.1362700 | Electrical wiring work | 10d | 2026-05-18 | 2026-05-27 | 1462, 1477 |  | Zenith | 8664784 |
| 1479 | 36900.37000.37100.38000.39000.40800.41900.87600.1362800 | Painting 1st coat | 12d | 2026-06-29 | 2026-07-10 | 1463, 1478 |  | Zenith | 8664794 |
| 1480 | 36900.37000.37100.38000.39000.40800.41900.87700 | **18th floor roof** | 133.75d | 2026-03-11 | 2026-07-22 |  | start no earlier than 2026-03-11 | Zenith | 8648954 |
| 1481 | 36900.37000.37100.38000.39000.40800.41900.87700.1362900 | Block Work | 6d | 2026-03-11 | 2026-03-17 | 1186, 1465 |  | Zenith | 8664804 |
| 1482 | 36900.37000.37100.38000.39000.40800.41900.87700.1363000 | Fire sprinkler pipe fixing | 5d | 2026-03-17 | 2026-03-22 | 1466, 1481 |  | Zenith | 8664814 |
| 1483 | 36900.37000.37100.38000.39000.40800.41900.87700.1363100 | Internal Plumbing Works | 5d | 2026-03-17 | 2026-03-22 | 1467, 1481 |  | Zenith | 8664824 |
| 1484 | 36900.37000.37100.38000.39000.40800.41900.87700.1363200 | Waterproofing | 5d | 2026-03-22 | 2026-03-27 | 1468, 1483 |  | Zenith | 8664834 |
| 1485 | 36900.37000.37100.38000.39000.40800.41900.87700.1363300 | Internal Plaster | 9d | 2026-03-27 | 2026-04-05 | 1469, 1483, 1484FF+5d |  | Zenith | 8664844 |
| 1486 | 36900.37000.37100.38000.39000.40800.41900.87700.1363400 | IPS flooring work | 7d | 2026-04-05 | 2026-04-12 | 1470, 1485 |  | Zenith | 8664854 |
| 1487 | 36900.37000.37100.38000.39000.40800.41900.87700.1363500 | Toilet dado work | 6d | 2026-04-05 | 2026-04-11 | 1471, 1484, 1485 |  | Zenith | 8664864 |
| 1488 | 36900.37000.37100.38000.39000.40800.41900.87700.1363600 | Toilet flooring work | 7d | 2026-04-11 | 2026-04-18 | 1472, 1487 |  | Zenith | 8664874 |
| 1489 | 36900.37000.37100.38000.39000.40800.41900.87700.1363700 | False Cieling panel fixing | 7d | 2026-04-18 | 2026-04-25 | 1473, 1488 |  | Zenith | 8664884 |
| 1490 | 36900.37000.37100.38000.39000.40800.41900.87700.1363800 | Living dinning flooring | 7d | 2026-04-18 | 2026-04-25 | 1474, 1488 |  | Zenith | 8664894 |
| 1491 | 36900.37000.37100.38000.39000.40800.41900.87700.1363900 | Putty primer coat | 8d | 2026-04-26 | 2026-05-04 | 1475, 1490 |  | Zenith | 8664904 |
| 1492 | 36900.37000.37100.38000.39000.40800.41900.87700.1364000 | Aluminium door-window fixing | 12d | 2026-06-11 | 2026-06-22 | 1476, 1486, 1490 |  | Zenith | 8664914 |
| 1493 | 36900.37000.37100.38000.39000.40800.41900.87700.1364100 | Door shutter fixing (Pre Hung) | 8d | 2026-05-04 | 2026-05-12 | 1477, 1491 |  | Zenith | 8664924 |
| 1494 | 36900.37000.37100.38000.39000.40800.41900.87700.1364200 | Electrical wiring work | 10d | 2026-05-28 | 2026-06-06 | 1478, 1493 |  | Zenith | 8664934 |
| 1495 | 36900.37000.37100.38000.39000.40800.41900.87700.1364300 | Painting 1st coat | 12d | 2026-07-11 | 2026-07-22 | 1479, 1494 |  | Zenith | 8664944 |

| ID | WBS | Task | Duration | Start | Finish | Predecessors | Constraint | Calendar | Unique_Task_ID |
| --- | --- | --- | --- | --- | --- | --- | --- | --- | --- |
| 1496 | 36900.37000.37100.38000.39000.40800.41900.87800 | **19th floor roof** | 137.75d | 2026-03-19 | 2026-08-03 |  | start no earlier than 2026-03-19 | Zenith | 8648964 |
| 1497 | 36900.37000.37100.38000.39000.40800.41900.87800.1364400 | Block Work | 6d | 2026-03-19 | 2026-03-25 | 1187, 1481 |  | Zenith | 8664954 |
| 1498 | 36900.37000.37100.38000.39000.40800.41900.87800.1364500 | Fire sprinkler pipe fixing | 4d | 2026-03-25 | 2026-03-29 | 1482, 1497 |  | Zenith | 8664964 |
| 1499 | 36900.37000.37100.38000.39000.40800.41900.87800.1364600 | Internal Plumbing Works | 4d | 2026-03-25 | 2026-03-29 | 1483, 1497 |  | Zenith | 8664974 |
| 1500 | 36900.37000.37100.38000.39000.40800.41900.87800.1364700 | Waterproofing | 4d | 2026-03-29 | 2026-04-02 | 1484, 1499 |  | Zenith | 8664984 |
| 1501 | 36900.37000.37100.38000.39000.40800.41900.87800.1364800 | Internal Plaster | 9d | 2026-04-05 | 2026-04-14 | 1485, 1499, 1500FF+5d |  | Zenith | 8664994 |
| 1502 | 36900.37000.37100.38000.39000.40800.41900.87800.1364900 | IPS flooring work | 7d | 2026-04-14 | 2026-04-21 | 1486, 1501 |  | Zenith | 8665004 |
| 1503 | 36900.37000.37100.38000.39000.40800.41900.87800.1365000 | Toilet dado work | 6d | 2026-04-14 | 2026-04-20 | 1487, 1500, 1501 |  | Zenith | 8665014 |
| 1504 | 36900.37000.37100.38000.39000.40800.41900.87800.1365100 | Toilet flooring work | 7d | 2026-04-20 | 2026-04-27 | 1488, 1503 |  | Zenith | 8665024 |
| 1505 | 36900.37000.37100.38000.39000.40800.41900.87800.1365200 | False Cieling panel fixing | 7d | 2026-04-27 | 2026-05-04 | 1489, 1504 |  | Zenith | 8665034 |
| 1506 | 36900.37000.37100.38000.39000.40800.41900.87800.1365300 | Living dinning flooring | 7d | 2026-04-27 | 2026-05-04 | 1490, 1504 |  | Zenith | 8665044 |
| 1507 | 36900.37000.37100.38000.39000.40800.41900.87800.1365400 | Putty primer coat | 8d | 2026-05-04 | 2026-05-12 | 1491, 1506 |  | Zenith | 8665054 |
| 1508 | 36900.37000.37100.38000.39000.40800.41900.87800.1365500 | Aluminium door-window fixing | 12d | 2026-06-23 | 2026-07-04 | 1492, 1502, 1506 |  | Zenith | 8665064 |
| 1509 | 36900.37000.37100.38000.39000.40800.41900.87800.1365600 | Door shutter fixing (Pre Hung) | 8d | 2026-05-12 | 2026-05-20 | 1493, 1507 |  | Zenith | 8665074 |
| 1510 | 36900.37000.37100.38000.39000.40800.41900.87800.1365700 | Electrical wiring work | 10d | 2026-06-07 | 2026-06-16 | 1494, 1509 |  | Zenith | 8665084 |
| 1511 | 36900.37000.37100.38000.39000.40800.41900.87800.1365800 | Painting 1st coat | 12d | 2026-07-23 | 2026-08-03 | 1495, 1510 |  | Zenith | 8665094 |
| 1512 | 36900.37000.37100.38000.39000.40800.41900.87900 | **20th floor roof** | 141.75d | 2026-03-27 | 2026-08-15 |  | start no earlier than 2026-03-27 | Zenith | 8648974 |
| 1513 | 36900.37000.37100.38000.39000.40800.41900.87900.1365900 | Block Work | 6d | 2026-03-27 | 2026-04-02 | 1188, 1497 |  | Zenith | 8665104 |
| 1514 | 36900.37000.37100.38000.39000.40800.41900.87900.1366000 | Fire sprinkler pipe fixing | 4d | 2026-04-02 | 2026-04-06 | 1498, 1513 |  | Zenith | 8665114 |
| 1515 | 36900.37000.37100.38000.39000.40800.41900.87900.1366100 | Internal Plumbing Works | 4d | 2026-04-02 | 2026-04-06 | 1499, 1513 |  | Zenith | 8665124 |
| 1516 | 36900.37000.37100.38000.39000.40800.41900.87900.1366200 | Waterproofing | 4d | 2026-04-06 | 2026-04-10 | 1500, 1515 |  | Zenith | 8665134 |
| 1517 | 36900.37000.37100.38000.39000.40800.41900.87900.1366300 | Internal Plaster | 9d | 2026-04-14 | 2026-04-23 | 1501, 1515, 1516FF+5d |  | Zenith | 8665144 |
| 1518 | 36900.37000.37100.38000.39000.40800.41900.87900.1366400 | IPS flooring work | 7d | 2026-04-23 | 2026-04-30 | 1502, 1517 |  | Zenith | 8665154 |
| 1519 | 36900.37000.37100.38000.39000.40800.41900.87900.1366500 | Toilet dado work | 6d | 2026-04-23 | 2026-04-29 | 1503, 1516, 1517 |  | Zenith | 8665164 |
| 1520 | 36900.37000.37100.38000.39000.40800.41900.87900.1366600 | Toilet flooring work | 7d | 2026-04-29 | 2026-05-06 | 1504, 1519 |  | Zenith | 8665174 |
| 1521 | 36900.37000.37100.38000.39000.40800.41900.87900.1366700 | False Cieling panel fixing | 7d | 2026-05-06 | 2026-05-13 | 1505, 1520 |  | Zenith | 8665184 |
| 1522 | 36900.37000.37100.38000.39000.40800.41900.87900.1366800 | Living dinning flooring | 7d | 2026-05-06 | 2026-05-13 | 1506, 1520 |  | Zenith | 8665194 |
| 1523 | 36900.37000.37100.38000.39000.40800.41900.87900.1366900 | Putty primer coat | 8d | 2026-05-13 | 2026-05-21 | 1507, 1522 |  | Zenith | 8665204 |
| 1524 | 36900.37000.37100.38000.39000.40800.41900.87900.1367000 | Aluminium door-window fixing | 12d | 2026-07-05 | 2026-07-16 | 1508, 1518, 1522 |  | Zenith | 8665214 |
| 1525 | 36900.37000.37100.38000.39000.40800.41900.87900.1367100 | Door shutter fixing (Pre Hung) | 8d | 2026-05-21 | 2026-05-29 | 1509, 1523 |  | Zenith | 8665224 |
| 1526 | 36900.37000.37100.38000.39000.40800.41900.87900.1367200 | Electrical wiring work | 10d | 2026-06-17 | 2026-06-26 | 1510, 1525 |  | Zenith | 8665234 |
| 1527 | 36900.37000.37100.38000.39000.40800.41900.87900.1367300 | Painting 1st coat | 12d | 2026-08-04 | 2026-08-15 | 1511, 1526 |  | Zenith | 8665244 |

| ID | WBS | Task | Duration | Start | Finish | Predecessors | Constraint | Calendar | Unique_Task_ID |
| --- | --- | --- | --- | --- | --- | --- | --- | --- | --- |
| 1528 | 36900.37000.37100.38000.39000.40800.41900.88000 | **21st floor roof** | 145.75d | 2026-04-04 | 2026-08-27 |  | start no earlier than 2026-04-04 | Zenith | 8648984 |
| 1529 | 36900.37000.37100.38000.39000.40800.41900.88000.1367400 | Block Work | 6d | 2026-04-04 | 2026-04-10 | 1189, 1513 |  | Zenith | 8665254 |
| 1530 | 36900.37000.37100.38000.39000.40800.41900.88000.1367500 | Fire sprinkler pipe fixing | 4d | 2026-04-10 | 2026-04-14 | 1514, 1529 |  | Zenith | 8665264 |
| 1531 | 36900.37000.37100.38000.39000.40800.41900.88000.1367600 | Internal Plumbing Works | 4d | 2026-04-10 | 2026-04-14 | 1515, 1529 |  | Zenith | 8665274 |
| 1532 | 36900.37000.37100.38000.39000.40800.41900.88000.1367700 | Waterproofing | 4d | 2026-04-14 | 2026-04-18 | 1516, 1531 |  | Zenith | 8665284 |
| 1533 | 36900.37000.37100.38000.39000.40800.41900.88000.1367800 | Internal Plaster | 10d | 2026-04-23 | 2026-05-03 | 1517, 1531, 1532FF+5d |  | Zenith | 8665294 |
| 1534 | 36900.37000.37100.38000.39000.40800.41900.88000.1367900 | IPS flooring work | 7d | 2026-05-03 | 2026-05-10 | 1518, 1533 |  | Zenith | 8665304 |
| 1535 | 36900.37000.37100.38000.39000.40800.41900.88000.1368000 | Toilet dado work | 6d | 2026-05-03 | 2026-05-09 | 1519, 1532, 1533 |  | Zenith | 8665314 |
| 1536 | 36900.37000.37100.38000.39000.40800.41900.88000.1368100 | Toilet flooring work | 7d | 2026-05-09 | 2026-05-16 | 1520, 1535 |  | Zenith | 8665324 |
| 1537 | 36900.37000.37100.38000.39000.40800.41900.88000.1368200 | False Cieling panel fixing | 7d | 2026-05-16 | 2026-05-23 | 1521, 1536 |  | Zenith | 8665334 |
| 1538 | 36900.37000.37100.38000.39000.40800.41900.88000.1368300 | Living dinning flooring | 7d | 2026-05-16 | 2026-05-23 | 1522, 1536 |  | Zenith | 8665344 |
| 1539 | 36900.37000.37100.38000.39000.40800.41900.88000.1368400 | Putty primer coat | 8d | 2026-05-23 | 2026-05-31 | 1523, 1538 |  | Zenith | 8665354 |
| 1540 | 36900.37000.37100.38000.39000.40800.41900.88000.1368500 | Aluminium door-window fixing | 12d | 2026-07-17 | 2026-07-28 | 1524, 1534, 1538 |  | Zenith | 8665364 |
| 1541 | 36900.37000.37100.38000.39000.40800.41900.88000.1368600 | Door shutter fixing (Pre Hung) | 8d | 2026-05-31 | 2026-06-08 | 1525, 1539 |  | Zenith | 8665374 |
| 1542 | 36900.37000.37100.38000.39000.40800.41900.88000.1368700 | Electrical wiring work | 10d | 2026-06-27 | 2026-07-06 | 1526, 1541 |  | Zenith | 8665384 |
| 1543 | 36900.37000.37100.38000.39000.40800.41900.88000.1368800 | Painting 1st coat | 12d | 2026-08-16 | 2026-08-27 | 1527, 1542 |  | Zenith | 8665394 |
| 1544 | 36900.37000.37100.38000.39000.40800.41900.88100 | **22nd floor roof** | 149.75d | 2026-04-12 | 2026-09-08 |  | start no earlier than 2026-04-12 | Zenith | 8648994 |
| 1545 | 36900.37000.37100.38000.39000.40800.41900.88100.1368900 | Block Work | 6d | 2026-04-12 | 2026-04-18 | 1190, 1529 |  | Zenith | 8665404 |
| 1546 | 36900.37000.37100.38000.39000.40800.41900.88100.1369000 | Fire sprinkler pipe fixing | 4d | 2026-04-18 | 2026-04-22 | 1530, 1545 |  | Zenith | 8665414 |
| 1547 | 36900.37000.37100.38000.39000.40800.41900.88100.1369100 | Internal Plumbing Works | 4d | 2026-04-18 | 2026-04-22 | 1531, 1545 |  | Zenith | 8665424 |
| 1548 | 36900.37000.37100.38000.39000.40800.41900.88100.1369200 | Waterproofing | 4d | 2026-04-22 | 2026-04-26 | 1532, 1547 |  | Zenith | 8665434 |
| 1549 | 36900.37000.37100.38000.39000.40800.41900.88100.1369300 | Internal Plaster | 10d | 2026-05-03 | 2026-05-13 | 1533, 1547, 1548FF+5d |  | Zenith | 8665444 |
| 1550 | 36900.37000.37100.38000.39000.40800.41900.88100.1369400 | IPS flooring work | 7d | 2026-05-13 | 2026-05-20 | 1534, 1549 |  | Zenith | 8665454 |
| 1551 | 36900.37000.37100.38000.39000.40800.41900.88100.1369500 | Toilet dado work | 6d | 2026-05-13 | 2026-05-19 | 1535, 1548, 1549 |  | Zenith | 8665464 |
| 1552 | 36900.37000.37100.38000.39000.40800.41900.88100.1369600 | Toilet flooring work | 7d | 2026-05-19 | 2026-05-26 | 1536, 1551 |  | Zenith | 8665474 |
| 1553 | 36900.37000.37100.38000.39000.40800.41900.88100.1369700 | False Cieling panel fixing | 7d | 2026-05-26 | 2026-06-02 | 1537, 1552 |  | Zenith | 8665484 |
| 1554 | 36900.37000.37100.38000.39000.40800.41900.88100.1369800 | Living dinning flooring | 7d | 2026-05-26 | 2026-06-02 | 1538, 1552 |  | Zenith | 8665494 |
| 1555 | 36900.37000.37100.38000.39000.40800.41900.88100.1369900 | Putty primer coat | 8d | 2026-06-02 | 2026-06-10 | 1539, 1554 |  | Zenith | 8665504 |
| 1556 | 36900.37000.37100.38000.39000.40800.41900.88100.1370000 | Aluminium door-window fixing | 12d | 2026-07-29 | 2026-08-09 | 1540, 1550, 1554 |  | Zenith | 8665514 |
| 1557 | 36900.37000.37100.38000.39000.40800.41900.88100.1370100 | Door shutter fixing (Pre Hung) | 8d | 2026-06-10 | 2026-06-18 | 1541, 1555 |  | Zenith | 8665524 |
| 1558 | 36900.37000.37100.38000.39000.40800.41900.88100.1370200 | Electrical wiring work | 10d | 2026-07-07 | 2026-07-16 | 1542, 1557 |  | Zenith | 8665534 |
| 1559 | 36900.37000.37100.38000.39000.40800.41900.88100.1370300 | Painting 1st coat | 12d | 2026-08-28 | 2026-09-08 | 1543, 1558 |  | Zenith | 8665544 |

| ID | WBS | Task | Duration | Start | Finish | Predecessors | Constraint | Calendar | Unique_Task_ID |
| --- | --- | --- | --- | --- | --- | --- | --- | --- | --- |
| 1560 | 36900.37000.37100.38000.39000.40800.41900.88200 | **23rd floor roof** | 153.75d | 2026-04-20 | 2026-09-20 |  | start no earlier than 2026-04-20 | Zenith | 8649004 |
| 1561 | 36900.37000.37100.38000.39000.40800.41900.88200.1370400 | Block Work | 6d | 2026-04-20 | 2026-04-26 | 1191, 1545 |  | Zenith | 8665554 |
| 1562 | 36900.37000.37100.38000.39000.40800.41900.88200.1370500 | Fire sprinkler pipe fixing | 5d | 2026-04-26 | 2026-05-01 | 1546, 1561 |  | Zenith | 8665564 |
| 1563 | 36900.37000.37100.38000.39000.40800.41900.88200.1370600 | Internal Plumbing Works | 5d | 2026-04-26 | 2026-05-01 | 1547, 1561 |  | Zenith | 8665574 |
| 1564 | 36900.37000.37100.38000.39000.40800.41900.88200.1370700 | Waterproofing | 5d | 2026-05-01 | 2026-05-06 | 1548, 1563 |  | Zenith | 8665584 |
| 1565 | 36900.37000.37100.38000.39000.40800.41900.88200.1370800 | Internal Plaster | 9d | 2026-05-13 | 2026-05-22 | 1549, 1563, 1564FF+5d |  | Zenith | 8665594 |
| 1566 | 36900.37000.37100.38000.39000.40800.41900.88200.1370900 | IPS flooring work | 7d | 2026-05-22 | 2026-05-29 | 1550, 1565 |  | Zenith | 8665604 |
| 1567 | 36900.37000.37100.38000.39000.40800.41900.88200.1371000 | Toilet dado work | 6d | 2026-05-22 | 2026-05-28 | 1551, 1564, 1565 |  | Zenith | 8665614 |
| 1568 | 36900.37000.37100.38000.39000.40800.41900.88200.1371100 | Toilet flooring work | 7d | 2026-05-28 | 2026-06-04 | 1552, 1567 |  | Zenith | 8665624 |
| 1569 | 36900.37000.37100.38000.39000.40800.41900.88200.1371200 | False Cieling panel fixing | 7d | 2026-06-04 | 2026-06-11 | 1553, 1568 |  | Zenith | 8665634 |
| 1570 | 36900.37000.37100.38000.39000.40800.41900.88200.1371300 | Living dinning flooring | 7d | 2026-06-04 | 2026-06-11 | 1554, 1568 |  | Zenith | 8665644 |
| 1571 | 36900.37000.37100.38000.39000.40800.41900.88200.1371400 | Putty primer coat | 8d | 2026-06-11 | 2026-06-19 | 1555, 1570 |  | Zenith | 8665654 |
| 1572 | 36900.37000.37100.38000.39000.40800.41900.88200.1371500 | Aluminium door-window fixing | 12d | 2026-08-10 | 2026-08-21 | 1556, 1566, 1570 |  | Zenith | 8665664 |
| 1573 | 36900.37000.37100.38000.39000.40800.41900.88200.1371600 | Door shutter fixing (Pre Hung) | 8d | 2026-06-19 | 2026-06-27 | 1557, 1571 |  | Zenith | 8665674 |
| 1574 | 36900.37000.37100.38000.39000.40800.41900.88200.1371700 | Electrical wiring work | 10d | 2026-07-17 | 2026-07-26 | 1558, 1573 |  | Zenith | 8665684 |
| 1575 | 36900.37000.37100.38000.39000.40800.41900.88200.1371800 | Painting 1st coat | 12d | 2026-09-09 | 2026-09-20 | 1559, 1574 |  | Zenith | 8665694 |
| 1576 | 36900.37000.37100.38000.39000.40800.41900.88300 | **24th floor roof** | 157.75d | 2026-04-28 | 2026-10-02 |  | start no earlier than 2026-04-28 | Zenith | 8649014 |
| 1577 | 36900.37000.37100.38000.39000.40800.41900.88300.1371900 | Block Work | 6d | 2026-04-28 | 2026-05-04 | 1192, 1561 |  | Zenith | 8665704 |
| 1578 | 36900.37000.37100.38000.39000.40800.41900.88300.1372000 | Fire sprinkler pipe fixing | 5d | 2026-05-04 | 2026-05-09 | 1562, 1577 |  | Zenith | 8665714 |
| 1579 | 36900.37000.37100.38000.39000.40800.41900.88300.1372100 | Internal Plumbing Works | 5d | 2026-05-04 | 2026-05-09 | 1563, 1577 |  | Zenith | 8665724 |
| 1580 | 36900.37000.37100.38000.39000.40800.41900.88300.1372200 | Waterproofing | 5d | 2026-05-09 | 2026-05-14 | 1564, 1579 |  | Zenith | 8665734 |
| 1581 | 36900.37000.37100.38000.39000.40800.41900.88300.1372300 | Internal Plaster | 9d | 2026-05-22 | 2026-05-31 | 1565, 1579, 1580FF+5d |  | Zenith | 8665744 |
| 1582 | 36900.37000.37100.38000.39000.40800.41900.88300.1372400 | IPS flooring work | 7d | 2026-05-31 | 2026-06-07 | 1566, 1581 |  | Zenith | 8665754 |
| 1583 | 36900.37000.37100.38000.39000.40800.41900.88300.1372500 | Toilet dado work | 6d | 2026-05-31 | 2026-06-06 | 1567, 1580, 1581 |  | Zenith | 8665764 |
| 1584 | 36900.37000.37100.38000.39000.40800.41900.88300.1372600 | Toilet flooring work | 7d | 2026-06-06 | 2026-06-13 | 1568, 1583 |  | Zenith | 8665774 |
| 1585 | 36900.37000.37100.38000.39000.40800.41900.88300.1372700 | False Cieling panel fixing | 7d | 2026-06-13 | 2026-06-20 | 1569, 1584 |  | Zenith | 8665784 |
| 1586 | 36900.37000.37100.38000.39000.40800.41900.88300.1372800 | Living dinning flooring | 7d | 2026-06-13 | 2026-06-20 | 1570, 1584 |  | Zenith | 8665794 |
| 1587 | 36900.37000.37100.38000.39000.40800.41900.88300.1372900 | Putty primer coat | 8d | 2026-06-20 | 2026-06-28 | 1571, 1586 |  | Zenith | 8665804 |
| 1588 | 36900.37000.37100.38000.39000.40800.41900.88300.1373000 | Aluminium door-window fixing | 12d | 2026-08-22 | 2026-09-02 | 1572, 1582, 1586 |  | Zenith | 8665814 |
| 1589 | 36900.37000.37100.38000.39000.40800.41900.88300.1373100 | Door shutter fixing (Pre Hung) | 8d | 2026-06-28 | 2026-07-06 | 1573, 1587 |  | Zenith | 8665824 |
| 1590 | 36900.37000.37100.38000.39000.40800.41900.88300.1373200 | Electrical wiring work | 10d | 2026-07-27 | 2026-08-05 | 1574, 1589 |  | Zenith | 8665834 |
| 1591 | 36900.37000.37100.38000.39000.40800.41900.88300.1373300 | Painting 1st coat | 12d | 2026-09-21 | 2026-10-02 | 1575, 1590 |  | Zenith | 8665844 |

| ID | WBS | Task | Duration | Start | Finish | Predecessors | Constraint | Calendar | Unique_Task_ID |
| --- | --- | --- | --- | --- | --- | --- | --- | --- | --- |
| 1592 | 36900.37000.37100.38000.39000.40800.41900.88400 | **25th floor roof** | 161.75d | 2026-05-06 | 2026-10-14 |  | start no earlier than 2026-05-06 | Zenith | 8649024 |
| 1593 | 36900.37000.37100.38000.39000.40800.41900.88400.1373400 | Block Work | 6d | 2026-05-06 | 2026-05-12 | 1193, 1577 |  | Zenith | 8665854 |
| 1594 | 36900.37000.37100.38000.39000.40800.41900.88400.1373500 | Fire sprinkler pipe fixing | 5d | 2026-05-12 | 2026-05-17 | 1578, 1593 |  | Zenith | 8665864 |
| 1595 | 36900.37000.37100.38000.39000.40800.41900.88400.1373600 | Internal Plumbing Works | 5d | 2026-05-12 | 2026-05-17 | 1579, 1593 |  | Zenith | 8665874 |
| 1596 | 36900.37000.37100.38000.39000.40800.41900.88400.1373700 | Waterproofing | 5d | 2026-05-17 | 2026-05-22 | 1580, 1595 |  | Zenith | 8665884 |
| 1597 | 36900.37000.37100.38000.39000.40800.41900.88400.1373800 | Internal Plaster | 9d | 2026-05-31 | 2026-06-09 | 1581, 1595, 1596FF+5d |  | Zenith | 8665894 |
| 1598 | 36900.37000.37100.38000.39000.40800.41900.88400.1373900 | IPS flooring work | 7d | 2026-06-09 | 2026-06-16 | 1582, 1597 |  | Zenith | 8665904 |
| 1599 | 36900.37000.37100.38000.39000.40800.41900.88400.1374000 | Toilet dado work | 6d | 2026-06-09 | 2026-06-15 | 1583, 1596, 1597 |  | Zenith | 8665914 |
| 1600 | 36900.37000.37100.38000.39000.40800.41900.88400.1374100 | Toilet flooring work | 7d | 2026-06-15 | 2026-06-22 | 1584, 1599 |  | Zenith | 8665924 |
| 1601 | 36900.37000.37100.38000.39000.40800.41900.88400.1374200 | False Cieling panel fixing | 7d | 2026-06-22 | 2026-06-29 | 1585, 1600 |  | Zenith | 8665934 |
| 1602 | 36900.37000.37100.38000.39000.40800.41900.88400.1374300 | Living dinning flooring | 7d | 2026-06-22 | 2026-06-29 | 1586, 1600 |  | Zenith | 8665944 |
| 1603 | 36900.37000.37100.38000.39000.40800.41900.88400.1374400 | Putty primer coat | 8d | 2026-06-29 | 2026-07-07 | 1587, 1602 |  | Zenith | 8665954 |
| 1604 | 36900.37000.37100.38000.39000.40800.41900.88400.1374500 | Aluminium door-window fixing | 12d | 2026-09-03 | 2026-09-14 | 1588, 1598, 1602 |  | Zenith | 8665964 |
| 1605 | 36900.37000.37100.38000.39000.40800.41900.88400.1374600 | Door shutter fixing (Pre Hung) | 8d | 2026-07-07 | 2026-07-15 | 1589, 1603 |  | Zenith | 8665974 |
| 1606 | 36900.37000.37100.38000.39000.40800.41900.88400.1374700 | Electrical wiring work | 10d | 2026-08-06 | 2026-08-15 | 1590, 1605 |  | Zenith | 8665984 |
| 1607 | 36900.37000.37100.38000.39000.40800.41900.88400.1374800 | Painting 1st coat | 12d | 2026-10-03 | 2026-10-14 | 1591, 1606 |  | Zenith | 8665994 |
| 1608 | 36900.37000.37100.38000.39000.40800.41900.88500 | **26th floor roof** | 165.75d | 2026-05-14 | 2026-10-26 |  | start no earlier than 2026-05-14 | Zenith | 8649034 |
| 1609 | 36900.37000.37100.38000.39000.40800.41900.88500.1374900 | Block Work | 7d | 2026-05-14 | 2026-05-21 | 1194, 1593 |  | Zenith | 8666004 |
| 1610 | 36900.37000.37100.38000.39000.40800.41900.88500.1375000 | Fire sprinkler pipe fixing | 7d | 2026-05-21 | 2026-05-28 | 1594, 1609 |  | Zenith | 8666014 |
| 1611 | 36900.37000.37100.38000.39000.40800.41900.88500.1375100 | Internal Plumbing Works | 7d | 2026-05-21 | 2026-05-28 | 1595, 1609 |  | Zenith | 8666024 |
| 1612 | 36900.37000.37100.38000.39000.40800.41900.88500.1375200 | Waterproofing | 7d | 2026-05-28 | 2026-06-04 | 1596, 1611 |  | Zenith | 8666034 |
| 1613 | 36900.37000.37100.38000.39000.40800.41900.88500.1375300 | Internal Plaster | 7d | 2026-06-09 | 2026-06-16 | 1597, 1611, 1612FF+5d |  | Zenith | 8666044 |
| 1614 | 36900.37000.37100.38000.39000.40800.41900.88500.1375400 | IPS flooring work | 7d | 2026-06-16 | 2026-06-23 | 1598, 1613 |  | Zenith | 8666054 |
| 1615 | 36900.37000.37100.38000.39000.40800.41900.88500.1375500 | Toilet dado work | 6d | 2026-06-16 | 2026-06-22 | 1599, 1612, 1613 |  | Zenith | 8666064 |
| 1616 | 36900.37000.37100.38000.39000.40800.41900.88500.1375600 | Toilet flooring work | 7d | 2026-06-22 | 2026-06-29 | 1600, 1615 |  | Zenith | 8666074 |
| 1617 | 36900.37000.37100.38000.39000.40800.41900.88500.1375700 | False Cieling panel fixing | 7d | 2026-06-29 | 2026-07-06 | 1601, 1616 |  | Zenith | 8666084 |
| 1618 | 36900.37000.37100.38000.39000.40800.41900.88500.1375800 | Living dinning flooring | 7d | 2026-06-29 | 2026-07-06 | 1602, 1616 |  | Zenith | 8666094 |
| 1619 | 36900.37000.37100.38000.39000.40800.41900.88500.1375900 | Putty primer coat | 8d | 2026-07-07 | 2026-07-15 | 1603, 1618 |  | Zenith | 8666104 |
| 1620 | 36900.37000.37100.38000.39000.40800.41900.88500.1376000 | Aluminium door-window fixing | 12d | 2026-09-15 | 2026-09-26 | 1604, 1614, 1618 |  | Zenith | 8666114 |
| 1621 | 36900.37000.37100.38000.39000.40800.41900.88500.1376100 | Door shutter fixing (Pre Hung) | 8d | 2026-07-15 | 2026-07-23 | 1605, 1619 |  | Zenith | 8666124 |
| 1622 | 36900.37000.37100.38000.39000.40800.41900.88500.1376200 | Electrical wiring work | 10d | 2026-08-16 | 2026-08-25 | 1606, 1621 |  | Zenith | 8666134 |
| 1623 | 36900.37000.37100.38000.39000.40800.41900.88500.1376300 | Painting 1st coat | 12d | 2026-10-15 | 2026-10-26 | 1607, 1622 |  | Zenith | 8666144 |

| ID | WBS | Task | Duration | Start | Finish | Predecessors | Constraint | Calendar | Unique_Task_ID |
| --- | --- | --- | --- | --- | --- | --- | --- | --- | --- |
| 1624 | 36900.37000.37100.38000.39000.40800.41900.88600 | **27th floor roof** | 167.75d | 2026-05-24 | 2026-12-22 |  | start no earlier than 2026-05-24 | Zenith | 8649044 |
| 1625 | 36900.37000.37100.38000.39000.40800.41900.88600.1376400 | Block Work | 7d | 2026-05-24 | 2026-05-31 | 1195, 1609 |  | Zenith | 8666154 |
| 1626 | 36900.37000.37100.38000.39000.40800.41900.88600.1376500 | Fire sprinkler pipe fixing | 7d | 2026-05-31 | 2026-06-07 | 1610, 1625 |  | Zenith | 8666164 |
| 1627 | 36900.37000.37100.38000.39000.40800.41900.88600.1376600 | Internal Plumbing Works | 7d | 2026-05-31 | 2026-06-07 | 1611, 1625 |  | Zenith | 8666174 |
| 1628 | 36900.37000.37100.38000.39000.40800.41900.88600.1376700 | Waterproofing | 7d | 2026-06-07 | 2026-06-14 | 1612, 1627 |  | Zenith | 8666184 |
| 1629 | 36900.37000.37100.38000.39000.40800.41900.88600.1376800 | Internal Plaster | 7d | 2026-06-16 | 2026-06-23 | 1613, 1627, 1628FF+5d |  | Zenith | 8666194 |
| 1630 | 36900.37000.37100.38000.39000.40800.41900.88600.1376900 | IPS flooring work | 7d | 2026-06-23 | 2026-06-30 | 1614, 1629 |  | Zenith | 8666204 |
| 1631 | 36900.37000.37100.38000.39000.40800.41900.88600.1377000 | Toilet dado work | 6d | 2026-06-23 | 2026-06-29 | 1615, 1628, 1629 |  | Zenith | 8666214 |
| 1632 | 36900.37000.37100.38000.39000.40800.41900.88600.1377100 | Toilet flooring work | 7d | 2026-06-29 | 2026-07-06 | 1616, 1631 |  | Zenith | 8666224 |
| 1633 | 36900.37000.37100.38000.39000.40800.41900.88600.1377200 | False Cieling panel fixing | 7d | 2026-07-06 | 2026-07-13 | 1617, 1632 |  | Zenith | 8666234 |
| 1634 | 36900.37000.37100.38000.39000.40800.41900.88600.1377300 | Living dinning flooring | 7d | 2026-07-06 | 2026-07-13 | 1618, 1632 |  | Zenith | 8666244 |
| 1635 | 36900.37000.37100.38000.39000.40800.41900.88600.1377400 | Putty primer coat | 8d | 2026-07-15 | 2026-07-23 | 1619, 1634 |  | Zenith | 8666254 |
| 1636 | 36900.37000.37100.38000.39000.40800.41900.88600.1377500 | Aluminium door-window fixing | 12d | 2026-09-27 | 2026-10-08 | 1620, 1630, 1634 |  | Zenith | 8666264 |
| 1637 | 36900.37000.37100.38000.39000.40800.41900.88600.1377600 | Door shutter fixing (Pre Hung) | 8d | 2026-07-23 | 2026-07-31 | 1621, 1635 |  | Zenith | 8666274 |
| 1638 | 36900.37000.37100.38000.39000.40800.41900.88600.1377700 | Electrical wiring work | 10d | 2026-08-26 | 2026-09-04 | 1622, 1637 |  | Zenith | 8666284 |
| 1639 | 36900.37000.37100.38000.39000.40800.41900.88600.1377800 | Painting 1st coat | 12d | 2026-10-27 | 2026-12-22 | 1623, 1638 |  | Zenith | 8666294 |
| 1640 | 36900.37000.37100.38000.39000.40800.41900.88700 | **28th floor roof** | 169.75d | 2026-06-03 | 2027-01-03 |  | start no earlier than 2026-06-03 | Zenith | 8649054 |
| 1641 | 36900.37000.37100.38000.39000.40800.41900.88700.1377900 | Block Work | 7d | 2026-06-03 | 2026-06-10 | 1196, 1625 |  | Zenith | 8666304 |
| 1642 | 36900.37000.37100.38000.39000.40800.41900.88700.1378000 | Fire sprinkler pipe fixing | 7d | 2026-06-10 | 2026-06-17 | 1626, 1641 |  | Zenith | 8666314 |
| 1643 | 36900.37000.37100.38000.39000.40800.41900.88700.1378100 | Internal Plumbing Works | 7d | 2026-06-10 | 2026-06-17 | 1627, 1641 |  | Zenith | 8666324 |
| 1644 | 36900.37000.37100.38000.39000.40800.41900.88700.1378200 | Waterproofing | 7d | 2026-06-17 | 2026-06-24 | 1628, 1643 |  | Zenith | 8666334 |
| 1645 | 36900.37000.37100.38000.39000.40800.41900.88700.1378300 | Internal Plaster | 7d | 2026-06-23 | 2026-06-30 | 1629, 1643, 1644FF+5d |  | Zenith | 8666344 |
| 1646 | 36900.37000.37100.38000.39000.40800.41900.88700.1378400 | IPS flooring work | 7d | 2026-06-30 | 2026-07-07 | 1630, 1645 |  | Zenith | 8666354 |
| 1647 | 36900.37000.37100.38000.39000.40800.41900.88700.1378500 | Toilet dado work | 6d | 2026-06-30 | 2026-07-06 | 1631, 1644, 1645 |  | Zenith | 8666364 |
| 1648 | 36900.37000.37100.38000.39000.40800.41900.88700.1378600 | Toilet flooring work | 7d | 2026-07-06 | 2026-07-13 | 1632, 1647 |  | Zenith | 8666374 |
| 1649 | 36900.37000.37100.38000.39000.40800.41900.88700.1378700 | False Cieling panel fixing | 7d | 2026-07-13 | 2026-07-20 | 1633, 1648 |  | Zenith | 8666384 |
| 1650 | 36900.37000.37100.38000.39000.40800.41900.88700.1378800 | Living dinning flooring | 7d | 2026-07-13 | 2026-07-20 | 1634, 1648 |  | Zenith | 8666394 |
| 1651 | 36900.37000.37100.38000.39000.40800.41900.88700.1378900 | Putty primer coat | 8d | 2026-07-23 | 2026-07-31 | 1635, 1650 |  | Zenith | 8666404 |
| 1652 | 36900.37000.37100.38000.39000.40800.41900.88700.1379000 | Aluminium door-window fixing | 12d | 2026-10-09 | 2026-10-20 | 1636, 1646, 1650 |  | Zenith | 8666414 |
| 1653 | 36900.37000.37100.38000.39000.40800.41900.88700.1379100 | Door shutter fixing (Pre Hung) | 8d | 2026-07-31 | 2026-08-08 | 1637, 1651 |  | Zenith | 8666424 |
| 1654 | 36900.37000.37100.38000.39000.40800.41900.88700.1379200 | Electrical wiring work | 10d | 2026-09-05 | 2026-09-14 | 1638, 1653 |  | Zenith | 8666434 |
| 1655 | 36900.37000.37100.38000.39000.40800.41900.88700.1379300 | Painting 1st coat | 12d | 2026-12-23 | 2027-01-03 | 1639, 1654 |  | Zenith | 8666444 |

| ID | WBS | Task | Duration | Start | Finish | Predecessors | Constraint | Calendar | Unique_Task_ID |
| --- | --- | --- | --- | --- | --- | --- | --- | --- | --- |
| 1656 | 36900.37000.37100.38000.39000.40800.41900.88800 | **29th floor roof** | 171.75d | 2026-06-13 | 2027-01-15 |  | start no earlier than 2026-06-13 | Zenith | 8649064 |
| 1657 | 36900.37000.37100.38000.39000.40800.41900.88800.1379400 | Block Work | 7d | 2026-06-13 | 2026-06-20 | 1197, 1641 |  | Zenith | 8666454 |
| 1658 | 36900.37000.37100.38000.39000.40800.41900.88800.1379500 | Fire sprinkler pipe fixing | 7d | 2026-06-20 | 2026-06-27 | 1642, 1657 |  | Zenith | 8666464 |
| 1659 | 36900.37000.37100.38000.39000.40800.41900.88800.1379600 | Internal Plumbing Works | 7d | 2026-06-20 | 2026-06-27 | 1643, 1657 |  | Zenith | 8666474 |
| 1660 | 36900.37000.37100.38000.39000.40800.41900.88800.1379700 | Waterproofing | 7d | 2026-06-27 | 2026-07-04 | 1644, 1659 |  | Zenith | 8666484 |
| 1661 | 36900.37000.37100.38000.39000.40800.41900.88800.1379800 | Internal Plaster | 7d | 2026-07-02 | 2026-07-09 | 1645, 1659, 1660FF+5d |  | Zenith | 8666494 |
| 1662 | 36900.37000.37100.38000.39000.40800.41900.88800.1379900 | IPS flooring work | 7d | 2026-07-09 | 2026-07-16 | 1646, 1661 |  | Zenith | 8666504 |
| 1663 | 36900.37000.37100.38000.39000.40800.41900.88800.1380000 | Toilet dado work | 6d | 2026-07-09 | 2026-07-15 | 1647, 1660, 1661 |  | Zenith | 8666514 |
| 1664 | 36900.37000.37100.38000.39000.40800.41900.88800.1380100 | Toilet flooring work | 7d | 2026-07-15 | 2026-07-22 | 1648, 1663 |  | Zenith | 8666524 |
| 1665 | 36900.37000.37100.38000.39000.40800.41900.88800.1380200 | False Cieling panel fixing | 7d | 2026-07-22 | 2026-07-29 | 1649, 1664 |  | Zenith | 8666534 |
| 1666 | 36900.37000.37100.38000.39000.40800.41900.88800.1380300 | Living dinning flooring | 7d | 2026-07-22 | 2026-07-29 | 1650, 1664 |  | Zenith | 8666544 |
| 1667 | 36900.37000.37100.38000.39000.40800.41900.88800.1380400 | Putty primer coat | 8d | 2026-07-31 | 2026-08-08 | 1651, 1666 |  | Zenith | 8666554 |
| 1668 | 36900.37000.37100.38000.39000.40800.41900.88800.1380500 | Aluminium door-window fixing | 12d | 2026-10-21 | 2026-12-16 | 1652, 1662, 1666 |  | Zenith | 8666564 |
| 1669 | 36900.37000.37100.38000.39000.40800.41900.88800.1380600 | Door shutter fixing (Pre Hung) | 8d | 2026-08-08 | 2026-08-16 | 1653, 1667 |  | Zenith | 8666574 |
| 1670 | 36900.37000.37100.38000.39000.40800.41900.88800.1380700 | Electrical wiring work | 10d | 2026-09-15 | 2026-09-24 | 1654, 1669 |  | Zenith | 8666584 |
| 1671 | 36900.37000.37100.38000.39000.40800.41900.88800.1380800 | Painting 1st coat | 12d | 2027-01-04 | 2027-01-15 | 1655, 1670 |  | Zenith | 8666594 |
| 1672 | 36900.37000.37100.38000.39000.40800.41900.88900 | **30th floor roof** | 176.75d | 2026-06-23 | 2027-01-30 |  | start no earlier than 2026-06-23 | Zenith | 8649074 |
| 1673 | 36900.37000.37100.38000.39000.40800.41900.88900.1380900 | Block Work | 10d | 2026-06-23 | 2026-07-03 | 1198, 1657 |  | Zenith | 8666604 |
| 1674 | 36900.37000.37100.38000.39000.40800.41900.88900.1381000 | Fire sprinkler pipe fixing | 6d | 2026-07-03 | 2026-07-09 | 1658, 1673 |  | Zenith | 8666614 |
| 1675 | 36900.37000.37100.38000.39000.40800.41900.88900.1381100 | Internal Plumbing Works | 10d | 2026-07-03 | 2026-07-13 | 1659, 1673 |  | Zenith | 8666624 |
| 1676 | 36900.37000.37100.38000.39000.40800.41900.88900.1381200 | Waterproofing | 14d | 2026-07-13 | 2026-07-27 | 1660, 1675 |  | Zenith | 8666634 |
| 1677 | 36900.37000.37100.38000.39000.40800.41900.88900.1381300 | Internal Plaster | 14d | 2026-07-18 | 2026-08-01 | 1661, 1675, 1676FF+5d |  | Zenith | 8666644 |
| 1678 | 36900.37000.37100.38000.39000.40800.41900.88900.1381400 | IPS flooring work | 10d | 2026-08-01 | 2026-08-11 | 1662, 1677 |  | Zenith | 8666654 |
| 1679 | 36900.37000.37100.38000.39000.40800.41900.88900.1381500 | Toilet dado work | 10d | 2026-08-01 | 2026-08-11 | 1663, 1676, 1677 |  | Zenith | 8666664 |
| 1680 | 36900.37000.37100.38000.39000.40800.41900.88900.1381600 | Toilet flooring work | 7d | 2026-08-11 | 2026-08-18 | 1664, 1679 |  | Zenith | 8666674 |
| 1681 | 36900.37000.37100.38000.39000.40800.41900.88900.1381700 | False Cieling panel fixing | 10d | 2026-08-18 | 2026-08-28 | 1665, 1680 |  | Zenith | 8666684 |
| 1682 | 36900.37000.37100.38000.39000.40800.41900.88900.1381800 | Living dinning flooring | 13d | 2026-08-18 | 2026-08-31 | 1666, 1680 |  | Zenith | 8666694 |
| 1683 | 36900.37000.37100.38000.39000.40800.41900.88900.1381900 | Putty primer coat | 12d | 2026-08-31 | 2026-09-12 | 1667, 1682 |  | Zenith | 8666704 |
| 1684 | 36900.37000.37100.38000.39000.40800.41900.88900.1382000 | Aluminium door-window fixing | 15d | 2026-12-17 | 2026-12-31 | 1668, 1678, 1682 |  | Zenith | 8666714 |
| 1685 | 36900.37000.37100.38000.39000.40800.41900.88900.1382100 | Door shutter fixing (Pre Hung) | 8d | 2026-09-12 | 2026-09-20 | 1669, 1683 |  | Zenith | 8666724 |
| 1686 | 36900.37000.37100.38000.39000.40800.41900.88900.1382200 | Electrical wiring work | 12d | 2026-09-25 | 2026-10-06 | 1670, 1685 |  | Zenith | 8666734 |
| 1687 | 36900.37000.37100.38000.39000.40800.41900.88900.1382300 | Painting 1st coat | 15d | 2027-01-16 | 2027-01-30 | 1671, 1686 |  | Zenith | 8666744 |

| ID | WBS | Task | Duration | Start | Finish | Predecessors | Constraint | Calendar | Unique_Task_ID |
| --- | --- | --- | --- | --- | --- | --- | --- | --- | --- |
| 1688 | 36900.37000.37100.38000.39000.40800.41900.89000 | **31st floor roof** | 181.75d | 2026-07-03 | 2027-02-14 |  | start no earlier than 2026-07-03 | Zenith | 8649084 |
| 1689 | 36900.37000.37100.38000.39000.40800.41900.89000.1382400 | Block Work | 10d | 2026-07-03 | 2026-07-13 | 1199, 1673 |  | Zenith | 8666754 |
| 1690 | 36900.37000.37100.38000.39000.40800.41900.89000.1382500 | Fire sprinkler pipe fixing | 6d | 2026-07-13 | 2026-07-19 | 1674, 1689 |  | Zenith | 8666764 |
| 1691 | 36900.37000.37100.38000.39000.40800.41900.89000.1382600 | Internal Plumbing Works | 10d | 2026-07-13 | 2026-07-23 | 1675, 1689 |  | Zenith | 8666774 |
| 1692 | 36900.37000.37100.38000.39000.40800.41900.89000.1382700 | Waterproofing | 14d | 2026-07-27 | 2026-08-10 | 1676, 1691 |  | Zenith | 8666784 |
| 1693 | 36900.37000.37100.38000.39000.40800.41900.89000.1382800 | Internal Plaster | 14d | 2026-08-01 | 2026-08-15 | 1677, 1691, 1692FF+5d |  | Zenith | 8666794 |
| 1694 | 36900.37000.37100.38000.39000.40800.41900.89000.1382900 | IPS flooring work | 10d | 2026-08-15 | 2026-08-25 | 1678, 1693 |  | Zenith | 8666804 |
| 1695 | 36900.37000.37100.38000.39000.40800.41900.89000.1383000 | Toilet dado work | 10d | 2026-08-15 | 2026-08-25 | 1679, 1692, 1693 |  | Zenith | 8666814 |
| 1696 | 36900.37000.37100.38000.39000.40800.41900.89000.1383100 | Toilet flooring work | 7d | 2026-08-25 | 2026-09-01 | 1680, 1695 |  | Zenith | 8666824 |
| 1697 | 36900.37000.37100.38000.39000.40800.41900.89000.1383200 | False Cieling panel fixing | 10d | 2026-09-01 | 2026-09-11 | 1681, 1696 |  | Zenith | 8666834 |
| 1698 | 36900.37000.37100.38000.39000.40800.41900.89000.1383300 | Living dinning flooring | 13d | 2026-09-01 | 2026-09-14 | 1682, 1696 |  | Zenith | 8666844 |
| 1699 | 36900.37000.37100.38000.39000.40800.41900.89000.1383400 | Putty primer coat | 12d | 2026-09-14 | 2026-09-26 | 1683, 1698 |  | Zenith | 8666854 |
| 1700 | 36900.37000.37100.38000.39000.40800.41900.89000.1383500 | Aluminium door-window fixing | 15d | 2027-01-01 | 2027-01-15 | 1684, 1694, 1698 |  | Zenith | 8666864 |
| 1701 | 36900.37000.37100.38000.39000.40800.41900.89000.1383600 | Door shutter fixing (Pre Hung) | 8d | 2026-09-26 | 2026-10-04 | 1685, 1699 |  | Zenith | 8666874 |
| 1702 | 36900.37000.37100.38000.39000.40800.41900.89000.1383700 | Electrical wiring work | 12d | 2026-10-07 | 2026-10-18 | 1686, 1701 |  | Zenith | 8666884 |
| 1703 | 36900.37000.37100.38000.39000.40800.41900.89000.1383800 | Painting 1st coat | 15d | 2027-01-31 | 2027-02-14 | 1687, 1702 |  | Zenith | 8666894 |
| 1704 | 36900.37000.37100.38000.39000.40800.41900.89100 | **32nd floor roof** | 178.75d | 2026-07-21 | 2027-03-01 |  | start no earlier than 2026-07-21 | Zenith | 8649094 |
| 1705 | 36900.37000.37100.38000.39000.40800.41900.89100.1383900 | Block Work | 10d | 2026-07-21 | 2026-07-31 | 1200, 1689 |  | Zenith | 8666904 |
| 1706 | 36900.37000.37100.38000.39000.40800.41900.89100.1384000 | Fire sprinkler pipe fixing | 6d | 2026-07-31 | 2026-08-06 | 1690, 1705 |  | Zenith | 8666914 |
| 1707 | 36900.37000.37100.38000.39000.40800.41900.89100.1384100 | Internal Plumbing Works | 10d | 2026-07-31 | 2026-08-10 | 1691, 1705 |  | Zenith | 8666924 |
| 1708 | 36900.37000.37100.38000.39000.40800.41900.89100.1384200 | Waterproofing | 14d | 2026-08-10 | 2026-08-24 | 1692, 1707 |  | Zenith | 8666934 |
| 1709 | 36900.37000.37100.38000.39000.40800.41900.89100.1384300 | Internal Plaster | 14d | 2026-08-15 | 2026-08-29 | 1693, 1707, 1708FF+5d |  | Zenith | 8666944 |
| 1710 | 36900.37000.37100.38000.39000.40800.41900.89100.1384400 | IPS flooring work | 10d | 2026-08-29 | 2026-09-08 | 1694, 1709 |  | Zenith | 8666954 |
| 1711 | 36900.37000.37100.38000.39000.40800.41900.89100.1384500 | Toilet dado work | 10d | 2026-08-29 | 2026-09-08 | 1695, 1708, 1709 |  | Zenith | 8666964 |
| 1712 | 36900.37000.37100.38000.39000.40800.41900.89100.1384600 | Toilet flooring work | 7d | 2026-09-08 | 2026-09-15 | 1696, 1711 |  | Zenith | 8666974 |
| 1713 | 36900.37000.37100.38000.39000.40800.41900.89100.1384700 | False Cieling panel fixing | 10d | 2026-09-15 | 2026-09-25 | 1697, 1712 |  | Zenith | 8666984 |
| 1714 | 36900.37000.37100.38000.39000.40800.41900.89100.1384800 | Living dinning flooring | 13d | 2026-09-15 | 2026-09-28 | 1698, 1712 |  | Zenith | 8666994 |
| 1715 | 36900.37000.37100.38000.39000.40800.41900.89100.1384900 | Putty primer coat | 12d | 2026-09-28 | 2026-10-10 | 1699, 1714 |  | Zenith | 8667004 |
| 1716 | 36900.37000.37100.38000.39000.40800.41900.89100.1385000 | Aluminium door-window fixing | 15d | 2027-01-16 | 2027-01-30 | 1700, 1710, 1714 |  | Zenith | 8667014 |
| 1717 | 36900.37000.37100.38000.39000.40800.41900.89100.1385100 | Door shutter fixing (Pre Hung) | 8d | 2026-10-10 | 2026-10-18 | 1701, 1715 |  | Zenith | 8667024 |
| 1718 | 36900.37000.37100.38000.39000.40800.41900.89100.1385200 | Electrical wiring work | 12d | 2026-10-19 | 2026-10-30 | 1702, 1717 |  | Zenith | 8667034 |
| 1719 | 36900.37000.37100.38000.39000.40800.41900.89100.1385300 | Painting 1st coat | 15d | 2027-02-15 | 2027-03-01 | 1703, 1718 |  | Zenith | 8667044 |

| ID | WBS | Task | Duration | Start | Finish | Predecessors | Constraint | Calendar | Unique_Task_ID |
| --- | --- | --- | --- | --- | --- | --- | --- | --- | --- |
| 1720 | 36900.37000.37100.38000.39000.40800.41900.89200 | **33rd floor roof** | 183.75d | 2026-07-31 | 2027-03-16 |  | start no earlier than 2026-07-31 | Zenith | 8649104 |
| 1721 | 36900.37000.37100.38000.39000.40800.41900.89200.1385400 | Block Work | 10d | 2026-07-31 | 2026-08-10 | 1201, 1705 |  | Zenith | 8667054 |
| 1722 | 36900.37000.37100.38000.39000.40800.41900.89200.1385500 | Fire sprinkler pipe fixing | 6d | 2026-08-10 | 2026-08-16 | 1706, 1721 |  | Zenith | 8667064 |
| 1723 | 36900.37000.37100.38000.39000.40800.41900.89200.1385600 | Internal Plumbing Works | 10d | 2026-08-10 | 2026-08-20 | 1707, 1721 |  | Zenith | 8667074 |
| 1724 | 36900.37000.37100.38000.39000.40800.41900.89200.1385700 | Waterproofing | 14d | 2026-08-24 | 2026-09-07 | 1708, 1723 |  | Zenith | 8667084 |
| 1725 | 36900.37000.37100.38000.39000.40800.41900.89200.1385800 | Internal Plaster | 14d | 2026-08-29 | 2026-09-12 | 1709, 1723, 1724FF+5d |  | Zenith | 8667094 |
| 1726 | 36900.37000.37100.38000.39000.40800.41900.89200.1385900 | IPS flooring work | 10d | 2026-09-12 | 2026-09-22 | 1710, 1725 |  | Zenith | 8667104 |
| 1727 | 36900.37000.37100.38000.39000.40800.41900.89200.1386000 | Toilet dado work | 10d | 2026-09-12 | 2026-09-22 | 1711, 1724, 1725 |  | Zenith | 8667114 |
| 1728 | 36900.37000.37100.38000.39000.40800.41900.89200.1386100 | Toilet flooring work | 7d | 2026-09-22 | 2026-09-29 | 1712, 1727 |  | Zenith | 8667124 |
| 1729 | 36900.37000.37100.38000.39000.40800.41900.89200.1386200 | False Cieling panel fixing | 10d | 2026-09-29 | 2026-10-09 | 1713, 1728 |  | Zenith | 8667134 |
| 1730 | 36900.37000.37100.38000.39000.40800.41900.89200.1386300 | Living dinning flooring | 13d | 2026-09-29 | 2026-10-12 | 1714, 1728 |  | Zenith | 8667144 |
| 1731 | 36900.37000.37100.38000.39000.40800.41900.89200.1386400 | Putty primer coat | 12d | 2026-10-12 | 2026-10-24 | 1715, 1730 |  | Zenith | 8667154 |
| 1732 | 36900.37000.37100.38000.39000.40800.41900.89200.1386500 | Aluminium door-window fixing | 15d | 2027-01-31 | 2027-02-14 | 1716, 1726, 1730 |  | Zenith | 8667164 |
| 1733 | 36900.37000.37100.38000.39000.40800.41900.89200.1386600 | Door shutter fixing (Pre Hung) | 8d | 2026-10-24 | 2026-12-16 | 1717, 1731 |  | Zenith | 8667174 |
| 1734 | 36900.37000.37100.38000.39000.40800.41900.89200.1386700 | Electrical wiring work | 12d | 2026-12-16 | 2026-12-28 | 1718, 1733 |  | Zenith | 8667184 |
| 1735 | 36900.37000.37100.38000.39000.40800.41900.89200.1386800 | Painting 1st coat | 15d | 2027-03-02 | 2027-03-16 | 1719, 1734 |  | Zenith | 8667194 |
| 1736 | 36900.37000.37100.38000.39000.40800.41900.89300 | **34th floor roof** | 188.75d | 2026-08-10 | 2027-03-31 |  | start no earlier than 2026-08-10 | Zenith | 8649114 |
| 1737 | 36900.37000.37100.38000.39000.40800.41900.89300.1386900 | Block Work | 10d | 2026-08-10 | 2026-08-20 | 1202, 1721 |  | Zenith | 8667204 |
| 1738 | 36900.37000.37100.38000.39000.40800.41900.89300.1387000 | Fire sprinkler pipe fixing | 6d | 2026-08-20 | 2026-08-26 | 1722, 1737 |  | Zenith | 8667214 |
| 1739 | 36900.37000.37100.38000.39000.40800.41900.89300.1387100 | Internal Plumbing Works | 10d | 2026-08-20 | 2026-08-30 | 1723, 1737 |  | Zenith | 8667224 |
| 1740 | 36900.37000.37100.38000.39000.40800.41900.89300.1387200 | Waterproofing | 14d | 2026-09-07 | 2026-09-21 | 1724, 1739 |  | Zenith | 8667234 |
| 1741 | 36900.37000.37100.38000.39000.40800.41900.89300.1387300 | Internal Plaster | 14d | 2026-09-12 | 2026-09-26 | 1725, 1739, 1740FF+5d |  | Zenith | 8667244 |
| 1742 | 36900.37000.37100.38000.39000.40800.41900.89300.1387400 | IPS flooring work | 10d | 2026-09-26 | 2026-10-06 | 1726, 1741 |  | Zenith | 8667254 |
| 1743 | 36900.37000.37100.38000.39000.40800.41900.89300.1387500 | Toilet dado work | 10d | 2026-09-26 | 2026-10-06 | 1727, 1740, 1741 |  | Zenith | 8667264 |
| 1744 | 36900.37000.37100.38000.39000.40800.41900.89300.1387600 | Toilet flooring work | 7d | 2026-10-06 | 2026-10-13 | 1728, 1743 |  | Zenith | 8667274 |
| 1745 | 36900.37000.37100.38000.39000.40800.41900.89300.1387700 | False Cieling panel fixing | 10d | 2026-10-13 | 2026-10-23 | 1729, 1744 |  | Zenith | 8667284 |
| 1746 | 36900.37000.37100.38000.39000.40800.41900.89300.1387800 | Living dinning flooring | 13d | 2026-10-13 | 2026-10-26 | 1730, 1744 |  | Zenith | 8667294 |
| 1747 | 36900.37000.37100.38000.39000.40800.41900.89300.1387900 | Putty primer coat | 12d | 2026-10-26 | 2026-12-22 | 1731, 1746 |  | Zenith | 8667304 |
| 1748 | 36900.37000.37100.38000.39000.40800.41900.89300.1388000 | Aluminium door-window fixing | 15d | 2027-02-15 | 2027-03-01 | 1732, 1742, 1746 |  | Zenith | 8667314 |
| 1749 | 36900.37000.37100.38000.39000.40800.41900.89300.1388100 | Door shutter fixing (Pre Hung) | 8d | 2026-12-22 | 2026-12-30 | 1733, 1747 |  | Zenith | 8667324 |
| 1750 | 36900.37000.37100.38000.39000.40800.41900.89300.1388200 | Electrical wiring work | 12d | 2026-12-30 | 2027-01-11 | 1734, 1749 |  | Zenith | 8667334 |
| 1751 | 36900.37000.37100.38000.39000.40800.41900.89300.1388300 | Painting 1st coat | 15d | 2027-03-17 | 2027-03-31 | 1735, 1750 |  | Zenith | 8667344 |

| ID | WBS | Task | Duration | Start | Finish | Predecessors | Constraint | Calendar | Unique_Task_ID |
| --- | --- | --- | --- | --- | --- | --- | --- | --- | --- |
| 1752 | 36900.37000.37100.38000.39000.40800.41900.52500 | **35th Floor** | 238.75d | 2026-08-20 | 2027-05-30 |  | start no earlier than 2026-08-20 | Zenith | 8648274 |
| 1753 | 36900.37000.37100.38000.39000.40800.41900.52500.1388400 | Block Work | 10d | 2026-08-20 | 2026-08-30 | 1203, 1737 |  | Zenith | 8667354 |
| 1754 | 36900.37000.37100.38000.39000.40800.41900.52500.1388500 | Fire sprinkler pipe fixing | 6d | 2026-08-30 | 2026-09-05 | 1738, 1753 |  | Zenith | 8667364 |
| 1755 | 36900.37000.37100.38000.39000.40800.41900.52500.1388600 | Internal Plumbing Works | 10d | 2026-08-30 | 2026-09-09 | 1739, 1753 |  | Zenith | 8667374 |
| 1756 | 36900.37000.37100.38000.39000.40800.41900.52500.1388700 | Waterproofing | 14d | 2026-09-21 | 2026-10-05 | 1740, 1755 |  | Zenith | 8667384 |
| 1757 | 36900.37000.37100.38000.39000.40800.41900.52500.1388800 | Internal Plaster | 14d | 2026-09-26 | 2026-10-10 | 1741, 1755, 1756FF+5d |  | Zenith | 8667394 |
| 1758 | 36900.37000.37100.38000.39000.40800.41900.52500.1388900 | IPS flooring work | 10d | 2026-10-10 | 2026-10-20 | 1742, 1756, 1757 |  | Zenith | 8667404 |
| 1759 | 36900.37000.37100.38000.39000.40800.41900.52500.1389000 | Toilet dado work | 10d | 2026-10-20 | 2026-10-30 | 1743, 1758 |  | Zenith | 8667414 |
| 1760 | 36900.37000.37100.38000.39000.40800.41900.52500.1389100 | Toilet flooring work | 7d | 2026-10-30 | 2026-12-21 | 1744, 1759 |  | Zenith | 8667424 |
| 1761 | 36900.37000.37100.38000.39000.40800.41900.52500.1389200 | False ceiling | 10d | 2026-12-21 | 2026-12-31 | 1745, 1760 |  | Zenith | 8667434 |
| 1762 | 36900.37000.37100.38000.39000.40800.41900.52500.1389300 | Living dinning flooring | 13d | 2026-12-21 | 2027-01-03 | 1746, 1760 |  | Zenith | 8667444 |
| 1763 | 36900.37000.37100.38000.39000.40800.41900.52500.1389400 | Putty Primer coat | 12d | 2027-01-03 | 2027-01-15 | 1747, 1754, 1761, 1762 |  | Zenith | 8667454 |
| 1764 | 36900.37000.37100.38000.39000.40800.41900.52500.1389500 | Aluminium door-window fixing | 15d | 2027-03-02 | 2027-03-16 | 1748, 1758, 1762 |  | Zenith | 8667464 |
| 1765 | 36900.37000.37100.38000.39000.40800.41900.52500.1389600 | Door shutter fixing (Pre Hung) | 8d | 2027-01-15 | 2027-01-23 | 1749, 1763 |  | Zenith | 8667474 |
| 1766 | 36900.37000.37100.38000.39000.40800.41900.52500.1389700 | Electrical wiring work | 12d | 2027-01-23 | 2027-02-04 | 1750, 1765 |  | Zenith | 8667484 |
| 1767 | 36900.37000.37100.38000.39000.40800.41900.52500.1389800 | Painting 1st coat | 15d | 2027-04-01 | 2027-04-15 | 1751, 1766 |  | Zenith | 8667494 |
| 1768 | 36900.37000.37100.38000.39000.40800.41900.52500.1389900 | Misc. Works | 45d | 2027-04-16 | 2027-05-30 | 1767 |  | Zenith | 8667504 |
| 1769 | 36900.37000.37100.38000.39000.40800.223600 | **Terrace Finishing** | 116d | 2026-08-20 | 2027-01-27 |  | start no earlier than 2026-08-20 | Zenith | 8656714 |
| 1770 | 36900.37000.37100.38000.39000.40800.223600.918700 | Terrace waterproofing | 40d | 2026-08-20 | 2026-09-28 | 1167FS+2d |  | Zenith | 8692234 |
| 1771 | 36900.37000.37100.38000.39000.40800.223600.918800 | Terrace finishing | 75d | 2026-09-30 | 2027-01-27 | 1770FS+1d |  | Zenith | 8692224 |
| 1772 | 36900.37000.37100.38000.39000.40800.48500 | **Balcony Railing** | 378d | 2025-10-10 | 2027-01-21 |  | start no earlier than 2025-10-10 | Zenith | 8648154 |
| 1773 | 36900.37000.37100.38000.39000.40800.48500.918900 | 1st Floor | 8d | 2025-10-10 | 2025-10-18 | 1234FF |  | Zenith | 8692214 |
| 1774 | 36900.37000.37100.38000.39000.40800.48500.919000 | 2nd Floor | 8d | 2025-10-27 | 2025-12-19 | 1773, 1250 |  | Zenith | 8692204 |
| 1775 | 36900.37000.37100.38000.39000.40800.48500.919100 | 3rd Floor | 8d | 2025-12-20 | 2025-12-28 | 1774, 1266 |  | Zenith | 8692194 |
| 1776 | 36900.37000.37100.38000.39000.40800.48500.919200 | 4th Floor | 8d | 2025-12-29 | 2026-01-06 | 1775, 1282 |  | Zenith | 8692184 |
| 1777 | 36900.37000.37100.38000.39000.40800.48500.919300 | 5th Floor | 8d | 2026-01-07 | 2026-01-15 | 1776, 1298 |  | Zenith | 8692174 |
| 1778 | 36900.37000.37100.38000.39000.40800.48500.919400 | 6th Floor | 8d | 2026-01-16 | 2026-01-24 | 1777, 1314 |  | Zenith | 8692164 |
| 1779 | 36900.37000.37100.38000.39000.40800.48500.919500 | 7th Floor | 8d | 2026-01-25 | 2026-02-02 | 1778, 1330 |  | Zenith | 8692154 |
| 1780 | 36900.37000.37100.38000.39000.40800.48500.919600 | 8th Floor | 8d | 2026-02-03 | 2026-02-11 | 1779, 1346 |  | Zenith | 8692144 |
| 1781 | 36900.37000.37100.38000.39000.40800.48500.919700 | 9th Floor | 8d | 2026-02-12 | 2026-02-20 | 1780, 1362 |  | Zenith | 8692134 |
| 1782 | 36900.37000.37100.38000.39000.40800.48500.919800 | 10th Floor | 8d | 2026-02-21 | 2026-03-01 | 1781, 1378 |  | Zenith | 8692124 |
| 1783 | 36900.37000.37100.38000.39000.40800.48500.919900 | 11th Floor | 8d | 2026-03-02 | 2026-03-10 | 1782, 1394 |  | Zenith | 8692114 |
| 1784 | 36900.37000.37100.38000.39000.40800.48500.920000 | 12th Floor | 8d | 2026-03-11 | 2026-03-19 | 1783, 1410 |  | Zenith | 8692104 |
| 1785 | 36900.37000.37100.38000.39000.40800.48500.920100 | 13th Floor | 8d | 2026-03-20 | 2026-03-28 | 1784, 1426 |  | Zenith | 8692094 |
| 1786 | 36900.37000.37100.38000.39000.40800.48500.920200 | 14th Floor | 8d | 2026-03-29 | 2026-04-06 | 1785, 1442 |  | Zenith | 8692084 |
| 1787 | 36900.37000.37100.38000.39000.40800.48500.920300 | 15th Floor | 8d | 2026-04-07 | 2026-04-15 | 1786, 1458 |  | Zenith | 8692074 |
| 1788 | 36900.37000.37100.38000.39000.40800.48500.920400 | 16th Floor | 8d | 2026-04-16 | 2026-04-24 | 1787, 1474 |  | Zenith | 8692064 |
| 1789 | 36900.37000.37100.38000.39000.40800.48500.920500 | 17th Floor | 8d | 2026-04-25 | 2026-05-03 | 1788, 1490 |  | Zenith | 8692054 |
| 1790 | 36900.37000.37100.38000.39000.40800.48500.920600 | 18th Floor | 8d | 2026-05-04 | 2026-05-12 | 1789, 1506 |  | Zenith | 8692044 |
| 1791 | 36900.37000.37100.38000.39000.40800.48500.920700 | 19th Floor | 8d | 2026-05-13 | 2026-05-21 | 1790, 1522 |  | Zenith | 8692034 |
| 1792 | 36900.37000.37100.38000.39000.40800.48500.920800 | 20th Floor | 8d | 2026-05-23 | 2026-05-31 | 1791, 1538 |  | Zenith | 8692024 |
| 1793 | 36900.37000.37100.38000.39000.40800.48500.920900 | 21st Floor | 8d | 2026-06-02 | 2026-06-10 | 1792, 1554 |  | Zenith | 8692014 |
| 1794 | 36900.37000.37100.38000.39000.40800.48500.921000 | 22nd Floor | 8d | 2026-06-11 | 2026-06-19 | 1793, 1570 |  | Zenith | 8692004 |
| 1795 | 36900.37000.37100.38000.39000.40800.48500.921100 | 23rd Floor | 8d | 2026-06-20 | 2026-06-28 | 1794, 1586 |  | Zenith | 8691994 |
| 1796 | 36900.37000.37100.38000.39000.40800.48500.921200 | 24th Floor | 8d | 2026-06-29 | 2026-07-07 | 1795, 1602 |  | Zenith | 8691984 |
| 1797 | 36900.37000.37100.38000.39000.40800.48500.921300 | 25th Floor | 8d | 2026-07-07 | 2026-07-15 | 1796, 1618 |  | Zenith | 8691974 |
| 1798 | 36900.37000.37100.38000.39000.40800.48500.921400 | 26th Floor | 8d | 2026-07-15 | 2026-07-23 | 1797, 1634 |  | Zenith | 8691964 |
| 1799 | 36900.37000.37100.38000.39000.40800.48500.921500 | 27th Floor | 8d | 2026-07-23 | 2026-07-31 | 1798, 1650 |  | Zenith | 8691954 |
| 1800 | 36900.37000.37100.38000.39000.40800.48500.921600 | 28th Floor | 8d | 2026-07-31 | 2026-08-08 | 1799, 1666 |  | Zenith | 8691944 |
| 1801 | 36900.37000.37100.38000.39000.40800.48500.921700 | 29th Floor | 8d | 2026-08-31 | 2026-09-08 | 1800, 1682 |  | Zenith | 8691934 |
| 1802 | 36900.37000.37100.38000.39000.40800.48500.921800 | 30th Floor | 8d | 2026-09-14 | 2026-09-22 | 1801, 1698 |  | Zenith | 8691924 |
| 1803 | 36900.37000.37100.38000.39000.40800.48500.921900 | 31st Floor | 8d | 2026-09-28 | 2026-10-06 | 1802, 1714 |  | Zenith | 8691914 |
| 1804 | 36900.37000.37100.38000.39000.40800.48500.922000 | 32nd Floor | 8d | 2026-10-12 | 2026-10-20 | 1803, 1730 |  | Zenith | 8691904 |
| 1805 | 36900.37000.37100.38000.39000.40800.48500.922100 | 33rd Floor | 8d | 2026-10-26 | 2026-12-18 | 1804, 1746 |  | Zenith | 8691894 |
| 1806 | 36900.37000.37100.38000.39000.40800.48500.922200 | 34th Floor | 8d | 2027-01-03 | 2027-01-11 | 1805, 1762 |  | Zenith | 8691884 |
| 1807 | 36900.37000.37100.38000.39000.40800.48500.922300 | 35th Floor | 10d | 2027-01-11 | 2027-01-21 | 1806 |  | Zenith | 8691874 |

| ID | WBS | Task | Duration | Start | Finish | Predecessors | Constraint | Calendar | Unique_Task_ID |
| --- | --- | --- | --- | --- | --- | --- | --- | --- | --- |
| 1808 | 36900.37000.37100.38000.39000.40800.117400 | **Common Area Finishing** | 337d | 2026-03-29 | 2027-04-15 |  | start no earlier than 2026-03-29 | Zenith | 8651734 |
| 1809 | 36900.37000.37100.38000.39000.40800.117400.922400 | Masonary Work | 40d | 2026-03-29 | 2026-05-08 | 1442 |  | Zenith | 8691864 |
| 1810 | 36900.37000.37100.38000.39000.40800.117400.922500 | Fire sprinkler pipe fixing | 40d | 2026-05-08 | 2026-06-17 | 1809 |  | Zenith | 8691854 |
| 1811 | 36900.37000.37100.38000.39000.40800.117400.922600 | Corridoor, staircase, shaft Plaster & whitewash | 120d | 2026-05-08 | 2026-09-05 | 1809 |  | Zenith | 8691844 |
| 1812 | 36900.37000.37100.38000.39000.40800.117400.922700 | Staircase railing fixing | 100d | 2026-05-08 | 2026-08-16 | 1809 |  | Zenith | 8691834 |
| 1813 | 36900.37000.37100.38000.39000.40800.117400.922800 | Fire staircase flooring | 120d | 2026-05-18 | 2026-09-15 | 1812FF+30d |  | Zenith | 8691824 |
| 1814 | 36900.37000.37100.38000.39000.40800.117400.922900 | Main staircase flooring | 120d | 2026-05-18 | 2026-09-15 | 1812FF+30d |  | Zenith | 8691814 |
| 1815 | 36900.37000.37100.38000.39000.40800.117400.923000 | Fire door work | 45d | 2026-09-15 | 2026-10-30 | 1813 |  | Zenith | 8691804 |
| 1816 | 36900.37000.37100.38000.39000.40800.117400.923100 | Lobby flooring & Corridor | 120d | 2026-06-17 | 2026-10-15 | 1814FF+30d |  | Zenith | 8691794 |
| 1817 | 36900.37000.37100.38000.39000.40800.117400.923200 | Ceiling & wall putty | 120d | 2026-09-02 | 2027-02-14 | 1815FF+15d, 1816FF+30d, 1763FF+30d |  | Zenith | 8691784 |
| 1818 | 36900.37000.37100.38000.39000.40800.117400.923300 | Electrical wiring work | 120d | 2026-09-17 | 2027-03-01 | 1817FF+15d |  | Zenith | 8691774 |
| 1819 | 36900.37000.37100.38000.39000.40800.117400.923400 | Ceiling & wall painting | 120d | 2026-10-07 | 2027-03-21 | 1810FS+20d, 1817SS+20d, 1818FF+20d |  | Zenith | 8691764 |
| 1820 | 36900.37000.37100.38000.39000.40800.117400.923500 | Light fixture supply & installation | 45d | 2027-03-01 | 2027-04-15 | 1817, 1819FF+25d |  | Zenith | 8691754 |
| 1821 | 36900.37000.37100.38000.122000 | **MEP work** | 296.75d | 2026-06-22 | 2027-05-29 |  | start no earlier than 2026-06-22 | Zenith | 8651834 |
| 1822 | 36900.37000.37100.38000.122000.126500 | **Electrical work** | 240d | 2026-08-18 | 2027-05-29 |  | start no earlier than 2026-08-18 | Zenith | 8652144 |
| 1823 | 36900.37000.37100.38000.122000.126500.791200 | Cable Tray | 90d | 2026-08-18 | 2026-12-30 | 1167 |  | Zenith | 8725554 |
| 1824 | 36900.37000.37100.38000.122000.126500.791300 | Cable, main & sub main | 60d | 2026-10-02 | 2027-01-14 | 1823SS+45d |  | Zenith | 8725544 |
| 1825 | 36900.37000.37100.38000.122000.126500.791400 | LT panel & DB | 90d | 2026-12-31 | 2027-03-30 | 1823 |  | Zenith | 8725534 |
| 1826 | 36900.37000.37100.38000.122000.126500.791500 | Rising main | 90d | 2027-01-15 | 2027-04-14 | 1823FS+15d |  | Zenith | 8725524 |
| 1827 | 36900.37000.37100.38000.122000.126500.791600 | Earthing Works | 60d | 2027-01-20 | 2027-03-20 | 1823FS+20d |  | Zenith | 8725514 |
| 1828 | 36900.37000.37100.38000.122000.126500.791700 | Energy meter | 60d | 2027-03-31 | 2027-05-29 | 1824, 1827FS+10d |  | Zenith | 8725504 |
| 1829 | 36900.37000.37100.38000.122000.126500.791800 | HVAC & Exhast fan | 120d | 2026-12-26 | 2027-04-24 | 1823FS-5d |  | Zenith | 8725494 |
| 1830 | 36900.37000.37100.38000.122000.126500.791900 | FTTH | 60d | 2027-03-16 | 2027-05-14 | 1825FS-15d |  | Zenith | 8725484 |
| 1831 | 36900.37000.37100.38000.122000.126500.792000 | Security System - FA & PA | 60d | 2027-03-31 | 2027-05-29 | 1825, 1826FF+10d, 1829FF+2d, 1830FF |  | Zenith | 8725474 |

| ID | WBS | Task | Duration | Start | Finish | Predecessors | Constraint | Calendar | Unique_Task_ID |
| --- | --- | --- | --- | --- | --- | --- | --- | --- | --- |
| 1832 | 36900.37000.37100.38000.122000.143100 | **Plumbing work** | 175d | 2026-09-29 | 2027-05-06 |  | start no earlier than 2026-09-29 | Zenith | 8652774 |
| 1833 | 36900.37000.37100.38000.122000.143100.792100 | Terrace looping | 45d | 2026-09-29 | 2026-12-27 | 1770 |  | Zenith | 8725464 |
| 1834 | 36900.37000.37100.38000.122000.143100.792200 | Shaft Plumbing | 70d | 2026-12-28 | 2027-03-07 | 1833, 1811FS-30d |  | Zenith | 8725454 |
| 1835 | 36900.37000.37100.38000.122000.143100.792300 | CP sanitary fixture supply | 45d | 2027-03-08 | 2027-04-21 | 1834 |  | Zenith | 8725444 |
| 1836 | 36900.37000.37100.38000.122000.143100.792400 | Cold & flushing water supply | 45d | 2027-03-08 | 2027-04-21 | 1834 |  | Zenith | 8725434 |
| 1837 | 36900.37000.37100.38000.122000.143100.792500 | Misc work | 30d | 2027-04-07 | 2027-05-06 | 1835FS-15d, 1836FS-15d |  | Zenith | 8725424 |
| 1838 | 36900.37000.37100.38000.122000.204500 | **Fire fighting work** | 203.75d | 2026-06-22 | 2027-02-25 |  | start no earlier than 2026-06-22 | Zenith | 8656034 |
| 1839 | 36900.37000.37100.38000.122000.204500.792600 | Fire hydrant work | 75d | 2026-06-22 | 2026-09-05 | 1811SS+45d |  | Zenith | 8725414 |
| 1840 | 36900.37000.37100.38000.122000.204500.792700 | Pipe connection & sprinkler installation | 45d | 2027-01-12 | 2027-02-25 | 1839FS+1d, 1842FF+15d |  | Zenith | 8725404 |
| 1841 | 36900.37000.37100.38000.122000.204500.792800 | Shaft Downtake works | 60d | 2026-09-29 | 2027-01-11 | 1770, 1811FS-60d |  | Zenith | 8725394 |
| 1842 | 36900.37000.37100.38000.122000.204500.792900 | Connection to pump room | 30d | 2027-01-12 | 2027-02-10 | 1841 |  | Zenith | 8725384 |
| 1843 | 36900.37000.37100.38000.122000.218300 | **Lift work** | 160d | 2026-08-30 | 2027-03-23 |  | start no earlier than 2026-08-30 | Zenith | 8656654 |
| 1844 | 36900.37000.37100.38000.122000.218300.793000 | Lift Shaft/Pit Handover | 40d | 2026-08-30 | 2026-10-09 | 1205FS+5d |  | Zenith | 8725374 |
| 1845 | 36900.37000.37100.38000.122000.218300.793100 | Lift installation work | 60d | 2026-10-09 | 2027-01-22 | 1844 |  | Zenith | 8725364 |
| 1846 | 36900.37000.37100.38000.122000.218300.793200 | Lift testing and commissioning | 60d | 2027-01-22 | 2027-03-23 | 1845, 1816 |  | Zenith | 8725354 |
| 1847 | 36900.37000.37100.38000.227500 | **Basement lobby** | 90d | 2026-10-24 | 2027-03-08 |  | start no earlier than 2026-10-24 | Zenith | 8656974 |
| 1848 | 36900.37000.37100.38000.227500.372600 | Basement lobby | 90d | 2026-10-24 | 2027-03-08 | 1844FS+15d, 984FS+15d, 985FS+15d |  | Zenith | 8731804 |
| 1849 | 36900.37000.37100.38000.221600 | **External Paint Works** | 144.75d | 2027-01-21 | 2027-06-14 |  | start no earlier than 2027-01-21 | Zenith | 8656834 |
| 1850 | 36900.37000.37100.38000.221600.372700 | Surface prepration with Primer | 60d | 2027-01-21 | 2027-03-22 | 1205FS+2d, 1807 |  | Zenith | 8731794 |
| 1851 | 36900.37000.37100.38000.221600.372800 | External Painting (Texture & first coat) | 90d | 2027-03-17 | 2027-06-14 | 1850FF+10d, 1764 |  | Zenith | 8731784 |
| 1852 | 36900.37000.37100.38000.271600 | OC Application/Readiness | 2d | 2027-08-10 | 2027-08-11 | 1162FF+349d, 1851, 1840FS+30d, 1837, 1848FS+30d, 1846, 1831, 1828, 1771FS+30d, 1768FS+15d, 1817FS+0.25d, 1807, 1764FS+0.25d |  | Zenith | 8735444 |
| 1853 | 36900.37000.37100.38000.271700 | OC Receipt | 60d | 2027-08-12 | 2027-10-10 | 1852 |  | Zenith | 8735434 |
| 1854 | 36900.37000.37100.38000.125600 | **Post OC activities** | 473.75d | 2027-04-30 | 2028-09-29 |  | start no earlier than 2027-04-30 | Zenith | 8652054 |
| 1855 | 36900.37000.37100.38000.125600.372900 | CP & Sanitaryware | 150d | 2027-10-11 | 2028-04-22 | 1853 |  | Zenith | 8731774 |
| 1856 | 36900.37000.37100.38000.125600.373000 | Electrical Fixtures And Fittings | 150d | 2027-10-11 | 2028-04-22 | 1853 |  | Zenith | 8731764 |
| 1857 | 36900.37000.37100.38000.125600.373100 | Final coat paint external | 100d | 2027-10-11 | 2028-03-03 | 1853 |  | Zenith | 8731754 |
| 1858 | 36900.37000.37100.38000.125600.373200 | Final Coat Paint Internal | 150d | 2027-10-11 | 2028-04-22 | 1853, 1767 |  | Zenith | 8731744 |
| 1859 | 36900.37000.37100.38000.125600.373300 | Balcony Railing Glass Fixing | 120d | 2028-04-23 | 2028-08-20 | 1858, 1807FS+30d |  | Zenith | 8731734 |
| 1860 | 36900.37000.37100.38000.125600.373400 | MEP | 150d | 2027-04-30 | 2027-09-27 | 1820FS+15d |  | Zenith | 8731724 |
| 1861 | 36900.37000.37100.38000.125600.373500 | Wooden Flooring | 180d | 2027-09-26 | 2028-05-07 | 1858FF+15d |  | Zenith | 8731714 |
| 1862 | 36900.37000.37100.38000.125600.373600 | Split AC Units installation | 100d | 2028-05-23 | 2028-08-30 | 1861FS+15d |  | Zenith | 8731704 |
| 1863 | 36900.37000.37100.38000.125600.373700 | Misc. works (Modular Kitchen & others) | 180d | 2028-04-03 | 2028-09-29 | 1862FF+30d |  | Zenith | 8731694 |
| 1864 | 36900.37000.37100.38000.271800 | Offer To Possession | 182d | 2028-04-25 | 2028-10-23 | 1853FS+152d, 1855FF+20d, 1856FF+20d, 1857FF+20d, 1862FF+10d, 1860FF+30d, 1859FF+15d, 1863FF+15d |  | Zenith | 8735424 |

| ID | WBS | Task | Duration | Start | Finish | Predecessors | Complete | Constraint | Calendar | Unique_Task_ID |
| --- | --- | --- | --- | --- | --- | --- | --- | --- | --- | --- |
| 1865 | 36900.37000.37100.38100 | **Tower 01** | 1468d | 2024-04-15 | 2028-10-18 |  | 3% | start no earlier than 2024-04-15 | Zenith | 8647584 |
| 1866 | 36900.37000.37100.38100.63300 | **Sub-Structure Works** | 519d | 2024-04-15 | 2025-10-30 |  | 55% | start no earlier than 2024-04-15 | Zenith | 8648374 |
| 1867 | 36900.37000.37100.38100.63300.141500 | **Soil Bed Preparation** | 196d | 2024-04-15 | 2024-10-27 |  | 100% | start no earlier than 2024-04-15 | Zenith | 8652644 |
| 1868 | 36900.37000.37100.38100.63300.141500.230800 | Excavation (2m) | 61d | 2024-04-21 | 2024-06-20 | 941SS+10d | 100% | start no earlier than 2024-04-21 | Zenith | 8725344 |
| 1869 | 36900.37000.37100.38100.63300.141500.230700 | Soldier Piling shop drawing approval | 19d | 2024-04-15 | 2024-07-09 | 1868 | 100% | start no earlier than 2024-04-15 | Zenith | 8725334 |
| 1870 | 36900.37000.37100.38100.63300.141500.230600 | Mobilization & Soldier Piling with Excavation (4m) | 65d | 2024-05-06 | 2024-10-08 | 1869FS-104d | 100% | start no earlier than 2024-05-06 | Zenith | 8725324 |
| 1871 | 36900.37000.37100.38100.63300.141500.230500 | Balance B3 bulk Excavation | 61d | 2024-05-12 | 2024-10-11 | 1870FS-150d | 100% | start no earlier than 2024-05-12 | Zenith | 8725314 |
| 1872 | 36900.37000.37100.38100.63300.141500.230400 | Soil dressing & ATT | 16d | 2024-10-12 | 2024-10-27 | 1871FS+8d | 100% | start no earlier than 2024-10-12 | Zenith | 8725304 |
| 1873 | 36900.37000.37100.38100.63300.119300 | **Structure Works** | 188d | 2024-10-23 | 2025-06-12 |  | 49% | start no earlier than 2024-10-23 | Zenith | 8651814 |
| 1874 | 36900.37000.37100.38100.63300.119300.141400 | **Raft Foundation** | 68d | 2024-10-23 | 2025-02-12 |  | 100% | start no earlier than 2024-10-23 | Zenith | 8652844 |
| 1875 | 36900.37000.37100.38100.63300.119300.141400.241100 | PCC | 9d | 2024-10-23 | 2024-11-04 | 1872, 948SS+10d | 100% | start no earlier than 2024-10-23 | Zenith | 8691744 |
| 1876 | 36900.37000.37100.38100.63300.119300.141400.241000 | Column/SW layout marking | 15d | 2024-12-23 | 2025-01-07 | 1875FS+3d | 100% | start no earlier than 2024-12-23 | Zenith | 8691734 |
| 1877 | 36900.37000.37100.38100.63300.119300.141400.240900 | Reinforcement | 46d | 2024-12-16 | 2025-02-08 | 1876FS-10d | 100% | start no earlier than 2024-12-16 | Zenith | 8691724 |
| 1878 | 36900.37000.37100.38100.63300.119300.141400.240800 | Formwork (Conventional) | 15d | 2025-01-25 | 2025-02-08 | 1877FF+3d | 100% | start no earlier than 2025-01-25 | Zenith | 8691714 |
| 1879 | 36900.37000.37100.38100.63300.119300.141400.240700 | Concreting | 3d | 2025-02-09 | 2025-02-12 | 1878FF+3d | 100% | start no earlier than 2025-02-09 | Zenith | 8691704 |
| 1880 | 36900.37000.37100.38100.63300.119300.131000 | **Basement 03 Roof Slab (Dummy/Stitch Slab)** | 4d | 2025-03-24 | 2025-03-27 |  | 100% | start no earlier than 2025-03-24 | Zenith | 8652454 |
| 1881 | 36900.37000.37100.38100.63300.119300.131000.240600 | Column/SW Reinforcement | 1d | 2025-03-24 | 2025-03-24 | 1879 | 100% | start no earlier than 2025-03-24 | Zenith | 8691694 |
| 1882 | 36900.37000.37100.38100.63300.119300.131000.240500 | SW Formwork (Conventional) | 1d | 2025-03-25 | 2025-03-25 | 1881SS+1d | 100% | start no earlier than 2025-03-25 | Zenith | 8691684 |
| 1883 | 36900.37000.37100.38100.63300.119300.131000.240400 | Column/SW Concreting | 1d | 2025-03-26 | 2025-03-26 | 1882SS+1d | 100% | start no earlier than 2025-03-26 | Zenith | 8691674 |
| 1884 | 36900.37000.37100.38100.63300.119300.131000.240300 | Slab Formwork (Conventional) | 1d | 2025-03-27 | 2025-03-27 | 1883SS+1d | 100% | start no earlier than 2025-03-27 | Zenith | 8691664 |
| 1885 | 36900.37000.37100.38100.63300.119300.131000.240200 | Slab Reinforcement + Conduting | 1d | 2025-03-27 | 2025-03-27 | 1884 | 100% | start no earlier than 2025-03-27 | Zenith | 8691654 |
| 1886 | 36900.37000.37100.38100.63300.119300.131000.240100 | Concreting | 1d | 2025-03-27 | 2025-03-27 | 1885 | 100% | start no earlier than 2025-03-27 | Zenith | 8691644 |
| 1887 | 36900.37000.37100.38100.63300.119300.141000 | **Basement 02 Roof Slab** | 57d | 2025-02-26 | 2025-04-23 |  | 40% | start no earlier than 2025-02-26 | Zenith | 8652444 |
| 1888 | 36900.37000.37100.38100.63300.119300.141000.240000 | Column/SW Reinforcement | 7d | 2025-02-26 | 2025-03-27 | 1886FS-28d | 100% | start no earlier than 2025-02-26 | Zenith | 8691634 |
| 1889 | 36900.37000.37100.38100.63300.119300.141000.239900 | SW Formwork (Conventional) | 27d | 2025-03-18 | 2025-04-20 | 1888SS+22d | 48% | start no earlier than 2025-03-18 | Zenith | 8691624 |
| 1890 | 36900.37000.37100.38100.63300.119300.141000.239800 | Column/SW Concreting | 25d | 2025-03-20 | 2025-04-14 | 1889SS+4d | 44% | start no earlier than 2025-03-20 | Zenith | 8691614 |
| 1891 | 36900.37000.37100.38100.63300.119300.141000.923600 | Slab Formwork (Conventional) | 12d | 2025-04-06 | 2025-04-17 | 1890SS+17d |  |  | Zenith | 8691604 |
| 1892 | 36900.37000.37100.38100.63300.119300.141000.923700 | Slab Reinforcement + Conduting | 4d | 2025-04-18 | 2025-04-21 | 1891 |  |  | Zenith | 8691594 |
| 1893 | 36900.37000.37100.38100.63300.119300.141000.923800 | Concreting | 2d | 2025-04-22 | 2025-04-23 | 1892 |  |  | Zenith | 8691584 |

| ID | WBS | Task | Duration | Start | Finish | Predecessors | Constraint | Calendar | Unique_Task_ID |
| --- | --- | --- | --- | --- | --- | --- | --- | --- | --- |
| 1894 | 36900.37000.37100.38100.63300.119300.140900 | **Basement 01 Roof Slab** | 25d | 2025-04-24 | 2025-05-18 |  | start no earlier than 2025-04-24 | Zenith | 8652434 |
| 1895 | 36900.37000.37100.38100.63300.119300.140900.923900 | Column/SW Reinforcement | 9d | 2025-04-24 | 2025-05-02 | 1893 |  | Zenith | 8691574 |
| 1896 | 36900.37000.37100.38100.63300.119300.140900.924000 | SW Formwork (Conventional) | 9d | 2025-04-28 | 2025-05-06 | 1895SS+4d |  | Zenith | 8691564 |
| 1897 | 36900.37000.37100.38100.63300.119300.140900.924100 | Column/SW Concreting | 9d | 2025-05-02 | 2025-05-10 | 1896SS+4d |  | Zenith | 8691554 |
| 1898 | 36900.37000.37100.38100.63300.119300.140900.924200 | Slab Formwork (Conventional) | 9d | 2025-05-06 | 2025-05-14 | 1897SS+4d |  | Zenith | 8691544 |
| 1899 | 36900.37000.37100.38100.63300.119300.140900.924300 | Slab Reinforcement + Conduting | 3d | 2025-05-15 | 2025-05-17 | 1898 |  | Zenith | 8691534 |
| 1900 | 36900.37000.37100.38100.63300.119300.140900.924400 | Concreting | 1d | 2025-05-18 | 2025-05-18 | 1899 |  | Zenith | 8691524 |
| 1901 | 36900.37000.37100.38100.63300.119300.140800 | **Podium Slab/Ground Roof Floor Slab** | 25d | 2025-05-19 | 2025-06-12 |  | start no earlier than 2025-05-19 | Zenith | 8652424 |
| 1902 | 36900.37000.37100.38100.63300.119300.140800.924500 | Column/SW Reinforcement | 9d | 2025-05-19 | 2025-05-27 | 1900 |  | Zenith | 8691514 |
| 1903 | 36900.37000.37100.38100.63300.119300.140800.924600 | SW Formwork (Conventional) | 9d | 2025-05-23 | 2025-05-31 | 1902SS+4d |  | Zenith | 8691504 |
| 1904 | 36900.37000.37100.38100.63300.119300.140800.924700 | Column/SW Concreting | 9d | 2025-05-27 | 2025-06-04 | 1903SS+4d |  | Zenith | 8691494 |
| 1905 | 36900.37000.37100.38100.63300.119300.140800.924800 | Slab Formwork (Conventional) | 9d | 2025-05-31 | 2025-06-08 | 1904SS+4d |  | Zenith | 8691484 |
| 1906 | 36900.37000.37100.38100.63300.119300.140800.924900 | Slab Reinforcement + Conduting | 3d | 2025-06-09 | 2025-06-11 | 1905 |  | Zenith | 8691474 |
| 1907 | 36900.37000.37100.38100.63300.119300.140800.925000 | Concreting | 1d | 2025-06-12 | 2025-06-12 | 1906 |  | Zenith | 8691464 |
| 1908 | 36900.37000.37100.38100.63300.200800 | **Substructure Finishes** | 110d | 2025-07-13 | 2025-10-30 |  | start no earlier than 2025-07-13 | Zenith | 8655974 |
| 1909 | 36900.37000.37100.38100.63300.200800.793300 | Masonary Work | 35d | 2025-07-13 | 2025-08-16 | 1907FS+30d |  | Zenith | 8725294 |
| 1910 | 36900.37000.37100.38100.63300.200800.793400 | Plaster Work | 30d | 2025-08-17 | 2025-09-15 | 1909 |  | Zenith | 8725284 |
| 1911 | 36900.37000.37100.38100.63300.200800.793500 | Structural Steel work | 50d | 2025-08-12 | 2025-09-30 | 1907FS+60d |  | Zenith | 8725274 |
| 1912 | 36900.37000.37100.38100.63300.200800.793600 | White Wash & Misc. | 35d | 2025-09-26 | 2025-10-30 | 1910FS+10d |  | Zenith | 8725264 |
| 1913 | 36900.37000.37100.38100.39100 | **Superstructure** | 626d | 2025-06-13 | 2027-05-29 |  | start no earlier than 2025-06-13 | Zenith | 8647674 |
| 1914 | 36900.37000.37100.38100.39100.44700 | **RCC structure** | 385d | 2025-06-13 | 2026-08-16 |  | start no earlier than 2025-06-13 | Zenith | 8647934 |
| 1915 | 36900.37000.37100.38100.39100.44700.184700 | **1st Floor Roof slab** | 24d | 2025-06-13 | 2025-07-06 |  | start no earlier than 2025-06-13 | Zenith | 8654104 |
| 1916 | 36900.37000.37100.38100.39100.44700.184700.925100 | Reinforcement | 19d | 2025-06-13 | 2025-07-01 | 1907 |  | Zenith | 8691454 |
| 1917 | 36900.37000.37100.38100.39100.44700.184700.925200 | Conduiting | 19d | 2025-06-16 | 2025-07-04 | 1916SS+3d |  | Zenith | 8691444 |
| 1918 | 36900.37000.37100.38100.39100.44700.184700.925300 | Formwork | 19d | 2025-06-17 | 2025-07-05 | 1916SS+4d |  | Zenith | 8691434 |
| 1919 | 36900.37000.37100.38100.39100.44700.184700.925400 | Concreting | 1d | 2025-07-06 | 2025-07-06 | 1917FS+1d, 1918 |  | Zenith | 8691424 |

| ID | WBS | Task | Duration | Start | Finish | Predecessors | Constraint | Calendar | Unique_Task_ID |
| --- | --- | --- | --- | --- | --- | --- | --- | --- | --- |
| 1920 | 36900.37000.37100.38100.39100.44700.184400 | **2nd Floor Roof slab** | 21d | 2025-07-07 | 2025-07-27 |  | start no earlier than 2025-07-07 | Zenith | 8654484 |
| 1921 | 36900.37000.37100.38100.39100.44700.184400.925500 | Reinforcement | 16d | 2025-07-07 | 2025-07-22 | 1919 |  | Zenith | 8691414 |
| 1922 | 36900.37000.37100.38100.39100.44700.184400.925600 | Conduiting | 16d | 2025-07-10 | 2025-07-25 | 1921SS+3d |  | Zenith | 8691404 |
| 1923 | 36900.37000.37100.38100.39100.44700.184400.925700 | Formwork | 16d | 2025-07-11 | 2025-07-26 | 1921SS+4d |  | Zenith | 8691394 |
| 1924 | 36900.37000.37100.38100.39100.44700.184400.925800 | Concreting | 1d | 2025-07-27 | 2025-07-27 | 1922FS+1d, 1923 |  | Zenith | 8691384 |
| 1925 | 36900.37000.37100.38100.39100.44700.183800 | **3rd Floor Roof slab** | 15d | 2025-07-28 | 2025-08-11 |  | start no earlier than 2025-07-28 | Zenith | 8654504 |
| 1926 | 36900.37000.37100.38100.39100.44700.183800.925900 | Reinforcement | 10d | 2025-07-28 | 2025-08-06 | 1924 |  | Zenith | 8691374 |
| 1927 | 36900.37000.37100.38100.39100.44700.183800.926000 | Conduiting | 10d | 2025-07-31 | 2025-08-09 | 1926SS+3d |  | Zenith | 8691364 |
| 1928 | 36900.37000.37100.38100.39100.44700.183800.926100 | Formwork | 10d | 2025-08-01 | 2025-08-10 | 1926SS+4d |  | Zenith | 8691354 |
| 1929 | 36900.37000.37100.38100.39100.44700.183800.926200 | Concreting | 1d | 2025-08-11 | 2025-08-11 | 1927FS+1d, 1928 |  | Zenith | 8691344 |
| 1930 | 36900.37000.37100.38100.39100.44700.183700 | **4th floor roof slab** | 9d | 2025-08-12 | 2025-08-20 |  | start no earlier than 2025-08-12 | Zenith | 8654514 |
| 1931 | 36900.37000.37100.38100.39100.44700.183700.926300 | Reinforcement | 6d | 2025-08-12 | 2025-08-17 | 1929 |  | Zenith | 8691334 |
| 1932 | 36900.37000.37100.38100.39100.44700.183700.926400 | Conduiting | 6d | 2025-08-13 | 2025-08-18 | 1931SS+1d |  | Zenith | 8691324 |
| 1933 | 36900.37000.37100.38100.39100.44700.183700.926500 | Formwork | 6d | 2025-08-14 | 2025-08-19 | 1931SS+2d |  | Zenith | 8691314 |
| 1934 | 36900.37000.37100.38100.39100.44700.183700.926600 | Concreting | 1d | 2025-08-20 | 2025-08-20 | 1932FS+1d, 1933 |  | Zenith | 8691304 |
| 1935 | 36900.37000.37100.38100.39100.44700.183000 | **5th floor roof slab** | 9d | 2025-08-21 | 2025-08-29 |  | start no earlier than 2025-08-21 | Zenith | 8654534 |
| 1936 | 36900.37000.37100.38100.39100.44700.183000.926700 | Reinforcement | 6d | 2025-08-21 | 2025-08-26 | 1934 |  | Zenith | 8691294 |
| 1937 | 36900.37000.37100.38100.39100.44700.183000.926800 | Conduiting | 6d | 2025-08-22 | 2025-08-27 | 1936SS+1d |  | Zenith | 8691284 |
| 1938 | 36900.37000.37100.38100.39100.44700.183000.926900 | Formwork | 6d | 2025-08-23 | 2025-08-28 | 1936SS+2d |  | Zenith | 8691274 |
| 1939 | 36900.37000.37100.38100.39100.44700.183000.927000 | Concreting | 1d | 2025-08-29 | 2025-08-29 | 1937FS+1d, 1938 |  | Zenith | 8691264 |
| 1940 | 36900.37000.37100.38100.39100.44700.182900 | **6th floor roof slab** | 9d | 2025-08-30 | 2025-09-07 |  | start no earlier than 2025-08-30 | Zenith | 8654554 |
| 1941 | 36900.37000.37100.38100.39100.44700.182900.927100 | Reinforcement | 6d | 2025-08-30 | 2025-09-04 | 1939 |  | Zenith | 8691254 |
| 1942 | 36900.37000.37100.38100.39100.44700.182900.927200 | Conduiting | 6d | 2025-08-31 | 2025-09-05 | 1941SS+1d |  | Zenith | 8691244 |
| 1943 | 36900.37000.37100.38100.39100.44700.182900.927300 | Formwork | 6d | 2025-09-01 | 2025-09-06 | 1941SS+2d |  | Zenith | 8691234 |
| 1944 | 36900.37000.37100.38100.39100.44700.182900.927400 | Concreting | 1d | 2025-09-07 | 2025-09-07 | 1942FS+1d, 1943 |  | Zenith | 8691224 |

| ID | WBS | Task | Duration | Start | Finish | Predecessors | Constraint | Calendar | Unique_Task_ID |
| --- | --- | --- | --- | --- | --- | --- | --- | --- | --- |
| 1945 | 36900.37000.37100.38100.39100.44700.182600 | **7th floor roof slab** | 9d | 2025-09-08 | 2025-09-16 |  | start no earlier than 2025-09-08 | Zenith | 8654564 |
| 1946 | 36900.37000.37100.38100.39100.44700.182600.927500 | Reinforcement | 6d | 2025-09-08 | 2025-09-13 | 1944 |  | Zenith | 8691214 |
| 1947 | 36900.37000.37100.38100.39100.44700.182600.927600 | Conduiting | 6d | 2025-09-09 | 2025-09-14 | 1946SS+1d |  | Zenith | 8691204 |
| 1948 | 36900.37000.37100.38100.39100.44700.182600.927700 | Formwork | 6d | 2025-09-10 | 2025-09-15 | 1946SS+2d |  | Zenith | 8691194 |
| 1949 | 36900.37000.37100.38100.39100.44700.182600.927800 | Concreting | 1d | 2025-09-16 | 2025-09-16 | 1947FS+1d, 1948 |  | Zenith | 8691184 |
| 1950 | 36900.37000.37100.38100.39100.44700.182200 | **8th floor roof slab** | 9d | 2025-09-17 | 2025-09-25 |  | start no earlier than 2025-09-17 | Zenith | 8654574 |
| 1951 | 36900.37000.37100.38100.39100.44700.182200.927900 | Reinforcement | 6d | 2025-09-17 | 2025-09-22 | 1949 |  | Zenith | 8691174 |
| 1952 | 36900.37000.37100.38100.39100.44700.182200.928000 | Conduiting | 6d | 2025-09-18 | 2025-09-23 | 1951SS+1d |  | Zenith | 8691164 |
| 1953 | 36900.37000.37100.38100.39100.44700.182200.928100 | Formwork | 6d | 2025-09-19 | 2025-09-24 | 1951SS+2d |  | Zenith | 8691154 |
| 1954 | 36900.37000.37100.38100.39100.44700.182200.928200 | Concreting | 1d | 2025-09-25 | 2025-09-25 | 1952FS+1d, 1953 |  | Zenith | 8691144 |
| 1955 | 36900.37000.37100.38100.39100.44700.181600 | **9th floor roof slab** | 9d | 2025-09-26 | 2025-10-04 |  | start no earlier than 2025-09-26 | Zenith | 8654584 |
| 1956 | 36900.37000.37100.38100.39100.44700.181600.928300 | Reinforcement | 6d | 2025-09-26 | 2025-10-01 | 1954 |  | Zenith | 8691134 |
| 1957 | 36900.37000.37100.38100.39100.44700.181600.928400 | Conduiting | 6d | 2025-09-27 | 2025-10-02 | 1956SS+1d |  | Zenith | 8691124 |
| 1958 | 36900.37000.37100.38100.39100.44700.181600.928500 | Formwork | 6d | 2025-09-28 | 2025-10-03 | 1956SS+2d |  | Zenith | 8691114 |
| 1959 | 36900.37000.37100.38100.39100.44700.181600.928600 | Concreting | 1d | 2025-10-04 | 2025-10-04 | 1957FS+1d, 1958 |  | Zenith | 8691104 |
| 1960 | 36900.37000.37100.38100.39100.44700.181500 | **10th floor roof slab** | 9d | 2025-10-05 | 2025-10-13 |  | start no earlier than 2025-10-05 | Zenith | 8654604 |
| 1961 | 36900.37000.37100.38100.39100.44700.181500.928700 | Reinforcement | 6d | 2025-10-05 | 2025-10-10 | 1959 |  | Zenith | 8691094 |
| 1962 | 36900.37000.37100.38100.39100.44700.181500.928800 | Conduiting | 6d | 2025-10-06 | 2025-10-11 | 1961SS+1d |  | Zenith | 8691084 |
| 1963 | 36900.37000.37100.38100.39100.44700.181500.928900 | Formwork | 6d | 2025-10-07 | 2025-10-12 | 1961SS+2d |  | Zenith | 8691074 |
| 1964 | 36900.37000.37100.38100.39100.44700.181500.929000 | Concreting | 1d | 2025-10-13 | 2025-10-13 | 1962FS+1d, 1963 |  | Zenith | 8691064 |
| 1965 | 36900.37000.37100.38100.39100.44700.181200 | **11th floor roof slab** | 9d | 2025-10-14 | 2025-10-22 |  | start no earlier than 2025-10-14 | Zenith | 8654634 |
| 1966 | 36900.37000.37100.38100.39100.44700.181200.929100 | Reinforcement | 6d | 2025-10-14 | 2025-10-19 | 1964 |  | Zenith | 8691054 |
| 1967 | 36900.37000.37100.38100.39100.44700.181200.929200 | Conduiting | 6d | 2025-10-15 | 2025-10-20 | 1966SS+1d |  | Zenith | 8691044 |
| 1968 | 36900.37000.37100.38100.39100.44700.181200.929300 | Formwork | 6d | 2025-10-16 | 2025-10-21 | 1966SS+2d |  | Zenith | 8691034 |
| 1969 | 36900.37000.37100.38100.39100.44700.181200.929400 | Concreting | 1d | 2025-10-22 | 2025-10-22 | 1967FS+1d, 1968 |  | Zenith | 8691024 |

| ID | WBS | Task | Duration | Start | Finish | Predecessors | Constraint | Calendar | Unique_Task_ID |
| --- | --- | --- | --- | --- | --- | --- | --- | --- | --- |
| 1970 | 36900.37000.37100.38100.39100.44700.181100 | **12th floor roof slab** | 9d | 2025-10-23 | 2025-10-31 |  | start no earlier than 2025-10-23 | Zenith | 8654654 |
| 1971 | 36900.37000.37100.38100.39100.44700.181100.929500 | Reinforcement | 6d | 2025-10-23 | 2025-10-28 | 1969 |  | Zenith | 8691014 |
| 1972 | 36900.37000.37100.38100.39100.44700.181100.929600 | Conduiting | 6d | 2025-10-24 | 2025-10-29 | 1971SS+1d |  | Zenith | 8691004 |
| 1973 | 36900.37000.37100.38100.39100.44700.181100.929700 | Formwork | 6d | 2025-10-25 | 2025-10-30 | 1971SS+2d |  | Zenith | 8690994 |
| 1974 | 36900.37000.37100.38100.39100.44700.181100.929800 | Concreting | 1d | 2025-10-31 | 2025-10-31 | 1972FS+1d, 1973 |  | Zenith | 8690984 |
| 1975 | 36900.37000.37100.38100.39100.44700.181000 | **13th floor roof slab** | 9d | 2025-12-16 | 2025-12-24 |  | start no earlier than 2025-12-16 | Zenith | 8654674 |
| 1976 | 36900.37000.37100.38100.39100.44700.181000.929900 | Reinforcement | 6d | 2025-12-16 | 2025-12-21 | 1974 |  | Zenith | 8690974 |
| 1977 | 36900.37000.37100.38100.39100.44700.181000.930000 | Conduiting | 6d | 2025-12-17 | 2025-12-22 | 1976SS+1d |  | Zenith | 8690964 |
| 1978 | 36900.37000.37100.38100.39100.44700.181000.930100 | Formwork | 6d | 2025-12-18 | 2025-12-23 | 1976SS+2d |  | Zenith | 8690954 |
| 1979 | 36900.37000.37100.38100.39100.44700.181000.930200 | Concreting | 1d | 2025-12-24 | 2025-12-24 | 1977FS+1d, 1978 |  | Zenith | 8690944 |
| 1980 | 36900.37000.37100.38100.39100.44700.180800 | **14th floor roof slab** | 9d | 2025-12-25 | 2026-01-02 |  | start no earlier than 2025-12-25 | Zenith | 8654684 |
| 1981 | 36900.37000.37100.38100.39100.44700.180800.930300 | Reinforcement | 6d | 2025-12-25 | 2025-12-30 | 1979 |  | Zenith | 8690934 |
| 1982 | 36900.37000.37100.38100.39100.44700.180800.930400 | Conduiting | 6d | 2025-12-26 | 2025-12-31 | 1981SS+1d |  | Zenith | 8690924 |
| 1983 | 36900.37000.37100.38100.39100.44700.180800.930500 | Formwork | 6d | 2025-12-27 | 2026-01-01 | 1981SS+2d |  | Zenith | 8690914 |
| 1984 | 36900.37000.37100.38100.39100.44700.180800.930600 | Concreting | 1d | 2026-01-02 | 2026-01-02 | 1982FS+1d, 1983 |  | Zenith | 8690904 |
| 1985 | 36900.37000.37100.38100.39100.44700.180100 | **15th floor roof slab** | 9d | 2026-01-03 | 2026-01-11 |  | start no earlier than 2026-01-03 | Zenith | 8654724 |
| 1986 | 36900.37000.37100.38100.39100.44700.180100.930700 | Reinforcement | 6d | 2026-01-03 | 2026-01-08 | 1984 |  | Zenith | 8690894 |
| 1987 | 36900.37000.37100.38100.39100.44700.180100.930800 | Conduiting | 6d | 2026-01-04 | 2026-01-09 | 1986SS+1d |  | Zenith | 8690884 |
| 1988 | 36900.37000.37100.38100.39100.44700.180100.930900 | Formwork | 6d | 2026-01-05 | 2026-01-10 | 1986SS+2d |  | Zenith | 8690874 |
| 1989 | 36900.37000.37100.38100.39100.44700.180100.931000 | Concreting | 1d | 2026-01-11 | 2026-01-11 | 1987FS+1d, 1988 |  | Zenith | 8690864 |
| 1990 | 36900.37000.37100.38100.39100.44700.180000 | **16th floor roof slab** | 9d | 2026-01-12 | 2026-01-20 |  | start no earlier than 2026-01-12 | Zenith | 8654744 |
| 1991 | 36900.37000.37100.38100.39100.44700.180000.931100 | Reinforcement | 6d | 2026-01-12 | 2026-01-17 | 1989 |  | Zenith | 8690854 |
| 1992 | 36900.37000.37100.38100.39100.44700.180000.931200 | Conduiting | 6d | 2026-01-13 | 2026-01-18 | 1991SS+1d |  | Zenith | 8690844 |
| 1993 | 36900.37000.37100.38100.39100.44700.180000.931300 | Formwork | 6d | 2026-01-14 | 2026-01-19 | 1991SS+2d |  | Zenith | 8690834 |
| 1994 | 36900.37000.37100.38100.39100.44700.180000.931400 | Concreting | 1d | 2026-01-20 | 2026-01-20 | 1992, 1993 |  | Zenith | 8690824 |

| ID | WBS | Task | Duration | Start | Finish | Predecessors | Constraint | Calendar | Unique_Task_ID |
| --- | --- | --- | --- | --- | --- | --- | --- | --- | --- |
| 1995 | 36900.37000.37100.38100.39100.44700.179500 | **17th floor roof slab** | 9d | 2026-01-21 | 2026-01-29 |  | start no earlier than 2026-01-21 | Zenith | 8654774 |
| 1996 | 36900.37000.37100.38100.39100.44700.179500.931500 | Reinforcement | 6d | 2026-01-21 | 2026-01-26 | 1994 |  | Zenith | 8690814 |
| 1997 | 36900.37000.37100.38100.39100.44700.179500.931600 | Conduiting | 6d | 2026-01-22 | 2026-01-27 | 1996SS+1d |  | Zenith | 8690804 |
| 1998 | 36900.37000.37100.38100.39100.44700.179500.931700 | Formwork | 6d | 2026-01-23 | 2026-01-28 | 1996SS+2d |  | Zenith | 8690794 |
| 1999 | 36900.37000.37100.38100.39100.44700.179500.931800 | Concreting | 1d | 2026-01-29 | 2026-01-29 | 1997FS+1d, 1998 |  | Zenith | 8690784 |
| 2000 | 36900.37000.37100.38100.39100.44700.179100 | **18th floor roof slab** | 8d | 2026-01-30 | 2026-02-06 |  | start no earlier than 2026-01-30 | Zenith | 8654784 |
| 2001 | 36900.37000.37100.38100.39100.44700.179100.931900 | Reinforcement | 5d | 2026-01-30 | 2026-02-03 | 1999 |  | Zenith | 8690774 |
| 2002 | 36900.37000.37100.38100.39100.44700.179100.932000 | Conduiting | 5d | 2026-01-31 | 2026-02-04 | 2001SS+1d |  | Zenith | 8690764 |
| 2003 | 36900.37000.37100.38100.39100.44700.179100.932100 | Formwork | 5d | 2026-02-01 | 2026-02-05 | 2001SS+2d |  | Zenith | 8690754 |
| 2004 | 36900.37000.37100.38100.39100.44700.179100.932200 | Concreting | 1d | 2026-02-06 | 2026-02-06 | 2002FS+1d, 2003 |  | Zenith | 8690744 |
| 2005 | 36900.37000.37100.38100.39100.44700.178300 | **19th floor roof slab** | 8d | 2026-02-07 | 2026-02-14 |  | start no earlier than 2026-02-07 | Zenith | 8654814 |
| 2006 | 36900.37000.37100.38100.39100.44700.178300.932300 | Reinforcement | 5d | 2026-02-07 | 2026-02-11 | 2004 |  | Zenith | 8690734 |
| 2007 | 36900.37000.37100.38100.39100.44700.178300.932400 | Conduiting | 5d | 2026-02-08 | 2026-02-12 | 2006SS+1d |  | Zenith | 8690724 |
| 2008 | 36900.37000.37100.38100.39100.44700.178300.932500 | Formwork | 5d | 2026-02-09 | 2026-02-13 | 2006SS+2d |  | Zenith | 8690714 |
| 2009 | 36900.37000.37100.38100.39100.44700.178300.932600 | Concreting | 1d | 2026-02-14 | 2026-02-14 | 2007FS+1d, 2008 |  | Zenith | 8690704 |
| 2010 | 36900.37000.37100.38100.39100.44700.178200 | **20th floor roof slab** | 8d | 2026-02-15 | 2026-02-22 |  | start no earlier than 2026-02-15 | Zenith | 8655024 |
| 2011 | 36900.37000.37100.38100.39100.44700.178200.932700 | Reinforcement | 5d | 2026-02-15 | 2026-02-19 | 2009 |  | Zenith | 8690694 |
| 2012 | 36900.37000.37100.38100.39100.44700.178200.932800 | Conduiting | 5d | 2026-02-16 | 2026-02-20 | 2011SS+1d |  | Zenith | 8690684 |
| 2013 | 36900.37000.37100.38100.39100.44700.178200.932900 | Formwork | 5d | 2026-02-17 | 2026-02-21 | 2011SS+2d |  | Zenith | 8690674 |
| 2014 | 36900.37000.37100.38100.39100.44700.178200.933000 | Concreting | 1d | 2026-02-22 | 2026-02-22 | 2012FS+1d, 2013 |  | Zenith | 8690664 |
| 2015 | 36900.37000.37100.38100.39100.44700.177800 | **21st floor roof slab** | 8d | 2026-02-23 | 2026-03-02 |  | start no earlier than 2026-02-23 | Zenith | 8655044 |
| 2016 | 36900.37000.37100.38100.39100.44700.177800.933100 | Reinforcement | 5d | 2026-02-23 | 2026-02-27 | 2014 |  | Zenith | 8690654 |
| 2017 | 36900.37000.37100.38100.39100.44700.177800.933200 | Conduiting | 5d | 2026-02-24 | 2026-02-28 | 2016SS+1d |  | Zenith | 8690644 |
| 2018 | 36900.37000.37100.38100.39100.44700.177800.933300 | Formwork | 5d | 2026-02-25 | 2026-03-01 | 2016SS+2d |  | Zenith | 8690634 |
| 2019 | 36900.37000.37100.38100.39100.44700.177800.933400 | Concreting | 1d | 2026-03-02 | 2026-03-02 | 2017FS+1d, 2018 |  | Zenith | 8690624 |

| ID | WBS | Task | Duration | Start | Finish | Predecessors | Constraint | Calendar | Unique_Task_ID |
| --- | --- | --- | --- | --- | --- | --- | --- | --- | --- |
| 2020 | 36900.37000.37100.38100.39100.44700.177500 | **22nd floor roof slab** | 8d | 2026-03-03 | 2026-03-10 |  | start no earlier than 2026-03-03 | Zenith | 8655064 |
| 2021 | 36900.37000.37100.38100.39100.44700.177500.933500 | Reinforcement | 5d | 2026-03-03 | 2026-03-07 | 2019 |  | Zenith | 8690614 |
| 2022 | 36900.37000.37100.38100.39100.44700.177500.933600 | Conduiting | 5d | 2026-03-04 | 2026-03-08 | 2021SS+1d |  | Zenith | 8690604 |
| 2023 | 36900.37000.37100.38100.39100.44700.177500.933700 | Formwork | 5d | 2026-03-05 | 2026-03-09 | 2021SS+2d |  | Zenith | 8690594 |
| 2024 | 36900.37000.37100.38100.39100.44700.177500.933800 | Concreting | 1d | 2026-03-10 | 2026-03-10 | 2022FS+1d, 2023 |  | Zenith | 8690584 |
| 2025 | 36900.37000.37100.38100.39100.44700.176800 | **23rd floor roof slab** | 8d | 2026-03-11 | 2026-03-18 |  | start no earlier than 2026-03-11 | Zenith | 8655234 |
| 2026 | 36900.37000.37100.38100.39100.44700.176800.933900 | Reinforcement | 5d | 2026-03-11 | 2026-03-15 | 2024 |  | Zenith | 8690574 |
| 2027 | 36900.37000.37100.38100.39100.44700.176800.934000 | Conduiting | 5d | 2026-03-12 | 2026-03-16 | 2026SS+1d |  | Zenith | 8690564 |
| 2028 | 36900.37000.37100.38100.39100.44700.176800.934100 | Formwork | 5d | 2026-03-13 | 2026-03-17 | 2026SS+2d |  | Zenith | 8690554 |
| 2029 | 36900.37000.37100.38100.39100.44700.176800.934200 | Concreting | 1d | 2026-03-18 | 2026-03-18 | 2027FS+1d, 2028 |  | Zenith | 8690544 |
| 2030 | 36900.37000.37100.38100.39100.44700.176700 | **24th floor roof slab** | 8d | 2026-03-19 | 2026-03-26 |  | start no earlier than 2026-03-19 | Zenith | 8655244 |
| 2031 | 36900.37000.37100.38100.39100.44700.176700.934300 | Reinforcement | 5d | 2026-03-19 | 2026-03-23 | 2029 |  | Zenith | 8690534 |
| 2032 | 36900.37000.37100.38100.39100.44700.176700.934400 | Conduiting | 5d | 2026-03-20 | 2026-03-24 | 2031SS+1d |  | Zenith | 8690524 |
| 2033 | 36900.37000.37100.38100.39100.44700.176700.934500 | Formwork | 5d | 2026-03-21 | 2026-03-25 | 2031SS+2d |  | Zenith | 8690514 |
| 2034 | 36900.37000.37100.38100.39100.44700.176700.934600 | Concreting | 1d | 2026-03-26 | 2026-03-26 | 2032FS+1d, 2033 |  | Zenith | 8690504 |
| 2035 | 36900.37000.37100.38100.39100.44700.176200 | **25th floor roof slab** | 8d | 2026-03-27 | 2026-04-03 |  | start no earlier than 2026-03-27 | Zenith | 8655254 |
| 2036 | 36900.37000.37100.38100.39100.44700.176200.934700 | Reinforcement | 5d | 2026-03-27 | 2026-03-31 | 2034 |  | Zenith | 8690494 |
| 2037 | 36900.37000.37100.38100.39100.44700.176200.934800 | Conduiting | 5d | 2026-03-28 | 2026-04-01 | 2036SS+1d |  | Zenith | 8690484 |
| 2038 | 36900.37000.37100.38100.39100.44700.176200.934900 | Formwork | 5d | 2026-03-29 | 2026-04-02 | 2036SS+2d |  | Zenith | 8690474 |
| 2039 | 36900.37000.37100.38100.39100.44700.176200.935000 | Concreting | 1d | 2026-04-03 | 2026-04-03 | 2037FS+1d, 2038 |  | Zenith | 8690464 |
| 2040 | 36900.37000.37100.38100.39100.44700.176000 | **26th floor roof slab** | 8d | 2026-04-04 | 2026-04-11 |  | start no earlier than 2026-04-04 | Zenith | 8655264 |
| 2041 | 36900.37000.37100.38100.39100.44700.176000.935100 | Reinforcement | 5d | 2026-04-04 | 2026-04-08 | 2039 |  | Zenith | 8690454 |
| 2042 | 36900.37000.37100.38100.39100.44700.176000.935200 | Conduiting | 5d | 2026-04-05 | 2026-04-09 | 2041SS+1d |  | Zenith | 8690444 |
| 2043 | 36900.37000.37100.38100.39100.44700.176000.935300 | Formwork | 5d | 2026-04-06 | 2026-04-10 | 2041SS+2d |  | Zenith | 8690434 |
| 2044 | 36900.37000.37100.38100.39100.44700.176000.935400 | Concreting | 1d | 2026-04-11 | 2026-04-11 | 2042FS+1d, 2043 |  | Zenith | 8690424 |

| ID | WBS | Task | Duration | Start | Finish | Predecessors | Constraint | Calendar | Unique_Task_ID |
| --- | --- | --- | --- | --- | --- | --- | --- | --- | --- |
| 2045 | 36900.37000.37100.38100.39100.44700.175700 | **27th floor roof slab** | 8d | 2026-04-12 | 2026-04-19 |  | start no earlier than 2026-04-12 | Zenith | 8655434 |
| 2046 | 36900.37000.37100.38100.39100.44700.175700.935500 | Reinforcement | 5d | 2026-04-12 | 2026-04-16 | 2044 |  | Zenith | 8690414 |
| 2047 | 36900.37000.37100.38100.39100.44700.175700.935600 | Conduiting | 5d | 2026-04-13 | 2026-04-17 | 2046SS+1d |  | Zenith | 8690404 |
| 2048 | 36900.37000.37100.38100.39100.44700.175700.935700 | Formwork | 5d | 2026-04-14 | 2026-04-18 | 2046SS+2d |  | Zenith | 8690394 |
| 2049 | 36900.37000.37100.38100.39100.44700.175700.935800 | Concreting | 1d | 2026-04-19 | 2026-04-19 | 2047FS+1d, 2048 |  | Zenith | 8690384 |
| 2050 | 36900.37000.37100.38100.39100.44700.175600 | **28th floor roof slab** | 8d | 2026-04-20 | 2026-04-27 |  | start no earlier than 2026-04-20 | Zenith | 8655734 |
| 2051 | 36900.37000.37100.38100.39100.44700.175600.935900 | Reinforcement | 5d | 2026-04-20 | 2026-04-24 | 2049 |  | Zenith | 8690374 |
| 2052 | 36900.37000.37100.38100.39100.44700.175600.936000 | Conduiting | 5d | 2026-04-21 | 2026-04-25 | 2051SS+1d |  | Zenith | 8690364 |
| 2053 | 36900.37000.37100.38100.39100.44700.175600.936100 | Formwork | 5d | 2026-04-22 | 2026-04-26 | 2051SS+2d |  | Zenith | 8690354 |
| 2054 | 36900.37000.37100.38100.39100.44700.175600.936200 | Concreting | 1d | 2026-04-27 | 2026-04-27 | 2052FS+1d, 2053 |  | Zenith | 8690344 |
| 2055 | 36900.37000.37100.38100.39100.44700.175500 | **29th floor roof slab** | 8d | 2026-04-28 | 2026-05-05 |  | start no earlier than 2026-04-28 | Zenith | 8655964 |
| 2056 | 36900.37000.37100.38100.39100.44700.175500.936300 | Reinforcement | 5d | 2026-04-28 | 2026-05-02 | 2054 |  | Zenith | 8690334 |
| 2057 | 36900.37000.37100.38100.39100.44700.175500.936400 | Conduiting | 5d | 2026-04-29 | 2026-05-03 | 2056SS+1d |  | Zenith | 8690324 |
| 2058 | 36900.37000.37100.38100.39100.44700.175500.936500 | Formwork | 5d | 2026-04-30 | 2026-05-04 | 2056SS+2d |  | Zenith | 8690314 |
| 2059 | 36900.37000.37100.38100.39100.44700.175500.936600 | Concreting | 1d | 2026-05-05 | 2026-05-05 | 2057FS+1d, 2058 |  | Zenith | 8690304 |
| 2060 | 36900.37000.37100.38100.39100.44700.175400 | **30th floor roof slab** | 10d | 2026-05-06 | 2026-05-15 |  | start no earlier than 2026-05-06 | Zenith | 8655984 |
| 2061 | 36900.37000.37100.38100.39100.44700.175400.936700 | Reinforcement | 7d | 2026-05-06 | 2026-05-12 | 2059 |  | Zenith | 8690294 |
| 2062 | 36900.37000.37100.38100.39100.44700.175400.936800 | Conduiting | 7d | 2026-05-07 | 2026-05-13 | 2061SS+1d |  | Zenith | 8690284 |
| 2063 | 36900.37000.37100.38100.39100.44700.175400.936900 | Formwork | 7d | 2026-05-08 | 2026-05-14 | 2061SS+2d |  | Zenith | 8690274 |
| 2064 | 36900.37000.37100.38100.39100.44700.175400.937000 | Concreting | 1d | 2026-05-15 | 2026-05-15 | 2062FS+1d, 2063 |  | Zenith | 8690264 |
| 2065 | 36900.37000.37100.38100.39100.44700.175000 | **31st floor roof slab** | 10d | 2026-05-16 | 2026-05-25 |  | start no earlier than 2026-05-16 | Zenith | 8655994 |
| 2066 | 36900.37000.37100.38100.39100.44700.175000.937100 | Reinforcement | 7d | 2026-05-16 | 2026-05-22 | 2064 |  | Zenith | 8690254 |
| 2067 | 36900.37000.37100.38100.39100.44700.175000.937200 | Conduiting | 7d | 2026-05-17 | 2026-05-23 | 2066SS+1d |  | Zenith | 8690244 |
| 2068 | 36900.37000.37100.38100.39100.44700.175000.937300 | Formwork | 7d | 2026-05-18 | 2026-05-24 | 2066SS+2d |  | Zenith | 8690234 |
| 2069 | 36900.37000.37100.38100.39100.44700.175000.937400 | Concreting | 1d | 2026-05-25 | 2026-05-25 | 2067FS+1d, 2068 |  | Zenith | 8690224 |

| ID | WBS | Task | Duration | Start | Finish | Predecessors | Constraint | Calendar | Unique_Task_ID |
| --- | --- | --- | --- | --- | --- | --- | --- | --- | --- |
| 2070 | 36900.37000.37100.38100.39100.44700.174900 | **32nd floor roof slab** | 10d | 2026-05-26 | 2026-06-04 |  | start no earlier than 2026-05-26 | Zenith | 8656004 |
| 2071 | 36900.37000.37100.38100.39100.44700.174900.937500 | Reinforcement | 7d | 2026-05-26 | 2026-06-01 | 2069 |  | Zenith | 8690214 |
| 2072 | 36900.37000.37100.38100.39100.44700.174900.937600 | Conduiting | 7d | 2026-05-27 | 2026-06-02 | 2071SS+1d |  | Zenith | 8690204 |
| 2073 | 36900.37000.37100.38100.39100.44700.174900.937700 | Formwork | 7d | 2026-05-28 | 2026-06-03 | 2071SS+2d |  | Zenith | 8690194 |
| 2074 | 36900.37000.37100.38100.39100.44700.174900.937800 | Concreting | 1d | 2026-06-04 | 2026-06-04 | 2072FS+1d, 2073 |  | Zenith | 8690184 |
| 2075 | 36900.37000.37100.38100.39100.44700.174600 | **33rd floor roof slab** | 10d | 2026-06-05 | 2026-06-14 |  | start no earlier than 2026-06-05 | Zenith | 8656014 |
| 2076 | 36900.37000.37100.38100.39100.44700.174600.937900 | Reinforcement | 7d | 2026-06-05 | 2026-06-11 | 2074 |  | Zenith | 8690174 |
| 2077 | 36900.37000.37100.38100.39100.44700.174600.938000 | Conduiting | 7d | 2026-06-06 | 2026-06-12 | 2076SS+1d |  | Zenith | 8690164 |
| 2078 | 36900.37000.37100.38100.39100.44700.174600.938100 | Formwork | 7d | 2026-06-07 | 2026-06-13 | 2076SS+2d |  | Zenith | 8690154 |
| 2079 | 36900.37000.37100.38100.39100.44700.174600.938200 | Concreting | 1d | 2026-06-14 | 2026-06-14 | 2077FS+1d, 2078 |  | Zenith | 8690144 |
| 2080 | 36900.37000.37100.38100.39100.44700.174200 | **34th floor roof slab** | 10d | 2026-06-15 | 2026-06-24 |  | start no earlier than 2026-06-15 | Zenith | 8656024 |
| 2081 | 36900.37000.37100.38100.39100.44700.174200.938300 | Reinforcement | 7d | 2026-06-15 | 2026-06-21 | 2079 |  | Zenith | 8690134 |
| 2082 | 36900.37000.37100.38100.39100.44700.174200.938400 | Conduiting | 7d | 2026-06-16 | 2026-06-22 | 2081SS+1d |  | Zenith | 8690124 |
| 2083 | 36900.37000.37100.38100.39100.44700.174200.938500 | Formwork | 7d | 2026-06-17 | 2026-06-23 | 2081SS+2d |  | Zenith | 8690114 |
| 2084 | 36900.37000.37100.38100.39100.44700.174200.938600 | Concreting | 1d | 2026-06-24 | 2026-06-24 | 2082FS+1d, 2083 |  | Zenith | 8690104 |
| 2085 | 36900.37000.37100.38100.39100.44700.173600 | **Terrace floor slab** | 18d | 2026-06-25 | 2026-07-12 |  | start no earlier than 2026-06-25 | Zenith | 8656054 |
| 2086 | 36900.37000.37100.38100.39100.44700.173600.938700 | Reinforcement | 14d | 2026-06-25 | 2026-07-08 | 2084 |  | Zenith | 8690094 |
| 2087 | 36900.37000.37100.38100.39100.44700.173600.938800 | Conduiting | 14d | 2026-06-26 | 2026-07-09 | 2086SS+1d |  | Zenith | 8690084 |
| 2088 | 36900.37000.37100.38100.39100.44700.173600.938900 | Formwork | 14d | 2026-06-27 | 2026-07-10 | 2086SS+2d |  | Zenith | 8690074 |
| 2089 | 36900.37000.37100.38100.39100.44700.173600.939000 | Concreting | 2d | 2026-07-11 | 2026-07-12 | 2087FS+1d, 2088 |  | Zenith | 8690064 |
| 2090 | 36900.37000.37100.38100.39100.44700.173500 | **OHT, Mumty & Machine Room, Parapet** | 35d | 2026-07-13 | 2026-08-16 |  | start no earlier than 2026-07-13 | Zenith | 8656354 |
| 2091 | 36900.37000.37100.38100.39100.44700.173500.939100 | Reinforcement | 20d | 2026-07-13 | 2026-08-01 | 2089 |  | Zenith | 8690054 |
| 2092 | 36900.37000.37100.38100.39100.44700.173500.939200 | Flanges fixing & Conduiting | 10d | 2026-07-14 | 2026-07-23 | 2091SS+1d |  | Zenith | 8690044 |
| 2093 | 36900.37000.37100.38100.39100.44700.173500.939300 | Formwork | 25d | 2026-07-19 | 2026-08-12 | 2091SS+6d |  | Zenith | 8690034 |
| 2094 | 36900.37000.37100.38100.39100.44700.173500.939400 | Concreting | 4d | 2026-08-13 | 2026-08-16 | 2092FS+5d, 2093 |  | Zenith | 8690024 |

| ID | WBS | Task | Duration | Start | Finish | Predecessors | Constraint | Calendar | Unique_Task_ID |
| --- | --- | --- | --- | --- | --- | --- | --- | --- | --- |
| 2095 | 36900.37000.37100.38100.39100.47400 | **Post Pour Activities** | 323.25d | 2025-08-21 | 2026-08-24 |  | start no earlier than 2025-08-21 | Zenith | 8648044 |
| 2096 | 36900.37000.37100.38100.39100.47400.793700 | 1st Floor | 7d | 2025-08-21 | 2025-08-27 | 1934 |  | Zenith | 8725254 |
| 2097 | 36900.37000.37100.38100.39100.47400.793800 | 2nd Floor | 7d | 2025-08-30 | 2025-09-06 | 2096FS+0.25d, 1939FS+0.25d |  | Zenith | 8725244 |
| 2098 | 36900.37000.37100.38100.39100.47400.793900 | 3rd Floor | 7d | 2025-09-08 | 2025-09-15 | 2097FS+0.25d, 1944FS+0.25d |  | Zenith | 8725234 |
| 2099 | 36900.37000.37100.38100.39100.47400.794000 | 4th Floor | 7d | 2025-09-17 | 2025-09-24 | 2098FS+0.25d, 1949FS+0.25d |  | Zenith | 8725224 |
| 2100 | 36900.37000.37100.38100.39100.47400.794100 | 5th Floor | 7d | 2025-09-26 | 2025-10-03 | 2099FS+0.25d, 1954FS+0.25d |  | Zenith | 8725214 |
| 2101 | 36900.37000.37100.38100.39100.47400.794200 | 6th Floor | 7d | 2025-10-05 | 2025-10-12 | 2100FS+0.25d, 1959FS+0.25d |  | Zenith | 8725204 |
| 2102 | 36900.37000.37100.38100.39100.47400.794300 | 7th Floor | 7d | 2025-10-14 | 2025-10-21 | 2101FS+0.25d, 1964FS+0.25d |  | Zenith | 8725194 |
| 2103 | 36900.37000.37100.38100.39100.47400.794400 | 8th Floor | 7d | 2025-10-23 | 2025-10-30 | 2102FS+0.25d, 1969FS+0.25d |  | Zenith | 8725184 |
| 2104 | 36900.37000.37100.38100.39100.47400.794500 | 9th Floor | 7d | 2025-12-16 | 2025-12-23 | 2103FS+0.25d, 1974FS+0.25d |  | Zenith | 8725174 |
| 2105 | 36900.37000.37100.38100.39100.47400.794600 | 10th Floor | 7d | 2025-12-25 | 2026-01-01 | 2104FS+0.25d, 1979FS+0.25d |  | Zenith | 8725164 |
| 2106 | 36900.37000.37100.38100.39100.47400.794700 | 11th Floor | 7d | 2026-01-03 | 2026-01-10 | 2105FS+0.25d, 1984FS+0.25d |  | Zenith | 8725154 |
| 2107 | 36900.37000.37100.38100.39100.47400.794800 | 12th Floor | 7d | 2026-01-12 | 2026-01-19 | 2106FS+0.25d, 1989FS+0.25d |  | Zenith | 8725144 |
| 2108 | 36900.37000.37100.38100.39100.47400.794900 | 13th Floor | 7d | 2026-01-21 | 2026-01-28 | 2107FS+0.25d, 1994FS+0.25d |  | Zenith | 8725134 |
| 2109 | 36900.37000.37100.38100.39100.47400.795000 | 14th Floor | 7d | 2026-01-30 | 2026-02-06 | 2108FS+0.25d, 1999FS+0.25d |  | Zenith | 8725124 |
| 2110 | 36900.37000.37100.38100.39100.47400.795100 | 15th Floor | 7d | 2026-02-07 | 2026-02-14 | 2109FS+0.25d, 2004FS+0.25d |  | Zenith | 8725114 |
| 2111 | 36900.37000.37100.38100.39100.47400.795200 | 16th Floor | 7d | 2026-02-15 | 2026-02-22 | 2110FS+0.25d, 2009FS+0.25d |  | Zenith | 8725104 |
| 2112 | 36900.37000.37100.38100.39100.47400.795300 | 17th Floor | 7d | 2026-02-23 | 2026-03-02 | 2111FS+0.25d, 2014FS+0.25d |  | Zenith | 8725094 |
| 2113 | 36900.37000.37100.38100.39100.47400.795400 | 18th Floor | 7d | 2026-03-03 | 2026-03-10 | 2112FS+0.25d, 2019FS+0.25d |  | Zenith | 8725084 |
| 2114 | 36900.37000.37100.38100.39100.47400.795500 | 19th Floor | 7d | 2026-03-11 | 2026-03-18 | 2113FS+0.25d, 2024FS+0.25d |  | Zenith | 8725074 |
| 2115 | 36900.37000.37100.38100.39100.47400.795600 | 20th Floor | 7d | 2026-03-19 | 2026-03-26 | 2114FS+0.25d, 2029FS+0.25d |  | Zenith | 8725064 |
| 2116 | 36900.37000.37100.38100.39100.47400.795700 | 21st Floor | 7d | 2026-03-27 | 2026-04-03 | 2115FS+0.25d, 2034FS+0.25d |  | Zenith | 8725054 |
| 2117 | 36900.37000.37100.38100.39100.47400.795800 | 22nd Floor | 7d | 2026-04-04 | 2026-04-11 | 2116FS+0.25d, 2039FS+0.25d |  | Zenith | 8725044 |
| 2118 | 36900.37000.37100.38100.39100.47400.795900 | 23rd Floor | 7d | 2026-04-12 | 2026-04-19 | 2117FS+0.25d, 2044FS+0.25d |  | Zenith | 8725034 |
| 2119 | 36900.37000.37100.38100.39100.47400.796000 | 24th Floor | 7d | 2026-04-20 | 2026-04-27 | 2118FS+0.25d, 2049FS+0.25d |  | Zenith | 8725024 |
| 2120 | 36900.37000.37100.38100.39100.47400.796100 | 25th Floor | 7d | 2026-04-28 | 2026-05-05 | 2119FS+0.25d, 2054FS+0.25d |  | Zenith | 8725014 |
| 2121 | 36900.37000.37100.38100.39100.47400.796200 | 26th Floor | 7d | 2026-05-06 | 2026-05-13 | 2120FS+0.25d, 2059FS+0.25d |  | Zenith | 8725004 |
| 2122 | 36900.37000.37100.38100.39100.47400.796300 | 27th Floor | 7d | 2026-05-16 | 2026-05-23 | 2121FS+0.25d, 2064FS+0.25d |  | Zenith | 8724994 |
| 2123 | 36900.37000.37100.38100.39100.47400.796400 | 28th Floor | 7d | 2026-05-26 | 2026-06-02 | 2122FS+0.25d, 2069FS+0.25d |  | Zenith | 8724984 |
| 2124 | 36900.37000.37100.38100.39100.47400.796500 | 29th Floor | 7d | 2026-06-05 | 2026-06-12 | 2123FS+0.25d, 2074FS+0.25d |  | Zenith | 8724974 |
| 2125 | 36900.37000.37100.38100.39100.47400.796600 | 30th Floor | 7d | 2026-06-15 | 2026-06-22 | 2124FS+0.25d, 2079FS+0.25d |  | Zenith | 8724964 |
| 2126 | 36900.37000.37100.38100.39100.47400.796700 | 31st Floor | 7d | 2026-06-25 | 2026-07-02 | 2125FS+0.25d, 2084FS+0.25d |  | Zenith | 8724954 |
| 2127 | 36900.37000.37100.38100.39100.47400.796800 | 32nd Flood | 7d | 2026-07-13 | 2026-07-20 | 2126FS+0.25d, 2089FS+0.25d |  | Zenith | 8724944 |
| 2128 | 36900.37000.37100.38100.39100.47400.796900 | 33rd Floor | 7d | 2026-07-20 | 2026-07-27 | 2127 |  | Zenith | 8724934 |
| 2129 | 36900.37000.37100.38100.39100.47400.797000 | 34th Floor | 7d | 2026-07-27 | 2026-08-03 | 2128 |  | Zenith | 8724924 |
| 2130 | 36900.37000.37100.38100.39100.47400.797100 | 35th Floor | 7d | 2026-08-03 | 2026-08-10 | 2129 |  | Zenith | 8724914 |
| 2131 | 36900.37000.37100.38100.39100.47400.797200 | Terrace | 7d | 2026-08-10 | 2026-08-17 | 2130 |  | Zenith | 8724904 |
| 2132 | 36900.37000.37100.38100.39100.47400.797300 | Mumty & Machine Room | 7d | 2026-08-17 | 2026-08-24 | 2131 |  | Zenith | 8724894 |

| ID | WBS | Task | Duration | Start | Finish | Predecessors | Constraint | Calendar | Unique_Task_ID |
| --- | --- | --- | --- | --- | --- | --- | --- | --- | --- |
| 2133 | 36900.37000.37100.38100.39100.40900 | **Finishing work** | 550d | 2025-08-28 | 2027-05-29 |  | start no earlier than 2025-08-28 | Zenith | 8647774 |
| 2134 | 36900.37000.37100.38100.39100.40900.41600 | **Flat finishing** | 550d | 2025-08-28 | 2027-05-29 |  | start no earlier than 2025-08-28 | Zenith | 8647844 |
| 2135 | 36900.37000.37100.38100.39100.40900.41600.89400 | **1st Floor roof** | 79d | 2025-08-28 | 2025-12-29 |  | start no earlier than 2025-08-28 | Zenith | 8649124 |
| 2136 | 36900.37000.37100.38100.39100.40900.41600.89400.1390000 | Block Work | 6d | 2025-08-28 | 2025-09-02 | 2096 |  | Zenith | 8667514 |
| 2137 | 36900.37000.37100.38100.39100.40900.41600.89400.1390100 | Fire sprinkler pipe fixing | 5d | 2025-09-03 | 2025-09-07 | 2136 |  | Zenith | 8667524 |
| 2138 | 36900.37000.37100.38100.39100.40900.41600.89400.1390200 | Internal Plumbing Works | 5d | 2025-09-03 | 2025-09-07 | 2136 |  | Zenith | 8667534 |
| 2139 | 36900.37000.37100.38100.39100.40900.41600.89400.1390300 | Waterproofing | 5d | 2025-09-08 | 2025-09-12 | 2138 |  | Zenith | 8667544 |
| 2140 | 36900.37000.37100.38100.39100.40900.41600.89400.1390400 | Internal Plaster | 9d | 2025-09-09 | 2025-09-17 | 2138, 2139FF+5d |  | Zenith | 8667554 |
| 2141 | 36900.37000.37100.38100.39100.40900.41600.89400.1390500 | IPS flooring work | 7d | 2025-09-18 | 2025-09-24 | 2140 |  | Zenith | 8667564 |
| 2142 | 36900.37000.37100.38100.39100.40900.41600.89400.1390600 | Toilet dado work | 6d | 2025-09-18 | 2025-09-23 | 2139, 2140 |  | Zenith | 8667574 |
| 2143 | 36900.37000.37100.38100.39100.40900.41600.89400.1390700 | Toilet flooring work | 7d | 2025-09-24 | 2025-09-30 | 2142 |  | Zenith | 8667584 |
| 2144 | 36900.37000.37100.38100.39100.40900.41600.89400.1390800 | False Cieling panel fixing | 7d | 2025-10-01 | 2025-10-07 | 2143 |  | Zenith | 8667594 |
| 2145 | 36900.37000.37100.38100.39100.40900.41600.89400.1390900 | Living dinning flooring | 7d | 2025-10-01 | 2025-10-07 | 2143 |  | Zenith | 8667604 |
| 2146 | 36900.37000.37100.38100.39100.40900.41600.89400.1391000 | Putty primer coat | 8d | 2025-10-08 | 2025-10-15 | 2145 |  | Zenith | 8667614 |
| 2147 | 36900.37000.37100.38100.39100.40900.41600.89400.1391100 | Aluminium door-window fixing | 12d | 2025-10-08 | 2025-10-19 | 2141, 2145 |  | Zenith | 8667624 |
| 2148 | 36900.37000.37100.38100.39100.40900.41600.89400.1391200 | Door shutter fixing (Pre Hung) | 8d | 2025-10-16 | 2025-10-23 | 2146 |  | Zenith | 8667634 |
| 2149 | 36900.37000.37100.38100.39100.40900.41600.89400.1391300 | Electrical wiring work | 10d | 2025-10-24 | 2025-12-17 | 2148 |  | Zenith | 8667644 |
| 2150 | 36900.37000.37100.38100.39100.40900.41600.89400.1391400 | Painting 1st coat | 12d | 2025-12-18 | 2025-12-29 | 2149 |  | Zenith | 8667654 |
| 2151 | 36900.37000.37100.38100.39100.40900.41600.89500 | **2nd floor roof** | 81.75d | 2025-09-06 | 2026-01-10 |  | start no earlier than 2025-09-06 | Zenith | 8649134 |
| 2152 | 36900.37000.37100.38100.39100.40900.41600.89500.1391500 | Block Work | 6d | 2025-09-06 | 2025-09-12 | 2097, 2136 |  | Zenith | 8667664 |
| 2153 | 36900.37000.37100.38100.39100.40900.41600.89500.1391600 | Fire sprinkler pipe fixing | 5d | 2025-09-12 | 2025-09-17 | 2137, 2152 |  | Zenith | 8667674 |
| 2154 | 36900.37000.37100.38100.39100.40900.41600.89500.1391700 | Internal Plumbing Works | 5d | 2025-09-12 | 2025-09-17 | 2138, 2152 |  | Zenith | 8667684 |
| 2155 | 36900.37000.37100.38100.39100.40900.41600.89500.1391800 | Waterproofing | 5d | 2025-09-17 | 2025-09-22 | 2139, 2154 |  | Zenith | 8667694 |
| 2156 | 36900.37000.37100.38100.39100.40900.41600.89500.1391900 | Internal Plaster | 9d | 2025-09-18 | 2025-09-27 | 2140, 2154, 2155FF+5d |  | Zenith | 8667704 |
| 2157 | 36900.37000.37100.38100.39100.40900.41600.89500.1392000 | IPS flooring work | 7d | 2025-09-27 | 2025-10-04 | 2141, 2156 |  | Zenith | 8667714 |
| 2158 | 36900.37000.37100.38100.39100.40900.41600.89500.1392100 | Toilet dado work | 6d | 2025-09-27 | 2025-10-03 | 2142, 2155, 2156 |  | Zenith | 8667724 |
| 2159 | 36900.37000.37100.38100.39100.40900.41600.89500.1392200 | Toilet flooring work | 7d | 2025-10-03 | 2025-10-10 | 2143, 2158 |  | Zenith | 8667734 |
| 2160 | 36900.37000.37100.38100.39100.40900.41600.89500.1392300 | False Cieling panel fixing | 7d | 2025-10-10 | 2025-10-17 | 2144, 2159 |  | Zenith | 8667744 |
| 2161 | 36900.37000.37100.38100.39100.40900.41600.89500.1392400 | Living dinning flooring | 7d | 2025-10-10 | 2025-10-17 | 2145, 2159 |  | Zenith | 8667754 |
| 2162 | 36900.37000.37100.38100.39100.40900.41600.89500.1392500 | Putty primer coat | 8d | 2025-10-17 | 2025-10-25 | 2146, 2161 |  | Zenith | 8667764 |
| 2163 | 36900.37000.37100.38100.39100.40900.41600.89500.1392600 | Aluminium door-window fixing | 12d | 2025-10-20 | 2025-10-31 | 2147, 2157, 2161 |  | Zenith | 8667774 |
| 2164 | 36900.37000.37100.38100.39100.40900.41600.89500.1392700 | Door shutter fixing (Pre Hung) | 8d | 2025-10-25 | 2025-12-17 | 2148, 2162 |  | Zenith | 8667784 |
| 2165 | 36900.37000.37100.38100.39100.40900.41600.89500.1392800 | Electrical wiring work | 10d | 2025-12-18 | 2025-12-27 | 2149, 2164 |  | Zenith | 8667794 |
| 2166 | 36900.37000.37100.38100.39100.40900.41600.89500.1392900 | Painting 1st coat | 12d | 2025-12-30 | 2026-01-10 | 2150, 2165 |  | Zenith | 8667804 |

| ID | WBS | Task | Duration | Start | Finish | Predecessors | Constraint | Calendar | Unique_Task_ID |
| --- | --- | --- | --- | --- | --- | --- | --- | --- | --- |
| 2167 | 36900.37000.37100.38100.39100.40900.41600.89600 | **3rd floor roof** | 84.75d | 2025-09-15 | 2026-01-22 |  | start no earlier than 2025-09-15 | Zenith | 8649144 |
| 2168 | 36900.37000.37100.38100.39100.40900.41600.89600.1393000 | Block Work | 6d | 2025-09-15 | 2025-09-21 | 2098, 2152 |  | Zenith | 8667814 |
| 2169 | 36900.37000.37100.38100.39100.40900.41600.89600.1393100 | Fire sprinkler pipe fixing | 5d | 2025-09-21 | 2025-09-26 | 2153, 2168 |  | Zenith | 8667824 |
| 2170 | 36900.37000.37100.38100.39100.40900.41600.89600.1393200 | Internal Plumbing Works | 5d | 2025-09-21 | 2025-09-26 | 2154, 2168 |  | Zenith | 8667834 |
| 2171 | 36900.37000.37100.38100.39100.40900.41600.89600.1393300 | Waterproofing | 5d | 2025-09-26 | 2025-10-01 | 2155, 2170 |  | Zenith | 8667844 |
| 2172 | 36900.37000.37100.38100.39100.40900.41600.89600.1393400 | Internal Plaster | 9d | 2025-09-27 | 2025-10-06 | 2156, 2170, 2171FF+5d |  | Zenith | 8667854 |
| 2173 | 36900.37000.37100.38100.39100.40900.41600.89600.1393500 | IPS flooring work | 7d | 2025-10-06 | 2025-10-13 | 2157, 2172 |  | Zenith | 8667864 |
| 2174 | 36900.37000.37100.38100.39100.40900.41600.89600.1393600 | Toilet dado work | 6d | 2025-10-06 | 2025-10-12 | 2158, 2171, 2172 |  | Zenith | 8667874 |
| 2175 | 36900.37000.37100.38100.39100.40900.41600.89600.1393700 | Toilet flooring work | 7d | 2025-10-12 | 2025-10-19 | 2159, 2174 |  | Zenith | 8667884 |
| 2176 | 36900.37000.37100.38100.39100.40900.41600.89600.1393800 | False Cieling panel fixing | 7d | 2025-10-19 | 2025-10-26 | 2160, 2175 |  | Zenith | 8667894 |
| 2177 | 36900.37000.37100.38100.39100.40900.41600.89600.1393900 | Living dinning flooring | 7d | 2025-10-19 | 2025-10-26 | 2161, 2175 |  | Zenith | 8667904 |
| 2178 | 36900.37000.37100.38100.39100.40900.41600.89600.1394000 | Putty primer coat | 8d | 2025-10-26 | 2025-12-18 | 2162, 2177 |  | Zenith | 8667914 |
| 2179 | 36900.37000.37100.38100.39100.40900.41600.89600.1394100 | Aluminium door-window fixing | 12d | 2025-12-16 | 2025-12-27 | 2163, 2173, 2177 |  | Zenith | 8667924 |
| 2180 | 36900.37000.37100.38100.39100.40900.41600.89600.1394200 | Door shutter fixing (Pre Hung) | 8d | 2025-12-18 | 2025-12-26 | 2164, 2178 |  | Zenith | 8667934 |
| 2181 | 36900.37000.37100.38100.39100.40900.41600.89600.1394300 | Electrical wiring work | 10d | 2025-12-28 | 2026-01-06 | 2165, 2180 |  | Zenith | 8667944 |
| 2182 | 36900.37000.37100.38100.39100.40900.41600.89600.1394400 | Painting 1st coat | 12d | 2026-01-11 | 2026-01-22 | 2166, 2181 |  | Zenith | 8667954 |
| 2183 | 36900.37000.37100.38100.39100.40900.41600.89700 | **4th floor roof** | 87.75d | 2025-09-24 | 2026-02-03 |  | start no earlier than 2025-09-24 | Zenith | 8649154 |
| 2184 | 36900.37000.37100.38100.39100.40900.41600.89700.1394500 | Block Work | 6d | 2025-09-24 | 2025-09-30 | 2099, 2168 |  | Zenith | 8667964 |
| 2185 | 36900.37000.37100.38100.39100.40900.41600.89700.1394600 | Fire sprinkler pipe fixing | 5d | 2025-09-30 | 2025-10-05 | 2169, 2184 |  | Zenith | 8667974 |
| 2186 | 36900.37000.37100.38100.39100.40900.41600.89700.1394700 | Internal Plumbing Works | 5d | 2025-09-30 | 2025-10-05 | 2170, 2184 |  | Zenith | 8667984 |
| 2187 | 36900.37000.37100.38100.39100.40900.41600.89700.1394800 | Waterproofing | 5d | 2025-10-05 | 2025-10-10 | 2171, 2186 |  | Zenith | 8667994 |
| 2188 | 36900.37000.37100.38100.39100.40900.41600.89700.1394900 | Internal Plaster | 9d | 2025-10-06 | 2025-10-15 | 2172, 2186, 2187FF+5d |  | Zenith | 8668004 |
| 2189 | 36900.37000.37100.38100.39100.40900.41600.89700.1395000 | IPS flooring work | 7d | 2025-10-15 | 2025-10-22 | 2173, 2188 |  | Zenith | 8668014 |
| 2190 | 36900.37000.37100.38100.39100.40900.41600.89700.1395100 | Toilet dado work | 6d | 2025-10-15 | 2025-10-21 | 2174, 2187, 2188 |  | Zenith | 8668024 |
| 2191 | 36900.37000.37100.38100.39100.40900.41600.89700.1395200 | Toilet flooring work | 7d | 2025-10-21 | 2025-10-28 | 2175, 2190 |  | Zenith | 8668034 |
| 2192 | 36900.37000.37100.38100.39100.40900.41600.89700.1395300 | False Cieling panel fixing | 7d | 2025-10-28 | 2025-12-19 | 2176, 2191 |  | Zenith | 8668044 |
| 2193 | 36900.37000.37100.38100.39100.40900.41600.89700.1395400 | Living dinning flooring | 7d | 2025-10-28 | 2025-12-19 | 2177, 2191 |  | Zenith | 8668054 |
| 2194 | 36900.37000.37100.38100.39100.40900.41600.89700.1395500 | Putty primer coat | 8d | 2025-12-19 | 2025-12-27 | 2178, 2193 |  | Zenith | 8668064 |
| 2195 | 36900.37000.37100.38100.39100.40900.41600.89700.1395600 | Aluminium door-window fixing | 12d | 2025-12-28 | 2026-01-08 | 2179, 2189, 2193 |  | Zenith | 8668074 |
| 2196 | 36900.37000.37100.38100.39100.40900.41600.89700.1395700 | Door shutter fixing (Pre Hung) | 8d | 2025-12-27 | 2026-01-04 | 2180, 2194 |  | Zenith | 8668084 |
| 2197 | 36900.37000.37100.38100.39100.40900.41600.89700.1395800 | Electrical wiring work | 10d | 2026-01-07 | 2026-01-16 | 2181, 2196 |  | Zenith | 8668094 |
| 2198 | 36900.37000.37100.38100.39100.40900.41600.89700.1395900 | Painting 1st coat | 12d | 2026-01-23 | 2026-02-03 | 2182, 2197 |  | Zenith | 8668104 |

| ID | WBS | Task | Duration | Start | Finish | Predecessors | Constraint | Calendar | Unique_Task_ID |
| --- | --- | --- | --- | --- | --- | --- | --- | --- | --- |
| 2199 | 36900.37000.37100.38100.39100.40900.41600.89800 | **5th floor roof** | 90.75d | 2025-10-03 | 2026-02-15 |  | start no earlier than 2025-10-03 | Zenith | 8649164 |
| 2200 | 36900.37000.37100.38100.39100.40900.41600.89800.1396000 | Block Work | 6d | 2025-10-03 | 2025-10-09 | 2100, 2184 |  | Zenith | 8668114 |
| 2201 | 36900.37000.37100.38100.39100.40900.41600.89800.1396100 | Fire sprinkler pipe fixing | 5d | 2025-10-09 | 2025-10-14 | 2185, 2200 |  | Zenith | 8668124 |
| 2202 | 36900.37000.37100.38100.39100.40900.41600.89800.1396200 | Internal Plumbing Works | 5d | 2025-10-09 | 2025-10-14 | 2186, 2200 |  | Zenith | 8668134 |
| 2203 | 36900.37000.37100.38100.39100.40900.41600.89800.1396300 | Waterproofing | 5d | 2025-10-14 | 2025-10-19 | 2187, 2202 |  | Zenith | 8668144 |
| 2204 | 36900.37000.37100.38100.39100.40900.41600.89800.1396400 | Internal Plaster | 9d | 2025-10-15 | 2025-10-24 | 2188, 2202, 2203FF+5d |  | Zenith | 8668154 |
| 2205 | 36900.37000.37100.38100.39100.40900.41600.89800.1396500 | IPS flooring work | 7d | 2025-10-24 | 2025-10-31 | 2189, 2204 |  | Zenith | 8668164 |
| 2206 | 36900.37000.37100.38100.39100.40900.41600.89800.1396600 | Toilet dado work | 6d | 2025-10-24 | 2025-10-30 | 2190, 2203, 2204 |  | Zenith | 8668174 |
| 2207 | 36900.37000.37100.38100.39100.40900.41600.89800.1396700 | Toilet flooring work | 7d | 2025-10-30 | 2025-12-21 | 2191, 2206 |  | Zenith | 8668184 |
| 2208 | 36900.37000.37100.38100.39100.40900.41600.89800.1396800 | False Cieling panel fixing | 7d | 2025-12-21 | 2025-12-28 | 2192, 2207 |  | Zenith | 8668194 |
| 2209 | 36900.37000.37100.38100.39100.40900.41600.89800.1396900 | Living dinning flooring | 7d | 2025-12-21 | 2025-12-28 | 2193, 2207 |  | Zenith | 8668204 |
| 2210 | 36900.37000.37100.38100.39100.40900.41600.89800.1397000 | Putty primer coat | 8d | 2025-12-28 | 2026-01-05 | 2194, 2209 |  | Zenith | 8668214 |
| 2211 | 36900.37000.37100.38100.39100.40900.41600.89800.1397100 | Aluminium door-window fixing | 12d | 2026-01-09 | 2026-01-20 | 2195, 2205, 2209 |  | Zenith | 8668224 |
| 2212 | 36900.37000.37100.38100.39100.40900.41600.89800.1397200 | Door shutter fixing (Pre Hung) | 8d | 2026-01-05 | 2026-01-13 | 2196, 2210 |  | Zenith | 8668234 |
| 2213 | 36900.37000.37100.38100.39100.40900.41600.89800.1397300 | Electrical wiring work | 10d | 2026-01-17 | 2026-01-26 | 2197, 2212 |  | Zenith | 8668244 |
| 2214 | 36900.37000.37100.38100.39100.40900.41600.89800.1397400 | Painting 1st coat | 12d | 2026-02-04 | 2026-02-15 | 2198, 2213 |  | Zenith | 8668254 |
| 2215 | 36900.37000.37100.38100.39100.40900.41600.89900 | **6th floor roof** | 93.75d | 2025-10-12 | 2026-02-27 |  | start no earlier than 2025-10-12 | Zenith | 8649174 |
| 2216 | 36900.37000.37100.38100.39100.40900.41600.89900.1397500 | Block Work | 6d | 2025-10-12 | 2025-10-18 | 2101, 2200 |  | Zenith | 8668264 |
| 2217 | 36900.37000.37100.38100.39100.40900.41600.89900.1397600 | Fire sprinkler pipe fixing | 5d | 2025-10-18 | 2025-10-23 | 2201, 2216 |  | Zenith | 8668274 |
| 2218 | 36900.37000.37100.38100.39100.40900.41600.89900.1397700 | Internal Plumbing Works | 5d | 2025-10-18 | 2025-10-23 | 2202, 2216 |  | Zenith | 8668284 |
| 2219 | 36900.37000.37100.38100.39100.40900.41600.89900.1397800 | Waterproofing | 5d | 2025-10-23 | 2025-10-28 | 2203, 2218 |  | Zenith | 8668294 |
| 2220 | 36900.37000.37100.38100.39100.40900.41600.89900.1397900 | Internal Plaster | 9d | 2025-10-24 | 2025-12-17 | 2204, 2218, 2219FF+5d |  | Zenith | 8668304 |
| 2221 | 36900.37000.37100.38100.39100.40900.41600.89900.1398000 | IPS flooring work | 7d | 2025-12-17 | 2025-12-24 | 2205, 2220 |  | Zenith | 8668314 |
| 2222 | 36900.37000.37100.38100.39100.40900.41600.89900.1398100 | Toilet dado work | 6d | 2025-12-17 | 2025-12-23 | 2206, 2219, 2220 |  | Zenith | 8668324 |
| 2223 | 36900.37000.37100.38100.39100.40900.41600.89900.1398200 | Toilet flooring work | 7d | 2025-12-23 | 2025-12-30 | 2207, 2222 |  | Zenith | 8668334 |
| 2224 | 36900.37000.37100.38100.39100.40900.41600.89900.1398300 | False Cieling panel fixing | 7d | 2025-12-30 | 2026-01-06 | 2208, 2223 |  | Zenith | 8668344 |
| 2225 | 36900.37000.37100.38100.39100.40900.41600.89900.1398400 | Living dinning flooring | 7d | 2025-12-30 | 2026-01-06 | 2209, 2223 |  | Zenith | 8668354 |
| 2226 | 36900.37000.37100.38100.39100.40900.41600.89900.1398500 | Putty primer coat | 8d | 2026-01-06 | 2026-01-14 | 2210, 2225 |  | Zenith | 8668364 |
| 2227 | 36900.37000.37100.38100.39100.40900.41600.89900.1398600 | Aluminium door-window fixing | 12d | 2026-01-21 | 2026-02-01 | 2211, 2221, 2225 |  | Zenith | 8668374 |
| 2228 | 36900.37000.37100.38100.39100.40900.41600.89900.1398700 | Door shutter fixing (Pre Hung) | 8d | 2026-01-14 | 2026-01-22 | 2212, 2226 |  | Zenith | 8668384 |
| 2229 | 36900.37000.37100.38100.39100.40900.41600.89900.1398800 | Electrical wiring work | 10d | 2026-01-27 | 2026-02-05 | 2213, 2228 |  | Zenith | 8668394 |
| 2230 | 36900.37000.37100.38100.39100.40900.41600.89900.1398900 | Painting 1st coat | 12d | 2026-02-16 | 2026-02-27 | 2214, 2229 |  | Zenith | 8668404 |

| ID | WBS | Task | Duration | Start | Finish | Predecessors | Constraint | Calendar | Unique_Task_ID |
| --- | --- | --- | --- | --- | --- | --- | --- | --- | --- |
| 2231 | 36900.37000.37100.38100.39100.40900.41600.90000 | **7th floor roof** | 96.75d | 2025-10-21 | 2026-03-11 |  | start no earlier than 2025-10-21 | Zenith | 8649184 |
| 2232 | 36900.37000.37100.38100.39100.40900.41600.90000.1399000 | Block Work | 6d | 2025-10-21 | 2025-10-27 | 2102, 2216 |  | Zenith | 8668414 |
| 2233 | 36900.37000.37100.38100.39100.40900.41600.90000.1399100 | Fire sprinkler pipe fixing | 5d | 2025-10-27 | 2025-12-16 | 2217, 2232 |  | Zenith | 8668424 |
| 2234 | 36900.37000.37100.38100.39100.40900.41600.90000.1399200 | Internal Plumbing Works | 5d | 2025-10-27 | 2025-12-16 | 2218, 2232 |  | Zenith | 8668434 |
| 2235 | 36900.37000.37100.38100.39100.40900.41600.90000.1399300 | Waterproofing | 5d | 2025-12-16 | 2025-12-21 | 2219, 2234 |  | Zenith | 8668444 |
| 2236 | 36900.37000.37100.38100.39100.40900.41600.90000.1399400 | Internal Plaster | 9d | 2025-12-17 | 2025-12-26 | 2220, 2234, 2235FF+5d |  | Zenith | 8668454 |
| 2237 | 36900.37000.37100.38100.39100.40900.41600.90000.1399500 | IPS flooring work | 7d | 2025-12-26 | 2026-01-02 | 2221, 2236 |  | Zenith | 8668464 |
| 2238 | 36900.37000.37100.38100.39100.40900.41600.90000.1399600 | Toilet dado work | 6d | 2025-12-26 | 2026-01-01 | 2222, 2235, 2236 |  | Zenith | 8668474 |
| 2239 | 36900.37000.37100.38100.39100.40900.41600.90000.1399700 | Toilet flooring work | 7d | 2026-01-01 | 2026-01-08 | 2223, 2238 |  | Zenith | 8668484 |
| 2240 | 36900.37000.37100.38100.39100.40900.41600.90000.1399800 | False Cieling panel fixing | 7d | 2026-01-08 | 2026-01-15 | 2224, 2239 |  | Zenith | 8668494 |
| 2241 | 36900.37000.37100.38100.39100.40900.41600.90000.1399900 | Living dinning flooring | 7d | 2026-01-08 | 2026-01-15 | 2225, 2239 |  | Zenith | 8668504 |
| 2242 | 36900.37000.37100.38100.39100.40900.41600.90000.1400000 | Putty primer coat | 8d | 2026-01-15 | 2026-01-23 | 2226, 2241 |  | Zenith | 8668514 |
| 2243 | 36900.37000.37100.38100.39100.40900.41600.90000.1400100 | Aluminium door-window fixing | 12d | 2026-02-02 | 2026-02-13 | 2227, 2237, 2241 |  | Zenith | 8668524 |
| 2244 | 36900.37000.37100.38100.39100.40900.41600.90000.1400200 | Door shutter fixing (Pre Hung) | 8d | 2026-01-23 | 2026-01-31 | 2228, 2242 |  | Zenith | 8668534 |
| 2245 | 36900.37000.37100.38100.39100.40900.41600.90000.1400300 | Electrical wiring work | 10d | 2026-02-06 | 2026-02-15 | 2229, 2244 |  | Zenith | 8668544 |
| 2246 | 36900.37000.37100.38100.39100.40900.41600.90000.1400400 | Painting 1st coat | 12d | 2026-02-28 | 2026-03-11 | 2230, 2245 |  | Zenith | 8668554 |
| 2247 | 36900.37000.37100.38100.39100.40900.41600.90100 | **8th floor roof** | 99.75d | 2025-10-30 | 2026-03-23 |  | start no earlier than 2025-10-30 | Zenith | 8649194 |
| 2248 | 36900.37000.37100.38100.39100.40900.41600.90100.1400500 | Block Work | 6d | 2025-10-30 | 2025-12-20 | 2103, 2232 |  | Zenith | 8668564 |
| 2249 | 36900.37000.37100.38100.39100.40900.41600.90100.1400600 | Fire sprinkler pipe fixing | 5d | 2025-12-20 | 2025-12-25 | 2233, 2248 |  | Zenith | 8668574 |
| 2250 | 36900.37000.37100.38100.39100.40900.41600.90100.1400700 | Internal Plumbing Works | 5d | 2025-12-20 | 2025-12-25 | 2234, 2248 |  | Zenith | 8668584 |
| 2251 | 36900.37000.37100.38100.39100.40900.41600.90100.1400800 | Waterproofing | 5d | 2025-12-25 | 2025-12-30 | 2235, 2250 |  | Zenith | 8668594 |
| 2252 | 36900.37000.37100.38100.39100.40900.41600.90100.1400900 | Internal Plaster | 9d | 2025-12-26 | 2026-01-04 | 2236, 2250, 2251FF+5d |  | Zenith | 8668604 |
| 2253 | 36900.37000.37100.38100.39100.40900.41600.90100.1401000 | IPS flooring work | 7d | 2026-01-04 | 2026-01-11 | 2237, 2252 |  | Zenith | 8668614 |
| 2254 | 36900.37000.37100.38100.39100.40900.41600.90100.1401100 | Toilet dado work | 6d | 2026-01-04 | 2026-01-10 | 2238, 2251, 2252 |  | Zenith | 8668624 |
| 2255 | 36900.37000.37100.38100.39100.40900.41600.90100.1401200 | Toilet flooring work | 7d | 2026-01-10 | 2026-01-17 | 2239, 2254 |  | Zenith | 8668634 |
| 2256 | 36900.37000.37100.38100.39100.40900.41600.90100.1401300 | False Cieling panel fixing | 7d | 2026-01-17 | 2026-01-24 | 2240, 2255 |  | Zenith | 8668644 |
| 2257 | 36900.37000.37100.38100.39100.40900.41600.90100.1401400 | Living dinning flooring | 7d | 2026-01-17 | 2026-01-24 | 2241, 2255 |  | Zenith | 8668654 |
| 2258 | 36900.37000.37100.38100.39100.40900.41600.90100.1401500 | Putty primer coat | 8d | 2026-01-24 | 2026-02-01 | 2242, 2257 |  | Zenith | 8668664 |
| 2259 | 36900.37000.37100.38100.39100.40900.41600.90100.1401600 | Aluminium door-window fixing | 12d | 2026-02-14 | 2026-02-25 | 2243, 2253, 2257 |  | Zenith | 8668674 |
| 2260 | 36900.37000.37100.38100.39100.40900.41600.90100.1401700 | Door shutter fixing (Pre Hung) | 8d | 2026-02-01 | 2026-02-09 | 2244, 2258 |  | Zenith | 8668684 |
| 2261 | 36900.37000.37100.38100.39100.40900.41600.90100.1401800 | Electrical wiring work | 10d | 2026-02-16 | 2026-02-25 | 2245, 2260 |  | Zenith | 8668694 |
| 2262 | 36900.37000.37100.38100.39100.40900.41600.90100.1401900 | Painting 1st coat | 12d | 2026-03-12 | 2026-03-23 | 2246, 2261 |  | Zenith | 8668704 |

| ID | WBS | Task | Duration | Start | Finish | Predecessors | Constraint | Calendar | Unique_Task_ID |
| --- | --- | --- | --- | --- | --- | --- | --- | --- | --- |
| 2263 | 36900.37000.37100.38100.39100.40900.41600.90200 | **9th floor roof** | 102.75d | 2025-12-23 | 2026-04-04 |  | start no earlier than 2025-12-23 | Zenith | 8649204 |
| 2264 | 36900.37000.37100.38100.39100.40900.41600.90200.1402000 | Block Work | 6d | 2025-12-23 | 2025-12-29 | 2104, 2248 |  | Zenith | 8668714 |
| 2265 | 36900.37000.37100.38100.39100.40900.41600.90200.1402100 | Fire sprinkler pipe fixing | 5d | 2025-12-29 | 2026-01-03 | 2249, 2264 |  | Zenith | 8668724 |
| 2266 | 36900.37000.37100.38100.39100.40900.41600.90200.1402200 | Internal Plumbing Works | 5d | 2025-12-29 | 2026-01-03 | 2250, 2264 |  | Zenith | 8668734 |
| 2267 | 36900.37000.37100.38100.39100.40900.41600.90200.1402300 | Waterproofing | 5d | 2026-01-03 | 2026-01-08 | 2251, 2266 |  | Zenith | 8668744 |
| 2268 | 36900.37000.37100.38100.39100.40900.41600.90200.1402400 | Internal Plaster | 9d | 2026-01-04 | 2026-01-13 | 2252, 2266, 2267FF+5d |  | Zenith | 8668754 |
| 2269 | 36900.37000.37100.38100.39100.40900.41600.90200.1402500 | IPS flooring work | 7d | 2026-01-13 | 2026-01-20 | 2253, 2268 |  | Zenith | 8668764 |
| 2270 | 36900.37000.37100.38100.39100.40900.41600.90200.1402600 | Toilet dado work | 6d | 2026-01-13 | 2026-01-19 | 2254, 2267, 2268 |  | Zenith | 8668774 |
| 2271 | 36900.37000.37100.38100.39100.40900.41600.90200.1402700 | Toilet flooring work | 7d | 2026-01-19 | 2026-01-26 | 2255, 2270 |  | Zenith | 8668784 |
| 2272 | 36900.37000.37100.38100.39100.40900.41600.90200.1402800 | False Cieling panel fixing | 7d | 2026-01-26 | 2026-02-02 | 2256, 2271 |  | Zenith | 8668794 |
| 2273 | 36900.37000.37100.38100.39100.40900.41600.90200.1402900 | Living dinning flooring | 7d | 2026-01-26 | 2026-02-02 | 2257, 2271 |  | Zenith | 8668804 |
| 2274 | 36900.37000.37100.38100.39100.40900.41600.90200.1403000 | Putty primer coat | 8d | 2026-02-02 | 2026-02-10 | 2258, 2273 |  | Zenith | 8668814 |
| 2275 | 36900.37000.37100.38100.39100.40900.41600.90200.1403100 | Aluminium door-window fixing | 12d | 2026-02-26 | 2026-03-09 | 2259, 2269, 2273 |  | Zenith | 8668824 |
| 2276 | 36900.37000.37100.38100.39100.40900.41600.90200.1403200 | Door shutter fixing (Pre Hung) | 8d | 2026-02-10 | 2026-02-18 | 2260, 2274 |  | Zenith | 8668834 |
| 2277 | 36900.37000.37100.38100.39100.40900.41600.90200.1403300 | Electrical wiring work | 10d | 2026-02-26 | 2026-03-07 | 2261, 2276 |  | Zenith | 8668844 |
| 2278 | 36900.37000.37100.38100.39100.40900.41600.90200.1403400 | Painting 1st coat | 12d | 2026-03-24 | 2026-04-04 | 2262, 2277 |  | Zenith | 8668854 |
| 2279 | 36900.37000.37100.38100.39100.40900.41600.90300 | **10th floor roof** | 105.75d | 2026-01-01 | 2026-04-16 |  | start no earlier than 2026-01-01 | Zenith | 8649214 |
| 2280 | 36900.37000.37100.38100.39100.40900.41600.90300.1403500 | Block Work | 6d | 2026-01-01 | 2026-01-07 | 2105, 2264 |  | Zenith | 8668864 |
| 2281 | 36900.37000.37100.38100.39100.40900.41600.90300.1403600 | Fire sprinkler pipe fixing | 5d | 2026-01-07 | 2026-01-12 | 2265, 2280 |  | Zenith | 8668874 |
| 2282 | 36900.37000.37100.38100.39100.40900.41600.90300.1403700 | Internal Plumbing Works | 5d | 2026-01-07 | 2026-01-12 | 2266, 2280 |  | Zenith | 8668884 |
| 2283 | 36900.37000.37100.38100.39100.40900.41600.90300.1403800 | Waterproofing | 5d | 2026-01-12 | 2026-01-17 | 2267, 2282 |  | Zenith | 8668894 |
| 2284 | 36900.37000.37100.38100.39100.40900.41600.90300.1403900 | Internal Plaster | 9d | 2026-01-13 | 2026-01-22 | 2268, 2282, 2283FF+5d |  | Zenith | 8668904 |
| 2285 | 36900.37000.37100.38100.39100.40900.41600.90300.1404000 | IPS flooring work | 7d | 2026-01-22 | 2026-01-29 | 2269, 2284 |  | Zenith | 8668914 |
| 2286 | 36900.37000.37100.38100.39100.40900.41600.90300.1404100 | Toilet dado work | 6d | 2026-01-22 | 2026-01-28 | 2270, 2283, 2284 |  | Zenith | 8668924 |
| 2287 | 36900.37000.37100.38100.39100.40900.41600.90300.1404200 | Toilet flooring work | 7d | 2026-01-28 | 2026-02-04 | 2271, 2286 |  | Zenith | 8668934 |
| 2288 | 36900.37000.37100.38100.39100.40900.41600.90300.1404300 | False Cieling panel fixing | 7d | 2026-02-04 | 2026-02-11 | 2272, 2287 |  | Zenith | 8668944 |
| 2289 | 36900.37000.37100.38100.39100.40900.41600.90300.1404400 | Living dinning flooring | 7d | 2026-02-04 | 2026-02-11 | 2273, 2287 |  | Zenith | 8668954 |
| 2290 | 36900.37000.37100.38100.39100.40900.41600.90300.1404500 | Putty primer coat | 8d | 2026-02-11 | 2026-02-19 | 2274, 2289 |  | Zenith | 8668964 |
| 2291 | 36900.37000.37100.38100.39100.40900.41600.90300.1404600 | Aluminium door-window fixing | 12d | 2026-03-10 | 2026-03-21 | 2275, 2285, 2289 |  | Zenith | 8668974 |
| 2292 | 36900.37000.37100.38100.39100.40900.41600.90300.1404700 | Door shutter fixing (Pre Hung) | 8d | 2026-02-19 | 2026-02-27 | 2276, 2290 |  | Zenith | 8668984 |
| 2293 | 36900.37000.37100.38100.39100.40900.41600.90300.1404800 | Electrical wiring work | 10d | 2026-03-08 | 2026-03-17 | 2277, 2292 |  | Zenith | 8668994 |
| 2294 | 36900.37000.37100.38100.39100.40900.41600.90300.1404900 | Painting 1st coat | 12d | 2026-04-05 | 2026-04-16 | 2278, 2293 |  | Zenith | 8669004 |

| ID | WBS | Task | Duration | Start | Finish | Predecessors | Constraint | Calendar | Unique_Task_ID |
| --- | --- | --- | --- | --- | --- | --- | --- | --- | --- |
| 2295 | 36900.37000.37100.38100.39100.40900.41600.90400 | **11th floor roof** | 108.75d | 2026-01-10 | 2026-04-28 |  | start no earlier than 2026-01-10 | Zenith | 8649224 |
| 2296 | 36900.37000.37100.38100.39100.40900.41600.90400.1405000 | Block Work | 6d | 2026-01-10 | 2026-01-16 | 2106, 2280 |  | Zenith | 8669014 |
| 2297 | 36900.37000.37100.38100.39100.40900.41600.90400.1405100 | Fire sprinkler pipe fixing | 5d | 2026-01-16 | 2026-01-21 | 2281, 2296 |  | Zenith | 8669024 |
| 2298 | 36900.37000.37100.38100.39100.40900.41600.90400.1405200 | Internal Plumbing Works | 5d | 2026-01-16 | 2026-01-21 | 2282, 2296 |  | Zenith | 8669034 |
| 2299 | 36900.37000.37100.38100.39100.40900.41600.90400.1405300 | Waterproofing | 5d | 2026-01-21 | 2026-01-26 | 2283, 2298 |  | Zenith | 8669044 |
| 2300 | 36900.37000.37100.38100.39100.40900.41600.90400.1405400 | Internal Plaster | 9d | 2026-01-22 | 2026-01-31 | 2284, 2298, 2299FF+5d |  | Zenith | 8669054 |
| 2301 | 36900.37000.37100.38100.39100.40900.41600.90400.1405500 | IPS flooring work | 7d | 2026-01-31 | 2026-02-07 | 2285, 2300 |  | Zenith | 8669064 |
| 2302 | 36900.37000.37100.38100.39100.40900.41600.90400.1405600 | Toilet dado work | 6d | 2026-01-31 | 2026-02-06 | 2286, 2299, 2300 |  | Zenith | 8669074 |
| 2303 | 36900.37000.37100.38100.39100.40900.41600.90400.1405700 | Toilet flooring work | 7d | 2026-02-06 | 2026-02-13 | 2287, 2302 |  | Zenith | 8669084 |
| 2304 | 36900.37000.37100.38100.39100.40900.41600.90400.1405800 | False Cieling panel fixing | 7d | 2026-02-13 | 2026-02-20 | 2288, 2303 |  | Zenith | 8669094 |
| 2305 | 36900.37000.37100.38100.39100.40900.41600.90400.1405900 | Living dinning flooring | 7d | 2026-02-13 | 2026-02-20 | 2289, 2303 |  | Zenith | 8669104 |
| 2306 | 36900.37000.37100.38100.39100.40900.41600.90400.1406000 | Putty primer coat | 8d | 2026-02-20 | 2026-02-28 | 2290, 2305 |  | Zenith | 8669114 |
| 2307 | 36900.37000.37100.38100.39100.40900.41600.90400.1406100 | Aluminium door-window fixing | 12d | 2026-03-22 | 2026-04-02 | 2291, 2301, 2305 |  | Zenith | 8669124 |
| 2308 | 36900.37000.37100.38100.39100.40900.41600.90400.1406200 | Door shutter fixing (Pre Hung) | 8d | 2026-02-28 | 2026-03-08 | 2292, 2306 |  | Zenith | 8669134 |
| 2309 | 36900.37000.37100.38100.39100.40900.41600.90400.1406300 | Electrical wiring work | 10d | 2026-03-18 | 2026-03-27 | 2293, 2308 |  | Zenith | 8669144 |
| 2310 | 36900.37000.37100.38100.39100.40900.41600.90400.1406400 | Painting 1st coat | 12d | 2026-04-17 | 2026-04-28 | 2294, 2309 |  | Zenith | 8669154 |
| 2311 | 36900.37000.37100.38100.39100.40900.41600.90500 | **12th floor roof** | 111.75d | 2026-01-19 | 2026-05-10 |  | start no earlier than 2026-01-19 | Zenith | 8649234 |
| 2312 | 36900.37000.37100.38100.39100.40900.41600.90500.1406500 | Block Work | 6d | 2026-01-19 | 2026-01-25 | 2107, 2296 |  | Zenith | 8669164 |
| 2313 | 36900.37000.37100.38100.39100.40900.41600.90500.1406600 | Fire sprinkler pipe fixing | 5d | 2026-01-25 | 2026-01-30 | 2297, 2312 |  | Zenith | 8669174 |
| 2314 | 36900.37000.37100.38100.39100.40900.41600.90500.1406700 | Internal Plumbing Works | 5d | 2026-01-25 | 2026-01-30 | 2298, 2312 |  | Zenith | 8669184 |
| 2315 | 36900.37000.37100.38100.39100.40900.41600.90500.1406800 | Waterproofing | 5d | 2026-01-30 | 2026-02-04 | 2299, 2314 |  | Zenith | 8669194 |
| 2316 | 36900.37000.37100.38100.39100.40900.41600.90500.1406900 | Internal Plaster | 9d | 2026-01-31 | 2026-02-09 | 2300, 2314, 2315FF+5d |  | Zenith | 8669204 |
| 2317 | 36900.37000.37100.38100.39100.40900.41600.90500.1407000 | IPS flooring work | 7d | 2026-02-09 | 2026-02-16 | 2301, 2316 |  | Zenith | 8669214 |
| 2318 | 36900.37000.37100.38100.39100.40900.41600.90500.1407100 | Toilet dado work | 6d | 2026-02-09 | 2026-02-15 | 2302, 2315, 2316 |  | Zenith | 8669224 |
| 2319 | 36900.37000.37100.38100.39100.40900.41600.90500.1407200 | Toilet flooring work | 7d | 2026-02-15 | 2026-02-22 | 2303, 2318 |  | Zenith | 8669234 |
| 2320 | 36900.37000.37100.38100.39100.40900.41600.90500.1407300 | False Cieling panel fixing | 7d | 2026-02-22 | 2026-03-01 | 2304, 2319 |  | Zenith | 8669244 |
| 2321 | 36900.37000.37100.38100.39100.40900.41600.90500.1407400 | Living dinning flooring | 7d | 2026-02-22 | 2026-03-01 | 2305, 2319 |  | Zenith | 8669254 |
| 2322 | 36900.37000.37100.38100.39100.40900.41600.90500.1407500 | Putty primer coat | 8d | 2026-03-01 | 2026-03-09 | 2306, 2321 |  | Zenith | 8669264 |
| 2323 | 36900.37000.37100.38100.39100.40900.41600.90500.1407600 | Aluminium door-window fixing | 12d | 2026-04-03 | 2026-04-14 | 2307, 2317, 2321 |  | Zenith | 8669274 |
| 2324 | 36900.37000.37100.38100.39100.40900.41600.90500.1407700 | Door shutter fixing (Pre Hung) | 8d | 2026-03-09 | 2026-03-17 | 2308, 2322 |  | Zenith | 8669284 |
| 2325 | 36900.37000.37100.38100.39100.40900.41600.90500.1407800 | Electrical wiring work | 10d | 2026-03-28 | 2026-04-06 | 2309, 2324 |  | Zenith | 8669294 |
| 2326 | 36900.37000.37100.38100.39100.40900.41600.90500.1407900 | Painting 1st coat | 12d | 2026-04-29 | 2026-05-10 | 2310, 2325 |  | Zenith | 8669304 |

| ID | WBS | Task | Duration | Start | Finish | Predecessors | Constraint | Calendar | Unique_Task_ID |
| --- | --- | --- | --- | --- | --- | --- | --- | --- | --- |
| 2327 | 36900.37000.37100.38100.39100.40900.41600.90600 | **13th floor roof** | 114.75d | 2026-01-28 | 2026-05-22 |  | start no earlier than 2026-01-28 | Zenith | 8649244 |
| 2328 | 36900.37000.37100.38100.39100.40900.41600.90600.1408000 | Block Work | 6d | 2026-01-28 | 2026-02-03 | 2108, 2312 |  | Zenith | 8669314 |
| 2329 | 36900.37000.37100.38100.39100.40900.41600.90600.1408100 | Fire sprinkler pipe fixing | 5d | 2026-02-03 | 2026-02-08 | 2313, 2328 |  | Zenith | 8669324 |
| 2330 | 36900.37000.37100.38100.39100.40900.41600.90600.1408200 | Internal Plumbing Works | 5d | 2026-02-03 | 2026-02-08 | 2314, 2328 |  | Zenith | 8669334 |
| 2331 | 36900.37000.37100.38100.39100.40900.41600.90600.1408300 | Waterproofing | 5d | 2026-02-08 | 2026-02-13 | 2315, 2330 |  | Zenith | 8669344 |
| 2332 | 36900.37000.37100.38100.39100.40900.41600.90600.1408400 | Internal Plaster | 9d | 2026-02-09 | 2026-02-18 | 2316, 2330, 2331FF+5d |  | Zenith | 8669354 |
| 2333 | 36900.37000.37100.38100.39100.40900.41600.90600.1408500 | IPS flooring work | 7d | 2026-02-18 | 2026-02-25 | 2317, 2332 |  | Zenith | 8669364 |
| 2334 | 36900.37000.37100.38100.39100.40900.41600.90600.1408600 | Toilet dado work | 6d | 2026-02-18 | 2026-02-24 | 2318, 2331, 2332 |  | Zenith | 8669374 |
| 2335 | 36900.37000.37100.38100.39100.40900.41600.90600.1408700 | Toilet flooring work | 7d | 2026-02-24 | 2026-03-03 | 2319, 2334 |  | Zenith | 8669384 |
| 2336 | 36900.37000.37100.38100.39100.40900.41600.90600.1408800 | False Cieling panel fixing | 7d | 2026-03-03 | 2026-03-10 | 2320, 2335 |  | Zenith | 8669394 |
| 2337 | 36900.37000.37100.38100.39100.40900.41600.90600.1408900 | Living dinning flooring | 7d | 2026-03-03 | 2026-03-10 | 2321, 2335 |  | Zenith | 8669404 |
| 2338 | 36900.37000.37100.38100.39100.40900.41600.90600.1409000 | Putty primer coat | 8d | 2026-03-10 | 2026-03-18 | 2322, 2337 |  | Zenith | 8669414 |
| 2339 | 36900.37000.37100.38100.39100.40900.41600.90600.1409100 | Aluminium door-window fixing | 12d | 2026-04-15 | 2026-04-26 | 2323, 2333, 2337 |  | Zenith | 8669424 |
| 2340 | 36900.37000.37100.38100.39100.40900.41600.90600.1409200 | Door shutter fixing (Pre Hung) | 8d | 2026-03-18 | 2026-03-26 | 2324, 2338 |  | Zenith | 8669434 |
| 2341 | 36900.37000.37100.38100.39100.40900.41600.90600.1409300 | Electrical wiring work | 10d | 2026-04-07 | 2026-04-16 | 2325, 2340 |  | Zenith | 8669444 |
| 2342 | 36900.37000.37100.38100.39100.40900.41600.90600.1409400 | Painting 1st coat | 12d | 2026-05-11 | 2026-05-22 | 2326, 2341 |  | Zenith | 8669454 |
| 2343 | 36900.37000.37100.38100.39100.40900.41600.90700 | **14th floor roof** | 117.75d | 2026-02-06 | 2026-06-03 |  | start no earlier than 2026-02-06 | Zenith | 8649254 |
| 2344 | 36900.37000.37100.38100.39100.40900.41600.90700.1409500 | Block Work | 6d | 2026-02-06 | 2026-02-12 | 2109, 2328 |  | Zenith | 8669464 |
| 2345 | 36900.37000.37100.38100.39100.40900.41600.90700.1409600 | Fire sprinkler pipe fixing | 5d | 2026-02-12 | 2026-02-17 | 2329, 2344 |  | Zenith | 8669474 |
| 2346 | 36900.37000.37100.38100.39100.40900.41600.90700.1409700 | Internal Plumbing Works | 5d | 2026-02-12 | 2026-02-17 | 2330, 2344 |  | Zenith | 8669484 |
| 2347 | 36900.37000.37100.38100.39100.40900.41600.90700.1409800 | Waterproofing | 5d | 2026-02-17 | 2026-02-22 | 2331, 2346 |  | Zenith | 8669494 |
| 2348 | 36900.37000.37100.38100.39100.40900.41600.90700.1409900 | Internal Plaster | 9d | 2026-02-18 | 2026-02-27 | 2332, 2346, 2347FF+5d |  | Zenith | 8669504 |
| 2349 | 36900.37000.37100.38100.39100.40900.41600.90700.1410000 | IPS flooring work | 7d | 2026-02-27 | 2026-03-06 | 2333, 2348 |  | Zenith | 8669514 |
| 2350 | 36900.37000.37100.38100.39100.40900.41600.90700.1410100 | Toilet dado work | 6d | 2026-02-27 | 2026-03-05 | 2334, 2347, 2348 |  | Zenith | 8669524 |
| 2351 | 36900.37000.37100.38100.39100.40900.41600.90700.1410200 | Toilet flooring work | 7d | 2026-03-05 | 2026-03-12 | 2335, 2350 |  | Zenith | 8669534 |
| 2352 | 36900.37000.37100.38100.39100.40900.41600.90700.1410300 | False Cieling panel fixing | 7d | 2026-03-12 | 2026-03-19 | 2336, 2351 |  | Zenith | 8669544 |
| 2353 | 36900.37000.37100.38100.39100.40900.41600.90700.1410400 | Living dinning flooring | 7d | 2026-03-12 | 2026-03-19 | 2337, 2351 |  | Zenith | 8669554 |
| 2354 | 36900.37000.37100.38100.39100.40900.41600.90700.1410500 | Putty primer coat | 8d | 2026-03-19 | 2026-03-27 | 2338, 2353 |  | Zenith | 8669564 |
| 2355 | 36900.37000.37100.38100.39100.40900.41600.90700.1410600 | Aluminium door-window fixing | 12d | 2026-04-27 | 2026-05-08 | 2339, 2349, 2353 |  | Zenith | 8669574 |
| 2356 | 36900.37000.37100.38100.39100.40900.41600.90700.1410700 | Door shutter fixing (Pre Hung) | 8d | 2026-03-27 | 2026-04-04 | 2340, 2354 |  | Zenith | 8669584 |
| 2357 | 36900.37000.37100.38100.39100.40900.41600.90700.1410800 | Electrical wiring work | 10d | 2026-04-17 | 2026-04-26 | 2341, 2356 |  | Zenith | 8669594 |
| 2358 | 36900.37000.37100.38100.39100.40900.41600.90700.1410900 | Painting 1st coat | 12d | 2026-05-23 | 2026-06-03 | 2342, 2357 |  | Zenith | 8669604 |

| ID | WBS | Task | Duration | Start | Finish | Predecessors | Constraint | Calendar | Unique_Task_ID |
| --- | --- | --- | --- | --- | --- | --- | --- | --- | --- |
| 2359 | 36900.37000.37100.38100.39100.40900.41600.90800 | **15th floor roof** | 121.75d | 2026-02-14 | 2026-06-15 |  | start no earlier than 2026-02-14 | Zenith | 8649264 |
| 2360 | 36900.37000.37100.38100.39100.40900.41600.90800.1411000 | Block Work | 6d | 2026-02-14 | 2026-02-20 | 2110, 2344 |  | Zenith | 8669614 |
| 2361 | 36900.37000.37100.38100.39100.40900.41600.90800.1411100 | Fire sprinkler pipe fixing | 5d | 2026-02-20 | 2026-02-25 | 2345, 2360 |  | Zenith | 8669624 |
| 2362 | 36900.37000.37100.38100.39100.40900.41600.90800.1411200 | Internal Plumbing Works | 5d | 2026-02-20 | 2026-02-25 | 2346, 2360 |  | Zenith | 8669634 |
| 2363 | 36900.37000.37100.38100.39100.40900.41600.90800.1411300 | Waterproofing | 5d | 2026-02-25 | 2026-03-02 | 2347, 2362 |  | Zenith | 8669644 |
| 2364 | 36900.37000.37100.38100.39100.40900.41600.90800.1411400 | Internal Plaster | 9d | 2026-02-27 | 2026-03-08 | 2348, 2362, 2363FF+5d |  | Zenith | 8669654 |
| 2365 | 36900.37000.37100.38100.39100.40900.41600.90800.1411500 | IPS flooring work | 7d | 2026-03-08 | 2026-03-15 | 2349, 2364 |  | Zenith | 8669664 |
| 2366 | 36900.37000.37100.38100.39100.40900.41600.90800.1411600 | Toilet dado work | 6d | 2026-03-08 | 2026-03-14 | 2350, 2363, 2364 |  | Zenith | 8669674 |
| 2367 | 36900.37000.37100.38100.39100.40900.41600.90800.1411700 | Toilet flooring work | 7d | 2026-03-14 | 2026-03-21 | 2351, 2366 |  | Zenith | 8669684 |
| 2368 | 36900.37000.37100.38100.39100.40900.41600.90800.1411800 | False Cieling panel fixing | 7d | 2026-03-21 | 2026-03-28 | 2352, 2367 |  | Zenith | 8669694 |
| 2369 | 36900.37000.37100.38100.39100.40900.41600.90800.1411900 | Living dinning flooring | 7d | 2026-03-21 | 2026-03-28 | 2353, 2367 |  | Zenith | 8669704 |
| 2370 | 36900.37000.37100.38100.39100.40900.41600.90800.1412000 | Aluminium door-window fixing | 8d | 2026-05-09 | 2026-05-16 | 2355, 2365, 2369 |  | Zenith | 8669714 |
| 2371 | 36900.37000.37100.38100.39100.40900.41600.90800.1412100 | Putty primer coat | 12d | 2026-03-28 | 2026-04-09 | 2354, 2369 |  | Zenith | 8669724 |
| 2372 | 36900.37000.37100.38100.39100.40900.41600.90800.1412200 | Door shutter fixing (Pre Hung) | 8d | 2026-04-09 | 2026-04-17 | 2356, 2371 |  | Zenith | 8669734 |
| 2373 | 36900.37000.37100.38100.39100.40900.41600.90800.1412300 | Electrical wiring work | 10d | 2026-04-27 | 2026-05-06 | 2357, 2372 |  | Zenith | 8669744 |
| 2374 | 36900.37000.37100.38100.39100.40900.41600.90800.1412400 | Painting 1st coat | 12d | 2026-06-04 | 2026-06-15 | 2358, 2373 |  | Zenith | 8669754 |
| 2375 | 36900.37000.37100.38100.39100.40900.41600.90900 | **16th floor roof** | 125.75d | 2026-02-22 | 2026-06-27 |  | start no earlier than 2026-02-22 | Zenith | 8649274 |
| 2376 | 36900.37000.37100.38100.39100.40900.41600.90900.1412500 | Block Work | 6d | 2026-02-22 | 2026-02-28 | 2111, 2360 |  | Zenith | 8669764 |
| 2377 | 36900.37000.37100.38100.39100.40900.41600.90900.1412600 | Fire sprinkler pipe fixing | 5d | 2026-02-28 | 2026-03-05 | 2361, 2376 |  | Zenith | 8669774 |
| 2378 | 36900.37000.37100.38100.39100.40900.41600.90900.1412700 | Internal Plumbing Works | 5d | 2026-02-28 | 2026-03-05 | 2362, 2376 |  | Zenith | 8669784 |
| 2379 | 36900.37000.37100.38100.39100.40900.41600.90900.1412800 | Waterproofing | 5d | 2026-03-05 | 2026-03-10 | 2363, 2378 |  | Zenith | 8669794 |
| 2380 | 36900.37000.37100.38100.39100.40900.41600.90900.1412900 | Internal Plaster | 9d | 2026-03-08 | 2026-03-17 | 2364, 2378, 2379FF+5d |  | Zenith | 8669804 |
| 2381 | 36900.37000.37100.38100.39100.40900.41600.90900.1413000 | IPS flooring work | 7d | 2026-03-17 | 2026-03-24 | 2365, 2380 |  | Zenith | 8669814 |
| 2382 | 36900.37000.37100.38100.39100.40900.41600.90900.1413100 | Toilet dado work | 6d | 2026-03-17 | 2026-03-23 | 2366, 2379, 2380 |  | Zenith | 8669824 |
| 2383 | 36900.37000.37100.38100.39100.40900.41600.90900.1413200 | Toilet flooring work | 7d | 2026-03-23 | 2026-03-30 | 2367, 2382 |  | Zenith | 8669834 |
| 2384 | 36900.37000.37100.38100.39100.40900.41600.90900.1413300 | False Cieling panel fixing | 7d | 2026-03-30 | 2026-04-06 | 2368, 2383 |  | Zenith | 8669844 |
| 2385 | 36900.37000.37100.38100.39100.40900.41600.90900.1413400 | Living dinning flooring | 7d | 2026-03-30 | 2026-04-06 | 2369, 2383 |  | Zenith | 8669854 |
| 2386 | 36900.37000.37100.38100.39100.40900.41600.90900.1413500 | Putty primer coat | 8d | 2026-04-09 | 2026-04-17 | 2371, 2385 |  | Zenith | 8669864 |
| 2387 | 36900.37000.37100.38100.39100.40900.41600.90900.1413600 | Aluminium door-window fixing | 12d | 2026-05-17 | 2026-05-28 | 2370, 2381, 2385 |  | Zenith | 8669874 |
| 2388 | 36900.37000.37100.38100.39100.40900.41600.90900.1413700 | Door shutter fixing (Pre Hung) | 8d | 2026-04-17 | 2026-04-25 | 2372, 2386 |  | Zenith | 8669884 |
| 2389 | 36900.37000.37100.38100.39100.40900.41600.90900.1413800 | Electrical wiring work | 10d | 2026-05-07 | 2026-05-16 | 2373, 2388 |  | Zenith | 8669894 |
| 2390 | 36900.37000.37100.38100.39100.40900.41600.90900.1413900 | Painting 1st coat | 12d | 2026-06-16 | 2026-06-27 | 2374, 2389 |  | Zenith | 8669904 |

| ID | WBS | Task | Duration | Start | Finish | Predecessors | Constraint | Calendar | Unique_Task_ID |
| --- | --- | --- | --- | --- | --- | --- | --- | --- | --- |
| 2391 | 36900.37000.37100.38100.39100.40900.41600.91000 | **17th floor roof** | 129.75d | 2026-03-02 | 2026-07-09 |  | start no earlier than 2026-03-02 | Zenith | 8649284 |
| 2392 | 36900.37000.37100.38100.39100.40900.41600.91000.1414000 | Block Work | 6d | 2026-03-02 | 2026-03-08 | 2112, 2376 |  | Zenith | 8669914 |
| 2393 | 36900.37000.37100.38100.39100.40900.41600.91000.1414100 | Fire sprinkler pipe fixing | 5d | 2026-03-08 | 2026-03-13 | 2377, 2392 |  | Zenith | 8669924 |
| 2394 | 36900.37000.37100.38100.39100.40900.41600.91000.1414200 | Internal Plumbing Works | 5d | 2026-03-08 | 2026-03-13 | 2378, 2392 |  | Zenith | 8669934 |
| 2395 | 36900.37000.37100.38100.39100.40900.41600.91000.1414300 | Waterproofing | 5d | 2026-03-13 | 2026-03-18 | 2379, 2394 |  | Zenith | 8669944 |
| 2396 | 36900.37000.37100.38100.39100.40900.41600.91000.1414400 | Internal Plaster | 9d | 2026-03-17 | 2026-03-26 | 2380, 2394, 2395FF+5d |  | Zenith | 8669954 |
| 2397 | 36900.37000.37100.38100.39100.40900.41600.91000.1414500 | IPS flooring work | 7d | 2026-03-26 | 2026-04-02 | 2381, 2396 |  | Zenith | 8669964 |
| 2398 | 36900.37000.37100.38100.39100.40900.41600.91000.1414600 | Toilet dado work | 6d | 2026-03-26 | 2026-04-01 | 2382, 2395, 2396 |  | Zenith | 8669974 |
| 2399 | 36900.37000.37100.38100.39100.40900.41600.91000.1414700 | Toilet flooring work | 7d | 2026-04-01 | 2026-04-08 | 2383, 2398 |  | Zenith | 8669984 |
| 2400 | 36900.37000.37100.38100.39100.40900.41600.91000.1414800 | False Cieling panel fixing | 7d | 2026-04-08 | 2026-04-15 | 2384, 2399 |  | Zenith | 8669994 |
| 2401 | 36900.37000.37100.38100.39100.40900.41600.91000.1414900 | Living dinning flooring | 7d | 2026-04-08 | 2026-04-15 | 2385, 2399 |  | Zenith | 8670004 |
| 2402 | 36900.37000.37100.38100.39100.40900.41600.91000.1415000 | Putty primer coat | 8d | 2026-04-17 | 2026-04-25 | 2386, 2401 |  | Zenith | 8670014 |
| 2403 | 36900.37000.37100.38100.39100.40900.41600.91000.1415100 | Aluminium door-window fixing | 12d | 2026-05-29 | 2026-06-09 | 2387, 2397, 2401 |  | Zenith | 8670024 |
| 2404 | 36900.37000.37100.38100.39100.40900.41600.91000.1415200 | Door shutter fixing (Pre Hung) | 8d | 2026-04-25 | 2026-05-03 | 2388, 2402 |  | Zenith | 8670034 |
| 2405 | 36900.37000.37100.38100.39100.40900.41600.91000.1415300 | Electrical wiring work | 10d | 2026-05-17 | 2026-05-26 | 2389, 2404 |  | Zenith | 8670044 |
| 2406 | 36900.37000.37100.38100.39100.40900.41600.91000.1415400 | Painting 1st coat | 12d | 2026-06-28 | 2026-07-09 | 2390, 2405 |  | Zenith | 8670054 |
| 2407 | 36900.37000.37100.38100.39100.40900.41600.91100 | **18th floor roof** | 133.75d | 2026-03-10 | 2026-07-21 |  | start no earlier than 2026-03-10 | Zenith | 8649294 |
| 2408 | 36900.37000.37100.38100.39100.40900.41600.91100.1415500 | Block Work | 6d | 2026-03-10 | 2026-03-16 | 2113, 2392 |  | Zenith | 8670064 |
| 2409 | 36900.37000.37100.38100.39100.40900.41600.91100.1415600 | Fire sprinkler pipe fixing | 5d | 2026-03-16 | 2026-03-21 | 2393, 2408 |  | Zenith | 8670074 |
| 2410 | 36900.37000.37100.38100.39100.40900.41600.91100.1415700 | Internal Plumbing Works | 5d | 2026-03-16 | 2026-03-21 | 2394, 2408 |  | Zenith | 8670084 |
| 2411 | 36900.37000.37100.38100.39100.40900.41600.91100.1415800 | Waterproofing | 5d | 2026-03-21 | 2026-03-26 | 2395, 2410 |  | Zenith | 8670094 |
| 2412 | 36900.37000.37100.38100.39100.40900.41600.91100.1415900 | Internal Plaster | 9d | 2026-03-26 | 2026-04-04 | 2396, 2410, 2411FF+5d |  | Zenith | 8670104 |
| 2413 | 36900.37000.37100.38100.39100.40900.41600.91100.1416000 | IPS flooring work | 7d | 2026-04-04 | 2026-04-11 | 2397, 2412 |  | Zenith | 8670114 |
| 2414 | 36900.37000.37100.38100.39100.40900.41600.91100.1416100 | Toilet dado work | 6d | 2026-04-04 | 2026-04-10 | 2398, 2411, 2412 |  | Zenith | 8670124 |
| 2415 | 36900.37000.37100.38100.39100.40900.41600.91100.1416200 | Toilet flooring work | 7d | 2026-04-10 | 2026-04-17 | 2399, 2414 |  | Zenith | 8670134 |
| 2416 | 36900.37000.37100.38100.39100.40900.41600.91100.1416300 | False Cieling panel fixing | 7d | 2026-04-17 | 2026-04-24 | 2400, 2415 |  | Zenith | 8670144 |
| 2417 | 36900.37000.37100.38100.39100.40900.41600.91100.1416400 | Living dinning flooring | 7d | 2026-04-17 | 2026-04-24 | 2401, 2415 |  | Zenith | 8670154 |
| 2418 | 36900.37000.37100.38100.39100.40900.41600.91100.1416500 | Putty primer coat | 8d | 2026-04-25 | 2026-05-03 | 2402, 2417 |  | Zenith | 8670164 |
| 2419 | 36900.37000.37100.38100.39100.40900.41600.91100.1416600 | Aluminium door-window fixing | 12d | 2026-06-10 | 2026-06-21 | 2403, 2413, 2417 |  | Zenith | 8670174 |
| 2420 | 36900.37000.37100.38100.39100.40900.41600.91100.1416700 | Door shutter fixing (Pre Hung) | 8d | 2026-05-03 | 2026-05-11 | 2404, 2418 |  | Zenith | 8670184 |
| 2421 | 36900.37000.37100.38100.39100.40900.41600.91100.1416800 | Electrical wiring work | 10d | 2026-05-27 | 2026-06-05 | 2405, 2420 |  | Zenith | 8670194 |
| 2422 | 36900.37000.37100.38100.39100.40900.41600.91100.1416900 | Painting 1st coat | 12d | 2026-07-10 | 2026-07-21 | 2406, 2421 |  | Zenith | 8670204 |

| ID | WBS | Task | Duration | Start | Finish | Predecessors | Constraint | Calendar | Unique_Task_ID |
| --- | --- | --- | --- | --- | --- | --- | --- | --- | --- |
| 2423 | 36900.37000.37100.38100.39100.40900.41600.91200 | **19th floor roof** | 137.75d | 2026-03-18 | 2026-08-02 |  | start no earlier than 2026-03-18 | Zenith | 8649304 |
| 2424 | 36900.37000.37100.38100.39100.40900.41600.91200.1417000 | Block Work | 6d | 2026-03-18 | 2026-03-24 | 2114, 2408 |  | Zenith | 8670214 |
| 2425 | 36900.37000.37100.38100.39100.40900.41600.91200.1417100 | Fire sprinkler pipe fixing | 4d | 2026-03-24 | 2026-03-28 | 2409, 2424 |  | Zenith | 8670224 |
| 2426 | 36900.37000.37100.38100.39100.40900.41600.91200.1417200 | Internal Plumbing Works | 4d | 2026-03-24 | 2026-03-28 | 2410, 2424 |  | Zenith | 8670234 |
| 2427 | 36900.37000.37100.38100.39100.40900.41600.91200.1417300 | Waterproofing | 4d | 2026-03-28 | 2026-04-01 | 2411, 2426 |  | Zenith | 8670244 |
| 2428 | 36900.37000.37100.38100.39100.40900.41600.91200.1417400 | Internal Plaster | 9d | 2026-04-04 | 2026-04-13 | 2412, 2426, 2427FF+5d |  | Zenith | 8670254 |
| 2429 | 36900.37000.37100.38100.39100.40900.41600.91200.1417500 | IPS flooring work | 7d | 2026-04-13 | 2026-04-20 | 2413, 2428 |  | Zenith | 8670264 |
| 2430 | 36900.37000.37100.38100.39100.40900.41600.91200.1417600 | Toilet dado work | 6d | 2026-04-13 | 2026-04-19 | 2414, 2427, 2428 |  | Zenith | 8670274 |
| 2431 | 36900.37000.37100.38100.39100.40900.41600.91200.1417700 | Toilet flooring work | 7d | 2026-04-19 | 2026-04-26 | 2415, 2430 |  | Zenith | 8670284 |
| 2432 | 36900.37000.37100.38100.39100.40900.41600.91200.1417800 | False Cieling panel fixing | 7d | 2026-04-26 | 2026-05-03 | 2416, 2431 |  | Zenith | 8670294 |
| 2433 | 36900.37000.37100.38100.39100.40900.41600.91200.1417900 | Living dinning flooring | 7d | 2026-04-26 | 2026-05-03 | 2417, 2431 |  | Zenith | 8670304 |
| 2434 | 36900.37000.37100.38100.39100.40900.41600.91200.1418000 | Putty primer coat | 8d | 2026-05-03 | 2026-05-11 | 2418, 2433 |  | Zenith | 8670314 |
| 2435 | 36900.37000.37100.38100.39100.40900.41600.91200.1418100 | Aluminium door-window fixing | 12d | 2026-06-22 | 2026-07-03 | 2419, 2429, 2433 |  | Zenith | 8670324 |
| 2436 | 36900.37000.37100.38100.39100.40900.41600.91200.1418200 | Door shutter fixing (Pre Hung) | 8d | 2026-05-11 | 2026-05-19 | 2420, 2434 |  | Zenith | 8670334 |
| 2437 | 36900.37000.37100.38100.39100.40900.41600.91200.1418300 | Electrical wiring work | 10d | 2026-06-06 | 2026-06-15 | 2421, 2436 |  | Zenith | 8670344 |
| 2438 | 36900.37000.37100.38100.39100.40900.41600.91200.1418400 | Painting 1st coat | 12d | 2026-07-22 | 2026-08-02 | 2422, 2437 |  | Zenith | 8670354 |
| 2439 | 36900.37000.37100.38100.39100.40900.41600.91300 | **20th floor roof** | 141.75d | 2026-03-26 | 2026-08-14 |  | start no earlier than 2026-03-26 | Zenith | 8649314 |
| 2440 | 36900.37000.37100.38100.39100.40900.41600.91300.1418500 | Block Work | 6d | 2026-03-26 | 2026-04-01 | 2115, 2424 |  | Zenith | 8670364 |
| 2441 | 36900.37000.37100.38100.39100.40900.41600.91300.1418600 | Fire sprinkler pipe fixing | 4d | 2026-04-01 | 2026-04-05 | 2425, 2440 |  | Zenith | 8670374 |
| 2442 | 36900.37000.37100.38100.39100.40900.41600.91300.1418700 | Internal Plumbing Works | 4d | 2026-04-01 | 2026-04-05 | 2426, 2440 |  | Zenith | 8670384 |
| 2443 | 36900.37000.37100.38100.39100.40900.41600.91300.1418800 | Waterproofing | 4d | 2026-04-05 | 2026-04-09 | 2427, 2442 |  | Zenith | 8670394 |
| 2444 | 36900.37000.37100.38100.39100.40900.41600.91300.1418900 | Internal Plaster | 9d | 2026-04-13 | 2026-04-22 | 2428, 2442, 2443FF+5d |  | Zenith | 8670404 |
| 2445 | 36900.37000.37100.38100.39100.40900.41600.91300.1419000 | IPS flooring work | 7d | 2026-04-22 | 2026-04-29 | 2429, 2444 |  | Zenith | 8670414 |
| 2446 | 36900.37000.37100.38100.39100.40900.41600.91300.1419100 | Toilet dado work | 6d | 2026-04-22 | 2026-04-28 | 2430, 2443, 2444 |  | Zenith | 8670424 |
| 2447 | 36900.37000.37100.38100.39100.40900.41600.91300.1419200 | Toilet flooring work | 7d | 2026-04-28 | 2026-05-05 | 2431, 2446 |  | Zenith | 8670434 |
| 2448 | 36900.37000.37100.38100.39100.40900.41600.91300.1419300 | False Cieling panel fixing | 7d | 2026-05-05 | 2026-05-12 | 2432, 2447 |  | Zenith | 8670444 |
| 2449 | 36900.37000.37100.38100.39100.40900.41600.91300.1419400 | Living dinning flooring | 7d | 2026-05-05 | 2026-05-12 | 2433, 2447 |  | Zenith | 8670454 |
| 2450 | 36900.37000.37100.38100.39100.40900.41600.91300.1419500 | Putty primer coat | 8d | 2026-05-12 | 2026-05-20 | 2434, 2449 |  | Zenith | 8670464 |
| 2451 | 36900.37000.37100.38100.39100.40900.41600.91300.1419600 | Aluminium door-window fixing | 12d | 2026-07-04 | 2026-07-15 | 2435, 2445, 2449 |  | Zenith | 8670474 |
| 2452 | 36900.37000.37100.38100.39100.40900.41600.91300.1419700 | Door shutter fixing (Pre Hung) | 8d | 2026-05-20 | 2026-05-28 | 2436, 2450 |  | Zenith | 8670484 |
| 2453 | 36900.37000.37100.38100.39100.40900.41600.91300.1419800 | Electrical wiring work | 10d | 2026-06-16 | 2026-06-25 | 2437, 2452 |  | Zenith | 8670494 |
| 2454 | 36900.37000.37100.38100.39100.40900.41600.91300.1419900 | Painting 1st coat | 12d | 2026-08-03 | 2026-08-14 | 2438, 2453 |  | Zenith | 8670504 |

| ID | WBS | Task | Duration | Start | Finish | Predecessors | Constraint | Calendar | Unique_Task_ID |
| --- | --- | --- | --- | --- | --- | --- | --- | --- | --- |
| 2455 | 36900.37000.37100.38100.39100.40900.41600.91400 | **21st floor roof** | 145.75d | 2026-04-03 | 2026-08-26 |  | start no earlier than 2026-04-03 | Zenith | 8649324 |
| 2456 | 36900.37000.37100.38100.39100.40900.41600.91400.1420000 | Block Work | 6d | 2026-04-03 | 2026-04-09 | 2116, 2440 |  | Zenith | 8670514 |
| 2457 | 36900.37000.37100.38100.39100.40900.41600.91400.1420100 | Fire sprinkler pipe fixing | 4d | 2026-04-09 | 2026-04-13 | 2441, 2456 |  | Zenith | 8670524 |
| 2458 | 36900.37000.37100.38100.39100.40900.41600.91400.1420200 | Internal Plumbing Works | 4d | 2026-04-09 | 2026-04-13 | 2442, 2456 |  | Zenith | 8670534 |
| 2459 | 36900.37000.37100.38100.39100.40900.41600.91400.1420300 | Waterproofing | 4d | 2026-04-13 | 2026-04-17 | 2443, 2458 |  | Zenith | 8670544 |
| 2460 | 36900.37000.37100.38100.39100.40900.41600.91400.1420400 | Internal Plaster | 10d | 2026-04-22 | 2026-05-02 | 2444, 2458, 2459FF+5d |  | Zenith | 8670554 |
| 2461 | 36900.37000.37100.38100.39100.40900.41600.91400.1420500 | IPS flooring work | 7d | 2026-05-02 | 2026-05-09 | 2445, 2460 |  | Zenith | 8670564 |
| 2462 | 36900.37000.37100.38100.39100.40900.41600.91400.1420600 | Toilet dado work | 6d | 2026-05-02 | 2026-05-08 | 2446, 2459, 2460 |  | Zenith | 8670574 |
| 2463 | 36900.37000.37100.38100.39100.40900.41600.91400.1420700 | Toilet flooring work | 7d | 2026-05-08 | 2026-05-15 | 2447, 2462 |  | Zenith | 8670584 |
| 2464 | 36900.37000.37100.38100.39100.40900.41600.91400.1420800 | False Cieling panel fixing | 7d | 2026-05-15 | 2026-05-22 | 2448, 2463 |  | Zenith | 8670594 |
| 2465 | 36900.37000.37100.38100.39100.40900.41600.91400.1420900 | Living dinning flooring | 7d | 2026-05-15 | 2026-05-22 | 2449, 2463 |  | Zenith | 8670604 |
| 2466 | 36900.37000.37100.38100.39100.40900.41600.91400.1421000 | Putty primer coat | 8d | 2026-05-22 | 2026-05-30 | 2450, 2465 |  | Zenith | 8670614 |
| 2467 | 36900.37000.37100.38100.39100.40900.41600.91400.1421100 | Aluminium door-window fixing | 12d | 2026-07-16 | 2026-07-27 | 2451, 2461, 2465 |  | Zenith | 8670624 |
| 2468 | 36900.37000.37100.38100.39100.40900.41600.91400.1421200 | Door shutter fixing (Pre Hung) | 8d | 2026-05-30 | 2026-06-07 | 2452, 2466 |  | Zenith | 8670634 |
| 2469 | 36900.37000.37100.38100.39100.40900.41600.91400.1421300 | Electrical wiring work | 10d | 2026-06-26 | 2026-07-05 | 2453, 2468 |  | Zenith | 8670644 |
| 2470 | 36900.37000.37100.38100.39100.40900.41600.91400.1421400 | Painting 1st coat | 12d | 2026-08-15 | 2026-08-26 | 2454, 2469 |  | Zenith | 8670654 |
| 2471 | 36900.37000.37100.38100.39100.40900.41600.91500 | **22nd floor roof** | 149.75d | 2026-04-11 | 2026-09-07 |  | start no earlier than 2026-04-11 | Zenith | 8649334 |
| 2472 | 36900.37000.37100.38100.39100.40900.41600.91500.1421500 | Block Work | 6d | 2026-04-11 | 2026-04-17 | 2117, 2456 |  | Zenith | 8670664 |
| 2473 | 36900.37000.37100.38100.39100.40900.41600.91500.1421600 | Fire sprinkler pipe fixing | 4d | 2026-04-17 | 2026-04-21 | 2457, 2472 |  | Zenith | 8670674 |
| 2474 | 36900.37000.37100.38100.39100.40900.41600.91500.1421700 | Internal Plumbing Works | 4d | 2026-04-17 | 2026-04-21 | 2458, 2472 |  | Zenith | 8670684 |
| 2475 | 36900.37000.37100.38100.39100.40900.41600.91500.1421800 | Waterproofing | 4d | 2026-04-21 | 2026-04-25 | 2459, 2474 |  | Zenith | 8670694 |
| 2476 | 36900.37000.37100.38100.39100.40900.41600.91500.1421900 | Internal Plaster | 10d | 2026-05-02 | 2026-05-12 | 2460, 2474, 2475FF+5d |  | Zenith | 8670704 |
| 2477 | 36900.37000.37100.38100.39100.40900.41600.91500.1422000 | IPS flooring work | 7d | 2026-05-12 | 2026-05-19 | 2461, 2476 |  | Zenith | 8670714 |
| 2478 | 36900.37000.37100.38100.39100.40900.41600.91500.1422100 | Toilet dado work | 6d | 2026-05-12 | 2026-05-18 | 2462, 2475, 2476 |  | Zenith | 8670724 |
| 2479 | 36900.37000.37100.38100.39100.40900.41600.91500.1422200 | Toilet flooring work | 7d | 2026-05-18 | 2026-05-25 | 2463, 2478 |  | Zenith | 8670734 |
| 2480 | 36900.37000.37100.38100.39100.40900.41600.91500.1422300 | False Cieling panel fixing | 7d | 2026-05-25 | 2026-06-01 | 2464, 2479 |  | Zenith | 8670744 |
| 2481 | 36900.37000.37100.38100.39100.40900.41600.91500.1422400 | Living dinning flooring | 7d | 2026-05-25 | 2026-06-01 | 2465, 2479 |  | Zenith | 8670754 |
| 2482 | 36900.37000.37100.38100.39100.40900.41600.91500.1422500 | Putty primer coat | 8d | 2026-06-01 | 2026-06-09 | 2466, 2481 |  | Zenith | 8670764 |
| 2483 | 36900.37000.37100.38100.39100.40900.41600.91500.1422600 | Aluminium door-window fixing | 12d | 2026-07-28 | 2026-08-08 | 2467, 2477, 2481 |  | Zenith | 8670774 |
| 2484 | 36900.37000.37100.38100.39100.40900.41600.91500.1422700 | Door shutter fixing (Pre Hung) | 8d | 2026-06-09 | 2026-06-17 | 2468, 2482 |  | Zenith | 8670784 |
| 2485 | 36900.37000.37100.38100.39100.40900.41600.91500.1422800 | Electrical wiring work | 10d | 2026-07-06 | 2026-07-15 | 2469, 2484 |  | Zenith | 8670794 |
| 2486 | 36900.37000.37100.38100.39100.40900.41600.91500.1422900 | Painting 1st coat | 12d | 2026-08-27 | 2026-09-07 | 2470, 2485 |  | Zenith | 8670804 |

| ID | WBS | Task | Duration | Start | Finish | Predecessors | Constraint | Calendar | Unique_Task_ID |
| --- | --- | --- | --- | --- | --- | --- | --- | --- | --- |
| 2487 | 36900.37000.37100.38100.39100.40900.41600.91600 | **23rd floor roof** | 153.75d | 2026-04-19 | 2026-09-19 |  | start no earlier than 2026-04-19 | Zenith | 8649344 |
| 2488 | 36900.37000.37100.38100.39100.40900.41600.91600.1423000 | Block Work | 6d | 2026-04-19 | 2026-04-25 | 2118, 2472 |  | Zenith | 8670814 |
| 2489 | 36900.37000.37100.38100.39100.40900.41600.91600.1423100 | Fire sprinkler pipe fixing | 5d | 2026-04-25 | 2026-04-30 | 2473, 2488 |  | Zenith | 8670824 |
| 2490 | 36900.37000.37100.38100.39100.40900.41600.91600.1423200 | Internal Plumbing Works | 5d | 2026-04-25 | 2026-04-30 | 2474, 2488 |  | Zenith | 8670834 |
| 2491 | 36900.37000.37100.38100.39100.40900.41600.91600.1423300 | Waterproofing | 5d | 2026-04-30 | 2026-05-05 | 2475, 2490 |  | Zenith | 8670844 |
| 2492 | 36900.37000.37100.38100.39100.40900.41600.91600.1423400 | Internal Plaster | 9d | 2026-05-12 | 2026-05-21 | 2476, 2490, 2491FF+5d |  | Zenith | 8670854 |
| 2493 | 36900.37000.37100.38100.39100.40900.41600.91600.1423500 | IPS flooring work | 7d | 2026-05-21 | 2026-05-28 | 2477, 2492 |  | Zenith | 8670864 |
| 2494 | 36900.37000.37100.38100.39100.40900.41600.91600.1423600 | Toilet dado work | 6d | 2026-05-21 | 2026-05-27 | 2478, 2491, 2492 |  | Zenith | 8670874 |
| 2495 | 36900.37000.37100.38100.39100.40900.41600.91600.1423700 | Toilet flooring work | 7d | 2026-05-27 | 2026-06-03 | 2479, 2494 |  | Zenith | 8670884 |
| 2496 | 36900.37000.37100.38100.39100.40900.41600.91600.1423800 | False Cieling panel fixing | 7d | 2026-06-03 | 2026-06-10 | 2480, 2495 |  | Zenith | 8670894 |
| 2497 | 36900.37000.37100.38100.39100.40900.41600.91600.1423900 | Living dinning flooring | 7d | 2026-06-03 | 2026-06-10 | 2481, 2495 |  | Zenith | 8670904 |
| 2498 | 36900.37000.37100.38100.39100.40900.41600.91600.1424000 | Putty primer coat | 8d | 2026-06-10 | 2026-06-18 | 2482, 2497 |  | Zenith | 8670914 |
| 2499 | 36900.37000.37100.38100.39100.40900.41600.91600.1424100 | Aluminium door-window fixing | 12d | 2026-08-09 | 2026-08-20 | 2483, 2493, 2497 |  | Zenith | 8670924 |
| 2500 | 36900.37000.37100.38100.39100.40900.41600.91600.1424200 | Door shutter fixing (Pre Hung) | 8d | 2026-06-18 | 2026-06-26 | 2484, 2498 |  | Zenith | 8670934 |
| 2501 | 36900.37000.37100.38100.39100.40900.41600.91600.1424300 | Electrical wiring work | 10d | 2026-07-16 | 2026-07-25 | 2485, 2500 |  | Zenith | 8670944 |
| 2502 | 36900.37000.37100.38100.39100.40900.41600.91600.1424400 | Painting 1st coat | 12d | 2026-09-08 | 2026-09-19 | 2486, 2501 |  | Zenith | 8670954 |
| 2503 | 36900.37000.37100.38100.39100.40900.41600.91700 | **24th floor roof** | 157.75d | 2026-04-27 | 2026-10-01 |  | start no earlier than 2026-04-27 | Zenith | 8649354 |
| 2504 | 36900.37000.37100.38100.39100.40900.41600.91700.1424500 | Block Work | 6d | 2026-04-27 | 2026-05-03 | 2119, 2488 |  | Zenith | 8670964 |
| 2505 | 36900.37000.37100.38100.39100.40900.41600.91700.1424600 | Fire sprinkler pipe fixing | 5d | 2026-05-03 | 2026-05-08 | 2489, 2504 |  | Zenith | 8670974 |
| 2506 | 36900.37000.37100.38100.39100.40900.41600.91700.1424700 | Internal Plumbing Works | 5d | 2026-05-03 | 2026-05-08 | 2490, 2504 |  | Zenith | 8670984 |
| 2507 | 36900.37000.37100.38100.39100.40900.41600.91700.1424800 | Waterproofing | 5d | 2026-05-08 | 2026-05-13 | 2491, 2506 |  | Zenith | 8670994 |
| 2508 | 36900.37000.37100.38100.39100.40900.41600.91700.1424900 | Internal Plaster | 9d | 2026-05-21 | 2026-05-30 | 2492, 2506, 2507FF+5d |  | Zenith | 8671004 |
| 2509 | 36900.37000.37100.38100.39100.40900.41600.91700.1425000 | IPS flooring work | 7d | 2026-05-30 | 2026-06-06 | 2493, 2508 |  | Zenith | 8671014 |
| 2510 | 36900.37000.37100.38100.39100.40900.41600.91700.1425100 | Toilet dado work | 6d | 2026-05-30 | 2026-06-05 | 2494, 2507, 2508 |  | Zenith | 8671024 |
| 2511 | 36900.37000.37100.38100.39100.40900.41600.91700.1425200 | Toilet flooring work | 7d | 2026-06-05 | 2026-06-12 | 2495, 2510 |  | Zenith | 8671034 |
| 2512 | 36900.37000.37100.38100.39100.40900.41600.91700.1425300 | False Cieling panel fixing | 7d | 2026-06-12 | 2026-06-19 | 2496, 2511 |  | Zenith | 8671044 |
| 2513 | 36900.37000.37100.38100.39100.40900.41600.91700.1425400 | Living dinning flooring | 7d | 2026-06-12 | 2026-06-19 | 2497, 2511 |  | Zenith | 8671054 |
| 2514 | 36900.37000.37100.38100.39100.40900.41600.91700.1425500 | Putty primer coat | 8d | 2026-06-19 | 2026-06-27 | 2498, 2513 |  | Zenith | 8671064 |
| 2515 | 36900.37000.37100.38100.39100.40900.41600.91700.1425600 | Aluminium door-window fixing | 12d | 2026-08-21 | 2026-09-01 | 2499, 2509, 2513 |  | Zenith | 8671074 |
| 2516 | 36900.37000.37100.38100.39100.40900.41600.91700.1425700 | Door shutter fixing (Pre Hung) | 8d | 2026-06-27 | 2026-07-05 | 2500, 2514 |  | Zenith | 8671084 |
| 2517 | 36900.37000.37100.38100.39100.40900.41600.91700.1425800 | Electrical wiring work | 10d | 2026-07-26 | 2026-08-04 | 2501, 2516 |  | Zenith | 8671094 |
| 2518 | 36900.37000.37100.38100.39100.40900.41600.91700.1425900 | Painting 1st coat | 12d | 2026-09-20 | 2026-10-01 | 2502, 2517 |  | Zenith | 8671104 |

| ID | WBS | Task | Duration | Start | Finish | Predecessors | Constraint | Calendar | Unique_Task_ID |
| --- | --- | --- | --- | --- | --- | --- | --- | --- | --- |
| 2519 | 36900.37000.37100.38100.39100.40900.41600.91800 | **25th floor roof** | 161.75d | 2026-05-05 | 2026-10-13 |  | start no earlier than 2026-05-05 | Zenith | 8649364 |
| 2520 | 36900.37000.37100.38100.39100.40900.41600.91800.1426000 | Block Work | 6d | 2026-05-05 | 2026-05-11 | 2120, 2504 |  | Zenith | 8671114 |
| 2521 | 36900.37000.37100.38100.39100.40900.41600.91800.1426100 | Fire sprinkler pipe fixing | 5d | 2026-05-11 | 2026-05-16 | 2505, 2520 |  | Zenith | 8671124 |
| 2522 | 36900.37000.37100.38100.39100.40900.41600.91800.1426200 | Internal Plumbing Works | 5d | 2026-05-11 | 2026-05-16 | 2506, 2520 |  | Zenith | 8671134 |
| 2523 | 36900.37000.37100.38100.39100.40900.41600.91800.1426300 | Waterproofing | 5d | 2026-05-16 | 2026-05-21 | 2507, 2522 |  | Zenith | 8671144 |
| 2524 | 36900.37000.37100.38100.39100.40900.41600.91800.1426400 | Internal Plaster | 9d | 2026-05-30 | 2026-06-08 | 2508, 2522, 2523FF+5d |  | Zenith | 8671154 |
| 2525 | 36900.37000.37100.38100.39100.40900.41600.91800.1426500 | IPS flooring work | 7d | 2026-06-08 | 2026-06-15 | 2509, 2524 |  | Zenith | 8671164 |
| 2526 | 36900.37000.37100.38100.39100.40900.41600.91800.1426600 | Toilet dado work | 6d | 2026-06-08 | 2026-06-14 | 2510, 2523, 2524 |  | Zenith | 8671174 |
| 2527 | 36900.37000.37100.38100.39100.40900.41600.91800.1426700 | Toilet flooring work | 7d | 2026-06-14 | 2026-06-21 | 2511, 2526 |  | Zenith | 8671184 |
| 2528 | 36900.37000.37100.38100.39100.40900.41600.91800.1426800 | False Cieling panel fixing | 7d | 2026-06-21 | 2026-06-28 | 2512, 2527 |  | Zenith | 8671194 |
| 2529 | 36900.37000.37100.38100.39100.40900.41600.91800.1426900 | Living dinning flooring | 7d | 2026-06-21 | 2026-06-28 | 2513, 2527 |  | Zenith | 8671204 |
| 2530 | 36900.37000.37100.38100.39100.40900.41600.91800.1427000 | Putty primer coat | 8d | 2026-06-28 | 2026-07-06 | 2514, 2529 |  | Zenith | 8671214 |
| 2531 | 36900.37000.37100.38100.39100.40900.41600.91800.1427100 | Aluminium door-window fixing | 12d | 2026-09-02 | 2026-09-13 | 2515, 2525, 2529 |  | Zenith | 8671224 |
| 2532 | 36900.37000.37100.38100.39100.40900.41600.91800.1427200 | Door shutter fixing (Pre Hung) | 8d | 2026-07-06 | 2026-07-14 | 2516, 2530 |  | Zenith | 8671234 |
| 2533 | 36900.37000.37100.38100.39100.40900.41600.91800.1427300 | Electrical wiring work | 10d | 2026-08-05 | 2026-08-14 | 2517, 2532 |  | Zenith | 8671244 |
| 2534 | 36900.37000.37100.38100.39100.40900.41600.91800.1427400 | Painting 1st coat | 12d | 2026-10-02 | 2026-10-13 | 2518, 2533 |  | Zenith | 8671254 |
| 2535 | 36900.37000.37100.38100.39100.40900.41600.91900 | **26th floor roof** | 165.75d | 2026-05-13 | 2026-10-25 |  | start no earlier than 2026-05-13 | Zenith | 8649374 |
| 2536 | 36900.37000.37100.38100.39100.40900.41600.91900.1427500 | Block Work | 7d | 2026-05-13 | 2026-05-20 | 2121, 2520 |  | Zenith | 8671264 |
| 2537 | 36900.37000.37100.38100.39100.40900.41600.91900.1427600 | Fire sprinkler pipe fixing | 7d | 2026-05-20 | 2026-05-27 | 2521, 2536 |  | Zenith | 8671274 |
| 2538 | 36900.37000.37100.38100.39100.40900.41600.91900.1427700 | Internal Plumbing Works | 7d | 2026-05-20 | 2026-05-27 | 2522, 2536 |  | Zenith | 8671284 |
| 2539 | 36900.37000.37100.38100.39100.40900.41600.91900.1427800 | Waterproofing | 7d | 2026-05-27 | 2026-06-03 | 2523, 2538 |  | Zenith | 8671294 |
| 2540 | 36900.37000.37100.38100.39100.40900.41600.91900.1427900 | Internal Plaster | 7d | 2026-06-08 | 2026-06-15 | 2524, 2538, 2539FF+5d |  | Zenith | 8671304 |
| 2541 | 36900.37000.37100.38100.39100.40900.41600.91900.1428000 | IPS flooring work | 7d | 2026-06-15 | 2026-06-22 | 2525, 2540 |  | Zenith | 8671314 |
| 2542 | 36900.37000.37100.38100.39100.40900.41600.91900.1428100 | Toilet dado work | 6d | 2026-06-15 | 2026-06-21 | 2526, 2539, 2540 |  | Zenith | 8671324 |
| 2543 | 36900.37000.37100.38100.39100.40900.41600.91900.1428200 | Toilet flooring work | 7d | 2026-06-21 | 2026-06-28 | 2527, 2542 |  | Zenith | 8671334 |
| 2544 | 36900.37000.37100.38100.39100.40900.41600.91900.1428300 | False Cieling panel fixing | 7d | 2026-06-28 | 2026-07-05 | 2528, 2543 |  | Zenith | 8671344 |
| 2545 | 36900.37000.37100.38100.39100.40900.41600.91900.1428400 | Living dinning flooring | 7d | 2026-06-28 | 2026-07-05 | 2529, 2543 |  | Zenith | 8671354 |
| 2546 | 36900.37000.37100.38100.39100.40900.41600.91900.1428500 | Putty primer coat | 8d | 2026-07-06 | 2026-07-14 | 2530, 2545 |  | Zenith | 8671364 |
| 2547 | 36900.37000.37100.38100.39100.40900.41600.91900.1428600 | Aluminium door-window fixing | 12d | 2026-09-14 | 2026-09-25 | 2531, 2541, 2545 |  | Zenith | 8671374 |
| 2548 | 36900.37000.37100.38100.39100.40900.41600.91900.1428700 | Door shutter fixing (Pre Hung) | 8d | 2026-07-14 | 2026-07-22 | 2532, 2546 |  | Zenith | 8671384 |
| 2549 | 36900.37000.37100.38100.39100.40900.41600.91900.1428800 | Electrical wiring work | 10d | 2026-08-15 | 2026-08-24 | 2533, 2548 |  | Zenith | 8671394 |
| 2550 | 36900.37000.37100.38100.39100.40900.41600.91900.1428900 | Painting 1st coat | 12d | 2026-10-14 | 2026-10-25 | 2534, 2549 |  | Zenith | 8671404 |

| ID | WBS | Task | Duration | Start | Finish | Predecessors | Constraint | Calendar | Unique_Task_ID |
| --- | --- | --- | --- | --- | --- | --- | --- | --- | --- |
| 2551 | 36900.37000.37100.38100.39100.40900.41600.92000 | **27th floor roof** | 167.75d | 2026-05-23 | 2026-12-21 |  | start no earlier than 2026-05-23 | Zenith | 8649384 |
| 2552 | 36900.37000.37100.38100.39100.40900.41600.92000.1429000 | Block Work | 7d | 2026-05-23 | 2026-05-30 | 2122, 2536 |  | Zenith | 8671414 |
| 2553 | 36900.37000.37100.38100.39100.40900.41600.92000.1429100 | Fire sprinkler pipe fixing | 7d | 2026-05-30 | 2026-06-06 | 2537, 2552 |  | Zenith | 8671424 |
| 2554 | 36900.37000.37100.38100.39100.40900.41600.92000.1429200 | Internal Plumbing Works | 7d | 2026-05-30 | 2026-06-06 | 2538, 2552 |  | Zenith | 8671434 |
| 2555 | 36900.37000.37100.38100.39100.40900.41600.92000.1429300 | Waterproofing | 7d | 2026-06-06 | 2026-06-13 | 2539, 2554 |  | Zenith | 8671444 |
| 2556 | 36900.37000.37100.38100.39100.40900.41600.92000.1429400 | Internal Plaster | 7d | 2026-06-15 | 2026-06-22 | 2540, 2554, 2555FF+5d |  | Zenith | 8671454 |
| 2557 | 36900.37000.37100.38100.39100.40900.41600.92000.1429500 | IPS flooring work | 7d | 2026-06-22 | 2026-06-29 | 2541, 2556 |  | Zenith | 8671464 |
| 2558 | 36900.37000.37100.38100.39100.40900.41600.92000.1429600 | Toilet dado work | 6d | 2026-06-22 | 2026-06-28 | 2542, 2555, 2556 |  | Zenith | 8671474 |
| 2559 | 36900.37000.37100.38100.39100.40900.41600.92000.1429700 | Toilet flooring work | 7d | 2026-06-28 | 2026-07-05 | 2543, 2558 |  | Zenith | 8671484 |
| 2560 | 36900.37000.37100.38100.39100.40900.41600.92000.1429800 | False Cieling panel fixing | 7d | 2026-07-05 | 2026-07-12 | 2544, 2559 |  | Zenith | 8671494 |
| 2561 | 36900.37000.37100.38100.39100.40900.41600.92000.1429900 | Living dinning flooring | 7d | 2026-07-05 | 2026-07-12 | 2545, 2559 |  | Zenith | 8671504 |
| 2562 | 36900.37000.37100.38100.39100.40900.41600.92000.1430000 | Putty primer coat | 8d | 2026-07-14 | 2026-07-22 | 2546, 2561 |  | Zenith | 8671514 |
| 2563 | 36900.37000.37100.38100.39100.40900.41600.92000.1430100 | Aluminium door-window fixing | 12d | 2026-09-26 | 2026-10-07 | 2547, 2557, 2561 |  | Zenith | 8671524 |
| 2564 | 36900.37000.37100.38100.39100.40900.41600.92000.1430200 | Door shutter fixing (Pre Hung) | 8d | 2026-07-22 | 2026-07-30 | 2548, 2562 |  | Zenith | 8671534 |
| 2565 | 36900.37000.37100.38100.39100.40900.41600.92000.1430300 | Electrical wiring work | 10d | 2026-08-25 | 2026-09-03 | 2549, 2564 |  | Zenith | 8671544 |
| 2566 | 36900.37000.37100.38100.39100.40900.41600.92000.1430400 | Painting 1st coat | 12d | 2026-10-26 | 2026-12-21 | 2550, 2565 |  | Zenith | 8671554 |
| 2567 | 36900.37000.37100.38100.39100.40900.41600.92100 | **28th floor roof** | 169.75d | 2026-06-02 | 2027-01-02 |  | start no earlier than 2026-06-02 | Zenith | 8649394 |
| 2568 | 36900.37000.37100.38100.39100.40900.41600.92100.1430500 | Block Work | 7d | 2026-06-02 | 2026-06-09 | 2123, 2552 |  | Zenith | 8671564 |
| 2569 | 36900.37000.37100.38100.39100.40900.41600.92100.1430600 | Fire sprinkler pipe fixing | 7d | 2026-06-09 | 2026-06-16 | 2553, 2568 |  | Zenith | 8671574 |
| 2570 | 36900.37000.37100.38100.39100.40900.41600.92100.1430700 | Internal Plumbing Works | 7d | 2026-06-09 | 2026-06-16 | 2554, 2568 |  | Zenith | 8671584 |
| 2571 | 36900.37000.37100.38100.39100.40900.41600.92100.1430800 | Waterproofing | 7d | 2026-06-16 | 2026-06-23 | 2555, 2570 |  | Zenith | 8671594 |
| 2572 | 36900.37000.37100.38100.39100.40900.41600.92100.1430900 | Internal Plaster | 7d | 2026-06-22 | 2026-06-29 | 2556, 2570, 2571FF+5d |  | Zenith | 8671604 |
| 2573 | 36900.37000.37100.38100.39100.40900.41600.92100.1431000 | IPS flooring work | 7d | 2026-06-29 | 2026-07-06 | 2557, 2572 |  | Zenith | 8671614 |
| 2574 | 36900.37000.37100.38100.39100.40900.41600.92100.1431100 | Toilet dado work | 6d | 2026-06-29 | 2026-07-05 | 2558, 2571, 2572 |  | Zenith | 8671624 |
| 2575 | 36900.37000.37100.38100.39100.40900.41600.92100.1431200 | Toilet flooring work | 7d | 2026-07-05 | 2026-07-12 | 2559, 2574 |  | Zenith | 8671634 |
| 2576 | 36900.37000.37100.38100.39100.40900.41600.92100.1431300 | False Cieling panel fixing | 7d | 2026-07-12 | 2026-07-19 | 2560, 2575 |  | Zenith | 8671644 |
| 2577 | 36900.37000.37100.38100.39100.40900.41600.92100.1431400 | Living dinning flooring | 7d | 2026-07-12 | 2026-07-19 | 2561, 2575 |  | Zenith | 8671654 |
| 2578 | 36900.37000.37100.38100.39100.40900.41600.92100.1431500 | Putty primer coat | 8d | 2026-07-22 | 2026-07-30 | 2562, 2577 |  | Zenith | 8671664 |
| 2579 | 36900.37000.37100.38100.39100.40900.41600.92100.1431600 | Aluminium door-window fixing | 12d | 2026-10-08 | 2026-10-19 | 2563, 2573, 2577 |  | Zenith | 8671674 |
| 2580 | 36900.37000.37100.38100.39100.40900.41600.92100.1431700 | Door shutter fixing (Pre Hung) | 8d | 2026-07-30 | 2026-08-07 | 2564, 2578 |  | Zenith | 8671684 |
| 2581 | 36900.37000.37100.38100.39100.40900.41600.92100.1431800 | Electrical wiring work | 10d | 2026-09-04 | 2026-09-13 | 2565, 2580 |  | Zenith | 8671694 |
| 2582 | 36900.37000.37100.38100.39100.40900.41600.92100.1431900 | Painting 1st coat | 12d | 2026-12-22 | 2027-01-02 | 2566, 2581 |  | Zenith | 8671704 |

| ID | WBS | Task | Duration | Start | Finish | Predecessors | Constraint | Calendar | Unique_Task_ID |
| --- | --- | --- | --- | --- | --- | --- | --- | --- | --- |
| 2583 | 36900.37000.37100.38100.39100.40900.41600.92200 | **29th floor roof** | 171.75d | 2026-06-12 | 2027-01-14 |  | start no earlier than 2026-06-12 | Zenith | 8649404 |
| 2584 | 36900.37000.37100.38100.39100.40900.41600.92200.1432000 | Block Work | 7d | 2026-06-12 | 2026-06-19 | 2124, 2568 |  | Zenith | 8671714 |
| 2585 | 36900.37000.37100.38100.39100.40900.41600.92200.1432100 | Fire sprinkler pipe fixing | 7d | 2026-06-19 | 2026-06-26 | 2569, 2584 |  | Zenith | 8671724 |
| 2586 | 36900.37000.37100.38100.39100.40900.41600.92200.1432200 | Internal Plumbing Works | 7d | 2026-06-19 | 2026-06-26 | 2570, 2584 |  | Zenith | 8671734 |
| 2587 | 36900.37000.37100.38100.39100.40900.41600.92200.1432300 | Waterproofing | 7d | 2026-06-26 | 2026-07-03 | 2571, 2586 |  | Zenith | 8671744 |
| 2588 | 36900.37000.37100.38100.39100.40900.41600.92200.1432400 | Internal Plaster | 7d | 2026-07-01 | 2026-07-08 | 2572, 2586, 2587FF+5d |  | Zenith | 8671754 |
| 2589 | 36900.37000.37100.38100.39100.40900.41600.92200.1432500 | IPS flooring work | 7d | 2026-07-08 | 2026-07-15 | 2573, 2588 |  | Zenith | 8671764 |
| 2590 | 36900.37000.37100.38100.39100.40900.41600.92200.1432600 | Toilet dado work | 6d | 2026-07-08 | 2026-07-14 | 2574, 2587, 2588 |  | Zenith | 8671774 |
| 2591 | 36900.37000.37100.38100.39100.40900.41600.92200.1432700 | Toilet flooring work | 7d | 2026-07-14 | 2026-07-21 | 2575, 2590 |  | Zenith | 8671784 |
| 2592 | 36900.37000.37100.38100.39100.40900.41600.92200.1432800 | False Cieling panel fixing | 7d | 2026-07-21 | 2026-07-28 | 2576, 2591 |  | Zenith | 8671794 |
| 2593 | 36900.37000.37100.38100.39100.40900.41600.92200.1432900 | Living dinning flooring | 7d | 2026-07-21 | 2026-07-28 | 2577, 2591 |  | Zenith | 8671804 |
| 2594 | 36900.37000.37100.38100.39100.40900.41600.92200.1433000 | Putty primer coat | 8d | 2026-07-30 | 2026-08-07 | 2578, 2593 |  | Zenith | 8671814 |
| 2595 | 36900.37000.37100.38100.39100.40900.41600.92200.1433100 | Aluminium door-window fixing | 12d | 2026-10-20 | 2026-10-31 | 2579, 2589, 2593 |  | Zenith | 8671824 |
| 2596 | 36900.37000.37100.38100.39100.40900.41600.92200.1433200 | Door shutter fixing (Pre Hung) | 8d | 2026-08-07 | 2026-08-15 | 2580, 2594 |  | Zenith | 8671834 |
| 2597 | 36900.37000.37100.38100.39100.40900.41600.92200.1433300 | Electrical wiring work | 10d | 2026-09-14 | 2026-09-23 | 2581, 2596 |  | Zenith | 8671844 |
| 2598 | 36900.37000.37100.38100.39100.40900.41600.92200.1433400 | Painting 1st coat | 12d | 2027-01-03 | 2027-01-14 | 2582, 2597 |  | Zenith | 8671854 |
| 2599 | 36900.37000.37100.38100.39100.40900.41600.92300 | **30th floor roof** | 176.75d | 2026-06-22 | 2027-01-29 |  | start no earlier than 2026-06-22 | Zenith | 8649414 |
| 2600 | 36900.37000.37100.38100.39100.40900.41600.92300.1433500 | Block Work | 10d | 2026-06-22 | 2026-07-02 | 2125, 2584 |  | Zenith | 8671864 |
| 2601 | 36900.37000.37100.38100.39100.40900.41600.92300.1433600 | Fire sprinkler pipe fixing | 6d | 2026-07-02 | 2026-07-08 | 2585, 2600 |  | Zenith | 8671874 |
| 2602 | 36900.37000.37100.38100.39100.40900.41600.92300.1433700 | Internal Plumbing Works | 10d | 2026-07-02 | 2026-07-12 | 2586, 2600 |  | Zenith | 8671884 |
| 2603 | 36900.37000.37100.38100.39100.40900.41600.92300.1433800 | Waterproofing | 14d | 2026-07-12 | 2026-07-26 | 2587, 2602 |  | Zenith | 8671894 |
| 2604 | 36900.37000.37100.38100.39100.40900.41600.92300.1433900 | Internal Plaster | 14d | 2026-07-17 | 2026-07-31 | 2588, 2602, 2603FF+5d |  | Zenith | 8671904 |
| 2605 | 36900.37000.37100.38100.39100.40900.41600.92300.1434000 | IPS flooring work | 10d | 2026-07-31 | 2026-08-10 | 2589, 2604 |  | Zenith | 8671914 |
| 2606 | 36900.37000.37100.38100.39100.40900.41600.92300.1434100 | Toilet dado work | 10d | 2026-07-31 | 2026-08-10 | 2590, 2603, 2604 |  | Zenith | 8671924 |
| 2607 | 36900.37000.37100.38100.39100.40900.41600.92300.1434200 | Toilet flooring work | 7d | 2026-08-10 | 2026-08-17 | 2591, 2606 |  | Zenith | 8671934 |
| 2608 | 36900.37000.37100.38100.39100.40900.41600.92300.1434300 | False Cieling panel fixing | 10d | 2026-08-17 | 2026-08-27 | 2592, 2607 |  | Zenith | 8671944 |
| 2609 | 36900.37000.37100.38100.39100.40900.41600.92300.1434400 | Living dinning flooring | 13d | 2026-08-17 | 2026-08-30 | 2593, 2607 |  | Zenith | 8671954 |
| 2610 | 36900.37000.37100.38100.39100.40900.41600.92300.1434500 | Putty primer coat | 12d | 2026-08-30 | 2026-09-11 | 2594, 2609 |  | Zenith | 8671964 |
| 2611 | 36900.37000.37100.38100.39100.40900.41600.92300.1434600 | Aluminium door-window fixing | 15d | 2026-12-16 | 2026-12-30 | 2595, 2605, 2609 |  | Zenith | 8671974 |
| 2612 | 36900.37000.37100.38100.39100.40900.41600.92300.1434700 | Door shutter fixing (Pre Hung) | 8d | 2026-09-11 | 2026-09-19 | 2596, 2610 |  | Zenith | 8671984 |
| 2613 | 36900.37000.37100.38100.39100.40900.41600.92300.1434800 | Electrical wiring work | 12d | 2026-09-24 | 2026-10-05 | 2597, 2612 |  | Zenith | 8671994 |
| 2614 | 36900.37000.37100.38100.39100.40900.41600.92300.1434900 | Painting 1st coat | 15d | 2027-01-15 | 2027-01-29 | 2598, 2613 |  | Zenith | 8672004 |

| ID | WBS | Task | Duration | Start | Finish | Predecessors | Constraint | Calendar | Unique_Task_ID |
| --- | --- | --- | --- | --- | --- | --- | --- | --- | --- |
| 2615 | 36900.37000.37100.38100.39100.40900.41600.92400 | **31st floor roof** | 181.75d | 2026-07-02 | 2027-02-13 |  | start no earlier than 2026-07-02 | Zenith | 8649424 |
| 2616 | 36900.37000.37100.38100.39100.40900.41600.92400.1435000 | Block Work | 10d | 2026-07-02 | 2026-07-12 | 2126, 2600 |  | Zenith | 8672014 |
| 2617 | 36900.37000.37100.38100.39100.40900.41600.92400.1435100 | Fire sprinkler pipe fixing | 6d | 2026-07-12 | 2026-07-18 | 2601, 2616 |  | Zenith | 8672024 |
| 2618 | 36900.37000.37100.38100.39100.40900.41600.92400.1435200 | Internal Plumbing Works | 10d | 2026-07-12 | 2026-07-22 | 2602, 2616 |  | Zenith | 8672034 |
| 2619 | 36900.37000.37100.38100.39100.40900.41600.92400.1435300 | Waterproofing | 14d | 2026-07-26 | 2026-08-09 | 2603, 2618 |  | Zenith | 8672044 |
| 2620 | 36900.37000.37100.38100.39100.40900.41600.92400.1435400 | Internal Plaster | 14d | 2026-07-31 | 2026-08-14 | 2604, 2618, 2619FF+5d |  | Zenith | 8672054 |
| 2621 | 36900.37000.37100.38100.39100.40900.41600.92400.1435500 | IPS flooring work | 10d | 2026-08-14 | 2026-08-24 | 2605, 2620 |  | Zenith | 8672064 |
| 2622 | 36900.37000.37100.38100.39100.40900.41600.92400.1435600 | Toilet dado work | 10d | 2026-08-14 | 2026-08-24 | 2606, 2619, 2620 |  | Zenith | 8672074 |
| 2623 | 36900.37000.37100.38100.39100.40900.41600.92400.1435700 | Toilet flooring work | 7d | 2026-08-24 | 2026-08-31 | 2607, 2622 |  | Zenith | 8672084 |
| 2624 | 36900.37000.37100.38100.39100.40900.41600.92400.1435800 | False Cieling panel fixing | 10d | 2026-08-31 | 2026-09-10 | 2608, 2623 |  | Zenith | 8672094 |
| 2625 | 36900.37000.37100.38100.39100.40900.41600.92400.1435900 | Living dinning flooring | 13d | 2026-08-31 | 2026-09-13 | 2609, 2623 |  | Zenith | 8672104 |
| 2626 | 36900.37000.37100.38100.39100.40900.41600.92400.1436000 | Putty primer coat | 12d | 2026-09-13 | 2026-09-25 | 2610, 2625 |  | Zenith | 8672114 |
| 2627 | 36900.37000.37100.38100.39100.40900.41600.92400.1436100 | Aluminium door-window fixing | 15d | 2026-12-31 | 2027-01-14 | 2611, 2621, 2625 |  | Zenith | 8672124 |
| 2628 | 36900.37000.37100.38100.39100.40900.41600.92400.1436200 | Door shutter fixing (Pre Hung) | 8d | 2026-09-25 | 2026-10-03 | 2612, 2626 |  | Zenith | 8672134 |
| 2629 | 36900.37000.37100.38100.39100.40900.41600.92400.1436300 | Electrical wiring work | 12d | 2026-10-06 | 2026-10-17 | 2613, 2628 |  | Zenith | 8672144 |
| 2630 | 36900.37000.37100.38100.39100.40900.41600.92400.1436400 | Painting 1st coat | 15d | 2027-01-30 | 2027-02-13 | 2614, 2629 |  | Zenith | 8672154 |
| 2631 | 36900.37000.37100.38100.39100.40900.41600.92500 | **32nd floor roof** | 178.75d | 2026-07-20 | 2027-02-28 |  | start no earlier than 2026-07-20 | Zenith | 8649434 |
| 2632 | 36900.37000.37100.38100.39100.40900.41600.92500.1436500 | Block Work | 10d | 2026-07-20 | 2026-07-30 | 2127, 2616 |  | Zenith | 8672164 |
| 2633 | 36900.37000.37100.38100.39100.40900.41600.92500.1436600 | Fire sprinkler pipe fixing | 6d | 2026-07-30 | 2026-08-05 | 2617, 2632 |  | Zenith | 8672174 |
| 2634 | 36900.37000.37100.38100.39100.40900.41600.92500.1436700 | Internal Plumbing Works | 10d | 2026-07-30 | 2026-08-09 | 2618, 2632 |  | Zenith | 8672184 |
| 2635 | 36900.37000.37100.38100.39100.40900.41600.92500.1436800 | Waterproofing | 14d | 2026-08-09 | 2026-08-23 | 2619, 2634 |  | Zenith | 8672194 |
| 2636 | 36900.37000.37100.38100.39100.40900.41600.92500.1436900 | Internal Plaster | 14d | 2026-08-14 | 2026-08-28 | 2620, 2634, 2635FF+5d |  | Zenith | 8672204 |
| 2637 | 36900.37000.37100.38100.39100.40900.41600.92500.1437000 | IPS flooring work | 10d | 2026-08-28 | 2026-09-07 | 2621, 2636 |  | Zenith | 8672214 |
| 2638 | 36900.37000.37100.38100.39100.40900.41600.92500.1437100 | Toilet dado work | 10d | 2026-08-28 | 2026-09-07 | 2622, 2635, 2636 |  | Zenith | 8672224 |
| 2639 | 36900.37000.37100.38100.39100.40900.41600.92500.1437200 | Toilet flooring work | 7d | 2026-09-07 | 2026-09-14 | 2623, 2638 |  | Zenith | 8672234 |
| 2640 | 36900.37000.37100.38100.39100.40900.41600.92500.1437300 | False Cieling panel fixing | 10d | 2026-09-14 | 2026-09-24 | 2624, 2639 |  | Zenith | 8672244 |
| 2641 | 36900.37000.37100.38100.39100.40900.41600.92500.1437400 | Living dinning flooring | 13d | 2026-09-14 | 2026-09-27 | 2625, 2639 |  | Zenith | 8672254 |
| 2642 | 36900.37000.37100.38100.39100.40900.41600.92500.1437500 | Putty primer coat | 12d | 2026-09-27 | 2026-10-09 | 2626, 2641 |  | Zenith | 8672264 |
| 2643 | 36900.37000.37100.38100.39100.40900.41600.92500.1437600 | Aluminium door-window fixing | 15d | 2027-01-15 | 2027-01-29 | 2627, 2637, 2641 |  | Zenith | 8672274 |
| 2644 | 36900.37000.37100.38100.39100.40900.41600.92500.1437700 | Door shutter fixing (Pre Hung) | 8d | 2026-10-09 | 2026-10-17 | 2628, 2642 |  | Zenith | 8672284 |
| 2645 | 36900.37000.37100.38100.39100.40900.41600.92500.1437800 | Electrical wiring work | 12d | 2026-10-18 | 2026-10-29 | 2629, 2644 |  | Zenith | 8672294 |
| 2646 | 36900.37000.37100.38100.39100.40900.41600.92500.1437900 | Painting 1st coat | 15d | 2027-02-14 | 2027-02-28 | 2630, 2645 |  | Zenith | 8672304 |

| ID | WBS | Task | Duration | Start | Finish | Predecessors | Constraint | Calendar | Unique_Task_ID |
| --- | --- | --- | --- | --- | --- | --- | --- | --- | --- |
| 2647 | 36900.37000.37100.38100.39100.40900.41600.92600 | **33rd floor roof** | 183.75d | 2026-07-30 | 2027-03-15 |  | start no earlier than 2026-07-30 | Zenith | 8649444 |
| 2648 | 36900.37000.37100.38100.39100.40900.41600.92600.1438000 | Block Work | 10d | 2026-07-30 | 2026-08-09 | 2128, 2632 |  | Zenith | 8672314 |
| 2649 | 36900.37000.37100.38100.39100.40900.41600.92600.1438100 | Fire sprinkler pipe fixing | 6d | 2026-08-09 | 2026-08-15 | 2633, 2648 |  | Zenith | 8672324 |
| 2650 | 36900.37000.37100.38100.39100.40900.41600.92600.1438200 | Internal Plumbing Works | 10d | 2026-08-09 | 2026-08-19 | 2634, 2648 |  | Zenith | 8672334 |
| 2651 | 36900.37000.37100.38100.39100.40900.41600.92600.1438300 | Waterproofing | 14d | 2026-08-23 | 2026-09-06 | 2635, 2650 |  | Zenith | 8672344 |
| 2652 | 36900.37000.37100.38100.39100.40900.41600.92600.1438400 | Internal Plaster | 14d | 2026-08-28 | 2026-09-11 | 2636, 2650, 2651FF+5d |  | Zenith | 8672354 |
| 2653 | 36900.37000.37100.38100.39100.40900.41600.92600.1438500 | IPS flooring work | 10d | 2026-09-11 | 2026-09-21 | 2637, 2652 |  | Zenith | 8672364 |
| 2654 | 36900.37000.37100.38100.39100.40900.41600.92600.1438600 | Toilet dado work | 10d | 2026-09-11 | 2026-09-21 | 2638, 2651, 2652 |  | Zenith | 8672374 |
| 2655 | 36900.37000.37100.38100.39100.40900.41600.92600.1438700 | Toilet flooring work | 7d | 2026-09-21 | 2026-09-28 | 2639, 2654 |  | Zenith | 8672384 |
| 2656 | 36900.37000.37100.38100.39100.40900.41600.92600.1438800 | False Cieling panel fixing | 10d | 2026-09-28 | 2026-10-08 | 2640, 2655 |  | Zenith | 8672394 |
| 2657 | 36900.37000.37100.38100.39100.40900.41600.92600.1438900 | Living dinning flooring | 13d | 2026-09-28 | 2026-10-11 | 2641, 2655 |  | Zenith | 8672404 |
| 2658 | 36900.37000.37100.38100.39100.40900.41600.92600.1439000 | Putty primer coat | 12d | 2026-10-11 | 2026-10-23 | 2642, 2657 |  | Zenith | 8672414 |
| 2659 | 36900.37000.37100.38100.39100.40900.41600.92600.1439100 | Aluminium door-window fixing | 15d | 2027-01-30 | 2027-02-13 | 2643, 2653, 2657 |  | Zenith | 8672424 |
| 2660 | 36900.37000.37100.38100.39100.40900.41600.92600.1439200 | Door shutter fixing (Pre Hung) | 8d | 2026-10-23 | 2026-10-31 | 2644, 2658 |  | Zenith | 8672434 |
| 2661 | 36900.37000.37100.38100.39100.40900.41600.92600.1439300 | Electrical wiring work | 12d | 2026-10-31 | 2026-12-27 | 2645, 2660 |  | Zenith | 8672444 |
| 2662 | 36900.37000.37100.38100.39100.40900.41600.92600.1439400 | Painting 1st coat | 15d | 2027-03-01 | 2027-03-15 | 2646, 2661 |  | Zenith | 8672454 |
| 2663 | 36900.37000.37100.38100.39100.40900.41600.92700 | **34th floor roof** | 188.75d | 2026-08-09 | 2027-03-30 |  | start no earlier than 2026-08-09 | Zenith | 8649454 |
| 2664 | 36900.37000.37100.38100.39100.40900.41600.92700.1439500 | Block Work | 10d | 2026-08-09 | 2026-08-19 | 2129, 2648 |  | Zenith | 8672464 |
| 2665 | 36900.37000.37100.38100.39100.40900.41600.92700.1439600 | Fire sprinkler pipe fixing | 6d | 2026-08-19 | 2026-08-25 | 2649, 2664 |  | Zenith | 8672474 |
| 2666 | 36900.37000.37100.38100.39100.40900.41600.92700.1439700 | Internal Plumbing Works | 10d | 2026-08-19 | 2026-08-29 | 2650, 2664 |  | Zenith | 8672484 |
| 2667 | 36900.37000.37100.38100.39100.40900.41600.92700.1439800 | Waterproofing | 14d | 2026-09-06 | 2026-09-20 | 2651, 2666 |  | Zenith | 8672494 |
| 2668 | 36900.37000.37100.38100.39100.40900.41600.92700.1439900 | Internal Plaster | 14d | 2026-09-11 | 2026-09-25 | 2652, 2666, 2667FF+5d |  | Zenith | 8672504 |
| 2669 | 36900.37000.37100.38100.39100.40900.41600.92700.1440000 | IPS flooring work | 10d | 2026-09-25 | 2026-10-05 | 2653, 2668 |  | Zenith | 8672514 |
| 2670 | 36900.37000.37100.38100.39100.40900.41600.92700.1440100 | Toilet dado work | 10d | 2026-09-25 | 2026-10-05 | 2654, 2667, 2668 |  | Zenith | 8672524 |
| 2671 | 36900.37000.37100.38100.39100.40900.41600.92700.1440200 | Toilet flooring work | 7d | 2026-10-05 | 2026-10-12 | 2655, 2670 |  | Zenith | 8672534 |
| 2672 | 36900.37000.37100.38100.39100.40900.41600.92700.1440300 | False Cieling panel fixing | 10d | 2026-10-12 | 2026-10-22 | 2656, 2671 |  | Zenith | 8672544 |
| 2673 | 36900.37000.37100.38100.39100.40900.41600.92700.1440400 | Living dinning flooring | 13d | 2026-10-12 | 2026-10-25 | 2657, 2671 |  | Zenith | 8672554 |
| 2674 | 36900.37000.37100.38100.39100.40900.41600.92700.1440500 | Putty primer coat | 12d | 2026-10-25 | 2026-12-21 | 2658, 2673 |  | Zenith | 8672564 |
| 2675 | 36900.37000.37100.38100.39100.40900.41600.92700.1440600 | Aluminium door-window fixing | 15d | 2027-02-14 | 2027-02-28 | 2659, 2669, 2673 |  | Zenith | 8672574 |
| 2676 | 36900.37000.37100.38100.39100.40900.41600.92700.1440700 | Door shutter fixing (Pre Hung) | 8d | 2026-12-21 | 2026-12-29 | 2660, 2674 |  | Zenith | 8672584 |
| 2677 | 36900.37000.37100.38100.39100.40900.41600.92700.1440800 | Electrical wiring work | 12d | 2026-12-29 | 2027-01-10 | 2661, 2676 |  | Zenith | 8672594 |
| 2678 | 36900.37000.37100.38100.39100.40900.41600.92700.1440900 | Painting 1st coat | 15d | 2027-03-16 | 2027-03-30 | 2662, 2677 |  | Zenith | 8672604 |

| ID | WBS | Task | Duration | Start | Finish | Predecessors | Constraint | Calendar | Unique_Task_ID |
| --- | --- | --- | --- | --- | --- | --- | --- | --- | --- |
| 2679 | 36900.37000.37100.38100.39100.40900.41600.59200 | **35th Floor** | 238.75d | 2026-08-19 | 2027-05-29 |  | start no earlier than 2026-08-19 | Zenith | 8648284 |
| 2680 | 36900.37000.37100.38100.39100.40900.41600.59200.1441000 | Block Work | 10d | 2026-08-19 | 2026-08-29 | 2130, 2664 |  | Zenith | 8672614 |
| 2681 | 36900.37000.37100.38100.39100.40900.41600.59200.1441100 | Fire sprinkler pipe fixing | 6d | 2026-08-29 | 2026-09-04 | 2665, 2680 |  | Zenith | 8672624 |
| 2682 | 36900.37000.37100.38100.39100.40900.41600.59200.1441200 | Internal Plumbing Works | 10d | 2026-08-29 | 2026-09-08 | 2666, 2680 |  | Zenith | 8672634 |
| 2683 | 36900.37000.37100.38100.39100.40900.41600.59200.1441300 | Waterproofing | 14d | 2026-09-20 | 2026-10-04 | 2667, 2682 |  | Zenith | 8672644 |
| 2684 | 36900.37000.37100.38100.39100.40900.41600.59200.1441400 | Internal Plaster | 14d | 2026-09-25 | 2026-10-09 | 2668, 2682, 2683FF+5d |  | Zenith | 8672654 |
| 2685 | 36900.37000.37100.38100.39100.40900.41600.59200.1441500 | IPS flooring work | 10d | 2026-10-09 | 2026-10-19 | 2669, 2683, 2684 |  | Zenith | 8672664 |
| 2686 | 36900.37000.37100.38100.39100.40900.41600.59200.1441600 | Toilet dado work | 10d | 2026-10-19 | 2026-10-29 | 2670, 2685 |  | Zenith | 8672674 |
| 2687 | 36900.37000.37100.38100.39100.40900.41600.59200.1441700 | Toilet flooring work | 7d | 2026-10-29 | 2026-12-20 | 2671, 2686 |  | Zenith | 8672684 |
| 2688 | 36900.37000.37100.38100.39100.40900.41600.59200.1441800 | False ceiling | 10d | 2026-12-20 | 2026-12-30 | 2672, 2687 |  | Zenith | 8672694 |
| 2689 | 36900.37000.37100.38100.39100.40900.41600.59200.1441900 | Living dinning flooring | 13d | 2026-12-20 | 2027-01-02 | 2673, 2687 |  | Zenith | 8672704 |
| 2690 | 36900.37000.37100.38100.39100.40900.41600.59200.1442000 | Putty Primer coat | 12d | 2027-01-02 | 2027-01-14 | 2674, 2681, 2688, 2689 |  | Zenith | 8672714 |
| 2691 | 36900.37000.37100.38100.39100.40900.41600.59200.1442100 | Aluminium door-window fixing | 15d | 2027-03-01 | 2027-03-15 | 2675, 2685, 2689 |  | Zenith | 8672724 |
| 2692 | 36900.37000.37100.38100.39100.40900.41600.59200.1442200 | Door shutter fixing (Pre Hung) | 8d | 2027-01-14 | 2027-01-22 | 2676, 2690 |  | Zenith | 8672734 |
| 2693 | 36900.37000.37100.38100.39100.40900.41600.59200.1442300 | Electrical wiring work | 12d | 2027-01-22 | 2027-02-03 | 2677, 2692 |  | Zenith | 8672744 |
| 2694 | 36900.37000.37100.38100.39100.40900.41600.59200.1442400 | Painting 1st coat | 15d | 2027-03-31 | 2027-04-14 | 2678, 2693 |  | Zenith | 8672754 |
| 2695 | 36900.37000.37100.38100.39100.40900.41600.59200.1442500 | Misc. Works | 45d | 2027-04-15 | 2027-05-29 | 2694 |  | Zenith | 8672764 |
| 2696 | 36900.37000.37100.38100.39100.40900.223700 | **Terrace Finishing** | 116d | 2026-08-19 | 2027-01-26 |  | start no earlier than 2026-08-19 | Zenith | 8656734 |
| 2697 | 36900.37000.37100.38100.39100.40900.223700.939500 | Terrace waterproofing | 40d | 2026-08-19 | 2026-09-27 | 2094FS+2d |  | Zenith | 8690014 |
| 2698 | 36900.37000.37100.38100.39100.40900.223700.939600 | Terrace finishing | 75d | 2026-09-29 | 2027-01-26 | 2697FS+1d |  | Zenith | 8690004 |
| 2699 | 36900.37000.37100.38100.39100.40900.48400 | **Balcony Railing** | 376d | 2025-10-09 | 2027-01-18 |  | start no earlier than 2025-10-09 | Zenith | 8648164 |
| 2700 | 36900.37000.37100.38100.39100.40900.48400.939700 | 1st Floor | 8d | 2025-10-09 | 2025-10-17 | 2161FF |  | Zenith | 8689994 |
| 2701 | 36900.37000.37100.38100.39100.40900.48400.939800 | 2nd Floor | 8d | 2025-10-26 | 2025-12-18 | 2700, 2177 |  | Zenith | 8689984 |
| 2702 | 36900.37000.37100.38100.39100.40900.48400.939900 | 3rd Floor | 8d | 2025-12-19 | 2025-12-27 | 2701, 2193 |  | Zenith | 8689974 |
| 2703 | 36900.37000.37100.38100.39100.40900.48400.940000 | 4th Floor | 8d | 2025-12-28 | 2026-01-05 | 2702, 2209 |  | Zenith | 8689964 |
| 2704 | 36900.37000.37100.38100.39100.40900.48400.940100 | 5th Floor | 8d | 2026-01-06 | 2026-01-14 | 2703, 2225 |  | Zenith | 8689954 |
| 2705 | 36900.37000.37100.38100.39100.40900.48400.940200 | 6th Floor | 8d | 2026-01-15 | 2026-01-23 | 2704, 2241 |  | Zenith | 8689944 |
| 2706 | 36900.37000.37100.38100.39100.40900.48400.940300 | 7th Floor | 8d | 2026-01-24 | 2026-02-01 | 2705, 2257 |  | Zenith | 8689934 |
| 2707 | 36900.37000.37100.38100.39100.40900.48400.940400 | 8th Floor | 8d | 2026-02-02 | 2026-02-10 | 2706, 2273 |  | Zenith | 8689924 |
| 2708 | 36900.37000.37100.38100.39100.40900.48400.940500 | 9th Floor | 8d | 2026-02-11 | 2026-02-19 | 2707, 2289 |  | Zenith | 8689914 |
| 2709 | 36900.37000.37100.38100.39100.40900.48400.940600 | 10th Floor | 8d | 2026-02-20 | 2026-02-28 | 2708, 2305 |  | Zenith | 8689904 |
| 2710 | 36900.37000.37100.38100.39100.40900.48400.940700 | 11th Floor | 8d | 2026-03-01 | 2026-03-09 | 2709, 2321 |  | Zenith | 8689894 |
| 2711 | 36900.37000.37100.38100.39100.40900.48400.940800 | 12th Floor | 8d | 2026-03-10 | 2026-03-18 | 2710, 2337 |  | Zenith | 8689884 |
| 2712 | 36900.37000.37100.38100.39100.40900.48400.940900 | 13th Floor | 8d | 2026-03-19 | 2026-03-27 | 2711, 2353 |  | Zenith | 8689874 |
| 2713 | 36900.37000.37100.38100.39100.40900.48400.941000 | 14th Floor | 8d | 2026-03-28 | 2026-04-05 | 2712, 2369 |  | Zenith | 8689864 |
| 2714 | 36900.37000.37100.38100.39100.40900.48400.941100 | 15th Floor | 8d | 2026-04-06 | 2026-04-14 | 2713, 2385 |  | Zenith | 8689854 |
| 2715 | 36900.37000.37100.38100.39100.40900.48400.941200 | 16th Floor | 8d | 2026-04-15 | 2026-04-23 | 2714, 2401 |  | Zenith | 8689844 |
| 2716 | 36900.37000.37100.38100.39100.40900.48400.941300 | 17th Floor | 8d | 2026-04-24 | 2026-05-02 | 2715, 2417 |  | Zenith | 8689834 |
| 2717 | 36900.37000.37100.38100.39100.40900.48400.941400 | 18th Floor | 8d | 2026-05-03 | 2026-05-11 | 2716, 2433 |  | Zenith | 8689824 |
| 2718 | 36900.37000.37100.38100.39100.40900.48400.941500 | 19th Floor | 8d | 2026-05-12 | 2026-05-20 | 2717, 2449 |  | Zenith | 8689814 |
| 2719 | 36900.37000.37100.38100.39100.40900.48400.941600 | 20th Floor | 8d | 2026-05-22 | 2026-05-30 | 2718, 2465 |  | Zenith | 8689804 |
| 2720 | 36900.37000.37100.38100.39100.40900.48400.941700 | 21st Floor | 8d | 2026-06-01 | 2026-06-09 | 2719, 2481 |  | Zenith | 8689794 |
| 2721 | 36900.37000.37100.38100.39100.40900.48400.941800 | 22nd Floor | 8d | 2026-06-10 | 2026-06-18 | 2720, 2497 |  | Zenith | 8689784 |
| 2722 | 36900.37000.37100.38100.39100.40900.48400.941900 | 23rd Floor | 8d | 2026-06-19 | 2026-06-27 | 2721, 2513 |  | Zenith | 8689774 |
| 2723 | 36900.37000.37100.38100.39100.40900.48400.942000 | 24th Floor | 8d | 2026-06-28 | 2026-07-06 | 2722, 2529 |  | Zenith | 8689764 |
| 2724 | 36900.37000.37100.38100.39100.40900.48400.942100 | 25th Floor | 8d | 2026-07-06 | 2026-07-14 | 2723, 2545 |  | Zenith | 8689754 |
| 2725 | 36900.37000.37100.38100.39100.40900.48400.942200 | 26th Floor | 8d | 2026-07-14 | 2026-07-22 | 2724, 2561 |  | Zenith | 8689744 |
| 2726 | 36900.37000.37100.38100.39100.40900.48400.942300 | 27th Floor | 8d | 2026-07-22 | 2026-07-30 | 2725, 2577 |  | Zenith | 8689734 |
| 2727 | 36900.37000.37100.38100.39100.40900.48400.942400 | 28th Floor | 8d | 2026-07-30 | 2026-08-07 | 2726, 2593 |  | Zenith | 8689724 |
| 2728 | 36900.37000.37100.38100.39100.40900.48400.942500 | 29th Floor | 8d | 2026-08-30 | 2026-09-07 | 2727, 2609 |  | Zenith | 8689714 |
| 2729 | 36900.37000.37100.38100.39100.40900.48400.942600 | 30th Floor | 8d | 2026-09-13 | 2026-09-21 | 2728, 2625 |  | Zenith | 8689704 |
| 2730 | 36900.37000.37100.38100.39100.40900.48400.942700 | 31st Floor | 8d | 2026-09-27 | 2026-10-05 | 2729, 2641 |  | Zenith | 8689694 |
| 2731 | 36900.37000.37100.38100.39100.40900.48400.942800 | 32nd Floor | 8d | 2026-10-11 | 2026-10-19 | 2730, 2657 |  | Zenith | 8689684 |
| 2732 | 36900.37000.37100.38100.39100.40900.48400.942900 | 33rd Floor | 8d | 2026-10-25 | 2026-12-17 | 2731, 2673 |  | Zenith | 8689674 |
| 2733 | 36900.37000.37100.38100.39100.40900.48400.943000 | 34th Floor | 8d | 2027-01-02 | 2027-01-10 | 2732, 2689 |  | Zenith | 8689664 |
| 2734 | 36900.37000.37100.38100.39100.40900.48400.943100 | 35th Floor | 8d | 2027-01-10 | 2027-01-18 | 2733 |  | Zenith | 8689654 |

| ID | WBS | Task | Duration | Start | Finish | Predecessors | Constraint | Calendar | Unique_Task_ID |
| --- | --- | --- | --- | --- | --- | --- | --- | --- | --- |
| 2735 | 36900.37000.37100.38100.39100.40900.117500 | **Common Area Finishing** | 337d | 2026-03-28 | 2027-04-14 |  | start no earlier than 2026-03-28 | Zenith | 8651684 |
| 2736 | 36900.37000.37100.38100.39100.40900.117500.943200 | Masonary Work | 40d | 2026-03-28 | 2026-05-07 | 2369 |  | Zenith | 8689644 |
| 2737 | 36900.37000.37100.38100.39100.40900.117500.943300 | Fire sprinkler pipe fixing | 40d | 2026-05-07 | 2026-06-16 | 2736 |  | Zenith | 8689634 |
| 2738 | 36900.37000.37100.38100.39100.40900.117500.943400 | Corridoor, staircase, shaft Plaster & whitewash | 120d | 2026-05-07 | 2026-09-04 | 2736 |  | Zenith | 8689624 |
| 2739 | 36900.37000.37100.38100.39100.40900.117500.943500 | Staircase railing fixing | 100d | 2026-05-07 | 2026-08-15 | 2736 |  | Zenith | 8689614 |
| 2740 | 36900.37000.37100.38100.39100.40900.117500.943600 | Fire staircase flooring | 120d | 2026-05-17 | 2026-09-14 | 2739FF+30d |  | Zenith | 8689604 |
| 2741 | 36900.37000.37100.38100.39100.40900.117500.943700 | Main staircase flooring | 120d | 2026-05-17 | 2026-09-14 | 2739FF+30d |  | Zenith | 8689594 |
| 2742 | 36900.37000.37100.38100.39100.40900.117500.943800 | Fire door work | 45d | 2026-09-14 | 2026-10-29 | 2740 |  | Zenith | 8689584 |
| 2743 | 36900.37000.37100.38100.39100.40900.117500.943900 | Lobby flooring & Corridor | 120d | 2026-06-11 | 2026-10-09 | 2741FF+25d |  | Zenith | 8689574 |
| 2744 | 36900.37000.37100.38100.39100.40900.117500.944000 | Ceiling & wall putty | 120d | 2026-09-01 | 2027-02-13 | 2742FF+15d, 2743FF+30d, 2690FF+30d |  | Zenith | 8689564 |
| 2745 | 36900.37000.37100.38100.39100.40900.117500.944100 | Electrical wiring work | 120d | 2026-09-16 | 2027-02-28 | 2744FF+15d |  | Zenith | 8689554 |
| 2746 | 36900.37000.37100.38100.39100.40900.117500.944200 | Ceiling & wall painting | 120d | 2026-10-06 | 2027-03-20 | 2737FS+20d, 2744SS+20d, 2745FF+20d |  | Zenith | 8689544 |
| 2747 | 36900.37000.37100.38100.39100.40900.117500.944300 | Light fixture supply & installation | 45d | 2027-02-28 | 2027-04-14 | 2744, 2746FF+25d |  | Zenith | 8689534 |
| 2748 | 36900.37000.37100.38100.121400 | **MEP work** | 296.75d | 2026-06-21 | 2027-05-28 |  | start no earlier than 2026-06-21 | Zenith | 8651844 |
| 2749 | 36900.37000.37100.38100.121400.126600 | **Electrical work** | 240d | 2026-08-17 | 2027-05-28 |  | start no earlier than 2026-08-17 | Zenith | 8652134 |
| 2750 | 36900.37000.37100.38100.121400.126600.797400 | Cable Tray | 90d | 2026-08-17 | 2026-12-29 | 2094 |  | Zenith | 8724884 |
| 2751 | 36900.37000.37100.38100.121400.126600.797500 | Cable, main & sub main | 60d | 2026-10-01 | 2027-01-13 | 2750SS+45d |  | Zenith | 8724874 |
| 2752 | 36900.37000.37100.38100.121400.126600.797600 | LT panel & DB | 90d | 2026-12-30 | 2027-03-29 | 2750 |  | Zenith | 8724864 |
| 2753 | 36900.37000.37100.38100.121400.126600.797700 | Rising main | 90d | 2027-01-14 | 2027-04-13 | 2750FS+15d |  | Zenith | 8724854 |
| 2754 | 36900.37000.37100.38100.121400.126600.797800 | Earthing Works | 60d | 2027-01-19 | 2027-03-19 | 2750FS+20d |  | Zenith | 8724844 |
| 2755 | 36900.37000.37100.38100.121400.126600.797900 | Energy meter | 60d | 2027-03-30 | 2027-05-28 | 2751, 2754FS+10d |  | Zenith | 8724834 |
| 2756 | 36900.37000.37100.38100.121400.126600.798000 | HVAC & Exhast fan | 120d | 2026-12-25 | 2027-04-23 | 2750FS-5d |  | Zenith | 8724824 |
| 2757 | 36900.37000.37100.38100.121400.126600.798100 | FTTH | 60d | 2027-03-15 | 2027-05-13 | 2752FS-15d |  | Zenith | 8724814 |
| 2758 | 36900.37000.37100.38100.121400.126600.798200 | Security System - FA & PA | 60d | 2027-03-30 | 2027-05-28 | 2752, 2753FF+10d, 2756FF+2d, 2757FF |  | Zenith | 8724804 |

| ID | WBS | Task | Duration | Start | Finish | Predecessors | Constraint | Calendar | Unique_Task_ID |
| --- | --- | --- | --- | --- | --- | --- | --- | --- | --- |
| 2759 | 36900.37000.37100.38100.121400.143200 | **Plumbing work** | 175d | 2026-09-28 | 2027-05-05 |  | start no earlier than 2026-09-28 | Zenith | 8652634 |
| 2760 | 36900.37000.37100.38100.121400.143200.798300 | Terrace looping | 45d | 2026-09-28 | 2026-12-26 | 2697 |  | Zenith | 8724794 |
| 2761 | 36900.37000.37100.38100.121400.143200.798400 | Shaft Plumbing | 70d | 2026-12-27 | 2027-03-06 | 2760, 2738FS-30d |  | Zenith | 8724784 |
| 2762 | 36900.37000.37100.38100.121400.143200.798500 | CP sanitary fixture supply | 45d | 2027-03-07 | 2027-04-20 | 2761 |  | Zenith | 8724774 |
| 2763 | 36900.37000.37100.38100.121400.143200.798600 | Cold & flushing water supply | 45d | 2027-03-07 | 2027-04-20 | 2761 |  | Zenith | 8724764 |
| 2764 | 36900.37000.37100.38100.121400.143200.798700 | Misc work | 30d | 2027-04-06 | 2027-05-05 | 2762FS-15d, 2763FS-15d |  | Zenith | 8724754 |
| 2765 | 36900.37000.37100.38100.121400.199300 | **Fire fighting work** | 204d | 2026-06-21 | 2027-02-25 |  | start no earlier than 2026-06-21 | Zenith | 8655954 |
| 2766 | 36900.37000.37100.38100.121400.199300.798800 | Fire hydrant work | 75d | 2026-06-21 | 2026-09-04 | 2738SS+45d |  | Zenith | 8724744 |
| 2767 | 36900.37000.37100.38100.121400.199300.798900 | Pipe connection & sprinkler installation | 45d | 2027-01-11 | 2027-02-25 | 2766FS+1d, 2769FF+15d |  | Zenith | 8724734 |
| 2768 | 36900.37000.37100.38100.121400.199300.799000 | Shaft Downtake works | 60d | 2026-09-28 | 2027-01-11 | 2697FS+0.25d, 2738FS-30d |  | Zenith | 8724724 |
| 2769 | 36900.37000.37100.38100.121400.199300.799100 | Connection to pump room | 30d | 2027-01-11 | 2027-02-10 | 2768 |  | Zenith | 8724714 |
| 2770 | 36900.37000.37100.38100.121400.218400 | **Lift work** | 160d | 2026-08-29 | 2027-03-22 |  | start no earlier than 2026-08-29 | Zenith | 8656644 |
| 2771 | 36900.37000.37100.38100.121400.218400.799200 | Lift Shaft/Pit Handover | 40d | 2026-08-29 | 2026-10-08 | 2132FS+5d |  | Zenith | 8724704 |
| 2772 | 36900.37000.37100.38100.121400.218400.799300 | Lift installation work | 60d | 2026-10-08 | 2027-01-21 | 2771 |  | Zenith | 8724694 |
| 2773 | 36900.37000.37100.38100.121400.218400.799400 | Lift testing and commissioning | 60d | 2027-01-21 | 2027-03-22 | 2772, 2743 |  | Zenith | 8724684 |
| 2774 | 36900.37000.37100.38100.225900 | **Basement lobby** | 90d | 2026-10-23 | 2027-03-07 |  | start no earlier than 2026-10-23 | Zenith | 8656964 |
| 2775 | 36900.37000.37100.38100.225900.373800 | Basement lobby | 90d | 2026-10-23 | 2027-03-07 | 2771FS+15d, 1911FS+15d, 1912FS+15d |  | Zenith | 8731684 |
| 2776 | 36900.37000.37100.38100.221500 | **External Paint Works** | 146.75d | 2027-01-18 | 2027-06-13 |  | start no earlier than 2027-01-18 | Zenith | 8656824 |
| 2777 | 36900.37000.37100.38100.221500.373900 | Surface prepration with Primer | 60d | 2027-01-18 | 2027-03-19 | 2132FS+2d, 2734 |  | Zenith | 8731674 |
| 2778 | 36900.37000.37100.38100.221500.374000 | External Painting (Texture & first coat) | 90d | 2027-03-16 | 2027-06-13 | 2777FF+10d, 2691 |  | Zenith | 8731664 |
| 2779 | 36900.37000.37100.38100.271900 | OC Application/Readiness | 2d | 2027-08-09 | 2027-08-10 | 2089FF+349d, 2778FF, 2767FF+30d, 2764FF, 2775FF+15d, 2773FF, 2758FF, 2755FF, 2698FF+30d, 2695FF, 2744FF+0.25d, 2734FF, 2691FF+0.25d |  | Zenith | 8735414 |
| 2780 | 36900.37000.37100.38100.272000 | OC Receipt | 60d | 2027-08-11 | 2027-10-09 | 2779 |  | Zenith | 8735404 |
| 2781 | 36900.37000.37100.38100.125700 | **Post OC activities** | 473.75d | 2027-04-29 | 2028-09-28 |  | start no earlier than 2027-04-29 | Zenith | 8652104 |
| 2782 | 36900.37000.37100.38100.125700.374100 | CP & Sanitaryware | 150d | 2027-10-10 | 2028-04-21 | 2780 |  | Zenith | 8731654 |
| 2783 | 36900.37000.37100.38100.125700.374200 | Electrical Fixtures And Fittings | 150d | 2027-10-10 | 2028-04-21 | 2780 |  | Zenith | 8731644 |
| 2784 | 36900.37000.37100.38100.125700.374300 | Final coat paint external | 100d | 2027-10-10 | 2028-03-02 | 2780 |  | Zenith | 8731634 |
| 2785 | 36900.37000.37100.38100.125700.374400 | Final Coat Paint Internal | 150d | 2027-10-10 | 2028-04-21 | 2780, 2694 |  | Zenith | 8731624 |
| 2786 | 36900.37000.37100.38100.125700.374500 | Balcony Railing Glass Fixing | 120d | 2028-04-22 | 2028-08-19 | 2785, 2734FS+30d |  | Zenith | 8731614 |
| 2787 | 36900.37000.37100.38100.125700.374600 | MEP | 150d | 2027-04-29 | 2027-09-26 | 2747FS+15d |  | Zenith | 8731604 |
| 2788 | 36900.37000.37100.38100.125700.374700 | Wooden Flooring | 180d | 2027-09-25 | 2028-05-06 | 2785FF+15d |  | Zenith | 8731594 |
| 2789 | 36900.37000.37100.38100.125700.374800 | Split AC Units installation | 100d | 2028-05-22 | 2028-08-29 | 2788FS+15d |  | Zenith | 8731584 |
| 2790 | 36900.37000.37100.38100.125700.374900 | Misc. works (Modular Kitchen & Others) | 180d | 2028-04-02 | 2028-09-28 | 2789FF+30d |  | Zenith | 8731574 |
| 2791 | 36900.37000.37100.38100.272100 | Offer To Possession | 180d | 2028-04-22 | 2028-10-18 | 2780FS+150d, 2782FF+20d, 2783FF+20d, 2784FF+20d, 2789FF+10d, 2787FF+30d, 2786FF+15d, 2790FF+15d |  | Zenith | 8735394 |

| ID | WBS | Task | Duration | Start | Finish | Predecessors | Complete | Constraint | Calendar | Unique_Task_ID |
| --- | --- | --- | --- | --- | --- | --- | --- | --- | --- | --- |
| 2792 | 36900.37000.37100.38500 | **Tower 03** | 1484d | 2024-03-23 | 2028-10-11 |  | 3% | start no earlier than 2024-03-23 | Zenith | 8647614 |
| 2793 | 36900.37000.37100.38500.63400 | **Sub-Structure Works** | 550d | 2024-03-23 | 2025-12-22 |  | 56% | start no earlier than 2024-03-23 | Zenith | 8648384 |
| 2794 | 36900.37000.37100.38500.63400.142700 | **Soil Bed Preparation** | 205d | 2024-03-23 | 2024-10-13 |  | 100% | start no earlier than 2024-03-23 | Zenith | 8652754 |
| 2795 | 36900.37000.37100.38500.63400.142700.230200 | Excavation (2m) | 55d | 2024-05-02 | 2024-06-25 | 1868SS+10d | 100% | start no earlier than 2024-05-02 | Zenith | 8724674 |
| 2796 | 36900.37000.37100.38500.63400.142700.230100 | Soldier Piling shop drawing approval | 54d | 2024-04-15 | 2024-07-09 | 2795 | 100% | start no earlier than 2024-04-15 | Zenith | 8724664 |
| 2797 | 36900.37000.37100.38500.63400.142700.230000 | Mobilization & Soldier Piling with Excavation (4m) | 100d | 2024-03-23 | 2024-06-30 | 2796FS+26d | 100% | start no earlier than 2024-03-23 | Zenith | 8724654 |
| 2798 | 36900.37000.37100.38500.63400.142700.229900 | Balance B3 bulk Excavation | 15d | 2024-06-16 | 2024-06-30 | 2797 | 100% | start no earlier than 2024-06-16 | Zenith | 8724644 |
| 2799 | 36900.37000.37100.38500.63400.142700.229800 | Soil dressing & ATT | 8d | 2024-10-06 | 2024-10-13 | 2798FS+8d | 100% | start no earlier than 2024-10-06 | Zenith | 8724634 |
| 2800 | 36900.37000.37100.38500.63400.119400 | **Structure Works** | 208d | 2024-10-11 | 2025-06-20 |  | 49% | start no earlier than 2024-10-11 | Zenith | 8651804 |
| 2801 | 36900.37000.37100.38500.63400.119400.140400 | **Raft Foundation** | 59d | 2024-10-11 | 2025-01-22 |  | 100% | start no earlier than 2024-10-11 | Zenith | 8652664 |
| 2802 | 36900.37000.37100.38500.63400.119400.140400.239700 | PCC | 10d | 2024-10-11 | 2024-10-26 | 2799 | 100% | start no earlier than 2024-10-11 | Zenith | 8689524 |
| 2803 | 36900.37000.37100.38500.63400.119400.140400.239600 | Column/SW layout marking | 3d | 2024-10-25 | 2024-10-29 | 2802 | 100% | start no earlier than 2024-10-25 | Zenith | 8689514 |
| 2804 | 36900.37000.37100.38500.63400.119400.140400.239500 | Reinforcement | 44d | 2024-10-14 | 2025-01-20 | 2803SS+3d | 100% | start no earlier than 2024-10-14 | Zenith | 8689504 |
| 2805 | 36900.37000.37100.38500.63400.119400.140400.255000 | Formwork (Conventional) | 11d | 2025-01-10 | 2025-01-20 | 2804FF+3d | 100% | start no earlier than 2025-01-10 | Zenith | 8689494 |
| 2806 | 36900.37000.37100.38500.63400.119400.140400.239400 | Concreting | 2d | 2025-01-21 | 2025-01-22 | 2805FF+3d | 100% | start no earlier than 2025-01-21 | Zenith | 8689484 |
| 2807 | 36900.37000.37100.38500.63400.119400.132700 | **Basement 03 Roof Slab (Dummy/Stitch Slab)** | 61d | 2025-02-05 | 2025-04-06 |  | 90% | start no earlier than 2025-02-05 | Zenith | 8652414 |
| 2808 | 36900.37000.37100.38500.63400.119400.132700.239300 | Column/SW Reinforcement | 12d | 2025-02-05 | 2025-03-02 | 2806 | 100% | start no earlier than 2025-02-05 | Zenith | 8689474 |
| 2809 | 36900.37000.37100.38500.63400.119400.132700.239200 | SW Formwork (Conventional) | 7d | 2025-02-16 | 2025-03-09 | 2808SS+10d | 100% | start no earlier than 2025-02-16 | Zenith | 8689464 |
| 2810 | 36900.37000.37100.38500.63400.119400.132700.239100 | Column/SW Concreting | 10d | 2025-02-20 | 2025-03-09 | 2809SS+5d | 100% | start no earlier than 2025-02-20 | Zenith | 8689454 |
| 2811 | 36900.37000.37100.38500.63400.119400.132700.239000 | Slab Formwork (Conventional) | 12d | 2025-03-04 | 2025-03-30 | 2810SS+17d | 100% | start no earlier than 2025-03-04 | Zenith | 8689444 |
| 2812 | 36900.37000.37100.38500.63400.119400.132700.238900 | Slab Reinforcement + Conduting | 15d | 2025-03-18 | 2025-04-02 | 2811 | 86% | start no earlier than 2025-03-18 | Zenith | 8689434 |
| 2813 | 36900.37000.37100.38500.63400.119400.132700.238800 | Concreting | 5d | 2025-03-30 | 2025-04-06 | 2812FS-4d | 20% |  | Zenith | 8689424 |
| 2814 | 36900.37000.37100.38500.63400.119400.140300 | **Basement 02 Roof Slab** | 25d | 2025-04-07 | 2025-05-01 |  |  | start no earlier than 2025-04-07 | Zenith | 8652404 |
| 2815 | 36900.37000.37100.38500.63400.119400.140300.944400 | Column/SW Reinforcement | 9d | 2025-04-07 | 2025-04-15 | 2813 |  |  | Zenith | 8689414 |
| 2816 | 36900.37000.37100.38500.63400.119400.140300.944500 | SW Formwork (Conventional) | 9d | 2025-04-11 | 2025-04-19 | 2815SS+4d |  |  | Zenith | 8689404 |
| 2817 | 36900.37000.37100.38500.63400.119400.140300.944600 | Column/SW Concreting | 9d | 2025-04-15 | 2025-04-23 | 2816SS+4d |  |  | Zenith | 8689394 |
| 2818 | 36900.37000.37100.38500.63400.119400.140300.944700 | Slab Formwork (Conventional) | 9d | 2025-04-19 | 2025-04-27 | 2817SS+4d |  |  | Zenith | 8689384 |
| 2819 | 36900.37000.37100.38500.63400.119400.140300.944800 | Slab Reinforcement + Conduting | 3d | 2025-04-28 | 2025-04-30 | 2818 |  |  | Zenith | 8689374 |
| 2820 | 36900.37000.37100.38500.63400.119400.140300.944900 | Concreting | 1d | 2025-05-01 | 2025-05-01 | 2819 |  |  | Zenith | 8689364 |

| ID | WBS | Task | Duration | Start | Finish | Predecessors | Constraint | Calendar | Unique_Task_ID |
| --- | --- | --- | --- | --- | --- | --- | --- | --- | --- |
| 2821 | 36900.37000.37100.38500.63400.119400.140200 | **Basement 01 Roof Slab** | 25d | 2025-05-02 | 2025-05-26 |  | start no earlier than 2025-05-02 | Zenith | 8652394 |
| 2822 | 36900.37000.37100.38500.63400.119400.140200.945000 | Column/SW Reinforcement | 9d | 2025-05-02 | 2025-05-10 | 2820 |  | Zenith | 8689354 |
| 2823 | 36900.37000.37100.38500.63400.119400.140200.945100 | SW Formwork (Conventional) | 9d | 2025-05-06 | 2025-05-14 | 2822SS+4d |  | Zenith | 8689344 |
| 2824 | 36900.37000.37100.38500.63400.119400.140200.945200 | Column/SW Concreting | 9d | 2025-05-10 | 2025-05-18 | 2823SS+4d |  | Zenith | 8689334 |
| 2825 | 36900.37000.37100.38500.63400.119400.140200.945300 | Slab Formwork (Conventional) | 9d | 2025-05-14 | 2025-05-22 | 2824SS+4d |  | Zenith | 8689324 |
| 2826 | 36900.37000.37100.38500.63400.119400.140200.945400 | Slab Reinforcement + Conduting | 3d | 2025-05-23 | 2025-05-25 | 2825 |  | Zenith | 8689314 |
| 2827 | 36900.37000.37100.38500.63400.119400.140200.945500 | Concreting | 1d | 2025-05-26 | 2025-05-26 | 2826 |  | Zenith | 8689304 |
| 2828 | 36900.37000.37100.38500.63400.119400.140100 | **Podium Slab/Ground Roof Floor Slab** | 25d | 2025-05-27 | 2025-06-20 |  | start no earlier than 2025-05-27 | Zenith | 8652384 |
| 2829 | 36900.37000.37100.38500.63400.119400.140100.945600 | Column/SW Reinforcement | 9d | 2025-05-27 | 2025-06-04 | 2827 |  | Zenith | 8689294 |
| 2830 | 36900.37000.37100.38500.63400.119400.140100.945700 | SW Formwork (Conventional) | 9d | 2025-05-31 | 2025-06-08 | 2829SS+4d |  | Zenith | 8689284 |
| 2831 | 36900.37000.37100.38500.63400.119400.140100.945800 | Column/SW Concreting | 9d | 2025-06-04 | 2025-06-12 | 2830SS+4d |  | Zenith | 8689274 |
| 2832 | 36900.37000.37100.38500.63400.119400.140100.945900 | Slab Formwork (Conventional) | 9d | 2025-06-08 | 2025-06-16 | 2831SS+4d |  | Zenith | 8689264 |
| 2833 | 36900.37000.37100.38500.63400.119400.140100.946000 | Slab Reinforcement + Conduting | 3d | 2025-06-17 | 2025-06-19 | 2832 |  | Zenith | 8689254 |
| 2834 | 36900.37000.37100.38500.63400.119400.140100.946100 | Concreting | 1d | 2025-06-20 | 2025-06-20 | 2833 |  | Zenith | 8689244 |
| 2835 | 36900.37000.37100.38500.63400.195200 | **Substructure Finishes** | 110d | 2025-07-21 | 2025-12-22 |  | start no earlier than 2025-07-21 | Zenith | 8654524 |
| 2836 | 36900.37000.37100.38500.63400.195200.799500 | Masonary Work | 35d | 2025-07-21 | 2025-08-24 | 2834FS+30d |  | Zenith | 8724624 |
| 2837 | 36900.37000.37100.38500.63400.195200.799600 | Plaster Work | 30d | 2025-08-25 | 2025-09-23 | 2836 |  | Zenith | 8724614 |
| 2838 | 36900.37000.37100.38500.63400.195200.799700 | Structural Steel work | 50d | 2025-08-20 | 2025-10-08 | 2834FS+60d |  | Zenith | 8724604 |
| 2839 | 36900.37000.37100.38500.63400.195200.799800 | White Wash | 35d | 2025-10-04 | 2025-12-22 | 2837FS+10d |  | Zenith | 8724594 |
| 2840 | 36900.37000.37100.38500.39500 | **Superstructure** | 611d | 2025-06-21 | 2027-05-22 |  | start no earlier than 2025-06-21 | Zenith | 8647724 |
| 2841 | 36900.37000.37100.38500.39500.45200 | **RCC structure** | 375d | 2025-06-21 | 2026-08-14 |  | start no earlier than 2025-06-21 | Zenith | 8647974 |
| 2842 | 36900.37000.37100.38500.39500.45200.172100 | **1st Floor Roof slab** | 24d | 2025-06-21 | 2025-07-14 |  | start no earlier than 2025-06-21 | Zenith | 8653514 |
| 2843 | 36900.37000.37100.38500.39500.45200.172100.946200 | Reinforcement | 19d | 2025-06-21 | 2025-07-09 | 2834 |  | Zenith | 8689234 |
| 2844 | 36900.37000.37100.38500.39500.45200.172100.946300 | Conduiting | 19d | 2025-06-24 | 2025-07-12 | 2843SS+3d |  | Zenith | 8689224 |
| 2845 | 36900.37000.37100.38500.39500.45200.172100.946400 | Formwork | 19d | 2025-06-25 | 2025-07-13 | 2843SS+4d |  | Zenith | 8689214 |
| 2846 | 36900.37000.37100.38500.39500.45200.172100.946500 | Concreting | 1d | 2025-07-14 | 2025-07-14 | 2844FS+1d, 2845 |  | Zenith | 8689204 |

| ID | WBS | Task | Duration | Start | Finish | Predecessors | Constraint | Calendar | Unique_Task_ID |
| --- | --- | --- | --- | --- | --- | --- | --- | --- | --- |
| 2847 | 36900.37000.37100.38500.39500.45200.172000 | **2nd Floor Roof slab** | 21d | 2025-07-15 | 2025-08-04 |  | start no earlier than 2025-07-15 | Zenith | 8653484 |
| 2848 | 36900.37000.37100.38500.39500.45200.172000.946600 | Reinforcement | 16d | 2025-07-15 | 2025-07-30 | 2846 |  | Zenith | 8689194 |
| 2849 | 36900.37000.37100.38500.39500.45200.172000.946700 | Conduiting | 16d | 2025-07-18 | 2025-08-02 | 2848SS+3d |  | Zenith | 8689184 |
| 2850 | 36900.37000.37100.38500.39500.45200.172000.946800 | Formwork | 16d | 2025-07-19 | 2025-08-03 | 2848SS+4d |  | Zenith | 8689174 |
| 2851 | 36900.37000.37100.38500.39500.45200.172000.946900 | Concreting | 1d | 2025-08-04 | 2025-08-04 | 2849FS+1d, 2850 |  | Zenith | 8689164 |
| 2852 | 36900.37000.37100.38500.39500.45200.171900 | **3rd Floor Roof slab** | 15d | 2025-08-05 | 2025-08-19 |  | start no earlier than 2025-08-05 | Zenith | 8653454 |
| 2853 | 36900.37000.37100.38500.39500.45200.171900.947000 | Reinforcement | 10d | 2025-08-05 | 2025-08-14 | 2851 |  | Zenith | 8689154 |
| 2854 | 36900.37000.37100.38500.39500.45200.171900.947100 | Conduiting | 10d | 2025-08-08 | 2025-08-17 | 2853SS+3d |  | Zenith | 8689144 |
| 2855 | 36900.37000.37100.38500.39500.45200.171900.947200 | Formwork | 10d | 2025-08-09 | 2025-08-18 | 2853SS+4d |  | Zenith | 8689134 |
| 2856 | 36900.37000.37100.38500.39500.45200.171900.947300 | Concreting | 1d | 2025-08-19 | 2025-08-19 | 2854FS+1d, 2855 |  | Zenith | 8689124 |
| 2857 | 36900.37000.37100.38500.39500.45200.171800 | **4th floor roof slab** | 9d | 2025-08-20 | 2025-08-28 |  | start no earlier than 2025-08-20 | Zenith | 8653334 |
| 2858 | 36900.37000.37100.38500.39500.45200.171800.947400 | Reinforcement | 6d | 2025-08-20 | 2025-08-25 | 2856 |  | Zenith | 8689114 |
| 2859 | 36900.37000.37100.38500.39500.45200.171800.947500 | Conduiting | 6d | 2025-08-21 | 2025-08-26 | 2858SS+1d |  | Zenith | 8689104 |
| 2860 | 36900.37000.37100.38500.39500.45200.171800.947600 | Formwork | 6d | 2025-08-22 | 2025-08-27 | 2858SS+2d |  | Zenith | 8689094 |
| 2861 | 36900.37000.37100.38500.39500.45200.171800.947700 | Concreting | 1d | 2025-08-28 | 2025-08-28 | 2859FS+1d, 2860 |  | Zenith | 8689084 |
| 2862 | 36900.37000.37100.38500.39500.45200.171700 | **5th floor roof slab** | 9d | 2025-08-29 | 2025-09-06 |  | start no earlier than 2025-08-29 | Zenith | 8653094 |
| 2863 | 36900.37000.37100.38500.39500.45200.171700.947800 | Reinforcement | 6d | 2025-08-29 | 2025-09-03 | 2861 |  | Zenith | 8689074 |
| 2864 | 36900.37000.37100.38500.39500.45200.171700.947900 | Conduiting | 6d | 2025-08-30 | 2025-09-04 | 2863SS+1d |  | Zenith | 8689064 |
| 2865 | 36900.37000.37100.38500.39500.45200.171700.948000 | Formwork | 6d | 2025-08-31 | 2025-09-05 | 2863SS+2d |  | Zenith | 8689054 |
| 2866 | 36900.37000.37100.38500.39500.45200.171700.948100 | Concreting | 1d | 2025-09-06 | 2025-09-06 | 2864FS+1d, 2865 |  | Zenith | 8689044 |
| 2867 | 36900.37000.37100.38500.39500.45200.171600 | **6th floor roof slab** | 9d | 2025-09-07 | 2025-09-15 |  | start no earlier than 2025-09-07 | Zenith | 8652984 |
| 2868 | 36900.37000.37100.38500.39500.45200.171600.948200 | Reinforcement | 6d | 2025-09-07 | 2025-09-12 | 2866 |  | Zenith | 8689034 |
| 2869 | 36900.37000.37100.38500.39500.45200.171600.948300 | Conduiting | 6d | 2025-09-08 | 2025-09-13 | 2868SS+1d |  | Zenith | 8689024 |
| 2870 | 36900.37000.37100.38500.39500.45200.171600.948400 | Formwork | 6d | 2025-09-09 | 2025-09-14 | 2868SS+2d |  | Zenith | 8689014 |
| 2871 | 36900.37000.37100.38500.39500.45200.171600.948500 | Concreting | 1d | 2025-09-15 | 2025-09-15 | 2869FS+1d, 2870 |  | Zenith | 8689004 |

| ID | WBS | Task | Duration | Start | Finish | Predecessors | Constraint | Calendar | Unique_Task_ID |
| --- | --- | --- | --- | --- | --- | --- | --- | --- | --- |
| 2872 | 36900.37000.37100.38500.39500.45200.171400 | **7th floor roof slab** | 9d | 2025-09-16 | 2025-09-24 |  | start no earlier than 2025-09-16 | Zenith | 8652904 |
| 2873 | 36900.37000.37100.38500.39500.45200.171400.948600 | Reinforcement | 6d | 2025-09-16 | 2025-09-21 | 2871 |  | Zenith | 8688994 |
| 2874 | 36900.37000.37100.38500.39500.45200.171400.948700 | Conduiting | 6d | 2025-09-17 | 2025-09-22 | 2873SS+1d |  | Zenith | 8688984 |
| 2875 | 36900.37000.37100.38500.39500.45200.171400.948800 | Formwork | 6d | 2025-09-18 | 2025-09-23 | 2873SS+2d |  | Zenith | 8688974 |
| 2876 | 36900.37000.37100.38500.39500.45200.171400.948900 | Concreting | 1d | 2025-09-24 | 2025-09-24 | 2874FS+1d, 2875 |  | Zenith | 8688964 |
| 2877 | 36900.37000.37100.38500.39500.45200.171300 | **8th floor roof slab** | 9d | 2025-09-25 | 2025-10-03 |  | start no earlier than 2025-09-25 | Zenith | 8652914 |
| 2878 | 36900.37000.37100.38500.39500.45200.171300.949000 | Reinforcement | 6d | 2025-09-25 | 2025-09-30 | 2876 |  | Zenith | 8688954 |
| 2879 | 36900.37000.37100.38500.39500.45200.171300.949100 | Conduiting | 6d | 2025-09-26 | 2025-10-01 | 2878SS+1d |  | Zenith | 8688944 |
| 2880 | 36900.37000.37100.38500.39500.45200.171300.949200 | Formwork | 6d | 2025-09-27 | 2025-10-02 | 2878SS+2d |  | Zenith | 8688934 |
| 2881 | 36900.37000.37100.38500.39500.45200.171300.949300 | Concreting | 1d | 2025-10-03 | 2025-10-03 | 2879FS+1d, 2880 |  | Zenith | 8688924 |
| 2882 | 36900.37000.37100.38500.39500.45200.171200 | **9th floor roof slab** | 9d | 2025-10-04 | 2025-10-12 |  | start no earlier than 2025-10-04 | Zenith | 8652974 |
| 2883 | 36900.37000.37100.38500.39500.45200.171200.949400 | Reinforcement | 6d | 2025-10-04 | 2025-10-09 | 2881 |  | Zenith | 8688914 |
| 2884 | 36900.37000.37100.38500.39500.45200.171200.949500 | Conduiting | 6d | 2025-10-05 | 2025-10-10 | 2883SS+1d |  | Zenith | 8688904 |
| 2885 | 36900.37000.37100.38500.39500.45200.171200.949600 | Formwork | 6d | 2025-10-06 | 2025-10-11 | 2883SS+2d |  | Zenith | 8688894 |
| 2886 | 36900.37000.37100.38500.39500.45200.171200.949700 | Concreting | 1d | 2025-10-12 | 2025-10-12 | 2884FS+1d, 2885 |  | Zenith | 8688884 |
| 2887 | 36900.37000.37100.38500.39500.45200.171000 | **10th floor roof slab** | 9d | 2025-10-13 | 2025-10-21 |  | start no earlier than 2025-10-13 | Zenith | 8653004 |
| 2888 | 36900.37000.37100.38500.39500.45200.171000.949800 | Reinforcement | 6d | 2025-10-13 | 2025-10-18 | 2886 |  | Zenith | 8688874 |
| 2889 | 36900.37000.37100.38500.39500.45200.171000.949900 | Conduiting | 6d | 2025-10-14 | 2025-10-19 | 2888SS+1d |  | Zenith | 8688864 |
| 2890 | 36900.37000.37100.38500.39500.45200.171000.950000 | Formwork | 6d | 2025-10-15 | 2025-10-20 | 2888SS+2d |  | Zenith | 8688854 |
| 2891 | 36900.37000.37100.38500.39500.45200.171000.950100 | Concreting | 1d | 2025-10-21 | 2025-10-21 | 2889FS+1d, 2890 |  | Zenith | 8688844 |
| 2892 | 36900.37000.37100.38500.39500.45200.170800 | **11th floor roof slab** | 9d | 2025-10-22 | 2025-10-30 |  | start no earlier than 2025-10-22 | Zenith | 8653084 |
| 2893 | 36900.37000.37100.38500.39500.45200.170800.950200 | Reinforcement | 6d | 2025-10-22 | 2025-10-27 | 2891 |  | Zenith | 8688834 |
| 2894 | 36900.37000.37100.38500.39500.45200.170800.950300 | Conduiting | 6d | 2025-10-23 | 2025-10-28 | 2893SS+1d |  | Zenith | 8688824 |
| 2895 | 36900.37000.37100.38500.39500.45200.170800.950400 | Formwork | 6d | 2025-10-24 | 2025-10-29 | 2893SS+2d |  | Zenith | 8688814 |
| 2896 | 36900.37000.37100.38500.39500.45200.170800.950500 | Concreting | 1d | 2025-10-30 | 2025-10-30 | 2894FS+1d, 2895 |  | Zenith | 8688804 |

| ID | WBS | Task | Duration | Start | Finish | Predecessors | Constraint | Calendar | Unique_Task_ID |
| --- | --- | --- | --- | --- | --- | --- | --- | --- | --- |
| 2897 | 36900.37000.37100.38500.39500.45200.170700 | **12th floor roof slab** | 9d | 2025-10-31 | 2025-12-23 |  | start no earlier than 2025-10-31 | Zenith | 8653144 |
| 2898 | 36900.37000.37100.38500.39500.45200.170700.950600 | Reinforcement | 6d | 2025-10-31 | 2025-12-20 | 2896 |  | Zenith | 8688794 |
| 2899 | 36900.37000.37100.38500.39500.45200.170700.950700 | Conduiting | 6d | 2025-12-16 | 2025-12-21 | 2898SS+1d |  | Zenith | 8688784 |
| 2900 | 36900.37000.37100.38500.39500.45200.170700.950800 | Formwork | 6d | 2025-12-17 | 2025-12-22 | 2898SS+2d |  | Zenith | 8688774 |
| 2901 | 36900.37000.37100.38500.39500.45200.170700.950900 | Concreting | 1d | 2025-12-23 | 2025-12-23 | 2899FS+1d, 2900 |  | Zenith | 8688764 |
| 2902 | 36900.37000.37100.38500.39500.45200.170400 | **13th floor roof slab** | 9d | 2025-12-24 | 2026-01-01 |  | start no earlier than 2025-12-24 | Zenith | 8653194 |
| 2903 | 36900.37000.37100.38500.39500.45200.170400.951000 | Reinforcement | 6d | 2025-12-24 | 2025-12-29 | 2901 |  | Zenith | 8688754 |
| 2904 | 36900.37000.37100.38500.39500.45200.170400.951100 | Conduiting | 6d | 2025-12-25 | 2025-12-30 | 2903SS+1d |  | Zenith | 8688744 |
| 2905 | 36900.37000.37100.38500.39500.45200.170400.951200 | Formwork | 6d | 2025-12-26 | 2025-12-31 | 2903SS+2d |  | Zenith | 8688734 |
| 2906 | 36900.37000.37100.38500.39500.45200.170400.951300 | Concreting | 1d | 2026-01-01 | 2026-01-01 | 2904FS+1d, 2905 |  | Zenith | 8688724 |
| 2907 | 36900.37000.37100.38500.39500.45200.170300 | **14th floor roof slab** | 9d | 2026-01-02 | 2026-01-10 |  | start no earlier than 2026-01-02 | Zenith | 8653264 |
| 2908 | 36900.37000.37100.38500.39500.45200.170300.951400 | Reinforcement | 6d | 2026-01-02 | 2026-01-07 | 2906 |  | Zenith | 8688714 |
| 2909 | 36900.37000.37100.38500.39500.45200.170300.951500 | Conduiting | 6d | 2026-01-03 | 2026-01-08 | 2908SS+1d |  | Zenith | 8688704 |
| 2910 | 36900.37000.37100.38500.39500.45200.170300.951600 | Formwork | 6d | 2026-01-04 | 2026-01-09 | 2908SS+2d |  | Zenith | 8688694 |
| 2911 | 36900.37000.37100.38500.39500.45200.170300.951700 | Concreting | 1d | 2026-01-10 | 2026-01-10 | 2909FS+1d, 2910 |  | Zenith | 8688684 |
| 2912 | 36900.37000.37100.38500.39500.45200.170200 | **15th floor roof slab** | 9d | 2026-01-11 | 2026-01-19 |  | start no earlier than 2026-01-11 | Zenith | 8653314 |
| 2913 | 36900.37000.37100.38500.39500.45200.170200.951800 | Reinforcement | 6d | 2026-01-11 | 2026-01-16 | 2911 |  | Zenith | 8688674 |
| 2914 | 36900.37000.37100.38500.39500.45200.170200.951900 | Conduiting | 6d | 2026-01-12 | 2026-01-17 | 2913SS+1d |  | Zenith | 8688664 |
| 2915 | 36900.37000.37100.38500.39500.45200.170200.952000 | Formwork | 6d | 2026-01-13 | 2026-01-18 | 2913SS+2d |  | Zenith | 8688654 |
| 2916 | 36900.37000.37100.38500.39500.45200.170200.952100 | Concreting | 1d | 2026-01-19 | 2026-01-19 | 2914FS+1d, 2915 |  | Zenith | 8688644 |
| 2917 | 36900.37000.37100.38500.39500.45200.169900 | **16th floor roof slab** | 9d | 2026-01-20 | 2026-01-28 |  | start no earlier than 2026-01-20 | Zenith | 8653384 |
| 2918 | 36900.37000.37100.38500.39500.45200.169900.952200 | Reinforcement | 6d | 2026-01-20 | 2026-01-25 | 2916 |  | Zenith | 8688634 |
| 2919 | 36900.37000.37100.38500.39500.45200.169900.952300 | Conduiting | 6d | 2026-01-21 | 2026-01-26 | 2918SS+1d |  | Zenith | 8688624 |
| 2920 | 36900.37000.37100.38500.39500.45200.169900.952400 | Formwork | 6d | 2026-01-22 | 2026-01-27 | 2918SS+2d |  | Zenith | 8688614 |
| 2921 | 36900.37000.37100.38500.39500.45200.169900.952500 | Concreting | 1d | 2026-01-28 | 2026-01-28 | 2919, 2920 |  | Zenith | 8688604 |

| ID | WBS | Task | Duration | Start | Finish | Predecessors | Constraint | Calendar | Unique_Task_ID |
| --- | --- | --- | --- | --- | --- | --- | --- | --- | --- |
| 2922 | 36900.37000.37100.38500.39500.45200.169800 | **17th floor roof slab** | 9d | 2026-01-29 | 2026-02-06 |  | start no earlier than 2026-01-29 | Zenith | 8653424 |
| 2923 | 36900.37000.37100.38500.39500.45200.169800.952600 | Reinforcement | 6d | 2026-01-29 | 2026-02-03 | 2921 |  | Zenith | 8688594 |
| 2924 | 36900.37000.37100.38500.39500.45200.169800.952700 | Conduiting | 6d | 2026-01-30 | 2026-02-04 | 2923SS+1d |  | Zenith | 8688584 |
| 2925 | 36900.37000.37100.38500.39500.45200.169800.952800 | Formwork | 6d | 2026-01-31 | 2026-02-05 | 2923SS+2d |  | Zenith | 8688574 |
| 2926 | 36900.37000.37100.38500.39500.45200.169800.952900 | Concreting | 1d | 2026-02-06 | 2026-02-06 | 2924FS+1d, 2925 |  | Zenith | 8688564 |
| 2927 | 36900.37000.37100.38500.39500.45200.169600 | **18th floor roof slab** | 8d | 2026-02-07 | 2026-02-14 |  | start no earlier than 2026-02-07 | Zenith | 8653464 |
| 2928 | 36900.37000.37100.38500.39500.45200.169600.953000 | Reinforcement | 5d | 2026-02-07 | 2026-02-11 | 2926 |  | Zenith | 8688554 |
| 2929 | 36900.37000.37100.38500.39500.45200.169600.953100 | Conduiting | 5d | 2026-02-08 | 2026-02-12 | 2928SS+1d |  | Zenith | 8688544 |
| 2930 | 36900.37000.37100.38500.39500.45200.169600.953200 | Formwork | 5d | 2026-02-09 | 2026-02-13 | 2928SS+2d |  | Zenith | 8688534 |
| 2931 | 36900.37000.37100.38500.39500.45200.169600.953300 | Concreting | 1d | 2026-02-14 | 2026-02-14 | 2929FS+1d, 2930 |  | Zenith | 8688524 |
| 2932 | 36900.37000.37100.38500.39500.45200.169500 | **19th floor roof slab** | 8d | 2026-02-15 | 2026-02-22 |  | start no earlier than 2026-02-15 | Zenith | 8653474 |
| 2933 | 36900.37000.37100.38500.39500.45200.169500.953400 | Reinforcement | 5d | 2026-02-15 | 2026-02-19 | 2931 |  | Zenith | 8688514 |
| 2934 | 36900.37000.37100.38500.39500.45200.169500.953500 | Conduiting | 5d | 2026-02-16 | 2026-02-20 | 2933SS+1d |  | Zenith | 8688504 |
| 2935 | 36900.37000.37100.38500.39500.45200.169500.953600 | Formwork | 5d | 2026-02-17 | 2026-02-21 | 2933SS+2d |  | Zenith | 8688494 |
| 2936 | 36900.37000.37100.38500.39500.45200.169500.953700 | Concreting | 1d | 2026-02-22 | 2026-02-22 | 2934FS+1d, 2935 |  | Zenith | 8688484 |
| 2937 | 36900.37000.37100.38500.39500.45200.169400 | **20th floor roof slab** | 8d | 2026-02-23 | 2026-03-02 |  | start no earlier than 2026-02-23 | Zenith | 8653494 |
| 2938 | 36900.37000.37100.38500.39500.45200.169400.953800 | Reinforcement | 5d | 2026-02-23 | 2026-02-27 | 2936 |  | Zenith | 8688474 |
| 2939 | 36900.37000.37100.38500.39500.45200.169400.953900 | Conduiting | 5d | 2026-02-24 | 2026-02-28 | 2938SS+1d |  | Zenith | 8688464 |
| 2940 | 36900.37000.37100.38500.39500.45200.169400.954000 | Formwork | 5d | 2026-02-25 | 2026-03-01 | 2938SS+2d |  | Zenith | 8688454 |
| 2941 | 36900.37000.37100.38500.39500.45200.169400.954100 | Concreting | 1d | 2026-03-02 | 2026-03-02 | 2939FS+1d, 2940 |  | Zenith | 8688444 |
| 2942 | 36900.37000.37100.38500.39500.45200.169300 | **21st floor roof slab** | 8d | 2026-03-03 | 2026-03-10 |  | start no earlier than 2026-03-03 | Zenith | 8653504 |
| 2943 | 36900.37000.37100.38500.39500.45200.169300.954200 | Reinforcement | 5d | 2026-03-03 | 2026-03-07 | 2941 |  | Zenith | 8688434 |
| 2944 | 36900.37000.37100.38500.39500.45200.169300.954300 | Conduiting | 5d | 2026-03-04 | 2026-03-08 | 2943SS+1d |  | Zenith | 8688424 |
| 2945 | 36900.37000.37100.38500.39500.45200.169300.954400 | Formwork | 5d | 2026-03-05 | 2026-03-09 | 2943SS+2d |  | Zenith | 8688414 |
| 2946 | 36900.37000.37100.38500.39500.45200.169300.954500 | Concreting | 1d | 2026-03-10 | 2026-03-10 | 2944FS+1d, 2945 |  | Zenith | 8688404 |

| ID | WBS | Task | Duration | Start | Finish | Predecessors | Constraint | Calendar | Unique_Task_ID |
| --- | --- | --- | --- | --- | --- | --- | --- | --- | --- |
| 2947 | 36900.37000.37100.38500.39500.45200.169200 | **22nd floor roof slab** | 8d | 2026-03-11 | 2026-03-18 |  | start no earlier than 2026-03-11 | Zenith | 8653524 |
| 2948 | 36900.37000.37100.38500.39500.45200.169200.954600 | Reinforcement | 5d | 2026-03-11 | 2026-03-15 | 2946 |  | Zenith | 8688394 |
| 2949 | 36900.37000.37100.38500.39500.45200.169200.954700 | Conduiting | 5d | 2026-03-12 | 2026-03-16 | 2948SS+1d |  | Zenith | 8688384 |
| 2950 | 36900.37000.37100.38500.39500.45200.169200.954800 | Formwork | 5d | 2026-03-13 | 2026-03-17 | 2948SS+2d |  | Zenith | 8688374 |
| 2951 | 36900.37000.37100.38500.39500.45200.169200.954900 | Concreting | 1d | 2026-03-18 | 2026-03-18 | 2949FS+1d, 2950 |  | Zenith | 8688364 |
| 2952 | 36900.37000.37100.38500.39500.45200.169100 | **23rd floor roof slab** | 8d | 2026-03-19 | 2026-03-26 |  | start no earlier than 2026-03-19 | Zenith | 8653574 |
| 2953 | 36900.37000.37100.38500.39500.45200.169100.955000 | Reinforcement | 5d | 2026-03-19 | 2026-03-23 | 2951 |  | Zenith | 8688354 |
| 2954 | 36900.37000.37100.38500.39500.45200.169100.955100 | Conduiting | 5d | 2026-03-20 | 2026-03-24 | 2953SS+1d |  | Zenith | 8688344 |
| 2955 | 36900.37000.37100.38500.39500.45200.169100.955200 | Formwork | 5d | 2026-03-21 | 2026-03-25 | 2953SS+2d |  | Zenith | 8688334 |
| 2956 | 36900.37000.37100.38500.39500.45200.169100.955300 | Concreting | 1d | 2026-03-26 | 2026-03-26 | 2954FS+1d, 2955 |  | Zenith | 8688324 |
| 2957 | 36900.37000.37100.38500.39500.45200.169000 | **24th floor roof slab** | 8d | 2026-03-27 | 2026-04-03 |  | start no earlier than 2026-03-27 | Zenith | 8653674 |
| 2958 | 36900.37000.37100.38500.39500.45200.169000.955400 | Reinforcement | 5d | 2026-03-27 | 2026-03-31 | 2956 |  | Zenith | 8688314 |
| 2959 | 36900.37000.37100.38500.39500.45200.169000.955500 | Conduiting | 5d | 2026-03-28 | 2026-04-01 | 2958SS+1d |  | Zenith | 8688304 |
| 2960 | 36900.37000.37100.38500.39500.45200.169000.955600 | Formwork | 5d | 2026-03-29 | 2026-04-02 | 2958SS+2d |  | Zenith | 8688294 |
| 2961 | 36900.37000.37100.38500.39500.45200.169000.955700 | Concreting | 1d | 2026-04-03 | 2026-04-03 | 2959FS+1d, 2960 |  | Zenith | 8688284 |
| 2962 | 36900.37000.37100.38500.39500.45200.168900 | **25th floor roof slab** | 8d | 2026-04-04 | 2026-04-11 |  | start no earlier than 2026-04-04 | Zenith | 8653754 |
| 2963 | 36900.37000.37100.38500.39500.45200.168900.955800 | Reinforcement | 5d | 2026-04-04 | 2026-04-08 | 2961 |  | Zenith | 8688274 |
| 2964 | 36900.37000.37100.38500.39500.45200.168900.955900 | Conduiting | 5d | 2026-04-05 | 2026-04-09 | 2963SS+1d |  | Zenith | 8688264 |
| 2965 | 36900.37000.37100.38500.39500.45200.168900.956000 | Formwork | 5d | 2026-04-06 | 2026-04-10 | 2963SS+2d |  | Zenith | 8688254 |
| 2966 | 36900.37000.37100.38500.39500.45200.168900.956100 | Concreting | 1d | 2026-04-11 | 2026-04-11 | 2964FS+1d, 2965 |  | Zenith | 8688244 |
| 2967 | 36900.37000.37100.38500.39500.45200.168700 | **26th floor roof slab** | 8d | 2026-04-12 | 2026-04-19 |  | start no earlier than 2026-04-12 | Zenith | 8653814 |
| 2968 | 36900.37000.37100.38500.39500.45200.168700.956200 | Reinforcement | 5d | 2026-04-12 | 2026-04-16 | 2966 |  | Zenith | 8688234 |
| 2969 | 36900.37000.37100.38500.39500.45200.168700.956300 | Conduiting | 5d | 2026-04-13 | 2026-04-17 | 2968SS+1d |  | Zenith | 8688224 |
| 2970 | 36900.37000.37100.38500.39500.45200.168700.956400 | Formwork | 5d | 2026-04-14 | 2026-04-18 | 2968SS+2d |  | Zenith | 8688214 |
| 2971 | 36900.37000.37100.38500.39500.45200.168700.956500 | Concreting | 1d | 2026-04-19 | 2026-04-19 | 2969FS+1d, 2970 |  | Zenith | 8688204 |

| ID | WBS | Task | Duration | Start | Finish | Predecessors | Constraint | Calendar | Unique_Task_ID |
| --- | --- | --- | --- | --- | --- | --- | --- | --- | --- |
| 2972 | 36900.37000.37100.38500.39500.45200.168600 | **27th floor roof slab** | 8d | 2026-04-20 | 2026-04-27 |  | start no earlier than 2026-04-20 | Zenith | 8653824 |
| 2973 | 36900.37000.37100.38500.39500.45200.168600.956600 | Reinforcement | 5d | 2026-04-20 | 2026-04-24 | 2971 |  | Zenith | 8688194 |
| 2974 | 36900.37000.37100.38500.39500.45200.168600.956700 | Conduiting | 5d | 2026-04-21 | 2026-04-25 | 2973SS+1d |  | Zenith | 8688184 |
| 2975 | 36900.37000.37100.38500.39500.45200.168600.956800 | Formwork | 5d | 2026-04-22 | 2026-04-26 | 2973SS+2d |  | Zenith | 8688174 |
| 2976 | 36900.37000.37100.38500.39500.45200.168600.956900 | Concreting | 1d | 2026-04-27 | 2026-04-27 | 2974FS+1d, 2975 |  | Zenith | 8688164 |
| 2977 | 36900.37000.37100.38500.39500.45200.168500 | **28th floor roof slab** | 8d | 2026-04-28 | 2026-05-05 |  | start no earlier than 2026-04-28 | Zenith | 8653834 |
| 2978 | 36900.37000.37100.38500.39500.45200.168500.957000 | Reinforcement | 5d | 2026-04-28 | 2026-05-02 | 2976 |  | Zenith | 8688154 |
| 2979 | 36900.37000.37100.38500.39500.45200.168500.957100 | Conduiting | 5d | 2026-04-29 | 2026-05-03 | 2978SS+1d |  | Zenith | 8688144 |
| 2980 | 36900.37000.37100.38500.39500.45200.168500.957200 | Formwork | 5d | 2026-04-30 | 2026-05-04 | 2978SS+2d |  | Zenith | 8688134 |
| 2981 | 36900.37000.37100.38500.39500.45200.168500.957300 | Concreting | 1d | 2026-05-05 | 2026-05-05 | 2979FS+1d, 2980 |  | Zenith | 8688124 |
| 2982 | 36900.37000.37100.38500.39500.45200.168300 | **29th floor roof slab** | 8d | 2026-05-06 | 2026-05-13 |  | start no earlier than 2026-05-06 | Zenith | 8653844 |
| 2983 | 36900.37000.37100.38500.39500.45200.168300.957400 | Reinforcement | 5d | 2026-05-06 | 2026-05-10 | 2981 |  | Zenith | 8688114 |
| 2984 | 36900.37000.37100.38500.39500.45200.168300.957500 | Conduiting | 5d | 2026-05-07 | 2026-05-11 | 2983SS+1d |  | Zenith | 8688104 |
| 2985 | 36900.37000.37100.38500.39500.45200.168300.957600 | Formwork | 5d | 2026-05-08 | 2026-05-12 | 2983SS+2d |  | Zenith | 8688094 |
| 2986 | 36900.37000.37100.38500.39500.45200.168300.957700 | Concreting | 1d | 2026-05-13 | 2026-05-13 | 2984FS+1d, 2985 |  | Zenith | 8688084 |
| 2987 | 36900.37000.37100.38500.39500.45200.168200 | **30th floor roof slab** | 10d | 2026-05-14 | 2026-05-23 |  | start no earlier than 2026-05-14 | Zenith | 8653854 |
| 2988 | 36900.37000.37100.38500.39500.45200.168200.957800 | Reinforcement | 7d | 2026-05-14 | 2026-05-20 | 2986 |  | Zenith | 8688074 |
| 2989 | 36900.37000.37100.38500.39500.45200.168200.957900 | Conduiting | 7d | 2026-05-15 | 2026-05-21 | 2988SS+1d |  | Zenith | 8688064 |
| 2990 | 36900.37000.37100.38500.39500.45200.168200.958000 | Formwork | 7d | 2026-05-16 | 2026-05-22 | 2988SS+2d |  | Zenith | 8688054 |
| 2991 | 36900.37000.37100.38500.39500.45200.168200.958100 | Concreting | 1d | 2026-05-23 | 2026-05-23 | 2989FS+1d, 2990 |  | Zenith | 8688044 |
| 2992 | 36900.37000.37100.38500.39500.45200.168000 | **31st floor roof slab** | 10d | 2026-05-24 | 2026-06-02 |  | start no earlier than 2026-05-24 | Zenith | 8653864 |
| 2993 | 36900.37000.37100.38500.39500.45200.168000.958200 | Reinforcement | 7d | 2026-05-24 | 2026-05-30 | 2991 |  | Zenith | 8688034 |
| 2994 | 36900.37000.37100.38500.39500.45200.168000.958300 | Conduiting | 7d | 2026-05-25 | 2026-05-31 | 2993SS+1d |  | Zenith | 8688024 |
| 2995 | 36900.37000.37100.38500.39500.45200.168000.958400 | Formwork | 7d | 2026-05-26 | 2026-06-01 | 2993SS+2d |  | Zenith | 8688014 |
| 2996 | 36900.37000.37100.38500.39500.45200.168000.958500 | Concreting | 1d | 2026-06-02 | 2026-06-02 | 2994FS+1d, 2995 |  | Zenith | 8688004 |

| ID | WBS | Task | Duration | Start | Finish | Predecessors | Constraint | Calendar | Unique_Task_ID |
| --- | --- | --- | --- | --- | --- | --- | --- | --- | --- |
| 2997 | 36900.37000.37100.38500.39500.45200.167900 | **32nd floor roof slab** | 10d | 2026-06-03 | 2026-06-12 |  | start no earlier than 2026-06-03 | Zenith | 8653874 |
| 2998 | 36900.37000.37100.38500.39500.45200.167900.958600 | Reinforcement | 7d | 2026-06-03 | 2026-06-09 | 2996 |  | Zenith | 8687994 |
| 2999 | 36900.37000.37100.38500.39500.45200.167900.958700 | Conduiting | 7d | 2026-06-04 | 2026-06-10 | 2998SS+1d |  | Zenith | 8687984 |
| 3000 | 36900.37000.37100.38500.39500.45200.167900.958800 | Formwork | 7d | 2026-06-05 | 2026-06-11 | 2998SS+2d |  | Zenith | 8687974 |
| 3001 | 36900.37000.37100.38500.39500.45200.167900.958900 | Concreting | 1d | 2026-06-12 | 2026-06-12 | 2999FS+1d, 3000 |  | Zenith | 8687964 |
| 3002 | 36900.37000.37100.38500.39500.45200.167800 | **33rd floor roof slab** | 10d | 2026-06-13 | 2026-06-22 |  | start no earlier than 2026-06-13 | Zenith | 8653884 |
| 3003 | 36900.37000.37100.38500.39500.45200.167800.959000 | Reinforcement | 7d | 2026-06-13 | 2026-06-19 | 3001 |  | Zenith | 8687954 |
| 3004 | 36900.37000.37100.38500.39500.45200.167800.959100 | Conduiting | 7d | 2026-06-14 | 2026-06-20 | 3003SS+1d |  | Zenith | 8687944 |
| 3005 | 36900.37000.37100.38500.39500.45200.167800.959200 | Formwork | 7d | 2026-06-15 | 2026-06-21 | 3003SS+2d |  | Zenith | 8687934 |
| 3006 | 36900.37000.37100.38500.39500.45200.167800.959300 | Concreting | 1d | 2026-06-22 | 2026-06-22 | 3004FS+1d, 3005 |  | Zenith | 8687924 |
| 3007 | 36900.37000.37100.38500.39500.45200.167700 | **Terrace floor slab** | 18d | 2026-06-23 | 2026-07-10 |  | start no earlier than 2026-06-23 | Zenith | 8653894 |
| 3008 | 36900.37000.37100.38500.39500.45200.167700.959400 | Reinforcement | 14d | 2026-06-23 | 2026-07-06 | 3006 |  | Zenith | 8687914 |
| 3009 | 36900.37000.37100.38500.39500.45200.167700.959500 | Conduiting | 14d | 2026-06-24 | 2026-07-07 | 3008SS+1d |  | Zenith | 8687904 |
| 3010 | 36900.37000.37100.38500.39500.45200.167700.959600 | Formwork | 14d | 2026-06-25 | 2026-07-08 | 3008SS+2d |  | Zenith | 8687894 |
| 3011 | 36900.37000.37100.38500.39500.45200.167700.959700 | Concreting | 2d | 2026-07-09 | 2026-07-10 | 3009FS+1d, 3010 |  | Zenith | 8687884 |
| 3012 | 36900.37000.37100.38500.39500.45200.167600 | **OHT, Mumty & Machine Room, Parapet** | 35d | 2026-07-11 | 2026-08-14 |  | start no earlier than 2026-07-11 | Zenith | 8653904 |
| 3013 | 36900.37000.37100.38500.39500.45200.167600.959800 | Reinforcement | 20d | 2026-07-11 | 2026-07-30 | 3011 |  | Zenith | 8687874 |
| 3014 | 36900.37000.37100.38500.39500.45200.167600.959900 | Flanges fixing & Conduiting | 10d | 2026-07-12 | 2026-07-21 | 3013SS+1d |  | Zenith | 8687864 |
| 3015 | 36900.37000.37100.38500.39500.45200.167600.960000 | Formwork | 25d | 2026-07-17 | 2026-08-10 | 3013SS+6d |  | Zenith | 8687854 |
| 3016 | 36900.37000.37100.38500.39500.45200.167600.960100 | Concreting | 4d | 2026-08-11 | 2026-08-14 | 3014FS+5d, 3015 |  | Zenith | 8687844 |
| 3017 | 36900.37000.37100.38500.39500.47800 | **Post Pour Activities** | 313.25d | 2025-08-29 | 2026-08-22 |  | start no earlier than 2025-08-29 | Zenith | 8648084 |
| 3018 | 36900.37000.37100.38500.39500.47800.799900 | 1st Floor | 7d | 2025-08-29 | 2025-09-04 | 2861 |  | Zenith | 8724584 |
| 3019 | 36900.37000.37100.38500.39500.47800.800000 | 2nd Floor | 7d | 2025-09-07 | 2025-09-14 | 3018FS+0.25d, 2866FS+0.25d |  | Zenith | 8724574 |
| 3020 | 36900.37000.37100.38500.39500.47800.800100 | 3rd Floor | 7d | 2025-09-16 | 2025-09-23 | 3019FS+0.25d, 2871FS+0.25d |  | Zenith | 8724564 |
| 3021 | 36900.37000.37100.38500.39500.47800.800200 | 4th Floor | 7d | 2025-09-25 | 2025-10-02 | 3020FS+0.25d, 2876FS+0.25d |  | Zenith | 8724554 |
| 3022 | 36900.37000.37100.38500.39500.47800.800300 | 5th Floor | 7d | 2025-10-04 | 2025-10-11 | 3021FS+0.25d, 2881FS+0.25d |  | Zenith | 8724544 |
| 3023 | 36900.37000.37100.38500.39500.47800.800400 | 6th Floor | 7d | 2025-10-13 | 2025-10-20 | 3022FS+0.25d, 2886FS+0.25d |  | Zenith | 8724534 |
| 3024 | 36900.37000.37100.38500.39500.47800.800500 | 7th Floor | 7d | 2025-10-22 | 2025-10-29 | 3023FS+0.25d, 2891FS+0.25d |  | Zenith | 8724524 |
| 3025 | 36900.37000.37100.38500.39500.47800.800600 | 8th Floor | 7d | 2025-10-31 | 2025-12-22 | 3024FS+0.25d, 2896FS+0.25d |  | Zenith | 8724514 |
| 3026 | 36900.37000.37100.38500.39500.47800.800700 | 9th Floor | 7d | 2025-12-24 | 2025-12-31 | 3025FS+0.25d, 2901FS+0.25d |  | Zenith | 8724504 |
| 3027 | 36900.37000.37100.38500.39500.47800.800800 | 10th Floor | 7d | 2026-01-02 | 2026-01-09 | 3026FS+0.25d, 2906FS+0.25d |  | Zenith | 8724494 |
| 3028 | 36900.37000.37100.38500.39500.47800.800900 | 11th Floor | 7d | 2026-01-11 | 2026-01-18 | 3027FS+0.25d, 2911FS+0.25d |  | Zenith | 8724484 |
| 3029 | 36900.37000.37100.38500.39500.47800.801000 | 12th Floor | 7d | 2026-01-20 | 2026-01-27 | 3028FS+0.25d, 2916FS+0.25d |  | Zenith | 8724474 |
| 3030 | 36900.37000.37100.38500.39500.47800.801100 | 13th Floor | 7d | 2026-01-29 | 2026-02-05 | 3029FS+0.25d, 2921FS+0.25d |  | Zenith | 8724464 |
| 3031 | 36900.37000.37100.38500.39500.47800.801200 | 14th Floor | 7d | 2026-02-07 | 2026-02-14 | 3030FS+0.25d, 2926FS+0.25d |  | Zenith | 8724454 |
| 3032 | 36900.37000.37100.38500.39500.47800.801300 | 15th Floor | 7d | 2026-02-15 | 2026-02-22 | 3031FS+0.25d, 2931FS+0.25d |  | Zenith | 8724444 |
| 3033 | 36900.37000.37100.38500.39500.47800.801400 | 16th Floor | 7d | 2026-02-23 | 2026-03-02 | 3032FS+0.25d, 2936FS+0.25d |  | Zenith | 8724434 |
| 3034 | 36900.37000.37100.38500.39500.47800.801500 | 17th Floor | 7d | 2026-03-03 | 2026-03-10 | 3033FS+0.25d, 2941FS+0.25d |  | Zenith | 8724424 |
| 3035 | 36900.37000.37100.38500.39500.47800.801600 | 18th Floor | 7d | 2026-03-11 | 2026-03-18 | 3034FS+0.25d, 2946FS+0.25d |  | Zenith | 8724414 |
| 3036 | 36900.37000.37100.38500.39500.47800.801700 | 19th Floor | 7d | 2026-03-19 | 2026-03-26 | 3035FS+0.25d, 2951FS+0.25d |  | Zenith | 8724404 |
| 3037 | 36900.37000.37100.38500.39500.47800.801800 | 20th Floor | 7d | 2026-03-27 | 2026-04-03 | 3036FS+0.25d, 2956FS+0.25d |  | Zenith | 8724394 |
| 3038 | 36900.37000.37100.38500.39500.47800.801900 | 21st Floor | 7d | 2026-04-04 | 2026-04-11 | 3037FS+0.25d, 2961FS+0.25d |  | Zenith | 8724384 |
| 3039 | 36900.37000.37100.38500.39500.47800.802000 | 22nd Floor | 7d | 2026-04-12 | 2026-04-19 | 3038FS+0.25d, 2966FS+0.25d |  | Zenith | 8724374 |
| 3040 | 36900.37000.37100.38500.39500.47800.802100 | 23rd Floor | 7d | 2026-04-20 | 2026-04-27 | 3039FS+0.25d, 2971FS+0.25d |  | Zenith | 8724364 |
| 3041 | 36900.37000.37100.38500.39500.47800.802200 | 24th Floor | 7d | 2026-04-28 | 2026-05-05 | 3040FS+0.25d, 2976FS+0.25d |  | Zenith | 8724354 |
| 3042 | 36900.37000.37100.38500.39500.47800.802300 | 25th Floor | 7d | 2026-05-06 | 2026-05-13 | 3041FS+0.25d, 2981FS+0.25d |  | Zenith | 8724344 |
| 3043 | 36900.37000.37100.38500.39500.47800.802400 | 26th Floor | 7d | 2026-05-14 | 2026-05-21 | 3042FS+0.25d, 2986FS+0.25d |  | Zenith | 8724334 |
| 3044 | 36900.37000.37100.38500.39500.47800.802500 | 27th Floor | 7d | 2026-05-24 | 2026-05-31 | 3043FS+0.25d, 2991FS+0.25d |  | Zenith | 8724324 |
| 3045 | 36900.37000.37100.38500.39500.47800.802600 | 28th Floor | 7d | 2026-06-03 | 2026-06-10 | 3044FS+0.25d, 2996FS+0.25d |  | Zenith | 8724314 |
| 3046 | 36900.37000.37100.38500.39500.47800.802700 | 29th Floor | 7d | 2026-06-13 | 2026-06-20 | 3045FS+0.25d, 3001FS+0.25d |  | Zenith | 8724304 |
| 3047 | 36900.37000.37100.38500.39500.47800.802800 | 30th Floor | 7d | 2026-06-23 | 2026-06-30 | 3046FS+0.25d, 3006FS+0.25d |  | Zenith | 8724294 |
| 3048 | 36900.37000.37100.38500.39500.47800.802900 | 31st Flood | 7d | 2026-07-11 | 2026-07-18 | 3047FS+0.25d, 3011FS+0.25d |  | Zenith | 8724284 |
| 3049 | 36900.37000.37100.38500.39500.47800.803000 | 32nd Floor | 7d | 2026-07-18 | 2026-07-25 | 3048 |  | Zenith | 8724274 |
| 3050 | 36900.37000.37100.38500.39500.47800.803100 | 33rd Floor | 7d | 2026-07-25 | 2026-08-01 | 3049 |  | Zenith | 8724264 |
| 3051 | 36900.37000.37100.38500.39500.47800.803200 | 34th Floor | 7d | 2026-08-01 | 2026-08-08 | 3050 |  | Zenith | 8724254 |
| 3052 | 36900.37000.37100.38500.39500.47800.803300 | Terrace | 7d | 2026-08-08 | 2026-08-15 | 3051 |  | Zenith | 8724244 |
| 3053 | 36900.37000.37100.38500.39500.47800.803400 | Mumty & Machine Room | 7d | 2026-08-15 | 2026-08-22 | 3052 |  | Zenith | 8724234 |

| ID | WBS | Task | Duration | Start | Finish | Predecessors | Constraint | Calendar | Unique_Task_ID |
| --- | --- | --- | --- | --- | --- | --- | --- | --- | --- |
| 3054 | 36900.37000.37100.38500.39500.41100 | **Finishing work** | 535d | 2025-09-05 | 2027-05-22 |  | start no earlier than 2025-09-05 | Zenith | 8647804 |
| 3055 | 36900.37000.37100.38500.39500.41100.42300 | **Flat finishing** | 535d | 2025-09-05 | 2027-05-22 |  | start no earlier than 2025-09-05 | Zenith | 8647884 |
| 3056 | 36900.37000.37100.38500.39500.41100.42300.92800 | **1st Floor roof** | 79d | 2025-09-05 | 2026-01-06 |  | start no earlier than 2025-09-05 | Zenith | 8649464 |
| 3057 | 36900.37000.37100.38500.39500.41100.42300.92800.1442600 | Block Work | 6d | 2025-09-05 | 2025-09-10 | 3018 |  | Zenith | 8672774 |
| 3058 | 36900.37000.37100.38500.39500.41100.42300.92800.1442700 | Fire sprinkler pipe fixing | 5d | 2025-09-11 | 2025-09-15 | 3057 |  | Zenith | 8672784 |
| 3059 | 36900.37000.37100.38500.39500.41100.42300.92800.1442800 | Internal Plumbing Works | 5d | 2025-09-11 | 2025-09-15 | 3057 |  | Zenith | 8672794 |
| 3060 | 36900.37000.37100.38500.39500.41100.42300.92800.1442900 | Waterproofing | 5d | 2025-09-16 | 2025-09-20 | 3059 |  | Zenith | 8672804 |
| 3061 | 36900.37000.37100.38500.39500.41100.42300.92800.1443000 | Internal Plaster | 9d | 2025-09-17 | 2025-09-25 | 3059, 3060FF+5d |  | Zenith | 8672814 |
| 3062 | 36900.37000.37100.38500.39500.41100.42300.92800.1443100 | IPS flooring work | 7d | 2025-09-26 | 2025-10-02 | 3061 |  | Zenith | 8672824 |
| 3063 | 36900.37000.37100.38500.39500.41100.42300.92800.1443200 | Toilet dado work | 6d | 2025-09-26 | 2025-10-01 | 3060, 3061 |  | Zenith | 8672834 |
| 3064 | 36900.37000.37100.38500.39500.41100.42300.92800.1443300 | Toilet flooring work | 7d | 2025-10-02 | 2025-10-08 | 3063 |  | Zenith | 8672844 |
| 3065 | 36900.37000.37100.38500.39500.41100.42300.92800.1443400 | False Cieling panel fixing | 7d | 2025-10-09 | 2025-10-15 | 3064 |  | Zenith | 8672854 |
| 3066 | 36900.37000.37100.38500.39500.41100.42300.92800.1443500 | Living dinning flooring | 7d | 2025-10-09 | 2025-10-15 | 3064 |  | Zenith | 8672864 |
| 3067 | 36900.37000.37100.38500.39500.41100.42300.92800.1443600 | Putty primer coat | 8d | 2025-10-16 | 2025-10-23 | 3066 |  | Zenith | 8672874 |
| 3068 | 36900.37000.37100.38500.39500.41100.42300.92800.1443700 | Aluminium door-window fixing | 12d | 2025-10-16 | 2025-10-27 | 3062, 3066 |  | Zenith | 8672884 |
| 3069 | 36900.37000.37100.38500.39500.41100.42300.92800.1443800 | Door shutter fixing (Pre Hung) | 8d | 2025-10-24 | 2025-10-31 | 3067 |  | Zenith | 8672894 |
| 3070 | 36900.37000.37100.38500.39500.41100.42300.92800.1443900 | Electrical wiring work | 10d | 2025-12-16 | 2025-12-25 | 3069 |  | Zenith | 8672904 |
| 3071 | 36900.37000.37100.38500.39500.41100.42300.92800.1444000 | Painting 1st coat | 12d | 2025-12-26 | 2026-01-06 | 3070 |  | Zenith | 8672914 |
| 3072 | 36900.37000.37100.38500.39500.41100.42300.92900 | **2nd floor roof** | 81.75d | 2025-09-14 | 2026-01-18 |  | start no earlier than 2025-09-14 | Zenith | 8649474 |
| 3073 | 36900.37000.37100.38500.39500.41100.42300.92900.1444100 | Block Work | 6d | 2025-09-14 | 2025-09-20 | 3019, 3057 |  | Zenith | 8672924 |
| 3074 | 36900.37000.37100.38500.39500.41100.42300.92900.1444200 | Fire sprinkler pipe fixing | 5d | 2025-09-20 | 2025-09-25 | 3058, 3073 |  | Zenith | 8672934 |
| 3075 | 36900.37000.37100.38500.39500.41100.42300.92900.1444300 | Internal Plumbing Works | 5d | 2025-09-20 | 2025-09-25 | 3059, 3073 |  | Zenith | 8672944 |
| 3076 | 36900.37000.37100.38500.39500.41100.42300.92900.1444400 | Waterproofing | 5d | 2025-09-25 | 2025-09-30 | 3060, 3075 |  | Zenith | 8672954 |
| 3077 | 36900.37000.37100.38500.39500.41100.42300.92900.1444500 | Internal Plaster | 9d | 2025-09-26 | 2025-10-05 | 3061, 3075, 3076FF+5d |  | Zenith | 8672964 |
| 3078 | 36900.37000.37100.38500.39500.41100.42300.92900.1444600 | IPS flooring work | 7d | 2025-10-05 | 2025-10-12 | 3062, 3077 |  | Zenith | 8672974 |
| 3079 | 36900.37000.37100.38500.39500.41100.42300.92900.1444700 | Toilet dado work | 6d | 2025-10-05 | 2025-10-11 | 3063, 3076, 3077 |  | Zenith | 8672984 |
| 3080 | 36900.37000.37100.38500.39500.41100.42300.92900.1444800 | Toilet flooring work | 7d | 2025-10-11 | 2025-10-18 | 3064, 3079 |  | Zenith | 8672994 |
| 3081 | 36900.37000.37100.38500.39500.41100.42300.92900.1444900 | False Cieling panel fixing | 7d | 2025-10-18 | 2025-10-25 | 3065, 3080 |  | Zenith | 8673004 |
| 3082 | 36900.37000.37100.38500.39500.41100.42300.92900.1445000 | Living dinning flooring | 7d | 2025-10-18 | 2025-10-25 | 3066, 3080 |  | Zenith | 8673014 |
| 3083 | 36900.37000.37100.38500.39500.41100.42300.92900.1445100 | Putty primer coat | 8d | 2025-10-25 | 2025-12-17 | 3067, 3082 |  | Zenith | 8673024 |
| 3084 | 36900.37000.37100.38500.39500.41100.42300.92900.1445200 | Aluminium door-window fixing | 12d | 2025-10-28 | 2025-12-23 | 3068, 3078, 3082 |  | Zenith | 8673034 |
| 3085 | 36900.37000.37100.38500.39500.41100.42300.92900.1445300 | Door shutter fixing (Pre Hung) | 8d | 2025-12-17 | 2025-12-25 | 3069, 3083 |  | Zenith | 8673044 |
| 3086 | 36900.37000.37100.38500.39500.41100.42300.92900.1445400 | Electrical wiring work | 10d | 2025-12-26 | 2026-01-04 | 3070, 3085 |  | Zenith | 8673054 |
| 3087 | 36900.37000.37100.38500.39500.41100.42300.92900.1445500 | Painting 1st coat | 12d | 2026-01-07 | 2026-01-18 | 3071, 3086 |  | Zenith | 8673064 |

| ID | WBS | Task | Duration | Start | Finish | Predecessors | Constraint | Calendar | Unique_Task_ID |
| --- | --- | --- | --- | --- | --- | --- | --- | --- | --- |
| 3088 | 36900.37000.37100.38500.39500.41100.42300.93000 | **3rd floor roof** | 84.75d | 2025-09-23 | 2026-01-30 |  | start no earlier than 2025-09-23 | Zenith | 8649484 |
| 3089 | 36900.37000.37100.38500.39500.41100.42300.93000.1445600 | Block Work | 6d | 2025-09-23 | 2025-09-29 | 3020, 3073 |  | Zenith | 8673074 |
| 3090 | 36900.37000.37100.38500.39500.41100.42300.93000.1445700 | Fire sprinkler pipe fixing | 5d | 2025-09-29 | 2025-10-04 | 3074, 3089 |  | Zenith | 8673084 |
| 3091 | 36900.37000.37100.38500.39500.41100.42300.93000.1445800 | Internal Plumbing Works | 5d | 2025-09-29 | 2025-10-04 | 3075, 3089 |  | Zenith | 8673094 |
| 3092 | 36900.37000.37100.38500.39500.41100.42300.93000.1445900 | Waterproofing | 5d | 2025-10-04 | 2025-10-09 | 3076, 3091 |  | Zenith | 8673104 |
| 3093 | 36900.37000.37100.38500.39500.41100.42300.93000.1446000 | Internal Plaster | 9d | 2025-10-05 | 2025-10-14 | 3077, 3091, 3092FF+5d |  | Zenith | 8673114 |
| 3094 | 36900.37000.37100.38500.39500.41100.42300.93000.1446100 | IPS flooring work | 7d | 2025-10-14 | 2025-10-21 | 3078, 3093 |  | Zenith | 8673124 |
| 3095 | 36900.37000.37100.38500.39500.41100.42300.93000.1446200 | Toilet dado work | 6d | 2025-10-14 | 2025-10-20 | 3079, 3092, 3093 |  | Zenith | 8673134 |
| 3096 | 36900.37000.37100.38500.39500.41100.42300.93000.1446300 | Toilet flooring work | 7d | 2025-10-20 | 2025-10-27 | 3080, 3095 |  | Zenith | 8673144 |
| 3097 | 36900.37000.37100.38500.39500.41100.42300.93000.1446400 | False Cieling panel fixing | 7d | 2025-10-27 | 2025-12-18 | 3081, 3096 |  | Zenith | 8673154 |
| 3098 | 36900.37000.37100.38500.39500.41100.42300.93000.1446500 | Living dinning flooring | 7d | 2025-10-27 | 2025-12-18 | 3082, 3096 |  | Zenith | 8673164 |
| 3099 | 36900.37000.37100.38500.39500.41100.42300.93000.1446600 | Putty primer coat | 8d | 2025-12-18 | 2025-12-26 | 3083, 3098 |  | Zenith | 8673174 |
| 3100 | 36900.37000.37100.38500.39500.41100.42300.93000.1446700 | Aluminium door-window fixing | 12d | 2025-12-24 | 2026-01-04 | 3084, 3094, 3098 |  | Zenith | 8673184 |
| 3101 | 36900.37000.37100.38500.39500.41100.42300.93000.1446800 | Door shutter fixing (Pre Hung) | 8d | 2025-12-26 | 2026-01-03 | 3085, 3099 |  | Zenith | 8673194 |
| 3102 | 36900.37000.37100.38500.39500.41100.42300.93000.1446900 | Electrical wiring work | 10d | 2026-01-05 | 2026-01-14 | 3086, 3101 |  | Zenith | 8673204 |
| 3103 | 36900.37000.37100.38500.39500.41100.42300.93000.1447000 | Painting 1st coat | 12d | 2026-01-19 | 2026-01-30 | 3087, 3102 |  | Zenith | 8673214 |
| 3104 | 36900.37000.37100.38500.39500.41100.42300.93100 | **4th floor roof** | 87.75d | 2025-10-02 | 2026-02-11 |  | start no earlier than 2025-10-02 | Zenith | 8649494 |
| 3105 | 36900.37000.37100.38500.39500.41100.42300.93100.1447100 | Block Work | 6d | 2025-10-02 | 2025-10-08 | 3021, 3089 |  | Zenith | 8673224 |
| 3106 | 36900.37000.37100.38500.39500.41100.42300.93100.1447200 | Fire sprinkler pipe fixing | 5d | 2025-10-08 | 2025-10-13 | 3090, 3105 |  | Zenith | 8673234 |
| 3107 | 36900.37000.37100.38500.39500.41100.42300.93100.1447300 | Internal Plumbing Works | 5d | 2025-10-08 | 2025-10-13 | 3091, 3105 |  | Zenith | 8673244 |
| 3108 | 36900.37000.37100.38500.39500.41100.42300.93100.1447400 | Waterproofing | 5d | 2025-10-13 | 2025-10-18 | 3092, 3107 |  | Zenith | 8673254 |
| 3109 | 36900.37000.37100.38500.39500.41100.42300.93100.1447500 | Internal Plaster | 9d | 2025-10-14 | 2025-10-23 | 3093, 3107, 3108FF+5d |  | Zenith | 8673264 |
| 3110 | 36900.37000.37100.38500.39500.41100.42300.93100.1447600 | IPS flooring work | 7d | 2025-10-23 | 2025-10-30 | 3094, 3109 |  | Zenith | 8673274 |
| 3111 | 36900.37000.37100.38500.39500.41100.42300.93100.1447700 | Toilet dado work | 6d | 2025-10-23 | 2025-10-29 | 3095, 3108, 3109 |  | Zenith | 8673284 |
| 3112 | 36900.37000.37100.38500.39500.41100.42300.93100.1447800 | Toilet flooring work | 7d | 2025-10-29 | 2025-12-20 | 3096, 3111 |  | Zenith | 8673294 |
| 3113 | 36900.37000.37100.38500.39500.41100.42300.93100.1447900 | False Cieling panel fixing | 7d | 2025-12-20 | 2025-12-27 | 3097, 3112 |  | Zenith | 8673304 |
| 3114 | 36900.37000.37100.38500.39500.41100.42300.93100.1448000 | Living dinning flooring | 7d | 2025-12-20 | 2025-12-27 | 3098, 3112 |  | Zenith | 8673314 |
| 3115 | 36900.37000.37100.38500.39500.41100.42300.93100.1448100 | Putty primer coat | 8d | 2025-12-27 | 2026-01-04 | 3099, 3114 |  | Zenith | 8673324 |
| 3116 | 36900.37000.37100.38500.39500.41100.42300.93100.1448200 | Aluminium door-window fixing | 12d | 2026-01-05 | 2026-01-16 | 3100, 3110, 3114 |  | Zenith | 8673334 |
| 3117 | 36900.37000.37100.38500.39500.41100.42300.93100.1448300 | Door shutter fixing (Pre Hung) | 8d | 2026-01-04 | 2026-01-12 | 3101, 3115 |  | Zenith | 8673344 |
| 3118 | 36900.37000.37100.38500.39500.41100.42300.93100.1448400 | Electrical wiring work | 10d | 2026-01-15 | 2026-01-24 | 3102, 3117 |  | Zenith | 8673354 |
| 3119 | 36900.37000.37100.38500.39500.41100.42300.93100.1448500 | Painting 1st coat | 12d | 2026-01-31 | 2026-02-11 | 3103, 3118 |  | Zenith | 8673364 |

| ID | WBS | Task | Duration | Start | Finish | Predecessors | Constraint | Calendar | Unique_Task_ID |
| --- | --- | --- | --- | --- | --- | --- | --- | --- | --- |
| 3120 | 36900.37000.37100.38500.39500.41100.42300.93200 | **5th floor roof** | 90.75d | 2025-10-11 | 2026-02-23 |  | start no earlier than 2025-10-11 | Zenith | 8649504 |
| 3121 | 36900.37000.37100.38500.39500.41100.42300.93200.1448600 | Block Work | 6d | 2025-10-11 | 2025-10-17 | 3022, 3105 |  | Zenith | 8673374 |
| 3122 | 36900.37000.37100.38500.39500.41100.42300.93200.1448700 | Fire sprinkler pipe fixing | 5d | 2025-10-17 | 2025-10-22 | 3106, 3121 |  | Zenith | 8673384 |
| 3123 | 36900.37000.37100.38500.39500.41100.42300.93200.1448800 | Internal Plumbing Works | 5d | 2025-10-17 | 2025-10-22 | 3107, 3121 |  | Zenith | 8673394 |
| 3124 | 36900.37000.37100.38500.39500.41100.42300.93200.1448900 | Waterproofing | 5d | 2025-10-22 | 2025-10-27 | 3108, 3123 |  | Zenith | 8673404 |
| 3125 | 36900.37000.37100.38500.39500.41100.42300.93200.1449000 | Internal Plaster | 9d | 2025-10-23 | 2025-12-16 | 3109, 3123, 3124FF+5d |  | Zenith | 8673414 |
| 3126 | 36900.37000.37100.38500.39500.41100.42300.93200.1449100 | IPS flooring work | 7d | 2025-12-16 | 2025-12-23 | 3110, 3125 |  | Zenith | 8673424 |
| 3127 | 36900.37000.37100.38500.39500.41100.42300.93200.1449200 | Toilet dado work | 6d | 2025-12-16 | 2025-12-22 | 3111, 3124, 3125 |  | Zenith | 8673434 |
| 3128 | 36900.37000.37100.38500.39500.41100.42300.93200.1449300 | Toilet flooring work | 7d | 2025-12-22 | 2025-12-29 | 3112, 3127 |  | Zenith | 8673444 |
| 3129 | 36900.37000.37100.38500.39500.41100.42300.93200.1449400 | False Cieling panel fixing | 7d | 2025-12-29 | 2026-01-05 | 3113, 3128 |  | Zenith | 8673454 |
| 3130 | 36900.37000.37100.38500.39500.41100.42300.93200.1449500 | Living dinning flooring | 7d | 2025-12-29 | 2026-01-05 | 3114, 3128 |  | Zenith | 8673464 |
| 3131 | 36900.37000.37100.38500.39500.41100.42300.93200.1449600 | Putty primer coat | 8d | 2026-01-05 | 2026-01-13 | 3115, 3130 |  | Zenith | 8673474 |
| 3132 | 36900.37000.37100.38500.39500.41100.42300.93200.1449700 | Aluminium door-window fixing | 12d | 2026-01-17 | 2026-01-28 | 3116, 3126, 3130 |  | Zenith | 8673484 |
| 3133 | 36900.37000.37100.38500.39500.41100.42300.93200.1449800 | Door shutter fixing (Pre Hung) | 8d | 2026-01-13 | 2026-01-21 | 3117, 3131 |  | Zenith | 8673494 |
| 3134 | 36900.37000.37100.38500.39500.41100.42300.93200.1449900 | Electrical wiring work | 10d | 2026-01-25 | 2026-02-03 | 3118, 3133 |  | Zenith | 8673504 |
| 3135 | 36900.37000.37100.38500.39500.41100.42300.93200.1450000 | Painting 1st coat | 12d | 2026-02-12 | 2026-02-23 | 3119, 3134 |  | Zenith | 8673514 |
| 3136 | 36900.37000.37100.38500.39500.41100.42300.93300 | **6th floor roof** | 93.75d | 2025-10-20 | 2026-03-07 |  | start no earlier than 2025-10-20 | Zenith | 8649514 |
| 3137 | 36900.37000.37100.38500.39500.41100.42300.93300.1450100 | Block Work | 6d | 2025-10-20 | 2025-10-26 | 3023, 3121 |  | Zenith | 8673524 |
| 3138 | 36900.37000.37100.38500.39500.41100.42300.93300.1450200 | Fire sprinkler pipe fixing | 5d | 2025-10-26 | 2025-10-31 | 3122, 3137 |  | Zenith | 8673534 |
| 3139 | 36900.37000.37100.38500.39500.41100.42300.93300.1450300 | Internal Plumbing Works | 5d | 2025-10-26 | 2025-10-31 | 3123, 3137 |  | Zenith | 8673544 |
| 3140 | 36900.37000.37100.38500.39500.41100.42300.93300.1450400 | Waterproofing | 5d | 2025-10-31 | 2025-12-20 | 3124, 3139 |  | Zenith | 8673554 |
| 3141 | 36900.37000.37100.38500.39500.41100.42300.93300.1450500 | Internal Plaster | 9d | 2025-12-16 | 2025-12-25 | 3125, 3139, 3140FF+5d |  | Zenith | 8673564 |
| 3142 | 36900.37000.37100.38500.39500.41100.42300.93300.1450600 | IPS flooring work | 7d | 2025-12-25 | 2026-01-01 | 3126, 3141 |  | Zenith | 8673574 |
| 3143 | 36900.37000.37100.38500.39500.41100.42300.93300.1450700 | Toilet dado work | 6d | 2025-12-25 | 2025-12-31 | 3127, 3140, 3141 |  | Zenith | 8673584 |
| 3144 | 36900.37000.37100.38500.39500.41100.42300.93300.1450800 | Toilet flooring work | 7d | 2025-12-31 | 2026-01-07 | 3128, 3143 |  | Zenith | 8673594 |
| 3145 | 36900.37000.37100.38500.39500.41100.42300.93300.1450900 | False Cieling panel fixing | 7d | 2026-01-07 | 2026-01-14 | 3129, 3144 |  | Zenith | 8673604 |
| 3146 | 36900.37000.37100.38500.39500.41100.42300.93300.1451000 | Living dinning flooring | 7d | 2026-01-07 | 2026-01-14 | 3130, 3144 |  | Zenith | 8673614 |
| 3147 | 36900.37000.37100.38500.39500.41100.42300.93300.1451100 | Putty primer coat | 8d | 2026-01-14 | 2026-01-22 | 3131, 3146 |  | Zenith | 8673624 |
| 3148 | 36900.37000.37100.38500.39500.41100.42300.93300.1451200 | Aluminium door-window fixing | 12d | 2026-01-29 | 2026-02-09 | 3132, 3142, 3146 |  | Zenith | 8673634 |
| 3149 | 36900.37000.37100.38500.39500.41100.42300.93300.1451300 | Door shutter fixing (Pre Hung) | 8d | 2026-01-22 | 2026-01-30 | 3133, 3147 |  | Zenith | 8673644 |
| 3150 | 36900.37000.37100.38500.39500.41100.42300.93300.1451400 | Electrical wiring work | 10d | 2026-02-04 | 2026-02-13 | 3134, 3149 |  | Zenith | 8673654 |
| 3151 | 36900.37000.37100.38500.39500.41100.42300.93300.1451500 | Painting 1st coat | 12d | 2026-02-24 | 2026-03-07 | 3135, 3150 |  | Zenith | 8673664 |

| ID | WBS | Task | Duration | Start | Finish | Predecessors | Constraint | Calendar | Unique_Task_ID |
| --- | --- | --- | --- | --- | --- | --- | --- | --- | --- |
| 3152 | 36900.37000.37100.38500.39500.41100.42300.93400 | **7th floor roof** | 96.75d | 2025-10-29 | 2026-03-19 |  | start no earlier than 2025-10-29 | Zenith | 8649524 |
| 3153 | 36900.37000.37100.38500.39500.41100.42300.93400.1451600 | Block Work | 6d | 2025-10-29 | 2025-12-19 | 3024, 3137 |  | Zenith | 8673674 |
| 3154 | 36900.37000.37100.38500.39500.41100.42300.93400.1451700 | Fire sprinkler pipe fixing | 5d | 2025-12-19 | 2025-12-24 | 3138, 3153 |  | Zenith | 8673684 |
| 3155 | 36900.37000.37100.38500.39500.41100.42300.93400.1451800 | Internal Plumbing Works | 5d | 2025-12-19 | 2025-12-24 | 3139, 3153 |  | Zenith | 8673694 |
| 3156 | 36900.37000.37100.38500.39500.41100.42300.93400.1451900 | Waterproofing | 5d | 2025-12-24 | 2025-12-29 | 3140, 3155 |  | Zenith | 8673704 |
| 3157 | 36900.37000.37100.38500.39500.41100.42300.93400.1452000 | Internal Plaster | 9d | 2025-12-25 | 2026-01-03 | 3141, 3155, 3156FF+5d |  | Zenith | 8673714 |
| 3158 | 36900.37000.37100.38500.39500.41100.42300.93400.1452100 | IPS flooring work | 7d | 2026-01-03 | 2026-01-10 | 3142, 3157 |  | Zenith | 8673724 |
| 3159 | 36900.37000.37100.38500.39500.41100.42300.93400.1452200 | Toilet dado work | 6d | 2026-01-03 | 2026-01-09 | 3143, 3156, 3157 |  | Zenith | 8673734 |
| 3160 | 36900.37000.37100.38500.39500.41100.42300.93400.1452300 | Toilet flooring work | 7d | 2026-01-09 | 2026-01-16 | 3144, 3159 |  | Zenith | 8673744 |
| 3161 | 36900.37000.37100.38500.39500.41100.42300.93400.1452400 | False Cieling panel fixing | 7d | 2026-01-16 | 2026-01-23 | 3145, 3160 |  | Zenith | 8673754 |
| 3162 | 36900.37000.37100.38500.39500.41100.42300.93400.1452500 | Living dinning flooring | 7d | 2026-01-16 | 2026-01-23 | 3146, 3160 |  | Zenith | 8673764 |
| 3163 | 36900.37000.37100.38500.39500.41100.42300.93400.1452600 | Putty primer coat | 8d | 2026-01-23 | 2026-01-31 | 3147, 3162 |  | Zenith | 8673774 |
| 3164 | 36900.37000.37100.38500.39500.41100.42300.93400.1452700 | Aluminium door-window fixing | 12d | 2026-02-10 | 2026-02-21 | 3148, 3158, 3162 |  | Zenith | 8673784 |
| 3165 | 36900.37000.37100.38500.39500.41100.42300.93400.1452800 | Door shutter fixing (Pre Hung) | 8d | 2026-01-31 | 2026-02-08 | 3149, 3163 |  | Zenith | 8673794 |
| 3166 | 36900.37000.37100.38500.39500.41100.42300.93400.1452900 | Electrical wiring work | 10d | 2026-02-14 | 2026-02-23 | 3150, 3165 |  | Zenith | 8673804 |
| 3167 | 36900.37000.37100.38500.39500.41100.42300.93400.1453000 | Painting 1st coat | 12d | 2026-03-08 | 2026-03-19 | 3151, 3166 |  | Zenith | 8673814 |
| 3168 | 36900.37000.37100.38500.39500.41100.42300.93500 | **8th floor roof** | 99.75d | 2025-12-22 | 2026-03-31 |  | start no earlier than 2025-12-22 | Zenith | 8649534 |
| 3169 | 36900.37000.37100.38500.39500.41100.42300.93500.1453100 | Block Work | 6d | 2025-12-22 | 2025-12-28 | 3025, 3153 |  | Zenith | 8673824 |
| 3170 | 36900.37000.37100.38500.39500.41100.42300.93500.1453200 | Fire sprinkler pipe fixing | 5d | 2025-12-28 | 2026-01-02 | 3154, 3169 |  | Zenith | 8673834 |
| 3171 | 36900.37000.37100.38500.39500.41100.42300.93500.1453300 | Internal Plumbing Works | 5d | 2025-12-28 | 2026-01-02 | 3155, 3169 |  | Zenith | 8673844 |
| 3172 | 36900.37000.37100.38500.39500.41100.42300.93500.1453400 | Waterproofing | 5d | 2026-01-02 | 2026-01-07 | 3156, 3171 |  | Zenith | 8673854 |
| 3173 | 36900.37000.37100.38500.39500.41100.42300.93500.1453500 | Internal Plaster | 9d | 2026-01-03 | 2026-01-12 | 3157, 3171, 3172FF+5d |  | Zenith | 8673864 |
| 3174 | 36900.37000.37100.38500.39500.41100.42300.93500.1453600 | IPS flooring work | 7d | 2026-01-12 | 2026-01-19 | 3158, 3173 |  | Zenith | 8673874 |
| 3175 | 36900.37000.37100.38500.39500.41100.42300.93500.1453700 | Toilet dado work | 6d | 2026-01-12 | 2026-01-18 | 3159, 3172, 3173 |  | Zenith | 8673884 |
| 3176 | 36900.37000.37100.38500.39500.41100.42300.93500.1453800 | Toilet flooring work | 7d | 2026-01-18 | 2026-01-25 | 3160, 3175 |  | Zenith | 8673894 |
| 3177 | 36900.37000.37100.38500.39500.41100.42300.93500.1453900 | False Cieling panel fixing | 7d | 2026-01-25 | 2026-02-01 | 3161, 3176 |  | Zenith | 8673904 |
| 3178 | 36900.37000.37100.38500.39500.41100.42300.93500.1454000 | Living dinning flooring | 7d | 2026-01-25 | 2026-02-01 | 3162, 3176 |  | Zenith | 8673914 |
| 3179 | 36900.37000.37100.38500.39500.41100.42300.93500.1454100 | Putty primer coat | 8d | 2026-02-01 | 2026-02-09 | 3163, 3178 |  | Zenith | 8673924 |
| 3180 | 36900.37000.37100.38500.39500.41100.42300.93500.1454200 | Aluminium door-window fixing | 12d | 2026-02-22 | 2026-03-05 | 3164, 3174, 3178 |  | Zenith | 8673934 |
| 3181 | 36900.37000.37100.38500.39500.41100.42300.93500.1454300 | Door shutter fixing (Pre Hung) | 8d | 2026-02-09 | 2026-02-17 | 3165, 3179 |  | Zenith | 8673944 |
| 3182 | 36900.37000.37100.38500.39500.41100.42300.93500.1454400 | Electrical wiring work | 10d | 2026-02-24 | 2026-03-05 | 3166, 3181 |  | Zenith | 8673954 |
| 3183 | 36900.37000.37100.38500.39500.41100.42300.93500.1454500 | Painting 1st coat | 12d | 2026-03-20 | 2026-03-31 | 3167, 3182 |  | Zenith | 8673964 |

| ID | WBS | Task | Duration | Start | Finish | Predecessors | Constraint | Calendar | Unique_Task_ID |
| --- | --- | --- | --- | --- | --- | --- | --- | --- | --- |
| 3184 | 36900.37000.37100.38500.39500.41100.42300.93600 | **9th floor roof** | 102.75d | 2025-12-31 | 2026-04-12 |  | start no earlier than 2025-12-31 | Zenith | 8649544 |
| 3185 | 36900.37000.37100.38500.39500.41100.42300.93600.1454600 | Block Work | 6d | 2025-12-31 | 2026-01-06 | 3026, 3169 |  | Zenith | 8673974 |
| 3186 | 36900.37000.37100.38500.39500.41100.42300.93600.1454700 | Fire sprinkler pipe fixing | 5d | 2026-01-06 | 2026-01-11 | 3170, 3185 |  | Zenith | 8673984 |
| 3187 | 36900.37000.37100.38500.39500.41100.42300.93600.1454800 | Internal Plumbing Works | 5d | 2026-01-06 | 2026-01-11 | 3171, 3185 |  | Zenith | 8673994 |
| 3188 | 36900.37000.37100.38500.39500.41100.42300.93600.1454900 | Waterproofing | 5d | 2026-01-11 | 2026-01-16 | 3172, 3187 |  | Zenith | 8674004 |
| 3189 | 36900.37000.37100.38500.39500.41100.42300.93600.1455000 | Internal Plaster | 9d | 2026-01-12 | 2026-01-21 | 3173, 3187, 3188FF+5d |  | Zenith | 8674014 |
| 3190 | 36900.37000.37100.38500.39500.41100.42300.93600.1455100 | IPS flooring work | 7d | 2026-01-21 | 2026-01-28 | 3174, 3189 |  | Zenith | 8674024 |
| 3191 | 36900.37000.37100.38500.39500.41100.42300.93600.1455200 | Toilet dado work | 6d | 2026-01-21 | 2026-01-27 | 3175, 3188, 3189 |  | Zenith | 8674034 |
| 3192 | 36900.37000.37100.38500.39500.41100.42300.93600.1455300 | Toilet flooring work | 7d | 2026-01-27 | 2026-02-03 | 3176, 3191 |  | Zenith | 8674044 |
| 3193 | 36900.37000.37100.38500.39500.41100.42300.93600.1455400 | False Cieling panel fixing | 7d | 2026-02-03 | 2026-02-10 | 3177, 3192 |  | Zenith | 8674054 |
| 3194 | 36900.37000.37100.38500.39500.41100.42300.93600.1455500 | Living dinning flooring | 7d | 2026-02-03 | 2026-02-10 | 3178, 3192 |  | Zenith | 8674064 |
| 3195 | 36900.37000.37100.38500.39500.41100.42300.93600.1455600 | Putty primer coat | 8d | 2026-02-10 | 2026-02-18 | 3179, 3194 |  | Zenith | 8674074 |
| 3196 | 36900.37000.37100.38500.39500.41100.42300.93600.1455700 | Aluminium door-window fixing | 12d | 2026-03-06 | 2026-03-17 | 3180, 3190, 3194 |  | Zenith | 8674084 |
| 3197 | 36900.37000.37100.38500.39500.41100.42300.93600.1455800 | Door shutter fixing (Pre Hung) | 8d | 2026-02-18 | 2026-02-26 | 3181, 3195 |  | Zenith | 8674094 |
| 3198 | 36900.37000.37100.38500.39500.41100.42300.93600.1455900 | Electrical wiring work | 10d | 2026-03-06 | 2026-03-15 | 3182, 3197 |  | Zenith | 8674104 |
| 3199 | 36900.37000.37100.38500.39500.41100.42300.93600.1456000 | Painting 1st coat | 12d | 2026-04-01 | 2026-04-12 | 3183, 3198 |  | Zenith | 8674114 |
| 3200 | 36900.37000.37100.38500.39500.41100.42300.93700 | **10th floor roof** | 105.75d | 2026-01-09 | 2026-04-24 |  | start no earlier than 2026-01-09 | Zenith | 8649554 |
| 3201 | 36900.37000.37100.38500.39500.41100.42300.93700.1456100 | Block Work | 6d | 2026-01-09 | 2026-01-15 | 3027, 3185 |  | Zenith | 8674124 |
| 3202 | 36900.37000.37100.38500.39500.41100.42300.93700.1456200 | Fire sprinkler pipe fixing | 5d | 2026-01-15 | 2026-01-20 | 3186, 3201 |  | Zenith | 8674134 |
| 3203 | 36900.37000.37100.38500.39500.41100.42300.93700.1456300 | Internal Plumbing Works | 5d | 2026-01-15 | 2026-01-20 | 3187, 3201 |  | Zenith | 8674144 |
| 3204 | 36900.37000.37100.38500.39500.41100.42300.93700.1456400 | Waterproofing | 5d | 2026-01-20 | 2026-01-25 | 3188, 3203 |  | Zenith | 8674154 |
| 3205 | 36900.37000.37100.38500.39500.41100.42300.93700.1456500 | Internal Plaster | 9d | 2026-01-21 | 2026-01-30 | 3189, 3203, 3204FF+5d |  | Zenith | 8674164 |
| 3206 | 36900.37000.37100.38500.39500.41100.42300.93700.1456600 | IPS flooring work | 7d | 2026-01-30 | 2026-02-06 | 3190, 3205 |  | Zenith | 8674174 |
| 3207 | 36900.37000.37100.38500.39500.41100.42300.93700.1456700 | Toilet dado work | 6d | 2026-01-30 | 2026-02-05 | 3191, 3204, 3205 |  | Zenith | 8674184 |
| 3208 | 36900.37000.37100.38500.39500.41100.42300.93700.1456800 | Toilet flooring work | 7d | 2026-02-05 | 2026-02-12 | 3192, 3207 |  | Zenith | 8674194 |
| 3209 | 36900.37000.37100.38500.39500.41100.42300.93700.1456900 | False Cieling panel fixing | 7d | 2026-02-12 | 2026-02-19 | 3193, 3208 |  | Zenith | 8674204 |
| 3210 | 36900.37000.37100.38500.39500.41100.42300.93700.1457000 | Living dinning flooring | 7d | 2026-02-12 | 2026-02-19 | 3194, 3208 |  | Zenith | 8674214 |
| 3211 | 36900.37000.37100.38500.39500.41100.42300.93700.1457100 | Putty primer coat | 8d | 2026-02-19 | 2026-02-27 | 3195, 3210 |  | Zenith | 8674224 |
| 3212 | 36900.37000.37100.38500.39500.41100.42300.93700.1457200 | Aluminium door-window fixing | 12d | 2026-03-18 | 2026-03-29 | 3196, 3206, 3210 |  | Zenith | 8674234 |
| 3213 | 36900.37000.37100.38500.39500.41100.42300.93700.1457300 | Door shutter fixing (Pre Hung) | 8d | 2026-02-27 | 2026-03-07 | 3197, 3211 |  | Zenith | 8674244 |
| 3214 | 36900.37000.37100.38500.39500.41100.42300.93700.1457400 | Electrical wiring work | 10d | 2026-03-16 | 2026-03-25 | 3198, 3213 |  | Zenith | 8674254 |
| 3215 | 36900.37000.37100.38500.39500.41100.42300.93700.1457500 | Painting 1st coat | 12d | 2026-04-13 | 2026-04-24 | 3199, 3214 |  | Zenith | 8674264 |

| ID | WBS | Task | Duration | Start | Finish | Predecessors | Constraint | Calendar | Unique_Task_ID |
| --- | --- | --- | --- | --- | --- | --- | --- | --- | --- |
| 3216 | 36900.37000.37100.38500.39500.41100.42300.93800 | **11th floor roof** | 108.75d | 2026-01-18 | 2026-05-06 |  | start no earlier than 2026-01-18 | Zenith | 8649564 |
| 3217 | 36900.37000.37100.38500.39500.41100.42300.93800.1457600 | Block Work | 6d | 2026-01-18 | 2026-01-24 | 3028, 3201 |  | Zenith | 8674274 |
| 3218 | 36900.37000.37100.38500.39500.41100.42300.93800.1457700 | Fire sprinkler pipe fixing | 5d | 2026-01-24 | 2026-01-29 | 3202, 3217 |  | Zenith | 8674284 |
| 3219 | 36900.37000.37100.38500.39500.41100.42300.93800.1457800 | Internal Plumbing Works | 5d | 2026-01-24 | 2026-01-29 | 3203, 3217 |  | Zenith | 8674294 |
| 3220 | 36900.37000.37100.38500.39500.41100.42300.93800.1457900 | Waterproofing | 5d | 2026-01-29 | 2026-02-03 | 3204, 3219 |  | Zenith | 8674304 |
| 3221 | 36900.37000.37100.38500.39500.41100.42300.93800.1458000 | Internal Plaster | 9d | 2026-01-30 | 2026-02-08 | 3205, 3219, 3220FF+5d |  | Zenith | 8674314 |
| 3222 | 36900.37000.37100.38500.39500.41100.42300.93800.1458100 | IPS flooring work | 7d | 2026-02-08 | 2026-02-15 | 3206, 3221 |  | Zenith | 8674324 |
| 3223 | 36900.37000.37100.38500.39500.41100.42300.93800.1458200 | Toilet dado work | 6d | 2026-02-08 | 2026-02-14 | 3207, 3220, 3221 |  | Zenith | 8674334 |
| 3224 | 36900.37000.37100.38500.39500.41100.42300.93800.1458300 | Toilet flooring work | 7d | 2026-02-14 | 2026-02-21 | 3208, 3223 |  | Zenith | 8674344 |
| 3225 | 36900.37000.37100.38500.39500.41100.42300.93800.1458400 | False Cieling panel fixing | 7d | 2026-02-21 | 2026-02-28 | 3209, 3224 |  | Zenith | 8674354 |
| 3226 | 36900.37000.37100.38500.39500.41100.42300.93800.1458500 | Living dinning flooring | 7d | 2026-02-21 | 2026-02-28 | 3210, 3224 |  | Zenith | 8674364 |
| 3227 | 36900.37000.37100.38500.39500.41100.42300.93800.1458600 | Putty primer coat | 8d | 2026-02-28 | 2026-03-08 | 3211, 3226 |  | Zenith | 8674374 |
| 3228 | 36900.37000.37100.38500.39500.41100.42300.93800.1458700 | Aluminium door-window fixing | 12d | 2026-03-30 | 2026-04-10 | 3212, 3222, 3226 |  | Zenith | 8674384 |
| 3229 | 36900.37000.37100.38500.39500.41100.42300.93800.1458800 | Door shutter fixing (Pre Hung) | 8d | 2026-03-08 | 2026-03-16 | 3213, 3227 |  | Zenith | 8674394 |
| 3230 | 36900.37000.37100.38500.39500.41100.42300.93800.1458900 | Electrical wiring work | 10d | 2026-03-26 | 2026-04-04 | 3214, 3229 |  | Zenith | 8674404 |
| 3231 | 36900.37000.37100.38500.39500.41100.42300.93800.1459000 | Painting 1st coat | 12d | 2026-04-25 | 2026-05-06 | 3215, 3230 |  | Zenith | 8674414 |
| 3232 | 36900.37000.37100.38500.39500.41100.42300.93900 | **12th floor roof** | 111.75d | 2026-01-27 | 2026-05-18 |  | start no earlier than 2026-01-27 | Zenith | 8649574 |
| 3233 | 36900.37000.37100.38500.39500.41100.42300.93900.1459100 | Block Work | 6d | 2026-01-27 | 2026-02-02 | 3029, 3217 |  | Zenith | 8674424 |
| 3234 | 36900.37000.37100.38500.39500.41100.42300.93900.1459200 | Fire sprinkler pipe fixing | 5d | 2026-02-02 | 2026-02-07 | 3218, 3233 |  | Zenith | 8674434 |
| 3235 | 36900.37000.37100.38500.39500.41100.42300.93900.1459300 | Internal Plumbing Works | 5d | 2026-02-02 | 2026-02-07 | 3219, 3233 |  | Zenith | 8674444 |
| 3236 | 36900.37000.37100.38500.39500.41100.42300.93900.1459400 | Waterproofing | 5d | 2026-02-07 | 2026-02-12 | 3220, 3235 |  | Zenith | 8674454 |
| 3237 | 36900.37000.37100.38500.39500.41100.42300.93900.1459500 | Internal Plaster | 9d | 2026-02-08 | 2026-02-17 | 3221, 3235, 3236FF+5d |  | Zenith | 8674464 |
| 3238 | 36900.37000.37100.38500.39500.41100.42300.93900.1459600 | IPS flooring work | 7d | 2026-02-17 | 2026-02-24 | 3222, 3237 |  | Zenith | 8674474 |
| 3239 | 36900.37000.37100.38500.39500.41100.42300.93900.1459700 | Toilet dado work | 6d | 2026-02-17 | 2026-02-23 | 3223, 3236, 3237 |  | Zenith | 8674484 |
| 3240 | 36900.37000.37100.38500.39500.41100.42300.93900.1459800 | Toilet flooring work | 7d | 2026-02-23 | 2026-03-02 | 3224, 3239 |  | Zenith | 8674494 |
| 3241 | 36900.37000.37100.38500.39500.41100.42300.93900.1459900 | False Cieling panel fixing | 7d | 2026-03-02 | 2026-03-09 | 3225, 3240 |  | Zenith | 8674504 |
| 3242 | 36900.37000.37100.38500.39500.41100.42300.93900.1460000 | Living dinning flooring | 7d | 2026-03-02 | 2026-03-09 | 3226, 3240 |  | Zenith | 8674514 |
| 3243 | 36900.37000.37100.38500.39500.41100.42300.93900.1460100 | Putty primer coat | 8d | 2026-03-09 | 2026-03-17 | 3227, 3242 |  | Zenith | 8674524 |
| 3244 | 36900.37000.37100.38500.39500.41100.42300.93900.1460200 | Aluminium door-window fixing | 12d | 2026-04-11 | 2026-04-22 | 3228, 3238, 3242 |  | Zenith | 8674534 |
| 3245 | 36900.37000.37100.38500.39500.41100.42300.93900.1460300 | Door shutter fixing (Pre Hung) | 8d | 2026-03-17 | 2026-03-25 | 3229, 3243 |  | Zenith | 8674544 |
| 3246 | 36900.37000.37100.38500.39500.41100.42300.93900.1460400 | Electrical wiring work | 10d | 2026-04-05 | 2026-04-14 | 3230, 3245 |  | Zenith | 8674554 |
| 3247 | 36900.37000.37100.38500.39500.41100.42300.93900.1460500 | Painting 1st coat | 12d | 2026-05-07 | 2026-05-18 | 3231, 3246 |  | Zenith | 8674564 |

| ID | WBS | Task | Duration | Start | Finish | Predecessors | Constraint | Calendar | Unique_Task_ID |
| --- | --- | --- | --- | --- | --- | --- | --- | --- | --- |
| 3248 | 36900.37000.37100.38500.39500.41100.42300.94000 | **13th floor roof** | 114.75d | 2026-02-05 | 2026-05-30 |  | start no earlier than 2026-02-05 | Zenith | 8649584 |
| 3249 | 36900.37000.37100.38500.39500.41100.42300.94000.1460600 | Block Work | 6d | 2026-02-05 | 2026-02-11 | 3030, 3233 |  | Zenith | 8674574 |
| 3250 | 36900.37000.37100.38500.39500.41100.42300.94000.1460700 | Fire sprinkler pipe fixing | 5d | 2026-02-11 | 2026-02-16 | 3234, 3249 |  | Zenith | 8674584 |
| 3251 | 36900.37000.37100.38500.39500.41100.42300.94000.1460800 | Internal Plumbing Works | 5d | 2026-02-11 | 2026-02-16 | 3235, 3249 |  | Zenith | 8674594 |
| 3252 | 36900.37000.37100.38500.39500.41100.42300.94000.1460900 | Waterproofing | 5d | 2026-02-16 | 2026-02-21 | 3236, 3251 |  | Zenith | 8674604 |
| 3253 | 36900.37000.37100.38500.39500.41100.42300.94000.1461000 | Internal Plaster | 9d | 2026-02-17 | 2026-02-26 | 3237, 3251, 3252FF+5d |  | Zenith | 8674614 |
| 3254 | 36900.37000.37100.38500.39500.41100.42300.94000.1461100 | IPS flooring work | 7d | 2026-02-26 | 2026-03-05 | 3238, 3253 |  | Zenith | 8674624 |
| 3255 | 36900.37000.37100.38500.39500.41100.42300.94000.1461200 | Toilet dado work | 6d | 2026-02-26 | 2026-03-04 | 3239, 3252, 3253 |  | Zenith | 8674634 |
| 3256 | 36900.37000.37100.38500.39500.41100.42300.94000.1461300 | Toilet flooring work | 7d | 2026-03-04 | 2026-03-11 | 3240, 3255 |  | Zenith | 8674644 |
| 3257 | 36900.37000.37100.38500.39500.41100.42300.94000.1461400 | False Cieling panel fixing | 7d | 2026-03-11 | 2026-03-18 | 3241, 3256 |  | Zenith | 8674654 |
| 3258 | 36900.37000.37100.38500.39500.41100.42300.94000.1461500 | Living dinning flooring | 7d | 2026-03-11 | 2026-03-18 | 3242, 3256 |  | Zenith | 8674664 |
| 3259 | 36900.37000.37100.38500.39500.41100.42300.94000.1461600 | Putty primer coat | 8d | 2026-03-18 | 2026-03-26 | 3243, 3258 |  | Zenith | 8674674 |
| 3260 | 36900.37000.37100.38500.39500.41100.42300.94000.1461700 | Aluminium door-window fixing | 12d | 2026-04-23 | 2026-05-04 | 3244, 3254, 3258 |  | Zenith | 8674684 |
| 3261 | 36900.37000.37100.38500.39500.41100.42300.94000.1461800 | Door shutter fixing (Pre Hung) | 8d | 2026-03-26 | 2026-04-03 | 3245, 3259 |  | Zenith | 8674694 |
| 3262 | 36900.37000.37100.38500.39500.41100.42300.94000.1461900 | Electrical wiring work | 10d | 2026-04-15 | 2026-04-24 | 3246, 3261 |  | Zenith | 8674704 |
| 3263 | 36900.37000.37100.38500.39500.41100.42300.94000.1462000 | Painting 1st coat | 12d | 2026-05-19 | 2026-05-30 | 3247, 3262 |  | Zenith | 8674714 |
| 3264 | 36900.37000.37100.38500.39500.41100.42300.94100 | **14th floor roof** | 117.75d | 2026-02-14 | 2026-06-11 |  | start no earlier than 2026-02-14 | Zenith | 8649594 |
| 3265 | 36900.37000.37100.38500.39500.41100.42300.94100.1462100 | Block Work | 6d | 2026-02-14 | 2026-02-20 | 3031, 3249 |  | Zenith | 8674724 |
| 3266 | 36900.37000.37100.38500.39500.41100.42300.94100.1462200 | Fire sprinkler pipe fixing | 5d | 2026-02-20 | 2026-02-25 | 3250, 3265 |  | Zenith | 8674734 |
| 3267 | 36900.37000.37100.38500.39500.41100.42300.94100.1462300 | Internal Plumbing Works | 5d | 2026-02-20 | 2026-02-25 | 3251, 3265 |  | Zenith | 8674744 |
| 3268 | 36900.37000.37100.38500.39500.41100.42300.94100.1462400 | Waterproofing | 5d | 2026-02-25 | 2026-03-02 | 3252, 3267 |  | Zenith | 8674754 |
| 3269 | 36900.37000.37100.38500.39500.41100.42300.94100.1462500 | Internal Plaster | 9d | 2026-02-26 | 2026-03-07 | 3253, 3267, 3268FF+5d |  | Zenith | 8674764 |
| 3270 | 36900.37000.37100.38500.39500.41100.42300.94100.1462600 | IPS flooring work | 7d | 2026-03-07 | 2026-03-14 | 3254, 3269 |  | Zenith | 8674774 |
| 3271 | 36900.37000.37100.38500.39500.41100.42300.94100.1462700 | Toilet dado work | 6d | 2026-03-07 | 2026-03-13 | 3255, 3268, 3269 |  | Zenith | 8674784 |
| 3272 | 36900.37000.37100.38500.39500.41100.42300.94100.1462800 | Toilet flooring work | 7d | 2026-03-13 | 2026-03-20 | 3256, 3271 |  | Zenith | 8674794 |
| 3273 | 36900.37000.37100.38500.39500.41100.42300.94100.1462900 | False Cieling panel fixing | 7d | 2026-03-20 | 2026-03-27 | 3257, 3272 |  | Zenith | 8674804 |
| 3274 | 36900.37000.37100.38500.39500.41100.42300.94100.1463000 | Living dinning flooring | 7d | 2026-03-20 | 2026-03-27 | 3258, 3272 |  | Zenith | 8674814 |
| 3275 | 36900.37000.37100.38500.39500.41100.42300.94100.1463100 | Putty primer coat | 8d | 2026-03-27 | 2026-04-04 | 3259, 3274 |  | Zenith | 8674824 |
| 3276 | 36900.37000.37100.38500.39500.41100.42300.94100.1463200 | Aluminium door-window fixing | 12d | 2026-05-05 | 2026-05-16 | 3260, 3270, 3274 |  | Zenith | 8674834 |
| 3277 | 36900.37000.37100.38500.39500.41100.42300.94100.1463300 | Door shutter fixing (Pre Hung) | 8d | 2026-04-04 | 2026-04-12 | 3261, 3275 |  | Zenith | 8674844 |
| 3278 | 36900.37000.37100.38500.39500.41100.42300.94100.1463400 | Electrical wiring work | 10d | 2026-04-25 | 2026-05-04 | 3262, 3277 |  | Zenith | 8674854 |
| 3279 | 36900.37000.37100.38500.39500.41100.42300.94100.1463500 | Painting 1st coat | 12d | 2026-05-31 | 2026-06-11 | 3263, 3278 |  | Zenith | 8674864 |

| ID | WBS | Task | Duration | Start | Finish | Predecessors | Constraint | Calendar | Unique_Task_ID |
| --- | --- | --- | --- | --- | --- | --- | --- | --- | --- |
| 3280 | 36900.37000.37100.38500.39500.41100.42300.94200 | **15th floor roof** | 121.75d | 2026-02-22 | 2026-06-23 |  | start no earlier than 2026-02-22 | Zenith | 8649604 |
| 3281 | 36900.37000.37100.38500.39500.41100.42300.94200.1463600 | Block Work | 6d | 2026-02-22 | 2026-02-28 | 3032, 3265 |  | Zenith | 8674874 |
| 3282 | 36900.37000.37100.38500.39500.41100.42300.94200.1463700 | Fire sprinkler pipe fixing | 5d | 2026-02-28 | 2026-03-05 | 3266, 3281 |  | Zenith | 8674884 |
| 3283 | 36900.37000.37100.38500.39500.41100.42300.94200.1463800 | Internal Plumbing Works | 5d | 2026-02-28 | 2026-03-05 | 3267, 3281 |  | Zenith | 8674894 |
| 3284 | 36900.37000.37100.38500.39500.41100.42300.94200.1463900 | Waterproofing | 5d | 2026-03-05 | 2026-03-10 | 3268, 3283 |  | Zenith | 8674904 |
| 3285 | 36900.37000.37100.38500.39500.41100.42300.94200.1464000 | Internal Plaster | 9d | 2026-03-07 | 2026-03-16 | 3269, 3283, 3284FF+5d |  | Zenith | 8674914 |
| 3286 | 36900.37000.37100.38500.39500.41100.42300.94200.1464100 | IPS flooring work | 7d | 2026-03-16 | 2026-03-23 | 3270, 3285 |  | Zenith | 8674924 |
| 3287 | 36900.37000.37100.38500.39500.41100.42300.94200.1464200 | Toilet dado work | 6d | 2026-03-16 | 2026-03-22 | 3271, 3284, 3285 |  | Zenith | 8674934 |
| 3288 | 36900.37000.37100.38500.39500.41100.42300.94200.1464300 | Toilet flooring work | 7d | 2026-03-22 | 2026-03-29 | 3272, 3287 |  | Zenith | 8674944 |
| 3289 | 36900.37000.37100.38500.39500.41100.42300.94200.1464400 | False Cieling panel fixing | 7d | 2026-03-29 | 2026-04-05 | 3273, 3288 |  | Zenith | 8674954 |
| 3290 | 36900.37000.37100.38500.39500.41100.42300.94200.1464500 | Living dinning flooring | 7d | 2026-03-29 | 2026-04-05 | 3274, 3288 |  | Zenith | 8674964 |
| 3291 | 36900.37000.37100.38500.39500.41100.42300.94200.1464600 | Aluminium door-window fixing | 8d | 2026-05-17 | 2026-05-24 | 3276, 3286, 3290 |  | Zenith | 8674974 |
| 3292 | 36900.37000.37100.38500.39500.41100.42300.94200.1464700 | Putty primer coat | 12d | 2026-04-05 | 2026-04-17 | 3275, 3290 |  | Zenith | 8674984 |
| 3293 | 36900.37000.37100.38500.39500.41100.42300.94200.1464800 | Door shutter fixing (Pre Hung) | 8d | 2026-04-17 | 2026-04-25 | 3277, 3292 |  | Zenith | 8674994 |
| 3294 | 36900.37000.37100.38500.39500.41100.42300.94200.1464900 | Electrical wiring work | 10d | 2026-05-05 | 2026-05-14 | 3278, 3293 |  | Zenith | 8675004 |
| 3295 | 36900.37000.37100.38500.39500.41100.42300.94200.1465000 | Painting 1st coat | 12d | 2026-06-12 | 2026-06-23 | 3279, 3294 |  | Zenith | 8675014 |
| 3296 | 36900.37000.37100.38500.39500.41100.42300.94300 | **16th floor roof** | 125.75d | 2026-03-02 | 2026-07-05 |  | start no earlier than 2026-03-02 | Zenith | 8649614 |
| 3297 | 36900.37000.37100.38500.39500.41100.42300.94300.1465100 | Block Work | 6d | 2026-03-02 | 2026-03-08 | 3033, 3281 |  | Zenith | 8675024 |
| 3298 | 36900.37000.37100.38500.39500.41100.42300.94300.1465200 | Fire sprinkler pipe fixing | 5d | 2026-03-08 | 2026-03-13 | 3282, 3297 |  | Zenith | 8675034 |
| 3299 | 36900.37000.37100.38500.39500.41100.42300.94300.1465300 | Internal Plumbing Works | 5d | 2026-03-08 | 2026-03-13 | 3283, 3297 |  | Zenith | 8675044 |
| 3300 | 36900.37000.37100.38500.39500.41100.42300.94300.1465400 | Waterproofing | 5d | 2026-03-13 | 2026-03-18 | 3284, 3299 |  | Zenith | 8675054 |
| 3301 | 36900.37000.37100.38500.39500.41100.42300.94300.1465500 | Internal Plaster | 9d | 2026-03-16 | 2026-03-25 | 3285, 3299, 3300FF+5d |  | Zenith | 8675064 |
| 3302 | 36900.37000.37100.38500.39500.41100.42300.94300.1465600 | IPS flooring work | 7d | 2026-03-25 | 2026-04-01 | 3286, 3301 |  | Zenith | 8675074 |
| 3303 | 36900.37000.37100.38500.39500.41100.42300.94300.1465700 | Toilet dado work | 6d | 2026-03-25 | 2026-03-31 | 3287, 3300, 3301 |  | Zenith | 8675084 |
| 3304 | 36900.37000.37100.38500.39500.41100.42300.94300.1465800 | Toilet flooring work | 7d | 2026-03-31 | 2026-04-07 | 3288, 3303 |  | Zenith | 8675094 |
| 3305 | 36900.37000.37100.38500.39500.41100.42300.94300.1465900 | False Cieling panel fixing | 7d | 2026-04-07 | 2026-04-14 | 3289, 3304 |  | Zenith | 8675104 |
| 3306 | 36900.37000.37100.38500.39500.41100.42300.94300.1466000 | Living dinning flooring | 7d | 2026-04-07 | 2026-04-14 | 3290, 3304 |  | Zenith | 8675114 |
| 3307 | 36900.37000.37100.38500.39500.41100.42300.94300.1466100 | Putty primer coat | 8d | 2026-04-17 | 2026-04-25 | 3292, 3306 |  | Zenith | 8675124 |
| 3308 | 36900.37000.37100.38500.39500.41100.42300.94300.1466200 | Aluminium door-window fixing | 12d | 2026-05-25 | 2026-06-05 | 3291, 3302, 3306 |  | Zenith | 8675134 |
| 3309 | 36900.37000.37100.38500.39500.41100.42300.94300.1466300 | Door shutter fixing (Pre Hung) | 8d | 2026-04-25 | 2026-05-03 | 3293, 3307 |  | Zenith | 8675144 |
| 3310 | 36900.37000.37100.38500.39500.41100.42300.94300.1466400 | Electrical wiring work | 10d | 2026-05-15 | 2026-05-24 | 3294, 3309 |  | Zenith | 8675154 |
| 3311 | 36900.37000.37100.38500.39500.41100.42300.94300.1466500 | Painting 1st coat | 12d | 2026-06-24 | 2026-07-05 | 3295, 3310 |  | Zenith | 8675164 |

| ID | WBS | Task | Duration | Start | Finish | Predecessors | Constraint | Calendar | Unique_Task_ID |
| --- | --- | --- | --- | --- | --- | --- | --- | --- | --- |
| 3312 | 36900.37000.37100.38500.39500.41100.42300.94400 | **17th floor roof** | 129.75d | 2026-03-10 | 2026-07-17 |  | start no earlier than 2026-03-10 | Zenith | 8649624 |
| 3313 | 36900.37000.37100.38500.39500.41100.42300.94400.1466600 | Block Work | 6d | 2026-03-10 | 2026-03-16 | 3034, 3297 |  | Zenith | 8675174 |
| 3314 | 36900.37000.37100.38500.39500.41100.42300.94400.1466700 | Fire sprinkler pipe fixing | 5d | 2026-03-16 | 2026-03-21 | 3298, 3313 |  | Zenith | 8696194 |
| 3315 | 36900.37000.37100.38500.39500.41100.42300.94400.1466800 | Internal Plumbing Works | 5d | 2026-03-16 | 2026-03-21 | 3299, 3313 |  | Zenith | 8696204 |
| 3316 | 36900.37000.37100.38500.39500.41100.42300.94400.1466900 | Waterproofing | 5d | 2026-03-21 | 2026-03-26 | 3300, 3315 |  | Zenith | 8696214 |
| 3317 | 36900.37000.37100.38500.39500.41100.42300.94400.1467000 | Internal Plaster | 9d | 2026-03-25 | 2026-04-03 | 3301, 3315, 3316FF+5d |  | Zenith | 8696224 |
| 3318 | 36900.37000.37100.38500.39500.41100.42300.94400.1467100 | IPS flooring work | 7d | 2026-04-03 | 2026-04-10 | 3302, 3317 |  | Zenith | 8696234 |
| 3319 | 36900.37000.37100.38500.39500.41100.42300.94400.1467200 | Toilet dado work | 6d | 2026-04-03 | 2026-04-09 | 3303, 3316, 3317 |  | Zenith | 8696244 |
| 3320 | 36900.37000.37100.38500.39500.41100.42300.94400.1467300 | Toilet flooring work | 7d | 2026-04-09 | 2026-04-16 | 3304, 3319 |  | Zenith | 8696254 |
| 3321 | 36900.37000.37100.38500.39500.41100.42300.94400.1467400 | False Cieling panel fixing | 7d | 2026-04-16 | 2026-04-23 | 3305, 3320 |  | Zenith | 8696264 |
| 3322 | 36900.37000.37100.38500.39500.41100.42300.94400.1467500 | Living dinning flooring | 7d | 2026-04-16 | 2026-04-23 | 3306, 3320 |  | Zenith | 8696274 |
| 3323 | 36900.37000.37100.38500.39500.41100.42300.94400.1467600 | Putty primer coat | 8d | 2026-04-25 | 2026-05-03 | 3307, 3322 |  | Zenith | 8696284 |
| 3324 | 36900.37000.37100.38500.39500.41100.42300.94400.1467700 | Aluminium door-window fixing | 12d | 2026-06-06 | 2026-06-17 | 3308, 3318, 3322 |  | Zenith | 8696294 |
| 3325 | 36900.37000.37100.38500.39500.41100.42300.94400.1467800 | Door shutter fixing (Pre Hung) | 8d | 2026-05-03 | 2026-05-11 | 3309, 3323 |  | Zenith | 8696304 |
| 3326 | 36900.37000.37100.38500.39500.41100.42300.94400.1467900 | Electrical wiring work | 10d | 2026-05-25 | 2026-06-03 | 3310, 3325 |  | Zenith | 8696314 |
| 3327 | 36900.37000.37100.38500.39500.41100.42300.94400.1468000 | Painting 1st coat | 12d | 2026-07-06 | 2026-07-17 | 3311, 3326 |  | Zenith | 8696324 |
| 3328 | 36900.37000.37100.38500.39500.41100.42300.94500 | **18th floor roof** | 133.75d | 2026-03-18 | 2026-07-29 |  | start no earlier than 2026-03-18 | Zenith | 8649634 |
| 3329 | 36900.37000.37100.38500.39500.41100.42300.94500.1468100 | Block Work | 6d | 2026-03-18 | 2026-03-24 | 3035, 3313 |  | Zenith | 8696334 |
| 3330 | 36900.37000.37100.38500.39500.41100.42300.94500.1468200 | Fire sprinkler pipe fixing | 5d | 2026-03-24 | 2026-03-29 | 3314, 3329 |  | Zenith | 8696344 |
| 3331 | 36900.37000.37100.38500.39500.41100.42300.94500.1468300 | Internal Plumbing Works | 5d | 2026-03-24 | 2026-03-29 | 3315, 3329 |  | Zenith | 8696354 |
| 3332 | 36900.37000.37100.38500.39500.41100.42300.94500.1468400 | Waterproofing | 5d | 2026-03-29 | 2026-04-03 | 3316, 3331 |  | Zenith | 8696364 |
| 3333 | 36900.37000.37100.38500.39500.41100.42300.94500.1468500 | Internal Plaster | 9d | 2026-04-03 | 2026-04-12 | 3317, 3331, 3332FF+5d |  | Zenith | 8696374 |
| 3334 | 36900.37000.37100.38500.39500.41100.42300.94500.1468600 | IPS flooring work | 7d | 2026-04-12 | 2026-04-19 | 3318, 3333 |  | Zenith | 8696384 |
| 3335 | 36900.37000.37100.38500.39500.41100.42300.94500.1468700 | Toilet dado work | 6d | 2026-04-12 | 2026-04-18 | 3319, 3332, 3333 |  | Zenith | 8696394 |
| 3336 | 36900.37000.37100.38500.39500.41100.42300.94500.1468800 | Toilet flooring work | 7d | 2026-04-18 | 2026-04-25 | 3320, 3335 |  | Zenith | 8696404 |
| 3337 | 36900.37000.37100.38500.39500.41100.42300.94500.1468900 | False Cieling panel fixing | 7d | 2026-04-25 | 2026-05-02 | 3321, 3336 |  | Zenith | 8696414 |
| 3338 | 36900.37000.37100.38500.39500.41100.42300.94500.1469000 | Living dinning flooring | 7d | 2026-04-25 | 2026-05-02 | 3322, 3336 |  | Zenith | 8696424 |
| 3339 | 36900.37000.37100.38500.39500.41100.42300.94500.1469100 | Putty primer coat | 8d | 2026-05-03 | 2026-05-11 | 3323, 3338 |  | Zenith | 8696434 |
| 3340 | 36900.37000.37100.38500.39500.41100.42300.94500.1469200 | Aluminium door-window fixing | 12d | 2026-06-18 | 2026-06-29 | 3324, 3334, 3338 |  | Zenith | 8696444 |
| 3341 | 36900.37000.37100.38500.39500.41100.42300.94500.1469300 | Door shutter fixing (Pre Hung) | 8d | 2026-05-11 | 2026-05-19 | 3325, 3339 |  | Zenith | 8696454 |
| 3342 | 36900.37000.37100.38500.39500.41100.42300.94500.1469400 | Electrical wiring work | 10d | 2026-06-04 | 2026-06-13 | 3326, 3341 |  | Zenith | 8696464 |
| 3343 | 36900.37000.37100.38500.39500.41100.42300.94500.1469500 | Painting 1st coat | 12d | 2026-07-18 | 2026-07-29 | 3327, 3342 |  | Zenith | 8696474 |

| ID | WBS | Task | Duration | Start | Finish | Predecessors | Constraint | Calendar | Unique_Task_ID |
| --- | --- | --- | --- | --- | --- | --- | --- | --- | --- |
| 3344 | 36900.37000.37100.38500.39500.41100.42300.94600 | **19th floor roof** | 137.75d | 2026-03-26 | 2026-08-10 |  | start no earlier than 2026-03-26 | Zenith | 8649644 |
| 3345 | 36900.37000.37100.38500.39500.41100.42300.94600.1469600 | Block Work | 6d | 2026-03-26 | 2026-04-01 | 3036, 3329 |  | Zenith | 8696484 |
| 3346 | 36900.37000.37100.38500.39500.41100.42300.94600.1469700 | Fire sprinkler pipe fixing | 4d | 2026-04-01 | 2026-04-05 | 3330, 3345 |  | Zenith | 8696494 |
| 3347 | 36900.37000.37100.38500.39500.41100.42300.94600.1469800 | Internal Plumbing Works | 4d | 2026-04-01 | 2026-04-05 | 3331, 3345 |  | Zenith | 8696504 |
| 3348 | 36900.37000.37100.38500.39500.41100.42300.94600.1469900 | Waterproofing | 4d | 2026-04-05 | 2026-04-09 | 3332, 3347 |  | Zenith | 8696514 |
| 3349 | 36900.37000.37100.38500.39500.41100.42300.94600.1470000 | Internal Plaster | 9d | 2026-04-12 | 2026-04-21 | 3333, 3347, 3348FF+5d |  | Zenith | 8696524 |
| 3350 | 36900.37000.37100.38500.39500.41100.42300.94600.1470100 | IPS flooring work | 7d | 2026-04-21 | 2026-04-28 | 3334, 3349 |  | Zenith | 8696534 |
| 3351 | 36900.37000.37100.38500.39500.41100.42300.94600.1470200 | Toilet dado work | 6d | 2026-04-21 | 2026-04-27 | 3335, 3348, 3349 |  | Zenith | 8696544 |
| 3352 | 36900.37000.37100.38500.39500.41100.42300.94600.1470300 | Toilet flooring work | 7d | 2026-04-27 | 2026-05-04 | 3336, 3351 |  | Zenith | 8696554 |
| 3353 | 36900.37000.37100.38500.39500.41100.42300.94600.1470400 | False Cieling panel fixing | 7d | 2026-05-04 | 2026-05-11 | 3337, 3352 |  | Zenith | 8696564 |
| 3354 | 36900.37000.37100.38500.39500.41100.42300.94600.1470500 | Living dinning flooring | 7d | 2026-05-04 | 2026-05-11 | 3338, 3352 |  | Zenith | 8696574 |
| 3355 | 36900.37000.37100.38500.39500.41100.42300.94600.1470600 | Putty primer coat | 8d | 2026-05-11 | 2026-05-19 | 3339, 3354 |  | Zenith | 8696584 |
| 3356 | 36900.37000.37100.38500.39500.41100.42300.94600.1470700 | Aluminium door-window fixing | 12d | 2026-06-30 | 2026-07-11 | 3340, 3350, 3354 |  | Zenith | 8696594 |
| 3357 | 36900.37000.37100.38500.39500.41100.42300.94600.1470800 | Door shutter fixing (Pre Hung) | 8d | 2026-05-19 | 2026-05-27 | 3341, 3355 |  | Zenith | 8696604 |
| 3358 | 36900.37000.37100.38500.39500.41100.42300.94600.1470900 | Electrical wiring work | 10d | 2026-06-14 | 2026-06-23 | 3342, 3357 |  | Zenith | 8696614 |
| 3359 | 36900.37000.37100.38500.39500.41100.42300.94600.1471000 | Painting 1st coat | 12d | 2026-07-30 | 2026-08-10 | 3343, 3358 |  | Zenith | 8696624 |
| 3360 | 36900.37000.37100.38500.39500.41100.42300.94700 | **20th floor roof** | 141.75d | 2026-04-03 | 2026-08-22 |  | start no earlier than 2026-04-03 | Zenith | 8649654 |
| 3361 | 36900.37000.37100.38500.39500.41100.42300.94700.1471100 | Block Work | 6d | 2026-04-03 | 2026-04-09 | 3037, 3345 |  | Zenith | 8696634 |
| 3362 | 36900.37000.37100.38500.39500.41100.42300.94700.1471200 | Fire sprinkler pipe fixing | 4d | 2026-04-09 | 2026-04-13 | 3346, 3361 |  | Zenith | 8696644 |
| 3363 | 36900.37000.37100.38500.39500.41100.42300.94700.1471300 | Internal Plumbing Works | 4d | 2026-04-09 | 2026-04-13 | 3347, 3361 |  | Zenith | 8696654 |
| 3364 | 36900.37000.37100.38500.39500.41100.42300.94700.1471400 | Waterproofing | 4d | 2026-04-13 | 2026-04-17 | 3348, 3363 |  | Zenith | 8696664 |
| 3365 | 36900.37000.37100.38500.39500.41100.42300.94700.1471500 | Internal Plaster | 9d | 2026-04-21 | 2026-04-30 | 3349, 3363, 3364FF+5d |  | Zenith | 8696674 |
| 3366 | 36900.37000.37100.38500.39500.41100.42300.94700.1471600 | IPS flooring work | 7d | 2026-04-30 | 2026-05-07 | 3350, 3365 |  | Zenith | 8696684 |
| 3367 | 36900.37000.37100.38500.39500.41100.42300.94700.1471700 | Toilet dado work | 6d | 2026-04-30 | 2026-05-06 | 3351, 3364, 3365 |  | Zenith | 8696694 |
| 3368 | 36900.37000.37100.38500.39500.41100.42300.94700.1471800 | Toilet flooring work | 7d | 2026-05-06 | 2026-05-13 | 3352, 3367 |  | Zenith | 8696704 |
| 3369 | 36900.37000.37100.38500.39500.41100.42300.94700.1471900 | False Cieling panel fixing | 7d | 2026-05-13 | 2026-05-20 | 3353, 3368 |  | Zenith | 8696714 |
| 3370 | 36900.37000.37100.38500.39500.41100.42300.94700.1472000 | Living dinning flooring | 7d | 2026-05-13 | 2026-05-20 | 3354, 3368 |  | Zenith | 8696724 |
| 3371 | 36900.37000.37100.38500.39500.41100.42300.94700.1472100 | Putty primer coat | 8d | 2026-05-20 | 2026-05-28 | 3355, 3370 |  | Zenith | 8696734 |
| 3372 | 36900.37000.37100.38500.39500.41100.42300.94700.1472200 | Aluminium door-window fixing | 12d | 2026-07-12 | 2026-07-23 | 3356, 3366, 3370 |  | Zenith | 8696744 |
| 3373 | 36900.37000.37100.38500.39500.41100.42300.94700.1472300 | Door shutter fixing (Pre Hung) | 8d | 2026-05-28 | 2026-06-05 | 3357, 3371 |  | Zenith | 8696754 |
| 3374 | 36900.37000.37100.38500.39500.41100.42300.94700.1472400 | Electrical wiring work | 10d | 2026-06-24 | 2026-07-03 | 3358, 3373 |  | Zenith | 8696764 |
| 3375 | 36900.37000.37100.38500.39500.41100.42300.94700.1472500 | Painting 1st coat | 12d | 2026-08-11 | 2026-08-22 | 3359, 3374 |  | Zenith | 8696774 |

| ID | WBS | Task | Duration | Start | Finish | Predecessors | Constraint | Calendar | Unique_Task_ID |
| --- | --- | --- | --- | --- | --- | --- | --- | --- | --- |
| 3376 | 36900.37000.37100.38500.39500.41100.42300.94800 | **21st floor roof** | 145.75d | 2026-04-11 | 2026-09-03 |  | start no earlier than 2026-04-11 | Zenith | 8649664 |
| 3377 | 36900.37000.37100.38500.39500.41100.42300.94800.1472600 | Block Work | 6d | 2026-04-11 | 2026-04-17 | 3038, 3361 |  | Zenith | 8696784 |
| 3378 | 36900.37000.37100.38500.39500.41100.42300.94800.1472700 | Fire sprinkler pipe fixing | 4d | 2026-04-17 | 2026-04-21 | 3362, 3377 |  | Zenith | 8696794 |
| 3379 | 36900.37000.37100.38500.39500.41100.42300.94800.1472800 | Internal Plumbing Works | 4d | 2026-04-17 | 2026-04-21 | 3363, 3377 |  | Zenith | 8696804 |
| 3380 | 36900.37000.37100.38500.39500.41100.42300.94800.1472900 | Waterproofing | 4d | 2026-04-21 | 2026-04-25 | 3364, 3379 |  | Zenith | 8696814 |
| 3381 | 36900.37000.37100.38500.39500.41100.42300.94800.1473000 | Internal Plaster | 10d | 2026-04-30 | 2026-05-10 | 3365, 3379, 3380FF+5d |  | Zenith | 8696824 |
| 3382 | 36900.37000.37100.38500.39500.41100.42300.94800.1473100 | IPS flooring work | 7d | 2026-05-10 | 2026-05-17 | 3366, 3381 |  | Zenith | 8696834 |
| 3383 | 36900.37000.37100.38500.39500.41100.42300.94800.1473200 | Toilet dado work | 6d | 2026-05-10 | 2026-05-16 | 3367, 3380, 3381 |  | Zenith | 8696844 |
| 3384 | 36900.37000.37100.38500.39500.41100.42300.94800.1473300 | Toilet flooring work | 7d | 2026-05-16 | 2026-05-23 | 3368, 3383 |  | Zenith | 8696854 |
| 3385 | 36900.37000.37100.38500.39500.41100.42300.94800.1473400 | False Cieling panel fixing | 7d | 2026-05-23 | 2026-05-30 | 3369, 3384 |  | Zenith | 8696864 |
| 3386 | 36900.37000.37100.38500.39500.41100.42300.94800.1473500 | Living dinning flooring | 7d | 2026-05-23 | 2026-05-30 | 3370, 3384 |  | Zenith | 8696874 |
| 3387 | 36900.37000.37100.38500.39500.41100.42300.94800.1473600 | Putty primer coat | 8d | 2026-05-30 | 2026-06-07 | 3371, 3386 |  | Zenith | 8696884 |
| 3388 | 36900.37000.37100.38500.39500.41100.42300.94800.1473700 | Aluminium door-window fixing | 12d | 2026-07-24 | 2026-08-04 | 3372, 3382, 3386 |  | Zenith | 8696894 |
| 3389 | 36900.37000.37100.38500.39500.41100.42300.94800.1473800 | Door shutter fixing (Pre Hung) | 8d | 2026-06-07 | 2026-06-15 | 3373, 3387 |  | Zenith | 8696904 |
| 3390 | 36900.37000.37100.38500.39500.41100.42300.94800.1473900 | Electrical wiring work | 10d | 2026-07-04 | 2026-07-13 | 3374, 3389 |  | Zenith | 8696914 |
| 3391 | 36900.37000.37100.38500.39500.41100.42300.94800.1474000 | Painting 1st coat | 12d | 2026-08-23 | 2026-09-03 | 3375, 3390 |  | Zenith | 8696924 |
| 3392 | 36900.37000.37100.38500.39500.41100.42300.94900 | **22nd floor roof** | 149.75d | 2026-04-19 | 2026-09-15 |  | start no earlier than 2026-04-19 | Zenith | 8649674 |
| 3393 | 36900.37000.37100.38500.39500.41100.42300.94900.1474100 | Block Work | 6d | 2026-04-19 | 2026-04-25 | 3039, 3377 |  | Zenith | 8696934 |
| 3394 | 36900.37000.37100.38500.39500.41100.42300.94900.1474200 | Fire sprinkler pipe fixing | 4d | 2026-04-25 | 2026-04-29 | 3378, 3393 |  | Zenith | 8696944 |
| 3395 | 36900.37000.37100.38500.39500.41100.42300.94900.1474300 | Internal Plumbing Works | 4d | 2026-04-25 | 2026-04-29 | 3379, 3393 |  | Zenith | 8696954 |
| 3396 | 36900.37000.37100.38500.39500.41100.42300.94900.1474400 | Waterproofing | 4d | 2026-04-29 | 2026-05-03 | 3380, 3395 |  | Zenith | 8696964 |
| 3397 | 36900.37000.37100.38500.39500.41100.42300.94900.1474500 | Internal Plaster | 10d | 2026-05-10 | 2026-05-20 | 3381, 3395, 3396FF+5d |  | Zenith | 8696974 |
| 3398 | 36900.37000.37100.38500.39500.41100.42300.94900.1474600 | IPS flooring work | 7d | 2026-05-20 | 2026-05-27 | 3382, 3397 |  | Zenith | 8696984 |
| 3399 | 36900.37000.37100.38500.39500.41100.42300.94900.1474700 | Toilet dado work | 6d | 2026-05-20 | 2026-05-26 | 3383, 3396, 3397 |  | Zenith | 8696994 |
| 3400 | 36900.37000.37100.38500.39500.41100.42300.94900.1474800 | Toilet flooring work | 7d | 2026-05-26 | 2026-06-02 | 3384, 3399 |  | Zenith | 8697004 |
| 3401 | 36900.37000.37100.38500.39500.41100.42300.94900.1474900 | False Cieling panel fixing | 7d | 2026-06-02 | 2026-06-09 | 3385, 3400 |  | Zenith | 8697014 |
| 3402 | 36900.37000.37100.38500.39500.41100.42300.94900.1475000 | Living dinning flooring | 7d | 2026-06-02 | 2026-06-09 | 3386, 3400 |  | Zenith | 8697024 |
| 3403 | 36900.37000.37100.38500.39500.41100.42300.94900.1475100 | Putty primer coat | 8d | 2026-06-09 | 2026-06-17 | 3387, 3402 |  | Zenith | 8697034 |
| 3404 | 36900.37000.37100.38500.39500.41100.42300.94900.1475200 | Aluminium door-window fixing | 12d | 2026-08-05 | 2026-08-16 | 3388, 3398, 3402 |  | Zenith | 8697044 |
| 3405 | 36900.37000.37100.38500.39500.41100.42300.94900.1475300 | Door shutter fixing (Pre Hung) | 8d | 2026-06-17 | 2026-06-25 | 3389, 3403 |  | Zenith | 8697054 |
| 3406 | 36900.37000.37100.38500.39500.41100.42300.94900.1475400 | Electrical wiring work | 10d | 2026-07-14 | 2026-07-23 | 3390, 3405 |  | Zenith | 8697064 |
| 3407 | 36900.37000.37100.38500.39500.41100.42300.94900.1475500 | Painting 1st coat | 12d | 2026-09-04 | 2026-09-15 | 3391, 3406 |  | Zenith | 8697074 |

| ID | WBS | Task | Duration | Start | Finish | Predecessors | Constraint | Calendar | Unique_Task_ID |
| --- | --- | --- | --- | --- | --- | --- | --- | --- | --- |
| 3408 | 36900.37000.37100.38500.39500.41100.42300.95000 | **23rd floor roof** | 153.75d | 2026-04-27 | 2026-09-27 |  | start no earlier than 2026-04-27 | Zenith | 8649684 |
| 3409 | 36900.37000.37100.38500.39500.41100.42300.95000.1475600 | Block Work | 6d | 2026-04-27 | 2026-05-03 | 3040, 3393 |  | Zenith | 8697084 |
| 3410 | 36900.37000.37100.38500.39500.41100.42300.95000.1475700 | Fire sprinkler pipe fixing | 5d | 2026-05-03 | 2026-05-08 | 3394, 3409 |  | Zenith | 8697094 |
| 3411 | 36900.37000.37100.38500.39500.41100.42300.95000.1475800 | Internal Plumbing Works | 5d | 2026-05-03 | 2026-05-08 | 3395, 3409 |  | Zenith | 8697104 |
| 3412 | 36900.37000.37100.38500.39500.41100.42300.95000.1475900 | Waterproofing | 5d | 2026-05-08 | 2026-05-13 | 3396, 3411 |  | Zenith | 8697114 |
| 3413 | 36900.37000.37100.38500.39500.41100.42300.95000.1476000 | Internal Plaster | 9d | 2026-05-20 | 2026-05-29 | 3397, 3411, 3412FF+5d |  | Zenith | 8697124 |
| 3414 | 36900.37000.37100.38500.39500.41100.42300.95000.1476100 | IPS flooring work | 7d | 2026-05-29 | 2026-06-05 | 3398, 3413 |  | Zenith | 8697134 |
| 3415 | 36900.37000.37100.38500.39500.41100.42300.95000.1476200 | Toilet dado work | 6d | 2026-05-29 | 2026-06-04 | 3399, 3412, 3413 |  | Zenith | 8697144 |
| 3416 | 36900.37000.37100.38500.39500.41100.42300.95000.1476300 | Toilet flooring work | 7d | 2026-06-04 | 2026-06-11 | 3400, 3415 |  | Zenith | 8697154 |
| 3417 | 36900.37000.37100.38500.39500.41100.42300.95000.1476400 | False Cieling panel fixing | 7d | 2026-06-11 | 2026-06-18 | 3401, 3416 |  | Zenith | 8697164 |
| 3418 | 36900.37000.37100.38500.39500.41100.42300.95000.1476500 | Living dinning flooring | 7d | 2026-06-11 | 2026-06-18 | 3402, 3416 |  | Zenith | 8697174 |
| 3419 | 36900.37000.37100.38500.39500.41100.42300.95000.1476600 | Putty primer coat | 8d | 2026-06-18 | 2026-06-26 | 3403, 3418 |  | Zenith | 8697184 |
| 3420 | 36900.37000.37100.38500.39500.41100.42300.95000.1476700 | Aluminium door-window fixing | 12d | 2026-08-17 | 2026-08-28 | 3404, 3414, 3418 |  | Zenith | 8697194 |
| 3421 | 36900.37000.37100.38500.39500.41100.42300.95000.1476800 | Door shutter fixing (Pre Hung) | 8d | 2026-06-26 | 2026-07-04 | 3405, 3419 |  | Zenith | 8697204 |
| 3422 | 36900.37000.37100.38500.39500.41100.42300.95000.1476900 | Electrical wiring work | 10d | 2026-07-24 | 2026-08-02 | 3406, 3421 |  | Zenith | 8697214 |
| 3423 | 36900.37000.37100.38500.39500.41100.42300.95000.1477000 | Painting 1st coat | 12d | 2026-09-16 | 2026-09-27 | 3407, 3422 |  | Zenith | 8697224 |
| 3424 | 36900.37000.37100.38500.39500.41100.42300.95100 | **24th floor roof** | 157.75d | 2026-05-05 | 2026-10-09 |  | start no earlier than 2026-05-05 | Zenith | 8649694 |
| 3425 | 36900.37000.37100.38500.39500.41100.42300.95100.1477100 | Block Work | 6d | 2026-05-05 | 2026-05-11 | 3041, 3409 |  | Zenith | 8697234 |
| 3426 | 36900.37000.37100.38500.39500.41100.42300.95100.1477200 | Fire sprinkler pipe fixing | 5d | 2026-05-11 | 2026-05-16 | 3410, 3425 |  | Zenith | 8697244 |
| 3427 | 36900.37000.37100.38500.39500.41100.42300.95100.1477300 | Internal Plumbing Works | 5d | 2026-05-11 | 2026-05-16 | 3411, 3425 |  | Zenith | 8697254 |
| 3428 | 36900.37000.37100.38500.39500.41100.42300.95100.1477400 | Waterproofing | 5d | 2026-05-16 | 2026-05-21 | 3412, 3427 |  | Zenith | 8697264 |
| 3429 | 36900.37000.37100.38500.39500.41100.42300.95100.1477500 | Internal Plaster | 9d | 2026-05-29 | 2026-06-07 | 3413, 3427, 3428FF+5d |  | Zenith | 8697274 |
| 3430 | 36900.37000.37100.38500.39500.41100.42300.95100.1477600 | IPS flooring work | 7d | 2026-06-07 | 2026-06-14 | 3414, 3429 |  | Zenith | 8697284 |
| 3431 | 36900.37000.37100.38500.39500.41100.42300.95100.1477700 | Toilet dado work | 6d | 2026-06-07 | 2026-06-13 | 3415, 3428, 3429 |  | Zenith | 8697294 |
| 3432 | 36900.37000.37100.38500.39500.41100.42300.95100.1477800 | Toilet flooring work | 7d | 2026-06-13 | 2026-06-20 | 3416, 3431 |  | Zenith | 8697304 |
| 3433 | 36900.37000.37100.38500.39500.41100.42300.95100.1477900 | False Cieling panel fixing | 7d | 2026-06-20 | 2026-06-27 | 3417, 3432 |  | Zenith | 8697314 |
| 3434 | 36900.37000.37100.38500.39500.41100.42300.95100.1478000 | Living dinning flooring | 7d | 2026-06-20 | 2026-06-27 | 3418, 3432 |  | Zenith | 8697324 |
| 3435 | 36900.37000.37100.38500.39500.41100.42300.95100.1478100 | Putty primer coat | 8d | 2026-06-27 | 2026-07-05 | 3419, 3434 |  | Zenith | 8697334 |
| 3436 | 36900.37000.37100.38500.39500.41100.42300.95100.1478200 | Aluminium door-window fixing | 12d | 2026-08-29 | 2026-09-09 | 3420, 3430, 3434 |  | Zenith | 8697344 |
| 3437 | 36900.37000.37100.38500.39500.41100.42300.95100.1478300 | Door shutter fixing (Pre Hung) | 8d | 2026-07-05 | 2026-07-13 | 3421, 3435 |  | Zenith | 8697354 |
| 3438 | 36900.37000.37100.38500.39500.41100.42300.95100.1478400 | Electrical wiring work | 10d | 2026-08-03 | 2026-08-12 | 3422, 3437 |  | Zenith | 8697364 |
| 3439 | 36900.37000.37100.38500.39500.41100.42300.95100.1478500 | Painting 1st coat | 12d | 2026-09-28 | 2026-10-09 | 3423, 3438 |  | Zenith | 8697374 |

| ID | WBS | Task | Duration | Start | Finish | Predecessors | Constraint | Calendar | Unique_Task_ID |
| --- | --- | --- | --- | --- | --- | --- | --- | --- | --- |
| 3440 | 36900.37000.37100.38500.39500.41100.42300.95200 | **25th floor roof** | 161.75d | 2026-05-13 | 2026-10-21 |  | start no earlier than 2026-05-13 | Zenith | 8649704 |
| 3441 | 36900.37000.37100.38500.39500.41100.42300.95200.1478600 | Block Work | 6d | 2026-05-13 | 2026-05-19 | 3042, 3425 |  | Zenith | 8697384 |
| 3442 | 36900.37000.37100.38500.39500.41100.42300.95200.1478700 | Fire sprinkler pipe fixing | 5d | 2026-05-19 | 2026-05-24 | 3426, 3441 |  | Zenith | 8697394 |
| 3443 | 36900.37000.37100.38500.39500.41100.42300.95200.1478800 | Internal Plumbing Works | 5d | 2026-05-19 | 2026-05-24 | 3427, 3441 |  | Zenith | 8697404 |
| 3444 | 36900.37000.37100.38500.39500.41100.42300.95200.1478900 | Waterproofing | 5d | 2026-05-24 | 2026-05-29 | 3428, 3443 |  | Zenith | 8697414 |
| 3445 | 36900.37000.37100.38500.39500.41100.42300.95200.1479000 | Internal Plaster | 9d | 2026-06-07 | 2026-06-16 | 3429, 3443, 3444FF+5d |  | Zenith | 8697424 |
| 3446 | 36900.37000.37100.38500.39500.41100.42300.95200.1479100 | IPS flooring work | 7d | 2026-06-16 | 2026-06-23 | 3430, 3445 |  | Zenith | 8697434 |
| 3447 | 36900.37000.37100.38500.39500.41100.42300.95200.1479200 | Toilet dado work | 6d | 2026-06-16 | 2026-06-22 | 3431, 3444, 3445 |  | Zenith | 8697444 |
| 3448 | 36900.37000.37100.38500.39500.41100.42300.95200.1479300 | Toilet flooring work | 7d | 2026-06-22 | 2026-06-29 | 3432, 3447 |  | Zenith | 8697454 |
| 3449 | 36900.37000.37100.38500.39500.41100.42300.95200.1479400 | False Cieling panel fixing | 7d | 2026-06-29 | 2026-07-06 | 3433, 3448 |  | Zenith | 8697464 |
| 3450 | 36900.37000.37100.38500.39500.41100.42300.95200.1479500 | Living dinning flooring | 7d | 2026-06-29 | 2026-07-06 | 3434, 3448 |  | Zenith | 8697474 |
| 3451 | 36900.37000.37100.38500.39500.41100.42300.95200.1479600 | Putty primer coat | 8d | 2026-07-06 | 2026-07-14 | 3435, 3450 |  | Zenith | 8697484 |
| 3452 | 36900.37000.37100.38500.39500.41100.42300.95200.1479700 | Aluminium door-window fixing | 12d | 2026-09-10 | 2026-09-21 | 3436, 3446, 3450 |  | Zenith | 8697494 |
| 3453 | 36900.37000.37100.38500.39500.41100.42300.95200.1479800 | Door shutter fixing (Pre Hung) | 8d | 2026-07-14 | 2026-07-22 | 3437, 3451 |  | Zenith | 8697504 |
| 3454 | 36900.37000.37100.38500.39500.41100.42300.95200.1479900 | Electrical wiring work | 10d | 2026-08-13 | 2026-08-22 | 3438, 3453 |  | Zenith | 8697514 |
| 3455 | 36900.37000.37100.38500.39500.41100.42300.95200.1480000 | Painting 1st coat | 12d | 2026-10-10 | 2026-10-21 | 3439, 3454 |  | Zenith | 8697524 |
| 3456 | 36900.37000.37100.38500.39500.41100.42300.95300 | **26th floor roof** | 165.75d | 2026-05-21 | 2026-12-17 |  | start no earlier than 2026-05-21 | Zenith | 8649714 |
| 3457 | 36900.37000.37100.38500.39500.41100.42300.95300.1480100 | Block Work | 7d | 2026-05-21 | 2026-05-28 | 3043, 3441 |  | Zenith | 8697534 |
| 3458 | 36900.37000.37100.38500.39500.41100.42300.95300.1480200 | Fire sprinkler pipe fixing | 7d | 2026-05-28 | 2026-06-04 | 3442, 3457 |  | Zenith | 8697544 |
| 3459 | 36900.37000.37100.38500.39500.41100.42300.95300.1480300 | Internal Plumbing Works | 7d | 2026-05-28 | 2026-06-04 | 3443, 3457 |  | Zenith | 8697554 |
| 3460 | 36900.37000.37100.38500.39500.41100.42300.95300.1480400 | Waterproofing | 7d | 2026-06-04 | 2026-06-11 | 3444, 3459 |  | Zenith | 8697564 |
| 3461 | 36900.37000.37100.38500.39500.41100.42300.95300.1480500 | Internal Plaster | 7d | 2026-06-16 | 2026-06-23 | 3445, 3459, 3460FF+5d |  | Zenith | 8697574 |
| 3462 | 36900.37000.37100.38500.39500.41100.42300.95300.1480600 | IPS flooring work | 7d | 2026-06-23 | 2026-06-30 | 3446, 3461 |  | Zenith | 8697584 |
| 3463 | 36900.37000.37100.38500.39500.41100.42300.95300.1480700 | Toilet dado work | 6d | 2026-06-23 | 2026-06-29 | 3447, 3460, 3461 |  | Zenith | 8697594 |
| 3464 | 36900.37000.37100.38500.39500.41100.42300.95300.1480800 | Toilet flooring work | 7d | 2026-06-29 | 2026-07-06 | 3448, 3463 |  | Zenith | 8697604 |
| 3465 | 36900.37000.37100.38500.39500.41100.42300.95300.1480900 | False Cieling panel fixing | 7d | 2026-07-06 | 2026-07-13 | 3449, 3464 |  | Zenith | 8697614 |
| 3466 | 36900.37000.37100.38500.39500.41100.42300.95300.1481000 | Living dinning flooring | 7d | 2026-07-06 | 2026-07-13 | 3450, 3464 |  | Zenith | 8697624 |
| 3467 | 36900.37000.37100.38500.39500.41100.42300.95300.1481100 | Putty primer coat | 8d | 2026-07-14 | 2026-07-22 | 3451, 3466 |  | Zenith | 8697634 |
| 3468 | 36900.37000.37100.38500.39500.41100.42300.95300.1481200 | Aluminium door-window fixing | 12d | 2026-09-22 | 2026-10-03 | 3452, 3462, 3466 |  | Zenith | 8697644 |
| 3469 | 36900.37000.37100.38500.39500.41100.42300.95300.1481300 | Door shutter fixing (Pre Hung) | 8d | 2026-07-22 | 2026-07-30 | 3453, 3467 |  | Zenith | 8697654 |
| 3470 | 36900.37000.37100.38500.39500.41100.42300.95300.1481400 | Electrical wiring work | 10d | 2026-08-23 | 2026-09-01 | 3454, 3469 |  | Zenith | 8697664 |
| 3471 | 36900.37000.37100.38500.39500.41100.42300.95300.1481500 | Painting 1st coat | 12d | 2026-10-22 | 2026-12-17 | 3455, 3470 |  | Zenith | 8697674 |

| ID | WBS | Task | Duration | Start | Finish | Predecessors | Constraint | Calendar | Unique_Task_ID |
| --- | --- | --- | --- | --- | --- | --- | --- | --- | --- |
| 3472 | 36900.37000.37100.38500.39500.41100.42300.95400 | **27th floor roof** | 167.75d | 2026-05-31 | 2026-12-29 |  | start no earlier than 2026-05-31 | Zenith | 8649724 |
| 3473 | 36900.37000.37100.38500.39500.41100.42300.95400.1481600 | Block Work | 7d | 2026-05-31 | 2026-06-07 | 3044, 3457 |  | Zenith | 8697684 |
| 3474 | 36900.37000.37100.38500.39500.41100.42300.95400.1481700 | Fire sprinkler pipe fixing | 7d | 2026-06-07 | 2026-06-14 | 3458, 3473 |  | Zenith | 8697694 |
| 3475 | 36900.37000.37100.38500.39500.41100.42300.95400.1481800 | Internal Plumbing Works | 7d | 2026-06-07 | 2026-06-14 | 3459, 3473 |  | Zenith | 8697704 |
| 3476 | 36900.37000.37100.38500.39500.41100.42300.95400.1481900 | Waterproofing | 7d | 2026-06-14 | 2026-06-21 | 3460, 3475 |  | Zenith | 8697714 |
| 3477 | 36900.37000.37100.38500.39500.41100.42300.95400.1482000 | Internal Plaster | 7d | 2026-06-23 | 2026-06-30 | 3461, 3475, 3476FF+5d |  | Zenith | 8697724 |
| 3478 | 36900.37000.37100.38500.39500.41100.42300.95400.1482100 | IPS flooring work | 7d | 2026-06-30 | 2026-07-07 | 3462, 3477 |  | Zenith | 8697734 |
| 3479 | 36900.37000.37100.38500.39500.41100.42300.95400.1482200 | Toilet dado work | 6d | 2026-06-30 | 2026-07-06 | 3463, 3476, 3477 |  | Zenith | 8697744 |
| 3480 | 36900.37000.37100.38500.39500.41100.42300.95400.1482300 | Toilet flooring work | 7d | 2026-07-06 | 2026-07-13 | 3464, 3479 |  | Zenith | 8697754 |
| 3481 | 36900.37000.37100.38500.39500.41100.42300.95400.1482400 | False Cieling panel fixing | 7d | 2026-07-13 | 2026-07-20 | 3465, 3480 |  | Zenith | 8697764 |
| 3482 | 36900.37000.37100.38500.39500.41100.42300.95400.1482500 | Living dinning flooring | 7d | 2026-07-13 | 2026-07-20 | 3466, 3480 |  | Zenith | 8697774 |
| 3483 | 36900.37000.37100.38500.39500.41100.42300.95400.1482600 | Putty primer coat | 8d | 2026-07-22 | 2026-07-30 | 3467, 3482 |  | Zenith | 8697784 |
| 3484 | 36900.37000.37100.38500.39500.41100.42300.95400.1482700 | Aluminium door-window fixing | 12d | 2026-10-04 | 2026-10-15 | 3468, 3478, 3482 |  | Zenith | 8697794 |
| 3485 | 36900.37000.37100.38500.39500.41100.42300.95400.1482800 | Door shutter fixing (Pre Hung) | 8d | 2026-07-30 | 2026-08-07 | 3469, 3483 |  | Zenith | 8697804 |
| 3486 | 36900.37000.37100.38500.39500.41100.42300.95400.1482900 | Electrical wiring work | 10d | 2026-09-02 | 2026-09-11 | 3470, 3485 |  | Zenith | 8697814 |
| 3487 | 36900.37000.37100.38500.39500.41100.42300.95400.1483000 | Painting 1st coat | 12d | 2026-12-18 | 2026-12-29 | 3471, 3486 |  | Zenith | 8697824 |
| 3488 | 36900.37000.37100.38500.39500.41100.42300.95500 | **28th floor roof** | 169.75d | 2026-06-10 | 2027-01-10 |  | start no earlier than 2026-06-10 | Zenith | 8649734 |
| 3489 | 36900.37000.37100.38500.39500.41100.42300.95500.1483100 | Block Work | 7d | 2026-06-10 | 2026-06-17 | 3045, 3473 |  | Zenith | 8697834 |
| 3490 | 36900.37000.37100.38500.39500.41100.42300.95500.1483200 | Fire sprinkler pipe fixing | 7d | 2026-06-17 | 2026-06-24 | 3474, 3489 |  | Zenith | 8697844 |
| 3491 | 36900.37000.37100.38500.39500.41100.42300.95500.1483300 | Internal Plumbing Works | 7d | 2026-06-17 | 2026-06-24 | 3475, 3489 |  | Zenith | 8697854 |
| 3492 | 36900.37000.37100.38500.39500.41100.42300.95500.1483400 | Waterproofing | 7d | 2026-06-24 | 2026-07-01 | 3476, 3491 |  | Zenith | 8697864 |
| 3493 | 36900.37000.37100.38500.39500.41100.42300.95500.1483500 | Internal Plaster | 7d | 2026-06-30 | 2026-07-07 | 3477, 3491, 3492FF+5d |  | Zenith | 8697874 |
| 3494 | 36900.37000.37100.38500.39500.41100.42300.95500.1483600 | IPS flooring work | 7d | 2026-07-07 | 2026-07-14 | 3478, 3493 |  | Zenith | 8697884 |
| 3495 | 36900.37000.37100.38500.39500.41100.42300.95500.1483700 | Toilet dado work | 6d | 2026-07-07 | 2026-07-13 | 3479, 3492, 3493 |  | Zenith | 8697894 |
| 3496 | 36900.37000.37100.38500.39500.41100.42300.95500.1483800 | Toilet flooring work | 7d | 2026-07-13 | 2026-07-20 | 3480, 3495 |  | Zenith | 8697904 |
| 3497 | 36900.37000.37100.38500.39500.41100.42300.95500.1483900 | False Cieling panel fixing | 7d | 2026-07-20 | 2026-07-27 | 3481, 3496 |  | Zenith | 8697914 |
| 3498 | 36900.37000.37100.38500.39500.41100.42300.95500.1484000 | Living dinning flooring | 7d | 2026-07-20 | 2026-07-27 | 3482, 3496 |  | Zenith | 8697924 |
| 3499 | 36900.37000.37100.38500.39500.41100.42300.95500.1484100 | Putty primer coat | 8d | 2026-07-30 | 2026-08-07 | 3483, 3498 |  | Zenith | 8697934 |
| 3500 | 36900.37000.37100.38500.39500.41100.42300.95500.1484200 | Aluminium door-window fixing | 12d | 2026-10-16 | 2026-10-27 | 3484, 3494, 3498 |  | Zenith | 8697944 |
| 3501 | 36900.37000.37100.38500.39500.41100.42300.95500.1484300 | Door shutter fixing (Pre Hung) | 8d | 2026-08-07 | 2026-08-15 | 3485, 3499 |  | Zenith | 8697954 |
| 3502 | 36900.37000.37100.38500.39500.41100.42300.95500.1484400 | Electrical wiring work | 10d | 2026-09-12 | 2026-09-21 | 3486, 3501 |  | Zenith | 8697964 |
| 3503 | 36900.37000.37100.38500.39500.41100.42300.95500.1484500 | Painting 1st coat | 12d | 2026-12-30 | 2027-01-10 | 3487, 3502 |  | Zenith | 8697974 |

| ID | WBS | Task | Duration | Start | Finish | Predecessors | Constraint | Calendar | Unique_Task_ID |
| --- | --- | --- | --- | --- | --- | --- | --- | --- | --- |
| 3504 | 36900.37000.37100.38500.39500.41100.42300.95600 | **29th floor roof** | 171.75d | 2026-06-20 | 2027-01-22 |  | start no earlier than 2026-06-20 | Zenith | 8649744 |
| 3505 | 36900.37000.37100.38500.39500.41100.42300.95600.1484600 | Block Work | 7d | 2026-06-20 | 2026-06-27 | 3046, 3489 |  | Zenith | 8697984 |
| 3506 | 36900.37000.37100.38500.39500.41100.42300.95600.1484700 | Fire sprinkler pipe fixing | 7d | 2026-06-27 | 2026-07-04 | 3490, 3505 |  | Zenith | 8697994 |
| 3507 | 36900.37000.37100.38500.39500.41100.42300.95600.1484800 | Internal Plumbing Works | 7d | 2026-06-27 | 2026-07-04 | 3491, 3505 |  | Zenith | 8698004 |
| 3508 | 36900.37000.37100.38500.39500.41100.42300.95600.1484900 | Waterproofing | 7d | 2026-07-04 | 2026-07-11 | 3492, 3507 |  | Zenith | 8698014 |
| 3509 | 36900.37000.37100.38500.39500.41100.42300.95600.1485000 | Internal Plaster | 7d | 2026-07-09 | 2026-07-16 | 3493, 3507, 3508FF+5d |  | Zenith | 8698024 |
| 3510 | 36900.37000.37100.38500.39500.41100.42300.95600.1485100 | IPS flooring work | 7d | 2026-07-16 | 2026-07-23 | 3494, 3509 |  | Zenith | 8698034 |
| 3511 | 36900.37000.37100.38500.39500.41100.42300.95600.1485200 | Toilet dado work | 6d | 2026-07-16 | 2026-07-22 | 3495, 3508, 3509 |  | Zenith | 8698044 |
| 3512 | 36900.37000.37100.38500.39500.41100.42300.95600.1485300 | Toilet flooring work | 7d | 2026-07-22 | 2026-07-29 | 3496, 3511 |  | Zenith | 8698054 |
| 3513 | 36900.37000.37100.38500.39500.41100.42300.95600.1485400 | False Cieling panel fixing | 7d | 2026-07-29 | 2026-08-05 | 3497, 3512 |  | Zenith | 8698064 |
| 3514 | 36900.37000.37100.38500.39500.41100.42300.95600.1485500 | Living dinning flooring | 7d | 2026-07-29 | 2026-08-05 | 3498, 3512 |  | Zenith | 8698074 |
| 3515 | 36900.37000.37100.38500.39500.41100.42300.95600.1485600 | Putty primer coat | 8d | 2026-08-07 | 2026-08-15 | 3499, 3514 |  | Zenith | 8698084 |
| 3516 | 36900.37000.37100.38500.39500.41100.42300.95600.1485700 | Aluminium door-window fixing | 12d | 2026-10-28 | 2026-12-23 | 3500, 3510, 3514 |  | Zenith | 8698094 |
| 3517 | 36900.37000.37100.38500.39500.41100.42300.95600.1485800 | Door shutter fixing (Pre Hung) | 8d | 2026-08-15 | 2026-08-23 | 3501, 3515 |  | Zenith | 8698104 |
| 3518 | 36900.37000.37100.38500.39500.41100.42300.95600.1485900 | Electrical wiring work | 10d | 2026-09-22 | 2026-10-01 | 3502, 3517 |  | Zenith | 8698114 |
| 3519 | 36900.37000.37100.38500.39500.41100.42300.95600.1486000 | Painting 1st coat | 12d | 2027-01-11 | 2027-01-22 | 3503, 3518 |  | Zenith | 8698124 |
| 3520 | 36900.37000.37100.38500.39500.41100.42300.95700 | **30th floor roof** | 176.75d | 2026-06-30 | 2027-02-06 |  | start no earlier than 2026-06-30 | Zenith | 8649754 |
| 3521 | 36900.37000.37100.38500.39500.41100.42300.95700.1486100 | Block Work | 10d | 2026-06-30 | 2026-07-10 | 3047, 3505 |  | Zenith | 8698134 |
| 3522 | 36900.37000.37100.38500.39500.41100.42300.95700.1486200 | Fire sprinkler pipe fixing | 6d | 2026-07-10 | 2026-07-16 | 3506, 3521 |  | Zenith | 8698144 |
| 3523 | 36900.37000.37100.38500.39500.41100.42300.95700.1486300 | Internal Plumbing Works | 10d | 2026-07-10 | 2026-07-20 | 3507, 3521 |  | Zenith | 8698154 |
| 3524 | 36900.37000.37100.38500.39500.41100.42300.95700.1486400 | Waterproofing | 14d | 2026-07-20 | 2026-08-03 | 3508, 3523 |  | Zenith | 8698164 |
| 3525 | 36900.37000.37100.38500.39500.41100.42300.95700.1486500 | Internal Plaster | 14d | 2026-07-25 | 2026-08-08 | 3509, 3523, 3524FF+5d |  | Zenith | 8698174 |
| 3526 | 36900.37000.37100.38500.39500.41100.42300.95700.1486600 | IPS flooring work | 10d | 2026-08-08 | 2026-08-18 | 3510, 3525 |  | Zenith | 8698184 |
| 3527 | 36900.37000.37100.38500.39500.41100.42300.95700.1486700 | Toilet dado work | 10d | 2026-08-08 | 2026-08-18 | 3511, 3524, 3525 |  | Zenith | 8698194 |
| 3528 | 36900.37000.37100.38500.39500.41100.42300.95700.1486800 | Toilet flooring work | 7d | 2026-08-18 | 2026-08-25 | 3512, 3527 |  | Zenith | 8698204 |
| 3529 | 36900.37000.37100.38500.39500.41100.42300.95700.1486900 | False Cieling panel fixing | 10d | 2026-08-25 | 2026-09-04 | 3513, 3528 |  | Zenith | 8698214 |
| 3530 | 36900.37000.37100.38500.39500.41100.42300.95700.1487000 | Living dinning flooring | 13d | 2026-08-25 | 2026-09-07 | 3514, 3528 |  | Zenith | 8698224 |
| 3531 | 36900.37000.37100.38500.39500.41100.42300.95700.1487100 | Putty primer coat | 12d | 2026-09-07 | 2026-09-19 | 3515, 3530 |  | Zenith | 8698234 |
| 3532 | 36900.37000.37100.38500.39500.41100.42300.95700.1487200 | Aluminium door-window fixing | 15d | 2026-12-24 | 2027-01-07 | 3516, 3526, 3530 |  | Zenith | 8698244 |
| 3533 | 36900.37000.37100.38500.39500.41100.42300.95700.1487300 | Door shutter fixing (Pre Hung) | 8d | 2026-09-19 | 2026-09-27 | 3517, 3531 |  | Zenith | 8698254 |
| 3534 | 36900.37000.37100.38500.39500.41100.42300.95700.1487400 | Electrical wiring work | 12d | 2026-10-02 | 2026-10-13 | 3518, 3533 |  | Zenith | 8698264 |
| 3535 | 36900.37000.37100.38500.39500.41100.42300.95700.1487500 | Painting 1st coat | 15d | 2027-01-23 | 2027-02-06 | 3519, 3534 |  | Zenith | 8698274 |

| ID | WBS | Task | Duration | Start | Finish | Predecessors | Constraint | Calendar | Unique_Task_ID |
| --- | --- | --- | --- | --- | --- | --- | --- | --- | --- |
| 3536 | 36900.37000.37100.38500.39500.41100.42300.95800 | **31st floor roof** | 173.75d | 2026-07-18 | 2027-02-21 |  | start no earlier than 2026-07-18 | Zenith | 8649764 |
| 3537 | 36900.37000.37100.38500.39500.41100.42300.95800.1487600 | Block Work | 10d | 2026-07-18 | 2026-07-28 | 3048, 3521 |  | Zenith | 8698284 |
| 3538 | 36900.37000.37100.38500.39500.41100.42300.95800.1487700 | Fire sprinkler pipe fixing | 6d | 2026-07-28 | 2026-08-03 | 3522, 3537 |  | Zenith | 8698294 |
| 3539 | 36900.37000.37100.38500.39500.41100.42300.95800.1487800 | Internal Plumbing Works | 10d | 2026-07-28 | 2026-08-07 | 3523, 3537 |  | Zenith | 8698304 |
| 3540 | 36900.37000.37100.38500.39500.41100.42300.95800.1487900 | Waterproofing | 14d | 2026-08-07 | 2026-08-21 | 3524, 3539 |  | Zenith | 8698314 |
| 3541 | 36900.37000.37100.38500.39500.41100.42300.95800.1488000 | Internal Plaster | 14d | 2026-08-12 | 2026-08-26 | 3525, 3539, 3540FF+5d |  | Zenith | 8698324 |
| 3542 | 36900.37000.37100.38500.39500.41100.42300.95800.1488100 | IPS flooring work | 10d | 2026-08-26 | 2026-09-05 | 3526, 3541 |  | Zenith | 8698334 |
| 3543 | 36900.37000.37100.38500.39500.41100.42300.95800.1488200 | Toilet dado work | 10d | 2026-08-26 | 2026-09-05 | 3527, 3540, 3541 |  | Zenith | 8698344 |
| 3544 | 36900.37000.37100.38500.39500.41100.42300.95800.1488300 | Toilet flooring work | 7d | 2026-09-05 | 2026-09-12 | 3528, 3543 |  | Zenith | 8698354 |
| 3545 | 36900.37000.37100.38500.39500.41100.42300.95800.1488400 | False Cieling panel fixing | 10d | 2026-09-12 | 2026-09-22 | 3529, 3544 |  | Zenith | 8698364 |
| 3546 | 36900.37000.37100.38500.39500.41100.42300.95800.1488500 | Living dinning flooring | 13d | 2026-09-12 | 2026-09-25 | 3530, 3544 |  | Zenith | 8698374 |
| 3547 | 36900.37000.37100.38500.39500.41100.42300.95800.1488600 | Putty primer coat | 12d | 2026-09-25 | 2026-10-07 | 3531, 3546 |  | Zenith | 8698384 |
| 3548 | 36900.37000.37100.38500.39500.41100.42300.95800.1488700 | Aluminium door-window fixing | 15d | 2027-01-08 | 2027-01-22 | 3532, 3542, 3546 |  | Zenith | 8698394 |
| 3549 | 36900.37000.37100.38500.39500.41100.42300.95800.1488800 | Door shutter fixing (Pre Hung) | 8d | 2026-10-07 | 2026-10-15 | 3533, 3547 |  | Zenith | 8698404 |
| 3550 | 36900.37000.37100.38500.39500.41100.42300.95800.1488900 | Electrical wiring work | 12d | 2026-10-15 | 2026-10-27 | 3534, 3549 |  | Zenith | 8698414 |
| 3551 | 36900.37000.37100.38500.39500.41100.42300.95800.1489000 | Painting 1st coat | 15d | 2027-02-07 | 2027-02-21 | 3535, 3550 |  | Zenith | 8698424 |
| 3552 | 36900.37000.37100.38500.39500.41100.42300.95900 | **32nd floor roof** | 178.75d | 2026-07-28 | 2027-03-08 |  | start no earlier than 2026-07-28 | Zenith | 8649774 |
| 3553 | 36900.37000.37100.38500.39500.41100.42300.95900.1489100 | Block Work | 10d | 2026-07-28 | 2026-08-07 | 3049, 3537 |  | Zenith | 8698434 |
| 3554 | 36900.37000.37100.38500.39500.41100.42300.95900.1489200 | Fire sprinkler pipe fixing | 6d | 2026-08-07 | 2026-08-13 | 3538, 3553 |  | Zenith | 8698444 |
| 3555 | 36900.37000.37100.38500.39500.41100.42300.95900.1489300 | Internal Plumbing Works | 10d | 2026-08-07 | 2026-08-17 | 3539, 3553 |  | Zenith | 8698454 |
| 3556 | 36900.37000.37100.38500.39500.41100.42300.95900.1489400 | Waterproofing | 14d | 2026-08-21 | 2026-09-04 | 3540, 3555 |  | Zenith | 8698464 |
| 3557 | 36900.37000.37100.38500.39500.41100.42300.95900.1489500 | Internal Plaster | 14d | 2026-08-26 | 2026-09-09 | 3541, 3555, 3556FF+5d |  | Zenith | 8698474 |
| 3558 | 36900.37000.37100.38500.39500.41100.42300.95900.1489600 | IPS flooring work | 10d | 2026-09-09 | 2026-09-19 | 3542, 3557 |  | Zenith | 8698484 |
| 3559 | 36900.37000.37100.38500.39500.41100.42300.95900.1489700 | Toilet dado work | 10d | 2026-09-09 | 2026-09-19 | 3543, 3556, 3557 |  | Zenith | 8698494 |
| 3560 | 36900.37000.37100.38500.39500.41100.42300.95900.1489800 | Toilet flooring work | 7d | 2026-09-19 | 2026-09-26 | 3544, 3559 |  | Zenith | 8698504 |
| 3561 | 36900.37000.37100.38500.39500.41100.42300.95900.1489900 | False Cieling panel fixing | 10d | 2026-09-26 | 2026-10-06 | 3545, 3560 |  | Zenith | 8698514 |
| 3562 | 36900.37000.37100.38500.39500.41100.42300.95900.1490000 | Living dinning flooring | 13d | 2026-09-26 | 2026-10-09 | 3546, 3560 |  | Zenith | 8698524 |
| 3563 | 36900.37000.37100.38500.39500.41100.42300.95900.1490100 | Putty primer coat | 12d | 2026-10-09 | 2026-10-21 | 3547, 3562 |  | Zenith | 8698534 |
| 3564 | 36900.37000.37100.38500.39500.41100.42300.95900.1490200 | Aluminium door-window fixing | 15d | 2027-01-23 | 2027-02-06 | 3548, 3558, 3562 |  | Zenith | 8698544 |
| 3565 | 36900.37000.37100.38500.39500.41100.42300.95900.1490300 | Door shutter fixing (Pre Hung) | 8d | 2026-10-21 | 2026-10-29 | 3549, 3563 |  | Zenith | 8698554 |
| 3566 | 36900.37000.37100.38500.39500.41100.42300.95900.1490400 | Electrical wiring work | 12d | 2026-10-29 | 2026-12-25 | 3550, 3565 |  | Zenith | 8698564 |
| 3567 | 36900.37000.37100.38500.39500.41100.42300.95900.1490500 | Painting 1st coat | 15d | 2027-02-22 | 2027-03-08 | 3551, 3566 |  | Zenith | 8698574 |

| ID | WBS | Task | Duration | Start | Finish | Predecessors | Constraint | Calendar | Unique_Task_ID |
| --- | --- | --- | --- | --- | --- | --- | --- | --- | --- |
| 3568 | 36900.37000.37100.38500.39500.41100.42300.96000 | **33rd floor roof** | 183.75d | 2026-08-07 | 2027-03-23 |  | start no earlier than 2026-08-07 | Zenith | 8649784 |
| 3569 | 36900.37000.37100.38500.39500.41100.42300.96000.1490600 | Block Work | 10d | 2026-08-07 | 2026-08-17 | 3050, 3553 |  | Zenith | 8698584 |
| 3570 | 36900.37000.37100.38500.39500.41100.42300.96000.1490700 | Fire sprinkler pipe fixing | 6d | 2026-08-17 | 2026-08-23 | 3554, 3569 |  | Zenith | 8698594 |
| 3571 | 36900.37000.37100.38500.39500.41100.42300.96000.1490800 | Internal Plumbing Works | 10d | 2026-08-17 | 2026-08-27 | 3555, 3569 |  | Zenith | 8698604 |
| 3572 | 36900.37000.37100.38500.39500.41100.42300.96000.1490900 | Waterproofing | 14d | 2026-09-04 | 2026-09-18 | 3556, 3571 |  | Zenith | 8698614 |
| 3573 | 36900.37000.37100.38500.39500.41100.42300.96000.1491000 | Internal Plaster | 14d | 2026-09-09 | 2026-09-23 | 3557, 3571, 3572FF+5d |  | Zenith | 8698624 |
| 3574 | 36900.37000.37100.38500.39500.41100.42300.96000.1491100 | IPS flooring work | 10d | 2026-09-23 | 2026-10-03 | 3558, 3573 |  | Zenith | 8698634 |
| 3575 | 36900.37000.37100.38500.39500.41100.42300.96000.1491200 | Toilet dado work | 10d | 2026-09-23 | 2026-10-03 | 3559, 3572, 3573 |  | Zenith | 8698644 |
| 3576 | 36900.37000.37100.38500.39500.41100.42300.96000.1491300 | Toilet flooring work | 7d | 2026-10-03 | 2026-10-10 | 3560, 3575 |  | Zenith | 8698654 |
| 3577 | 36900.37000.37100.38500.39500.41100.42300.96000.1491400 | False Cieling panel fixing | 10d | 2026-10-10 | 2026-10-20 | 3561, 3576 |  | Zenith | 8698664 |
| 3578 | 36900.37000.37100.38500.39500.41100.42300.96000.1491500 | Living dinning flooring | 13d | 2026-10-10 | 2026-10-23 | 3562, 3576 |  | Zenith | 8698674 |
| 3579 | 36900.37000.37100.38500.39500.41100.42300.96000.1491600 | Putty primer coat | 12d | 2026-10-23 | 2026-12-19 | 3563, 3578 |  | Zenith | 8698684 |
| 3580 | 36900.37000.37100.38500.39500.41100.42300.96000.1491700 | Aluminium door-window fixing | 15d | 2027-02-07 | 2027-02-21 | 3564, 3574, 3578 |  | Zenith | 8698694 |
| 3581 | 36900.37000.37100.38500.39500.41100.42300.96000.1491800 | Door shutter fixing (Pre Hung) | 8d | 2026-12-19 | 2026-12-27 | 3565, 3579 |  | Zenith | 8698704 |
| 3582 | 36900.37000.37100.38500.39500.41100.42300.96000.1491900 | Electrical wiring work | 12d | 2026-12-27 | 2027-01-08 | 3566, 3581 |  | Zenith | 8698714 |
| 3583 | 36900.37000.37100.38500.39500.41100.42300.96000.1492000 | Painting 1st coat | 15d | 2027-03-09 | 2027-03-23 | 3567, 3582 |  | Zenith | 8698724 |
| 3584 | 36900.37000.37100.38500.39500.41100.42300.62600 | **34th Floor** | 233.75d | 2026-08-17 | 2027-05-22 |  | start no earlier than 2026-08-17 | Zenith | 8648294 |
| 3585 | 36900.37000.37100.38500.39500.41100.42300.62600.1492100 | Block Work | 10d | 2026-08-17 | 2026-08-27 | 3051, 3569 |  | Zenith | 8698734 |
| 3586 | 36900.37000.37100.38500.39500.41100.42300.62600.1492200 | Fire sprinkler pipe fixing | 6d | 2026-08-27 | 2026-09-02 | 3570, 3585 |  | Zenith | 8698744 |
| 3587 | 36900.37000.37100.38500.39500.41100.42300.62600.1492300 | Internal Plumbing Works | 10d | 2026-08-27 | 2026-09-06 | 3571, 3585 |  | Zenith | 8698754 |
| 3588 | 36900.37000.37100.38500.39500.41100.42300.62600.1492400 | Waterproofing | 14d | 2026-09-18 | 2026-10-02 | 3572, 3587 |  | Zenith | 8698764 |
| 3589 | 36900.37000.37100.38500.39500.41100.42300.62600.1492500 | Internal Plaster | 14d | 2026-09-23 | 2026-10-07 | 3573, 3587, 3588FF+5d |  | Zenith | 8698774 |
| 3590 | 36900.37000.37100.38500.39500.41100.42300.62600.1492600 | IPS flooring work | 10d | 2026-10-07 | 2026-10-17 | 3574, 3588, 3589 |  | Zenith | 8698784 |
| 3591 | 36900.37000.37100.38500.39500.41100.42300.62600.1492700 | Toilet dado work | 10d | 2026-10-17 | 2026-10-27 | 3575, 3590 |  | Zenith | 8698794 |
| 3592 | 36900.37000.37100.38500.39500.41100.42300.62600.1492800 | Toilet flooring work | 7d | 2026-10-27 | 2026-12-18 | 3576, 3591 |  | Zenith | 8698804 |
| 3593 | 36900.37000.37100.38500.39500.41100.42300.62600.1492900 | False ceiling | 10d | 2026-12-18 | 2026-12-28 | 3577, 3592 |  | Zenith | 8698814 |
| 3594 | 36900.37000.37100.38500.39500.41100.42300.62600.1493000 | Living dinning flooring | 13d | 2026-12-18 | 2026-12-31 | 3578, 3592 |  | Zenith | 8698824 |
| 3595 | 36900.37000.37100.38500.39500.41100.42300.62600.1493100 | Putty Primer coat | 12d | 2026-12-31 | 2027-01-12 | 3579, 3586, 3593, 3594 |  | Zenith | 8698834 |
| 3596 | 36900.37000.37100.38500.39500.41100.42300.62600.1493200 | Aluminium door-window fixing | 15d | 2027-02-22 | 2027-03-08 | 3580, 3590, 3594 |  | Zenith | 8698844 |
| 3597 | 36900.37000.37100.38500.39500.41100.42300.62600.1493300 | Door shutter fixing (Pre Hung) | 8d | 2027-01-12 | 2027-01-20 | 3581, 3595 |  | Zenith | 8698854 |
| 3598 | 36900.37000.37100.38500.39500.41100.42300.62600.1493400 | Electrical wiring work | 12d | 2027-01-20 | 2027-02-01 | 3582, 3597 |  | Zenith | 8698864 |
| 3599 | 36900.37000.37100.38500.39500.41100.42300.62600.1493500 | Painting 1st coat | 15d | 2027-03-24 | 2027-04-07 | 3583, 3598 |  | Zenith | 8698874 |
| 3600 | 36900.37000.37100.38500.39500.41100.42300.62600.1493600 | Misc. Works | 45d | 2027-04-08 | 2027-05-22 | 3599 |  | Zenith | 8698884 |

| ID | WBS | Task | Duration | Start | Finish | Predecessors | Constraint | Calendar | Unique_Task_ID |
| --- | --- | --- | --- | --- | --- | --- | --- | --- | --- |
| 3601 | 36900.37000.37100.38500.39500.41100.223800 | **Terrace Finishing** | 116d | 2026-08-17 | 2027-01-24 |  | start no earlier than 2026-08-17 | Zenith | 8656764 |
| 3602 | 36900.37000.37100.38500.39500.41100.223800.960200 | Terrace waterproofing | 40d | 2026-08-17 | 2026-09-25 | 3016FS+2d |  | Zenith | 8687834 |
| 3603 | 36900.37000.37100.38500.39500.41100.223800.960300 | Terrace finishing | 75d | 2026-09-27 | 2027-01-24 | 3602FS+1d |  | Zenith | 8687824 |
| 3604 | 36900.37000.37100.38500.39500.41100.48700 | **Balcony Railing** | 366d | 2025-10-17 | 2027-01-16 |  | start no earlier than 2025-10-17 | Zenith | 8648184 |
| 3605 | 36900.37000.37100.38500.39500.41100.48700.960400 | 1st Floor | 8d | 2025-10-17 | 2025-10-25 | 3082FF |  | Zenith | 8687814 |
| 3606 | 36900.37000.37100.38500.39500.41100.48700.960500 | 2nd Floor | 8d | 2025-12-18 | 2025-12-26 | 3605, 3098 |  | Zenith | 8687804 |
| 3607 | 36900.37000.37100.38500.39500.41100.48700.960600 | 3rd Floor | 8d | 2025-12-27 | 2026-01-04 | 3606, 3114 |  | Zenith | 8687794 |
| 3608 | 36900.37000.37100.38500.39500.41100.48700.960700 | 4th Floor | 8d | 2026-01-05 | 2026-01-13 | 3607, 3130 |  | Zenith | 8687784 |
| 3609 | 36900.37000.37100.38500.39500.41100.48700.960800 | 5th Floor | 8d | 2026-01-14 | 2026-01-22 | 3608, 3146 |  | Zenith | 8687774 |
| 3610 | 36900.37000.37100.38500.39500.41100.48700.960900 | 6th Floor | 8d | 2026-01-23 | 2026-01-31 | 3609, 3162 |  | Zenith | 8687764 |
| 3611 | 36900.37000.37100.38500.39500.41100.48700.961000 | 7th Floor | 8d | 2026-02-01 | 2026-02-09 | 3610, 3178 |  | Zenith | 8687754 |
| 3612 | 36900.37000.37100.38500.39500.41100.48700.961100 | 8th Floor | 8d | 2026-02-10 | 2026-02-18 | 3611, 3194 |  | Zenith | 8687744 |
| 3613 | 36900.37000.37100.38500.39500.41100.48700.961200 | 9th Floor | 8d | 2026-02-19 | 2026-02-27 | 3612, 3210 |  | Zenith | 8687734 |
| 3614 | 36900.37000.37100.38500.39500.41100.48700.961300 | 10th Floor | 8d | 2026-02-28 | 2026-03-08 | 3613, 3226 |  | Zenith | 8687724 |
| 3615 | 36900.37000.37100.38500.39500.41100.48700.961400 | 11th Floor | 8d | 2026-03-09 | 2026-03-17 | 3614, 3242 |  | Zenith | 8687714 |
| 3616 | 36900.37000.37100.38500.39500.41100.48700.961500 | 12th Floor | 8d | 2026-03-18 | 2026-03-26 | 3615, 3258 |  | Zenith | 8687704 |
| 3617 | 36900.37000.37100.38500.39500.41100.48700.961600 | 13th Floor | 8d | 2026-03-27 | 2026-04-04 | 3616, 3274 |  | Zenith | 8687694 |
| 3618 | 36900.37000.37100.38500.39500.41100.48700.961700 | 14th Floor | 8d | 2026-04-05 | 2026-04-13 | 3617, 3290 |  | Zenith | 8687684 |
| 3619 | 36900.37000.37100.38500.39500.41100.48700.961800 | 15th Floor | 8d | 2026-04-14 | 2026-04-22 | 3618, 3306 |  | Zenith | 8687674 |
| 3620 | 36900.37000.37100.38500.39500.41100.48700.961900 | 16th Floor | 8d | 2026-04-23 | 2026-05-01 | 3619, 3322 |  | Zenith | 8687664 |
| 3621 | 36900.37000.37100.38500.39500.41100.48700.962000 | 17th Floor | 8d | 2026-05-02 | 2026-05-10 | 3620, 3338 |  | Zenith | 8687654 |
| 3622 | 36900.37000.37100.38500.39500.41100.48700.962100 | 18th Floor | 8d | 2026-05-11 | 2026-05-19 | 3621, 3354 |  | Zenith | 8687644 |
| 3623 | 36900.37000.37100.38500.39500.41100.48700.962200 | 19th Floor | 8d | 2026-05-20 | 2026-05-28 | 3622, 3370 |  | Zenith | 8687634 |
| 3624 | 36900.37000.37100.38500.39500.41100.48700.962300 | 20th Floor | 8d | 2026-05-30 | 2026-06-07 | 3623, 3386 |  | Zenith | 8687624 |
| 3625 | 36900.37000.37100.38500.39500.41100.48700.962400 | 21st Floor | 8d | 2026-06-09 | 2026-06-17 | 3624, 3402 |  | Zenith | 8687614 |
| 3626 | 36900.37000.37100.38500.39500.41100.48700.962500 | 22nd Floor | 8d | 2026-06-18 | 2026-06-26 | 3625, 3418 |  | Zenith | 8687604 |
| 3627 | 36900.37000.37100.38500.39500.41100.48700.962600 | 23rd Floor | 8d | 2026-06-27 | 2026-07-05 | 3626, 3434 |  | Zenith | 8687594 |
| 3628 | 36900.37000.37100.38500.39500.41100.48700.962700 | 24th Floor | 8d | 2026-07-06 | 2026-07-14 | 3627, 3450 |  | Zenith | 8687584 |
| 3629 | 36900.37000.37100.38500.39500.41100.48700.962800 | 25th Floor | 8d | 2026-07-14 | 2026-07-22 | 3628, 3466 |  | Zenith | 8687574 |
| 3630 | 36900.37000.37100.38500.39500.41100.48700.962900 | 26th Floor | 8d | 2026-07-22 | 2026-07-30 | 3629, 3482 |  | Zenith | 8687564 |
| 3631 | 36900.37000.37100.38500.39500.41100.48700.963000 | 27th Floor | 8d | 2026-07-30 | 2026-08-07 | 3630, 3498 |  | Zenith | 8687554 |
| 3632 | 36900.37000.37100.38500.39500.41100.48700.963100 | 28th Floor | 8d | 2026-08-07 | 2026-08-15 | 3631, 3514 |  | Zenith | 8687544 |
| 3633 | 36900.37000.37100.38500.39500.41100.48700.963200 | 29th Floor | 8d | 2026-09-07 | 2026-09-15 | 3632, 3530 |  | Zenith | 8687534 |
| 3634 | 36900.37000.37100.38500.39500.41100.48700.963300 | 30th Floor | 8d | 2026-09-25 | 2026-10-03 | 3633, 3546 |  | Zenith | 8687524 |
| 3635 | 36900.37000.37100.38500.39500.41100.48700.963400 | 31st Floor | 8d | 2026-10-09 | 2026-10-17 | 3634, 3562 |  | Zenith | 8687514 |
| 3636 | 36900.37000.37100.38500.39500.41100.48700.963500 | 32nd Floor | 8d | 2026-10-23 | 2026-10-31 | 3635, 3578 |  | Zenith | 8687504 |
| 3637 | 36900.37000.37100.38500.39500.41100.48700.963600 | 33rd Floor | 8d | 2026-12-31 | 2027-01-08 | 3636, 3594 |  | Zenith | 8687494 |
| 3638 | 36900.37000.37100.38500.39500.41100.48700.963700 | 34th Floor | 8d | 2027-01-08 | 2027-01-16 | 3637 |  | Zenith | 8687484 |

| ID | WBS | Task | Duration | Start | Finish | Predecessors | Constraint | Calendar | Unique_Task_ID |
| --- | --- | --- | --- | --- | --- | --- | --- | --- | --- |
| 3639 | 36900.37000.37100.38500.39500.41100.117600 | **Common Area Finishing** | 327d | 2026-04-05 | 2027-04-12 |  | start no earlier than 2026-04-05 | Zenith | 8651644 |
| 3640 | 36900.37000.37100.38500.39500.41100.117600.963800 | Masonary Work | 40d | 2026-04-05 | 2026-05-15 | 3290 |  | Zenith | 8687474 |
| 3641 | 36900.37000.37100.38500.39500.41100.117600.963900 | Fire sprinkler pipe fixing | 40d | 2026-05-15 | 2026-06-24 | 3640 |  | Zenith | 8687464 |
| 3642 | 36900.37000.37100.38500.39500.41100.117600.964000 | Corridoor, staircase, shaft Plaster & whitewash | 120d | 2026-05-15 | 2026-09-12 | 3640 |  | Zenith | 8687454 |
| 3643 | 36900.37000.37100.38500.39500.41100.117600.964100 | Staircase railing fixing | 100d | 2026-05-15 | 2026-08-23 | 3640 |  | Zenith | 8687444 |
| 3644 | 36900.37000.37100.38500.39500.41100.117600.964200 | Fire staircase flooring | 120d | 2026-05-25 | 2026-09-22 | 3643FF+30d |  | Zenith | 8687434 |
| 3645 | 36900.37000.37100.38500.39500.41100.117600.964300 | Main staircase flooring | 120d | 2026-05-25 | 2026-09-22 | 3643FF+30d |  | Zenith | 8687424 |
| 3646 | 36900.37000.37100.38500.39500.41100.117600.964400 | Fire door work | 45d | 2026-09-22 | 2026-12-21 | 3644 |  | Zenith | 8687414 |
| 3647 | 36900.37000.37100.38500.39500.41100.117600.964500 | Lobby flooring & Corridor | 120d | 2026-06-24 | 2026-10-22 | 3645FF+30d |  | Zenith | 8687404 |
| 3648 | 36900.37000.37100.38500.39500.41100.117600.964600 | Ceiling & wall putty | 120d | 2026-08-30 | 2027-02-11 | 3646FF+15d, 3647FF+30d, 3595FF+30d |  | Zenith | 8687394 |
| 3649 | 36900.37000.37100.38500.39500.41100.117600.964700 | Electrical wiring work | 120d | 2026-09-14 | 2027-02-26 | 3648FF+15d |  | Zenith | 8687384 |
| 3650 | 36900.37000.37100.38500.39500.41100.117600.964800 | Ceiling & wall painting | 120d | 2026-10-04 | 2027-03-18 | 3641FS+20d, 3648SS+20d, 3649FF+20d |  | Zenith | 8687374 |
| 3651 | 36900.37000.37100.38500.39500.41100.117600.964900 | Light fixture supply & installation | 45d | 2027-02-26 | 2027-04-12 | 3648, 3650FF+25d |  | Zenith | 8687364 |
| 3652 | 36900.37000.37100.38500.121800 | **MEP work** | 286.75d | 2026-06-29 | 2027-05-26 |  | start no earlier than 2026-06-29 | Zenith | 8651864 |
| 3653 | 36900.37000.37100.38500.121800.126700 | **Electrical work** | 240d | 2026-08-15 | 2027-05-26 |  | start no earlier than 2026-08-15 | Zenith | 8652124 |
| 3654 | 36900.37000.37100.38500.121800.126700.803500 | Cable Tray | 90d | 2026-08-15 | 2026-12-27 | 3016 |  | Zenith | 8724224 |
| 3655 | 36900.37000.37100.38500.121800.126700.803600 | Cable, main & sub main | 60d | 2026-09-29 | 2027-01-11 | 3654SS+45d |  | Zenith | 8724214 |
| 3656 | 36900.37000.37100.38500.121800.126700.803700 | LT panel & DB | 90d | 2026-12-28 | 2027-03-27 | 3654 |  | Zenith | 8724204 |
| 3657 | 36900.37000.37100.38500.121800.126700.803800 | Rising main | 90d | 2027-01-12 | 2027-04-11 | 3654FS+15d |  | Zenith | 8724194 |
| 3658 | 36900.37000.37100.38500.121800.126700.803900 | Earthing Works | 60d | 2027-01-17 | 2027-03-17 | 3654FS+20d |  | Zenith | 8724184 |
| 3659 | 36900.37000.37100.38500.121800.126700.804000 | Energy meter | 60d | 2027-03-28 | 2027-05-26 | 3655, 3658FS+10d |  | Zenith | 8724174 |
| 3660 | 36900.37000.37100.38500.121800.126700.804100 | HVAC & Exhast fan | 120d | 2026-12-23 | 2027-04-21 | 3654FS-5d |  | Zenith | 8724164 |
| 3661 | 36900.37000.37100.38500.121800.126700.804200 | FTTH | 60d | 2027-03-13 | 2027-05-11 | 3656FS-15d |  | Zenith | 8724154 |
| 3662 | 36900.37000.37100.38500.121800.126700.804300 | Security System - FA & PA | 60d | 2027-03-28 | 2027-05-26 | 3656, 3657FF+10d, 3660FF+2d, 3661FF |  | Zenith | 8724144 |

| ID | WBS | Task | Duration | Start | Finish | Predecessors | Constraint | Calendar | Unique_Task_ID |
| --- | --- | --- | --- | --- | --- | --- | --- | --- | --- |
| 3663 | 36900.37000.37100.38500.121800.143300 | **Plumbing work** | 175d | 2026-09-26 | 2027-05-03 |  | start no earlier than 2026-09-26 | Zenith | 8652764 |
| 3664 | 36900.37000.37100.38500.121800.143300.804400 | Terrace looping | 45d | 2026-09-26 | 2026-12-24 | 3602 |  | Zenith | 8724134 |
| 3665 | 36900.37000.37100.38500.121800.143300.804500 | Shaft Plumbing | 70d | 2026-12-25 | 2027-03-04 | 3664, 3642FS-30d |  | Zenith | 8724124 |
| 3666 | 36900.37000.37100.38500.121800.143300.804600 | CP sanitary fixture supply | 45d | 2027-03-05 | 2027-04-18 | 3665 |  | Zenith | 8724114 |
| 3667 | 36900.37000.37100.38500.121800.143300.804700 | Cold & flushing water supply | 45d | 2027-03-05 | 2027-04-18 | 3665 |  | Zenith | 8724104 |
| 3668 | 36900.37000.37100.38500.121800.143300.804800 | Misc work | 30d | 2027-04-04 | 2027-05-03 | 3666FS-15d, 3667FS-15d |  | Zenith | 8724094 |
| 3669 | 36900.37000.37100.38500.121800.193300 | **Fire fighting work** | 193.75d | 2026-06-29 | 2027-02-22 |  | start no earlier than 2026-06-29 | Zenith | 8654494 |
| 3670 | 36900.37000.37100.38500.121800.193300.804900 | Fire hydrant work | 75d | 2026-06-29 | 2026-09-12 | 3642SS+45d |  | Zenith | 8724084 |
| 3671 | 36900.37000.37100.38500.121800.193300.805000 | Pipe connection & sprinkler installation | 45d | 2027-01-09 | 2027-02-22 | 3670FS+1d, 3673FF+15d |  | Zenith | 8724074 |
| 3672 | 36900.37000.37100.38500.121800.193300.805100 | Shaft Downtake works | 60d | 2026-09-26 | 2027-01-08 | 3602, 3642FS-60d |  | Zenith | 8724064 |
| 3673 | 36900.37000.37100.38500.121800.193300.805200 | Connection to pump room | 30d | 2027-01-09 | 2027-02-07 | 3672 |  | Zenith | 8724054 |
| 3674 | 36900.37000.37100.38500.121800.218500 | **Lift work** | 160d | 2026-08-27 | 2027-03-20 |  | start no earlier than 2026-08-27 | Zenith | 8656624 |
| 3675 | 36900.37000.37100.38500.121800.218500.805300 | Lift Shaft/Pit Handover | 40d | 2026-08-27 | 2026-10-06 | 3053FS+5d |  | Zenith | 8724044 |
| 3676 | 36900.37000.37100.38500.121800.218500.805400 | Lift installation work | 60d | 2026-10-06 | 2027-01-19 | 3675 |  | Zenith | 8724034 |
| 3677 | 36900.37000.37100.38500.121800.218500.805500 | Lift testing and commissioning | 60d | 2027-01-19 | 2027-03-20 | 3676, 3647 |  | Zenith | 8724024 |
| 3678 | 36900.37000.37100.38500.226800 | **Basement lobby** | 90d | 2026-10-21 | 2027-03-05 |  | start no earlier than 2026-10-21 | Zenith | 8656874 |
| 3679 | 36900.37000.37100.38500.226800.375000 | Basement lobby | 90d | 2026-10-21 | 2027-03-05 | 3675FS+15d, 2838FS+15d, 2839FS+15d |  | Zenith | 8731564 |
| 3680 | 36900.37000.37100.38500.223300 | **External Paint Works** | 141.75d | 2027-01-16 | 2027-06-06 |  | start no earlier than 2027-01-16 | Zenith | 8656694 |
| 3681 | 36900.37000.37100.38500.223300.375100 | Surface prepration with Primer | 60d | 2027-01-16 | 2027-03-17 | 3053FS+2d, 3638 |  | Zenith | 8731554 |
| 3682 | 36900.37000.37100.38500.223300.375200 | External Painting (Texture & first coat) | 90d | 2027-03-09 | 2027-06-06 | 3681FF+10d, 3596 |  | Zenith | 8731544 |
| 3683 | 36900.37000.37100.38500.272200 | OC Application/Readiness | 2d | 2027-08-07 | 2027-08-08 | 3011FF+349d, 3682FF, 3671FF+30d, 3668FF, 3679FF+30d, 3677FF, 3662FF, 3659FF, 3603FF+30d, 3600FF+15d, 3648FF+0.25d, 3638FF, 3596FF+0.25d |  | Zenith | 8735384 |
| 3684 | 36900.37000.37100.38500.272300 | OC Receipt | 60d | 2027-08-09 | 2027-10-07 | 3683 |  | Zenith | 8735374 |
| 3685 | 36900.37000.37100.38500.125800 | **Post OC activities** | 473.75d | 2027-04-27 | 2028-09-26 |  | start no earlier than 2027-04-27 | Zenith | 8652084 |
| 3686 | 36900.37000.37100.38500.125800.375300 | CP & Sanitaryware | 150d | 2027-10-08 | 2028-04-19 | 3684 |  | Zenith | 8731534 |
| 3687 | 36900.37000.37100.38500.125800.375400 | Electrical Fixtures And Fittings | 150d | 2027-10-08 | 2028-04-19 | 3684 |  | Zenith | 8731524 |
| 3688 | 36900.37000.37100.38500.125800.375500 | Final coat paint external | 100d | 2027-10-08 | 2028-02-29 | 3684 |  | Zenith | 8731514 |
| 3689 | 36900.37000.37100.38500.125800.375600 | Final Coat Paint Internal | 150d | 2027-10-08 | 2028-04-19 | 3684, 3599 |  | Zenith | 8731504 |
| 3690 | 36900.37000.37100.38500.125800.375700 | Balcony Railing Glass Fixing | 120d | 2028-04-20 | 2028-08-17 | 3689, 3638FS+30d |  | Zenith | 8731494 |
| 3691 | 36900.37000.37100.38500.125800.375800 | MEP | 150d | 2027-04-27 | 2027-09-24 | 3651FS+15d |  | Zenith | 8731484 |
| 3692 | 36900.37000.37100.38500.125800.375900 | Wooden Flooring | 180d | 2027-09-23 | 2028-05-04 | 3689FF+15d |  | Zenith | 8731474 |
| 3693 | 36900.37000.37100.38500.125800.376000 | Split AC Units installation | 100d | 2028-05-20 | 2028-08-27 | 3692FS+15d |  | Zenith | 8731464 |
| 3694 | 36900.37000.37100.38500.125800.376100 | Misc. works | 180d | 2028-03-31 | 2028-09-26 | 3693FF+30d |  | Zenith | 8731454 |
| 3695 | 36900.37000.37100.38500.272400 | Offer To Possession | 182d | 2028-04-13 | 2028-10-11 | 3684FF+152d, 3686FF+20d, 3687FF+20d, 3688FF+20d, 3693FF+10d, 3691FF+30d, 3690FF+15d, 3694FF+15d |  | Zenith | 8735364 |

| ID | WBS | Task | Duration | Start | Finish | Predecessors | Complete | Constraint | Calendar | Unique_Task_ID |
| --- | --- | --- | --- | --- | --- | --- | --- | --- | --- | --- |
| 3696 | 36900.37000.37100.38200 | **Tower 05** | 1465d | 2024-04-15 | 2028-10-15 |  | 3% | start no earlier than 2024-04-15 | Zenith | 8647604 |
| 3697 | 36900.37000.37100.38200.63500 | **Sub-Structure Works** | 522d | 2024-04-15 | 2025-12-17 |  | 59% | start no earlier than 2024-04-15 | Zenith | 8648394 |
| 3698 | 36900.37000.37100.38200.63500.142100 | **Soil Bed Preparation** | 196d | 2024-04-15 | 2024-10-27 |  | 100% | start no earlier than 2024-04-15 | Zenith | 8652794 |
| 3699 | 36900.37000.37100.38200.63500.142100.229600 | Excavation (2m) | 48d | 2024-05-11 | 2024-06-27 | 2795SS+10d | 100% | start no earlier than 2024-05-11 | Zenith | 8724014 |
| 3700 | 36900.37000.37100.38200.63500.142100.229500 | Soldier Piling shop drawing approval | 60d | 2024-04-15 | 2024-07-09 | 3699 | 100% | start no earlier than 2024-04-15 | Zenith | 8724004 |
| 3701 | 36900.37000.37100.38200.63500.142100.229400 | Mobilization & Soldier Piling with Excavation (4m) | 100d | 2024-05-14 | 2024-10-27 | 3700FS-95d | 100% | start no earlier than 2024-05-14 | Zenith | 8723994 |
| 3702 | 36900.37000.37100.38200.63500.142100.229300 | Balance B3 bulk Excavation | 57d | 2024-05-20 | 2024-10-20 | 3701FS-149d | 100% | start no earlier than 2024-05-20 | Zenith | 8723984 |
| 3703 | 36900.37000.37100.38200.63500.142100.229200 | Soil dressing & ATT | 23d | 2024-10-05 | 2024-10-27 | 3702FS+8d | 100% | start no earlier than 2024-10-05 | Zenith | 8723974 |
| 3704 | 36900.37000.37100.38200.63500.119500 | **Structure Works** | 193.2d | 2024-10-20 | 2025-06-15 |  | 48% | start no earlier than 2024-10-20 | Zenith | 8651794 |
| 3705 | 36900.37000.37100.38200.63500.119500.139800 | **Raft Foundation** | 73.2d | 2024-10-20 | 2025-02-15 |  | 100% | start no earlier than 2024-10-20 | Zenith | 8652884 |
| 3706 | 36900.37000.37100.38200.63500.119500.139800.238700 | PCC | 8d | 2024-10-22 | 2024-10-29 | 3703, 2802FS+6d | 100% | start no earlier than 2024-10-22 | Zenith | 8687354 |
| 3707 | 36900.37000.37100.38200.63500.119500.139800.238600 | Column/SW layout marking | 1d | 2024-10-31 | 2024-11-11 | 3706 | 100% | start no earlier than 2024-10-31 | Zenith | 8687344 |
| 3708 | 36900.37000.37100.38200.63500.119500.139800.238500 | Reinforcement | 44.2d | 2024-10-20 | 2025-02-11 | 3707FS-4d | 100% | start no earlier than 2024-10-20 | Zenith | 8687334 |
| 3709 | 36900.37000.37100.38200.63500.119500.139800.238400 | Formwork (Conventional) | 8d | 2025-01-24 | 2025-02-11 | 3708FF+3d | 100% | start no earlier than 2025-01-24 | Zenith | 8687324 |
| 3710 | 36900.37000.37100.38200.63500.119500.139800.238300 | Concreting | 4d | 2025-02-12 | 2025-02-15 | 3709FF+3d | 100% | start no earlier than 2025-02-12 | Zenith | 8687314 |
| 3711 | 36900.37000.37100.38200.63500.119500.132100 | **Basement 03 Roof Slab (Dummy/Stitch Slab)** | 4d | 2025-03-24 | 2025-03-27 |  | 100% | start no earlier than 2025-03-24 | Zenith | 8652374 |
| 3712 | 36900.37000.37100.38200.63500.119500.132100.238200 | Column/SW Reinforcement | 1d | 2025-03-24 | 2025-03-24 | 3710 | 100% | start no earlier than 2025-03-24 | Zenith | 8687304 |
| 3713 | 36900.37000.37100.38200.63500.119500.132100.238100 | SW Formwork (Conventional) | 1d | 2025-03-25 | 2025-03-25 | 3712SS | 100% | start no earlier than 2025-03-25 | Zenith | 8687294 |
| 3714 | 36900.37000.37100.38200.63500.119500.132100.238000 | Column/SW Concreting | 1d | 2025-03-26 | 2025-03-26 | 3713SS | 100% | start no earlier than 2025-03-26 | Zenith | 8687284 |
| 3715 | 36900.37000.37100.38200.63500.119500.132100.237900 | Slab Formwork (Conventional) | 1d | 2025-03-27 | 2025-03-27 | 3714SS | 100% | start no earlier than 2025-03-27 | Zenith | 8687274 |
| 3716 | 36900.37000.37100.38200.63500.119500.132100.237800 | Slab Reinforcement + Conduting | 1d | 2025-03-27 | 2025-03-27 | 3715 | 100% | start no earlier than 2025-03-27 | Zenith | 8687264 |
| 3717 | 36900.37000.37100.38200.63500.119500.132100.237700 | Concreting | 1d | 2025-03-27 | 2025-03-27 | 3716 | 100% | start no earlier than 2025-03-27 | Zenith | 8687254 |
| 3718 | 36900.37000.37100.38200.63500.119500.139600 | **Basement 02 Roof Slab** | 56d | 2025-03-02 | 2025-04-26 |  | 51% | start no earlier than 2025-03-02 | Zenith | 8652364 |
| 3719 | 36900.37000.37100.38200.63500.119500.139600.237600 | Column/SW Reinforcement | 8d | 2025-03-02 | 2025-03-30 | 3717FS-25d | 100% | start no earlier than 2025-03-02 | Zenith | 8687244 |
| 3720 | 36900.37000.37100.38200.63500.119500.139600.237500 | SW Formwork (Conventional) | 20d | 2025-03-15 | 2025-04-17 | 3719SS+15d | 70% | start no earlier than 2025-03-15 | Zenith | 8687234 |
| 3721 | 36900.37000.37100.38200.63500.119500.139600.237400 | Column/SW Concreting | 20d | 2025-03-16 | 2025-04-21 | 3720SS+4d | 65% | start no earlier than 2025-03-16 | Zenith | 8687224 |
| 3722 | 36900.37000.37100.38200.63500.119500.139600.237300 | Slab Formwork (Conventional) | 26d | 2025-03-25 | 2025-04-20 | 3721SS+8d | 23% | start no earlier than 2025-03-25 | Zenith | 8687214 |
| 3723 | 36900.37000.37100.38200.63500.119500.139600.965000 | Slab Reinforcement + Conduting | 5d | 2025-04-21 | 2025-04-25 | 3722 |  |  | Zenith | 8687204 |
| 3724 | 36900.37000.37100.38200.63500.119500.139600.965100 | Concreting | 1d | 2025-04-26 | 2025-04-26 | 3723 |  |  | Zenith | 8687194 |

| ID | WBS | Task | Duration | Start | Finish | Predecessors | Constraint | Calendar | Unique_Task_ID |
| --- | --- | --- | --- | --- | --- | --- | --- | --- | --- |
| 3725 | 36900.37000.37100.38200.63500.119500.139500 | **Basement 01 Roof Slab** | 25d | 2025-04-27 | 2025-05-21 |  | start no earlier than 2025-04-27 | Zenith | 8652354 |
| 3726 | 36900.37000.37100.38200.63500.119500.139500.965200 | Column/SW Reinforcement | 9d | 2025-04-27 | 2025-05-05 | 3724 |  | Zenith | 8687184 |
| 3727 | 36900.37000.37100.38200.63500.119500.139500.965300 | SW Formwork (Conventional) | 9d | 2025-05-01 | 2025-05-09 | 3726SS+4d |  | Zenith | 8687174 |
| 3728 | 36900.37000.37100.38200.63500.119500.139500.965400 | Column/SW Concreting | 9d | 2025-05-05 | 2025-05-13 | 3727SS+4d |  | Zenith | 8687164 |
| 3729 | 36900.37000.37100.38200.63500.119500.139500.965500 | Slab Formwork (Conventional) | 9d | 2025-05-09 | 2025-05-17 | 3728SS+4d |  | Zenith | 8687154 |
| 3730 | 36900.37000.37100.38200.63500.119500.139500.965600 | Slab Reinforcement + Conduting | 3d | 2025-05-18 | 2025-05-20 | 3729 |  | Zenith | 8687144 |
| 3731 | 36900.37000.37100.38200.63500.119500.139500.965700 | Concreting | 1d | 2025-05-21 | 2025-05-21 | 3730 |  | Zenith | 8687134 |
| 3732 | 36900.37000.37100.38200.63500.119500.139100 | **Podium Slab/Ground Roof Floor Slab** | 25d | 2025-05-22 | 2025-06-15 |  | start no earlier than 2025-05-22 | Zenith | 8652344 |
| 3733 | 36900.37000.37100.38200.63500.119500.139100.965800 | Column/SW Reinforcement | 9d | 2025-05-22 | 2025-05-30 | 3731 |  | Zenith | 8687124 |
| 3734 | 36900.37000.37100.38200.63500.119500.139100.965900 | SW Formwork (Conventional) | 9d | 2025-05-26 | 2025-06-03 | 3733SS+4d |  | Zenith | 8687114 |
| 3735 | 36900.37000.37100.38200.63500.119500.139100.966000 | Column/SW Concreting | 9d | 2025-05-30 | 2025-06-07 | 3734SS+4d |  | Zenith | 8687104 |
| 3736 | 36900.37000.37100.38200.63500.119500.139100.966100 | Slab Formwork (Conventional) | 9d | 2025-06-03 | 2025-06-11 | 3735SS+4d |  | Zenith | 8687094 |
| 3737 | 36900.37000.37100.38200.63500.119500.139100.966200 | Slab Reinforcement + Conduting | 3d | 2025-06-12 | 2025-06-14 | 3736 |  | Zenith | 8687084 |
| 3738 | 36900.37000.37100.38200.63500.119500.139100.966300 | Concreting | 1d | 2025-06-15 | 2025-06-15 | 3737 |  | Zenith | 8687074 |
| 3739 | 36900.37000.37100.38200.63500.190200 | **Substructure Finishes** | 110d | 2025-07-16 | 2025-12-17 |  | start no earlier than 2025-07-16 | Zenith | 8654124 |
| 3740 | 36900.37000.37100.38200.63500.190200.805600 | Masonary Work | 35d | 2025-07-16 | 2025-08-19 | 3738FS+30d |  | Zenith | 8723964 |
| 3741 | 36900.37000.37100.38200.63500.190200.805700 | Plaster Work | 30d | 2025-08-20 | 2025-09-18 | 3740 |  | Zenith | 8723954 |
| 3742 | 36900.37000.37100.38200.63500.190200.805800 | Structural Steel work | 50d | 2025-08-15 | 2025-10-03 | 3738FS+60d |  | Zenith | 8723944 |
| 3743 | 36900.37000.37100.38200.63500.190200.805900 | White Wash | 35d | 2025-09-29 | 2025-12-17 | 3741FS+10d |  | Zenith | 8723934 |
| 3744 | 36900.37000.37100.38200.39200 | **Superstructure** | 626d | 2025-06-16 | 2027-06-01 |  | start no earlier than 2025-06-16 | Zenith | 8647664 |
| 3745 | 36900.37000.37100.38200.39200.44600 | **RCC structure** | 385d | 2025-06-16 | 2026-08-19 |  | start no earlier than 2025-06-16 | Zenith | 8647964 |
| 3746 | 36900.37000.37100.38200.39200.44600.166400 | **1st Floor Roof slab** | 24d | 2025-06-16 | 2025-07-09 |  | start no earlier than 2025-06-16 | Zenith | 8654114 |
| 3747 | 36900.37000.37100.38200.39200.44600.166400.966400 | Reinforcement | 19d | 2025-06-16 | 2025-07-04 | 3738 |  | Zenith | 8687064 |
| 3748 | 36900.37000.37100.38200.39200.44600.166400.966500 | Conduiting | 19d | 2025-06-19 | 2025-07-07 | 3747SS+3d |  | Zenith | 8687054 |
| 3749 | 36900.37000.37100.38200.39200.44600.166400.966600 | Formwork | 19d | 2025-06-20 | 2025-07-08 | 3747SS+4d |  | Zenith | 8687044 |
| 3750 | 36900.37000.37100.38200.39200.44600.166400.966700 | Concreting | 1d | 2025-07-09 | 2025-07-09 | 3748FS+1d, 3749 |  | Zenith | 8687034 |

| ID | WBS | Task | Duration | Start | Finish | Predecessors | Constraint | Calendar | Unique_Task_ID |
| --- | --- | --- | --- | --- | --- | --- | --- | --- | --- |
| 3751 | 36900.37000.37100.38200.39200.44600.166300 | **2nd Floor Roof slab** | 21d | 2025-07-10 | 2025-07-30 |  | start no earlier than 2025-07-10 | Zenith | 8654134 |
| 3752 | 36900.37000.37100.38200.39200.44600.166300.966800 | Reinforcement | 16d | 2025-07-10 | 2025-07-25 | 3750 |  | Zenith | 8687024 |
| 3753 | 36900.37000.37100.38200.39200.44600.166300.966900 | Conduiting | 16d | 2025-07-13 | 2025-07-28 | 3752SS+3d |  | Zenith | 8687014 |
| 3754 | 36900.37000.37100.38200.39200.44600.166300.967000 | Formwork | 16d | 2025-07-14 | 2025-07-29 | 3752SS+4d |  | Zenith | 8687004 |
| 3755 | 36900.37000.37100.38200.39200.44600.166300.967100 | Concreting | 1d | 2025-07-30 | 2025-07-30 | 3753FS+1d, 3754 |  | Zenith | 8686994 |
| 3756 | 36900.37000.37100.38200.39200.44600.166200 | **3rd Floor Roof slab** | 15d | 2025-07-31 | 2025-08-14 |  | start no earlier than 2025-07-31 | Zenith | 8654144 |
| 3757 | 36900.37000.37100.38200.39200.44600.166200.967200 | Reinforcement | 10d | 2025-07-31 | 2025-08-09 | 3755 |  | Zenith | 8686984 |
| 3758 | 36900.37000.37100.38200.39200.44600.166200.967300 | Conduiting | 10d | 2025-08-03 | 2025-08-12 | 3757SS+3d |  | Zenith | 8686974 |
| 3759 | 36900.37000.37100.38200.39200.44600.166200.967400 | Formwork | 10d | 2025-08-04 | 2025-08-13 | 3757SS+4d |  | Zenith | 8686964 |
| 3760 | 36900.37000.37100.38200.39200.44600.166200.967500 | Concreting | 1d | 2025-08-14 | 2025-08-14 | 3758FS+1d, 3759 |  | Zenith | 8686954 |
| 3761 | 36900.37000.37100.38200.39200.44600.166100 | **4th floor roof slab** | 9d | 2025-08-15 | 2025-08-23 |  | start no earlier than 2025-08-15 | Zenith | 8654154 |
| 3762 | 36900.37000.37100.38200.39200.44600.166100.967600 | Reinforcement | 6d | 2025-08-15 | 2025-08-20 | 3760 |  | Zenith | 8686944 |
| 3763 | 36900.37000.37100.38200.39200.44600.166100.967700 | Conduiting | 6d | 2025-08-16 | 2025-08-21 | 3762SS+1d |  | Zenith | 8686934 |
| 3764 | 36900.37000.37100.38200.39200.44600.166100.967800 | Formwork | 6d | 2025-08-17 | 2025-08-22 | 3762SS+2d |  | Zenith | 8686924 |
| 3765 | 36900.37000.37100.38200.39200.44600.166100.967900 | Concreting | 1d | 2025-08-23 | 2025-08-23 | 3763FS+1d, 3764 |  | Zenith | 8686914 |
| 3766 | 36900.37000.37100.38200.39200.44600.166000 | **5th floor roof slab** | 9d | 2025-08-24 | 2025-09-01 |  | start no earlier than 2025-08-24 | Zenith | 8654164 |
| 3767 | 36900.37000.37100.38200.39200.44600.166000.968000 | Reinforcement | 6d | 2025-08-24 | 2025-08-29 | 3765 |  | Zenith | 8686904 |
| 3768 | 36900.37000.37100.38200.39200.44600.166000.968100 | Conduiting | 6d | 2025-08-25 | 2025-08-30 | 3767SS+1d |  | Zenith | 8686894 |
| 3769 | 36900.37000.37100.38200.39200.44600.166000.968200 | Formwork | 6d | 2025-08-26 | 2025-08-31 | 3767SS+2d |  | Zenith | 8686884 |
| 3770 | 36900.37000.37100.38200.39200.44600.166000.968300 | Concreting | 1d | 2025-09-01 | 2025-09-01 | 3768FS+1d, 3769 |  | Zenith | 8686874 |
| 3771 | 36900.37000.37100.38200.39200.44600.165900 | **6th floor roof slab** | 9d | 2025-09-02 | 2025-09-10 |  | start no earlier than 2025-09-02 | Zenith | 8654174 |
| 3772 | 36900.37000.37100.38200.39200.44600.165900.968400 | Reinforcement | 6d | 2025-09-02 | 2025-09-07 | 3770 |  | Zenith | 8686864 |
| 3773 | 36900.37000.37100.38200.39200.44600.165900.968500 | Conduiting | 6d | 2025-09-03 | 2025-09-08 | 3772SS+1d |  | Zenith | 8686854 |
| 3774 | 36900.37000.37100.38200.39200.44600.165900.968600 | Formwork | 6d | 2025-09-04 | 2025-09-09 | 3772SS+2d |  | Zenith | 8686844 |
| 3775 | 36900.37000.37100.38200.39200.44600.165900.968700 | Concreting | 1d | 2025-09-10 | 2025-09-10 | 3773FS+1d, 3774 |  | Zenith | 8686834 |

| ID | WBS | Task | Duration | Start | Finish | Predecessors | Constraint | Calendar | Unique_Task_ID |
| --- | --- | --- | --- | --- | --- | --- | --- | --- | --- |
| 3776 | 36900.37000.37100.38200.39200.44600.165800 | **7th floor roof slab** | 9d | 2025-09-11 | 2025-09-19 |  | start no earlier than 2025-09-11 | Zenith | 8654184 |
| 3777 | 36900.37000.37100.38200.39200.44600.165800.968800 | Reinforcement | 6d | 2025-09-11 | 2025-09-16 | 3775 |  | Zenith | 8686824 |
| 3778 | 36900.37000.37100.38200.39200.44600.165800.968900 | Conduiting | 6d | 2025-09-12 | 2025-09-17 | 3777SS+1d |  | Zenith | 8686814 |
| 3779 | 36900.37000.37100.38200.39200.44600.165800.969000 | Formwork | 6d | 2025-09-13 | 2025-09-18 | 3777SS+2d |  | Zenith | 8686804 |
| 3780 | 36900.37000.37100.38200.39200.44600.165800.969100 | Concreting | 1d | 2025-09-19 | 2025-09-19 | 3778FS+1d, 3779 |  | Zenith | 8686794 |
| 3781 | 36900.37000.37100.38200.39200.44600.165700 | **8th floor roof slab** | 9d | 2025-09-20 | 2025-09-28 |  | start no earlier than 2025-09-20 | Zenith | 8654194 |
| 3782 | 36900.37000.37100.38200.39200.44600.165700.969200 | Reinforcement | 6d | 2025-09-20 | 2025-09-25 | 3780 |  | Zenith | 8686784 |
| 3783 | 36900.37000.37100.38200.39200.44600.165700.969300 | Conduiting | 6d | 2025-09-21 | 2025-09-26 | 3782SS+1d |  | Zenith | 8686774 |
| 3784 | 36900.37000.37100.38200.39200.44600.165700.969400 | Formwork | 6d | 2025-09-22 | 2025-09-27 | 3782SS+2d |  | Zenith | 8686764 |
| 3785 | 36900.37000.37100.38200.39200.44600.165700.969500 | Concreting | 1d | 2025-09-28 | 2025-09-28 | 3783FS+1d, 3784 |  | Zenith | 8686754 |
| 3786 | 36900.37000.37100.38200.39200.44600.165600 | **9th floor roof slab** | 9d | 2025-09-29 | 2025-10-07 |  | start no earlier than 2025-09-29 | Zenith | 8654204 |
| 3787 | 36900.37000.37100.38200.39200.44600.165600.969600 | Reinforcement | 6d | 2025-09-29 | 2025-10-04 | 3785 |  | Zenith | 8686744 |
| 3788 | 36900.37000.37100.38200.39200.44600.165600.969700 | Conduiting | 6d | 2025-09-30 | 2025-10-05 | 3787SS+1d |  | Zenith | 8686734 |
| 3789 | 36900.37000.37100.38200.39200.44600.165600.969800 | Formwork | 6d | 2025-10-01 | 2025-10-06 | 3787SS+2d |  | Zenith | 8686724 |
| 3790 | 36900.37000.37100.38200.39200.44600.165600.969900 | Concreting | 1d | 2025-10-07 | 2025-10-07 | 3788FS+1d, 3789 |  | Zenith | 8686714 |
| 3791 | 36900.37000.37100.38200.39200.44600.165500 | **10th floor roof slab** | 9d | 2025-10-08 | 2025-10-16 |  | start no earlier than 2025-10-08 | Zenith | 8654214 |
| 3792 | 36900.37000.37100.38200.39200.44600.165500.970000 | Reinforcement | 6d | 2025-10-08 | 2025-10-13 | 3790 |  | Zenith | 8686704 |
| 3793 | 36900.37000.37100.38200.39200.44600.165500.970100 | Conduiting | 6d | 2025-10-09 | 2025-10-14 | 3792SS+1d |  | Zenith | 8686694 |
| 3794 | 36900.37000.37100.38200.39200.44600.165500.970200 | Formwork | 6d | 2025-10-10 | 2025-10-15 | 3792SS+2d |  | Zenith | 8686684 |
| 3795 | 36900.37000.37100.38200.39200.44600.165500.970300 | Concreting | 1d | 2025-10-16 | 2025-10-16 | 3793FS+1d, 3794 |  | Zenith | 8686674 |
| 3796 | 36900.37000.37100.38200.39200.44600.165400 | **11th floor roof slab** | 9d | 2025-10-17 | 2025-10-25 |  | start no earlier than 2025-10-17 | Zenith | 8654224 |
| 3797 | 36900.37000.37100.38200.39200.44600.165400.970400 | Reinforcement | 6d | 2025-10-17 | 2025-10-22 | 3795 |  | Zenith | 8686664 |
| 3798 | 36900.37000.37100.38200.39200.44600.165400.970500 | Conduiting | 6d | 2025-10-18 | 2025-10-23 | 3797SS+1d |  | Zenith | 8686654 |
| 3799 | 36900.37000.37100.38200.39200.44600.165400.970600 | Formwork | 6d | 2025-10-19 | 2025-10-24 | 3797SS+2d |  | Zenith | 8686644 |
| 3800 | 36900.37000.37100.38200.39200.44600.165400.970700 | Concreting | 1d | 2025-10-25 | 2025-10-25 | 3798FS+1d, 3799 |  | Zenith | 8686634 |

| ID | WBS | Task | Duration | Start | Finish | Predecessors | Constraint | Calendar | Unique_Task_ID |
| --- | --- | --- | --- | --- | --- | --- | --- | --- | --- |
| 3801 | 36900.37000.37100.38200.39200.44600.165300 | **12th floor roof slab** | 9d | 2025-10-26 | 2025-12-18 |  | start no earlier than 2025-10-26 | Zenith | 8654234 |
| 3802 | 36900.37000.37100.38200.39200.44600.165300.970800 | Reinforcement | 6d | 2025-10-26 | 2025-10-31 | 3800 |  | Zenith | 8686624 |
| 3803 | 36900.37000.37100.38200.39200.44600.165300.970900 | Conduiting | 6d | 2025-10-27 | 2025-12-16 | 3802SS+1d |  | Zenith | 8686614 |
| 3804 | 36900.37000.37100.38200.39200.44600.165300.971000 | Formwork | 6d | 2025-10-28 | 2025-12-17 | 3802SS+2d |  | Zenith | 8686604 |
| 3805 | 36900.37000.37100.38200.39200.44600.165300.971100 | Concreting | 1d | 2025-12-18 | 2025-12-18 | 3803FS+1d, 3804 |  | Zenith | 8686594 |
| 3806 | 36900.37000.37100.38200.39200.44600.165200 | **13th floor roof slab** | 9d | 2025-12-19 | 2025-12-27 |  | start no earlier than 2025-12-19 | Zenith | 8654244 |
| 3807 | 36900.37000.37100.38200.39200.44600.165200.971200 | Reinforcement | 6d | 2025-12-19 | 2025-12-24 | 3805 |  | Zenith | 8686584 |
| 3808 | 36900.37000.37100.38200.39200.44600.165200.971300 | Conduiting | 6d | 2025-12-20 | 2025-12-25 | 3807SS+1d |  | Zenith | 8686574 |
| 3809 | 36900.37000.37100.38200.39200.44600.165200.971400 | Formwork | 6d | 2025-12-21 | 2025-12-26 | 3807SS+2d |  | Zenith | 8686564 |
| 3810 | 36900.37000.37100.38200.39200.44600.165200.971500 | Concreting | 1d | 2025-12-27 | 2025-12-27 | 3808FS+1d, 3809 |  | Zenith | 8686554 |
| 3811 | 36900.37000.37100.38200.39200.44600.165100 | **14th floor roof slab** | 9d | 2025-12-28 | 2026-01-05 |  | start no earlier than 2025-12-28 | Zenith | 8654254 |
| 3812 | 36900.37000.37100.38200.39200.44600.165100.971600 | Reinforcement | 6d | 2025-12-28 | 2026-01-02 | 3810 |  | Zenith | 8686544 |
| 3813 | 36900.37000.37100.38200.39200.44600.165100.971700 | Conduiting | 6d | 2025-12-29 | 2026-01-03 | 3812SS+1d |  | Zenith | 8686534 |
| 3814 | 36900.37000.37100.38200.39200.44600.165100.971800 | Formwork | 6d | 2025-12-30 | 2026-01-04 | 3812SS+2d |  | Zenith | 8686524 |
| 3815 | 36900.37000.37100.38200.39200.44600.165100.971900 | Concreting | 1d | 2026-01-05 | 2026-01-05 | 3813FS+1d, 3814 |  | Zenith | 8686514 |
| 3816 | 36900.37000.37100.38200.39200.44600.165000 | **15th floor roof slab** | 9d | 2026-01-06 | 2026-01-14 |  | start no earlier than 2026-01-06 | Zenith | 8654264 |
| 3817 | 36900.37000.37100.38200.39200.44600.165000.972000 | Reinforcement | 6d | 2026-01-06 | 2026-01-11 | 3815 |  | Zenith | 8686504 |
| 3818 | 36900.37000.37100.38200.39200.44600.165000.972100 | Conduiting | 6d | 2026-01-07 | 2026-01-12 | 3817SS+1d |  | Zenith | 8686494 |
| 3819 | 36900.37000.37100.38200.39200.44600.165000.972200 | Formwork | 6d | 2026-01-08 | 2026-01-13 | 3817SS+2d |  | Zenith | 8686484 |
| 3820 | 36900.37000.37100.38200.39200.44600.165000.972300 | Concreting | 1d | 2026-01-14 | 2026-01-14 | 3818FS+1d, 3819 |  | Zenith | 8686474 |
| 3821 | 36900.37000.37100.38200.39200.44600.164900 | **16th floor roof slab** | 9d | 2026-01-15 | 2026-01-23 |  | start no earlier than 2026-01-15 | Zenith | 8654274 |
| 3822 | 36900.37000.37100.38200.39200.44600.164900.972400 | Reinforcement | 6d | 2026-01-15 | 2026-01-20 | 3820 |  | Zenith | 8686464 |
| 3823 | 36900.37000.37100.38200.39200.44600.164900.972500 | Conduiting | 6d | 2026-01-16 | 2026-01-21 | 3822SS+1d |  | Zenith | 8686454 |
| 3824 | 36900.37000.37100.38200.39200.44600.164900.972600 | Formwork | 6d | 2026-01-17 | 2026-01-22 | 3822SS+2d |  | Zenith | 8686444 |
| 3825 | 36900.37000.37100.38200.39200.44600.164900.972700 | Concreting | 1d | 2026-01-23 | 2026-01-23 | 3823, 3824 |  | Zenith | 8686434 |

| ID | WBS | Task | Duration | Start | Finish | Predecessors | Constraint | Calendar | Unique_Task_ID |
| --- | --- | --- | --- | --- | --- | --- | --- | --- | --- |
| 3826 | 36900.37000.37100.38200.39200.44600.164800 | **17th floor roof slab** | 9d | 2026-01-24 | 2026-02-01 |  | start no earlier than 2026-01-24 | Zenith | 8654284 |
| 3827 | 36900.37000.37100.38200.39200.44600.164800.972800 | Reinforcement | 6d | 2026-01-24 | 2026-01-29 | 3825 |  | Zenith | 8686424 |
| 3828 | 36900.37000.37100.38200.39200.44600.164800.972900 | Conduiting | 6d | 2026-01-25 | 2026-01-30 | 3827SS+1d |  | Zenith | 8686414 |
| 3829 | 36900.37000.37100.38200.39200.44600.164800.973000 | Formwork | 6d | 2026-01-26 | 2026-01-31 | 3827SS+2d |  | Zenith | 8686404 |
| 3830 | 36900.37000.37100.38200.39200.44600.164800.973100 | Concreting | 1d | 2026-02-01 | 2026-02-01 | 3828FS+1d, 3829 |  | Zenith | 8686394 |
| 3831 | 36900.37000.37100.38200.39200.44600.164700 | **18th floor roof slab** | 8d | 2026-02-02 | 2026-02-09 |  | start no earlier than 2026-02-02 | Zenith | 8654294 |
| 3832 | 36900.37000.37100.38200.39200.44600.164700.973200 | Reinforcement | 5d | 2026-02-02 | 2026-02-06 | 3830 |  | Zenith | 8686384 |
| 3833 | 36900.37000.37100.38200.39200.44600.164700.973300 | Conduiting | 5d | 2026-02-03 | 2026-02-07 | 3832SS+1d |  | Zenith | 8686374 |
| 3834 | 36900.37000.37100.38200.39200.44600.164700.973400 | Formwork | 5d | 2026-02-04 | 2026-02-08 | 3832SS+2d |  | Zenith | 8686364 |
| 3835 | 36900.37000.37100.38200.39200.44600.164700.973500 | Concreting | 1d | 2026-02-09 | 2026-02-09 | 3833FS+1d, 3834 |  | Zenith | 8686354 |
| 3836 | 36900.37000.37100.38200.39200.44600.172200 | **19th floor roof slab** | 8d | 2026-02-10 | 2026-02-17 |  | start no earlier than 2026-02-10 | Zenith | 8654304 |
| 3837 | 36900.37000.37100.38200.39200.44600.172200.973600 | Reinforcement | 5d | 2026-02-10 | 2026-02-14 | 3835 |  | Zenith | 8686344 |
| 3838 | 36900.37000.37100.38200.39200.44600.172200.973700 | Conduiting | 5d | 2026-02-11 | 2026-02-15 | 3837SS+1d |  | Zenith | 8686334 |
| 3839 | 36900.37000.37100.38200.39200.44600.172200.973800 | Formwork | 5d | 2026-02-12 | 2026-02-16 | 3837SS+2d |  | Zenith | 8686324 |
| 3840 | 36900.37000.37100.38200.39200.44600.172200.973900 | Concreting | 1d | 2026-02-17 | 2026-02-17 | 3838FS+1d, 3839 |  | Zenith | 8686314 |
| 3841 | 36900.37000.37100.38200.39200.44600.172300 | **20th floor roof slab** | 8d | 2026-02-18 | 2026-02-25 |  | start no earlier than 2026-02-18 | Zenith | 8654314 |
| 3842 | 36900.37000.37100.38200.39200.44600.172300.974000 | Reinforcement | 5d | 2026-02-18 | 2026-02-22 | 3840 |  | Zenith | 8686304 |
| 3843 | 36900.37000.37100.38200.39200.44600.172300.974100 | Conduiting | 5d | 2026-02-19 | 2026-02-23 | 3842SS+1d |  | Zenith | 8686294 |
| 3844 | 36900.37000.37100.38200.39200.44600.172300.974200 | Formwork | 5d | 2026-02-20 | 2026-02-24 | 3842SS+2d |  | Zenith | 8686284 |
| 3845 | 36900.37000.37100.38200.39200.44600.172300.974300 | Concreting | 1d | 2026-02-25 | 2026-02-25 | 3843FS+1d, 3844 |  | Zenith | 8686274 |
| 3846 | 36900.37000.37100.38200.39200.44600.172400 | **21st floor roof slab** | 8d | 2026-02-26 | 2026-03-05 |  | start no earlier than 2026-02-26 | Zenith | 8654324 |
| 3847 | 36900.37000.37100.38200.39200.44600.172400.974400 | Reinforcement | 5d | 2026-02-26 | 2026-03-02 | 3845 |  | Zenith | 8686264 |
| 3848 | 36900.37000.37100.38200.39200.44600.172400.974500 | Conduiting | 5d | 2026-02-27 | 2026-03-03 | 3847SS+1d |  | Zenith | 8686254 |
| 3849 | 36900.37000.37100.38200.39200.44600.172400.974600 | Formwork | 5d | 2026-02-28 | 2026-03-04 | 3847SS+2d |  | Zenith | 8686244 |
| 3850 | 36900.37000.37100.38200.39200.44600.172400.974700 | Concreting | 1d | 2026-03-05 | 2026-03-05 | 3848FS+1d, 3849 |  | Zenith | 8686234 |

| ID | WBS | Task | Duration | Start | Finish | Predecessors | Constraint | Calendar | Unique_Task_ID |
| --- | --- | --- | --- | --- | --- | --- | --- | --- | --- |
| 3851 | 36900.37000.37100.38200.39200.44600.172700 | **22nd floor roof slab** | 8d | 2026-03-06 | 2026-03-13 |  | start no earlier than 2026-03-06 | Zenith | 8654334 |
| 3852 | 36900.37000.37100.38200.39200.44600.172700.974800 | Reinforcement | 5d | 2026-03-06 | 2026-03-10 | 3850 |  | Zenith | 8686224 |
| 3853 | 36900.37000.37100.38200.39200.44600.172700.974900 | Conduiting | 5d | 2026-03-07 | 2026-03-11 | 3852SS+1d |  | Zenith | 8686214 |
| 3854 | 36900.37000.37100.38200.39200.44600.172700.975000 | Formwork | 5d | 2026-03-08 | 2026-03-12 | 3852SS+2d |  | Zenith | 8686204 |
| 3855 | 36900.37000.37100.38200.39200.44600.172700.975100 | Concreting | 1d | 2026-03-13 | 2026-03-13 | 3853FS+1d, 3854 |  | Zenith | 8686194 |
| 3856 | 36900.37000.37100.38200.39200.44600.172800 | **23rd floor roof slab** | 8d | 2026-03-14 | 2026-03-21 |  | start no earlier than 2026-03-14 | Zenith | 8654344 |
| 3857 | 36900.37000.37100.38200.39200.44600.172800.975200 | Reinforcement | 5d | 2026-03-14 | 2026-03-18 | 3855 |  | Zenith | 8686184 |
| 3858 | 36900.37000.37100.38200.39200.44600.172800.975300 | Conduiting | 5d | 2026-03-15 | 2026-03-19 | 3857SS+1d |  | Zenith | 8686174 |
| 3859 | 36900.37000.37100.38200.39200.44600.172800.975400 | Formwork | 5d | 2026-03-16 | 2026-03-20 | 3857SS+2d |  | Zenith | 8686164 |
| 3860 | 36900.37000.37100.38200.39200.44600.172800.975500 | Concreting | 1d | 2026-03-21 | 2026-03-21 | 3858FS+1d, 3859 |  | Zenith | 8686154 |
| 3861 | 36900.37000.37100.38200.39200.44600.172900 | **24th floor roof slab** | 8d | 2026-03-22 | 2026-03-29 |  | start no earlier than 2026-03-22 | Zenith | 8654354 |
| 3862 | 36900.37000.37100.38200.39200.44600.172900.975600 | Reinforcement | 5d | 2026-03-22 | 2026-03-26 | 3860 |  | Zenith | 8686144 |
| 3863 | 36900.37000.37100.38200.39200.44600.172900.975700 | Conduiting | 5d | 2026-03-23 | 2026-03-27 | 3862SS+1d |  | Zenith | 8686134 |
| 3864 | 36900.37000.37100.38200.39200.44600.172900.975800 | Formwork | 5d | 2026-03-24 | 2026-03-28 | 3862SS+2d |  | Zenith | 8686124 |
| 3865 | 36900.37000.37100.38200.39200.44600.172900.975900 | Concreting | 1d | 2026-03-29 | 2026-03-29 | 3863FS+1d, 3864 |  | Zenith | 8686114 |
| 3866 | 36900.37000.37100.38200.39200.44600.173000 | **25th floor roof slab** | 8d | 2026-03-30 | 2026-04-06 |  | start no earlier than 2026-03-30 | Zenith | 8654364 |
| 3867 | 36900.37000.37100.38200.39200.44600.173000.976000 | Reinforcement | 5d | 2026-03-30 | 2026-04-03 | 3865 |  | Zenith | 8686104 |
| 3868 | 36900.37000.37100.38200.39200.44600.173000.976100 | Conduiting | 5d | 2026-03-31 | 2026-04-04 | 3867SS+1d |  | Zenith | 8686094 |
| 3869 | 36900.37000.37100.38200.39200.44600.173000.976200 | Formwork | 5d | 2026-04-01 | 2026-04-05 | 3867SS+2d |  | Zenith | 8686084 |
| 3870 | 36900.37000.37100.38200.39200.44600.173000.976300 | Concreting | 1d | 2026-04-06 | 2026-04-06 | 3868FS+1d, 3869 |  | Zenith | 8686074 |
| 3871 | 36900.37000.37100.38200.39200.44600.173100 | **26th floor roof slab** | 8d | 2026-04-07 | 2026-04-14 |  | start no earlier than 2026-04-07 | Zenith | 8654374 |
| 3872 | 36900.37000.37100.38200.39200.44600.173100.976400 | Reinforcement | 5d | 2026-04-07 | 2026-04-11 | 3870 |  | Zenith | 8686064 |
| 3873 | 36900.37000.37100.38200.39200.44600.173100.976500 | Conduiting | 5d | 2026-04-08 | 2026-04-12 | 3872SS+1d |  | Zenith | 8686054 |
| 3874 | 36900.37000.37100.38200.39200.44600.173100.976600 | Formwork | 5d | 2026-04-09 | 2026-04-13 | 3872SS+2d |  | Zenith | 8686044 |
| 3875 | 36900.37000.37100.38200.39200.44600.173100.976700 | Concreting | 1d | 2026-04-14 | 2026-04-14 | 3873FS+1d, 3874 |  | Zenith | 8686034 |

| ID | WBS | Task | Duration | Start | Finish | Predecessors | Constraint | Calendar | Unique_Task_ID |
| --- | --- | --- | --- | --- | --- | --- | --- | --- | --- |
| 3876 | 36900.37000.37100.38200.39200.44600.173200 | **27th floor roof slab** | 8d | 2026-04-15 | 2026-04-22 |  | start no earlier than 2026-04-15 | Zenith | 8654384 |
| 3877 | 36900.37000.37100.38200.39200.44600.173200.976800 | Reinforcement | 5d | 2026-04-15 | 2026-04-19 | 3875 |  | Zenith | 8686024 |
| 3878 | 36900.37000.37100.38200.39200.44600.173200.976900 | Conduiting | 5d | 2026-04-16 | 2026-04-20 | 3877SS+1d |  | Zenith | 8686014 |
| 3879 | 36900.37000.37100.38200.39200.44600.173200.977000 | Formwork | 5d | 2026-04-17 | 2026-04-21 | 3877SS+2d |  | Zenith | 8686004 |
| 3880 | 36900.37000.37100.38200.39200.44600.173200.977100 | Concreting | 1d | 2026-04-22 | 2026-04-22 | 3878FS+1d, 3879 |  | Zenith | 8685994 |
| 3881 | 36900.37000.37100.38200.39200.44600.173300 | **28th floor roof slab** | 8d | 2026-04-23 | 2026-04-30 |  | start no earlier than 2026-04-23 | Zenith | 8654394 |
| 3882 | 36900.37000.37100.38200.39200.44600.173300.977200 | Reinforcement | 5d | 2026-04-23 | 2026-04-27 | 3880 |  | Zenith | 8685984 |
| 3883 | 36900.37000.37100.38200.39200.44600.173300.977300 | Conduiting | 5d | 2026-04-24 | 2026-04-28 | 3882SS+1d |  | Zenith | 8685974 |
| 3884 | 36900.37000.37100.38200.39200.44600.173300.977400 | Formwork | 5d | 2026-04-25 | 2026-04-29 | 3882SS+2d |  | Zenith | 8685964 |
| 3885 | 36900.37000.37100.38200.39200.44600.173300.977500 | Concreting | 1d | 2026-04-30 | 2026-04-30 | 3883FS+1d, 3884 |  | Zenith | 8685954 |
| 3886 | 36900.37000.37100.38200.39200.44600.173400 | **29th floor roof slab** | 8d | 2026-05-01 | 2026-05-08 |  | start no earlier than 2026-05-01 | Zenith | 8654404 |
| 3887 | 36900.37000.37100.38200.39200.44600.173400.977600 | Reinforcement | 5d | 2026-05-01 | 2026-05-05 | 3885 |  | Zenith | 8685944 |
| 3888 | 36900.37000.37100.38200.39200.44600.173400.977700 | Conduiting | 5d | 2026-05-02 | 2026-05-06 | 3887SS+1d |  | Zenith | 8685934 |
| 3889 | 36900.37000.37100.38200.39200.44600.173400.977800 | Formwork | 5d | 2026-05-03 | 2026-05-07 | 3887SS+2d |  | Zenith | 8685924 |
| 3890 | 36900.37000.37100.38200.39200.44600.173400.977900 | Concreting | 1d | 2026-05-08 | 2026-05-08 | 3888FS+1d, 3889 |  | Zenith | 8685914 |
| 3891 | 36900.37000.37100.38200.39200.44600.173700 | **30th floor roof slab** | 10d | 2026-05-09 | 2026-05-18 |  | start no earlier than 2026-05-09 | Zenith | 8654414 |
| 3892 | 36900.37000.37100.38200.39200.44600.173700.978000 | Reinforcement | 7d | 2026-05-09 | 2026-05-15 | 3890 |  | Zenith | 8685904 |
| 3893 | 36900.37000.37100.38200.39200.44600.173700.978100 | Conduiting | 7d | 2026-05-10 | 2026-05-16 | 3892SS+1d |  | Zenith | 8685894 |
| 3894 | 36900.37000.37100.38200.39200.44600.173700.978200 | Formwork | 7d | 2026-05-11 | 2026-05-17 | 3892SS+2d |  | Zenith | 8685884 |
| 3895 | 36900.37000.37100.38200.39200.44600.173700.978300 | Concreting | 1d | 2026-05-18 | 2026-05-18 | 3893FS+1d, 3894 |  | Zenith | 8685874 |
| 3896 | 36900.37000.37100.38200.39200.44600.173800 | **31st floor roof slab** | 10d | 2026-05-19 | 2026-05-28 |  | start no earlier than 2026-05-19 | Zenith | 8654424 |
| 3897 | 36900.37000.37100.38200.39200.44600.173800.978400 | Reinforcement | 7d | 2026-05-19 | 2026-05-25 | 3895 |  | Zenith | 8685864 |
| 3898 | 36900.37000.37100.38200.39200.44600.173800.978500 | Conduiting | 7d | 2026-05-20 | 2026-05-26 | 3897SS+1d |  | Zenith | 8685854 |
| 3899 | 36900.37000.37100.38200.39200.44600.173800.978600 | Formwork | 7d | 2026-05-21 | 2026-05-27 | 3897SS+2d |  | Zenith | 8685844 |
| 3900 | 36900.37000.37100.38200.39200.44600.173800.978700 | Concreting | 1d | 2026-05-28 | 2026-05-28 | 3898FS+1d, 3899 |  | Zenith | 8685834 |

| ID | WBS | Task | Duration | Start | Finish | Predecessors | Constraint | Calendar | Unique_Task_ID |
| --- | --- | --- | --- | --- | --- | --- | --- | --- | --- |
| 3901 | 36900.37000.37100.38200.39200.44600.173900 | **32nd floor roof slab** | 10d | 2026-05-29 | 2026-06-07 |  | start no earlier than 2026-05-29 | Zenith | 8654434 |
| 3902 | 36900.37000.37100.38200.39200.44600.173900.978800 | Reinforcement | 7d | 2026-05-29 | 2026-06-04 | 3900 |  | Zenith | 8685824 |
| 3903 | 36900.37000.37100.38200.39200.44600.173900.978900 | Conduiting | 7d | 2026-05-30 | 2026-06-05 | 3902SS+1d |  | Zenith | 8685814 |
| 3904 | 36900.37000.37100.38200.39200.44600.173900.979000 | Formwork | 7d | 2026-05-31 | 2026-06-06 | 3902SS+2d |  | Zenith | 8685804 |
| 3905 | 36900.37000.37100.38200.39200.44600.173900.979100 | Concreting | 1d | 2026-06-07 | 2026-06-07 | 3903FS+1d, 3904 |  | Zenith | 8685794 |
| 3906 | 36900.37000.37100.38200.39200.44600.174000 | **33rd floor roof slab** | 10d | 2026-06-08 | 2026-06-17 |  | start no earlier than 2026-06-08 | Zenith | 8654444 |
| 3907 | 36900.37000.37100.38200.39200.44600.174000.979200 | Reinforcement | 7d | 2026-06-08 | 2026-06-14 | 3905 |  | Zenith | 8685784 |
| 3908 | 36900.37000.37100.38200.39200.44600.174000.979300 | Conduiting | 7d | 2026-06-09 | 2026-06-15 | 3907SS+1d |  | Zenith | 8685774 |
| 3909 | 36900.37000.37100.38200.39200.44600.174000.979400 | Formwork | 7d | 2026-06-10 | 2026-06-16 | 3907SS+2d |  | Zenith | 8685764 |
| 3910 | 36900.37000.37100.38200.39200.44600.174000.979500 | Concreting | 1d | 2026-06-17 | 2026-06-17 | 3908FS+1d, 3909 |  | Zenith | 8685754 |
| 3911 | 36900.37000.37100.38200.39200.44600.174100 | **34th floor roof slab** | 10d | 2026-06-18 | 2026-06-27 |  | start no earlier than 2026-06-18 | Zenith | 8654454 |
| 3912 | 36900.37000.37100.38200.39200.44600.174100.979600 | Reinforcement | 7d | 2026-06-18 | 2026-06-24 | 3910 |  | Zenith | 8685744 |
| 3913 | 36900.37000.37100.38200.39200.44600.174100.979700 | Conduiting | 7d | 2026-06-19 | 2026-06-25 | 3912SS+1d |  | Zenith | 8685734 |
| 3914 | 36900.37000.37100.38200.39200.44600.174100.979800 | Formwork | 7d | 2026-06-20 | 2026-06-26 | 3912SS+2d |  | Zenith | 8685724 |
| 3915 | 36900.37000.37100.38200.39200.44600.174100.979900 | Concreting | 1d | 2026-06-27 | 2026-06-27 | 3913FS+1d, 3914 |  | Zenith | 8685714 |
| 3916 | 36900.37000.37100.38200.39200.44600.174400 | **Terrace floor slab** | 18d | 2026-06-28 | 2026-07-15 |  | start no earlier than 2026-06-28 | Zenith | 8654464 |
| 3917 | 36900.37000.37100.38200.39200.44600.174400.980000 | Reinforcement | 14d | 2026-06-28 | 2026-07-11 | 3915 |  | Zenith | 8685704 |
| 3918 | 36900.37000.37100.38200.39200.44600.174400.980100 | Conduiting | 14d | 2026-06-29 | 2026-07-12 | 3917SS+1d |  | Zenith | 8685694 |
| 3919 | 36900.37000.37100.38200.39200.44600.174400.980200 | Formwork | 14d | 2026-06-30 | 2026-07-13 | 3917SS+2d |  | Zenith | 8685684 |
| 3920 | 36900.37000.37100.38200.39200.44600.174400.980300 | Concreting | 2d | 2026-07-14 | 2026-07-15 | 3918FS+1d, 3919 |  | Zenith | 8685674 |
| 3921 | 36900.37000.37100.38200.39200.44600.174500 | **OHT, Mumty & Machine Room, Parapet** | 35d | 2026-07-16 | 2026-08-19 |  | start no earlier than 2026-07-16 | Zenith | 8654474 |
| 3922 | 36900.37000.37100.38200.39200.44600.174500.980400 | Reinforcement | 20d | 2026-07-16 | 2026-08-04 | 3920 |  | Zenith | 8685664 |
| 3923 | 36900.37000.37100.38200.39200.44600.174500.980500 | Flanges fixing & Conduiting | 10d | 2026-07-17 | 2026-07-26 | 3922SS+1d |  | Zenith | 8685654 |
| 3924 | 36900.37000.37100.38200.39200.44600.174500.980600 | Formwork | 25d | 2026-07-22 | 2026-08-15 | 3922SS+6d |  | Zenith | 8685644 |
| 3925 | 36900.37000.37100.38200.39200.44600.174500.980700 | Concreting | 4d | 2026-08-16 | 2026-08-19 | 3923FS+5d, 3924 |  | Zenith | 8685634 |

| ID | WBS | Task | Duration | Start | Finish | Predecessors | Constraint | Calendar | Unique_Task_ID |
| --- | --- | --- | --- | --- | --- | --- | --- | --- | --- |
| 3926 | 36900.37000.37100.38200.39200.47300 | **Post Pour Activities** | 323.25d | 2025-08-24 | 2026-08-27 |  | start no earlier than 2025-08-24 | Zenith | 8648054 |
| 3927 | 36900.37000.37100.38200.39200.47300.806000 | 1st Floor | 7d | 2025-08-24 | 2025-08-30 | 3765 |  | Zenith | 8723924 |
| 3928 | 36900.37000.37100.38200.39200.47300.806100 | 2nd Floor | 7d | 2025-09-02 | 2025-09-09 | 3927FS+0.25d, 3770FS+0.25d |  | Zenith | 8723914 |
| 3929 | 36900.37000.37100.38200.39200.47300.806200 | 3rd Floor | 7d | 2025-09-11 | 2025-09-18 | 3928FS+0.25d, 3775FS+0.25d |  | Zenith | 8723904 |
| 3930 | 36900.37000.37100.38200.39200.47300.806300 | 4th Floor | 7d | 2025-09-20 | 2025-09-27 | 3929FS+0.25d, 3780FS+0.25d |  | Zenith | 8723894 |
| 3931 | 36900.37000.37100.38200.39200.47300.806400 | 5th Floor | 7d | 2025-09-29 | 2025-10-06 | 3930FS+0.25d, 3785FS+0.25d |  | Zenith | 8723884 |
| 3932 | 36900.37000.37100.38200.39200.47300.806500 | 6th Floor | 7d | 2025-10-08 | 2025-10-15 | 3931FS+0.25d, 3790FS+0.25d |  | Zenith | 8723874 |
| 3933 | 36900.37000.37100.38200.39200.47300.806600 | 7th Floor | 7d | 2025-10-17 | 2025-10-24 | 3932FS+0.25d, 3795FS+0.25d |  | Zenith | 8723864 |
| 3934 | 36900.37000.37100.38200.39200.47300.806700 | 8th Floor | 7d | 2025-10-26 | 2025-12-17 | 3933FS+0.25d, 3800FS+0.25d |  | Zenith | 8723854 |
| 3935 | 36900.37000.37100.38200.39200.47300.806800 | 9th Floor | 7d | 2025-12-19 | 2025-12-26 | 3934FS+0.25d, 3805FS+0.25d |  | Zenith | 8723844 |
| 3936 | 36900.37000.37100.38200.39200.47300.806900 | 10th Floor | 7d | 2025-12-28 | 2026-01-04 | 3935FS+0.25d, 3810FS+0.25d |  | Zenith | 8723834 |
| 3937 | 36900.37000.37100.38200.39200.47300.807000 | 11th Floor | 7d | 2026-01-06 | 2026-01-13 | 3936FS+0.25d, 3815FS+0.25d |  | Zenith | 8723824 |
| 3938 | 36900.37000.37100.38200.39200.47300.807100 | 12th Floor | 7d | 2026-01-15 | 2026-01-22 | 3937FS+0.25d, 3820FS+0.25d |  | Zenith | 8723814 |
| 3939 | 36900.37000.37100.38200.39200.47300.807200 | 13th Floor | 7d | 2026-01-24 | 2026-01-31 | 3938FS+0.25d, 3825FS+0.25d |  | Zenith | 8723804 |
| 3940 | 36900.37000.37100.38200.39200.47300.807300 | 14th Floor | 7d | 2026-02-02 | 2026-02-09 | 3939FS+0.25d, 3830FS+0.25d |  | Zenith | 8723794 |
| 3941 | 36900.37000.37100.38200.39200.47300.807400 | 15th Floor | 7d | 2026-02-10 | 2026-02-17 | 3940FS+0.25d, 3835FS+0.25d |  | Zenith | 8723784 |
| 3942 | 36900.37000.37100.38200.39200.47300.807500 | 16th Floor | 7d | 2026-02-18 | 2026-02-25 | 3941FS+0.25d, 3840FS+0.25d |  | Zenith | 8723774 |
| 3943 | 36900.37000.37100.38200.39200.47300.807600 | 17th Floor | 7d | 2026-02-26 | 2026-03-05 | 3942FS+0.25d, 3845FS+0.25d |  | Zenith | 8723764 |
| 3944 | 36900.37000.37100.38200.39200.47300.807700 | 18th Floor | 7d | 2026-03-06 | 2026-03-13 | 3943FS+0.25d, 3850FS+0.25d |  | Zenith | 8723754 |
| 3945 | 36900.37000.37100.38200.39200.47300.807800 | 19th Floor | 7d | 2026-03-14 | 2026-03-21 | 3944FS+0.25d, 3855FS+0.25d |  | Zenith | 8723744 |
| 3946 | 36900.37000.37100.38200.39200.47300.807900 | 20th Floor | 7d | 2026-03-22 | 2026-03-29 | 3945FS+0.25d, 3860FS+0.25d |  | Zenith | 8723734 |
| 3947 | 36900.37000.37100.38200.39200.47300.808000 | 21st Floor | 7d | 2026-03-30 | 2026-04-06 | 3946FS+0.25d, 3865FS+0.25d |  | Zenith | 8723724 |
| 3948 | 36900.37000.37100.38200.39200.47300.808100 | 22nd Floor | 7d | 2026-04-07 | 2026-04-14 | 3947FS+0.25d, 3870FS+0.25d |  | Zenith | 8723714 |
| 3949 | 36900.37000.37100.38200.39200.47300.808200 | 23rd Floor | 7d | 2026-04-15 | 2026-04-22 | 3948FS+0.25d, 3875FS+0.25d |  | Zenith | 8723704 |
| 3950 | 36900.37000.37100.38200.39200.47300.808300 | 24th Floor | 7d | 2026-04-23 | 2026-04-30 | 3949FS+0.25d, 3880FS+0.25d |  | Zenith | 8723694 |
| 3951 | 36900.37000.37100.38200.39200.47300.808400 | 25th Floor | 7d | 2026-05-01 | 2026-05-08 | 3950FS+0.25d, 3885FS+0.25d |  | Zenith | 8723684 |
| 3952 | 36900.37000.37100.38200.39200.47300.808500 | 26th Floor | 7d | 2026-05-09 | 2026-05-16 | 3951FS+0.25d, 3890FS+0.25d |  | Zenith | 8723674 |
| 3953 | 36900.37000.37100.38200.39200.47300.808600 | 27th Floor | 7d | 2026-05-19 | 2026-05-26 | 3952FS+0.25d, 3895FS+0.25d |  | Zenith | 8723664 |
| 3954 | 36900.37000.37100.38200.39200.47300.808700 | 28th Floor | 7d | 2026-05-29 | 2026-06-05 | 3953FS+0.25d, 3900FS+0.25d |  | Zenith | 8723654 |
| 3955 | 36900.37000.37100.38200.39200.47300.808800 | 29th Floor | 7d | 2026-06-08 | 2026-06-15 | 3954FS+0.25d, 3905FS+0.25d |  | Zenith | 8723644 |
| 3956 | 36900.37000.37100.38200.39200.47300.808900 | 30th Floor | 7d | 2026-06-18 | 2026-06-25 | 3955FS+0.25d, 3910FS+0.25d |  | Zenith | 8723634 |
| 3957 | 36900.37000.37100.38200.39200.47300.809000 | 31st Floor | 7d | 2026-06-28 | 2026-07-05 | 3956FS+0.25d, 3915FS+0.25d |  | Zenith | 8723624 |
| 3958 | 36900.37000.37100.38200.39200.47300.809100 | 32nd Flood | 7d | 2026-07-16 | 2026-07-23 | 3957FS+0.25d, 3920FS+0.25d |  | Zenith | 8723614 |
| 3959 | 36900.37000.37100.38200.39200.47300.809200 | 33rd Floor | 7d | 2026-07-23 | 2026-07-30 | 3958 |  | Zenith | 8723604 |
| 3960 | 36900.37000.37100.38200.39200.47300.809300 | 34th Floor | 7d | 2026-07-30 | 2026-08-06 | 3959 |  | Zenith | 8723594 |
| 3961 | 36900.37000.37100.38200.39200.47300.809400 | 35th Floor | 7d | 2026-08-06 | 2026-08-13 | 3960 |  | Zenith | 8723584 |
| 3962 | 36900.37000.37100.38200.39200.47300.809500 | Terrace | 7d | 2026-08-13 | 2026-08-20 | 3961 |  | Zenith | 8723574 |
| 3963 | 36900.37000.37100.38200.39200.47300.809600 | Mumty & Machine Room | 7d | 2026-08-20 | 2026-08-27 | 3962 |  | Zenith | 8723564 |

| ID | WBS | Task | Duration | Start | Finish | Predecessors | Constraint | Calendar | Unique_Task_ID |
| --- | --- | --- | --- | --- | --- | --- | --- | --- | --- |
| 3964 | 36900.37000.37100.38200.39200.41000 | **Finishing work** | 550d | 2025-08-31 | 2027-06-01 |  | start no earlier than 2025-08-31 | Zenith | 8647784 |
| 3965 | 36900.37000.37100.38200.39200.41000.41800 | **Flat finishing** | 550d | 2025-08-31 | 2027-06-01 |  | start no earlier than 2025-08-31 | Zenith | 8647864 |
| 3966 | 36900.37000.37100.38200.39200.41000.41800.96100 | **1st Floor roof** | 79d | 2025-08-31 | 2026-01-01 |  | start no earlier than 2025-08-31 | Zenith | 8649794 |
| 3967 | 36900.37000.37100.38200.39200.41000.41800.96100.1493700 | Block Work | 6d | 2025-08-31 | 2025-09-05 | 3927 |  | Zenith | 8698894 |
| 3968 | 36900.37000.37100.38200.39200.41000.41800.96100.1493800 | Fire sprinkler pipe fixing | 5d | 2025-09-06 | 2025-09-10 | 3967 |  | Zenith | 8698904 |
| 3969 | 36900.37000.37100.38200.39200.41000.41800.96100.1493900 | Internal Plumbing Works | 5d | 2025-09-06 | 2025-09-10 | 3967 |  | Zenith | 8698914 |
| 3970 | 36900.37000.37100.38200.39200.41000.41800.96100.1494000 | Waterproofing | 5d | 2025-09-11 | 2025-09-15 | 3969 |  | Zenith | 8698924 |
| 3971 | 36900.37000.37100.38200.39200.41000.41800.96100.1494100 | Internal Plaster | 9d | 2025-09-12 | 2025-09-20 | 3969, 3970FF+5d |  | Zenith | 8698934 |
| 3972 | 36900.37000.37100.38200.39200.41000.41800.96100.1494200 | IPS flooring work | 7d | 2025-09-21 | 2025-09-27 | 3971 |  | Zenith | 8698944 |
| 3973 | 36900.37000.37100.38200.39200.41000.41800.96100.1494300 | Toilet dado work | 6d | 2025-09-21 | 2025-09-26 | 3970, 3971 |  | Zenith | 8698954 |
| 3974 | 36900.37000.37100.38200.39200.41000.41800.96100.1494400 | Toilet flooring work | 7d | 2025-09-27 | 2025-10-03 | 3973 |  | Zenith | 8698964 |
| 3975 | 36900.37000.37100.38200.39200.41000.41800.96100.1494500 | False Cieling panel fixing | 7d | 2025-10-04 | 2025-10-10 | 3974 |  | Zenith | 8698974 |
| 3976 | 36900.37000.37100.38200.39200.41000.41800.96100.1494600 | Living dinning flooring | 7d | 2025-10-04 | 2025-10-10 | 3974 |  | Zenith | 8698984 |
| 3977 | 36900.37000.37100.38200.39200.41000.41800.96100.1494700 | Putty primer coat | 8d | 2025-10-11 | 2025-10-18 | 3976 |  | Zenith | 8698994 |
| 3978 | 36900.37000.37100.38200.39200.41000.41800.96100.1494800 | Aluminium door-window fixing | 12d | 2025-10-11 | 2025-10-22 | 3972, 3976 |  | Zenith | 8699004 |
| 3979 | 36900.37000.37100.38200.39200.41000.41800.96100.1494900 | Door shutter fixing (Pre Hung) | 8d | 2025-10-19 | 2025-10-26 | 3977 |  | Zenith | 8699014 |
| 3980 | 36900.37000.37100.38200.39200.41000.41800.96100.1495000 | Electrical wiring work | 10d | 2025-10-27 | 2025-12-20 | 3979 |  | Zenith | 8699024 |
| 3981 | 36900.37000.37100.38200.39200.41000.41800.96100.1495100 | Painting 1st coat | 12d | 2025-12-21 | 2026-01-01 | 3980 |  | Zenith | 8699034 |
| 3982 | 36900.37000.37100.38200.39200.41000.41800.96200 | **2nd floor roof** | 81.75d | 2025-09-09 | 2026-01-13 |  | start no earlier than 2025-09-09 | Zenith | 8649804 |
| 3983 | 36900.37000.37100.38200.39200.41000.41800.96200.1495200 | Block Work | 6d | 2025-09-09 | 2025-09-15 | 3928, 3967 |  | Zenith | 8699044 |
| 3984 | 36900.37000.37100.38200.39200.41000.41800.96200.1495300 | Fire sprinkler pipe fixing | 5d | 2025-09-15 | 2025-09-20 | 3968, 3983 |  | Zenith | 8699054 |
| 3985 | 36900.37000.37100.38200.39200.41000.41800.96200.1495400 | Internal Plumbing Works | 5d | 2025-09-15 | 2025-09-20 | 3969, 3983 |  | Zenith | 8699064 |
| 3986 | 36900.37000.37100.38200.39200.41000.41800.96200.1495500 | Waterproofing | 5d | 2025-09-20 | 2025-09-25 | 3970, 3985 |  | Zenith | 8699074 |
| 3987 | 36900.37000.37100.38200.39200.41000.41800.96200.1495600 | Internal Plaster | 9d | 2025-09-21 | 2025-09-30 | 3971, 3985, 3986FF+5d |  | Zenith | 8699084 |
| 3988 | 36900.37000.37100.38200.39200.41000.41800.96200.1495700 | IPS flooring work | 7d | 2025-09-30 | 2025-10-07 | 3972, 3987 |  | Zenith | 8699094 |
| 3989 | 36900.37000.37100.38200.39200.41000.41800.96200.1495800 | Toilet dado work | 6d | 2025-09-30 | 2025-10-06 | 3973, 3986, 3987 |  | Zenith | 8699104 |
| 3990 | 36900.37000.37100.38200.39200.41000.41800.96200.1495900 | Toilet flooring work | 7d | 2025-10-06 | 2025-10-13 | 3974, 3989 |  | Zenith | 8699114 |
| 3991 | 36900.37000.37100.38200.39200.41000.41800.96200.1496000 | False Cieling panel fixing | 7d | 2025-10-13 | 2025-10-20 | 3975, 3990 |  | Zenith | 8699124 |
| 3992 | 36900.37000.37100.38200.39200.41000.41800.96200.1496100 | Living dinning flooring | 7d | 2025-10-13 | 2025-10-20 | 3976, 3990 |  | Zenith | 8699134 |
| 3993 | 36900.37000.37100.38200.39200.41000.41800.96200.1496200 | Putty primer coat | 8d | 2025-10-20 | 2025-10-28 | 3977, 3992 |  | Zenith | 8699144 |
| 3994 | 36900.37000.37100.38200.39200.41000.41800.96200.1496300 | Aluminium door-window fixing | 12d | 2025-10-23 | 2025-12-18 | 3978, 3988, 3992 |  | Zenith | 8699154 |
| 3995 | 36900.37000.37100.38200.39200.41000.41800.96200.1496400 | Door shutter fixing (Pre Hung) | 8d | 2025-10-28 | 2025-12-20 | 3979, 3993 |  | Zenith | 8699164 |
| 3996 | 36900.37000.37100.38200.39200.41000.41800.96200.1496500 | Electrical wiring work | 10d | 2025-12-21 | 2025-12-30 | 3980, 3995 |  | Zenith | 8699174 |
| 3997 | 36900.37000.37100.38200.39200.41000.41800.96200.1496600 | Painting 1st coat | 12d | 2026-01-02 | 2026-01-13 | 3981, 3996 |  | Zenith | 8699184 |

| ID | WBS | Task | Duration | Start | Finish | Predecessors | Constraint | Calendar | Unique_Task_ID |
| --- | --- | --- | --- | --- | --- | --- | --- | --- | --- |
| 3998 | 36900.37000.37100.38200.39200.41000.41800.96300 | **3rd floor roof** | 84.75d | 2025-09-18 | 2026-01-25 |  | start no earlier than 2025-09-18 | Zenith | 8649814 |
| 3999 | 36900.37000.37100.38200.39200.41000.41800.96300.1496700 | Block Work | 6d | 2025-09-18 | 2025-09-24 | 3929, 3983 |  | Zenith | 8699194 |
| 4000 | 36900.37000.37100.38200.39200.41000.41800.96300.1496800 | Fire sprinkler pipe fixing | 5d | 2025-09-24 | 2025-09-29 | 3984, 3999 |  | Zenith | 8699204 |
| 4001 | 36900.37000.37100.38200.39200.41000.41800.96300.1496900 | Internal Plumbing Works | 5d | 2025-09-24 | 2025-09-29 | 3985, 3999 |  | Zenith | 8699214 |
| 4002 | 36900.37000.37100.38200.39200.41000.41800.96300.1497000 | Waterproofing | 5d | 2025-09-29 | 2025-10-04 | 3986, 4001 |  | Zenith | 8699224 |
| 4003 | 36900.37000.37100.38200.39200.41000.41800.96300.1497100 | Internal Plaster | 9d | 2025-09-30 | 2025-10-09 | 3987, 4001, 4002FF+5d |  | Zenith | 8699234 |
| 4004 | 36900.37000.37100.38200.39200.41000.41800.96300.1497200 | IPS flooring work | 7d | 2025-10-09 | 2025-10-16 | 3988, 4003 |  | Zenith | 8699244 |
| 4005 | 36900.37000.37100.38200.39200.41000.41800.96300.1497300 | Toilet dado work | 6d | 2025-10-09 | 2025-10-15 | 3989, 4002, 4003 |  | Zenith | 8699254 |
| 4006 | 36900.37000.37100.38200.39200.41000.41800.96300.1497400 | Toilet flooring work | 7d | 2025-10-15 | 2025-10-22 | 3990, 4005 |  | Zenith | 8699264 |
| 4007 | 36900.37000.37100.38200.39200.41000.41800.96300.1497500 | False Cieling panel fixing | 7d | 2025-10-22 | 2025-10-29 | 3991, 4006 |  | Zenith | 8699274 |
| 4008 | 36900.37000.37100.38200.39200.41000.41800.96300.1497600 | Living dinning flooring | 7d | 2025-10-22 | 2025-10-29 | 3992, 4006 |  | Zenith | 8699284 |
| 4009 | 36900.37000.37100.38200.39200.41000.41800.96300.1497700 | Putty primer coat | 8d | 2025-10-29 | 2025-12-21 | 3993, 4008 |  | Zenith | 8699294 |
| 4010 | 36900.37000.37100.38200.39200.41000.41800.96300.1497800 | Aluminium door-window fixing | 12d | 2025-12-19 | 2025-12-30 | 3994, 4004, 4008 |  | Zenith | 8699304 |
| 4011 | 36900.37000.37100.38200.39200.41000.41800.96300.1497900 | Door shutter fixing (Pre Hung) | 8d | 2025-12-21 | 2025-12-29 | 3995, 4009 |  | Zenith | 8699314 |
| 4012 | 36900.37000.37100.38200.39200.41000.41800.96300.1498000 | Electrical wiring work | 10d | 2025-12-31 | 2026-01-09 | 3996, 4011 |  | Zenith | 8699324 |
| 4013 | 36900.37000.37100.38200.39200.41000.41800.96300.1498100 | Painting 1st coat | 12d | 2026-01-14 | 2026-01-25 | 3997, 4012 |  | Zenith | 8699334 |
| 4014 | 36900.37000.37100.38200.39200.41000.41800.96400 | **4th floor roof** | 87.75d | 2025-09-27 | 2026-02-06 |  | start no earlier than 2025-09-27 | Zenith | 8649824 |
| 4015 | 36900.37000.37100.38200.39200.41000.41800.96400.1498200 | Block Work | 6d | 2025-09-27 | 2025-10-03 | 3930, 3999 |  | Zenith | 8699344 |
| 4016 | 36900.37000.37100.38200.39200.41000.41800.96400.1498300 | Fire sprinkler pipe fixing | 5d | 2025-10-03 | 2025-10-08 | 4000, 4015 |  | Zenith | 8699354 |
| 4017 | 36900.37000.37100.38200.39200.41000.41800.96400.1498400 | Internal Plumbing Works | 5d | 2025-10-03 | 2025-10-08 | 4001, 4015 |  | Zenith | 8699364 |
| 4018 | 36900.37000.37100.38200.39200.41000.41800.96400.1498500 | Waterproofing | 5d | 2025-10-08 | 2025-10-13 | 4002, 4017 |  | Zenith | 8699374 |
| 4019 | 36900.37000.37100.38200.39200.41000.41800.96400.1498600 | Internal Plaster | 9d | 2025-10-09 | 2025-10-18 | 4003, 4017, 4018FF+5d |  | Zenith | 8699384 |
| 4020 | 36900.37000.37100.38200.39200.41000.41800.96400.1498700 | IPS flooring work | 7d | 2025-10-18 | 2025-10-25 | 4004, 4019 |  | Zenith | 8699394 |
| 4021 | 36900.37000.37100.38200.39200.41000.41800.96400.1498800 | Toilet dado work | 6d | 2025-10-18 | 2025-10-24 | 4005, 4018, 4019 |  | Zenith | 8699404 |
| 4022 | 36900.37000.37100.38200.39200.41000.41800.96400.1498900 | Toilet flooring work | 7d | 2025-10-24 | 2025-10-31 | 4006, 4021 |  | Zenith | 8699414 |
| 4023 | 36900.37000.37100.38200.39200.41000.41800.96400.1499000 | False Cieling panel fixing | 7d | 2025-10-31 | 2025-12-22 | 4007, 4022 |  | Zenith | 8699424 |
| 4024 | 36900.37000.37100.38200.39200.41000.41800.96400.1499100 | Living dinning flooring | 7d | 2025-10-31 | 2025-12-22 | 4008, 4022 |  | Zenith | 8699434 |
| 4025 | 36900.37000.37100.38200.39200.41000.41800.96400.1499200 | Putty primer coat | 8d | 2025-12-22 | 2025-12-30 | 4009, 4024 |  | Zenith | 8699444 |
| 4026 | 36900.37000.37100.38200.39200.41000.41800.96400.1499300 | Aluminium door-window fixing | 12d | 2025-12-31 | 2026-01-11 | 4010, 4020, 4024 |  | Zenith | 8699454 |
| 4027 | 36900.37000.37100.38200.39200.41000.41800.96400.1499400 | Door shutter fixing (Pre Hung) | 8d | 2025-12-30 | 2026-01-07 | 4011, 4025 |  | Zenith | 8699464 |
| 4028 | 36900.37000.37100.38200.39200.41000.41800.96400.1499500 | Electrical wiring work | 10d | 2026-01-10 | 2026-01-19 | 4012, 4027 |  | Zenith | 8699474 |
| 4029 | 36900.37000.37100.38200.39200.41000.41800.96400.1499600 | Painting 1st coat | 12d | 2026-01-26 | 2026-02-06 | 4013, 4028 |  | Zenith | 8699484 |

| ID | WBS | Task | Duration | Start | Finish | Predecessors | Constraint | Calendar | Unique_Task_ID |
| --- | --- | --- | --- | --- | --- | --- | --- | --- | --- |
| 4030 | 36900.37000.37100.38200.39200.41000.41800.96500 | **5th floor roof** | 90.75d | 2025-10-06 | 2026-02-18 |  | start no earlier than 2025-10-06 | Zenith | 8649834 |
| 4031 | 36900.37000.37100.38200.39200.41000.41800.96500.1499700 | Block Work | 6d | 2025-10-06 | 2025-10-12 | 3931, 4015 |  | Zenith | 8699494 |
| 4032 | 36900.37000.37100.38200.39200.41000.41800.96500.1499800 | Fire sprinkler pipe fixing | 5d | 2025-10-12 | 2025-10-17 | 4016, 4031 |  | Zenith | 8699504 |
| 4033 | 36900.37000.37100.38200.39200.41000.41800.96500.1499900 | Internal Plumbing Works | 5d | 2025-10-12 | 2025-10-17 | 4017, 4031 |  | Zenith | 8699514 |
| 4034 | 36900.37000.37100.38200.39200.41000.41800.96500.1500000 | Waterproofing | 5d | 2025-10-17 | 2025-10-22 | 4018, 4033 |  | Zenith | 8699524 |
| 4035 | 36900.37000.37100.38200.39200.41000.41800.96500.1500100 | Internal Plaster | 9d | 2025-10-18 | 2025-10-27 | 4019, 4033, 4034FF+5d |  | Zenith | 8699534 |
| 4036 | 36900.37000.37100.38200.39200.41000.41800.96500.1500200 | IPS flooring work | 7d | 2025-10-27 | 2025-12-18 | 4020, 4035 |  | Zenith | 8699544 |
| 4037 | 36900.37000.37100.38200.39200.41000.41800.96500.1500300 | Toilet dado work | 6d | 2025-10-27 | 2025-12-17 | 4021, 4034, 4035 |  | Zenith | 8699554 |
| 4038 | 36900.37000.37100.38200.39200.41000.41800.96500.1500400 | Toilet flooring work | 7d | 2025-12-17 | 2025-12-24 | 4022, 4037 |  | Zenith | 8699564 |
| 4039 | 36900.37000.37100.38200.39200.41000.41800.96500.1500500 | False Cieling panel fixing | 7d | 2025-12-24 | 2025-12-31 | 4023, 4038 |  | Zenith | 8699574 |
| 4040 | 36900.37000.37100.38200.39200.41000.41800.96500.1500600 | Living dinning flooring | 7d | 2025-12-24 | 2025-12-31 | 4024, 4038 |  | Zenith | 8699584 |
| 4041 | 36900.37000.37100.38200.39200.41000.41800.96500.1500700 | Putty primer coat | 8d | 2025-12-31 | 2026-01-08 | 4025, 4040 |  | Zenith | 8699594 |
| 4042 | 36900.37000.37100.38200.39200.41000.41800.96500.1500800 | Aluminium door-window fixing | 12d | 2026-01-12 | 2026-01-23 | 4026, 4036, 4040 |  | Zenith | 8699604 |
| 4043 | 36900.37000.37100.38200.39200.41000.41800.96500.1500900 | Door shutter fixing (Pre Hung) | 8d | 2026-01-08 | 2026-01-16 | 4027, 4041 |  | Zenith | 8699614 |
| 4044 | 36900.37000.37100.38200.39200.41000.41800.96500.1501000 | Electrical wiring work | 10d | 2026-01-20 | 2026-01-29 | 4028, 4043 |  | Zenith | 8699624 |
| 4045 | 36900.37000.37100.38200.39200.41000.41800.96500.1501100 | Painting 1st coat | 12d | 2026-02-07 | 2026-02-18 | 4029, 4044 |  | Zenith | 8699634 |
| 4046 | 36900.37000.37100.38200.39200.41000.41800.96600 | **6th floor roof** | 93.75d | 2025-10-15 | 2026-03-02 |  | start no earlier than 2025-10-15 | Zenith | 8649844 |
| 4047 | 36900.37000.37100.38200.39200.41000.41800.96600.1501200 | Block Work | 6d | 2025-10-15 | 2025-10-21 | 3932, 4031 |  | Zenith | 8699644 |
| 4048 | 36900.37000.37100.38200.39200.41000.41800.96600.1501300 | Fire sprinkler pipe fixing | 5d | 2025-10-21 | 2025-10-26 | 4032, 4047 |  | Zenith | 8699654 |
| 4049 | 36900.37000.37100.38200.39200.41000.41800.96600.1501400 | Internal Plumbing Works | 5d | 2025-10-21 | 2025-10-26 | 4033, 4047 |  | Zenith | 8699664 |
| 4050 | 36900.37000.37100.38200.39200.41000.41800.96600.1501500 | Waterproofing | 5d | 2025-10-26 | 2025-10-31 | 4034, 4049 |  | Zenith | 8699674 |
| 4051 | 36900.37000.37100.38200.39200.41000.41800.96600.1501600 | Internal Plaster | 9d | 2025-10-27 | 2025-12-20 | 4035, 4049, 4050FF+5d |  | Zenith | 8699684 |
| 4052 | 36900.37000.37100.38200.39200.41000.41800.96600.1501700 | IPS flooring work | 7d | 2025-12-20 | 2025-12-27 | 4036, 4051 |  | Zenith | 8699694 |
| 4053 | 36900.37000.37100.38200.39200.41000.41800.96600.1501800 | Toilet dado work | 6d | 2025-12-20 | 2025-12-26 | 4037, 4050, 4051 |  | Zenith | 8699704 |
| 4054 | 36900.37000.37100.38200.39200.41000.41800.96600.1501900 | Toilet flooring work | 7d | 2025-12-26 | 2026-01-02 | 4038, 4053 |  | Zenith | 8699714 |
| 4055 | 36900.37000.37100.38200.39200.41000.41800.96600.1502000 | False Cieling panel fixing | 7d | 2026-01-02 | 2026-01-09 | 4039, 4054 |  | Zenith | 8699724 |
| 4056 | 36900.37000.37100.38200.39200.41000.41800.96600.1502100 | Living dinning flooring | 7d | 2026-01-02 | 2026-01-09 | 4040, 4054 |  | Zenith | 8699734 |
| 4057 | 36900.37000.37100.38200.39200.41000.41800.96600.1502200 | Putty primer coat | 8d | 2026-01-09 | 2026-01-17 | 4041, 4056 |  | Zenith | 8699744 |
| 4058 | 36900.37000.37100.38200.39200.41000.41800.96600.1502300 | Aluminium door-window fixing | 12d | 2026-01-24 | 2026-02-04 | 4042, 4052, 4056 |  | Zenith | 8699754 |
| 4059 | 36900.37000.37100.38200.39200.41000.41800.96600.1502400 | Door shutter fixing (Pre Hung) | 8d | 2026-01-17 | 2026-01-25 | 4043, 4057 |  | Zenith | 8699764 |
| 4060 | 36900.37000.37100.38200.39200.41000.41800.96600.1502500 | Electrical wiring work | 10d | 2026-01-30 | 2026-02-08 | 4044, 4059 |  | Zenith | 8699774 |
| 4061 | 36900.37000.37100.38200.39200.41000.41800.96600.1502600 | Painting 1st coat | 12d | 2026-02-19 | 2026-03-02 | 4045, 4060 |  | Zenith | 8699784 |

| ID | WBS | Task | Duration | Start | Finish | Predecessors | Constraint | Calendar | Unique_Task_ID |
| --- | --- | --- | --- | --- | --- | --- | --- | --- | --- |
| 4062 | 36900.37000.37100.38200.39200.41000.41800.96700 | **7th floor roof** | 96.75d | 2025-10-24 | 2026-03-14 |  | start no earlier than 2025-10-24 | Zenith | 8649854 |
| 4063 | 36900.37000.37100.38200.39200.41000.41800.96700.1502700 | Block Work | 6d | 2025-10-24 | 2025-10-30 | 3933, 4047 |  | Zenith | 8699794 |
| 4064 | 36900.37000.37100.38200.39200.41000.41800.96700.1502800 | Fire sprinkler pipe fixing | 5d | 2025-10-30 | 2025-12-19 | 4048, 4063 |  | Zenith | 8699804 |
| 4065 | 36900.37000.37100.38200.39200.41000.41800.96700.1502900 | Internal Plumbing Works | 5d | 2025-10-30 | 2025-12-19 | 4049, 4063 |  | Zenith | 8699814 |
| 4066 | 36900.37000.37100.38200.39200.41000.41800.96700.1503000 | Waterproofing | 5d | 2025-12-19 | 2025-12-24 | 4050, 4065 |  | Zenith | 8699824 |
| 4067 | 36900.37000.37100.38200.39200.41000.41800.96700.1503100 | Internal Plaster | 9d | 2025-12-20 | 2025-12-29 | 4051, 4065, 4066FF+5d |  | Zenith | 8699834 |
| 4068 | 36900.37000.37100.38200.39200.41000.41800.96700.1503200 | IPS flooring work | 7d | 2025-12-29 | 2026-01-05 | 4052, 4067 |  | Zenith | 8699844 |
| 4069 | 36900.37000.37100.38200.39200.41000.41800.96700.1503300 | Toilet dado work | 6d | 2025-12-29 | 2026-01-04 | 4053, 4066, 4067 |  | Zenith | 8699854 |
| 4070 | 36900.37000.37100.38200.39200.41000.41800.96700.1503400 | Toilet flooring work | 7d | 2026-01-04 | 2026-01-11 | 4054, 4069 |  | Zenith | 8699864 |
| 4071 | 36900.37000.37100.38200.39200.41000.41800.96700.1503500 | False Cieling panel fixing | 7d | 2026-01-11 | 2026-01-18 | 4055, 4070 |  | Zenith | 8699874 |
| 4072 | 36900.37000.37100.38200.39200.41000.41800.96700.1503600 | Living dinning flooring | 7d | 2026-01-11 | 2026-01-18 | 4056, 4070 |  | Zenith | 8699884 |
| 4073 | 36900.37000.37100.38200.39200.41000.41800.96700.1503700 | Putty primer coat | 8d | 2026-01-18 | 2026-01-26 | 4057, 4072 |  | Zenith | 8699894 |
| 4074 | 36900.37000.37100.38200.39200.41000.41800.96700.1503800 | Aluminium door-window fixing | 12d | 2026-02-05 | 2026-02-16 | 4058, 4068, 4072 |  | Zenith | 8699904 |
| 4075 | 36900.37000.37100.38200.39200.41000.41800.96700.1503900 | Door shutter fixing (Pre Hung) | 8d | 2026-01-26 | 2026-02-03 | 4059, 4073 |  | Zenith | 8699914 |
| 4076 | 36900.37000.37100.38200.39200.41000.41800.96700.1504000 | Electrical wiring work | 10d | 2026-02-09 | 2026-02-18 | 4060, 4075 |  | Zenith | 8699924 |
| 4077 | 36900.37000.37100.38200.39200.41000.41800.96700.1504100 | Painting 1st coat | 12d | 2026-03-03 | 2026-03-14 | 4061, 4076 |  | Zenith | 8699934 |
| 4078 | 36900.37000.37100.38200.39200.41000.41800.96800 | **8th floor roof** | 99.75d | 2025-12-17 | 2026-03-26 |  | start no earlier than 2025-12-17 | Zenith | 8649864 |
| 4079 | 36900.37000.37100.38200.39200.41000.41800.96800.1504200 | Block Work | 6d | 2025-12-17 | 2025-12-23 | 3934, 4063 |  | Zenith | 8699944 |
| 4080 | 36900.37000.37100.38200.39200.41000.41800.96800.1504300 | Fire sprinkler pipe fixing | 5d | 2025-12-23 | 2025-12-28 | 4064, 4079 |  | Zenith | 8699954 |
| 4081 | 36900.37000.37100.38200.39200.41000.41800.96800.1504400 | Internal Plumbing Works | 5d | 2025-12-23 | 2025-12-28 | 4065, 4079 |  | Zenith | 8699964 |
| 4082 | 36900.37000.37100.38200.39200.41000.41800.96800.1504500 | Waterproofing | 5d | 2025-12-28 | 2026-01-02 | 4066, 4081 |  | Zenith | 8699974 |
| 4083 | 36900.37000.37100.38200.39200.41000.41800.96800.1504600 | Internal Plaster | 9d | 2025-12-29 | 2026-01-07 | 4067, 4081, 4082FF+5d |  | Zenith | 8699984 |
| 4084 | 36900.37000.37100.38200.39200.41000.41800.96800.1504700 | IPS flooring work | 7d | 2026-01-07 | 2026-01-14 | 4068, 4083 |  | Zenith | 8699994 |
| 4085 | 36900.37000.37100.38200.39200.41000.41800.96800.1504800 | Toilet dado work | 6d | 2026-01-07 | 2026-01-13 | 4069, 4082, 4083 |  | Zenith | 8700004 |
| 4086 | 36900.37000.37100.38200.39200.41000.41800.96800.1504900 | Toilet flooring work | 7d | 2026-01-13 | 2026-01-20 | 4070, 4085 |  | Zenith | 8700014 |
| 4087 | 36900.37000.37100.38200.39200.41000.41800.96800.1505000 | False Cieling panel fixing | 7d | 2026-01-20 | 2026-01-27 | 4071, 4086 |  | Zenith | 8700024 |
| 4088 | 36900.37000.37100.38200.39200.41000.41800.96800.1505100 | Living dinning flooring | 7d | 2026-01-20 | 2026-01-27 | 4072, 4086 |  | Zenith | 8700034 |
| 4089 | 36900.37000.37100.38200.39200.41000.41800.96800.1505200 | Putty primer coat | 8d | 2026-01-27 | 2026-02-04 | 4073, 4088 |  | Zenith | 8700044 |
| 4090 | 36900.37000.37100.38200.39200.41000.41800.96800.1505300 | Aluminium door-window fixing | 12d | 2026-02-17 | 2026-02-28 | 4074, 4084, 4088 |  | Zenith | 8700054 |
| 4091 | 36900.37000.37100.38200.39200.41000.41800.96800.1505400 | Door shutter fixing (Pre Hung) | 8d | 2026-02-04 | 2026-02-12 | 4075, 4089 |  | Zenith | 8700064 |
| 4092 | 36900.37000.37100.38200.39200.41000.41800.96800.1505500 | Electrical wiring work | 10d | 2026-02-19 | 2026-02-28 | 4076, 4091 |  | Zenith | 8700074 |
| 4093 | 36900.37000.37100.38200.39200.41000.41800.96800.1505600 | Painting 1st coat | 12d | 2026-03-15 | 2026-03-26 | 4077, 4092 |  | Zenith | 8700084 |

| ID | WBS | Task | Duration | Start | Finish | Predecessors | Constraint | Calendar | Unique_Task_ID |
| --- | --- | --- | --- | --- | --- | --- | --- | --- | --- |
| 4094 | 36900.37000.37100.38200.39200.41000.41800.96900 | **9th floor roof** | 102.75d | 2025-12-26 | 2026-04-07 |  | start no earlier than 2025-12-26 | Zenith | 8649874 |
| 4095 | 36900.37000.37100.38200.39200.41000.41800.96900.1505700 | Block Work | 6d | 2025-12-26 | 2026-01-01 | 3935, 4079 |  | Zenith | 8700094 |
| 4096 | 36900.37000.37100.38200.39200.41000.41800.96900.1505800 | Fire sprinkler pipe fixing | 5d | 2026-01-01 | 2026-01-06 | 4080, 4095 |  | Zenith | 8700104 |
| 4097 | 36900.37000.37100.38200.39200.41000.41800.96900.1505900 | Internal Plumbing Works | 5d | 2026-01-01 | 2026-01-06 | 4081, 4095 |  | Zenith | 8700114 |
| 4098 | 36900.37000.37100.38200.39200.41000.41800.96900.1506000 | Waterproofing | 5d | 2026-01-06 | 2026-01-11 | 4082, 4097 |  | Zenith | 8700124 |
| 4099 | 36900.37000.37100.38200.39200.41000.41800.96900.1506100 | Internal Plaster | 9d | 2026-01-07 | 2026-01-16 | 4083, 4097, 4098FF+5d |  | Zenith | 8700134 |
| 4100 | 36900.37000.37100.38200.39200.41000.41800.96900.1506200 | IPS flooring work | 7d | 2026-01-16 | 2026-01-23 | 4084, 4099 |  | Zenith | 8700144 |
| 4101 | 36900.37000.37100.38200.39200.41000.41800.96900.1506300 | Toilet dado work | 6d | 2026-01-16 | 2026-01-22 | 4085, 4098, 4099 |  | Zenith | 8700154 |
| 4102 | 36900.37000.37100.38200.39200.41000.41800.96900.1506400 | Toilet flooring work | 7d | 2026-01-22 | 2026-01-29 | 4086, 4101 |  | Zenith | 8700164 |
| 4103 | 36900.37000.37100.38200.39200.41000.41800.96900.1506500 | False Cieling panel fixing | 7d | 2026-01-29 | 2026-02-05 | 4087, 4102 |  | Zenith | 8700174 |
| 4104 | 36900.37000.37100.38200.39200.41000.41800.96900.1506600 | Living dinning flooring | 7d | 2026-01-29 | 2026-02-05 | 4088, 4102 |  | Zenith | 8700184 |
| 4105 | 36900.37000.37100.38200.39200.41000.41800.96900.1506700 | Putty primer coat | 8d | 2026-02-05 | 2026-02-13 | 4089, 4104 |  | Zenith | 8700194 |
| 4106 | 36900.37000.37100.38200.39200.41000.41800.96900.1506800 | Aluminium door-window fixing | 12d | 2026-03-01 | 2026-03-12 | 4090, 4100, 4104 |  | Zenith | 8700204 |
| 4107 | 36900.37000.37100.38200.39200.41000.41800.96900.1506900 | Door shutter fixing (Pre Hung) | 8d | 2026-02-13 | 2026-02-21 | 4091, 4105 |  | Zenith | 8700214 |
| 4108 | 36900.37000.37100.38200.39200.41000.41800.96900.1507000 | Electrical wiring work | 10d | 2026-03-01 | 2026-03-10 | 4092, 4107 |  | Zenith | 8700224 |
| 4109 | 36900.37000.37100.38200.39200.41000.41800.96900.1507100 | Painting 1st coat | 12d | 2026-03-27 | 2026-04-07 | 4093, 4108 |  | Zenith | 8700234 |
| 4110 | 36900.37000.37100.38200.39200.41000.41800.97000 | **10th floor roof** | 105.75d | 2026-01-04 | 2026-04-19 |  | start no earlier than 2026-01-04 | Zenith | 8649884 |
| 4111 | 36900.37000.37100.38200.39200.41000.41800.97000.1507200 | Block Work | 6d | 2026-01-04 | 2026-01-10 | 3936, 4095 |  | Zenith | 8700244 |
| 4112 | 36900.37000.37100.38200.39200.41000.41800.97000.1507300 | Fire sprinkler pipe fixing | 5d | 2026-01-10 | 2026-01-15 | 4096, 4111 |  | Zenith | 8700254 |
| 4113 | 36900.37000.37100.38200.39200.41000.41800.97000.1507400 | Internal Plumbing Works | 5d | 2026-01-10 | 2026-01-15 | 4097, 4111 |  | Zenith | 8700264 |
| 4114 | 36900.37000.37100.38200.39200.41000.41800.97000.1507500 | Waterproofing | 5d | 2026-01-15 | 2026-01-20 | 4098, 4113 |  | Zenith | 8700274 |
| 4115 | 36900.37000.37100.38200.39200.41000.41800.97000.1507600 | Internal Plaster | 9d | 2026-01-16 | 2026-01-25 | 4099, 4113, 4114FF+5d |  | Zenith | 8700284 |
| 4116 | 36900.37000.37100.38200.39200.41000.41800.97000.1507700 | IPS flooring work | 7d | 2026-01-25 | 2026-02-01 | 4100, 4115 |  | Zenith | 8700294 |
| 4117 | 36900.37000.37100.38200.39200.41000.41800.97000.1507800 | Toilet dado work | 6d | 2026-01-25 | 2026-01-31 | 4101, 4114, 4115 |  | Zenith | 8700304 |
| 4118 | 36900.37000.37100.38200.39200.41000.41800.97000.1507900 | Toilet flooring work | 7d | 2026-01-31 | 2026-02-07 | 4102, 4117 |  | Zenith | 8700314 |
| 4119 | 36900.37000.37100.38200.39200.41000.41800.97000.1508000 | False Cieling panel fixing | 7d | 2026-02-07 | 2026-02-14 | 4103, 4118 |  | Zenith | 8700324 |
| 4120 | 36900.37000.37100.38200.39200.41000.41800.97000.1508100 | Living dinning flooring | 7d | 2026-02-07 | 2026-02-14 | 4104, 4118 |  | Zenith | 8700334 |
| 4121 | 36900.37000.37100.38200.39200.41000.41800.97000.1508200 | Putty primer coat | 8d | 2026-02-14 | 2026-02-22 | 4105, 4120 |  | Zenith | 8700344 |
| 4122 | 36900.37000.37100.38200.39200.41000.41800.97000.1508300 | Aluminium door-window fixing | 12d | 2026-03-13 | 2026-03-24 | 4106, 4116, 4120 |  | Zenith | 8700354 |
| 4123 | 36900.37000.37100.38200.39200.41000.41800.97000.1508400 | Door shutter fixing (Pre Hung) | 8d | 2026-02-22 | 2026-03-02 | 4107, 4121 |  | Zenith | 8700364 |
| 4124 | 36900.37000.37100.38200.39200.41000.41800.97000.1508500 | Electrical wiring work | 10d | 2026-03-11 | 2026-03-20 | 4108, 4123 |  | Zenith | 8700374 |
| 4125 | 36900.37000.37100.38200.39200.41000.41800.97000.1508600 | Painting 1st coat | 12d | 2026-04-08 | 2026-04-19 | 4109, 4124 |  | Zenith | 8700384 |

| ID | WBS | Task | Duration | Start | Finish | Predecessors | Constraint | Calendar | Unique_Task_ID |
| --- | --- | --- | --- | --- | --- | --- | --- | --- | --- |
| 4126 | 36900.37000.37100.38200.39200.41000.41800.97100 | **11th floor roof** | 108.75d | 2026-01-13 | 2026-05-01 |  | start no earlier than 2026-01-13 | Zenith | 8649894 |
| 4127 | 36900.37000.37100.38200.39200.41000.41800.97100.1508700 | Block Work | 6d | 2026-01-13 | 2026-01-19 | 3937, 4111 |  | Zenith | 8700394 |
| 4128 | 36900.37000.37100.38200.39200.41000.41800.97100.1508800 | Fire sprinkler pipe fixing | 5d | 2026-01-19 | 2026-01-24 | 4112, 4127 |  | Zenith | 8700404 |
| 4129 | 36900.37000.37100.38200.39200.41000.41800.97100.1508900 | Internal Plumbing Works | 5d | 2026-01-19 | 2026-01-24 | 4113, 4127 |  | Zenith | 8700414 |
| 4130 | 36900.37000.37100.38200.39200.41000.41800.97100.1509000 | Waterproofing | 5d | 2026-01-24 | 2026-01-29 | 4114, 4129 |  | Zenith | 8700424 |
| 4131 | 36900.37000.37100.38200.39200.41000.41800.97100.1509100 | Internal Plaster | 9d | 2026-01-25 | 2026-02-03 | 4115, 4129, 4130FF+5d |  | Zenith | 8700434 |
| 4132 | 36900.37000.37100.38200.39200.41000.41800.97100.1509200 | IPS flooring work | 7d | 2026-02-03 | 2026-02-10 | 4116, 4131 |  | Zenith | 8700444 |
| 4133 | 36900.37000.37100.38200.39200.41000.41800.97100.1509300 | Toilet dado work | 6d | 2026-02-03 | 2026-02-09 | 4117, 4130, 4131 |  | Zenith | 8700454 |
| 4134 | 36900.37000.37100.38200.39200.41000.41800.97100.1509400 | Toilet flooring work | 7d | 2026-02-09 | 2026-02-16 | 4118, 4133 |  | Zenith | 8700464 |
| 4135 | 36900.37000.37100.38200.39200.41000.41800.97100.1509500 | False Cieling panel fixing | 7d | 2026-02-16 | 2026-02-23 | 4119, 4134 |  | Zenith | 8700474 |
| 4136 | 36900.37000.37100.38200.39200.41000.41800.97100.1509600 | Living dinning flooring | 7d | 2026-02-16 | 2026-02-23 | 4120, 4134 |  | Zenith | 8700484 |
| 4137 | 36900.37000.37100.38200.39200.41000.41800.97100.1509700 | Putty primer coat | 8d | 2026-02-23 | 2026-03-03 | 4121, 4136 |  | Zenith | 8700494 |
| 4138 | 36900.37000.37100.38200.39200.41000.41800.97100.1509800 | Aluminium door-window fixing | 12d | 2026-03-25 | 2026-04-05 | 4122, 4132, 4136 |  | Zenith | 8700504 |
| 4139 | 36900.37000.37100.38200.39200.41000.41800.97100.1509900 | Door shutter fixing (Pre Hung) | 8d | 2026-03-03 | 2026-03-11 | 4123, 4137 |  | Zenith | 8700514 |
| 4140 | 36900.37000.37100.38200.39200.41000.41800.97100.1510000 | Electrical wiring work | 10d | 2026-03-21 | 2026-03-30 | 4124, 4139 |  | Zenith | 8700524 |
| 4141 | 36900.37000.37100.38200.39200.41000.41800.97100.1510100 | Painting 1st coat | 12d | 2026-04-20 | 2026-05-01 | 4125, 4140 |  | Zenith | 8700534 |
| 4142 | 36900.37000.37100.38200.39200.41000.41800.97200 | **12th floor roof** | 111.75d | 2026-01-22 | 2026-05-13 |  | start no earlier than 2026-01-22 | Zenith | 8649904 |
| 4143 | 36900.37000.37100.38200.39200.41000.41800.97200.1510200 | Block Work | 6d | 2026-01-22 | 2026-01-28 | 3938, 4127 |  | Zenith | 8700544 |
| 4144 | 36900.37000.37100.38200.39200.41000.41800.97200.1510300 | Fire sprinkler pipe fixing | 5d | 2026-01-28 | 2026-02-02 | 4128, 4143 |  | Zenith | 8700554 |
| 4145 | 36900.37000.37100.38200.39200.41000.41800.97200.1510400 | Internal Plumbing Works | 5d | 2026-01-28 | 2026-02-02 | 4129, 4143 |  | Zenith | 8700564 |
| 4146 | 36900.37000.37100.38200.39200.41000.41800.97200.1510500 | Waterproofing | 5d | 2026-02-02 | 2026-02-07 | 4130, 4145 |  | Zenith | 8700574 |
| 4147 | 36900.37000.37100.38200.39200.41000.41800.97200.1510600 | Internal Plaster | 9d | 2026-02-03 | 2026-02-12 | 4131, 4145, 4146FF+5d |  | Zenith | 8700584 |
| 4148 | 36900.37000.37100.38200.39200.41000.41800.97200.1510700 | IPS flooring work | 7d | 2026-02-12 | 2026-02-19 | 4132, 4147 |  | Zenith | 8700594 |
| 4149 | 36900.37000.37100.38200.39200.41000.41800.97200.1510800 | Toilet dado work | 6d | 2026-02-12 | 2026-02-18 | 4133, 4146, 4147 |  | Zenith | 8700604 |
| 4150 | 36900.37000.37100.38200.39200.41000.41800.97200.1510900 | Toilet flooring work | 7d | 2026-02-18 | 2026-02-25 | 4134, 4149 |  | Zenith | 8700614 |
| 4151 | 36900.37000.37100.38200.39200.41000.41800.97200.1511000 | False Cieling panel fixing | 7d | 2026-02-25 | 2026-03-04 | 4135, 4150 |  | Zenith | 8700624 |
| 4152 | 36900.37000.37100.38200.39200.41000.41800.97200.1511100 | Living dinning flooring | 7d | 2026-02-25 | 2026-03-04 | 4136, 4150 |  | Zenith | 8700634 |
| 4153 | 36900.37000.37100.38200.39200.41000.41800.97200.1511200 | Putty primer coat | 8d | 2026-03-04 | 2026-03-12 | 4137, 4152 |  | Zenith | 8700644 |
| 4154 | 36900.37000.37100.38200.39200.41000.41800.97200.1511300 | Aluminium door-window fixing | 12d | 2026-04-06 | 2026-04-17 | 4138, 4148, 4152 |  | Zenith | 8700654 |
| 4155 | 36900.37000.37100.38200.39200.41000.41800.97200.1511400 | Door shutter fixing (Pre Hung) | 8d | 2026-03-12 | 2026-03-20 | 4139, 4153 |  | Zenith | 8700664 |
| 4156 | 36900.37000.37100.38200.39200.41000.41800.97200.1511500 | Electrical wiring work | 10d | 2026-03-31 | 2026-04-09 | 4140, 4155 |  | Zenith | 8700674 |
| 4157 | 36900.37000.37100.38200.39200.41000.41800.97200.1511600 | Painting 1st coat | 12d | 2026-05-02 | 2026-05-13 | 4141, 4156 |  | Zenith | 8700684 |

| ID | WBS | Task | Duration | Start | Finish | Predecessors | Constraint | Calendar | Unique_Task_ID |
| --- | --- | --- | --- | --- | --- | --- | --- | --- | --- |
| 4158 | 36900.37000.37100.38200.39200.41000.41800.97300 | **13th floor roof** | 114.75d | 2026-01-31 | 2026-05-25 |  | start no earlier than 2026-01-31 | Zenith | 8649914 |
| 4159 | 36900.37000.37100.38200.39200.41000.41800.97300.1511700 | Block Work | 6d | 2026-01-31 | 2026-02-06 | 3939, 4143 |  | Zenith | 8700694 |
| 4160 | 36900.37000.37100.38200.39200.41000.41800.97300.1511800 | Fire sprinkler pipe fixing | 5d | 2026-02-06 | 2026-02-11 | 4144, 4159 |  | Zenith | 8700704 |
| 4161 | 36900.37000.37100.38200.39200.41000.41800.97300.1511900 | Internal Plumbing Works | 5d | 2026-02-06 | 2026-02-11 | 4145, 4159 |  | Zenith | 8700714 |
| 4162 | 36900.37000.37100.38200.39200.41000.41800.97300.1512000 | Waterproofing | 5d | 2026-02-11 | 2026-02-16 | 4146, 4161 |  | Zenith | 8700724 |
| 4163 | 36900.37000.37100.38200.39200.41000.41800.97300.1512100 | Internal Plaster | 9d | 2026-02-12 | 2026-02-21 | 4147, 4161, 4162FF+5d |  | Zenith | 8700734 |
| 4164 | 36900.37000.37100.38200.39200.41000.41800.97300.1512200 | IPS flooring work | 7d | 2026-02-21 | 2026-02-28 | 4148, 4163 |  | Zenith | 8700744 |
| 4165 | 36900.37000.37100.38200.39200.41000.41800.97300.1512300 | Toilet dado work | 6d | 2026-02-21 | 2026-02-27 | 4149, 4162, 4163 |  | Zenith | 8700754 |
| 4166 | 36900.37000.37100.38200.39200.41000.41800.97300.1512400 | Toilet flooring work | 7d | 2026-02-27 | 2026-03-06 | 4150, 4165 |  | Zenith | 8700764 |
| 4167 | 36900.37000.37100.38200.39200.41000.41800.97300.1512500 | False Cieling panel fixing | 7d | 2026-03-06 | 2026-03-13 | 4151, 4166 |  | Zenith | 8700774 |
| 4168 | 36900.37000.37100.38200.39200.41000.41800.97300.1512600 | Living dinning flooring | 7d | 2026-03-06 | 2026-03-13 | 4152, 4166 |  | Zenith | 8700784 |
| 4169 | 36900.37000.37100.38200.39200.41000.41800.97300.1512700 | Putty primer coat | 8d | 2026-03-13 | 2026-03-21 | 4153, 4168 |  | Zenith | 8700794 |
| 4170 | 36900.37000.37100.38200.39200.41000.41800.97300.1512800 | Aluminium door-window fixing | 12d | 2026-04-18 | 2026-04-29 | 4154, 4164, 4168 |  | Zenith | 8700804 |
| 4171 | 36900.37000.37100.38200.39200.41000.41800.97300.1512900 | Door shutter fixing (Pre Hung) | 8d | 2026-03-21 | 2026-03-29 | 4155, 4169 |  | Zenith | 8700814 |
| 4172 | 36900.37000.37100.38200.39200.41000.41800.97300.1513000 | Electrical wiring work | 10d | 2026-04-10 | 2026-04-19 | 4156, 4171 |  | Zenith | 8700824 |
| 4173 | 36900.37000.37100.38200.39200.41000.41800.97300.1513100 | Painting 1st coat | 12d | 2026-05-14 | 2026-05-25 | 4157, 4172 |  | Zenith | 8700834 |
| 4174 | 36900.37000.37100.38200.39200.41000.41800.97400 | **14th floor roof** | 117.75d | 2026-02-09 | 2026-06-06 |  | start no earlier than 2026-02-09 | Zenith | 8649924 |
| 4175 | 36900.37000.37100.38200.39200.41000.41800.97400.1513200 | Block Work | 6d | 2026-02-09 | 2026-02-15 | 3940, 4159 |  | Zenith | 8700844 |
| 4176 | 36900.37000.37100.38200.39200.41000.41800.97400.1513300 | Fire sprinkler pipe fixing | 5d | 2026-02-15 | 2026-02-20 | 4160, 4175 |  | Zenith | 8700854 |
| 4177 | 36900.37000.37100.38200.39200.41000.41800.97400.1513400 | Internal Plumbing Works | 5d | 2026-02-15 | 2026-02-20 | 4161, 4175 |  | Zenith | 8700864 |
| 4178 | 36900.37000.37100.38200.39200.41000.41800.97400.1513500 | Waterproofing | 5d | 2026-02-20 | 2026-02-25 | 4162, 4177 |  | Zenith | 8700874 |
| 4179 | 36900.37000.37100.38200.39200.41000.41800.97400.1513600 | Internal Plaster | 9d | 2026-02-21 | 2026-03-02 | 4163, 4177, 4178FF+5d |  | Zenith | 8700884 |
| 4180 | 36900.37000.37100.38200.39200.41000.41800.97400.1513700 | IPS flooring work | 7d | 2026-03-02 | 2026-03-09 | 4164, 4179 |  | Zenith | 8700894 |
| 4181 | 36900.37000.37100.38200.39200.41000.41800.97400.1513800 | Toilet dado work | 6d | 2026-03-02 | 2026-03-08 | 4165, 4178, 4179 |  | Zenith | 8700904 |
| 4182 | 36900.37000.37100.38200.39200.41000.41800.97400.1513900 | Toilet flooring work | 7d | 2026-03-08 | 2026-03-15 | 4166, 4181 |  | Zenith | 8700914 |
| 4183 | 36900.37000.37100.38200.39200.41000.41800.97400.1514000 | False Cieling panel fixing | 7d | 2026-03-15 | 2026-03-22 | 4167, 4182 |  | Zenith | 8700924 |
| 4184 | 36900.37000.37100.38200.39200.41000.41800.97400.1514100 | Living dinning flooring | 7d | 2026-03-15 | 2026-03-22 | 4168, 4182 |  | Zenith | 8700934 |
| 4185 | 36900.37000.37100.38200.39200.41000.41800.97400.1514200 | Putty primer coat | 8d | 2026-03-22 | 2026-03-30 | 4169, 4184 |  | Zenith | 8700944 |
| 4186 | 36900.37000.37100.38200.39200.41000.41800.97400.1514300 | Aluminium door-window fixing | 12d | 2026-04-30 | 2026-05-11 | 4170, 4180, 4184 |  | Zenith | 8700954 |
| 4187 | 36900.37000.37100.38200.39200.41000.41800.97400.1514400 | Door shutter fixing (Pre Hung) | 8d | 2026-03-30 | 2026-04-07 | 4171, 4185 |  | Zenith | 8700964 |
| 4188 | 36900.37000.37100.38200.39200.41000.41800.97400.1514500 | Electrical wiring work | 10d | 2026-04-20 | 2026-04-29 | 4172, 4187 |  | Zenith | 8700974 |
| 4189 | 36900.37000.37100.38200.39200.41000.41800.97400.1514600 | Painting 1st coat | 12d | 2026-05-26 | 2026-06-06 | 4173, 4188 |  | Zenith | 8700984 |

| ID | WBS | Task | Duration | Start | Finish | Predecessors | Constraint | Calendar | Unique_Task_ID |
| --- | --- | --- | --- | --- | --- | --- | --- | --- | --- |
| 4190 | 36900.37000.37100.38200.39200.41000.41800.97500 | **15th floor roof** | 121.75d | 2026-02-17 | 2026-06-18 |  | start no earlier than 2026-02-17 | Zenith | 8649934 |
| 4191 | 36900.37000.37100.38200.39200.41000.41800.97500.1514700 | Block Work | 6d | 2026-02-17 | 2026-02-23 | 3941, 4175 |  | Zenith | 8700994 |
| 4192 | 36900.37000.37100.38200.39200.41000.41800.97500.1514800 | Fire sprinkler pipe fixing | 5d | 2026-02-23 | 2026-02-28 | 4176, 4191 |  | Zenith | 8701004 |
| 4193 | 36900.37000.37100.38200.39200.41000.41800.97500.1514900 | Internal Plumbing Works | 5d | 2026-02-23 | 2026-02-28 | 4177, 4191 |  | Zenith | 8701014 |
| 4194 | 36900.37000.37100.38200.39200.41000.41800.97500.1515000 | Waterproofing | 5d | 2026-02-28 | 2026-03-05 | 4178, 4193 |  | Zenith | 8701024 |
| 4195 | 36900.37000.37100.38200.39200.41000.41800.97500.1515100 | Internal Plaster | 9d | 2026-03-02 | 2026-03-11 | 4179, 4193, 4194FF+5d |  | Zenith | 8701034 |
| 4196 | 36900.37000.37100.38200.39200.41000.41800.97500.1515200 | IPS flooring work | 7d | 2026-03-11 | 2026-03-18 | 4180, 4195 |  | Zenith | 8701044 |
| 4197 | 36900.37000.37100.38200.39200.41000.41800.97500.1515300 | Toilet dado work | 6d | 2026-03-11 | 2026-03-17 | 4181, 4194, 4195 |  | Zenith | 8701054 |
| 4198 | 36900.37000.37100.38200.39200.41000.41800.97500.1515400 | Toilet flooring work | 7d | 2026-03-17 | 2026-03-24 | 4182, 4197 |  | Zenith | 8701064 |
| 4199 | 36900.37000.37100.38200.39200.41000.41800.97500.1515500 | False Cieling panel fixing | 7d | 2026-03-24 | 2026-03-31 | 4183, 4198 |  | Zenith | 8701074 |
| 4200 | 36900.37000.37100.38200.39200.41000.41800.97500.1515600 | Living dinning flooring | 7d | 2026-03-24 | 2026-03-31 | 4184, 4198 |  | Zenith | 8701084 |
| 4201 | 36900.37000.37100.38200.39200.41000.41800.97500.1515700 | Aluminium door-window fixing | 8d | 2026-05-12 | 2026-05-19 | 4186, 4196, 4200 |  | Zenith | 8701094 |
| 4202 | 36900.37000.37100.38200.39200.41000.41800.97500.1515800 | Putty primer coat | 12d | 2026-03-31 | 2026-04-12 | 4185, 4200 |  | Zenith | 8701104 |
| 4203 | 36900.37000.37100.38200.39200.41000.41800.97500.1515900 | Door shutter fixing (Pre Hung) | 8d | 2026-04-12 | 2026-04-20 | 4187, 4202 |  | Zenith | 8701114 |
| 4204 | 36900.37000.37100.38200.39200.41000.41800.97500.1516000 | Electrical wiring work | 10d | 2026-04-30 | 2026-05-09 | 4188, 4203 |  | Zenith | 8701124 |
| 4205 | 36900.37000.37100.38200.39200.41000.41800.97500.1516100 | Painting 1st coat | 12d | 2026-06-07 | 2026-06-18 | 4189, 4204 |  | Zenith | 8701134 |
| 4206 | 36900.37000.37100.38200.39200.41000.41800.97600 | **16th floor roof** | 125.75d | 2026-02-25 | 2026-06-30 |  | start no earlier than 2026-02-25 | Zenith | 8649944 |
| 4207 | 36900.37000.37100.38200.39200.41000.41800.97600.1516200 | Block Work | 6d | 2026-02-25 | 2026-03-03 | 3942, 4191 |  | Zenith | 8701144 |
| 4208 | 36900.37000.37100.38200.39200.41000.41800.97600.1516300 | Fire sprinkler pipe fixing | 5d | 2026-03-03 | 2026-03-08 | 4192, 4207 |  | Zenith | 8701154 |
| 4209 | 36900.37000.37100.38200.39200.41000.41800.97600.1516400 | Internal Plumbing Works | 5d | 2026-03-03 | 2026-03-08 | 4193, 4207 |  | Zenith | 8701164 |
| 4210 | 36900.37000.37100.38200.39200.41000.41800.97600.1516500 | Waterproofing | 5d | 2026-03-08 | 2026-03-13 | 4194, 4209 |  | Zenith | 8701174 |
| 4211 | 36900.37000.37100.38200.39200.41000.41800.97600.1516600 | Internal Plaster | 9d | 2026-03-11 | 2026-03-20 | 4195, 4209, 4210FF+5d |  | Zenith | 8701184 |
| 4212 | 36900.37000.37100.38200.39200.41000.41800.97600.1516700 | IPS flooring work | 7d | 2026-03-20 | 2026-03-27 | 4196, 4211 |  | Zenith | 8701194 |
| 4213 | 36900.37000.37100.38200.39200.41000.41800.97600.1516800 | Toilet dado work | 6d | 2026-03-20 | 2026-03-26 | 4197, 4210, 4211 |  | Zenith | 8701204 |
| 4214 | 36900.37000.37100.38200.39200.41000.41800.97600.1516900 | Toilet flooring work | 7d | 2026-03-26 | 2026-04-02 | 4198, 4213 |  | Zenith | 8701214 |
| 4215 | 36900.37000.37100.38200.39200.41000.41800.97600.1517000 | False Cieling panel fixing | 7d | 2026-04-02 | 2026-04-09 | 4199, 4214 |  | Zenith | 8701224 |
| 4216 | 36900.37000.37100.38200.39200.41000.41800.97600.1517100 | Living dinning flooring | 7d | 2026-04-02 | 2026-04-09 | 4200, 4214 |  | Zenith | 8701234 |
| 4217 | 36900.37000.37100.38200.39200.41000.41800.97600.1517200 | Putty primer coat | 8d | 2026-04-12 | 2026-04-20 | 4202, 4216 |  | Zenith | 8701244 |
| 4218 | 36900.37000.37100.38200.39200.41000.41800.97600.1517300 | Aluminium door-window fixing | 12d | 2026-05-20 | 2026-05-31 | 4201, 4212, 4216 |  | Zenith | 8701254 |
| 4219 | 36900.37000.37100.38200.39200.41000.41800.97600.1517400 | Door shutter fixing (Pre Hung) | 8d | 2026-04-20 | 2026-04-28 | 4203, 4217 |  | Zenith | 8701264 |
| 4220 | 36900.37000.37100.38200.39200.41000.41800.97600.1517500 | Electrical wiring work | 10d | 2026-05-10 | 2026-05-19 | 4204, 4219 |  | Zenith | 8701274 |
| 4221 | 36900.37000.37100.38200.39200.41000.41800.97600.1517600 | Painting 1st coat | 12d | 2026-06-19 | 2026-06-30 | 4205, 4220 |  | Zenith | 8701284 |

| ID | WBS | Task | Duration | Start | Finish | Predecessors | Constraint | Calendar | Unique_Task_ID |
| --- | --- | --- | --- | --- | --- | --- | --- | --- | --- |
| 4222 | 36900.37000.37100.38200.39200.41000.41800.97700 | **17th floor roof** | 129.75d | 2026-03-05 | 2026-07-12 |  | start no earlier than 2026-03-05 | Zenith | 8649954 |
| 4223 | 36900.37000.37100.38200.39200.41000.41800.97700.1517700 | Block Work | 6d | 2026-03-05 | 2026-03-11 | 3943, 4207 |  | Zenith | 8701294 |
| 4224 | 36900.37000.37100.38200.39200.41000.41800.97700.1517800 | Fire sprinkler pipe fixing | 5d | 2026-03-11 | 2026-03-16 | 4208, 4223 |  | Zenith | 8701304 |
| 4225 | 36900.37000.37100.38200.39200.41000.41800.97700.1517900 | Internal Plumbing Works | 5d | 2026-03-11 | 2026-03-16 | 4209, 4223 |  | Zenith | 8701314 |
| 4226 | 36900.37000.37100.38200.39200.41000.41800.97700.1518000 | Waterproofing | 5d | 2026-03-16 | 2026-03-21 | 4210, 4225 |  | Zenith | 8701324 |
| 4227 | 36900.37000.37100.38200.39200.41000.41800.97700.1518100 | Internal Plaster | 9d | 2026-03-20 | 2026-03-29 | 4211, 4225, 4226FF+5d |  | Zenith | 8701334 |
| 4228 | 36900.37000.37100.38200.39200.41000.41800.97700.1518200 | IPS flooring work | 7d | 2026-03-29 | 2026-04-05 | 4212, 4227 |  | Zenith | 8701344 |
| 4229 | 36900.37000.37100.38200.39200.41000.41800.97700.1518300 | Toilet dado work | 6d | 2026-03-29 | 2026-04-04 | 4213, 4226, 4227 |  | Zenith | 8701354 |
| 4230 | 36900.37000.37100.38200.39200.41000.41800.97700.1518400 | Toilet flooring work | 7d | 2026-04-04 | 2026-04-11 | 4214, 4229 |  | Zenith | 8701364 |
| 4231 | 36900.37000.37100.38200.39200.41000.41800.97700.1518500 | False Cieling panel fixing | 7d | 2026-04-11 | 2026-04-18 | 4215, 4230 |  | Zenith | 8701374 |
| 4232 | 36900.37000.37100.38200.39200.41000.41800.97700.1518600 | Living dinning flooring | 7d | 2026-04-11 | 2026-04-18 | 4216, 4230 |  | Zenith | 8701384 |
| 4233 | 36900.37000.37100.38200.39200.41000.41800.97700.1518700 | Putty primer coat | 8d | 2026-04-20 | 2026-04-28 | 4217, 4232 |  | Zenith | 8701394 |
| 4234 | 36900.37000.37100.38200.39200.41000.41800.97700.1518800 | Aluminium door-window fixing | 12d | 2026-06-01 | 2026-06-12 | 4218, 4228, 4232 |  | Zenith | 8701404 |
| 4235 | 36900.37000.37100.38200.39200.41000.41800.97700.1518900 | Door shutter fixing (Pre Hung) | 8d | 2026-04-28 | 2026-05-06 | 4219, 4233 |  | Zenith | 8701414 |
| 4236 | 36900.37000.37100.38200.39200.41000.41800.97700.1519000 | Electrical wiring work | 10d | 2026-05-20 | 2026-05-29 | 4220, 4235 |  | Zenith | 8701424 |
| 4237 | 36900.37000.37100.38200.39200.41000.41800.97700.1519100 | Painting 1st coat | 12d | 2026-07-01 | 2026-07-12 | 4221, 4236 |  | Zenith | 8701434 |
| 4238 | 36900.37000.37100.38200.39200.41000.41800.97800 | **18th floor roof** | 133.75d | 2026-03-13 | 2026-07-24 |  | start no earlier than 2026-03-13 | Zenith | 8649964 |
| 4239 | 36900.37000.37100.38200.39200.41000.41800.97800.1519200 | Block Work | 6d | 2026-03-13 | 2026-03-19 | 3944, 4223 |  | Zenith | 8701444 |
| 4240 | 36900.37000.37100.38200.39200.41000.41800.97800.1519300 | Fire sprinkler pipe fixing | 5d | 2026-03-19 | 2026-03-24 | 4224, 4239 |  | Zenith | 8701454 |
| 4241 | 36900.37000.37100.38200.39200.41000.41800.97800.1519400 | Internal Plumbing Works | 5d | 2026-03-19 | 2026-03-24 | 4225, 4239 |  | Zenith | 8701464 |
| 4242 | 36900.37000.37100.38200.39200.41000.41800.97800.1519500 | Waterproofing | 5d | 2026-03-24 | 2026-03-29 | 4226, 4241 |  | Zenith | 8701474 |
| 4243 | 36900.37000.37100.38200.39200.41000.41800.97800.1519600 | Internal Plaster | 9d | 2026-03-29 | 2026-04-07 | 4227, 4241, 4242FF+5d |  | Zenith | 8701484 |
| 4244 | 36900.37000.37100.38200.39200.41000.41800.97800.1519700 | IPS flooring work | 7d | 2026-04-07 | 2026-04-14 | 4228, 4243 |  | Zenith | 8701494 |
| 4245 | 36900.37000.37100.38200.39200.41000.41800.97800.1519800 | Toilet dado work | 6d | 2026-04-07 | 2026-04-13 | 4229, 4242, 4243 |  | Zenith | 8701504 |
| 4246 | 36900.37000.37100.38200.39200.41000.41800.97800.1519900 | Toilet flooring work | 7d | 2026-04-13 | 2026-04-20 | 4230, 4245 |  | Zenith | 8701514 |
| 4247 | 36900.37000.37100.38200.39200.41000.41800.97800.1520000 | False Cieling panel fixing | 7d | 2026-04-20 | 2026-04-27 | 4231, 4246 |  | Zenith | 8701524 |
| 4248 | 36900.37000.37100.38200.39200.41000.41800.97800.1520100 | Living dinning flooring | 7d | 2026-04-20 | 2026-04-27 | 4232, 4246 |  | Zenith | 8701534 |
| 4249 | 36900.37000.37100.38200.39200.41000.41800.97800.1520200 | Putty primer coat | 8d | 2026-04-28 | 2026-05-06 | 4233, 4248 |  | Zenith | 8701544 |
| 4250 | 36900.37000.37100.38200.39200.41000.41800.97800.1520300 | Aluminium door-window fixing | 12d | 2026-06-13 | 2026-06-24 | 4234, 4244, 4248 |  | Zenith | 8701554 |
| 4251 | 36900.37000.37100.38200.39200.41000.41800.97800.1520400 | Door shutter fixing (Pre Hung) | 8d | 2026-05-06 | 2026-05-14 | 4235, 4249 |  | Zenith | 8701564 |
| 4252 | 36900.37000.37100.38200.39200.41000.41800.97800.1520500 | Electrical wiring work | 10d | 2026-05-30 | 2026-06-08 | 4236, 4251 |  | Zenith | 8701574 |
| 4253 | 36900.37000.37100.38200.39200.41000.41800.97800.1520600 | Painting 1st coat | 12d | 2026-07-13 | 2026-07-24 | 4237, 4252 |  | Zenith | 8701584 |

| ID | WBS | Task | Duration | Start | Finish | Predecessors | Constraint | Calendar | Unique_Task_ID |
| --- | --- | --- | --- | --- | --- | --- | --- | --- | --- |
| 4254 | 36900.37000.37100.38200.39200.41000.41800.97900 | **19th floor roof** | 137.75d | 2026-03-21 | 2026-08-05 |  | start no earlier than 2026-03-21 | Zenith | 8649974 |
| 4255 | 36900.37000.37100.38200.39200.41000.41800.97900.1520700 | Block Work | 6d | 2026-03-21 | 2026-03-27 | 3945, 4239 |  | Zenith | 8701594 |
| 4256 | 36900.37000.37100.38200.39200.41000.41800.97900.1520800 | Fire sprinkler pipe fixing | 4d | 2026-03-27 | 2026-03-31 | 4240, 4255 |  | Zenith | 8701604 |
| 4257 | 36900.37000.37100.38200.39200.41000.41800.97900.1520900 | Internal Plumbing Works | 4d | 2026-03-27 | 2026-03-31 | 4241, 4255 |  | Zenith | 8701614 |
| 4258 | 36900.37000.37100.38200.39200.41000.41800.97900.1521000 | Waterproofing | 4d | 2026-03-31 | 2026-04-04 | 4242, 4257 |  | Zenith | 8701624 |
| 4259 | 36900.37000.37100.38200.39200.41000.41800.97900.1521100 | Internal Plaster | 9d | 2026-04-07 | 2026-04-16 | 4243, 4257, 4258FF+5d |  | Zenith | 8701634 |
| 4260 | 36900.37000.37100.38200.39200.41000.41800.97900.1521200 | IPS flooring work | 7d | 2026-04-16 | 2026-04-23 | 4244, 4259 |  | Zenith | 8701644 |
| 4261 | 36900.37000.37100.38200.39200.41000.41800.97900.1521300 | Toilet dado work | 6d | 2026-04-16 | 2026-04-22 | 4245, 4258, 4259 |  | Zenith | 8701654 |
| 4262 | 36900.37000.37100.38200.39200.41000.41800.97900.1521400 | Toilet flooring work | 7d | 2026-04-22 | 2026-04-29 | 4246, 4261 |  | Zenith | 8701664 |
| 4263 | 36900.37000.37100.38200.39200.41000.41800.97900.1521500 | False Cieling panel fixing | 7d | 2026-04-29 | 2026-05-06 | 4247, 4262 |  | Zenith | 8701674 |
| 4264 | 36900.37000.37100.38200.39200.41000.41800.97900.1521600 | Living dinning flooring | 7d | 2026-04-29 | 2026-05-06 | 4248, 4262 |  | Zenith | 8701684 |
| 4265 | 36900.37000.37100.38200.39200.41000.41800.97900.1521700 | Putty primer coat | 8d | 2026-05-06 | 2026-05-14 | 4249, 4264 |  | Zenith | 8701694 |
| 4266 | 36900.37000.37100.38200.39200.41000.41800.97900.1521800 | Aluminium door-window fixing | 12d | 2026-06-25 | 2026-07-06 | 4250, 4260, 4264 |  | Zenith | 8701704 |
| 4267 | 36900.37000.37100.38200.39200.41000.41800.97900.1521900 | Door shutter fixing (Pre Hung) | 8d | 2026-05-14 | 2026-05-22 | 4251, 4265 |  | Zenith | 8701714 |
| 4268 | 36900.37000.37100.38200.39200.41000.41800.97900.1522000 | Electrical wiring work | 10d | 2026-06-09 | 2026-06-18 | 4252, 4267 |  | Zenith | 8701724 |
| 4269 | 36900.37000.37100.38200.39200.41000.41800.97900.1522100 | Painting 1st coat | 12d | 2026-07-25 | 2026-08-05 | 4253, 4268 |  | Zenith | 8701734 |
| 4270 | 36900.37000.37100.38200.39200.41000.41800.98000 | **20th floor roof** | 141.75d | 2026-03-29 | 2026-08-17 |  | start no earlier than 2026-03-29 | Zenith | 8649984 |
| 4271 | 36900.37000.37100.38200.39200.41000.41800.98000.1522200 | Block Work | 6d | 2026-03-29 | 2026-04-04 | 3946, 4255 |  | Zenith | 8701744 |
| 4272 | 36900.37000.37100.38200.39200.41000.41800.98000.1522300 | Fire sprinkler pipe fixing | 4d | 2026-04-04 | 2026-04-08 | 4256, 4271 |  | Zenith | 8701754 |
| 4273 | 36900.37000.37100.38200.39200.41000.41800.98000.1522400 | Internal Plumbing Works | 4d | 2026-04-04 | 2026-04-08 | 4257, 4271 |  | Zenith | 8701764 |
| 4274 | 36900.37000.37100.38200.39200.41000.41800.98000.1522500 | Waterproofing | 4d | 2026-04-08 | 2026-04-12 | 4258, 4273 |  | Zenith | 8701774 |
| 4275 | 36900.37000.37100.38200.39200.41000.41800.98000.1522600 | Internal Plaster | 9d | 2026-04-16 | 2026-04-25 | 4259, 4273, 4274FF+5d |  | Zenith | 8701784 |
| 4276 | 36900.37000.37100.38200.39200.41000.41800.98000.1522700 | IPS flooring work | 7d | 2026-04-25 | 2026-05-02 | 4260, 4275 |  | Zenith | 8701794 |
| 4277 | 36900.37000.37100.38200.39200.41000.41800.98000.1522800 | Toilet dado work | 6d | 2026-04-25 | 2026-05-01 | 4261, 4274, 4275 |  | Zenith | 8701804 |
| 4278 | 36900.37000.37100.38200.39200.41000.41800.98000.1522900 | Toilet flooring work | 7d | 2026-05-01 | 2026-05-08 | 4262, 4277 |  | Zenith | 8701814 |
| 4279 | 36900.37000.37100.38200.39200.41000.41800.98000.1523000 | False Cieling panel fixing | 7d | 2026-05-08 | 2026-05-15 | 4263, 4278 |  | Zenith | 8701824 |
| 4280 | 36900.37000.37100.38200.39200.41000.41800.98000.1523100 | Living dinning flooring | 7d | 2026-05-08 | 2026-05-15 | 4264, 4278 |  | Zenith | 8701834 |
| 4281 | 36900.37000.37100.38200.39200.41000.41800.98000.1523200 | Putty primer coat | 8d | 2026-05-15 | 2026-05-23 | 4265, 4280 |  | Zenith | 8701844 |
| 4282 | 36900.37000.37100.38200.39200.41000.41800.98000.1523300 | Aluminium door-window fixing | 12d | 2026-07-07 | 2026-07-18 | 4266, 4276, 4280 |  | Zenith | 8701854 |
| 4283 | 36900.37000.37100.38200.39200.41000.41800.98000.1523400 | Door shutter fixing (Pre Hung) | 8d | 2026-05-23 | 2026-05-31 | 4267, 4281 |  | Zenith | 8701864 |
| 4284 | 36900.37000.37100.38200.39200.41000.41800.98000.1523500 | Electrical wiring work | 10d | 2026-06-19 | 2026-06-28 | 4268, 4283 |  | Zenith | 8701874 |
| 4285 | 36900.37000.37100.38200.39200.41000.41800.98000.1523600 | Painting 1st coat | 12d | 2026-08-06 | 2026-08-17 | 4269, 4284 |  | Zenith | 8701884 |

| ID | WBS | Task | Duration | Start | Finish | Predecessors | Constraint | Calendar | Unique_Task_ID |
| --- | --- | --- | --- | --- | --- | --- | --- | --- | --- |
| 4286 | 36900.37000.37100.38200.39200.41000.41800.98100 | **21st floor roof** | 145.75d | 2026-04-06 | 2026-08-29 |  | start no earlier than 2026-04-06 | Zenith | 8649994 |
| 4287 | 36900.37000.37100.38200.39200.41000.41800.98100.1523700 | Block Work | 6d | 2026-04-06 | 2026-04-12 | 3947, 4271 |  | Zenith | 8701894 |
| 4288 | 36900.37000.37100.38200.39200.41000.41800.98100.1523800 | Fire sprinkler pipe fixing | 4d | 2026-04-12 | 2026-04-16 | 4272, 4287 |  | Zenith | 8701904 |
| 4289 | 36900.37000.37100.38200.39200.41000.41800.98100.1523900 | Internal Plumbing Works | 4d | 2026-04-12 | 2026-04-16 | 4273, 4287 |  | Zenith | 8701914 |
| 4290 | 36900.37000.37100.38200.39200.41000.41800.98100.1524000 | Waterproofing | 4d | 2026-04-16 | 2026-04-20 | 4274, 4289 |  | Zenith | 8701924 |
| 4291 | 36900.37000.37100.38200.39200.41000.41800.98100.1524100 | Internal Plaster | 10d | 2026-04-25 | 2026-05-05 | 4275, 4289, 4290FF+5d |  | Zenith | 8701934 |
| 4292 | 36900.37000.37100.38200.39200.41000.41800.98100.1524200 | IPS flooring work | 7d | 2026-05-05 | 2026-05-12 | 4276, 4291 |  | Zenith | 8701944 |
| 4293 | 36900.37000.37100.38200.39200.41000.41800.98100.1524300 | Toilet dado work | 6d | 2026-05-05 | 2026-05-11 | 4277, 4290, 4291 |  | Zenith | 8701954 |
| 4294 | 36900.37000.37100.38200.39200.41000.41800.98100.1524400 | Toilet flooring work | 7d | 2026-05-11 | 2026-05-18 | 4278, 4293 |  | Zenith | 8701964 |
| 4295 | 36900.37000.37100.38200.39200.41000.41800.98100.1524500 | False Cieling panel fixing | 7d | 2026-05-18 | 2026-05-25 | 4279, 4294 |  | Zenith | 8701974 |
| 4296 | 36900.37000.37100.38200.39200.41000.41800.98100.1524600 | Living dinning flooring | 7d | 2026-05-18 | 2026-05-25 | 4280, 4294 |  | Zenith | 8701984 |
| 4297 | 36900.37000.37100.38200.39200.41000.41800.98100.1524700 | Putty primer coat | 8d | 2026-05-25 | 2026-06-02 | 4281, 4296 |  | Zenith | 8701994 |
| 4298 | 36900.37000.37100.38200.39200.41000.41800.98100.1524800 | Aluminium door-window fixing | 12d | 2026-07-19 | 2026-07-30 | 4282, 4292, 4296 |  | Zenith | 8702004 |
| 4299 | 36900.37000.37100.38200.39200.41000.41800.98100.1524900 | Door shutter fixing (Pre Hung) | 8d | 2026-06-02 | 2026-06-10 | 4283, 4297 |  | Zenith | 8702014 |
| 4300 | 36900.37000.37100.38200.39200.41000.41800.98100.1525000 | Electrical wiring work | 10d | 2026-06-29 | 2026-07-08 | 4284, 4299 |  | Zenith | 8702024 |
| 4301 | 36900.37000.37100.38200.39200.41000.41800.98100.1525100 | Painting 1st coat | 12d | 2026-08-18 | 2026-08-29 | 4285, 4300 |  | Zenith | 8702034 |
| 4302 | 36900.37000.37100.38200.39200.41000.41800.98200 | **22nd floor roof** | 149.75d | 2026-04-14 | 2026-09-10 |  | start no earlier than 2026-04-14 | Zenith | 8650004 |
| 4303 | 36900.37000.37100.38200.39200.41000.41800.98200.1525200 | Block Work | 6d | 2026-04-14 | 2026-04-20 | 3948, 4287 |  | Zenith | 8702044 |
| 4304 | 36900.37000.37100.38200.39200.41000.41800.98200.1525300 | Fire sprinkler pipe fixing | 4d | 2026-04-20 | 2026-04-24 | 4288, 4303 |  | Zenith | 8702054 |
| 4305 | 36900.37000.37100.38200.39200.41000.41800.98200.1525400 | Internal Plumbing Works | 4d | 2026-04-20 | 2026-04-24 | 4289, 4303 |  | Zenith | 8702064 |
| 4306 | 36900.37000.37100.38200.39200.41000.41800.98200.1525500 | Waterproofing | 4d | 2026-04-24 | 2026-04-28 | 4290, 4305 |  | Zenith | 8702074 |
| 4307 | 36900.37000.37100.38200.39200.41000.41800.98200.1525600 | Internal Plaster | 10d | 2026-05-05 | 2026-05-15 | 4291, 4305, 4306FF+5d |  | Zenith | 8702084 |
| 4308 | 36900.37000.37100.38200.39200.41000.41800.98200.1525700 | IPS flooring work | 7d | 2026-05-15 | 2026-05-22 | 4292, 4307 |  | Zenith | 8702094 |
| 4309 | 36900.37000.37100.38200.39200.41000.41800.98200.1525800 | Toilet dado work | 6d | 2026-05-15 | 2026-05-21 | 4293, 4306, 4307 |  | Zenith | 8702104 |
| 4310 | 36900.37000.37100.38200.39200.41000.41800.98200.1525900 | Toilet flooring work | 7d | 2026-05-21 | 2026-05-28 | 4294, 4309 |  | Zenith | 8702114 |
| 4311 | 36900.37000.37100.38200.39200.41000.41800.98200.1526000 | False Cieling panel fixing | 7d | 2026-05-28 | 2026-06-04 | 4295, 4310 |  | Zenith | 8702124 |
| 4312 | 36900.37000.37100.38200.39200.41000.41800.98200.1526100 | Living dinning flooring | 7d | 2026-05-28 | 2026-06-04 | 4296, 4310 |  | Zenith | 8702134 |
| 4313 | 36900.37000.37100.38200.39200.41000.41800.98200.1526200 | Putty primer coat | 8d | 2026-06-04 | 2026-06-12 | 4297, 4312 |  | Zenith | 8702144 |
| 4314 | 36900.37000.37100.38200.39200.41000.41800.98200.1526300 | Aluminium door-window fixing | 12d | 2026-07-31 | 2026-08-11 | 4298, 4308, 4312 |  | Zenith | 8702154 |
| 4315 | 36900.37000.37100.38200.39200.41000.41800.98200.1526400 | Door shutter fixing (Pre Hung) | 8d | 2026-06-12 | 2026-06-20 | 4299, 4313 |  | Zenith | 8702164 |
| 4316 | 36900.37000.37100.38200.39200.41000.41800.98200.1526500 | Electrical wiring work | 10d | 2026-07-09 | 2026-07-18 | 4300, 4315 |  | Zenith | 8702174 |
| 4317 | 36900.37000.37100.38200.39200.41000.41800.98200.1526600 | Painting 1st coat | 12d | 2026-08-30 | 2026-09-10 | 4301, 4316 |  | Zenith | 8702184 |

| ID | WBS | Task | Duration | Start | Finish | Predecessors | Constraint | Calendar | Unique_Task_ID |
| --- | --- | --- | --- | --- | --- | --- | --- | --- | --- |
| 4318 | 36900.37000.37100.38200.39200.41000.41800.98300 | **23rd floor roof** | 153.75d | 2026-04-22 | 2026-09-22 |  | start no earlier than 2026-04-22 | Zenith | 8650014 |
| 4319 | 36900.37000.37100.38200.39200.41000.41800.98300.1526700 | Block Work | 6d | 2026-04-22 | 2026-04-28 | 3949, 4303 |  | Zenith | 8702194 |
| 4320 | 36900.37000.37100.38200.39200.41000.41800.98300.1526800 | Fire sprinkler pipe fixing | 5d | 2026-04-28 | 2026-05-03 | 4304, 4319 |  | Zenith | 8702204 |
| 4321 | 36900.37000.37100.38200.39200.41000.41800.98300.1526900 | Internal Plumbing Works | 5d | 2026-04-28 | 2026-05-03 | 4305, 4319 |  | Zenith | 8702214 |
| 4322 | 36900.37000.37100.38200.39200.41000.41800.98300.1527000 | Waterproofing | 5d | 2026-05-03 | 2026-05-08 | 4306, 4321 |  | Zenith | 8702224 |
| 4323 | 36900.37000.37100.38200.39200.41000.41800.98300.1527100 | Internal Plaster | 9d | 2026-05-15 | 2026-05-24 | 4307, 4321, 4322FF+5d |  | Zenith | 8702234 |
| 4324 | 36900.37000.37100.38200.39200.41000.41800.98300.1527200 | IPS flooring work | 7d | 2026-05-24 | 2026-05-31 | 4308, 4323 |  | Zenith | 8702244 |
| 4325 | 36900.37000.37100.38200.39200.41000.41800.98300.1527300 | Toilet dado work | 6d | 2026-05-24 | 2026-05-30 | 4309, 4322, 4323 |  | Zenith | 8702254 |
| 4326 | 36900.37000.37100.38200.39200.41000.41800.98300.1527400 | Toilet flooring work | 7d | 2026-05-30 | 2026-06-06 | 4310, 4325 |  | Zenith | 8702264 |
| 4327 | 36900.37000.37100.38200.39200.41000.41800.98300.1527500 | False Cieling panel fixing | 7d | 2026-06-06 | 2026-06-13 | 4311, 4326 |  | Zenith | 8702274 |
| 4328 | 36900.37000.37100.38200.39200.41000.41800.98300.1527600 | Living dinning flooring | 7d | 2026-06-06 | 2026-06-13 | 4312, 4326 |  | Zenith | 8702284 |
| 4329 | 36900.37000.37100.38200.39200.41000.41800.98300.1527700 | Putty primer coat | 8d | 2026-06-13 | 2026-06-21 | 4313, 4328 |  | Zenith | 8702294 |
| 4330 | 36900.37000.37100.38200.39200.41000.41800.98300.1527800 | Aluminium door-window fixing | 12d | 2026-08-12 | 2026-08-23 | 4314, 4324, 4328 |  | Zenith | 8702304 |
| 4331 | 36900.37000.37100.38200.39200.41000.41800.98300.1527900 | Door shutter fixing (Pre Hung) | 8d | 2026-06-21 | 2026-06-29 | 4315, 4329 |  | Zenith | 8702314 |
| 4332 | 36900.37000.37100.38200.39200.41000.41800.98300.1528000 | Electrical wiring work | 10d | 2026-07-19 | 2026-07-28 | 4316, 4331 |  | Zenith | 8702324 |
| 4333 | 36900.37000.37100.38200.39200.41000.41800.98300.1528100 | Painting 1st coat | 12d | 2026-09-11 | 2026-09-22 | 4317, 4332 |  | Zenith | 8702334 |
| 4334 | 36900.37000.37100.38200.39200.41000.41800.98400 | **24th floor roof** | 157.75d | 2026-04-30 | 2026-10-04 |  | start no earlier than 2026-04-30 | Zenith | 8650024 |
| 4335 | 36900.37000.37100.38200.39200.41000.41800.98400.1528200 | Block Work | 6d | 2026-04-30 | 2026-05-06 | 3950, 4319 |  | Zenith | 8702344 |
| 4336 | 36900.37000.37100.38200.39200.41000.41800.98400.1528300 | Fire sprinkler pipe fixing | 5d | 2026-05-06 | 2026-05-11 | 4320, 4335 |  | Zenith | 8702354 |
| 4337 | 36900.37000.37100.38200.39200.41000.41800.98400.1528400 | Internal Plumbing Works | 5d | 2026-05-06 | 2026-05-11 | 4321, 4335 |  | Zenith | 8702364 |
| 4338 | 36900.37000.37100.38200.39200.41000.41800.98400.1528500 | Waterproofing | 5d | 2026-05-11 | 2026-05-16 | 4322, 4337 |  | Zenith | 8702374 |
| 4339 | 36900.37000.37100.38200.39200.41000.41800.98400.1528600 | Internal Plaster | 9d | 2026-05-24 | 2026-06-02 | 4323, 4337, 4338FF+5d |  | Zenith | 8702384 |
| 4340 | 36900.37000.37100.38200.39200.41000.41800.98400.1528700 | IPS flooring work | 7d | 2026-06-02 | 2026-06-09 | 4324, 4339 |  | Zenith | 8702394 |
| 4341 | 36900.37000.37100.38200.39200.41000.41800.98400.1528800 | Toilet dado work | 6d | 2026-06-02 | 2026-06-08 | 4325, 4338, 4339 |  | Zenith | 8702404 |
| 4342 | 36900.37000.37100.38200.39200.41000.41800.98400.1528900 | Toilet flooring work | 7d | 2026-06-08 | 2026-06-15 | 4326, 4341 |  | Zenith | 8702414 |
| 4343 | 36900.37000.37100.38200.39200.41000.41800.98400.1529000 | False Cieling panel fixing | 7d | 2026-06-15 | 2026-06-22 | 4327, 4342 |  | Zenith | 8702424 |
| 4344 | 36900.37000.37100.38200.39200.41000.41800.98400.1529100 | Living dinning flooring | 7d | 2026-06-15 | 2026-06-22 | 4328, 4342 |  | Zenith | 8702434 |
| 4345 | 36900.37000.37100.38200.39200.41000.41800.98400.1529200 | Putty primer coat | 8d | 2026-06-22 | 2026-06-30 | 4329, 4344 |  | Zenith | 8702444 |
| 4346 | 36900.37000.37100.38200.39200.41000.41800.98400.1529300 | Aluminium door-window fixing | 12d | 2026-08-24 | 2026-09-04 | 4330, 4340, 4344 |  | Zenith | 8702454 |
| 4347 | 36900.37000.37100.38200.39200.41000.41800.98400.1529400 | Door shutter fixing (Pre Hung) | 8d | 2026-06-30 | 2026-07-08 | 4331, 4345 |  | Zenith | 8702464 |
| 4348 | 36900.37000.37100.38200.39200.41000.41800.98400.1529500 | Electrical wiring work | 10d | 2026-07-29 | 2026-08-07 | 4332, 4347 |  | Zenith | 8702474 |
| 4349 | 36900.37000.37100.38200.39200.41000.41800.98400.1529600 | Painting 1st coat | 12d | 2026-09-23 | 2026-10-04 | 4333, 4348 |  | Zenith | 8702484 |

| ID | WBS | Task | Duration | Start | Finish | Predecessors | Constraint | Calendar | Unique_Task_ID |
| --- | --- | --- | --- | --- | --- | --- | --- | --- | --- |
| 4350 | 36900.37000.37100.38200.39200.41000.41800.98500 | **25th floor roof** | 161.75d | 2026-05-08 | 2026-10-16 |  | start no earlier than 2026-05-08 | Zenith | 8650034 |
| 4351 | 36900.37000.37100.38200.39200.41000.41800.98500.1529700 | Block Work | 6d | 2026-05-08 | 2026-05-14 | 3951, 4335 |  | Zenith | 8702494 |
| 4352 | 36900.37000.37100.38200.39200.41000.41800.98500.1529800 | Fire sprinkler pipe fixing | 5d | 2026-05-14 | 2026-05-19 | 4336, 4351 |  | Zenith | 8702504 |
| 4353 | 36900.37000.37100.38200.39200.41000.41800.98500.1529900 | Internal Plumbing Works | 5d | 2026-05-14 | 2026-05-19 | 4337, 4351 |  | Zenith | 8702514 |
| 4354 | 36900.37000.37100.38200.39200.41000.41800.98500.1530000 | Waterproofing | 5d | 2026-05-19 | 2026-05-24 | 4338, 4353 |  | Zenith | 8702524 |
| 4355 | 36900.37000.37100.38200.39200.41000.41800.98500.1530100 | Internal Plaster | 9d | 2026-06-02 | 2026-06-11 | 4339, 4353, 4354FF+5d |  | Zenith | 8702534 |
| 4356 | 36900.37000.37100.38200.39200.41000.41800.98500.1530200 | IPS flooring work | 7d | 2026-06-11 | 2026-06-18 | 4340, 4355 |  | Zenith | 8702544 |
| 4357 | 36900.37000.37100.38200.39200.41000.41800.98500.1530300 | Toilet dado work | 6d | 2026-06-11 | 2026-06-17 | 4341, 4354, 4355 |  | Zenith | 8702554 |
| 4358 | 36900.37000.37100.38200.39200.41000.41800.98500.1530400 | Toilet flooring work | 7d | 2026-06-17 | 2026-06-24 | 4342, 4357 |  | Zenith | 8702564 |
| 4359 | 36900.37000.37100.38200.39200.41000.41800.98500.1530500 | False Cieling panel fixing | 7d | 2026-06-24 | 2026-07-01 | 4343, 4358 |  | Zenith | 8702574 |
| 4360 | 36900.37000.37100.38200.39200.41000.41800.98500.1530600 | Living dinning flooring | 7d | 2026-06-24 | 2026-07-01 | 4344, 4358 |  | Zenith | 8702584 |
| 4361 | 36900.37000.37100.38200.39200.41000.41800.98500.1530700 | Putty primer coat | 8d | 2026-07-01 | 2026-07-09 | 4345, 4360 |  | Zenith | 8702594 |
| 4362 | 36900.37000.37100.38200.39200.41000.41800.98500.1530800 | Aluminium door-window fixing | 12d | 2026-09-05 | 2026-09-16 | 4346, 4356, 4360 |  | Zenith | 8702604 |
| 4363 | 36900.37000.37100.38200.39200.41000.41800.98500.1530900 | Door shutter fixing (Pre Hung) | 8d | 2026-07-09 | 2026-07-17 | 4347, 4361 |  | Zenith | 8702614 |
| 4364 | 36900.37000.37100.38200.39200.41000.41800.98500.1531000 | Electrical wiring work | 10d | 2026-08-08 | 2026-08-17 | 4348, 4363 |  | Zenith | 8702624 |
| 4365 | 36900.37000.37100.38200.39200.41000.41800.98500.1531100 | Painting 1st coat | 12d | 2026-10-05 | 2026-10-16 | 4349, 4364 |  | Zenith | 8702634 |
| 4366 | 36900.37000.37100.38200.39200.41000.41800.98600 | **26th floor roof** | 165.75d | 2026-05-16 | 2026-10-28 |  | start no earlier than 2026-05-16 | Zenith | 8650044 |
| 4367 | 36900.37000.37100.38200.39200.41000.41800.98600.1531200 | Block Work | 7d | 2026-05-16 | 2026-05-23 | 3952, 4351 |  | Zenith | 8702644 |
| 4368 | 36900.37000.37100.38200.39200.41000.41800.98600.1531300 | Fire sprinkler pipe fixing | 7d | 2026-05-23 | 2026-05-30 | 4352, 4367 |  | Zenith | 8702654 |
| 4369 | 36900.37000.37100.38200.39200.41000.41800.98600.1531400 | Internal Plumbing Works | 7d | 2026-05-23 | 2026-05-30 | 4353, 4367 |  | Zenith | 8702664 |
| 4370 | 36900.37000.37100.38200.39200.41000.41800.98600.1531500 | Waterproofing | 7d | 2026-05-30 | 2026-06-06 | 4354, 4369 |  | Zenith | 8702674 |
| 4371 | 36900.37000.37100.38200.39200.41000.41800.98600.1531600 | Internal Plaster | 7d | 2026-06-11 | 2026-06-18 | 4355, 4369, 4370FF+5d |  | Zenith | 8702684 |
| 4372 | 36900.37000.37100.38200.39200.41000.41800.98600.1531700 | IPS flooring work | 7d | 2026-06-18 | 2026-06-25 | 4356, 4371 |  | Zenith | 8702694 |
| 4373 | 36900.37000.37100.38200.39200.41000.41800.98600.1531800 | Toilet dado work | 6d | 2026-06-18 | 2026-06-24 | 4357, 4370, 4371 |  | Zenith | 8702704 |
| 4374 | 36900.37000.37100.38200.39200.41000.41800.98600.1531900 | Toilet flooring work | 7d | 2026-06-24 | 2026-07-01 | 4358, 4373 |  | Zenith | 8702714 |
| 4375 | 36900.37000.37100.38200.39200.41000.41800.98600.1532000 | False Cieling panel fixing | 7d | 2026-07-01 | 2026-07-08 | 4359, 4374 |  | Zenith | 8702724 |
| 4376 | 36900.37000.37100.38200.39200.41000.41800.98600.1532100 | Living dinning flooring | 7d | 2026-07-01 | 2026-07-08 | 4360, 4374 |  | Zenith | 8702734 |
| 4377 | 36900.37000.37100.38200.39200.41000.41800.98600.1532200 | Putty primer coat | 8d | 2026-07-09 | 2026-07-17 | 4361, 4376 |  | Zenith | 8702744 |
| 4378 | 36900.37000.37100.38200.39200.41000.41800.98600.1532300 | Aluminium door-window fixing | 12d | 2026-09-17 | 2026-09-28 | 4362, 4372, 4376 |  | Zenith | 8702754 |
| 4379 | 36900.37000.37100.38200.39200.41000.41800.98600.1532400 | Door shutter fixing (Pre Hung) | 8d | 2026-07-17 | 2026-07-25 | 4363, 4377 |  | Zenith | 8702764 |
| 4380 | 36900.37000.37100.38200.39200.41000.41800.98600.1532500 | Electrical wiring work | 10d | 2026-08-18 | 2026-08-27 | 4364, 4379 |  | Zenith | 8702774 |
| 4381 | 36900.37000.37100.38200.39200.41000.41800.98600.1532600 | Painting 1st coat | 12d | 2026-10-17 | 2026-10-28 | 4365, 4380 |  | Zenith | 8702784 |

| ID | WBS | Task | Duration | Start | Finish | Predecessors | Constraint | Calendar | Unique_Task_ID |
| --- | --- | --- | --- | --- | --- | --- | --- | --- | --- |
| 4382 | 36900.37000.37100.38200.39200.41000.41800.98700 | **27th floor roof** | 167.75d | 2026-05-26 | 2026-12-24 |  | start no earlier than 2026-05-26 | Zenith | 8650054 |
| 4383 | 36900.37000.37100.38200.39200.41000.41800.98700.1532700 | Block Work | 7d | 2026-05-26 | 2026-06-02 | 3953, 4367 |  | Zenith | 8702794 |
| 4384 | 36900.37000.37100.38200.39200.41000.41800.98700.1532800 | Fire sprinkler pipe fixing | 7d | 2026-06-02 | 2026-06-09 | 4368, 4383 |  | Zenith | 8702804 |
| 4385 | 36900.37000.37100.38200.39200.41000.41800.98700.1532900 | Internal Plumbing Works | 7d | 2026-06-02 | 2026-06-09 | 4369, 4383 |  | Zenith | 8702814 |
| 4386 | 36900.37000.37100.38200.39200.41000.41800.98700.1533000 | Waterproofing | 7d | 2026-06-09 | 2026-06-16 | 4370, 4385 |  | Zenith | 8702824 |
| 4387 | 36900.37000.37100.38200.39200.41000.41800.98700.1533100 | Internal Plaster | 7d | 2026-06-18 | 2026-06-25 | 4371, 4385, 4386FF+5d |  | Zenith | 8702834 |
| 4388 | 36900.37000.37100.38200.39200.41000.41800.98700.1533200 | IPS flooring work | 7d | 2026-06-25 | 2026-07-02 | 4372, 4387 |  | Zenith | 8702844 |
| 4389 | 36900.37000.37100.38200.39200.41000.41800.98700.1533300 | Toilet dado work | 6d | 2026-06-25 | 2026-07-01 | 4373, 4386, 4387 |  | Zenith | 8702854 |
| 4390 | 36900.37000.37100.38200.39200.41000.41800.98700.1533400 | Toilet flooring work | 7d | 2026-07-01 | 2026-07-08 | 4374, 4389 |  | Zenith | 8702864 |
| 4391 | 36900.37000.37100.38200.39200.41000.41800.98700.1533500 | False Cieling panel fixing | 7d | 2026-07-08 | 2026-07-15 | 4375, 4390 |  | Zenith | 8702874 |
| 4392 | 36900.37000.37100.38200.39200.41000.41800.98700.1533600 | Living dinning flooring | 7d | 2026-07-08 | 2026-07-15 | 4376, 4390 |  | Zenith | 8702884 |
| 4393 | 36900.37000.37100.38200.39200.41000.41800.98700.1533700 | Putty primer coat | 8d | 2026-07-17 | 2026-07-25 | 4377, 4392 |  | Zenith | 8702894 |
| 4394 | 36900.37000.37100.38200.39200.41000.41800.98700.1533800 | Aluminium door-window fixing | 12d | 2026-09-29 | 2026-10-10 | 4378, 4388, 4392 |  | Zenith | 8702904 |
| 4395 | 36900.37000.37100.38200.39200.41000.41800.98700.1533900 | Door shutter fixing (Pre Hung) | 8d | 2026-07-25 | 2026-08-02 | 4379, 4393 |  | Zenith | 8702914 |
| 4396 | 36900.37000.37100.38200.39200.41000.41800.98700.1534000 | Electrical wiring work | 10d | 2026-08-28 | 2026-09-06 | 4380, 4395 |  | Zenith | 8702924 |
| 4397 | 36900.37000.37100.38200.39200.41000.41800.98700.1534100 | Painting 1st coat | 12d | 2026-10-29 | 2026-12-24 | 4381, 4396 |  | Zenith | 8702934 |
| 4398 | 36900.37000.37100.38200.39200.41000.41800.98800 | **28th floor roof** | 169.75d | 2026-06-05 | 2027-01-05 |  | start no earlier than 2026-06-05 | Zenith | 8650064 |
| 4399 | 36900.37000.37100.38200.39200.41000.41800.98800.1534200 | Block Work | 7d | 2026-06-05 | 2026-06-12 | 3954, 4383 |  | Zenith | 8702944 |
| 4400 | 36900.37000.37100.38200.39200.41000.41800.98800.1534300 | Fire sprinkler pipe fixing | 7d | 2026-06-12 | 2026-06-19 | 4384, 4399 |  | Zenith | 8702954 |
| 4401 | 36900.37000.37100.38200.39200.41000.41800.98800.1534400 | Internal Plumbing Works | 7d | 2026-06-12 | 2026-06-19 | 4385, 4399 |  | Zenith | 8702964 |
| 4402 | 36900.37000.37100.38200.39200.41000.41800.98800.1534500 | Waterproofing | 7d | 2026-06-19 | 2026-06-26 | 4386, 4401 |  | Zenith | 8702974 |
| 4403 | 36900.37000.37100.38200.39200.41000.41800.98800.1534600 | Internal Plaster | 7d | 2026-06-25 | 2026-07-02 | 4387, 4401, 4402FF+5d |  | Zenith | 8702984 |
| 4404 | 36900.37000.37100.38200.39200.41000.41800.98800.1534700 | IPS flooring work | 7d | 2026-07-02 | 2026-07-09 | 4388, 4403 |  | Zenith | 8702994 |
| 4405 | 36900.37000.37100.38200.39200.41000.41800.98800.1534800 | Toilet dado work | 6d | 2026-07-02 | 2026-07-08 | 4389, 4402, 4403 |  | Zenith | 8703004 |
| 4406 | 36900.37000.37100.38200.39200.41000.41800.98800.1534900 | Toilet flooring work | 7d | 2026-07-08 | 2026-07-15 | 4390, 4405 |  | Zenith | 8703014 |
| 4407 | 36900.37000.37100.38200.39200.41000.41800.98800.1535000 | False Cieling panel fixing | 7d | 2026-07-15 | 2026-07-22 | 4391, 4406 |  | Zenith | 8703024 |
| 4408 | 36900.37000.37100.38200.39200.41000.41800.98800.1535100 | Living dinning flooring | 7d | 2026-07-15 | 2026-07-22 | 4392, 4406 |  | Zenith | 8703034 |
| 4409 | 36900.37000.37100.38200.39200.41000.41800.98800.1535200 | Putty primer coat | 8d | 2026-07-25 | 2026-08-02 | 4393, 4408 |  | Zenith | 8703044 |
| 4410 | 36900.37000.37100.38200.39200.41000.41800.98800.1535300 | Aluminium door-window fixing | 12d | 2026-10-11 | 2026-10-22 | 4394, 4404, 4408 |  | Zenith | 8703054 |
| 4411 | 36900.37000.37100.38200.39200.41000.41800.98800.1535400 | Door shutter fixing (Pre Hung) | 8d | 2026-08-02 | 2026-08-10 | 4395, 4409 |  | Zenith | 8703064 |
| 4412 | 36900.37000.37100.38200.39200.41000.41800.98800.1535500 | Electrical wiring work | 10d | 2026-09-07 | 2026-09-16 | 4396, 4411 |  | Zenith | 8703074 |
| 4413 | 36900.37000.37100.38200.39200.41000.41800.98800.1535600 | Painting 1st coat | 12d | 2026-12-25 | 2027-01-05 | 4397, 4412 |  | Zenith | 8703084 |

| ID | WBS | Task | Duration | Start | Finish | Predecessors | Constraint | Calendar | Unique_Task_ID |
| --- | --- | --- | --- | --- | --- | --- | --- | --- | --- |
| 4414 | 36900.37000.37100.38200.39200.41000.41800.98900 | **29th floor roof** | 171.75d | 2026-06-15 | 2027-01-17 |  | start no earlier than 2026-06-15 | Zenith | 8650074 |
| 4415 | 36900.37000.37100.38200.39200.41000.41800.98900.1535700 | Block Work | 7d | 2026-06-15 | 2026-06-22 | 3955, 4399 |  | Zenith | 8703094 |
| 4416 | 36900.37000.37100.38200.39200.41000.41800.98900.1535800 | Fire sprinkler pipe fixing | 7d | 2026-06-22 | 2026-06-29 | 4400, 4415 |  | Zenith | 8703104 |
| 4417 | 36900.37000.37100.38200.39200.41000.41800.98900.1535900 | Internal Plumbing Works | 7d | 2026-06-22 | 2026-06-29 | 4401, 4415 |  | Zenith | 8703114 |
| 4418 | 36900.37000.37100.38200.39200.41000.41800.98900.1536000 | Waterproofing | 7d | 2026-06-29 | 2026-07-06 | 4402, 4417 |  | Zenith | 8703124 |
| 4419 | 36900.37000.37100.38200.39200.41000.41800.98900.1536100 | Internal Plaster | 7d | 2026-07-04 | 2026-07-11 | 4403, 4417, 4418FF+5d |  | Zenith | 8703134 |
| 4420 | 36900.37000.37100.38200.39200.41000.41800.98900.1536200 | IPS flooring work | 7d | 2026-07-11 | 2026-07-18 | 4404, 4419 |  | Zenith | 8703144 |
| 4421 | 36900.37000.37100.38200.39200.41000.41800.98900.1536300 | Toilet dado work | 6d | 2026-07-11 | 2026-07-17 | 4405, 4418, 4419 |  | Zenith | 8703154 |
| 4422 | 36900.37000.37100.38200.39200.41000.41800.98900.1536400 | Toilet flooring work | 7d | 2026-07-17 | 2026-07-24 | 4406, 4421 |  | Zenith | 8703164 |
| 4423 | 36900.37000.37100.38200.39200.41000.41800.98900.1536500 | False Cieling panel fixing | 7d | 2026-07-24 | 2026-07-31 | 4407, 4422 |  | Zenith | 8703174 |
| 4424 | 36900.37000.37100.38200.39200.41000.41800.98900.1536600 | Living dinning flooring | 7d | 2026-07-24 | 2026-07-31 | 4408, 4422 |  | Zenith | 8703184 |
| 4425 | 36900.37000.37100.38200.39200.41000.41800.98900.1536700 | Putty primer coat | 8d | 2026-08-02 | 2026-08-10 | 4409, 4424 |  | Zenith | 8703194 |
| 4426 | 36900.37000.37100.38200.39200.41000.41800.98900.1536800 | Aluminium door-window fixing | 12d | 2026-10-23 | 2026-12-18 | 4410, 4420, 4424 |  | Zenith | 8703204 |
| 4427 | 36900.37000.37100.38200.39200.41000.41800.98900.1536900 | Door shutter fixing (Pre Hung) | 8d | 2026-08-10 | 2026-08-18 | 4411, 4425 |  | Zenith | 8703214 |
| 4428 | 36900.37000.37100.38200.39200.41000.41800.98900.1537000 | Electrical wiring work | 10d | 2026-09-17 | 2026-09-26 | 4412, 4427 |  | Zenith | 8703224 |
| 4429 | 36900.37000.37100.38200.39200.41000.41800.98900.1537100 | Painting 1st coat | 12d | 2027-01-06 | 2027-01-17 | 4413, 4428 |  | Zenith | 8703234 |
| 4430 | 36900.37000.37100.38200.39200.41000.41800.99000 | **30th floor roof** | 176.75d | 2026-06-25 | 2027-02-01 |  | start no earlier than 2026-06-25 | Zenith | 8650084 |
| 4431 | 36900.37000.37100.38200.39200.41000.41800.99000.1537200 | Block Work | 10d | 2026-06-25 | 2026-07-05 | 3956, 4415 |  | Zenith | 8703244 |
| 4432 | 36900.37000.37100.38200.39200.41000.41800.99000.1537300 | Fire sprinkler pipe fixing | 6d | 2026-07-05 | 2026-07-11 | 4416, 4431 |  | Zenith | 8703254 |
| 4433 | 36900.37000.37100.38200.39200.41000.41800.99000.1537400 | Internal Plumbing Works | 10d | 2026-07-05 | 2026-07-15 | 4417, 4431 |  | Zenith | 8703264 |
| 4434 | 36900.37000.37100.38200.39200.41000.41800.99000.1537500 | Waterproofing | 14d | 2026-07-15 | 2026-07-29 | 4418, 4433 |  | Zenith | 8703274 |
| 4435 | 36900.37000.37100.38200.39200.41000.41800.99000.1537600 | Internal Plaster | 14d | 2026-07-20 | 2026-08-03 | 4419, 4433, 4434FF+5d |  | Zenith | 8703284 |
| 4436 | 36900.37000.37100.38200.39200.41000.41800.99000.1537700 | IPS flooring work | 10d | 2026-08-03 | 2026-08-13 | 4420, 4435 |  | Zenith | 8703294 |
| 4437 | 36900.37000.37100.38200.39200.41000.41800.99000.1537800 | Toilet dado work | 10d | 2026-08-03 | 2026-08-13 | 4421, 4434, 4435 |  | Zenith | 8703304 |
| 4438 | 36900.37000.37100.38200.39200.41000.41800.99000.1537900 | Toilet flooring work | 7d | 2026-08-13 | 2026-08-20 | 4422, 4437 |  | Zenith | 8703314 |
| 4439 | 36900.37000.37100.38200.39200.41000.41800.99000.1538000 | False Cieling panel fixing | 10d | 2026-08-20 | 2026-08-30 | 4423, 4438 |  | Zenith | 8703324 |
| 4440 | 36900.37000.37100.38200.39200.41000.41800.99000.1538100 | Living dinning flooring | 13d | 2026-08-20 | 2026-09-02 | 4424, 4438 |  | Zenith | 8703334 |
| 4441 | 36900.37000.37100.38200.39200.41000.41800.99000.1538200 | Putty primer coat | 12d | 2026-09-02 | 2026-09-14 | 4425, 4440 |  | Zenith | 8703344 |
| 4442 | 36900.37000.37100.38200.39200.41000.41800.99000.1538300 | Aluminium door-window fixing | 15d | 2026-12-19 | 2027-01-02 | 4426, 4436, 4440 |  | Zenith | 8703354 |
| 4443 | 36900.37000.37100.38200.39200.41000.41800.99000.1538400 | Door shutter fixing (Pre Hung) | 8d | 2026-09-14 | 2026-09-22 | 4427, 4441 |  | Zenith | 8703364 |
| 4444 | 36900.37000.37100.38200.39200.41000.41800.99000.1538500 | Electrical wiring work | 12d | 2026-09-27 | 2026-10-08 | 4428, 4443 |  | Zenith | 8703374 |
| 4445 | 36900.37000.37100.38200.39200.41000.41800.99000.1538600 | Painting 1st coat | 15d | 2027-01-18 | 2027-02-01 | 4429, 4444 |  | Zenith | 8703384 |

| ID | WBS | Task | Duration | Start | Finish | Predecessors | Constraint | Calendar | Unique_Task_ID |
| --- | --- | --- | --- | --- | --- | --- | --- | --- | --- |
| 4446 | 36900.37000.37100.38200.39200.41000.41800.99100 | **31st floor roof** | 181.75d | 2026-07-05 | 2027-02-16 |  | start no earlier than 2026-07-05 | Zenith | 8650094 |
| 4447 | 36900.37000.37100.38200.39200.41000.41800.99100.1538700 | Block Work | 10d | 2026-07-05 | 2026-07-15 | 3957, 4431 |  | Zenith | 8703394 |
| 4448 | 36900.37000.37100.38200.39200.41000.41800.99100.1538800 | Fire sprinkler pipe fixing | 6d | 2026-07-15 | 2026-07-21 | 4432, 4447 |  | Zenith | 8703404 |
| 4449 | 36900.37000.37100.38200.39200.41000.41800.99100.1538900 | Internal Plumbing Works | 10d | 2026-07-15 | 2026-07-25 | 4433, 4447 |  | Zenith | 8703414 |
| 4450 | 36900.37000.37100.38200.39200.41000.41800.99100.1539000 | Waterproofing | 14d | 2026-07-29 | 2026-08-12 | 4434, 4449 |  | Zenith | 8703424 |
| 4451 | 36900.37000.37100.38200.39200.41000.41800.99100.1539100 | Internal Plaster | 14d | 2026-08-03 | 2026-08-17 | 4435, 4449, 4450FF+5d |  | Zenith | 8703434 |
| 4452 | 36900.37000.37100.38200.39200.41000.41800.99100.1539200 | IPS flooring work | 10d | 2026-08-17 | 2026-08-27 | 4436, 4451 |  | Zenith | 8703444 |
| 4453 | 36900.37000.37100.38200.39200.41000.41800.99100.1539300 | Toilet dado work | 10d | 2026-08-17 | 2026-08-27 | 4437, 4450, 4451 |  | Zenith | 8703454 |
| 4454 | 36900.37000.37100.38200.39200.41000.41800.99100.1539400 | Toilet flooring work | 7d | 2026-08-27 | 2026-09-03 | 4438, 4453 |  | Zenith | 8703464 |
| 4455 | 36900.37000.37100.38200.39200.41000.41800.99100.1539500 | False Cieling panel fixing | 10d | 2026-09-03 | 2026-09-13 | 4439, 4454 |  | Zenith | 8703474 |
| 4456 | 36900.37000.37100.38200.39200.41000.41800.99100.1539600 | Living dinning flooring | 13d | 2026-09-03 | 2026-09-16 | 4440, 4454 |  | Zenith | 8703484 |
| 4457 | 36900.37000.37100.38200.39200.41000.41800.99100.1539700 | Putty primer coat | 12d | 2026-09-16 | 2026-09-28 | 4441, 4456 |  | Zenith | 8703494 |
| 4458 | 36900.37000.37100.38200.39200.41000.41800.99100.1539800 | Aluminium door-window fixing | 15d | 2027-01-03 | 2027-01-17 | 4442, 4452, 4456 |  | Zenith | 8703504 |
| 4459 | 36900.37000.37100.38200.39200.41000.41800.99100.1539900 | Door shutter fixing (Pre Hung) | 8d | 2026-09-28 | 2026-10-06 | 4443, 4457 |  | Zenith | 8703514 |
| 4460 | 36900.37000.37100.38200.39200.41000.41800.99100.1540000 | Electrical wiring work | 12d | 2026-10-09 | 2026-10-20 | 4444, 4459 |  | Zenith | 8703524 |
| 4461 | 36900.37000.37100.38200.39200.41000.41800.99100.1540100 | Painting 1st coat | 15d | 2027-02-02 | 2027-02-16 | 4445, 4460 |  | Zenith | 8703534 |
| 4462 | 36900.37000.37100.38200.39200.41000.41800.99200 | **32nd floor roof** | 178.75d | 2026-07-23 | 2027-03-03 |  | start no earlier than 2026-07-23 | Zenith | 8650104 |
| 4463 | 36900.37000.37100.38200.39200.41000.41800.99200.1540200 | Block Work | 10d | 2026-07-23 | 2026-08-02 | 3958, 4447 |  | Zenith | 8703544 |
| 4464 | 36900.37000.37100.38200.39200.41000.41800.99200.1540300 | Fire sprinkler pipe fixing | 6d | 2026-08-02 | 2026-08-08 | 4448, 4463 |  | Zenith | 8703554 |
| 4465 | 36900.37000.37100.38200.39200.41000.41800.99200.1540400 | Internal Plumbing Works | 10d | 2026-08-02 | 2026-08-12 | 4449, 4463 |  | Zenith | 8703564 |
| 4466 | 36900.37000.37100.38200.39200.41000.41800.99200.1540500 | Waterproofing | 14d | 2026-08-12 | 2026-08-26 | 4450, 4465 |  | Zenith | 8703574 |
| 4467 | 36900.37000.37100.38200.39200.41000.41800.99200.1540600 | Internal Plaster | 14d | 2026-08-17 | 2026-08-31 | 4451, 4465, 4466FF+5d |  | Zenith | 8703584 |
| 4468 | 36900.37000.37100.38200.39200.41000.41800.99200.1540700 | IPS flooring work | 10d | 2026-08-31 | 2026-09-10 | 4452, 4467 |  | Zenith | 8703594 |
| 4469 | 36900.37000.37100.38200.39200.41000.41800.99200.1540800 | Toilet dado work | 10d | 2026-08-31 | 2026-09-10 | 4453, 4466, 4467 |  | Zenith | 8703604 |
| 4470 | 36900.37000.37100.38200.39200.41000.41800.99200.1540900 | Toilet flooring work | 7d | 2026-09-10 | 2026-09-17 | 4454, 4469 |  | Zenith | 8703614 |
| 4471 | 36900.37000.37100.38200.39200.41000.41800.99200.1541000 | False Cieling panel fixing | 10d | 2026-09-17 | 2026-09-27 | 4455, 4470 |  | Zenith | 8703624 |
| 4472 | 36900.37000.37100.38200.39200.41000.41800.99200.1541100 | Living dinning flooring | 13d | 2026-09-17 | 2026-09-30 | 4456, 4470 |  | Zenith | 8703634 |
| 4473 | 36900.37000.37100.38200.39200.41000.41800.99200.1541200 | Putty primer coat | 12d | 2026-09-30 | 2026-10-12 | 4457, 4472 |  | Zenith | 8703644 |
| 4474 | 36900.37000.37100.38200.39200.41000.41800.99200.1541300 | Aluminium door-window fixing | 15d | 2027-01-18 | 2027-02-01 | 4458, 4468, 4472 |  | Zenith | 8703654 |
| 4475 | 36900.37000.37100.38200.39200.41000.41800.99200.1541400 | Door shutter fixing (Pre Hung) | 8d | 2026-10-12 | 2026-10-20 | 4459, 4473 |  | Zenith | 8703664 |
| 4476 | 36900.37000.37100.38200.39200.41000.41800.99200.1541500 | Electrical wiring work | 12d | 2026-10-21 | 2026-12-16 | 4460, 4475 |  | Zenith | 8703674 |
| 4477 | 36900.37000.37100.38200.39200.41000.41800.99200.1541600 | Painting 1st coat | 15d | 2027-02-17 | 2027-03-03 | 4461, 4476 |  | Zenith | 8703684 |

| ID | WBS | Task | Duration | Start | Finish | Predecessors | Constraint | Calendar | Unique_Task_ID |
| --- | --- | --- | --- | --- | --- | --- | --- | --- | --- |
| 4478 | 36900.37000.37100.38200.39200.41000.41800.99300 | **33rd floor roof** | 183.75d | 2026-08-02 | 2027-03-18 |  | start no earlier than 2026-08-02 | Zenith | 8650114 |
| 4479 | 36900.37000.37100.38200.39200.41000.41800.99300.1541700 | Block Work | 10d | 2026-08-02 | 2026-08-12 | 3959, 4463 |  | Zenith | 8703694 |
| 4480 | 36900.37000.37100.38200.39200.41000.41800.99300.1541800 | Fire sprinkler pipe fixing | 6d | 2026-08-12 | 2026-08-18 | 4464, 4479 |  | Zenith | 8703704 |
| 4481 | 36900.37000.37100.38200.39200.41000.41800.99300.1541900 | Internal Plumbing Works | 10d | 2026-08-12 | 2026-08-22 | 4465, 4479 |  | Zenith | 8703714 |
| 4482 | 36900.37000.37100.38200.39200.41000.41800.99300.1542000 | Waterproofing | 14d | 2026-08-26 | 2026-09-09 | 4466, 4481 |  | Zenith | 8703724 |
| 4483 | 36900.37000.37100.38200.39200.41000.41800.99300.1542100 | Internal Plaster | 14d | 2026-08-31 | 2026-09-14 | 4467, 4481, 4482FF+5d |  | Zenith | 8703734 |
| 4484 | 36900.37000.37100.38200.39200.41000.41800.99300.1542200 | IPS flooring work | 10d | 2026-09-14 | 2026-09-24 | 4468, 4483 |  | Zenith | 8703744 |
| 4485 | 36900.37000.37100.38200.39200.41000.41800.99300.1542300 | Toilet dado work | 10d | 2026-09-14 | 2026-09-24 | 4469, 4482, 4483 |  | Zenith | 8703754 |
| 4486 | 36900.37000.37100.38200.39200.41000.41800.99300.1542400 | Toilet flooring work | 7d | 2026-09-24 | 2026-10-01 | 4470, 4485 |  | Zenith | 8703764 |
| 4487 | 36900.37000.37100.38200.39200.41000.41800.99300.1542500 | False Cieling panel fixing | 10d | 2026-10-01 | 2026-10-11 | 4471, 4486 |  | Zenith | 8703774 |
| 4488 | 36900.37000.37100.38200.39200.41000.41800.99300.1542600 | Living dinning flooring | 13d | 2026-10-01 | 2026-10-14 | 4472, 4486 |  | Zenith | 8703784 |
| 4489 | 36900.37000.37100.38200.39200.41000.41800.99300.1542700 | Putty primer coat | 12d | 2026-10-14 | 2026-10-26 | 4473, 4488 |  | Zenith | 8703794 |
| 4490 | 36900.37000.37100.38200.39200.41000.41800.99300.1542800 | Aluminium door-window fixing | 15d | 2027-02-02 | 2027-02-16 | 4474, 4484, 4488 |  | Zenith | 8703804 |
| 4491 | 36900.37000.37100.38200.39200.41000.41800.99300.1542900 | Door shutter fixing (Pre Hung) | 8d | 2026-10-26 | 2026-12-18 | 4475, 4489 |  | Zenith | 8703814 |
| 4492 | 36900.37000.37100.38200.39200.41000.41800.99300.1543000 | Electrical wiring work | 12d | 2026-12-18 | 2026-12-30 | 4476, 4491 |  | Zenith | 8703824 |
| 4493 | 36900.37000.37100.38200.39200.41000.41800.99300.1543100 | Painting 1st coat | 15d | 2027-03-04 | 2027-03-18 | 4477, 4492 |  | Zenith | 8703834 |
| 4494 | 36900.37000.37100.38200.39200.41000.41800.99400 | **34th floor roof** | 188.75d | 2026-08-12 | 2027-04-02 |  | start no earlier than 2026-08-12 | Zenith | 8650124 |
| 4495 | 36900.37000.37100.38200.39200.41000.41800.99400.1543200 | Block Work | 10d | 2026-08-12 | 2026-08-22 | 3960, 4479 |  | Zenith | 8703844 |
| 4496 | 36900.37000.37100.38200.39200.41000.41800.99400.1543300 | Fire sprinkler pipe fixing | 6d | 2026-08-22 | 2026-08-28 | 4480, 4495 |  | Zenith | 8703854 |
| 4497 | 36900.37000.37100.38200.39200.41000.41800.99400.1543400 | Internal Plumbing Works | 10d | 2026-08-22 | 2026-09-01 | 4481, 4495 |  | Zenith | 8703864 |
| 4498 | 36900.37000.37100.38200.39200.41000.41800.99400.1543500 | Waterproofing | 14d | 2026-09-09 | 2026-09-23 | 4482, 4497 |  | Zenith | 8703874 |
| 4499 | 36900.37000.37100.38200.39200.41000.41800.99400.1543600 | Internal Plaster | 14d | 2026-09-14 | 2026-09-28 | 4483, 4497, 4498FF+5d |  | Zenith | 8703884 |
| 4500 | 36900.37000.37100.38200.39200.41000.41800.99400.1543700 | IPS flooring work | 10d | 2026-09-28 | 2026-10-08 | 4484, 4499 |  | Zenith | 8703894 |
| 4501 | 36900.37000.37100.38200.39200.41000.41800.99400.1543800 | Toilet dado work | 10d | 2026-09-28 | 2026-10-08 | 4485, 4498, 4499 |  | Zenith | 8703904 |
| 4502 | 36900.37000.37100.38200.39200.41000.41800.99400.1543900 | Toilet flooring work | 7d | 2026-10-08 | 2026-10-15 | 4486, 4501 |  | Zenith | 8703914 |
| 4503 | 36900.37000.37100.38200.39200.41000.41800.99400.1544000 | False Cieling panel fixing | 10d | 2026-10-15 | 2026-10-25 | 4487, 4502 |  | Zenith | 8703924 |
| 4504 | 36900.37000.37100.38200.39200.41000.41800.99400.1544100 | Living dinning flooring | 13d | 2026-10-15 | 2026-10-28 | 4488, 4502 |  | Zenith | 8703934 |
| 4505 | 36900.37000.37100.38200.39200.41000.41800.99400.1544200 | Putty primer coat | 12d | 2026-10-28 | 2026-12-24 | 4489, 4504 |  | Zenith | 8703944 |
| 4506 | 36900.37000.37100.38200.39200.41000.41800.99400.1544300 | Aluminium door-window fixing | 15d | 2027-02-17 | 2027-03-03 | 4490, 4500, 4504 |  | Zenith | 8703954 |
| 4507 | 36900.37000.37100.38200.39200.41000.41800.99400.1544400 | Door shutter fixing (Pre Hung) | 8d | 2026-12-24 | 2027-01-01 | 4491, 4505 |  | Zenith | 8703964 |
| 4508 | 36900.37000.37100.38200.39200.41000.41800.99400.1544500 | Electrical wiring work | 12d | 2027-01-01 | 2027-01-13 | 4492, 4507 |  | Zenith | 8703974 |
| 4509 | 36900.37000.37100.38200.39200.41000.41800.99400.1544600 | Painting 1st coat | 15d | 2027-03-19 | 2027-04-02 | 4493, 4508 |  | Zenith | 8703984 |

| ID | WBS | Task | Duration | Start | Finish | Predecessors | Constraint | Calendar | Unique_Task_ID |
| --- | --- | --- | --- | --- | --- | --- | --- | --- | --- |
| 4510 | 36900.37000.37100.38200.39200.41000.41800.58500 | **35th Floor** | 238.75d | 2026-08-22 | 2027-06-01 |  | start no earlier than 2026-08-22 | Zenith | 8648304 |
| 4511 | 36900.37000.37100.38200.39200.41000.41800.58500.1544700 | Block Work | 10d | 2026-08-22 | 2026-09-01 | 3961, 4495 |  | Zenith | 8703994 |
| 4512 | 36900.37000.37100.38200.39200.41000.41800.58500.1544800 | Fire sprinkler pipe fixing | 6d | 2026-09-01 | 2026-09-07 | 4496, 4511 |  | Zenith | 8704004 |
| 4513 | 36900.37000.37100.38200.39200.41000.41800.58500.1544900 | Internal Plumbing Works | 10d | 2026-09-01 | 2026-09-11 | 4497, 4511 |  | Zenith | 8704014 |
| 4514 | 36900.37000.37100.38200.39200.41000.41800.58500.1545000 | Waterproofing | 14d | 2026-09-23 | 2026-10-07 | 4498, 4513 |  | Zenith | 8704024 |
| 4515 | 36900.37000.37100.38200.39200.41000.41800.58500.1545100 | Internal Plaster | 14d | 2026-09-28 | 2026-10-12 | 4499, 4513, 4514FF+5d |  | Zenith | 8704034 |
| 4516 | 36900.37000.37100.38200.39200.41000.41800.58500.1545200 | IPS flooring work | 10d | 2026-10-12 | 2026-10-22 | 4500, 4514, 4515 |  | Zenith | 8704044 |
| 4517 | 36900.37000.37100.38200.39200.41000.41800.58500.1545300 | Toilet dado work | 10d | 2026-10-22 | 2026-12-16 | 4501, 4516 |  | Zenith | 8704054 |
| 4518 | 36900.37000.37100.38200.39200.41000.41800.58500.1545400 | Toilet flooring work | 7d | 2026-12-16 | 2026-12-23 | 4502, 4517 |  | Zenith | 8704064 |
| 4519 | 36900.37000.37100.38200.39200.41000.41800.58500.1545500 | False ceiling | 10d | 2026-12-23 | 2027-01-02 | 4503, 4518 |  | Zenith | 8704074 |
| 4520 | 36900.37000.37100.38200.39200.41000.41800.58500.1545600 | Living dinning flooring | 13d | 2026-12-23 | 2027-01-05 | 4504, 4518 |  | Zenith | 8704084 |
| 4521 | 36900.37000.37100.38200.39200.41000.41800.58500.1545700 | Putty Primer coat | 12d | 2027-01-05 | 2027-01-17 | 4505, 4512, 4519, 4520 |  | Zenith | 8704094 |
| 4522 | 36900.37000.37100.38200.39200.41000.41800.58500.1545800 | Aluminium door-window fixing | 15d | 2027-03-04 | 2027-03-18 | 4506, 4516, 4520 |  | Zenith | 8704104 |
| 4523 | 36900.37000.37100.38200.39200.41000.41800.58500.1545900 | Door shutter fixing (Pre Hung) | 8d | 2027-01-17 | 2027-01-25 | 4507, 4521 |  | Zenith | 8704114 |
| 4524 | 36900.37000.37100.38200.39200.41000.41800.58500.1546000 | Electrical wiring work | 12d | 2027-01-25 | 2027-02-06 | 4508, 4523 |  | Zenith | 8704124 |
| 4525 | 36900.37000.37100.38200.39200.41000.41800.58500.1546100 | Painting 1st coat | 15d | 2027-04-03 | 2027-04-17 | 4509, 4524 |  | Zenith | 8704134 |
| 4526 | 36900.37000.37100.38200.39200.41000.41800.58500.1546200 | Misc. Works | 45d | 2027-04-18 | 2027-06-01 | 4525 |  | Zenith | 8704144 |
| 4527 | 36900.37000.37100.38200.39200.41000.224300 | **Terrace Finishing** | 116d | 2026-08-22 | 2027-01-29 |  | start no earlier than 2026-08-22 | Zenith | 8656794 |
| 4528 | 36900.37000.37100.38200.39200.41000.224300.980800 | Terrace waterproofing | 40d | 2026-08-22 | 2026-09-30 | 3925FS+2d |  | Zenith | 8685624 |
| 4529 | 36900.37000.37100.38200.39200.41000.224300.980900 | Terrace finishing | 75d | 2026-10-02 | 2027-01-29 | 4528FS+1d |  | Zenith | 8685614 |
| 4530 | 36900.37000.37100.38200.39200.41000.48300 | **Balcony Railing** | 382d | 2025-10-10 | 2027-01-25 |  | start no earlier than 2025-10-10 | Zenith | 8648144 |
| 4531 | 36900.37000.37100.38200.39200.41000.48300.981000 | 1st Floor | 10d | 2025-10-10 | 2025-10-20 | 3992FF |  | Zenith | 8685604 |
| 4532 | 36900.37000.37100.38200.39200.41000.48300.981100 | 2nd Floor | 10d | 2025-10-29 | 2025-12-23 | 4531, 4008 |  | Zenith | 8685594 |
| 4533 | 36900.37000.37100.38200.39200.41000.48300.981200 | 3rd Floor | 10d | 2025-12-23 | 2026-01-02 | 4532, 4024 |  | Zenith | 8685584 |
| 4534 | 36900.37000.37100.38200.39200.41000.48300.981300 | 4th Floor | 10d | 2026-01-02 | 2026-01-12 | 4533, 4040 |  | Zenith | 8685574 |
| 4535 | 36900.37000.37100.38200.39200.41000.48300.981400 | 5th Floor | 10d | 2026-01-12 | 2026-01-22 | 4534, 4056 |  | Zenith | 8685564 |
| 4536 | 36900.37000.37100.38200.39200.41000.48300.981500 | 6th Floor | 10d | 2026-01-22 | 2026-02-01 | 4535, 4072 |  | Zenith | 8685554 |
| 4537 | 36900.37000.37100.38200.39200.41000.48300.981600 | 7th Floor | 10d | 2026-02-01 | 2026-02-11 | 4536, 4088 |  | Zenith | 8685544 |
| 4538 | 36900.37000.37100.38200.39200.41000.48300.981700 | 8th Floor | 10d | 2026-02-11 | 2026-02-21 | 4537, 4104 |  | Zenith | 8685534 |
| 4539 | 36900.37000.37100.38200.39200.41000.48300.981800 | 9th Floor | 10d | 2026-02-21 | 2026-03-03 | 4538, 4120 |  | Zenith | 8685524 |
| 4540 | 36900.37000.37100.38200.39200.41000.48300.981900 | 10th Floor | 10d | 2026-03-03 | 2026-03-13 | 4539, 4136 |  | Zenith | 8685514 |
| 4541 | 36900.37000.37100.38200.39200.41000.48300.982000 | 11th Floor | 10d | 2026-03-13 | 2026-03-23 | 4540, 4152 |  | Zenith | 8685504 |
| 4542 | 36900.37000.37100.38200.39200.41000.48300.982100 | 12th Floor | 10d | 2026-03-23 | 2026-04-02 | 4541, 4168 |  | Zenith | 8685494 |
| 4543 | 36900.37000.37100.38200.39200.41000.48300.982200 | 13th Floor | 10d | 2026-04-02 | 2026-04-12 | 4542, 4184 |  | Zenith | 8685484 |
| 4544 | 36900.37000.37100.38200.39200.41000.48300.982300 | 14th Floor | 10d | 2026-04-12 | 2026-04-22 | 4543, 4200 |  | Zenith | 8685474 |
| 4545 | 36900.37000.37100.38200.39200.41000.48300.982400 | 15th Floor | 10d | 2026-04-22 | 2026-05-02 | 4544, 4216 |  | Zenith | 8685464 |
| 4546 | 36900.37000.37100.38200.39200.41000.48300.982500 | 16th Floor | 10d | 2026-05-02 | 2026-05-12 | 4545, 4232 |  | Zenith | 8685454 |
| 4547 | 36900.37000.37100.38200.39200.41000.48300.982600 | 17th Floor | 10d | 2026-05-12 | 2026-05-22 | 4546, 4248 |  | Zenith | 8685444 |
| 4548 | 36900.37000.37100.38200.39200.41000.48300.982700 | 18th Floor | 10d | 2026-05-22 | 2026-06-01 | 4547, 4264 |  | Zenith | 8685434 |
| 4549 | 36900.37000.37100.38200.39200.41000.48300.982800 | 19th Floor | 10d | 2026-06-01 | 2026-06-11 | 4548, 4280 |  | Zenith | 8685424 |
| 4550 | 36900.37000.37100.38200.39200.41000.48300.982900 | 20th Floor | 10d | 2026-06-11 | 2026-06-21 | 4549, 4296 |  | Zenith | 8685414 |
| 4551 | 36900.37000.37100.38200.39200.41000.48300.983000 | 21st Floor | 10d | 2026-06-21 | 2026-07-01 | 4550, 4312 |  | Zenith | 8685404 |
| 4552 | 36900.37000.37100.38200.39200.41000.48300.983100 | 22nd Floor | 10d | 2026-07-01 | 2026-07-11 | 4551, 4328 |  | Zenith | 8685394 |
| 4553 | 36900.37000.37100.38200.39200.41000.48300.983200 | 23rd Floor | 10d | 2026-07-11 | 2026-07-21 | 4552, 4344 |  | Zenith | 8685384 |
| 4554 | 36900.37000.37100.38200.39200.41000.48300.983300 | 24th Floor | 10d | 2026-07-21 | 2026-07-31 | 4553, 4360 |  | Zenith | 8685374 |
| 4555 | 36900.37000.37100.38200.39200.41000.48300.983400 | 25th Floor | 10d | 2026-07-31 | 2026-08-10 | 4554, 4376 |  | Zenith | 8685364 |
| 4556 | 36900.37000.37100.38200.39200.41000.48300.983500 | 26th Floor | 10d | 2026-08-10 | 2026-08-20 | 4555, 4392 |  | Zenith | 8685354 |
| 4557 | 36900.37000.37100.38200.39200.41000.48300.983600 | 27th Floor | 10d | 2026-08-20 | 2026-08-30 | 4556, 4408 |  | Zenith | 8685344 |
| 4558 | 36900.37000.37100.38200.39200.41000.48300.983700 | 28th Floor | 10d | 2026-08-30 | 2026-09-09 | 4557, 4424 |  | Zenith | 8685334 |
| 4559 | 36900.37000.37100.38200.39200.41000.48300.983800 | 29th Floor | 10d | 2026-09-09 | 2026-09-19 | 4558, 4440 |  | Zenith | 8685324 |
| 4560 | 36900.37000.37100.38200.39200.41000.48300.983900 | 30th Floor | 10d | 2026-09-19 | 2026-09-29 | 4559, 4456 |  | Zenith | 8685314 |
| 4561 | 36900.37000.37100.38200.39200.41000.48300.984000 | 31st Floor | 10d | 2026-09-30 | 2026-10-10 | 4560, 4472 |  | Zenith | 8685304 |
| 4562 | 36900.37000.37100.38200.39200.41000.48300.984100 | 32nd Floor | 10d | 2026-10-14 | 2026-10-24 | 4561, 4488 |  | Zenith | 8685294 |
| 4563 | 36900.37000.37100.38200.39200.41000.48300.984200 | 33rd Floor | 10d | 2026-10-28 | 2026-12-22 | 4562, 4504 |  | Zenith | 8685284 |
| 4564 | 36900.37000.37100.38200.39200.41000.48300.984300 | 34th Floor | 10d | 2027-01-05 | 2027-01-15 | 4563, 4520 |  | Zenith | 8685274 |
| 4565 | 36900.37000.37100.38200.39200.41000.48300.984400 | 35th Floor | 10d | 2027-01-15 | 2027-01-25 | 4564 |  | Zenith | 8685264 |

| ID | WBS | Task | Duration | Start | Finish | Predecessors | Constraint | Calendar | Unique_Task_ID |
| --- | --- | --- | --- | --- | --- | --- | --- | --- | --- |
| 4566 | 36900.37000.37100.38200.39200.41000.117700 | **Common Area Finishing** | 337d | 2026-03-31 | 2027-04-17 |  | start no earlier than 2026-03-31 | Zenith | 8651654 |
| 4567 | 36900.37000.37100.38200.39200.41000.117700.984500 | Masonary Work | 40d | 2026-03-31 | 2026-05-10 | 4200 |  | Zenith | 8685254 |
| 4568 | 36900.37000.37100.38200.39200.41000.117700.984600 | Fire sprinkler pipe fixing | 40d | 2026-05-10 | 2026-06-19 | 4567 |  | Zenith | 8685244 |
| 4569 | 36900.37000.37100.38200.39200.41000.117700.984700 | Corridoor, staircase, shaft Plaster & whitewash | 120d | 2026-05-10 | 2026-09-07 | 4567 |  | Zenith | 8685234 |
| 4570 | 36900.37000.37100.38200.39200.41000.117700.984800 | Staircase railing fixing | 100d | 2026-05-10 | 2026-08-18 | 4567 |  | Zenith | 8685224 |
| 4571 | 36900.37000.37100.38200.39200.41000.117700.984900 | Fire staircase flooring | 120d | 2026-05-20 | 2026-09-17 | 4570FF+30d |  | Zenith | 8685214 |
| 4572 | 36900.37000.37100.38200.39200.41000.117700.985000 | Main staircase flooring | 120d | 2026-05-20 | 2026-09-17 | 4570FF+30d |  | Zenith | 8685204 |
| 4573 | 36900.37000.37100.38200.39200.41000.117700.985100 | Fire door work | 45d | 2026-09-17 | 2026-12-16 | 4571 |  | Zenith | 8685194 |
| 4574 | 36900.37000.37100.38200.39200.41000.117700.985200 | Lobby flooring & Corridor | 120d | 2026-06-19 | 2026-10-17 | 4572FF+30d |  | Zenith | 8685184 |
| 4575 | 36900.37000.37100.38200.39200.41000.117700.985300 | Ceiling & wall putty | 120d | 2026-09-04 | 2027-02-16 | 4573FF+15d, 4574FF+30d, 4521FF+30d |  | Zenith | 8685174 |
| 4576 | 36900.37000.37100.38200.39200.41000.117700.985400 | Electrical wiring work | 120d | 2026-09-19 | 2027-03-03 | 4575FF+15d |  | Zenith | 8685164 |
| 4577 | 36900.37000.37100.38200.39200.41000.117700.985500 | Ceiling & wall painting | 120d | 2026-10-09 | 2027-03-23 | 4568FS+20d, 4575SS+20d, 4576FF+20d |  | Zenith | 8685154 |
| 4578 | 36900.37000.37100.38200.39200.41000.117700.985600 | Light fixture supply & installation | 45d | 2027-03-03 | 2027-04-17 | 4575, 4577FF+25d |  | Zenith | 8685144 |
| 4579 | 36900.37000.37100.38200.123700 | **MEP work** | 296.75d | 2026-06-24 | 2027-05-31 |  | start no earlier than 2026-06-24 | Zenith | 8651894 |
| 4580 | 36900.37000.37100.38200.123700.126800 | **Electrical work** | 240d | 2026-08-20 | 2027-05-31 |  | start no earlier than 2026-08-20 | Zenith | 8652114 |
| 4581 | 36900.37000.37100.38200.123700.126800.809700 | Cable Tray | 90d | 2026-08-20 | 2027-01-01 | 3925 |  | Zenith | 8723554 |
| 4582 | 36900.37000.37100.38200.123700.126800.809800 | Cable, main & sub main | 60d | 2026-10-04 | 2027-01-16 | 4581SS+45d |  | Zenith | 8723544 |
| 4583 | 36900.37000.37100.38200.123700.126800.809900 | LT panel & DB | 90d | 2027-01-02 | 2027-04-01 | 4581 |  | Zenith | 8723534 |
| 4584 | 36900.37000.37100.38200.123700.126800.810000 | Rising main | 90d | 2027-01-17 | 2027-04-16 | 4581FS+15d |  | Zenith | 8723524 |
| 4585 | 36900.37000.37100.38200.123700.126800.810100 | Earthing Works | 60d | 2027-01-22 | 2027-03-22 | 4581FS+20d |  | Zenith | 8723514 |
| 4586 | 36900.37000.37100.38200.123700.126800.810200 | Energy meter | 60d | 2027-04-02 | 2027-05-31 | 4582, 4585FS+10d |  | Zenith | 8723504 |
| 4587 | 36900.37000.37100.38200.123700.126800.810300 | HVAC & Exhast fan | 120d | 2026-12-28 | 2027-04-26 | 4581FS-5d |  | Zenith | 8723494 |
| 4588 | 36900.37000.37100.38200.123700.126800.810400 | FTTH | 60d | 2027-03-18 | 2027-05-16 | 4583FS-15d |  | Zenith | 8723484 |
| 4589 | 36900.37000.37100.38200.123700.126800.810500 | Security System - FA & PA | 60d | 2027-04-02 | 2027-05-31 | 4583, 4584FF+10d, 4587FF+2d, 4588FF |  | Zenith | 8723474 |

| ID | WBS | Task | Duration | Start | Finish | Predecessors | Constraint | Calendar | Unique_Task_ID |
| --- | --- | --- | --- | --- | --- | --- | --- | --- | --- |
| 4590 | 36900.37000.37100.38200.123700.143400 | **Plumbing work** | 175d | 2026-10-01 | 2027-05-08 |  | start no earlier than 2026-10-01 | Zenith | 8652814 |
| 4591 | 36900.37000.37100.38200.123700.143400.810600 | Terrace looping | 45d | 2026-10-01 | 2026-12-29 | 4528 |  | Zenith | 8723464 |
| 4592 | 36900.37000.37100.38200.123700.143400.810700 | Shaft Plumbing | 70d | 2026-12-30 | 2027-03-09 | 4591, 4569FS-30d |  | Zenith | 8723454 |
| 4593 | 36900.37000.37100.38200.123700.143400.810800 | CP sanitary fixture supply | 45d | 2027-03-10 | 2027-04-23 | 4592 |  | Zenith | 8723444 |
| 4594 | 36900.37000.37100.38200.123700.143400.810900 | Cold & flushing water supply | 45d | 2027-03-10 | 2027-04-23 | 4592 |  | Zenith | 8723434 |
| 4595 | 36900.37000.37100.38200.123700.143400.811000 | Misc work | 30d | 2027-04-09 | 2027-05-08 | 4593FS-15d, 4594FS-15d |  | Zenith | 8723424 |
| 4596 | 36900.37000.37100.38200.123700.189000 | **Fire fighting work** | 203.75d | 2026-06-24 | 2027-02-27 |  | start no earlier than 2026-06-24 | Zenith | 8654094 |
| 4597 | 36900.37000.37100.38200.123700.189000.811100 | Fire hydrant work | 75d | 2026-06-24 | 2026-09-07 | 4569SS+45d |  | Zenith | 8723414 |
| 4598 | 36900.37000.37100.38200.123700.189000.811200 | Pipe connection & sprinkler installation | 45d | 2027-01-14 | 2027-02-27 | 4597FS+1d, 4600FF+15d |  | Zenith | 8723404 |
| 4599 | 36900.37000.37100.38200.123700.189000.811300 | Shaft Downtake works | 60d | 2026-10-01 | 2027-01-13 | 4528, 4569FS-60d |  | Zenith | 8723394 |
| 4600 | 36900.37000.37100.38200.123700.189000.811400 | Connection to pump room | 30d | 2027-01-14 | 2027-02-12 | 4599 |  | Zenith | 8723384 |
| 4601 | 36900.37000.37100.38200.123700.218600 | **Lift work** | 160d | 2026-09-01 | 2027-03-25 |  | start no earlier than 2026-09-01 | Zenith | 8656614 |
| 4602 | 36900.37000.37100.38200.123700.218600.811500 | Lift Shaft/Pit Handover | 40d | 2026-09-01 | 2026-10-11 | 3963FS+5d |  | Zenith | 8723374 |
| 4603 | 36900.37000.37100.38200.123700.218600.811600 | Lift installation work | 60d | 2026-10-11 | 2027-01-24 | 4602 |  | Zenith | 8723364 |
| 4604 | 36900.37000.37100.38200.123700.218600.811700 | Lift testing and commissioning | 60d | 2027-01-24 | 2027-03-25 | 4603, 4574 |  | Zenith | 8723354 |
| 4605 | 36900.37000.37100.38200.227100 | **Basement lobby** | 90d | 2026-10-26 | 2027-03-10 |  | start no earlier than 2026-10-26 | Zenith | 8656884 |
| 4606 | 36900.37000.37100.38200.227100.376200 | Basement lobby | 90d | 2026-10-26 | 2027-03-10 | 4602FS+15d, 3742FS+15d, 3743FS+15d |  | Zenith | 8731444 |
| 4607 | 36900.37000.37100.38200.224100 | **External Paint Works** | 142.75d | 2027-01-25 | 2027-06-16 |  | start no earlier than 2027-01-25 | Zenith | 8656674 |
| 4608 | 36900.37000.37100.38200.224100.376300 | Surface prepration with Primer | 60d | 2027-01-25 | 2027-03-26 | 3963FS+2d, 4565 |  | Zenith | 8731434 |
| 4609 | 36900.37000.37100.38200.224100.376400 | External Painting (Texture & first coat) | 90d | 2027-03-19 | 2027-06-16 | 4608FF+10d, 4522 |  | Zenith | 8731424 |
| 4610 | 36900.37000.37100.38200.272500 | OC Application/Readiness | 2d | 2027-08-11 | 2027-08-12 | 3920FF+348d, 4609FF, 4598FF+30d, 4595FF, 4606FF+30d, 4604FF, 4589FF, 4586FF, 4529FF+30d, 4526FF+15d, 4575FF+0.25d, 4565FF, 4522FF+0.25d |  | Zenith | 8735354 |
| 4611 | 36900.37000.37100.38200.272600 | OC Receipt | 60d | 2027-08-13 | 2027-10-11 | 4610 |  | Zenith | 8735344 |
| 4612 | 36900.37000.37100.38200.125900 | **Post OC activities** | 472.75d | 2027-05-02 | 2028-09-30 |  | start no earlier than 2027-05-02 | Zenith | 8652094 |
| 4613 | 36900.37000.37100.38200.125900.376500 | CP & Sanitaryware | 150d | 2027-10-12 | 2028-04-23 | 4611 |  | Zenith | 8731414 |
| 4614 | 36900.37000.37100.38200.125900.376600 | Electrical Fixtures And Fittings | 150d | 2027-10-12 | 2028-04-23 | 4611 |  | Zenith | 8731404 |
| 4615 | 36900.37000.37100.38200.125900.376700 | Final coat paint external | 100d | 2027-10-12 | 2028-03-04 | 4611 |  | Zenith | 8731394 |
| 4616 | 36900.37000.37100.38200.125900.376800 | Final Coat Paint Internal | 150d | 2027-10-12 | 2028-04-23 | 4611, 4525 |  | Zenith | 8731384 |
| 4617 | 36900.37000.37100.38200.125900.376900 | Balcony Railing Glass Fixing | 120d | 2028-04-24 | 2028-08-21 | 4616, 4565FS+30d |  | Zenith | 8731374 |
| 4618 | 36900.37000.37100.38200.125900.377000 | MEP | 150d | 2027-05-02 | 2027-09-29 | 4578FS+15d |  | Zenith | 8731364 |
| 4619 | 36900.37000.37100.38200.125900.377100 | Wooden Flooring | 180d | 2027-09-27 | 2028-05-08 | 4616FF+15d |  | Zenith | 8731354 |
| 4620 | 36900.37000.37100.38200.125900.377200 | Split AC Units installation | 100d | 2028-05-24 | 2028-08-31 | 4619FS+15d |  | Zenith | 8731344 |
| 4621 | 36900.37000.37100.38200.125900.377300 | Misc. works (Modular kitchen & others) | 180d | 2028-04-04 | 2028-09-30 | 4620FF+30d |  | Zenith | 8731334 |
| 4622 | 36900.37000.37100.38200.272700 | Offer To Possession | 180d | 2028-04-19 | 2028-10-15 | 4611FF+150d, 4613FF+20d, 4614FF+20d, 4615FF+20d, 4620FF+10d, 4618FF+30d, 4617FF+15d, 4621FF+15d |  | Zenith | 8735334 |

| ID | WBS | Task | Duration | Start | Finish | Predecessors | Complete | Constraint | Calendar | Unique_Task_ID |
| --- | --- | --- | --- | --- | --- | --- | --- | --- | --- | --- |
| 4623 | 36900.37000.37100.37700 | **Tower 06** | 1449d | 2024-05-19 | 2028-12-17 |  | 1% | start no earlier than 2024-05-19 | Zenith | 8647554 |
| 4624 | 36900.37000.37100.37700.63600 | **Sub-Structure Works** | 489d | 2024-05-19 | 2025-12-18 |  | 39% | start no earlier than 2024-05-19 | Zenith | 8648404 |
| 4625 | 36900.37000.37100.37700.63600.140700 | **Soil Bed Preparation** | 166d | 2024-05-19 | 2024-11-14 |  | 100% | start no earlier than 2024-05-19 | Zenith | 8652834 |
| 4626 | 36900.37000.37100.37700.63600.140700.228400 | Excavation (2m) | 43d | 2024-05-19 | 2024-06-30 | 3699SS+10d | 100% | start no earlier than 2024-05-19 | Zenith | 8723344 |
| 4627 | 36900.37000.37100.37700.63600.140700.228300 | Soldier Piling shop drawing approval | 9d | 2024-06-22 | 2024-06-30 | 4626FS+33d | 100% | start no earlier than 2024-06-22 | Zenith | 8723334 |
| 4628 | 36900.37000.37100.37700.63600.140700.228200 | Mobilization & Soldier Piling with Excavation (4m) | 31d | 2024-05-31 | 2024-06-30 | 4627 | 100% | start no earlier than 2024-05-31 | Zenith | 8723324 |
| 4629 | 36900.37000.37100.37700.63600.140700.228100 | Balance B3 bulk Excavation | 20d | 2024-10-01 | 2024-10-20 | 4628 | 100% | start no earlier than 2024-10-01 | Zenith | 8723314 |
| 4630 | 36900.37000.37100.37700.63600.140700.228000 | Soil dressing & ATT | 6d | 2024-10-26 | 2024-11-14 | 4629FS+8d | 100% | start no earlier than 2024-10-26 | Zenith | 8723304 |
| 4631 | 36900.37000.37100.37700.63600.119600 | **Structure Works** | 184.5d | 2024-10-30 | 2025-06-16 |  | 35% | start no earlier than 2024-10-30 | Zenith | 8651764 |
| 4632 | 36900.37000.37100.37700.63600.119600.135700 | **Raft Foundation** | 84.5d | 2024-10-30 | 2025-03-08 |  | 100% | start no earlier than 2024-10-30 | Zenith | 8652704 |
| 4633 | 36900.37000.37100.37700.63600.119600.135700.237200 | PCC | 1.5d | 2024-10-30 | 2024-12-14 | 4630, 3706SS+10d | 100% | start no earlier than 2024-10-30 | Zenith | 8685134 |
| 4634 | 36900.37000.37100.37700.63600.119600.135700.237100 | Column/SW layout marking | 25d | 2025-01-06 | 2025-01-30 | 4633 | 100% | start no earlier than 2025-01-06 | Zenith | 8685124 |
| 4635 | 36900.37000.37100.37700.63600.119600.135700.237000 | Reinforcement | 27d | 2025-01-13 | 2025-03-06 | 4634SS+9d | 100% | start no earlier than 2025-01-13 | Zenith | 8685114 |
| 4636 | 36900.37000.37100.37700.63600.119600.135700.236900 | Formwork (Conventional) | 6d | 2025-02-25 | 2025-03-06 | 4635FF+4d | 100% | start no earlier than 2025-02-25 | Zenith | 8685104 |
| 4637 | 36900.37000.37100.37700.63600.119600.135700.236800 | Concreting | 2d | 2025-03-07 | 2025-03-08 | 4636FF+3d | 100% | start no earlier than 2025-03-07 | Zenith | 8685094 |
| 4638 | 36900.37000.37100.37700.63600.119600.132500 | **Basement 03 Roof Slab (Dummy/Stitch Slab)** | 7d | 2025-03-24 | 2025-03-30 |  | 100% | start no earlier than 2025-03-24 | Zenith | 8652334 |
| 4639 | 36900.37000.37100.37700.63600.119600.132500.236700 | Column/SW Reinforcement | 1d | 2025-03-24 | 2025-03-24 | 4637 | 100% | start no earlier than 2025-03-24 | Zenith | 8685084 |
| 4640 | 36900.37000.37100.37700.63600.119600.132500.236600 | SW Formwork (Conventional) | 1d | 2025-03-25 | 2025-03-25 | 4639SS | 100% | start no earlier than 2025-03-25 | Zenith | 8685074 |
| 4641 | 36900.37000.37100.37700.63600.119600.132500.236500 | Column/SW Concreting | 1d | 2025-03-26 | 2025-03-26 | 4640SS | 100% | start no earlier than 2025-03-26 | Zenith | 8685064 |
| 4642 | 36900.37000.37100.37700.63600.119600.132500.236400 | Slab Formwork (Conventional) | 1d | 2025-03-27 | 2025-03-27 | 4641SS+1d | 100% | start no earlier than 2025-03-27 | Zenith | 8685054 |
| 4643 | 36900.37000.37100.37700.63600.119600.132500.236300 | Slab Reinforcement + Conduting | 1d | 2025-03-28 | 2025-03-28 | 4642 | 100% | start no earlier than 2025-03-28 | Zenith | 8685044 |
| 4644 | 36900.37000.37100.37700.63600.119600.132500.236200 | Concreting | 2d | 2025-03-29 | 2025-03-30 | 4643 | 100% | start no earlier than 2025-03-29 | Zenith | 8685034 |
| 4645 | 36900.37000.37100.37700.63600.119600.135600 | **Basement 02 Roof Slab** | 29d | 2025-03-30 | 2025-04-27 |  | 2% | start no earlier than 2025-03-30 | Zenith | 8652324 |
| 4646 | 36900.37000.37100.37700.63600.119600.135600.236100 | Column/SW Reinforcement | 16d | 2025-03-30 | 2025-04-15 | 4644FS-2d | 6% |  | Zenith | 8685024 |
| 4647 | 36900.37000.37100.37700.63600.119600.135600.985700 | SW Formwork (Conventional) | 9d | 2025-04-05 | 2025-04-13 | 4646SS+6d |  |  | Zenith | 8685014 |
| 4648 | 36900.37000.37100.37700.63600.119600.135600.985800 | Column/SW Concreting | 9d | 2025-04-10 | 2025-04-18 | 4647SS+5d |  |  | Zenith | 8685004 |
| 4649 | 36900.37000.37100.37700.63600.119600.135600.985900 | Slab Formwork (Conventional) | 9d | 2025-04-15 | 2025-04-23 | 4648SS+5d |  |  | Zenith | 8684994 |
| 4650 | 36900.37000.37100.37700.63600.119600.135600.986000 | Slab Reinforcement + Conduting | 3d | 2025-04-24 | 2025-04-26 | 4649 |  |  | Zenith | 8684984 |
| 4651 | 36900.37000.37100.37700.63600.119600.135600.986100 | Concreting | 1d | 2025-04-27 | 2025-04-27 | 4650 |  |  | Zenith | 8684974 |

| ID | WBS | Task | Duration | Start | Finish | Predecessors | Constraint | Calendar | Unique_Task_ID |
| --- | --- | --- | --- | --- | --- | --- | --- | --- | --- |
| 4652 | 36900.37000.37100.37700.63600.119600.135500 | **Basement 01 Roof Slab** | 25d | 2025-04-28 | 2025-05-22 |  | start no earlier than 2025-04-28 | Zenith | 8652314 |
| 4653 | 36900.37000.37100.37700.63600.119600.135500.986200 | Column/SW Reinforcement | 9d | 2025-04-28 | 2025-05-06 | 4651 |  | Zenith | 8684964 |
| 4654 | 36900.37000.37100.37700.63600.119600.135500.986300 | SW Formwork (Conventional) | 9d | 2025-05-02 | 2025-05-10 | 4653SS+4d |  | Zenith | 8684954 |
| 4655 | 36900.37000.37100.37700.63600.119600.135500.986400 | Column/SW Concreting | 9d | 2025-05-06 | 2025-05-14 | 4654SS+4d |  | Zenith | 8684944 |
| 4656 | 36900.37000.37100.37700.63600.119600.135500.986500 | Slab Formwork (Conventional) | 9d | 2025-05-10 | 2025-05-18 | 4655SS+4d |  | Zenith | 8684934 |
| 4657 | 36900.37000.37100.37700.63600.119600.135500.986600 | Slab Reinforcement + Conduting | 3d | 2025-05-19 | 2025-05-21 | 4656 |  | Zenith | 8684924 |
| 4658 | 36900.37000.37100.37700.63600.119600.135500.986700 | Concreting | 1d | 2025-05-22 | 2025-05-22 | 4657 |  | Zenith | 8684914 |
| 4659 | 36900.37000.37100.37700.63600.119600.135400 | **Podium Slab/Ground Roof Floor Slab** | 25d | 2025-05-23 | 2025-06-16 |  | start no earlier than 2025-05-23 | Zenith | 8652304 |
| 4660 | 36900.37000.37100.37700.63600.119600.135400.986800 | Column/SW Reinforcement | 9d | 2025-05-23 | 2025-05-31 | 4658 |  | Zenith | 8684904 |
| 4661 | 36900.37000.37100.37700.63600.119600.135400.986900 | SW Formwork (Conventional) | 9d | 2025-05-27 | 2025-06-04 | 4660SS+4d |  | Zenith | 8684894 |
| 4662 | 36900.37000.37100.37700.63600.119600.135400.987000 | Column/SW Concreting | 9d | 2025-05-31 | 2025-06-08 | 4661SS+4d |  | Zenith | 8684884 |
| 4663 | 36900.37000.37100.37700.63600.119600.135400.987100 | Slab Formwork (Conventional) | 9d | 2025-06-04 | 2025-06-12 | 4662SS+4d |  | Zenith | 8684874 |
| 4664 | 36900.37000.37100.37700.63600.119600.135400.987200 | Slab Reinforcement + Conduting | 3d | 2025-06-13 | 2025-06-15 | 4663 |  | Zenith | 8684864 |
| 4665 | 36900.37000.37100.37700.63600.119600.135400.987300 | Concreting | 1d | 2025-06-16 | 2025-06-16 | 4664 |  | Zenith | 8684854 |
| 4666 | 36900.37000.37100.37700.63600.168800 | **Substructure Finishes** | 110d | 2025-07-17 | 2025-12-18 |  | start no earlier than 2025-07-17 | Zenith | 8654084 |
| 4667 | 36900.37000.37100.37700.63600.168800.811800 | Masonary Work | 35d | 2025-07-17 | 2025-08-20 | 4665FS+30d |  | Zenith | 8723294 |
| 4668 | 36900.37000.37100.37700.63600.168800.811900 | Plaster Work | 30d | 2025-08-21 | 2025-09-19 | 4667 |  | Zenith | 8723284 |
| 4669 | 36900.37000.37100.37700.63600.168800.812000 | Structural Steel work | 50d | 2025-08-16 | 2025-10-04 | 4665FS+60d |  | Zenith | 8723274 |
| 4670 | 36900.37000.37100.37700.63600.168800.812100 | White Wash | 35d | 2025-09-30 | 2025-12-18 | 4668FS+10d |  | Zenith | 8723264 |
| 4671 | 36900.37000.37100.37700.38700 | **Superstructure** | 641d | 2025-06-17 | 2027-06-17 |  | start no earlier than 2025-06-17 | Zenith | 8647654 |
| 4672 | 36900.37000.37100.37700.38700.44100 | **RCC structure** | 395d | 2025-06-17 | 2026-08-30 |  | start no earlier than 2025-06-17 | Zenith | 8647914 |
| 4673 | 36900.37000.37100.37700.38700.44100.175800 | **1st Floor Roof slab** | 24d | 2025-06-17 | 2025-07-10 |  | start no earlier than 2025-06-17 | Zenith | 8654824 |
| 4674 | 36900.37000.37100.37700.38700.44100.175800.987400 | Reinforcement | 19d | 2025-06-17 | 2025-07-05 | 4665 |  | Zenith | 8684844 |
| 4675 | 36900.37000.37100.37700.38700.44100.175800.987500 | Conduiting | 19d | 2025-06-20 | 2025-07-08 | 4674SS+3d |  | Zenith | 8684834 |
| 4676 | 36900.37000.37100.37700.38700.44100.175800.987600 | Formwork | 19d | 2025-06-21 | 2025-07-09 | 4674SS+4d |  | Zenith | 8684824 |
| 4677 | 36900.37000.37100.37700.38700.44100.175800.987700 | Concreting | 1d | 2025-07-10 | 2025-07-10 | 4675FS+1d, 4676 |  | Zenith | 8684814 |

| ID | WBS | Task | Duration | Start | Finish | Predecessors | Constraint | Calendar | Unique_Task_ID |
| --- | --- | --- | --- | --- | --- | --- | --- | --- | --- |
| 4678 | 36900.37000.37100.37700.38700.44100.175900 | **2nd Floor Roof slab** | 21d | 2025-07-11 | 2025-07-31 |  | start no earlier than 2025-07-11 | Zenith | 8654834 |
| 4679 | 36900.37000.37100.37700.38700.44100.175900.987800 | Reinforcement | 16d | 2025-07-11 | 2025-07-26 | 4677 |  | Zenith | 8684804 |
| 4680 | 36900.37000.37100.37700.38700.44100.175900.987900 | Conduiting | 16d | 2025-07-14 | 2025-07-29 | 4679SS+3d |  | Zenith | 8684794 |
| 4681 | 36900.37000.37100.37700.38700.44100.175900.988000 | Formwork | 16d | 2025-07-15 | 2025-07-30 | 4679SS+4d |  | Zenith | 8684784 |
| 4682 | 36900.37000.37100.37700.38700.44100.175900.988100 | Concreting | 1d | 2025-07-31 | 2025-07-31 | 4680FS+1d, 4681 |  | Zenith | 8684774 |
| 4683 | 36900.37000.37100.37700.38700.44100.176100 | **3rd Floor Roof slab** | 15d | 2025-08-01 | 2025-08-15 |  | start no earlier than 2025-08-01 | Zenith | 8654844 |
| 4684 | 36900.37000.37100.37700.38700.44100.176100.988200 | Reinforcement | 10d | 2025-08-01 | 2025-08-10 | 4682 |  | Zenith | 8684764 |
| 4685 | 36900.37000.37100.37700.38700.44100.176100.988300 | Conduiting | 10d | 2025-08-04 | 2025-08-13 | 4684SS+3d |  | Zenith | 8684754 |
| 4686 | 36900.37000.37100.37700.38700.44100.176100.988400 | Formwork | 10d | 2025-08-05 | 2025-08-14 | 4684SS+4d |  | Zenith | 8684744 |
| 4687 | 36900.37000.37100.37700.38700.44100.176100.988500 | Concreting | 1d | 2025-08-15 | 2025-08-15 | 4685FS+1d, 4686 |  | Zenith | 8684734 |
| 4688 | 36900.37000.37100.37700.38700.44100.176300 | **4th floor roof slab** | 9d | 2025-08-16 | 2025-08-24 |  | start no earlier than 2025-08-16 | Zenith | 8654854 |
| 4689 | 36900.37000.37100.37700.38700.44100.176300.988600 | Reinforcement | 6d | 2025-08-16 | 2025-08-21 | 4687 |  | Zenith | 8684724 |
| 4690 | 36900.37000.37100.37700.38700.44100.176300.988700 | Conduiting | 6d | 2025-08-17 | 2025-08-22 | 4689SS+1d |  | Zenith | 8684714 |
| 4691 | 36900.37000.37100.37700.38700.44100.176300.988800 | Formwork | 6d | 2025-08-18 | 2025-08-23 | 4689SS+2d |  | Zenith | 8684704 |
| 4692 | 36900.37000.37100.37700.38700.44100.176300.988900 | Concreting | 1d | 2025-08-24 | 2025-08-24 | 4690FS+1d, 4691 |  | Zenith | 8684694 |
| 4693 | 36900.37000.37100.37700.38700.44100.176400 | **5th floor roof slab** | 9d | 2025-08-25 | 2025-09-02 |  | start no earlier than 2025-08-25 | Zenith | 8654864 |
| 4694 | 36900.37000.37100.37700.38700.44100.176400.989000 | Reinforcement | 6d | 2025-08-25 | 2025-08-30 | 4692 |  | Zenith | 8684684 |
| 4695 | 36900.37000.37100.37700.38700.44100.176400.989100 | Conduiting | 6d | 2025-08-26 | 2025-08-31 | 4694SS+1d |  | Zenith | 8684674 |
| 4696 | 36900.37000.37100.37700.38700.44100.176400.989200 | Formwork | 6d | 2025-08-27 | 2025-09-01 | 4694SS+2d |  | Zenith | 8684664 |
| 4697 | 36900.37000.37100.37700.38700.44100.176400.989300 | Concreting | 1d | 2025-09-02 | 2025-09-02 | 4695FS+1d, 4696 |  | Zenith | 8684654 |
| 4698 | 36900.37000.37100.37700.38700.44100.176500 | **6th floor roof slab** | 9d | 2025-09-03 | 2025-09-11 |  | start no earlier than 2025-09-03 | Zenith | 8654874 |
| 4699 | 36900.37000.37100.37700.38700.44100.176500.989400 | Reinforcement | 6d | 2025-09-03 | 2025-09-08 | 4697 |  | Zenith | 8684644 |
| 4700 | 36900.37000.37100.37700.38700.44100.176500.989500 | Conduiting | 6d | 2025-09-04 | 2025-09-09 | 4699SS+1d |  | Zenith | 8684634 |
| 4701 | 36900.37000.37100.37700.38700.44100.176500.989600 | Formwork | 6d | 2025-09-05 | 2025-09-10 | 4699SS+2d |  | Zenith | 8684624 |
| 4702 | 36900.37000.37100.37700.38700.44100.176500.989700 | Concreting | 1d | 2025-09-11 | 2025-09-11 | 4700FS+1d, 4701 |  | Zenith | 8684614 |

| ID | WBS | Task | Duration | Start | Finish | Predecessors | Constraint | Calendar | Unique_Task_ID |
| --- | --- | --- | --- | --- | --- | --- | --- | --- | --- |
| 4703 | 36900.37000.37100.37700.38700.44100.176600 | **7th floor roof slab** | 9d | 2025-09-12 | 2025-09-20 |  | start no earlier than 2025-09-12 | Zenith | 8654884 |
| 4704 | 36900.37000.37100.37700.38700.44100.176600.989800 | Reinforcement | 6d | 2025-09-12 | 2025-09-17 | 4702 |  | Zenith | 8684604 |
| 4705 | 36900.37000.37100.37700.38700.44100.176600.989900 | Conduiting | 6d | 2025-09-13 | 2025-09-18 | 4704SS+1d |  | Zenith | 8684594 |
| 4706 | 36900.37000.37100.37700.38700.44100.176600.990000 | Formwork | 6d | 2025-09-14 | 2025-09-19 | 4704SS+2d |  | Zenith | 8684584 |
| 4707 | 36900.37000.37100.37700.38700.44100.176600.990100 | Concreting | 1d | 2025-09-20 | 2025-09-20 | 4705FS+1d, 4706 |  | Zenith | 8684574 |
| 4708 | 36900.37000.37100.37700.38700.44100.176900 | **8th floor roof slab** | 9d | 2025-09-21 | 2025-09-29 |  | start no earlier than 2025-09-21 | Zenith | 8654894 |
| 4709 | 36900.37000.37100.37700.38700.44100.176900.990200 | Reinforcement | 6d | 2025-09-21 | 2025-09-26 | 4707 |  | Zenith | 8684564 |
| 4710 | 36900.37000.37100.37700.38700.44100.176900.990300 | Conduiting | 6d | 2025-09-22 | 2025-09-27 | 4709SS+1d |  | Zenith | 8684554 |
| 4711 | 36900.37000.37100.37700.38700.44100.176900.990400 | Formwork | 6d | 2025-09-23 | 2025-09-28 | 4709SS+2d |  | Zenith | 8684544 |
| 4712 | 36900.37000.37100.37700.38700.44100.176900.990500 | Concreting | 1d | 2025-09-29 | 2025-09-29 | 4710FS+1d, 4711 |  | Zenith | 8684534 |
| 4713 | 36900.37000.37100.37700.38700.44100.177000 | **9th floor roof slab** | 9d | 2025-09-30 | 2025-10-08 |  | start no earlier than 2025-09-30 | Zenith | 8654904 |
| 4714 | 36900.37000.37100.37700.38700.44100.177000.990600 | Reinforcement | 6d | 2025-09-30 | 2025-10-05 | 4712 |  | Zenith | 8684524 |
| 4715 | 36900.37000.37100.37700.38700.44100.177000.990700 | Conduiting | 6d | 2025-10-01 | 2025-10-06 | 4714SS+1d |  | Zenith | 8684514 |
| 4716 | 36900.37000.37100.37700.38700.44100.177000.990800 | Formwork | 6d | 2025-10-02 | 2025-10-07 | 4714SS+2d |  | Zenith | 8684504 |
| 4717 | 36900.37000.37100.37700.38700.44100.177000.990900 | Concreting | 1d | 2025-10-08 | 2025-10-08 | 4715FS+1d, 4716 |  | Zenith | 8684494 |
| 4718 | 36900.37000.37100.37700.38700.44100.177100 | **10th floor roof slab** | 9d | 2025-10-09 | 2025-10-17 |  | start no earlier than 2025-10-09 | Zenith | 8654914 |
| 4719 | 36900.37000.37100.37700.38700.44100.177100.991000 | Reinforcement | 6d | 2025-10-09 | 2025-10-14 | 4717 |  | Zenith | 8684484 |
| 4720 | 36900.37000.37100.37700.38700.44100.177100.991100 | Conduiting | 6d | 2025-10-10 | 2025-10-15 | 4719SS+1d |  | Zenith | 8684474 |
| 4721 | 36900.37000.37100.37700.38700.44100.177100.991200 | Formwork | 6d | 2025-10-11 | 2025-10-16 | 4719SS+2d |  | Zenith | 8684464 |
| 4722 | 36900.37000.37100.37700.38700.44100.177100.991300 | Concreting | 1d | 2025-10-17 | 2025-10-17 | 4720FS+1d, 4721 |  | Zenith | 8684454 |
| 4723 | 36900.37000.37100.37700.38700.44100.177200 | **11th floor roof slab** | 9d | 2025-10-18 | 2025-10-26 |  | start no earlier than 2025-10-18 | Zenith | 8654924 |
| 4724 | 36900.37000.37100.37700.38700.44100.177200.991400 | Reinforcement | 6d | 2025-10-18 | 2025-10-23 | 4722 |  | Zenith | 8684444 |
| 4725 | 36900.37000.37100.37700.38700.44100.177200.991500 | Conduiting | 6d | 2025-10-19 | 2025-10-24 | 4724SS+1d |  | Zenith | 8684434 |
| 4726 | 36900.37000.37100.37700.38700.44100.177200.991600 | Formwork | 6d | 2025-10-20 | 2025-10-25 | 4724SS+2d |  | Zenith | 8684424 |
| 4727 | 36900.37000.37100.37700.38700.44100.177200.991700 | Concreting | 1d | 2025-10-26 | 2025-10-26 | 4725FS+1d, 4726 |  | Zenith | 8684414 |

| ID | WBS | Task | Duration | Start | Finish | Predecessors | Constraint | Calendar | Unique_Task_ID |
| --- | --- | --- | --- | --- | --- | --- | --- | --- | --- |
| 4728 | 36900.37000.37100.37700.38700.44100.177300 | **12th floor roof slab** | 9d | 2025-10-27 | 2025-12-19 |  | start no earlier than 2025-10-27 | Zenith | 8654934 |
| 4729 | 36900.37000.37100.37700.38700.44100.177300.991800 | Reinforcement | 6d | 2025-10-27 | 2025-12-16 | 4727 |  | Zenith | 8684404 |
| 4730 | 36900.37000.37100.37700.38700.44100.177300.991900 | Conduiting | 6d | 2025-10-28 | 2025-12-17 | 4729SS+1d |  | Zenith | 8684394 |
| 4731 | 36900.37000.37100.37700.38700.44100.177300.992000 | Formwork | 6d | 2025-10-29 | 2025-12-18 | 4729SS+2d |  | Zenith | 8684384 |
| 4732 | 36900.37000.37100.37700.38700.44100.177300.992100 | Concreting | 1d | 2025-12-19 | 2025-12-19 | 4730FS+1d, 4731 |  | Zenith | 8684374 |
| 4733 | 36900.37000.37100.37700.38700.44100.177400 | **13th floor roof slab** | 9d | 2025-12-20 | 2025-12-28 |  | start no earlier than 2025-12-20 | Zenith | 8654944 |
| 4734 | 36900.37000.37100.37700.38700.44100.177400.992200 | Reinforcement | 6d | 2025-12-20 | 2025-12-25 | 4732 |  | Zenith | 8684364 |
| 4735 | 36900.37000.37100.37700.38700.44100.177400.992300 | Conduiting | 6d | 2025-12-21 | 2025-12-26 | 4734SS+1d |  | Zenith | 8684354 |
| 4736 | 36900.37000.37100.37700.38700.44100.177400.992400 | Formwork | 6d | 2025-12-22 | 2025-12-27 | 4734SS+2d |  | Zenith | 8684344 |
| 4737 | 36900.37000.37100.37700.38700.44100.177400.992500 | Concreting | 1d | 2025-12-28 | 2025-12-28 | 4735FS+1d, 4736 |  | Zenith | 8684334 |
| 4738 | 36900.37000.37100.37700.38700.44100.177600 | **14th floor roof slab** | 9d | 2025-12-29 | 2026-01-06 |  | start no earlier than 2025-12-29 | Zenith | 8654954 |
| 4739 | 36900.37000.37100.37700.38700.44100.177600.992600 | Reinforcement | 6d | 2025-12-29 | 2026-01-03 | 4737 |  | Zenith | 8684324 |
| 4740 | 36900.37000.37100.37700.38700.44100.177600.992700 | Conduiting | 6d | 2025-12-30 | 2026-01-04 | 4739SS+1d |  | Zenith | 8684314 |
| 4741 | 36900.37000.37100.37700.38700.44100.177600.992800 | Formwork | 6d | 2025-12-31 | 2026-01-05 | 4739SS+2d |  | Zenith | 8684304 |
| 4742 | 36900.37000.37100.37700.38700.44100.177600.992900 | Concreting | 1d | 2026-01-06 | 2026-01-06 | 4740FS+1d, 4741 |  | Zenith | 8684294 |
| 4743 | 36900.37000.37100.37700.38700.44100.177700 | **15th floor roof slab** | 9d | 2026-01-07 | 2026-01-15 |  | start no earlier than 2026-01-07 | Zenith | 8654964 |
| 4744 | 36900.37000.37100.37700.38700.44100.177700.993000 | Reinforcement | 6d | 2026-01-07 | 2026-01-12 | 4742 |  | Zenith | 8684284 |
| 4745 | 36900.37000.37100.37700.38700.44100.177700.993100 | Conduiting | 6d | 2026-01-08 | 2026-01-13 | 4744SS+1d |  | Zenith | 8684274 |
| 4746 | 36900.37000.37100.37700.38700.44100.177700.993200 | Formwork | 6d | 2026-01-09 | 2026-01-14 | 4744SS+2d |  | Zenith | 8684264 |
| 4747 | 36900.37000.37100.37700.38700.44100.177700.993300 | Concreting | 1d | 2026-01-15 | 2026-01-15 | 4745FS+1d, 4746 |  | Zenith | 8684254 |
| 4748 | 36900.37000.37100.37700.38700.44100.177900 | **16th floor roof slab** | 9d | 2026-01-16 | 2026-01-24 |  | start no earlier than 2026-01-16 | Zenith | 8654974 |
| 4749 | 36900.37000.37100.37700.38700.44100.177900.993400 | Reinforcement | 6d | 2026-01-16 | 2026-01-21 | 4747 |  | Zenith | 8684244 |
| 4750 | 36900.37000.37100.37700.38700.44100.177900.993500 | Conduiting | 6d | 2026-01-17 | 2026-01-22 | 4749SS+1d |  | Zenith | 8684234 |
| 4751 | 36900.37000.37100.37700.38700.44100.177900.993600 | Formwork | 6d | 2026-01-18 | 2026-01-23 | 4749SS+2d |  | Zenith | 8684224 |
| 4752 | 36900.37000.37100.37700.38700.44100.177900.993700 | Concreting | 1d | 2026-01-24 | 2026-01-24 | 4750, 4751 |  | Zenith | 8684214 |

| ID | WBS | Task | Duration | Start | Finish | Predecessors | Constraint | Calendar | Unique_Task_ID |
| --- | --- | --- | --- | --- | --- | --- | --- | --- | --- |
| 4753 | 36900.37000.37100.37700.38700.44100.178000 | **17th floor roof slab** | 9d | 2026-01-25 | 2026-02-02 |  | start no earlier than 2026-01-25 | Zenith | 8654984 |
| 4754 | 36900.37000.37100.37700.38700.44100.178000.993800 | Reinforcement | 6d | 2026-01-25 | 2026-01-30 | 4752 |  | Zenith | 8684204 |
| 4755 | 36900.37000.37100.37700.38700.44100.178000.993900 | Conduiting | 6d | 2026-01-26 | 2026-01-31 | 4754SS+1d |  | Zenith | 8684194 |
| 4756 | 36900.37000.37100.37700.38700.44100.178000.994000 | Formwork | 6d | 2026-01-27 | 2026-02-01 | 4754SS+2d |  | Zenith | 8684184 |
| 4757 | 36900.37000.37100.37700.38700.44100.178000.994100 | Concreting | 1d | 2026-02-02 | 2026-02-02 | 4755FS+1d, 4756 |  | Zenith | 8684174 |
| 4758 | 36900.37000.37100.37700.38700.44100.178100 | **18th floor roof slab** | 8d | 2026-02-03 | 2026-02-10 |  | start no earlier than 2026-02-03 | Zenith | 8654994 |
| 4759 | 36900.37000.37100.37700.38700.44100.178100.994200 | Reinforcement | 5d | 2026-02-03 | 2026-02-07 | 4757 |  | Zenith | 8684164 |
| 4760 | 36900.37000.37100.37700.38700.44100.178100.994300 | Conduiting | 5d | 2026-02-04 | 2026-02-08 | 4759SS+1d |  | Zenith | 8684154 |
| 4761 | 36900.37000.37100.37700.38700.44100.178100.994400 | Formwork | 5d | 2026-02-05 | 2026-02-09 | 4759SS+2d |  | Zenith | 8684144 |
| 4762 | 36900.37000.37100.37700.38700.44100.178100.994500 | Concreting | 1d | 2026-02-10 | 2026-02-10 | 4760FS+1d, 4761 |  | Zenith | 8684134 |
| 4763 | 36900.37000.37100.37700.38700.44100.178400 | **19th floor roof slab** | 8d | 2026-02-11 | 2026-02-18 |  | start no earlier than 2026-02-11 | Zenith | 8655004 |
| 4764 | 36900.37000.37100.37700.38700.44100.178400.994600 | Reinforcement | 5d | 2026-02-11 | 2026-02-15 | 4762 |  | Zenith | 8684124 |
| 4765 | 36900.37000.37100.37700.38700.44100.178400.994700 | Conduiting | 5d | 2026-02-12 | 2026-02-16 | 4764SS+1d |  | Zenith | 8684114 |
| 4766 | 36900.37000.37100.37700.38700.44100.178400.994800 | Formwork | 5d | 2026-02-13 | 2026-02-17 | 4764SS+2d |  | Zenith | 8684104 |
| 4767 | 36900.37000.37100.37700.38700.44100.178400.994900 | Concreting | 1d | 2026-02-18 | 2026-02-18 | 4765FS+1d, 4766 |  | Zenith | 8684094 |
| 4768 | 36900.37000.37100.37700.38700.44100.178500 | **20th floor roof slab** | 8d | 2026-02-19 | 2026-02-26 |  | start no earlier than 2026-02-19 | Zenith | 8655014 |
| 4769 | 36900.37000.37100.37700.38700.44100.178500.995000 | Reinforcement | 5d | 2026-02-19 | 2026-02-23 | 4767 |  | Zenith | 8684084 |
| 4770 | 36900.37000.37100.37700.38700.44100.178500.995100 | Conduiting | 5d | 2026-02-20 | 2026-02-24 | 4769SS+1d |  | Zenith | 8684074 |
| 4771 | 36900.37000.37100.37700.38700.44100.178500.995200 | Formwork | 5d | 2026-02-21 | 2026-02-25 | 4769SS+2d |  | Zenith | 8684064 |
| 4772 | 36900.37000.37100.37700.38700.44100.178500.995300 | Concreting | 1d | 2026-02-26 | 2026-02-26 | 4770FS+1d, 4771 |  | Zenith | 8684054 |
| 4773 | 36900.37000.37100.37700.38700.44100.178600 | **21st floor roof slab** | 8d | 2026-02-27 | 2026-03-06 |  | start no earlier than 2026-02-27 | Zenith | 8655034 |
| 4774 | 36900.37000.37100.37700.38700.44100.178600.995400 | Reinforcement | 5d | 2026-02-27 | 2026-03-03 | 4772 |  | Zenith | 8684044 |
| 4775 | 36900.37000.37100.37700.38700.44100.178600.995500 | Conduiting | 5d | 2026-02-28 | 2026-03-04 | 4774SS+1d |  | Zenith | 8684034 |
| 4776 | 36900.37000.37100.37700.38700.44100.178600.995600 | Formwork | 5d | 2026-03-01 | 2026-03-05 | 4774SS+2d |  | Zenith | 8684024 |
| 4777 | 36900.37000.37100.37700.38700.44100.178600.995700 | Concreting | 1d | 2026-03-06 | 2026-03-06 | 4775FS+1d, 4776 |  | Zenith | 8684014 |

| ID | WBS | Task | Duration | Start | Finish | Predecessors | Constraint | Calendar | Unique_Task_ID |
| --- | --- | --- | --- | --- | --- | --- | --- | --- | --- |
| 4778 | 36900.37000.37100.37700.38700.44100.178700 | **22nd floor roof slab** | 8d | 2026-03-07 | 2026-03-14 |  | start no earlier than 2026-03-07 | Zenith | 8655054 |
| 4779 | 36900.37000.37100.37700.38700.44100.178700.995800 | Reinforcement | 5d | 2026-03-07 | 2026-03-11 | 4777 |  | Zenith | 8684004 |
| 4780 | 36900.37000.37100.37700.38700.44100.178700.995900 | Conduiting | 5d | 2026-03-08 | 2026-03-12 | 4779SS+1d |  | Zenith | 8683994 |
| 4781 | 36900.37000.37100.37700.38700.44100.178700.996000 | Formwork | 5d | 2026-03-09 | 2026-03-13 | 4779SS+2d |  | Zenith | 8683984 |
| 4782 | 36900.37000.37100.37700.38700.44100.178700.996100 | Concreting | 1d | 2026-03-14 | 2026-03-14 | 4780FS+1d, 4781 |  | Zenith | 8683974 |
| 4783 | 36900.37000.37100.37700.38700.44100.178800 | **23rd floor roof slab** | 8d | 2026-03-15 | 2026-03-22 |  | start no earlier than 2026-03-15 | Zenith | 8655084 |
| 4784 | 36900.37000.37100.37700.38700.44100.178800.996200 | Reinforcement | 5d | 2026-03-15 | 2026-03-19 | 4782 |  | Zenith | 8683964 |
| 4785 | 36900.37000.37100.37700.38700.44100.178800.996300 | Conduiting | 5d | 2026-03-16 | 2026-03-20 | 4784SS+1d |  | Zenith | 8683954 |
| 4786 | 36900.37000.37100.37700.38700.44100.178800.996400 | Formwork | 5d | 2026-03-17 | 2026-03-21 | 4784SS+2d |  | Zenith | 8683944 |
| 4787 | 36900.37000.37100.37700.38700.44100.178800.996500 | Concreting | 1d | 2026-03-22 | 2026-03-22 | 4785FS+1d, 4786 |  | Zenith | 8683934 |
| 4788 | 36900.37000.37100.37700.38700.44100.178900 | **24th floor roof slab** | 8d | 2026-03-23 | 2026-03-30 |  | start no earlier than 2026-03-23 | Zenith | 8655094 |
| 4789 | 36900.37000.37100.37700.38700.44100.178900.996600 | Reinforcement | 5d | 2026-03-23 | 2026-03-27 | 4787 |  | Zenith | 8683924 |
| 4790 | 36900.37000.37100.37700.38700.44100.178900.996700 | Conduiting | 5d | 2026-03-24 | 2026-03-28 | 4789SS+1d |  | Zenith | 8683914 |
| 4791 | 36900.37000.37100.37700.38700.44100.178900.996800 | Formwork | 5d | 2026-03-25 | 2026-03-29 | 4789SS+2d |  | Zenith | 8683904 |
| 4792 | 36900.37000.37100.37700.38700.44100.178900.996900 | Concreting | 1d | 2026-03-30 | 2026-03-30 | 4790FS+1d, 4791 |  | Zenith | 8683894 |
| 4793 | 36900.37000.37100.37700.38700.44100.179000 | **25th floor roof slab** | 8d | 2026-03-31 | 2026-04-07 |  | start no earlier than 2026-03-31 | Zenith | 8655104 |
| 4794 | 36900.37000.37100.37700.38700.44100.179000.997000 | Reinforcement | 5d | 2026-03-31 | 2026-04-04 | 4792 |  | Zenith | 8683884 |
| 4795 | 36900.37000.37100.37700.38700.44100.179000.997100 | Conduiting | 5d | 2026-04-01 | 2026-04-05 | 4794SS+1d |  | Zenith | 8683874 |
| 4796 | 36900.37000.37100.37700.38700.44100.179000.997200 | Formwork | 5d | 2026-04-02 | 2026-04-06 | 4794SS+2d |  | Zenith | 8683864 |
| 4797 | 36900.37000.37100.37700.38700.44100.179000.997300 | Concreting | 1d | 2026-04-07 | 2026-04-07 | 4795FS+1d, 4796 |  | Zenith | 8683854 |
| 4798 | 36900.37000.37100.37700.38700.44100.179200 | **26th floor roof slab** | 8d | 2026-04-08 | 2026-04-15 |  | start no earlier than 2026-04-08 | Zenith | 8655114 |
| 4799 | 36900.37000.37100.37700.38700.44100.179200.997400 | Reinforcement | 5d | 2026-04-08 | 2026-04-12 | 4797 |  | Zenith | 8683844 |
| 4800 | 36900.37000.37100.37700.38700.44100.179200.997500 | Conduiting | 5d | 2026-04-09 | 2026-04-13 | 4799SS+1d |  | Zenith | 8683834 |
| 4801 | 36900.37000.37100.37700.38700.44100.179200.997600 | Formwork | 5d | 2026-04-10 | 2026-04-14 | 4799SS+2d |  | Zenith | 8683824 |
| 4802 | 36900.37000.37100.37700.38700.44100.179200.997700 | Concreting | 1d | 2026-04-15 | 2026-04-15 | 4800FS+1d, 4801 |  | Zenith | 8683814 |

| ID | WBS | Task | Duration | Start | Finish | Predecessors | Constraint | Calendar | Unique_Task_ID |
| --- | --- | --- | --- | --- | --- | --- | --- | --- | --- |
| 4803 | 36900.37000.37100.37700.38700.44100.179600 | **27th floor roof slab** | 8d | 2026-04-16 | 2026-04-23 |  | start no earlier than 2026-04-16 | Zenith | 8655124 |
| 4804 | 36900.37000.37100.37700.38700.44100.179600.997800 | Reinforcement | 5d | 2026-04-16 | 2026-04-20 | 4802 |  | Zenith | 8683804 |
| 4805 | 36900.37000.37100.37700.38700.44100.179600.997900 | Conduiting | 5d | 2026-04-17 | 2026-04-21 | 4804SS+1d |  | Zenith | 8683794 |
| 4806 | 36900.37000.37100.37700.38700.44100.179600.998000 | Formwork | 5d | 2026-04-18 | 2026-04-22 | 4804SS+2d |  | Zenith | 8683784 |
| 4807 | 36900.37000.37100.37700.38700.44100.179600.998100 | Concreting | 1d | 2026-04-23 | 2026-04-23 | 4805FS+1d, 4806 |  | Zenith | 8683774 |
| 4808 | 36900.37000.37100.37700.38700.44100.179700 | **28th floor roof slab** | 8d | 2026-04-24 | 2026-05-01 |  | start no earlier than 2026-04-24 | Zenith | 8655134 |
| 4809 | 36900.37000.37100.37700.38700.44100.179700.998200 | Reinforcement | 5d | 2026-04-24 | 2026-04-28 | 4807 |  | Zenith | 8683764 |
| 4810 | 36900.37000.37100.37700.38700.44100.179700.998300 | Conduiting | 5d | 2026-04-25 | 2026-04-29 | 4809SS+1d |  | Zenith | 8683754 |
| 4811 | 36900.37000.37100.37700.38700.44100.179700.998400 | Formwork | 5d | 2026-04-26 | 2026-04-30 | 4809SS+2d |  | Zenith | 8683744 |
| 4812 | 36900.37000.37100.37700.38700.44100.179700.998500 | Concreting | 1d | 2026-05-01 | 2026-05-01 | 4810FS+1d, 4811 |  | Zenith | 8683734 |
| 4813 | 36900.37000.37100.37700.38700.44100.179800 | **29th floor roof slab** | 8d | 2026-05-02 | 2026-05-09 |  | start no earlier than 2026-05-02 | Zenith | 8655144 |
| 4814 | 36900.37000.37100.37700.38700.44100.179800.998600 | Reinforcement | 5d | 2026-05-02 | 2026-05-06 | 4812 |  | Zenith | 8683724 |
| 4815 | 36900.37000.37100.37700.38700.44100.179800.998700 | Conduiting | 5d | 2026-05-03 | 2026-05-07 | 4814SS+1d |  | Zenith | 8683714 |
| 4816 | 36900.37000.37100.37700.38700.44100.179800.998800 | Formwork | 5d | 2026-05-04 | 2026-05-08 | 4814SS+2d |  | Zenith | 8683704 |
| 4817 | 36900.37000.37100.37700.38700.44100.179800.998900 | Concreting | 1d | 2026-05-09 | 2026-05-09 | 4815FS+1d, 4816 |  | Zenith | 8683694 |
| 4818 | 36900.37000.37100.37700.38700.44100.179900 | **30th floor roof slab** | 10d | 2026-05-10 | 2026-05-19 |  | start no earlier than 2026-05-10 | Zenith | 8655154 |
| 4819 | 36900.37000.37100.37700.38700.44100.179900.999000 | Reinforcement | 7d | 2026-05-10 | 2026-05-16 | 4817 |  | Zenith | 8683684 |
| 4820 | 36900.37000.37100.37700.38700.44100.179900.999100 | Conduiting | 7d | 2026-05-11 | 2026-05-17 | 4819SS+1d |  | Zenith | 8683674 |
| 4821 | 36900.37000.37100.37700.38700.44100.179900.999200 | Formwork | 7d | 2026-05-12 | 2026-05-18 | 4819SS+2d |  | Zenith | 8683664 |
| 4822 | 36900.37000.37100.37700.38700.44100.179900.999300 | Concreting | 1d | 2026-05-19 | 2026-05-19 | 4820FS+1d, 4821 |  | Zenith | 8683654 |
| 4823 | 36900.37000.37100.37700.38700.44100.180200 | **31st floor roof slab** | 10d | 2026-05-20 | 2026-05-29 |  | start no earlier than 2026-05-20 | Zenith | 8655164 |
| 4824 | 36900.37000.37100.37700.38700.44100.180200.999400 | Reinforcement | 7d | 2026-05-20 | 2026-05-26 | 4822 |  | Zenith | 8683644 |
| 4825 | 36900.37000.37100.37700.38700.44100.180200.999500 | Conduiting | 7d | 2026-05-21 | 2026-05-27 | 4824SS+1d |  | Zenith | 8683634 |
| 4826 | 36900.37000.37100.37700.38700.44100.180200.999600 | Formwork | 7d | 2026-05-22 | 2026-05-28 | 4824SS+2d |  | Zenith | 8683624 |
| 4827 | 36900.37000.37100.37700.38700.44100.180200.999700 | Concreting | 1d | 2026-05-29 | 2026-05-29 | 4825FS+1d, 4826 |  | Zenith | 8683614 |

| ID | WBS | Task | Duration | Start | Finish | Predecessors | Constraint | Calendar | Unique_Task_ID |
| --- | --- | --- | --- | --- | --- | --- | --- | --- | --- |
| 4828 | 36900.37000.37100.37700.38700.44100.180300 | **32nd floor roof slab** | 10d | 2026-05-30 | 2026-06-08 |  | start no earlier than 2026-05-30 | Zenith | 8655174 |
| 4829 | 36900.37000.37100.37700.38700.44100.180300.999800 | Reinforcement | 7d | 2026-05-30 | 2026-06-05 | 4827 |  | Zenith | 8683604 |
| 4830 | 36900.37000.37100.37700.38700.44100.180300.999900 | Conduiting | 7d | 2026-05-31 | 2026-06-06 | 4829SS+1d |  | Zenith | 8683594 |
| 4831 | 36900.37000.37100.37700.38700.44100.180300.1000000 | Formwork | 7d | 2026-06-01 | 2026-06-07 | 4829SS+2d |  | Zenith | 8683584 |
| 4832 | 36900.37000.37100.37700.38700.44100.180300.1000100 | Concreting | 1d | 2026-06-08 | 2026-06-08 | 4830FS+1d, 4831 |  | Zenith | 8683574 |
| 4833 | 36900.37000.37100.37700.38700.44100.180400 | **33rd floor roof slab** | 10d | 2026-06-09 | 2026-06-18 |  | start no earlier than 2026-06-09 | Zenith | 8655184 |
| 4834 | 36900.37000.37100.37700.38700.44100.180400.1000200 | Reinforcement | 7d | 2026-06-09 | 2026-06-15 | 4832 |  | Zenith | 8683564 |
| 4835 | 36900.37000.37100.37700.38700.44100.180400.1000300 | Conduiting | 7d | 2026-06-10 | 2026-06-16 | 4834SS+1d |  | Zenith | 8683554 |
| 4836 | 36900.37000.37100.37700.38700.44100.180400.1000400 | Formwork | 7d | 2026-06-11 | 2026-06-17 | 4834SS+2d |  | Zenith | 8683544 |
| 4837 | 36900.37000.37100.37700.38700.44100.180400.1000500 | Concreting | 1d | 2026-06-18 | 2026-06-18 | 4835FS+1d, 4836 |  | Zenith | 8683534 |
| 4838 | 36900.37000.37100.37700.38700.44100.180500 | **34th floor roof slab** | 10d | 2026-06-19 | 2026-06-28 |  | start no earlier than 2026-06-19 | Zenith | 8655194 |
| 4839 | 36900.37000.37100.37700.38700.44100.180500.1000600 | Reinforcement | 7d | 2026-06-19 | 2026-06-25 | 4837 |  | Zenith | 8683524 |
| 4840 | 36900.37000.37100.37700.38700.44100.180500.1000700 | Conduiting | 7d | 2026-06-20 | 2026-06-26 | 4839SS+1d |  | Zenith | 8683514 |
| 4841 | 36900.37000.37100.37700.38700.44100.180500.1000800 | Formwork | 7d | 2026-06-21 | 2026-06-27 | 4839SS+2d |  | Zenith | 8683504 |
| 4842 | 36900.37000.37100.37700.38700.44100.180500.1000900 | Concreting | 1d | 2026-06-28 | 2026-06-28 | 4840FS+1d, 4841 |  | Zenith | 8683494 |
| 4843 | 36900.37000.37100.37700.38700.44100.180600 | **35th floor roof slab** | 10d | 2026-06-29 | 2026-07-08 |  | start no earlier than 2026-06-29 | Zenith | 8655204 |
| 4844 | 36900.37000.37100.37700.38700.44100.180600.1001000 | Reinforcement | 7d | 2026-06-29 | 2026-07-05 | 4842 |  | Zenith | 8683484 |
| 4845 | 36900.37000.37100.37700.38700.44100.180600.1001100 | Conduiting | 7d | 2026-06-30 | 2026-07-06 | 4844SS+1d |  | Zenith | 8683474 |
| 4846 | 36900.37000.37100.37700.38700.44100.180600.1001200 | Formwork | 7d | 2026-07-01 | 2026-07-07 | 4844SS+2d |  | Zenith | 8683464 |
| 4847 | 36900.37000.37100.37700.38700.44100.180600.1001300 | Concreting | 1d | 2026-07-08 | 2026-07-08 | 4845FS+1d, 4846 |  | Zenith | 8683454 |
| 4848 | 36900.37000.37100.37700.38700.44100.180700 | **Terrace floor slab** | 18d | 2026-07-09 | 2026-07-26 |  | start no earlier than 2026-07-09 | Zenith | 8655214 |
| 4849 | 36900.37000.37100.37700.38700.44100.180700.1001400 | Reinforcement | 14d | 2026-07-09 | 2026-07-22 | 4847 |  | Zenith | 8683444 |
| 4850 | 36900.37000.37100.37700.38700.44100.180700.1001500 | Conduiting | 14d | 2026-07-10 | 2026-07-23 | 4849SS+1d |  | Zenith | 8683434 |
| 4851 | 36900.37000.37100.37700.38700.44100.180700.1001600 | Formwork | 14d | 2026-07-11 | 2026-07-24 | 4849SS+2d |  | Zenith | 8683424 |
| 4852 | 36900.37000.37100.37700.38700.44100.180700.1001700 | Concreting | 2d | 2026-07-25 | 2026-07-26 | 4850FS+1d, 4851 |  | Zenith | 8683414 |

| ID | WBS | Task | Duration | Start | Finish | Predecessors | Constraint | Calendar | Unique_Task_ID |
| --- | --- | --- | --- | --- | --- | --- | --- | --- | --- |
| 4853 | 36900.37000.37100.37700.38700.44100.180900 | **OHT, Mumty & Machine Room, Parapet** | 35d | 2026-07-27 | 2026-08-30 |  | start no earlier than 2026-07-27 | Zenith | 8655224 |
| 4854 | 36900.37000.37100.37700.38700.44100.180900.1001800 | Reinforcement | 20d | 2026-07-27 | 2026-08-15 | 4852 |  | Zenith | 8683404 |
| 4855 | 36900.37000.37100.37700.38700.44100.180900.1001900 | Flanges fixing & Conduiting | 10d | 2026-07-28 | 2026-08-06 | 4854SS+1d |  | Zenith | 8683394 |
| 4856 | 36900.37000.37100.37700.38700.44100.180900.1002000 | Formwork | 25d | 2026-08-02 | 2026-08-26 | 4854SS+6d |  | Zenith | 8683384 |
| 4857 | 36900.37000.37100.37700.38700.44100.180900.1002100 | Concreting | 4d | 2026-08-27 | 2026-08-30 | 4855FS+5d, 4856 |  | Zenith | 8683374 |
| 4858 | 36900.37000.37100.37700.38700.46400 | **Post Pour Activities** | 333.25d | 2025-08-25 | 2026-09-07 |  | start no earlier than 2025-08-25 | Zenith | 8648014 |
| 4859 | 36900.37000.37100.37700.38700.46400.812200 | 1st Floor | 7d | 2025-08-25 | 2025-08-31 | 4692 |  | Zenith | 8723254 |
| 4860 | 36900.37000.37100.37700.38700.46400.812300 | 2nd Floor | 7d | 2025-09-03 | 2025-09-10 | 4859FS+0.25d, 4697FS+0.25d |  | Zenith | 8723244 |
| 4861 | 36900.37000.37100.37700.38700.46400.812400 | 3rd Floor | 7d | 2025-09-12 | 2025-09-19 | 4860FS+0.25d, 4702FS+0.25d |  | Zenith | 8723234 |
| 4862 | 36900.37000.37100.37700.38700.46400.812500 | 4th Floor | 7d | 2025-09-21 | 2025-09-28 | 4861FS+0.25d, 4707FS+0.25d |  | Zenith | 8723224 |
| 4863 | 36900.37000.37100.37700.38700.46400.812600 | 5th Floor | 7d | 2025-09-30 | 2025-10-07 | 4862FS+0.25d, 4712FS+0.25d |  | Zenith | 8723214 |
| 4864 | 36900.37000.37100.37700.38700.46400.812700 | 6th Floor | 7d | 2025-10-09 | 2025-10-16 | 4863FS+0.25d, 4717FS+0.25d |  | Zenith | 8723204 |
| 4865 | 36900.37000.37100.37700.38700.46400.812800 | 7th Floor | 7d | 2025-10-18 | 2025-10-25 | 4864FS+0.25d, 4722FS+0.25d |  | Zenith | 8723194 |
| 4866 | 36900.37000.37100.37700.38700.46400.812900 | 8th Floor | 7d | 2025-10-27 | 2025-12-18 | 4865FS+0.25d, 4727FS+0.25d |  | Zenith | 8723184 |
| 4867 | 36900.37000.37100.37700.38700.46400.813000 | 9th Floor | 7d | 2025-12-20 | 2025-12-27 | 4866FS+0.25d, 4732FS+0.25d |  | Zenith | 8723174 |
| 4868 | 36900.37000.37100.37700.38700.46400.813100 | 10th Floor | 7d | 2025-12-29 | 2026-01-05 | 4867FS+0.25d, 4737FS+0.25d |  | Zenith | 8723164 |
| 4869 | 36900.37000.37100.37700.38700.46400.813200 | 11th Floor | 7d | 2026-01-07 | 2026-01-14 | 4868FS+0.25d, 4742FS+0.25d |  | Zenith | 8723154 |
| 4870 | 36900.37000.37100.37700.38700.46400.813300 | 12th Floor | 7d | 2026-01-16 | 2026-01-23 | 4869FS+0.25d, 4747FS+0.25d |  | Zenith | 8723144 |
| 4871 | 36900.37000.37100.37700.38700.46400.813400 | 13th Floor | 7d | 2026-01-25 | 2026-02-01 | 4870FS+0.25d, 4752FS+0.25d |  | Zenith | 8723134 |
| 4872 | 36900.37000.37100.37700.38700.46400.813500 | 14th Floor | 7d | 2026-02-03 | 2026-02-10 | 4871FS+0.25d, 4757FS+0.25d |  | Zenith | 8723124 |
| 4873 | 36900.37000.37100.37700.38700.46400.813600 | 15th Floor | 7d | 2026-02-11 | 2026-02-18 | 4872FS+0.25d, 4762FS+0.25d |  | Zenith | 8723114 |
| 4874 | 36900.37000.37100.37700.38700.46400.813700 | 16th Floor | 7d | 2026-02-19 | 2026-02-26 | 4873FS+0.25d, 4767FS+0.25d |  | Zenith | 8723104 |
| 4875 | 36900.37000.37100.37700.38700.46400.813800 | 17th Floor | 7d | 2026-02-27 | 2026-03-06 | 4874FS+0.25d, 4772FS+0.25d |  | Zenith | 8723094 |
| 4876 | 36900.37000.37100.37700.38700.46400.813900 | 18th Floor | 7d | 2026-03-07 | 2026-03-14 | 4875FS+0.25d, 4777FS+0.25d |  | Zenith | 8723084 |
| 4877 | 36900.37000.37100.37700.38700.46400.814000 | 19th Floor | 7d | 2026-03-15 | 2026-03-22 | 4876FS+0.25d, 4782FS+0.25d |  | Zenith | 8723074 |
| 4878 | 36900.37000.37100.37700.38700.46400.814100 | 20th Floor | 7d | 2026-03-23 | 2026-03-30 | 4877FS+0.25d, 4787FS+0.25d |  | Zenith | 8723064 |
| 4879 | 36900.37000.37100.37700.38700.46400.814200 | 21st Floor | 7d | 2026-03-31 | 2026-04-07 | 4878FS+0.25d, 4792FS+0.25d |  | Zenith | 8723054 |
| 4880 | 36900.37000.37100.37700.38700.46400.814300 | 22nd Floor | 7d | 2026-04-08 | 2026-04-15 | 4879FS+0.25d, 4797FS+0.25d |  | Zenith | 8723044 |
| 4881 | 36900.37000.37100.37700.38700.46400.814400 | 23rd Floor | 7d | 2026-04-16 | 2026-04-23 | 4880FS+0.25d, 4802FS+0.25d |  | Zenith | 8723034 |
| 4882 | 36900.37000.37100.37700.38700.46400.814500 | 24th Floor | 7d | 2026-04-24 | 2026-05-01 | 4881FS+0.25d, 4807FS+0.25d |  | Zenith | 8723024 |
| 4883 | 36900.37000.37100.37700.38700.46400.814600 | 25th Floor | 7d | 2026-05-02 | 2026-05-09 | 4882FS+0.25d, 4812FS+0.25d |  | Zenith | 8723014 |
| 4884 | 36900.37000.37100.37700.38700.46400.814700 | 26th Floor | 7d | 2026-05-10 | 2026-05-17 | 4883FS+0.25d, 4817FS+0.25d |  | Zenith | 8723004 |
| 4885 | 36900.37000.37100.37700.38700.46400.814800 | 27th Floor | 7d | 2026-05-20 | 2026-05-27 | 4884FS+0.25d, 4822FS+0.25d |  | Zenith | 8722994 |
| 4886 | 36900.37000.37100.37700.38700.46400.814900 | 28th Floor | 7d | 2026-05-30 | 2026-06-06 | 4885FS+0.25d, 4827FS+0.25d |  | Zenith | 8722984 |
| 4887 | 36900.37000.37100.37700.38700.46400.815000 | 29th Floor | 7d | 2026-06-09 | 2026-06-16 | 4886FS+0.25d, 4832FS+0.25d |  | Zenith | 8722974 |
| 4888 | 36900.37000.37100.37700.38700.46400.815100 | 30th Floor | 7d | 2026-06-19 | 2026-06-26 | 4887FS+0.25d, 4837FS+0.25d |  | Zenith | 8722964 |
| 4889 | 36900.37000.37100.37700.38700.46400.815200 | 31st Floor | 7d | 2026-06-29 | 2026-07-06 | 4888FS+0.25d, 4842FS+0.25d |  | Zenith | 8722954 |
| 4890 | 36900.37000.37100.37700.38700.46400.815300 | 32nd Flood | 7d | 2026-07-09 | 2026-07-16 | 4889FS+0.25d, 4847FS+0.25d |  | Zenith | 8722944 |
| 4891 | 36900.37000.37100.37700.38700.46400.815400 | 33rd Floor | 7d | 2026-07-27 | 2026-08-03 | 4890FS+0.25d, 4852FS+0.25d |  | Zenith | 8722934 |
| 4892 | 36900.37000.37100.37700.38700.46400.815500 | 34th Floor | 7d | 2026-08-03 | 2026-08-10 | 4891 |  | Zenith | 8722924 |
| 4893 | 36900.37000.37100.37700.38700.46400.815600 | 35th Floor | 7d | 2026-08-10 | 2026-08-17 | 4892 |  | Zenith | 8722914 |
| 4894 | 36900.37000.37100.37700.38700.46400.815700 | 36th Floor | 7d | 2026-08-17 | 2026-08-24 | 4893 |  | Zenith | 8722904 |
| 4895 | 36900.37000.37100.37700.38700.46400.815800 | Terrace | 7d | 2026-08-24 | 2026-08-31 | 4894 |  | Zenith | 8722894 |
| 4896 | 36900.37000.37100.37700.38700.46400.815900 | Mumty & Machine Room | 7d | 2026-08-31 | 2026-09-07 | 4895 |  | Zenith | 8722884 |

| ID | WBS | Task | Duration | Start | Finish | Predecessors | Constraint | Calendar | Unique_Task_ID |
| --- | --- | --- | --- | --- | --- | --- | --- | --- | --- |
| 4897 | 36900.37000.37100.37700.38700.40100 | **Finishing work** | 565d | 2025-09-01 | 2027-06-17 |  | start no earlier than 2025-09-01 | Zenith | 8647734 |
| 4898 | 36900.37000.37100.37700.38700.40100.41500 | **Flat finishing** | 565d | 2025-09-01 | 2027-06-17 |  | start no earlier than 2025-09-01 | Zenith | 8647824 |
| 4899 | 36900.37000.37100.37700.38700.40100.41500.99500 | **1st Floor roof** | 79d | 2025-09-01 | 2026-01-02 |  | start no earlier than 2025-09-01 | Zenith | 8650134 |
| 4900 | 36900.37000.37100.37700.38700.40100.41500.99500.1546300 | Block Work | 6d | 2025-09-01 | 2025-09-06 | 4859 |  | Zenith | 8704154 |
| 4901 | 36900.37000.37100.37700.38700.40100.41500.99500.1546400 | Fire sprinkler pipe fixing | 5d | 2025-09-07 | 2025-09-11 | 4900 |  | Zenith | 8704164 |
| 4902 | 36900.37000.37100.37700.38700.40100.41500.99500.1546500 | Internal Plumbing Works | 5d | 2025-09-07 | 2025-09-11 | 4900 |  | Zenith | 8704174 |
| 4903 | 36900.37000.37100.37700.38700.40100.41500.99500.1546600 | Waterproofing | 5d | 2025-09-12 | 2025-09-16 | 4902 |  | Zenith | 8704184 |
| 4904 | 36900.37000.37100.37700.38700.40100.41500.99500.1546700 | Internal Plaster | 9d | 2025-09-13 | 2025-09-21 | 4902, 4903FF+5d |  | Zenith | 8704194 |
| 4905 | 36900.37000.37100.37700.38700.40100.41500.99500.1546800 | IPS flooring work | 7d | 2025-09-22 | 2025-09-28 | 4904 |  | Zenith | 8704204 |
| 4906 | 36900.37000.37100.37700.38700.40100.41500.99500.1546900 | Toilet dado work | 6d | 2025-09-22 | 2025-09-27 | 4903, 4904 |  | Zenith | 8704214 |
| 4907 | 36900.37000.37100.37700.38700.40100.41500.99500.1547000 | Toilet flooring work | 7d | 2025-09-28 | 2025-10-04 | 4906 |  | Zenith | 8704224 |
| 4908 | 36900.37000.37100.37700.38700.40100.41500.99500.1547100 | False Cieling panel fixing | 7d | 2025-10-05 | 2025-10-11 | 4907 |  | Zenith | 8704234 |
| 4909 | 36900.37000.37100.37700.38700.40100.41500.99500.1547200 | Living dinning flooring | 7d | 2025-10-05 | 2025-10-11 | 4907 |  | Zenith | 8704244 |
| 4910 | 36900.37000.37100.37700.38700.40100.41500.99500.1547300 | Putty primer coat | 8d | 2025-10-12 | 2025-10-19 | 4909 |  | Zenith | 8704254 |
| 4911 | 36900.37000.37100.37700.38700.40100.41500.99500.1547400 | Aluminium door-window fixing | 12d | 2025-10-12 | 2025-10-23 | 4905, 4909 |  | Zenith | 8704264 |
| 4912 | 36900.37000.37100.37700.38700.40100.41500.99500.1547500 | Door shutter fixing (Pre Hung) | 8d | 2025-10-20 | 2025-10-27 | 4910 |  | Zenith | 8704274 |
| 4913 | 36900.37000.37100.37700.38700.40100.41500.99500.1547600 | Electrical wiring work | 10d | 2025-10-28 | 2025-12-21 | 4912 |  | Zenith | 8704284 |
| 4914 | 36900.37000.37100.37700.38700.40100.41500.99500.1547700 | Painting 1st coat | 12d | 2025-12-22 | 2026-01-02 | 4913 |  | Zenith | 8704294 |
| 4915 | 36900.37000.37100.37700.38700.40100.41500.99600 | **2nd floor roof** | 81.75d | 2025-09-10 | 2026-01-14 |  | start no earlier than 2025-09-10 | Zenith | 8650144 |
| 4916 | 36900.37000.37100.37700.38700.40100.41500.99600.1547800 | Block Work | 6d | 2025-09-10 | 2025-09-16 | 4860, 4900 |  | Zenith | 8704304 |
| 4917 | 36900.37000.37100.37700.38700.40100.41500.99600.1547900 | Fire sprinkler pipe fixing | 5d | 2025-09-16 | 2025-09-21 | 4901, 4916 |  | Zenith | 8704314 |
| 4918 | 36900.37000.37100.37700.38700.40100.41500.99600.1548000 | Internal Plumbing Works | 5d | 2025-09-16 | 2025-09-21 | 4902, 4916 |  | Zenith | 8704324 |
| 4919 | 36900.37000.37100.37700.38700.40100.41500.99600.1548100 | Waterproofing | 5d | 2025-09-21 | 2025-09-26 | 4903, 4918 |  | Zenith | 8704334 |
| 4920 | 36900.37000.37100.37700.38700.40100.41500.99600.1548200 | Internal Plaster | 9d | 2025-09-22 | 2025-10-01 | 4904, 4918, 4919FF+5d |  | Zenith | 8704344 |
| 4921 | 36900.37000.37100.37700.38700.40100.41500.99600.1548300 | IPS flooring work | 7d | 2025-10-01 | 2025-10-08 | 4905, 4920 |  | Zenith | 8704354 |
| 4922 | 36900.37000.37100.37700.38700.40100.41500.99600.1548400 | Toilet dado work | 6d | 2025-10-01 | 2025-10-07 | 4906, 4919, 4920 |  | Zenith | 8704364 |
| 4923 | 36900.37000.37100.37700.38700.40100.41500.99600.1548500 | Toilet flooring work | 7d | 2025-10-07 | 2025-10-14 | 4907, 4922 |  | Zenith | 8704374 |
| 4924 | 36900.37000.37100.37700.38700.40100.41500.99600.1548600 | False Cieling panel fixing | 7d | 2025-10-14 | 2025-10-21 | 4908, 4923 |  | Zenith | 8704384 |
| 4925 | 36900.37000.37100.37700.38700.40100.41500.99600.1548700 | Living dinning flooring | 7d | 2025-10-14 | 2025-10-21 | 4909, 4923 |  | Zenith | 8704394 |
| 4926 | 36900.37000.37100.37700.38700.40100.41500.99600.1548800 | Putty primer coat | 8d | 2025-10-21 | 2025-10-29 | 4910, 4925 |  | Zenith | 8704404 |
| 4927 | 36900.37000.37100.37700.38700.40100.41500.99600.1548900 | Aluminium door-window fixing | 12d | 2025-10-24 | 2025-12-19 | 4911, 4921, 4925 |  | Zenith | 8704414 |
| 4928 | 36900.37000.37100.37700.38700.40100.41500.99600.1549000 | Door shutter fixing (Pre Hung) | 8d | 2025-10-29 | 2025-12-21 | 4912, 4926 |  | Zenith | 8704424 |
| 4929 | 36900.37000.37100.37700.38700.40100.41500.99600.1549100 | Electrical wiring work | 10d | 2025-12-22 | 2025-12-31 | 4913, 4928 |  | Zenith | 8704434 |
| 4930 | 36900.37000.37100.37700.38700.40100.41500.99600.1549200 | Painting 1st coat | 12d | 2026-01-03 | 2026-01-14 | 4914, 4929 |  | Zenith | 8704444 |

| ID | WBS | Task | Duration | Start | Finish | Predecessors | Constraint | Calendar | Unique_Task_ID |
| --- | --- | --- | --- | --- | --- | --- | --- | --- | --- |
| 4931 | 36900.37000.37100.37700.38700.40100.41500.99700 | **3rd floor roof** | 84.75d | 2025-09-19 | 2026-01-26 |  | start no earlier than 2025-09-19 | Zenith | 8650154 |
| 4932 | 36900.37000.37100.37700.38700.40100.41500.99700.1549300 | Block Work | 6d | 2025-09-19 | 2025-09-25 | 4861, 4916 |  | Zenith | 8704454 |
| 4933 | 36900.37000.37100.37700.38700.40100.41500.99700.1549400 | Fire sprinkler pipe fixing | 5d | 2025-09-25 | 2025-09-30 | 4917, 4932 |  | Zenith | 8704464 |
| 4934 | 36900.37000.37100.37700.38700.40100.41500.99700.1549500 | Internal Plumbing Works | 5d | 2025-09-25 | 2025-09-30 | 4918, 4932 |  | Zenith | 8704474 |
| 4935 | 36900.37000.37100.37700.38700.40100.41500.99700.1549600 | Waterproofing | 5d | 2025-09-30 | 2025-10-05 | 4919, 4934 |  | Zenith | 8704484 |
| 4936 | 36900.37000.37100.37700.38700.40100.41500.99700.1549700 | Internal Plaster | 9d | 2025-10-01 | 2025-10-10 | 4920, 4934, 4935FF+5d |  | Zenith | 8704494 |
| 4937 | 36900.37000.37100.37700.38700.40100.41500.99700.1549800 | IPS flooring work | 7d | 2025-10-10 | 2025-10-17 | 4921, 4936 |  | Zenith | 8704504 |
| 4938 | 36900.37000.37100.37700.38700.40100.41500.99700.1549900 | Toilet dado work | 6d | 2025-10-10 | 2025-10-16 | 4922, 4935, 4936 |  | Zenith | 8704514 |
| 4939 | 36900.37000.37100.37700.38700.40100.41500.99700.1550000 | Toilet flooring work | 7d | 2025-10-16 | 2025-10-23 | 4923, 4938 |  | Zenith | 8704524 |
| 4940 | 36900.37000.37100.37700.38700.40100.41500.99700.1550100 | False Cieling panel fixing | 7d | 2025-10-23 | 2025-10-30 | 4924, 4939 |  | Zenith | 8704534 |
| 4941 | 36900.37000.37100.37700.38700.40100.41500.99700.1550200 | Living dinning flooring | 7d | 2025-10-23 | 2025-10-30 | 4925, 4939 |  | Zenith | 8704544 |
| 4942 | 36900.37000.37100.37700.38700.40100.41500.99700.1550300 | Putty primer coat | 8d | 2025-10-30 | 2025-12-22 | 4926, 4941 |  | Zenith | 8704554 |
| 4943 | 36900.37000.37100.37700.38700.40100.41500.99700.1550400 | Aluminium door-window fixing | 12d | 2025-12-20 | 2025-12-31 | 4927, 4937, 4941 |  | Zenith | 8704564 |
| 4944 | 36900.37000.37100.37700.38700.40100.41500.99700.1550500 | Door shutter fixing (Pre Hung) | 8d | 2025-12-22 | 2025-12-30 | 4928, 4942 |  | Zenith | 8704574 |
| 4945 | 36900.37000.37100.37700.38700.40100.41500.99700.1550600 | Electrical wiring work | 10d | 2026-01-01 | 2026-01-10 | 4929, 4944 |  | Zenith | 8704584 |
| 4946 | 36900.37000.37100.37700.38700.40100.41500.99700.1550700 | Painting 1st coat | 12d | 2026-01-15 | 2026-01-26 | 4930, 4945 |  | Zenith | 8704594 |
| 4947 | 36900.37000.37100.37700.38700.40100.41500.99800 | **4th floor roof** | 87.75d | 2025-09-28 | 2026-02-07 |  | start no earlier than 2025-09-28 | Zenith | 8650164 |
| 4948 | 36900.37000.37100.37700.38700.40100.41500.99800.1550800 | Block Work | 6d | 2025-09-28 | 2025-10-04 | 4862, 4932 |  | Zenith | 8704604 |
| 4949 | 36900.37000.37100.37700.38700.40100.41500.99800.1550900 | Fire sprinkler pipe fixing | 5d | 2025-10-04 | 2025-10-09 | 4933, 4948 |  | Zenith | 8704614 |
| 4950 | 36900.37000.37100.37700.38700.40100.41500.99800.1551000 | Internal Plumbing Works | 5d | 2025-10-04 | 2025-10-09 | 4934, 4948 |  | Zenith | 8704624 |
| 4951 | 36900.37000.37100.37700.38700.40100.41500.99800.1551100 | Waterproofing | 5d | 2025-10-09 | 2025-10-14 | 4935, 4950 |  | Zenith | 8704634 |
| 4952 | 36900.37000.37100.37700.38700.40100.41500.99800.1551200 | Internal Plaster | 9d | 2025-10-10 | 2025-10-19 | 4936, 4950, 4951FF+5d |  | Zenith | 8704644 |
| 4953 | 36900.37000.37100.37700.38700.40100.41500.99800.1551300 | IPS flooring work | 7d | 2025-10-19 | 2025-10-26 | 4937, 4952 |  | Zenith | 8704654 |
| 4954 | 36900.37000.37100.37700.38700.40100.41500.99800.1551400 | Toilet dado work | 6d | 2025-10-19 | 2025-10-25 | 4938, 4951, 4952 |  | Zenith | 8704664 |
| 4955 | 36900.37000.37100.37700.38700.40100.41500.99800.1551500 | Toilet flooring work | 7d | 2025-10-25 | 2025-12-16 | 4939, 4954 |  | Zenith | 8704674 |
| 4956 | 36900.37000.37100.37700.38700.40100.41500.99800.1551600 | False Cieling panel fixing | 7d | 2025-12-16 | 2025-12-23 | 4940, 4955 |  | Zenith | 8704684 |
| 4957 | 36900.37000.37100.37700.38700.40100.41500.99800.1551700 | Living dinning flooring | 7d | 2025-12-16 | 2025-12-23 | 4941, 4955 |  | Zenith | 8704694 |
| 4958 | 36900.37000.37100.37700.38700.40100.41500.99800.1551800 | Putty primer coat | 8d | 2025-12-23 | 2025-12-31 | 4942, 4957 |  | Zenith | 8704704 |
| 4959 | 36900.37000.37100.37700.38700.40100.41500.99800.1551900 | Aluminium door-window fixing | 12d | 2026-01-01 | 2026-01-12 | 4943, 4953, 4957 |  | Zenith | 8704714 |
| 4960 | 36900.37000.37100.37700.38700.40100.41500.99800.1552000 | Door shutter fixing (Pre Hung) | 8d | 2025-12-31 | 2026-01-08 | 4944, 4958 |  | Zenith | 8704724 |
| 4961 | 36900.37000.37100.37700.38700.40100.41500.99800.1552100 | Electrical wiring work | 10d | 2026-01-11 | 2026-01-20 | 4945, 4960 |  | Zenith | 8704734 |
| 4962 | 36900.37000.37100.37700.38700.40100.41500.99800.1552200 | Painting 1st coat | 12d | 2026-01-27 | 2026-02-07 | 4946, 4961 |  | Zenith | 8704744 |

| ID | WBS | Task | Duration | Start | Finish | Predecessors | Constraint | Calendar | Unique_Task_ID |
| --- | --- | --- | --- | --- | --- | --- | --- | --- | --- |
| 4963 | 36900.37000.37100.37700.38700.40100.41500.99900 | **5th floor roof** | 90.75d | 2025-10-07 | 2026-02-19 |  | start no earlier than 2025-10-07 | Zenith | 8650174 |
| 4964 | 36900.37000.37100.37700.38700.40100.41500.99900.1552300 | Block Work | 6d | 2025-10-07 | 2025-10-13 | 4863, 4948 |  | Zenith | 8704754 |
| 4965 | 36900.37000.37100.37700.38700.40100.41500.99900.1552400 | Fire sprinkler pipe fixing | 5d | 2025-10-13 | 2025-10-18 | 4949, 4964 |  | Zenith | 8704764 |
| 4966 | 36900.37000.37100.37700.38700.40100.41500.99900.1552500 | Internal Plumbing Works | 5d | 2025-10-13 | 2025-10-18 | 4950, 4964 |  | Zenith | 8704774 |
| 4967 | 36900.37000.37100.37700.38700.40100.41500.99900.1552600 | Waterproofing | 5d | 2025-10-18 | 2025-10-23 | 4951, 4966 |  | Zenith | 8704784 |
| 4968 | 36900.37000.37100.37700.38700.40100.41500.99900.1552700 | Internal Plaster | 9d | 2025-10-19 | 2025-10-28 | 4952, 4966, 4967FF+5d |  | Zenith | 8704794 |
| 4969 | 36900.37000.37100.37700.38700.40100.41500.99900.1552800 | IPS flooring work | 7d | 2025-10-28 | 2025-12-19 | 4953, 4968 |  | Zenith | 8704804 |
| 4970 | 36900.37000.37100.37700.38700.40100.41500.99900.1552900 | Toilet dado work | 6d | 2025-10-28 | 2025-12-18 | 4954, 4967, 4968 |  | Zenith | 8704814 |
| 4971 | 36900.37000.37100.37700.38700.40100.41500.99900.1553000 | Toilet flooring work | 7d | 2025-12-18 | 2025-12-25 | 4955, 4970 |  | Zenith | 8704824 |
| 4972 | 36900.37000.37100.37700.38700.40100.41500.99900.1553100 | False Cieling panel fixing | 7d | 2025-12-25 | 2026-01-01 | 4956, 4971 |  | Zenith | 8704834 |
| 4973 | 36900.37000.37100.37700.38700.40100.41500.99900.1553200 | Living dinning flooring | 7d | 2025-12-25 | 2026-01-01 | 4957, 4971 |  | Zenith | 8704844 |
| 4974 | 36900.37000.37100.37700.38700.40100.41500.99900.1553300 | Putty primer coat | 8d | 2026-01-01 | 2026-01-09 | 4958, 4973 |  | Zenith | 8704854 |
| 4975 | 36900.37000.37100.37700.38700.40100.41500.99900.1553400 | Aluminium door-window fixing | 12d | 2026-01-13 | 2026-01-24 | 4959, 4969, 4973 |  | Zenith | 8704864 |
| 4976 | 36900.37000.37100.37700.38700.40100.41500.99900.1553500 | Door shutter fixing (Pre Hung) | 8d | 2026-01-09 | 2026-01-17 | 4960, 4974 |  | Zenith | 8704874 |
| 4977 | 36900.37000.37100.37700.38700.40100.41500.99900.1553600 | Electrical wiring work | 10d | 2026-01-21 | 2026-01-30 | 4961, 4976 |  | Zenith | 8704884 |
| 4978 | 36900.37000.37100.37700.38700.40100.41500.99900.1553700 | Painting 1st coat | 12d | 2026-02-08 | 2026-02-19 | 4962, 4977 |  | Zenith | 8704894 |
| 4979 | 36900.37000.37100.37700.38700.40100.41500.100000 | **6th floor roof** | 93.75d | 2025-10-16 | 2026-03-03 |  | start no earlier than 2025-10-16 | Zenith | 8650184 |
| 4980 | 36900.37000.37100.37700.38700.40100.41500.100000.1553800 | Block Work | 6d | 2025-10-16 | 2025-10-22 | 4864, 4964 |  | Zenith | 8704904 |
| 4981 | 36900.37000.37100.37700.38700.40100.41500.100000.1553900 | Fire sprinkler pipe fixing | 5d | 2025-10-22 | 2025-10-27 | 4965, 4980 |  | Zenith | 8704914 |
| 4982 | 36900.37000.37100.37700.38700.40100.41500.100000.1554000 | Internal Plumbing Works | 5d | 2025-10-22 | 2025-10-27 | 4966, 4980 |  | Zenith | 8704924 |
| 4983 | 36900.37000.37100.37700.38700.40100.41500.100000.1554100 | Waterproofing | 5d | 2025-10-27 | 2025-12-16 | 4967, 4982 |  | Zenith | 8704934 |
| 4984 | 36900.37000.37100.37700.38700.40100.41500.100000.1554200 | Internal Plaster | 9d | 2025-10-28 | 2025-12-21 | 4968, 4982, 4983FF+5d |  | Zenith | 8704944 |
| 4985 | 36900.37000.37100.37700.38700.40100.41500.100000.1554300 | IPS flooring work | 7d | 2025-12-21 | 2025-12-28 | 4969, 4984 |  | Zenith | 8704954 |
| 4986 | 36900.37000.37100.37700.38700.40100.41500.100000.1554400 | Toilet dado work | 6d | 2025-12-21 | 2025-12-27 | 4970, 4983, 4984 |  | Zenith | 8704964 |
| 4987 | 36900.37000.37100.37700.38700.40100.41500.100000.1554500 | Toilet flooring work | 7d | 2025-12-27 | 2026-01-03 | 4971, 4986 |  | Zenith | 8704974 |
| 4988 | 36900.37000.37100.37700.38700.40100.41500.100000.1554600 | False Cieling panel fixing | 7d | 2026-01-03 | 2026-01-10 | 4972, 4987 |  | Zenith | 8704984 |
| 4989 | 36900.37000.37100.37700.38700.40100.41500.100000.1554700 | Living dinning flooring | 7d | 2026-01-03 | 2026-01-10 | 4973, 4987 |  | Zenith | 8704994 |
| 4990 | 36900.37000.37100.37700.38700.40100.41500.100000.1554800 | Putty primer coat | 8d | 2026-01-10 | 2026-01-18 | 4974, 4989 |  | Zenith | 8705004 |
| 4991 | 36900.37000.37100.37700.38700.40100.41500.100000.1554900 | Aluminium door-window fixing | 12d | 2026-01-25 | 2026-02-05 | 4975, 4985, 4989 |  | Zenith | 8705014 |
| 4992 | 36900.37000.37100.37700.38700.40100.41500.100000.1555000 | Door shutter fixing (Pre Hung) | 8d | 2026-01-18 | 2026-01-26 | 4976, 4990 |  | Zenith | 8705024 |
| 4993 | 36900.37000.37100.37700.38700.40100.41500.100000.1555100 | Electrical wiring work | 10d | 2026-01-31 | 2026-02-09 | 4977, 4992 |  | Zenith | 8705034 |
| 4994 | 36900.37000.37100.37700.38700.40100.41500.100000.1555200 | Painting 1st coat | 12d | 2026-02-20 | 2026-03-03 | 4978, 4993 |  | Zenith | 8705044 |

| ID | WBS | Task | Duration | Start | Finish | Predecessors | Constraint | Calendar | Unique_Task_ID |
| --- | --- | --- | --- | --- | --- | --- | --- | --- | --- |
| 4995 | 36900.37000.37100.37700.38700.40100.41500.100100 | **7th floor roof** | 96.75d | 2025-10-25 | 2026-03-15 |  | start no earlier than 2025-10-25 | Zenith | 8650194 |
| 4996 | 36900.37000.37100.37700.38700.40100.41500.100100.1555300 | Block Work | 6d | 2025-10-25 | 2025-10-31 | 4865, 4980 |  | Zenith | 8705054 |
| 4997 | 36900.37000.37100.37700.38700.40100.41500.100100.1555400 | Fire sprinkler pipe fixing | 5d | 2025-10-31 | 2025-12-20 | 4981, 4996 |  | Zenith | 8705064 |
| 4998 | 36900.37000.37100.37700.38700.40100.41500.100100.1555500 | Internal Plumbing Works | 5d | 2025-10-31 | 2025-12-20 | 4982, 4996 |  | Zenith | 8705074 |
| 4999 | 36900.37000.37100.37700.38700.40100.41500.100100.1555600 | Waterproofing | 5d | 2025-12-20 | 2025-12-25 | 4983, 4998 |  | Zenith | 8705084 |
| 5000 | 36900.37000.37100.37700.38700.40100.41500.100100.1555700 | Internal Plaster | 9d | 2025-12-21 | 2025-12-30 | 4984, 4998, 4999FF+5d |  | Zenith | 8705094 |
| 5001 | 36900.37000.37100.37700.38700.40100.41500.100100.1555800 | IPS flooring work | 7d | 2025-12-30 | 2026-01-06 | 4985, 5000 |  | Zenith | 8705104 |
| 5002 | 36900.37000.37100.37700.38700.40100.41500.100100.1555900 | Toilet dado work | 6d | 2025-12-30 | 2026-01-05 | 4986, 4999, 5000 |  | Zenith | 8705114 |
| 5003 | 36900.37000.37100.37700.38700.40100.41500.100100.1556000 | Toilet flooring work | 7d | 2026-01-05 | 2026-01-12 | 4987, 5002 |  | Zenith | 8705124 |
| 5004 | 36900.37000.37100.37700.38700.40100.41500.100100.1556100 | False Cieling panel fixing | 7d | 2026-01-12 | 2026-01-19 | 4988, 5003 |  | Zenith | 8705134 |
| 5005 | 36900.37000.37100.37700.38700.40100.41500.100100.1556200 | Living dinning flooring | 7d | 2026-01-12 | 2026-01-19 | 4989, 5003 |  | Zenith | 8705144 |
| 5006 | 36900.37000.37100.37700.38700.40100.41500.100100.1556300 | Putty primer coat | 8d | 2026-01-19 | 2026-01-27 | 4990, 5005 |  | Zenith | 8705154 |
| 5007 | 36900.37000.37100.37700.38700.40100.41500.100100.1556400 | Aluminium door-window fixing | 12d | 2026-02-06 | 2026-02-17 | 4991, 5001, 5005 |  | Zenith | 8705164 |
| 5008 | 36900.37000.37100.37700.38700.40100.41500.100100.1556500 | Door shutter fixing (Pre Hung) | 8d | 2026-01-27 | 2026-02-04 | 4992, 5006 |  | Zenith | 8705174 |
| 5009 | 36900.37000.37100.37700.38700.40100.41500.100100.1556600 | Electrical wiring work | 10d | 2026-02-10 | 2026-02-19 | 4993, 5008 |  | Zenith | 8705184 |
| 5010 | 36900.37000.37100.37700.38700.40100.41500.100100.1556700 | Painting 1st coat | 12d | 2026-03-04 | 2026-03-15 | 4994, 5009 |  | Zenith | 8705194 |
| 5011 | 36900.37000.37100.37700.38700.40100.41500.100200 | **8th floor roof** | 99.75d | 2025-12-18 | 2026-03-27 |  | start no earlier than 2025-12-18 | Zenith | 8650204 |
| 5012 | 36900.37000.37100.37700.38700.40100.41500.100200.1556800 | Block Work | 6d | 2025-12-18 | 2025-12-24 | 4866, 4996 |  | Zenith | 8705204 |
| 5013 | 36900.37000.37100.37700.38700.40100.41500.100200.1556900 | Fire sprinkler pipe fixing | 5d | 2025-12-24 | 2025-12-29 | 4997, 5012 |  | Zenith | 8705214 |
| 5014 | 36900.37000.37100.37700.38700.40100.41500.100200.1557000 | Internal Plumbing Works | 5d | 2025-12-24 | 2025-12-29 | 4998, 5012 |  | Zenith | 8705224 |
| 5015 | 36900.37000.37100.37700.38700.40100.41500.100200.1557100 | Waterproofing | 5d | 2025-12-29 | 2026-01-03 | 4999, 5014 |  | Zenith | 8705234 |
| 5016 | 36900.37000.37100.37700.38700.40100.41500.100200.1557200 | Internal Plaster | 9d | 2025-12-30 | 2026-01-08 | 5000, 5014, 5015FF+5d |  | Zenith | 8705244 |
| 5017 | 36900.37000.37100.37700.38700.40100.41500.100200.1557300 | IPS flooring work | 7d | 2026-01-08 | 2026-01-15 | 5001, 5016 |  | Zenith | 8705254 |
| 5018 | 36900.37000.37100.37700.38700.40100.41500.100200.1557400 | Toilet dado work | 6d | 2026-01-08 | 2026-01-14 | 5002, 5015, 5016 |  | Zenith | 8705264 |
| 5019 | 36900.37000.37100.37700.38700.40100.41500.100200.1557500 | Toilet flooring work | 7d | 2026-01-14 | 2026-01-21 | 5003, 5018 |  | Zenith | 8705274 |
| 5020 | 36900.37000.37100.37700.38700.40100.41500.100200.1557600 | False Cieling panel fixing | 7d | 2026-01-21 | 2026-01-28 | 5004, 5019 |  | Zenith | 8705284 |
| 5021 | 36900.37000.37100.37700.38700.40100.41500.100200.1557700 | Living dinning flooring | 7d | 2026-01-21 | 2026-01-28 | 5005, 5019 |  | Zenith | 8705294 |
| 5022 | 36900.37000.37100.37700.38700.40100.41500.100200.1557800 | Putty primer coat | 8d | 2026-01-28 | 2026-02-05 | 5006, 5021 |  | Zenith | 8705304 |
| 5023 | 36900.37000.37100.37700.38700.40100.41500.100200.1557900 | Aluminium door-window fixing | 12d | 2026-02-18 | 2026-03-01 | 5007, 5017, 5021 |  | Zenith | 8705314 |
| 5024 | 36900.37000.37100.37700.38700.40100.41500.100200.1558000 | Door shutter fixing (Pre Hung) | 8d | 2026-02-05 | 2026-02-13 | 5008, 5022 |  | Zenith | 8705324 |
| 5025 | 36900.37000.37100.37700.38700.40100.41500.100200.1558100 | Electrical wiring work | 10d | 2026-02-20 | 2026-03-01 | 5009, 5024 |  | Zenith | 8705334 |
| 5026 | 36900.37000.37100.37700.38700.40100.41500.100200.1558200 | Painting 1st coat | 12d | 2026-03-16 | 2026-03-27 | 5010, 5025 |  | Zenith | 8705344 |

| ID | WBS | Task | Duration | Start | Finish | Predecessors | Constraint | Calendar | Unique_Task_ID |
| --- | --- | --- | --- | --- | --- | --- | --- | --- | --- |
| 5027 | 36900.37000.37100.37700.38700.40100.41500.100300 | **9th floor roof** | 102.75d | 2025-12-27 | 2026-04-08 |  | start no earlier than 2025-12-27 | Zenith | 8650214 |
| 5028 | 36900.37000.37100.37700.38700.40100.41500.100300.1558300 | Block Work | 6d | 2025-12-27 | 2026-01-02 | 4867, 5012 |  | Zenith | 8705354 |
| 5029 | 36900.37000.37100.37700.38700.40100.41500.100300.1558400 | Fire sprinkler pipe fixing | 5d | 2026-01-02 | 2026-01-07 | 5013, 5028 |  | Zenith | 8705364 |
| 5030 | 36900.37000.37100.37700.38700.40100.41500.100300.1558500 | Internal Plumbing Works | 5d | 2026-01-02 | 2026-01-07 | 5014, 5028 |  | Zenith | 8705374 |
| 5031 | 36900.37000.37100.37700.38700.40100.41500.100300.1558600 | Waterproofing | 5d | 2026-01-07 | 2026-01-12 | 5015, 5030 |  | Zenith | 8705384 |
| 5032 | 36900.37000.37100.37700.38700.40100.41500.100300.1558700 | Internal Plaster | 9d | 2026-01-08 | 2026-01-17 | 5016, 5030, 5031FF+5d |  | Zenith | 8705394 |
| 5033 | 36900.37000.37100.37700.38700.40100.41500.100300.1558800 | IPS flooring work | 7d | 2026-01-17 | 2026-01-24 | 5017, 5032 |  | Zenith | 8705404 |
| 5034 | 36900.37000.37100.37700.38700.40100.41500.100300.1558900 | Toilet dado work | 6d | 2026-01-17 | 2026-01-23 | 5018, 5031, 5032 |  | Zenith | 8705414 |
| 5035 | 36900.37000.37100.37700.38700.40100.41500.100300.1559000 | Toilet flooring work | 7d | 2026-01-23 | 2026-01-30 | 5019, 5034 |  | Zenith | 8705424 |
| 5036 | 36900.37000.37100.37700.38700.40100.41500.100300.1559100 | False Cieling panel fixing | 7d | 2026-01-30 | 2026-02-06 | 5020, 5035 |  | Zenith | 8705434 |
| 5037 | 36900.37000.37100.37700.38700.40100.41500.100300.1559200 | Living dinning flooring | 7d | 2026-01-30 | 2026-02-06 | 5021, 5035 |  | Zenith | 8705444 |
| 5038 | 36900.37000.37100.37700.38700.40100.41500.100300.1559300 | Putty primer coat | 8d | 2026-02-06 | 2026-02-14 | 5022, 5037 |  | Zenith | 8705454 |
| 5039 | 36900.37000.37100.37700.38700.40100.41500.100300.1559400 | Aluminium door-window fixing | 12d | 2026-03-02 | 2026-03-13 | 5023, 5033, 5037 |  | Zenith | 8705464 |
| 5040 | 36900.37000.37100.37700.38700.40100.41500.100300.1559500 | Door shutter fixing (Pre Hung) | 8d | 2026-02-14 | 2026-02-22 | 5024, 5038 |  | Zenith | 8705474 |
| 5041 | 36900.37000.37100.37700.38700.40100.41500.100300.1559600 | Electrical wiring work | 10d | 2026-03-02 | 2026-03-11 | 5025, 5040 |  | Zenith | 8705484 |
| 5042 | 36900.37000.37100.37700.38700.40100.41500.100300.1559700 | Painting 1st coat | 12d | 2026-03-28 | 2026-04-08 | 5026, 5041 |  | Zenith | 8705494 |
| 5043 | 36900.37000.37100.37700.38700.40100.41500.100400 | **10th floor roof** | 105.75d | 2026-01-05 | 2026-04-20 |  | start no earlier than 2026-01-05 | Zenith | 8650224 |
| 5044 | 36900.37000.37100.37700.38700.40100.41500.100400.1559800 | Block Work | 6d | 2026-01-05 | 2026-01-11 | 4868, 5028 |  | Zenith | 8705504 |
| 5045 | 36900.37000.37100.37700.38700.40100.41500.100400.1559900 | Fire sprinkler pipe fixing | 5d | 2026-01-11 | 2026-01-16 | 5029, 5044 |  | Zenith | 8705514 |
| 5046 | 36900.37000.37100.37700.38700.40100.41500.100400.1560000 | Internal Plumbing Works | 5d | 2026-01-11 | 2026-01-16 | 5030, 5044 |  | Zenith | 8705524 |
| 5047 | 36900.37000.37100.37700.38700.40100.41500.100400.1560100 | Waterproofing | 5d | 2026-01-16 | 2026-01-21 | 5031, 5046 |  | Zenith | 8705534 |
| 5048 | 36900.37000.37100.37700.38700.40100.41500.100400.1560200 | Internal Plaster | 9d | 2026-01-17 | 2026-01-26 | 5032, 5046, 5047FF+5d |  | Zenith | 8705544 |
| 5049 | 36900.37000.37100.37700.38700.40100.41500.100400.1560300 | IPS flooring work | 7d | 2026-01-26 | 2026-02-02 | 5033, 5048 |  | Zenith | 8705554 |
| 5050 | 36900.37000.37100.37700.38700.40100.41500.100400.1560400 | Toilet dado work | 6d | 2026-01-26 | 2026-02-01 | 5034, 5047, 5048 |  | Zenith | 8705564 |
| 5051 | 36900.37000.37100.37700.38700.40100.41500.100400.1560500 | Toilet flooring work | 7d | 2026-02-01 | 2026-02-08 | 5035, 5050 |  | Zenith | 8705574 |
| 5052 | 36900.37000.37100.37700.38700.40100.41500.100400.1560600 | False Cieling panel fixing | 7d | 2026-02-08 | 2026-02-15 | 5036, 5051 |  | Zenith | 8705584 |
| 5053 | 36900.37000.37100.37700.38700.40100.41500.100400.1560700 | Living dinning flooring | 7d | 2026-02-08 | 2026-02-15 | 5037, 5051 |  | Zenith | 8705594 |
| 5054 | 36900.37000.37100.37700.38700.40100.41500.100400.1560800 | Putty primer coat | 8d | 2026-02-15 | 2026-02-23 | 5038, 5053 |  | Zenith | 8705604 |
| 5055 | 36900.37000.37100.37700.38700.40100.41500.100400.1560900 | Aluminium door-window fixing | 12d | 2026-03-14 | 2026-03-25 | 5039, 5049, 5053 |  | Zenith | 8705614 |
| 5056 | 36900.37000.37100.37700.38700.40100.41500.100400.1561000 | Door shutter fixing (Pre Hung) | 8d | 2026-02-23 | 2026-03-03 | 5040, 5054 |  | Zenith | 8705624 |
| 5057 | 36900.37000.37100.37700.38700.40100.41500.100400.1561100 | Electrical wiring work | 10d | 2026-03-12 | 2026-03-21 | 5041, 5056 |  | Zenith | 8705634 |
| 5058 | 36900.37000.37100.37700.38700.40100.41500.100400.1561200 | Painting 1st coat | 12d | 2026-04-09 | 2026-04-20 | 5042, 5057 |  | Zenith | 8705644 |

| ID | WBS | Task | Duration | Start | Finish | Predecessors | Constraint | Calendar | Unique_Task_ID |
| --- | --- | --- | --- | --- | --- | --- | --- | --- | --- |
| 5059 | 36900.37000.37100.37700.38700.40100.41500.100500 | **11th floor roof** | 108.75d | 2026-01-14 | 2026-05-02 |  | start no earlier than 2026-01-14 | Zenith | 8650234 |
| 5060 | 36900.37000.37100.37700.38700.40100.41500.100500.1561300 | Block Work | 6d | 2026-01-14 | 2026-01-20 | 4869, 5044 |  | Zenith | 8705654 |
| 5061 | 36900.37000.37100.37700.38700.40100.41500.100500.1561400 | Fire sprinkler pipe fixing | 5d | 2026-01-20 | 2026-01-25 | 5045, 5060 |  | Zenith | 8705664 |
| 5062 | 36900.37000.37100.37700.38700.40100.41500.100500.1561500 | Internal Plumbing Works | 5d | 2026-01-20 | 2026-01-25 | 5046, 5060 |  | Zenith | 8705674 |
| 5063 | 36900.37000.37100.37700.38700.40100.41500.100500.1561600 | Waterproofing | 5d | 2026-01-25 | 2026-01-30 | 5047, 5062 |  | Zenith | 8705684 |
| 5064 | 36900.37000.37100.37700.38700.40100.41500.100500.1561700 | Internal Plaster | 9d | 2026-01-26 | 2026-02-04 | 5048, 5062, 5063FF+5d |  | Zenith | 8705694 |
| 5065 | 36900.37000.37100.37700.38700.40100.41500.100500.1561800 | IPS flooring work | 7d | 2026-02-04 | 2026-02-11 | 5049, 5064 |  | Zenith | 8705704 |
| 5066 | 36900.37000.37100.37700.38700.40100.41500.100500.1561900 | Toilet dado work | 6d | 2026-02-04 | 2026-02-10 | 5050, 5063, 5064 |  | Zenith | 8705714 |
| 5067 | 36900.37000.37100.37700.38700.40100.41500.100500.1562000 | Toilet flooring work | 7d | 2026-02-10 | 2026-02-17 | 5051, 5066 |  | Zenith | 8705724 |
| 5068 | 36900.37000.37100.37700.38700.40100.41500.100500.1562100 | False Cieling panel fixing | 7d | 2026-02-17 | 2026-02-24 | 5052, 5067 |  | Zenith | 8705734 |
| 5069 | 36900.37000.37100.37700.38700.40100.41500.100500.1562200 | Living dinning flooring | 7d | 2026-02-17 | 2026-02-24 | 5053, 5067 |  | Zenith | 8705744 |
| 5070 | 36900.37000.37100.37700.38700.40100.41500.100500.1562300 | Putty primer coat | 8d | 2026-02-24 | 2026-03-04 | 5054, 5069 |  | Zenith | 8705754 |
| 5071 | 36900.37000.37100.37700.38700.40100.41500.100500.1562400 | Aluminium door-window fixing | 12d | 2026-03-26 | 2026-04-06 | 5055, 5065, 5069 |  | Zenith | 8705764 |
| 5072 | 36900.37000.37100.37700.38700.40100.41500.100500.1562500 | Door shutter fixing (Pre Hung) | 8d | 2026-03-04 | 2026-03-12 | 5056, 5070 |  | Zenith | 8705774 |
| 5073 | 36900.37000.37100.37700.38700.40100.41500.100500.1562600 | Electrical wiring work | 10d | 2026-03-22 | 2026-03-31 | 5057, 5072 |  | Zenith | 8705784 |
| 5074 | 36900.37000.37100.37700.38700.40100.41500.100500.1562700 | Painting 1st coat | 12d | 2026-04-21 | 2026-05-02 | 5058, 5073 |  | Zenith | 8705794 |
| 5075 | 36900.37000.37100.37700.38700.40100.41500.100600 | **12th floor roof** | 111.75d | 2026-01-23 | 2026-05-14 |  | start no earlier than 2026-01-23 | Zenith | 8650244 |
| 5076 | 36900.37000.37100.37700.38700.40100.41500.100600.1562800 | Block Work | 6d | 2026-01-23 | 2026-01-29 | 4870, 5060 |  | Zenith | 8705804 |
| 5077 | 36900.37000.37100.37700.38700.40100.41500.100600.1562900 | Fire sprinkler pipe fixing | 5d | 2026-01-29 | 2026-02-03 | 5061, 5076 |  | Zenith | 8705814 |
| 5078 | 36900.37000.37100.37700.38700.40100.41500.100600.1563000 | Internal Plumbing Works | 5d | 2026-01-29 | 2026-02-03 | 5062, 5076 |  | Zenith | 8705824 |
| 5079 | 36900.37000.37100.37700.38700.40100.41500.100600.1563100 | Waterproofing | 5d | 2026-02-03 | 2026-02-08 | 5063, 5078 |  | Zenith | 8705834 |
| 5080 | 36900.37000.37100.37700.38700.40100.41500.100600.1563200 | Internal Plaster | 9d | 2026-02-04 | 2026-02-13 | 5064, 5078, 5079FF+5d |  | Zenith | 8705844 |
| 5081 | 36900.37000.37100.37700.38700.40100.41500.100600.1563300 | IPS flooring work | 7d | 2026-02-13 | 2026-02-20 | 5065, 5080 |  | Zenith | 8705854 |
| 5082 | 36900.37000.37100.37700.38700.40100.41500.100600.1563400 | Toilet dado work | 6d | 2026-02-13 | 2026-02-19 | 5066, 5079, 5080 |  | Zenith | 8705864 |
| 5083 | 36900.37000.37100.37700.38700.40100.41500.100600.1563500 | Toilet flooring work | 7d | 2026-02-19 | 2026-02-26 | 5067, 5082 |  | Zenith | 8705874 |
| 5084 | 36900.37000.37100.37700.38700.40100.41500.100600.1563600 | False Cieling panel fixing | 7d | 2026-02-26 | 2026-03-05 | 5068, 5083 |  | Zenith | 8705884 |
| 5085 | 36900.37000.37100.37700.38700.40100.41500.100600.1563700 | Living dinning flooring | 7d | 2026-02-26 | 2026-03-05 | 5069, 5083 |  | Zenith | 8705894 |
| 5086 | 36900.37000.37100.37700.38700.40100.41500.100600.1563800 | Putty primer coat | 8d | 2026-03-05 | 2026-03-13 | 5070, 5085 |  | Zenith | 8705904 |
| 5087 | 36900.37000.37100.37700.38700.40100.41500.100600.1563900 | Aluminium door-window fixing | 12d | 2026-04-07 | 2026-04-18 | 5071, 5081, 5085 |  | Zenith | 8705914 |
| 5088 | 36900.37000.37100.37700.38700.40100.41500.100600.1564000 | Door shutter fixing (Pre Hung) | 8d | 2026-03-13 | 2026-03-21 | 5072, 5086 |  | Zenith | 8705924 |
| 5089 | 36900.37000.37100.37700.38700.40100.41500.100600.1564100 | Electrical wiring work | 10d | 2026-04-01 | 2026-04-10 | 5073, 5088 |  | Zenith | 8705934 |
| 5090 | 36900.37000.37100.37700.38700.40100.41500.100600.1564200 | Painting 1st coat | 12d | 2026-05-03 | 2026-05-14 | 5074, 5089 |  | Zenith | 8705944 |

| ID | WBS | Task | Duration | Start | Finish | Predecessors | Constraint | Calendar | Unique_Task_ID |
| --- | --- | --- | --- | --- | --- | --- | --- | --- | --- |
| 5091 | 36900.37000.37100.37700.38700.40100.41500.100700 | **13th floor roof** | 114.75d | 2026-02-01 | 2026-05-26 |  | start no earlier than 2026-02-01 | Zenith | 8650254 |
| 5092 | 36900.37000.37100.37700.38700.40100.41500.100700.1564300 | Block Work | 6d | 2026-02-01 | 2026-02-07 | 4871, 5076 |  | Zenith | 8705954 |
| 5093 | 36900.37000.37100.37700.38700.40100.41500.100700.1564400 | Fire sprinkler pipe fixing | 5d | 2026-02-07 | 2026-02-12 | 5077, 5092 |  | Zenith | 8705964 |
| 5094 | 36900.37000.37100.37700.38700.40100.41500.100700.1564500 | Internal Plumbing Works | 5d | 2026-02-07 | 2026-02-12 | 5078, 5092 |  | Zenith | 8705974 |
| 5095 | 36900.37000.37100.37700.38700.40100.41500.100700.1564600 | Waterproofing | 5d | 2026-02-12 | 2026-02-17 | 5079, 5094 |  | Zenith | 8705984 |
| 5096 | 36900.37000.37100.37700.38700.40100.41500.100700.1564700 | Internal Plaster | 9d | 2026-02-13 | 2026-02-22 | 5080, 5094, 5095FF+5d |  | Zenith | 8705994 |
| 5097 | 36900.37000.37100.37700.38700.40100.41500.100700.1564800 | IPS flooring work | 7d | 2026-02-22 | 2026-03-01 | 5081, 5096 |  | Zenith | 8706004 |
| 5098 | 36900.37000.37100.37700.38700.40100.41500.100700.1564900 | Toilet dado work | 6d | 2026-02-22 | 2026-02-28 | 5082, 5095, 5096 |  | Zenith | 8706014 |
| 5099 | 36900.37000.37100.37700.38700.40100.41500.100700.1565000 | Toilet flooring work | 7d | 2026-02-28 | 2026-03-07 | 5083, 5098 |  | Zenith | 8706024 |
| 5100 | 36900.37000.37100.37700.38700.40100.41500.100700.1565100 | False Cieling panel fixing | 7d | 2026-03-07 | 2026-03-14 | 5084, 5099 |  | Zenith | 8706034 |
| 5101 | 36900.37000.37100.37700.38700.40100.41500.100700.1565200 | Living dinning flooring | 7d | 2026-03-07 | 2026-03-14 | 5085, 5099 |  | Zenith | 8706044 |
| 5102 | 36900.37000.37100.37700.38700.40100.41500.100700.1565300 | Putty primer coat | 8d | 2026-03-14 | 2026-03-22 | 5086, 5101 |  | Zenith | 8706054 |
| 5103 | 36900.37000.37100.37700.38700.40100.41500.100700.1565400 | Aluminium door-window fixing | 12d | 2026-04-19 | 2026-04-30 | 5087, 5097, 5101 |  | Zenith | 8706064 |
| 5104 | 36900.37000.37100.37700.38700.40100.41500.100700.1565500 | Door shutter fixing (Pre Hung) | 8d | 2026-03-22 | 2026-03-30 | 5088, 5102 |  | Zenith | 8706074 |
| 5105 | 36900.37000.37100.37700.38700.40100.41500.100700.1565600 | Electrical wiring work | 10d | 2026-04-11 | 2026-04-20 | 5089, 5104 |  | Zenith | 8706084 |
| 5106 | 36900.37000.37100.37700.38700.40100.41500.100700.1565700 | Painting 1st coat | 12d | 2026-05-15 | 2026-05-26 | 5090, 5105 |  | Zenith | 8706094 |
| 5107 | 36900.37000.37100.37700.38700.40100.41500.100800 | **14th floor roof** | 117.75d | 2026-02-10 | 2026-06-07 |  | start no earlier than 2026-02-10 | Zenith | 8650264 |
| 5108 | 36900.37000.37100.37700.38700.40100.41500.100800.1565800 | Block Work | 6d | 2026-02-10 | 2026-02-16 | 4872, 5092 |  | Zenith | 8706104 |
| 5109 | 36900.37000.37100.37700.38700.40100.41500.100800.1565900 | Fire sprinkler pipe fixing | 5d | 2026-02-16 | 2026-02-21 | 5093, 5108 |  | Zenith | 8706114 |
| 5110 | 36900.37000.37100.37700.38700.40100.41500.100800.1566000 | Internal Plumbing Works | 5d | 2026-02-16 | 2026-02-21 | 5094, 5108 |  | Zenith | 8706124 |
| 5111 | 36900.37000.37100.37700.38700.40100.41500.100800.1566100 | Waterproofing | 5d | 2026-02-21 | 2026-02-26 | 5095, 5110 |  | Zenith | 8706134 |
| 5112 | 36900.37000.37100.37700.38700.40100.41500.100800.1566200 | Internal Plaster | 9d | 2026-02-22 | 2026-03-03 | 5096, 5110, 5111FF+5d |  | Zenith | 8706144 |
| 5113 | 36900.37000.37100.37700.38700.40100.41500.100800.1566300 | IPS flooring work | 7d | 2026-03-03 | 2026-03-10 | 5097, 5112 |  | Zenith | 8706154 |
| 5114 | 36900.37000.37100.37700.38700.40100.41500.100800.1566400 | Toilet dado work | 6d | 2026-03-03 | 2026-03-09 | 5098, 5111, 5112 |  | Zenith | 8706164 |
| 5115 | 36900.37000.37100.37700.38700.40100.41500.100800.1566500 | Toilet flooring work | 7d | 2026-03-09 | 2026-03-16 | 5099, 5114 |  | Zenith | 8706174 |
| 5116 | 36900.37000.37100.37700.38700.40100.41500.100800.1566600 | False Cieling panel fixing | 7d | 2026-03-16 | 2026-03-23 | 5100, 5115 |  | Zenith | 8706184 |
| 5117 | 36900.37000.37100.37700.38700.40100.41500.100800.1566700 | Living dinning flooring | 7d | 2026-03-16 | 2026-03-23 | 5101, 5115 |  | Zenith | 8706194 |
| 5118 | 36900.37000.37100.37700.38700.40100.41500.100800.1566800 | Putty primer coat | 8d | 2026-03-23 | 2026-03-31 | 5102, 5117 |  | Zenith | 8706204 |
| 5119 | 36900.37000.37100.37700.38700.40100.41500.100800.1566900 | Aluminium door-window fixing | 12d | 2026-05-01 | 2026-05-12 | 5103, 5113, 5117 |  | Zenith | 8706214 |
| 5120 | 36900.37000.37100.37700.38700.40100.41500.100800.1567000 | Door shutter fixing (Pre Hung) | 8d | 2026-03-31 | 2026-04-08 | 5104, 5118 |  | Zenith | 8706224 |
| 5121 | 36900.37000.37100.37700.38700.40100.41500.100800.1567100 | Electrical wiring work | 10d | 2026-04-21 | 2026-04-30 | 5105, 5120 |  | Zenith | 8706234 |
| 5122 | 36900.37000.37100.37700.38700.40100.41500.100800.1567200 | Painting 1st coat | 12d | 2026-05-27 | 2026-06-07 | 5106, 5121 |  | Zenith | 8706244 |

| ID | WBS | Task | Duration | Start | Finish | Predecessors | Constraint | Calendar | Unique_Task_ID |
| --- | --- | --- | --- | --- | --- | --- | --- | --- | --- |
| 5123 | 36900.37000.37100.37700.38700.40100.41500.100900 | **15th floor roof** | 121.75d | 2026-02-18 | 2026-06-19 |  | start no earlier than 2026-02-18 | Zenith | 8650274 |
| 5124 | 36900.37000.37100.37700.38700.40100.41500.100900.1567300 | Block Work | 6d | 2026-02-18 | 2026-02-24 | 4873, 5108 |  | Zenith | 8706254 |
| 5125 | 36900.37000.37100.37700.38700.40100.41500.100900.1567400 | Fire sprinkler pipe fixing | 5d | 2026-02-24 | 2026-03-01 | 5109, 5124 |  | Zenith | 8706264 |
| 5126 | 36900.37000.37100.37700.38700.40100.41500.100900.1567500 | Internal Plumbing Works | 5d | 2026-02-24 | 2026-03-01 | 5110, 5124 |  | Zenith | 8706274 |
| 5127 | 36900.37000.37100.37700.38700.40100.41500.100900.1567600 | Waterproofing | 5d | 2026-03-01 | 2026-03-06 | 5111, 5126 |  | Zenith | 8706284 |
| 5128 | 36900.37000.37100.37700.38700.40100.41500.100900.1567700 | Internal Plaster | 9d | 2026-03-03 | 2026-03-12 | 5112, 5126, 5127FF+5d |  | Zenith | 8706294 |
| 5129 | 36900.37000.37100.37700.38700.40100.41500.100900.1567800 | IPS flooring work | 7d | 2026-03-12 | 2026-03-19 | 5113, 5128 |  | Zenith | 8706304 |
| 5130 | 36900.37000.37100.37700.38700.40100.41500.100900.1567900 | Toilet dado work | 6d | 2026-03-12 | 2026-03-18 | 5114, 5127, 5128 |  | Zenith | 8706314 |
| 5131 | 36900.37000.37100.37700.38700.40100.41500.100900.1568000 | Toilet flooring work | 7d | 2026-03-18 | 2026-03-25 | 5115, 5130 |  | Zenith | 8706324 |
| 5132 | 36900.37000.37100.37700.38700.40100.41500.100900.1568100 | False Cieling panel fixing | 7d | 2026-03-25 | 2026-04-01 | 5116, 5131 |  | Zenith | 8706334 |
| 5133 | 36900.37000.37100.37700.38700.40100.41500.100900.1568200 | Living dinning flooring | 7d | 2026-03-25 | 2026-04-01 | 5117, 5131 |  | Zenith | 8706344 |
| 5134 | 36900.37000.37100.37700.38700.40100.41500.100900.1568300 | Aluminium door-window fixing | 8d | 2026-05-13 | 2026-05-20 | 5119, 5129, 5133 |  | Zenith | 8706354 |
| 5135 | 36900.37000.37100.37700.38700.40100.41500.100900.1568400 | Putty primer coat | 12d | 2026-04-01 | 2026-04-13 | 5118, 5133 |  | Zenith | 8706364 |
| 5136 | 36900.37000.37100.37700.38700.40100.41500.100900.1568500 | Door shutter fixing (Pre Hung) | 8d | 2026-04-13 | 2026-04-21 | 5120, 5135 |  | Zenith | 8706374 |
| 5137 | 36900.37000.37100.37700.38700.40100.41500.100900.1568600 | Electrical wiring work | 10d | 2026-05-01 | 2026-05-10 | 5121, 5136 |  | Zenith | 8706384 |
| 5138 | 36900.37000.37100.37700.38700.40100.41500.100900.1568700 | Painting 1st coat | 12d | 2026-06-08 | 2026-06-19 | 5122, 5137 |  | Zenith | 8706394 |
| 5139 | 36900.37000.37100.37700.38700.40100.41500.101000 | **16th floor roof** | 125.75d | 2026-02-26 | 2026-07-01 |  | start no earlier than 2026-02-26 | Zenith | 8650284 |
| 5140 | 36900.37000.37100.37700.38700.40100.41500.101000.1568800 | Block Work | 6d | 2026-02-26 | 2026-03-04 | 4874, 5124 |  | Zenith | 8706404 |
| 5141 | 36900.37000.37100.37700.38700.40100.41500.101000.1568900 | Fire sprinkler pipe fixing | 5d | 2026-03-04 | 2026-03-09 | 5125, 5140 |  | Zenith | 8706414 |
| 5142 | 36900.37000.37100.37700.38700.40100.41500.101000.1569000 | Internal Plumbing Works | 5d | 2026-03-04 | 2026-03-09 | 5126, 5140 |  | Zenith | 8706424 |
| 5143 | 36900.37000.37100.37700.38700.40100.41500.101000.1569100 | Waterproofing | 5d | 2026-03-09 | 2026-03-14 | 5127, 5142 |  | Zenith | 8706434 |
| 5144 | 36900.37000.37100.37700.38700.40100.41500.101000.1569200 | Internal Plaster | 9d | 2026-03-12 | 2026-03-21 | 5128, 5142, 5143FF+5d |  | Zenith | 8706444 |
| 5145 | 36900.37000.37100.37700.38700.40100.41500.101000.1569300 | IPS flooring work | 7d | 2026-03-21 | 2026-03-28 | 5129, 5144 |  | Zenith | 8706454 |
| 5146 | 36900.37000.37100.37700.38700.40100.41500.101000.1569400 | Toilet dado work | 6d | 2026-03-21 | 2026-03-27 | 5130, 5143, 5144 |  | Zenith | 8706464 |
| 5147 | 36900.37000.37100.37700.38700.40100.41500.101000.1569500 | Toilet flooring work | 7d | 2026-03-27 | 2026-04-03 | 5131, 5146 |  | Zenith | 8706474 |
| 5148 | 36900.37000.37100.37700.38700.40100.41500.101000.1569600 | False Cieling panel fixing | 7d | 2026-04-03 | 2026-04-10 | 5132, 5147 |  | Zenith | 8706484 |
| 5149 | 36900.37000.37100.37700.38700.40100.41500.101000.1569700 | Living dinning flooring | 7d | 2026-04-03 | 2026-04-10 | 5133, 5147 |  | Zenith | 8706494 |
| 5150 | 36900.37000.37100.37700.38700.40100.41500.101000.1569800 | Putty primer coat | 8d | 2026-04-13 | 2026-04-21 | 5135, 5149 |  | Zenith | 8706504 |
| 5151 | 36900.37000.37100.37700.38700.40100.41500.101000.1569900 | Aluminium door-window fixing | 12d | 2026-05-21 | 2026-06-01 | 5134, 5145, 5149 |  | Zenith | 8706514 |
| 5152 | 36900.37000.37100.37700.38700.40100.41500.101000.1570000 | Door shutter fixing (Pre Hung) | 8d | 2026-04-21 | 2026-04-29 | 5136, 5150 |  | Zenith | 8706524 |
| 5153 | 36900.37000.37100.37700.38700.40100.41500.101000.1570100 | Electrical wiring work | 10d | 2026-05-11 | 2026-05-20 | 5137, 5152 |  | Zenith | 8706534 |
| 5154 | 36900.37000.37100.37700.38700.40100.41500.101000.1570200 | Painting 1st coat | 12d | 2026-06-20 | 2026-07-01 | 5138, 5153 |  | Zenith | 8706544 |

| ID | WBS | Task | Duration | Start | Finish | Predecessors | Constraint | Calendar | Unique_Task_ID |
| --- | --- | --- | --- | --- | --- | --- | --- | --- | --- |
| 5155 | 36900.37000.37100.37700.38700.40100.41500.101100 | **17th floor roof** | 129.75d | 2026-03-06 | 2026-07-13 |  | start no earlier than 2026-03-06 | Zenith | 8650294 |
| 5156 | 36900.37000.37100.37700.38700.40100.41500.101100.1570300 | Block Work | 6d | 2026-03-06 | 2026-03-12 | 4875, 5140 |  | Zenith | 8706554 |
| 5157 | 36900.37000.37100.37700.38700.40100.41500.101100.1570400 | Fire sprinkler pipe fixing | 5d | 2026-03-12 | 2026-03-17 | 5141, 5156 |  | Zenith | 8706564 |
| 5158 | 36900.37000.37100.37700.38700.40100.41500.101100.1570500 | Internal Plumbing Works | 5d | 2026-03-12 | 2026-03-17 | 5142, 5156 |  | Zenith | 8706574 |
| 5159 | 36900.37000.37100.37700.38700.40100.41500.101100.1570600 | Waterproofing | 5d | 2026-03-17 | 2026-03-22 | 5143, 5158 |  | Zenith | 8706584 |
| 5160 | 36900.37000.37100.37700.38700.40100.41500.101100.1570700 | Internal Plaster | 9d | 2026-03-21 | 2026-03-30 | 5144, 5158, 5159FF+5d |  | Zenith | 8706594 |
| 5161 | 36900.37000.37100.37700.38700.40100.41500.101100.1570800 | IPS flooring work | 7d | 2026-03-30 | 2026-04-06 | 5145, 5160 |  | Zenith | 8706604 |
| 5162 | 36900.37000.37100.37700.38700.40100.41500.101100.1570900 | Toilet dado work | 6d | 2026-03-30 | 2026-04-05 | 5146, 5159, 5160 |  | Zenith | 8706614 |
| 5163 | 36900.37000.37100.37700.38700.40100.41500.101100.1571000 | Toilet flooring work | 7d | 2026-04-05 | 2026-04-12 | 5147, 5162 |  | Zenith | 8706624 |
| 5164 | 36900.37000.37100.37700.38700.40100.41500.101100.1571100 | False Cieling panel fixing | 7d | 2026-04-12 | 2026-04-19 | 5148, 5163 |  | Zenith | 8706634 |
| 5165 | 36900.37000.37100.37700.38700.40100.41500.101100.1571200 | Living dinning flooring | 7d | 2026-04-12 | 2026-04-19 | 5149, 5163 |  | Zenith | 8706644 |
| 5166 | 36900.37000.37100.37700.38700.40100.41500.101100.1571300 | Putty primer coat | 8d | 2026-04-21 | 2026-04-29 | 5150, 5165 |  | Zenith | 8706654 |
| 5167 | 36900.37000.37100.37700.38700.40100.41500.101100.1571400 | Aluminium door-window fixing | 12d | 2026-06-02 | 2026-06-13 | 5151, 5161, 5165 |  | Zenith | 8706664 |
| 5168 | 36900.37000.37100.37700.38700.40100.41500.101100.1571500 | Door shutter fixing (Pre Hung) | 8d | 2026-04-29 | 2026-05-07 | 5152, 5166 |  | Zenith | 8706674 |
| 5169 | 36900.37000.37100.37700.38700.40100.41500.101100.1571600 | Electrical wiring work | 10d | 2026-05-21 | 2026-05-30 | 5153, 5168 |  | Zenith | 8706684 |
| 5170 | 36900.37000.37100.37700.38700.40100.41500.101100.1571700 | Painting 1st coat | 12d | 2026-07-02 | 2026-07-13 | 5154, 5169 |  | Zenith | 8706694 |
| 5171 | 36900.37000.37100.37700.38700.40100.41500.101200 | **18th floor roof** | 133.75d | 2026-03-14 | 2026-07-25 |  | start no earlier than 2026-03-14 | Zenith | 8650304 |
| 5172 | 36900.37000.37100.37700.38700.40100.41500.101200.1571800 | Block Work | 6d | 2026-03-14 | 2026-03-20 | 4876, 5156 |  | Zenith | 8706704 |
| 5173 | 36900.37000.37100.37700.38700.40100.41500.101200.1571900 | Fire sprinkler pipe fixing | 5d | 2026-03-20 | 2026-03-25 | 5157, 5172 |  | Zenith | 8706714 |
| 5174 | 36900.37000.37100.37700.38700.40100.41500.101200.1572000 | Internal Plumbing Works | 5d | 2026-03-20 | 2026-03-25 | 5158, 5172 |  | Zenith | 8706724 |
| 5175 | 36900.37000.37100.37700.38700.40100.41500.101200.1572100 | Waterproofing | 5d | 2026-03-25 | 2026-03-30 | 5159, 5174 |  | Zenith | 8706734 |
| 5176 | 36900.37000.37100.37700.38700.40100.41500.101200.1572200 | Internal Plaster | 9d | 2026-03-30 | 2026-04-08 | 5160, 5174, 5175FF+5d |  | Zenith | 8706744 |
| 5177 | 36900.37000.37100.37700.38700.40100.41500.101200.1572300 | IPS flooring work | 7d | 2026-04-08 | 2026-04-15 | 5161, 5176 |  | Zenith | 8706754 |
| 5178 | 36900.37000.37100.37700.38700.40100.41500.101200.1572400 | Toilet dado work | 6d | 2026-04-08 | 2026-04-14 | 5162, 5175, 5176 |  | Zenith | 8706764 |
| 5179 | 36900.37000.37100.37700.38700.40100.41500.101200.1572500 | Toilet flooring work | 7d | 2026-04-14 | 2026-04-21 | 5163, 5178 |  | Zenith | 8706774 |
| 5180 | 36900.37000.37100.37700.38700.40100.41500.101200.1572600 | False Cieling panel fixing | 7d | 2026-04-21 | 2026-04-28 | 5164, 5179 |  | Zenith | 8706784 |
| 5181 | 36900.37000.37100.37700.38700.40100.41500.101200.1572700 | Living dinning flooring | 7d | 2026-04-21 | 2026-04-28 | 5165, 5179 |  | Zenith | 8706794 |
| 5182 | 36900.37000.37100.37700.38700.40100.41500.101200.1572800 | Putty primer coat | 8d | 2026-04-29 | 2026-05-07 | 5166, 5181 |  | Zenith | 8706804 |
| 5183 | 36900.37000.37100.37700.38700.40100.41500.101200.1572900 | Aluminium door-window fixing | 12d | 2026-06-14 | 2026-06-25 | 5167, 5177, 5181 |  | Zenith | 8706814 |
| 5184 | 36900.37000.37100.37700.38700.40100.41500.101200.1573000 | Door shutter fixing (Pre Hung) | 8d | 2026-05-07 | 2026-05-15 | 5168, 5182 |  | Zenith | 8706824 |
| 5185 | 36900.37000.37100.37700.38700.40100.41500.101200.1573100 | Electrical wiring work | 10d | 2026-05-31 | 2026-06-09 | 5169, 5184 |  | Zenith | 8706834 |
| 5186 | 36900.37000.37100.37700.38700.40100.41500.101200.1573200 | Painting 1st coat | 12d | 2026-07-14 | 2026-07-25 | 5170, 5185 |  | Zenith | 8706844 |

| ID | WBS | Task | Duration | Start | Finish | Predecessors | Constraint | Calendar | Unique_Task_ID |
| --- | --- | --- | --- | --- | --- | --- | --- | --- | --- |
| 5187 | 36900.37000.37100.37700.38700.40100.41500.101300 | **19th floor roof** | 137.75d | 2026-03-22 | 2026-08-06 |  | start no earlier than 2026-03-22 | Zenith | 8650314 |
| 5188 | 36900.37000.37100.37700.38700.40100.41500.101300.1573300 | Block Work | 6d | 2026-03-22 | 2026-03-28 | 4877, 5172 |  | Zenith | 8706854 |
| 5189 | 36900.37000.37100.37700.38700.40100.41500.101300.1573400 | Fire sprinkler pipe fixing | 4d | 2026-03-28 | 2026-04-01 | 5173, 5188 |  | Zenith | 8706864 |
| 5190 | 36900.37000.37100.37700.38700.40100.41500.101300.1573500 | Internal Plumbing Works | 4d | 2026-03-28 | 2026-04-01 | 5174, 5188 |  | Zenith | 8706874 |
| 5191 | 36900.37000.37100.37700.38700.40100.41500.101300.1573600 | Waterproofing | 4d | 2026-04-01 | 2026-04-05 | 5175, 5190 |  | Zenith | 8706884 |
| 5192 | 36900.37000.37100.37700.38700.40100.41500.101300.1573700 | Internal Plaster | 9d | 2026-04-08 | 2026-04-17 | 5176, 5190, 5191FF+5d |  | Zenith | 8706894 |
| 5193 | 36900.37000.37100.37700.38700.40100.41500.101300.1573800 | IPS flooring work | 7d | 2026-04-17 | 2026-04-24 | 5177, 5192 |  | Zenith | 8706904 |
| 5194 | 36900.37000.37100.37700.38700.40100.41500.101300.1573900 | Toilet dado work | 6d | 2026-04-17 | 2026-04-23 | 5178, 5191, 5192 |  | Zenith | 8706914 |
| 5195 | 36900.37000.37100.37700.38700.40100.41500.101300.1574000 | Toilet flooring work | 7d | 2026-04-23 | 2026-04-30 | 5179, 5194 |  | Zenith | 8706924 |
| 5196 | 36900.37000.37100.37700.38700.40100.41500.101300.1574100 | False Cieling panel fixing | 7d | 2026-04-30 | 2026-05-07 | 5180, 5195 |  | Zenith | 8706934 |
| 5197 | 36900.37000.37100.37700.38700.40100.41500.101300.1574200 | Living dinning flooring | 7d | 2026-04-30 | 2026-05-07 | 5181, 5195 |  | Zenith | 8706944 |
| 5198 | 36900.37000.37100.37700.38700.40100.41500.101300.1574300 | Putty primer coat | 8d | 2026-05-07 | 2026-05-15 | 5182, 5197 |  | Zenith | 8706954 |
| 5199 | 36900.37000.37100.37700.38700.40100.41500.101300.1574400 | Aluminium door-window fixing | 12d | 2026-06-26 | 2026-07-07 | 5183, 5193, 5197 |  | Zenith | 8706964 |
| 5200 | 36900.37000.37100.37700.38700.40100.41500.101300.1574500 | Door shutter fixing (Pre Hung) | 8d | 2026-05-15 | 2026-05-23 | 5184, 5198 |  | Zenith | 8706974 |
| 5201 | 36900.37000.37100.37700.38700.40100.41500.101300.1574600 | Electrical wiring work | 10d | 2026-06-10 | 2026-06-19 | 5185, 5200 |  | Zenith | 8706984 |
| 5202 | 36900.37000.37100.37700.38700.40100.41500.101300.1574700 | Painting 1st coat | 12d | 2026-07-26 | 2026-08-06 | 5186, 5201 |  | Zenith | 8706994 |
| 5203 | 36900.37000.37100.37700.38700.40100.41500.101400 | **20th floor roof** | 141.75d | 2026-03-30 | 2026-08-18 |  | start no earlier than 2026-03-30 | Zenith | 8650324 |
| 5204 | 36900.37000.37100.37700.38700.40100.41500.101400.1574800 | Block Work | 6d | 2026-03-30 | 2026-04-05 | 4878, 5188 |  | Zenith | 8707004 |
| 5205 | 36900.37000.37100.37700.38700.40100.41500.101400.1574900 | Fire sprinkler pipe fixing | 4d | 2026-04-05 | 2026-04-09 | 5189, 5204 |  | Zenith | 8707014 |
| 5206 | 36900.37000.37100.37700.38700.40100.41500.101400.1575000 | Internal Plumbing Works | 4d | 2026-04-05 | 2026-04-09 | 5190, 5204 |  | Zenith | 8707024 |
| 5207 | 36900.37000.37100.37700.38700.40100.41500.101400.1575100 | Waterproofing | 4d | 2026-04-09 | 2026-04-13 | 5191, 5206 |  | Zenith | 8707034 |
| 5208 | 36900.37000.37100.37700.38700.40100.41500.101400.1575200 | Internal Plaster | 9d | 2026-04-17 | 2026-04-26 | 5192, 5206, 5207FF+5d |  | Zenith | 8707044 |
| 5209 | 36900.37000.37100.37700.38700.40100.41500.101400.1575300 | IPS flooring work | 7d | 2026-04-26 | 2026-05-03 | 5193, 5208 |  | Zenith | 8707054 |
| 5210 | 36900.37000.37100.37700.38700.40100.41500.101400.1575400 | Toilet dado work | 6d | 2026-04-26 | 2026-05-02 | 5194, 5207, 5208 |  | Zenith | 8707064 |
| 5211 | 36900.37000.37100.37700.38700.40100.41500.101400.1575500 | Toilet flooring work | 7d | 2026-05-02 | 2026-05-09 | 5195, 5210 |  | Zenith | 8707074 |
| 5212 | 36900.37000.37100.37700.38700.40100.41500.101400.1575600 | False Cieling panel fixing | 7d | 2026-05-09 | 2026-05-16 | 5196, 5211 |  | Zenith | 8707084 |
| 5213 | 36900.37000.37100.37700.38700.40100.41500.101400.1575700 | Living dinning flooring | 7d | 2026-05-09 | 2026-05-16 | 5197, 5211 |  | Zenith | 8707094 |
| 5214 | 36900.37000.37100.37700.38700.40100.41500.101400.1575800 | Putty primer coat | 8d | 2026-05-16 | 2026-05-24 | 5198, 5213 |  | Zenith | 8707104 |
| 5215 | 36900.37000.37100.37700.38700.40100.41500.101400.1575900 | Aluminium door-window fixing | 12d | 2026-07-08 | 2026-07-19 | 5199, 5209, 5213 |  | Zenith | 8707114 |
| 5216 | 36900.37000.37100.37700.38700.40100.41500.101400.1576000 | Door shutter fixing (Pre Hung) | 8d | 2026-05-24 | 2026-06-01 | 5200, 5214 |  | Zenith | 8707124 |
| 5217 | 36900.37000.37100.37700.38700.40100.41500.101400.1576100 | Electrical wiring work | 10d | 2026-06-20 | 2026-06-29 | 5201, 5216 |  | Zenith | 8707134 |
| 5218 | 36900.37000.37100.37700.38700.40100.41500.101400.1576200 | Painting 1st coat | 12d | 2026-08-07 | 2026-08-18 | 5202, 5217 |  | Zenith | 8707144 |

| ID | WBS | Task | Duration | Start | Finish | Predecessors | Constraint | Calendar | Unique_Task_ID |
| --- | --- | --- | --- | --- | --- | --- | --- | --- | --- |
| 5219 | 36900.37000.37100.37700.38700.40100.41500.101500 | **21st floor roof** | 145.75d | 2026-04-07 | 2026-08-30 |  | start no earlier than 2026-04-07 | Zenith | 8650334 |
| 5220 | 36900.37000.37100.37700.38700.40100.41500.101500.1576300 | Block Work | 6d | 2026-04-07 | 2026-04-13 | 4879, 5204 |  | Zenith | 8707154 |
| 5221 | 36900.37000.37100.37700.38700.40100.41500.101500.1576400 | Fire sprinkler pipe fixing | 4d | 2026-04-13 | 2026-04-17 | 5205, 5220 |  | Zenith | 8707164 |
| 5222 | 36900.37000.37100.37700.38700.40100.41500.101500.1576500 | Internal Plumbing Works | 4d | 2026-04-13 | 2026-04-17 | 5206, 5220 |  | Zenith | 8707174 |
| 5223 | 36900.37000.37100.37700.38700.40100.41500.101500.1576600 | Waterproofing | 4d | 2026-04-17 | 2026-04-21 | 5207, 5222 |  | Zenith | 8707184 |
| 5224 | 36900.37000.37100.37700.38700.40100.41500.101500.1576700 | Internal Plaster | 10d | 2026-04-26 | 2026-05-06 | 5208, 5222, 5223FF+5d |  | Zenith | 8707194 |
| 5225 | 36900.37000.37100.37700.38700.40100.41500.101500.1576800 | IPS flooring work | 7d | 2026-05-06 | 2026-05-13 | 5209, 5224 |  | Zenith | 8707204 |
| 5226 | 36900.37000.37100.37700.38700.40100.41500.101500.1576900 | Toilet dado work | 6d | 2026-05-06 | 2026-05-12 | 5210, 5223, 5224 |  | Zenith | 8707214 |
| 5227 | 36900.37000.37100.37700.38700.40100.41500.101500.1577000 | Toilet flooring work | 7d | 2026-05-12 | 2026-05-19 | 5211, 5226 |  | Zenith | 8707224 |
| 5228 | 36900.37000.37100.37700.38700.40100.41500.101500.1577100 | False Cieling panel fixing | 7d | 2026-05-19 | 2026-05-26 | 5212, 5227 |  | Zenith | 8707234 |
| 5229 | 36900.37000.37100.37700.38700.40100.41500.101500.1577200 | Living dinning flooring | 7d | 2026-05-19 | 2026-05-26 | 5213, 5227 |  | Zenith | 8707244 |
| 5230 | 36900.37000.37100.37700.38700.40100.41500.101500.1577300 | Putty primer coat | 8d | 2026-05-26 | 2026-06-03 | 5214, 5229 |  | Zenith | 8707254 |
| 5231 | 36900.37000.37100.37700.38700.40100.41500.101500.1577400 | Aluminium door-window fixing | 12d | 2026-07-20 | 2026-07-31 | 5215, 5225, 5229 |  | Zenith | 8707264 |
| 5232 | 36900.37000.37100.37700.38700.40100.41500.101500.1577500 | Door shutter fixing (Pre Hung) | 8d | 2026-06-03 | 2026-06-11 | 5216, 5230 |  | Zenith | 8707274 |
| 5233 | 36900.37000.37100.37700.38700.40100.41500.101500.1577600 | Electrical wiring work | 10d | 2026-06-30 | 2026-07-09 | 5217, 5232 |  | Zenith | 8707284 |
| 5234 | 36900.37000.37100.37700.38700.40100.41500.101500.1577700 | Painting 1st coat | 12d | 2026-08-19 | 2026-08-30 | 5218, 5233 |  | Zenith | 8707294 |
| 5235 | 36900.37000.37100.37700.38700.40100.41500.101600 | **22nd floor roof** | 149.75d | 2026-04-15 | 2026-09-11 |  | start no earlier than 2026-04-15 | Zenith | 8650344 |
| 5236 | 36900.37000.37100.37700.38700.40100.41500.101600.1577800 | Block Work | 6d | 2026-04-15 | 2026-04-21 | 4880, 5220 |  | Zenith | 8707304 |
| 5237 | 36900.37000.37100.37700.38700.40100.41500.101600.1577900 | Fire sprinkler pipe fixing | 4d | 2026-04-21 | 2026-04-25 | 5221, 5236 |  | Zenith | 8707314 |
| 5238 | 36900.37000.37100.37700.38700.40100.41500.101600.1578000 | Internal Plumbing Works | 4d | 2026-04-21 | 2026-04-25 | 5222, 5236 |  | Zenith | 8707324 |
| 5239 | 36900.37000.37100.37700.38700.40100.41500.101600.1578100 | Waterproofing | 4d | 2026-04-25 | 2026-04-29 | 5223, 5238 |  | Zenith | 8707334 |
| 5240 | 36900.37000.37100.37700.38700.40100.41500.101600.1578200 | Internal Plaster | 10d | 2026-05-06 | 2026-05-16 | 5224, 5238, 5239FF+5d |  | Zenith | 8707344 |
| 5241 | 36900.37000.37100.37700.38700.40100.41500.101600.1578300 | IPS flooring work | 7d | 2026-05-16 | 2026-05-23 | 5225, 5240 |  | Zenith | 8707354 |
| 5242 | 36900.37000.37100.37700.38700.40100.41500.101600.1578400 | Toilet dado work | 6d | 2026-05-16 | 2026-05-22 | 5226, 5239, 5240 |  | Zenith | 8707364 |
| 5243 | 36900.37000.37100.37700.38700.40100.41500.101600.1578500 | Toilet flooring work | 7d | 2026-05-22 | 2026-05-29 | 5227, 5242 |  | Zenith | 8707374 |
| 5244 | 36900.37000.37100.37700.38700.40100.41500.101600.1578600 | False Cieling panel fixing | 7d | 2026-05-29 | 2026-06-05 | 5228, 5243 |  | Zenith | 8707384 |
| 5245 | 36900.37000.37100.37700.38700.40100.41500.101600.1578700 | Living dinning flooring | 7d | 2026-05-29 | 2026-06-05 | 5229, 5243 |  | Zenith | 8707394 |
| 5246 | 36900.37000.37100.37700.38700.40100.41500.101600.1578800 | Putty primer coat | 8d | 2026-06-05 | 2026-06-13 | 5230, 5245 |  | Zenith | 8707404 |
| 5247 | 36900.37000.37100.37700.38700.40100.41500.101600.1578900 | Aluminium door-window fixing | 12d | 2026-08-01 | 2026-08-12 | 5231, 5241, 5245 |  | Zenith | 8707414 |
| 5248 | 36900.37000.37100.37700.38700.40100.41500.101600.1579000 | Door shutter fixing (Pre Hung) | 8d | 2026-06-13 | 2026-06-21 | 5232, 5246 |  | Zenith | 8707424 |
| 5249 | 36900.37000.37100.37700.38700.40100.41500.101600.1579100 | Electrical wiring work | 10d | 2026-07-10 | 2026-07-19 | 5233, 5248 |  | Zenith | 8707434 |
| 5250 | 36900.37000.37100.37700.38700.40100.41500.101600.1579200 | Painting 1st coat | 12d | 2026-08-31 | 2026-09-11 | 5234, 5249 |  | Zenith | 8707444 |

| ID | WBS | Task | Duration | Start | Finish | Predecessors | Constraint | Calendar | Unique_Task_ID |
| --- | --- | --- | --- | --- | --- | --- | --- | --- | --- |
| 5251 | 36900.37000.37100.37700.38700.40100.41500.101700 | **23rd floor roof** | 153.75d | 2026-04-23 | 2026-09-23 |  | start no earlier than 2026-04-23 | Zenith | 8650354 |
| 5252 | 36900.37000.37100.37700.38700.40100.41500.101700.1579300 | Block Work | 6d | 2026-04-23 | 2026-04-29 | 4881, 5236 |  | Zenith | 8707454 |
| 5253 | 36900.37000.37100.37700.38700.40100.41500.101700.1579400 | Fire sprinkler pipe fixing | 5d | 2026-04-29 | 2026-05-04 | 5237, 5252 |  | Zenith | 8707464 |
| 5254 | 36900.37000.37100.37700.38700.40100.41500.101700.1579500 | Internal Plumbing Works | 5d | 2026-04-29 | 2026-05-04 | 5238, 5252 |  | Zenith | 8707474 |
| 5255 | 36900.37000.37100.37700.38700.40100.41500.101700.1579600 | Waterproofing | 5d | 2026-05-04 | 2026-05-09 | 5239, 5254 |  | Zenith | 8707484 |
| 5256 | 36900.37000.37100.37700.38700.40100.41500.101700.1579700 | Internal Plaster | 9d | 2026-05-16 | 2026-05-25 | 5240, 5254, 5255FF+5d |  | Zenith | 8707494 |
| 5257 | 36900.37000.37100.37700.38700.40100.41500.101700.1579800 | IPS flooring work | 7d | 2026-05-25 | 2026-06-01 | 5241, 5256 |  | Zenith | 8707504 |
| 5258 | 36900.37000.37100.37700.38700.40100.41500.101700.1579900 | Toilet dado work | 6d | 2026-05-25 | 2026-05-31 | 5242, 5255, 5256 |  | Zenith | 8707514 |
| 5259 | 36900.37000.37100.37700.38700.40100.41500.101700.1580000 | Toilet flooring work | 7d | 2026-05-31 | 2026-06-07 | 5243, 5258 |  | Zenith | 8707524 |
| 5260 | 36900.37000.37100.37700.38700.40100.41500.101700.1580100 | False Cieling panel fixing | 7d | 2026-06-07 | 2026-06-14 | 5244, 5259 |  | Zenith | 8707534 |
| 5261 | 36900.37000.37100.37700.38700.40100.41500.101700.1580200 | Living dinning flooring | 7d | 2026-06-07 | 2026-06-14 | 5245, 5259 |  | Zenith | 8707544 |
| 5262 | 36900.37000.37100.37700.38700.40100.41500.101700.1580300 | Putty primer coat | 8d | 2026-06-14 | 2026-06-22 | 5246, 5261 |  | Zenith | 8707554 |
| 5263 | 36900.37000.37100.37700.38700.40100.41500.101700.1580400 | Aluminium door-window fixing | 12d | 2026-08-13 | 2026-08-24 | 5247, 5257, 5261 |  | Zenith | 8707564 |
| 5264 | 36900.37000.37100.37700.38700.40100.41500.101700.1580500 | Door shutter fixing (Pre Hung) | 8d | 2026-06-22 | 2026-06-30 | 5248, 5262 |  | Zenith | 8707574 |
| 5265 | 36900.37000.37100.37700.38700.40100.41500.101700.1580600 | Electrical wiring work | 10d | 2026-07-20 | 2026-07-29 | 5249, 5264 |  | Zenith | 8707584 |
| 5266 | 36900.37000.37100.37700.38700.40100.41500.101700.1580700 | Painting 1st coat | 12d | 2026-09-12 | 2026-09-23 | 5250, 5265 |  | Zenith | 8707594 |
| 5267 | 36900.37000.37100.37700.38700.40100.41500.101800 | **24th floor roof** | 157.75d | 2026-05-01 | 2026-10-05 |  | start no earlier than 2026-05-01 | Zenith | 8650364 |
| 5268 | 36900.37000.37100.37700.38700.40100.41500.101800.1580800 | Block Work | 6d | 2026-05-01 | 2026-05-07 | 4882, 5252 |  | Zenith | 8707604 |
| 5269 | 36900.37000.37100.37700.38700.40100.41500.101800.1580900 | Fire sprinkler pipe fixing | 5d | 2026-05-07 | 2026-05-12 | 5253, 5268 |  | Zenith | 8707614 |
| 5270 | 36900.37000.37100.37700.38700.40100.41500.101800.1581000 | Internal Plumbing Works | 5d | 2026-05-07 | 2026-05-12 | 5254, 5268 |  | Zenith | 8707624 |
| 5271 | 36900.37000.37100.37700.38700.40100.41500.101800.1581100 | Waterproofing | 5d | 2026-05-12 | 2026-05-17 | 5255, 5270 |  | Zenith | 8707634 |
| 5272 | 36900.37000.37100.37700.38700.40100.41500.101800.1581200 | Internal Plaster | 9d | 2026-05-25 | 2026-06-03 | 5256, 5270, 5271FF+5d |  | Zenith | 8707644 |
| 5273 | 36900.37000.37100.37700.38700.40100.41500.101800.1581300 | IPS flooring work | 7d | 2026-06-03 | 2026-06-10 | 5257, 5272 |  | Zenith | 8707654 |
| 5274 | 36900.37000.37100.37700.38700.40100.41500.101800.1581400 | Toilet dado work | 6d | 2026-06-03 | 2026-06-09 | 5258, 5271, 5272 |  | Zenith | 8707664 |
| 5275 | 36900.37000.37100.37700.38700.40100.41500.101800.1581500 | Toilet flooring work | 7d | 2026-06-09 | 2026-06-16 | 5259, 5274 |  | Zenith | 8707674 |
| 5276 | 36900.37000.37100.37700.38700.40100.41500.101800.1581600 | False Cieling panel fixing | 7d | 2026-06-16 | 2026-06-23 | 5260, 5275 |  | Zenith | 8707684 |
| 5277 | 36900.37000.37100.37700.38700.40100.41500.101800.1581700 | Living dinning flooring | 7d | 2026-06-16 | 2026-06-23 | 5261, 5275 |  | Zenith | 8707694 |
| 5278 | 36900.37000.37100.37700.38700.40100.41500.101800.1581800 | Putty primer coat | 8d | 2026-06-23 | 2026-07-01 | 5262, 5277 |  | Zenith | 8707704 |
| 5279 | 36900.37000.37100.37700.38700.40100.41500.101800.1581900 | Aluminium door-window fixing | 12d | 2026-08-25 | 2026-09-05 | 5263, 5273, 5277 |  | Zenith | 8707714 |
| 5280 | 36900.37000.37100.37700.38700.40100.41500.101800.1582000 | Door shutter fixing (Pre Hung) | 8d | 2026-07-01 | 2026-07-09 | 5264, 5278 |  | Zenith | 8707724 |
| 5281 | 36900.37000.37100.37700.38700.40100.41500.101800.1582100 | Electrical wiring work | 10d | 2026-07-30 | 2026-08-08 | 5265, 5280 |  | Zenith | 8707734 |
| 5282 | 36900.37000.37100.37700.38700.40100.41500.101800.1582200 | Painting 1st coat | 12d | 2026-09-24 | 2026-10-05 | 5266, 5281 |  | Zenith | 8707744 |

| ID | WBS | Task | Duration | Start | Finish | Predecessors | Constraint | Calendar | Unique_Task_ID |
| --- | --- | --- | --- | --- | --- | --- | --- | --- | --- |
| 5283 | 36900.37000.37100.37700.38700.40100.41500.101900 | **25th floor roof** | 161.75d | 2026-05-09 | 2026-10-17 |  | start no earlier than 2026-05-09 | Zenith | 8650374 |
| 5284 | 36900.37000.37100.37700.38700.40100.41500.101900.1582300 | Block Work | 6d | 2026-05-09 | 2026-05-15 | 4883, 5268 |  | Zenith | 8707754 |
| 5285 | 36900.37000.37100.37700.38700.40100.41500.101900.1582400 | Fire sprinkler pipe fixing | 5d | 2026-05-15 | 2026-05-20 | 5269, 5284 |  | Zenith | 8707764 |
| 5286 | 36900.37000.37100.37700.38700.40100.41500.101900.1582500 | Internal Plumbing Works | 5d | 2026-05-15 | 2026-05-20 | 5270, 5284 |  | Zenith | 8707774 |
| 5287 | 36900.37000.37100.37700.38700.40100.41500.101900.1582600 | Waterproofing | 5d | 2026-05-20 | 2026-05-25 | 5271, 5286 |  | Zenith | 8707784 |
| 5288 | 36900.37000.37100.37700.38700.40100.41500.101900.1582700 | Internal Plaster | 9d | 2026-06-03 | 2026-06-12 | 5272, 5286, 5287FF+5d |  | Zenith | 8707794 |
| 5289 | 36900.37000.37100.37700.38700.40100.41500.101900.1582800 | IPS flooring work | 7d | 2026-06-12 | 2026-06-19 | 5273, 5288 |  | Zenith | 8707804 |
| 5290 | 36900.37000.37100.37700.38700.40100.41500.101900.1582900 | Toilet dado work | 6d | 2026-06-12 | 2026-06-18 | 5274, 5287, 5288 |  | Zenith | 8707814 |
| 5291 | 36900.37000.37100.37700.38700.40100.41500.101900.1583000 | Toilet flooring work | 7d | 2026-06-18 | 2026-06-25 | 5275, 5290 |  | Zenith | 8707824 |
| 5292 | 36900.37000.37100.37700.38700.40100.41500.101900.1583100 | False Cieling panel fixing | 7d | 2026-06-25 | 2026-07-02 | 5276, 5291 |  | Zenith | 8707834 |
| 5293 | 36900.37000.37100.37700.38700.40100.41500.101900.1583200 | Living dinning flooring | 7d | 2026-06-25 | 2026-07-02 | 5277, 5291 |  | Zenith | 8707844 |
| 5294 | 36900.37000.37100.37700.38700.40100.41500.101900.1583300 | Putty primer coat | 8d | 2026-07-02 | 2026-07-10 | 5278, 5293 |  | Zenith | 8707854 |
| 5295 | 36900.37000.37100.37700.38700.40100.41500.101900.1583400 | Aluminium door-window fixing | 12d | 2026-09-06 | 2026-09-17 | 5279, 5289, 5293 |  | Zenith | 8707864 |
| 5296 | 36900.37000.37100.37700.38700.40100.41500.101900.1583500 | Door shutter fixing (Pre Hung) | 8d | 2026-07-10 | 2026-07-18 | 5280, 5294 |  | Zenith | 8707874 |
| 5297 | 36900.37000.37100.37700.38700.40100.41500.101900.1583600 | Electrical wiring work | 10d | 2026-08-09 | 2026-08-18 | 5281, 5296 |  | Zenith | 8707884 |
| 5298 | 36900.37000.37100.37700.38700.40100.41500.101900.1583700 | Painting 1st coat | 12d | 2026-10-06 | 2026-10-17 | 5282, 5297 |  | Zenith | 8707894 |
| 5299 | 36900.37000.37100.37700.38700.40100.41500.102000 | **26th floor roof** | 165.75d | 2026-05-17 | 2026-10-29 |  | start no earlier than 2026-05-17 | Zenith | 8650384 |
| 5300 | 36900.37000.37100.37700.38700.40100.41500.102000.1583800 | Block Work | 7d | 2026-05-17 | 2026-05-24 | 4884, 5284 |  | Zenith | 8707904 |
| 5301 | 36900.37000.37100.37700.38700.40100.41500.102000.1583900 | Fire sprinkler pipe fixing | 7d | 2026-05-24 | 2026-05-31 | 5285, 5300 |  | Zenith | 8707914 |
| 5302 | 36900.37000.37100.37700.38700.40100.41500.102000.1584000 | Internal Plumbing Works | 7d | 2026-05-24 | 2026-05-31 | 5286, 5300 |  | Zenith | 8707924 |
| 5303 | 36900.37000.37100.37700.38700.40100.41500.102000.1584100 | Waterproofing | 7d | 2026-05-31 | 2026-06-07 | 5287, 5302 |  | Zenith | 8707934 |
| 5304 | 36900.37000.37100.37700.38700.40100.41500.102000.1584200 | Internal Plaster | 7d | 2026-06-12 | 2026-06-19 | 5288, 5302, 5303FF+5d |  | Zenith | 8707944 |
| 5305 | 36900.37000.37100.37700.38700.40100.41500.102000.1584300 | IPS flooring work | 7d | 2026-06-19 | 2026-06-26 | 5289, 5304 |  | Zenith | 8707954 |
| 5306 | 36900.37000.37100.37700.38700.40100.41500.102000.1584400 | Toilet dado work | 6d | 2026-06-19 | 2026-06-25 | 5290, 5303, 5304 |  | Zenith | 8707964 |
| 5307 | 36900.37000.37100.37700.38700.40100.41500.102000.1584500 | Toilet flooring work | 7d | 2026-06-25 | 2026-07-02 | 5291, 5306 |  | Zenith | 8707974 |
| 5308 | 36900.37000.37100.37700.38700.40100.41500.102000.1584600 | False Cieling panel fixing | 7d | 2026-07-02 | 2026-07-09 | 5292, 5307 |  | Zenith | 8707984 |
| 5309 | 36900.37000.37100.37700.38700.40100.41500.102000.1584700 | Living dinning flooring | 7d | 2026-07-02 | 2026-07-09 | 5293, 5307 |  | Zenith | 8707994 |
| 5310 | 36900.37000.37100.37700.38700.40100.41500.102000.1584800 | Putty primer coat | 8d | 2026-07-10 | 2026-07-18 | 5294, 5309 |  | Zenith | 8708004 |
| 5311 | 36900.37000.37100.37700.38700.40100.41500.102000.1584900 | Aluminium door-window fixing | 12d | 2026-09-18 | 2026-09-29 | 5295, 5305, 5309 |  | Zenith | 8708014 |
| 5312 | 36900.37000.37100.37700.38700.40100.41500.102000.1585000 | Door shutter fixing (Pre Hung) | 8d | 2026-07-18 | 2026-07-26 | 5296, 5310 |  | Zenith | 8708024 |
| 5313 | 36900.37000.37100.37700.38700.40100.41500.102000.1585100 | Electrical wiring work | 10d | 2026-08-19 | 2026-08-28 | 5297, 5312 |  | Zenith | 8708034 |
| 5314 | 36900.37000.37100.37700.38700.40100.41500.102000.1585200 | Painting 1st coat | 12d | 2026-10-18 | 2026-10-29 | 5298, 5313 |  | Zenith | 8708044 |

| ID | WBS | Task | Duration | Start | Finish | Predecessors | Constraint | Calendar | Unique_Task_ID |
| --- | --- | --- | --- | --- | --- | --- | --- | --- | --- |
| 5315 | 36900.37000.37100.37700.38700.40100.41500.102100 | **27th floor roof** | 167.75d | 2026-05-27 | 2026-12-25 |  | start no earlier than 2026-05-27 | Zenith | 8650394 |
| 5316 | 36900.37000.37100.37700.38700.40100.41500.102100.1585300 | Block Work | 7d | 2026-05-27 | 2026-06-03 | 4885, 5300 |  | Zenith | 8708054 |
| 5317 | 36900.37000.37100.37700.38700.40100.41500.102100.1585400 | Fire sprinkler pipe fixing | 7d | 2026-06-03 | 2026-06-10 | 5301, 5316 |  | Zenith | 8708064 |
| 5318 | 36900.37000.37100.37700.38700.40100.41500.102100.1585500 | Internal Plumbing Works | 7d | 2026-06-03 | 2026-06-10 | 5302, 5316 |  | Zenith | 8708074 |
| 5319 | 36900.37000.37100.37700.38700.40100.41500.102100.1585600 | Waterproofing | 7d | 2026-06-10 | 2026-06-17 | 5303, 5318 |  | Zenith | 8708084 |
| 5320 | 36900.37000.37100.37700.38700.40100.41500.102100.1585700 | Internal Plaster | 7d | 2026-06-19 | 2026-06-26 | 5304, 5318, 5319FF+5d |  | Zenith | 8708094 |
| 5321 | 36900.37000.37100.37700.38700.40100.41500.102100.1585800 | IPS flooring work | 7d | 2026-06-26 | 2026-07-03 | 5305, 5320 |  | Zenith | 8708104 |
| 5322 | 36900.37000.37100.37700.38700.40100.41500.102100.1585900 | Toilet dado work | 6d | 2026-06-26 | 2026-07-02 | 5306, 5319, 5320 |  | Zenith | 8708114 |
| 5323 | 36900.37000.37100.37700.38700.40100.41500.102100.1586000 | Toilet flooring work | 7d | 2026-07-02 | 2026-07-09 | 5307, 5322 |  | Zenith | 8708124 |
| 5324 | 36900.37000.37100.37700.38700.40100.41500.102100.1586100 | False Cieling panel fixing | 7d | 2026-07-09 | 2026-07-16 | 5308, 5323 |  | Zenith | 8708134 |
| 5325 | 36900.37000.37100.37700.38700.40100.41500.102100.1586200 | Living dinning flooring | 7d | 2026-07-09 | 2026-07-16 | 5309, 5323 |  | Zenith | 8708144 |
| 5326 | 36900.37000.37100.37700.38700.40100.41500.102100.1586300 | Putty primer coat | 8d | 2026-07-18 | 2026-07-26 | 5310, 5325 |  | Zenith | 8708154 |
| 5327 | 36900.37000.37100.37700.38700.40100.41500.102100.1586400 | Aluminium door-window fixing | 12d | 2026-09-30 | 2026-10-11 | 5311, 5321, 5325 |  | Zenith | 8708164 |
| 5328 | 36900.37000.37100.37700.38700.40100.41500.102100.1586500 | Door shutter fixing (Pre Hung) | 8d | 2026-07-26 | 2026-08-03 | 5312, 5326 |  | Zenith | 8708174 |
| 5329 | 36900.37000.37100.37700.38700.40100.41500.102100.1586600 | Electrical wiring work | 10d | 2026-08-29 | 2026-09-07 | 5313, 5328 |  | Zenith | 8708184 |
| 5330 | 36900.37000.37100.37700.38700.40100.41500.102100.1586700 | Painting 1st coat | 12d | 2026-10-30 | 2026-12-25 | 5314, 5329 |  | Zenith | 8708194 |
| 5331 | 36900.37000.37100.37700.38700.40100.41500.102200 | **28th floor roof** | 169.75d | 2026-06-06 | 2027-01-06 |  | start no earlier than 2026-06-06 | Zenith | 8650404 |
| 5332 | 36900.37000.37100.37700.38700.40100.41500.102200.1586800 | Block Work | 7d | 2026-06-06 | 2026-06-13 | 4886, 5316 |  | Zenith | 8708204 |
| 5333 | 36900.37000.37100.37700.38700.40100.41500.102200.1586900 | Fire sprinkler pipe fixing | 7d | 2026-06-13 | 2026-06-20 | 5317, 5332 |  | Zenith | 8708214 |
| 5334 | 36900.37000.37100.37700.38700.40100.41500.102200.1587000 | Internal Plumbing Works | 7d | 2026-06-13 | 2026-06-20 | 5318, 5332 |  | Zenith | 8708224 |
| 5335 | 36900.37000.37100.37700.38700.40100.41500.102200.1587100 | Waterproofing | 7d | 2026-06-20 | 2026-06-27 | 5319, 5334 |  | Zenith | 8708234 |
| 5336 | 36900.37000.37100.37700.38700.40100.41500.102200.1587200 | Internal Plaster | 7d | 2026-06-26 | 2026-07-03 | 5320, 5334, 5335FF+5d |  | Zenith | 8708244 |
| 5337 | 36900.37000.37100.37700.38700.40100.41500.102200.1587300 | IPS flooring work | 7d | 2026-07-03 | 2026-07-10 | 5321, 5336 |  | Zenith | 8708254 |
| 5338 | 36900.37000.37100.37700.38700.40100.41500.102200.1587400 | Toilet dado work | 6d | 2026-07-03 | 2026-07-09 | 5322, 5335, 5336 |  | Zenith | 8708264 |
| 5339 | 36900.37000.37100.37700.38700.40100.41500.102200.1587500 | Toilet flooring work | 7d | 2026-07-09 | 2026-07-16 | 5323, 5338 |  | Zenith | 8708274 |
| 5340 | 36900.37000.37100.37700.38700.40100.41500.102200.1587600 | False Cieling panel fixing | 7d | 2026-07-16 | 2026-07-23 | 5324, 5339 |  | Zenith | 8708284 |
| 5341 | 36900.37000.37100.37700.38700.40100.41500.102200.1587700 | Living dinning flooring | 7d | 2026-07-16 | 2026-07-23 | 5325, 5339 |  | Zenith | 8708294 |
| 5342 | 36900.37000.37100.37700.38700.40100.41500.102200.1587800 | Putty primer coat | 8d | 2026-07-26 | 2026-08-03 | 5326, 5341 |  | Zenith | 8708304 |
| 5343 | 36900.37000.37100.37700.38700.40100.41500.102200.1587900 | Aluminium door-window fixing | 12d | 2026-10-12 | 2026-10-23 | 5327, 5337, 5341 |  | Zenith | 8708314 |
| 5344 | 36900.37000.37100.37700.38700.40100.41500.102200.1588000 | Door shutter fixing (Pre Hung) | 8d | 2026-08-03 | 2026-08-11 | 5328, 5342 |  | Zenith | 8708324 |
| 5345 | 36900.37000.37100.37700.38700.40100.41500.102200.1588100 | Electrical wiring work | 10d | 2026-09-08 | 2026-09-17 | 5329, 5344 |  | Zenith | 8708334 |
| 5346 | 36900.37000.37100.37700.38700.40100.41500.102200.1588200 | Painting 1st coat | 12d | 2026-12-26 | 2027-01-06 | 5330, 5345 |  | Zenith | 8708344 |

| ID | WBS | Task | Duration | Start | Finish | Predecessors | Constraint | Calendar | Unique_Task_ID |
| --- | --- | --- | --- | --- | --- | --- | --- | --- | --- |
| 5347 | 36900.37000.37100.37700.38700.40100.41500.102300 | **29th floor roof** | 171.75d | 2026-06-16 | 2027-01-18 |  | start no earlier than 2026-06-16 | Zenith | 8650414 |
| 5348 | 36900.37000.37100.37700.38700.40100.41500.102300.1588300 | Block Work | 7d | 2026-06-16 | 2026-06-23 | 4887, 5332 |  | Zenith | 8708354 |
| 5349 | 36900.37000.37100.37700.38700.40100.41500.102300.1588400 | Fire sprinkler pipe fixing | 7d | 2026-06-23 | 2026-06-30 | 5333, 5348 |  | Zenith | 8708364 |
| 5350 | 36900.37000.37100.37700.38700.40100.41500.102300.1588500 | Internal Plumbing Works | 7d | 2026-06-23 | 2026-06-30 | 5334, 5348 |  | Zenith | 8708374 |
| 5351 | 36900.37000.37100.37700.38700.40100.41500.102300.1588600 | Waterproofing | 7d | 2026-06-30 | 2026-07-07 | 5335, 5350 |  | Zenith | 8708384 |
| 5352 | 36900.37000.37100.37700.38700.40100.41500.102300.1588700 | Internal Plaster | 7d | 2026-07-05 | 2026-07-12 | 5336, 5350, 5351FF+5d |  | Zenith | 8708394 |
| 5353 | 36900.37000.37100.37700.38700.40100.41500.102300.1588800 | IPS flooring work | 7d | 2026-07-12 | 2026-07-19 | 5337, 5352 |  | Zenith | 8708404 |
| 5354 | 36900.37000.37100.37700.38700.40100.41500.102300.1588900 | Toilet dado work | 6d | 2026-07-12 | 2026-07-18 | 5338, 5351, 5352 |  | Zenith | 8708414 |
| 5355 | 36900.37000.37100.37700.38700.40100.41500.102300.1589000 | Toilet flooring work | 7d | 2026-07-18 | 2026-07-25 | 5339, 5354 |  | Zenith | 8708424 |
| 5356 | 36900.37000.37100.37700.38700.40100.41500.102300.1589100 | False Cieling panel fixing | 7d | 2026-07-25 | 2026-08-01 | 5340, 5355 |  | Zenith | 8708434 |
| 5357 | 36900.37000.37100.37700.38700.40100.41500.102300.1589200 | Living dinning flooring | 7d | 2026-07-25 | 2026-08-01 | 5341, 5355 |  | Zenith | 8708444 |
| 5358 | 36900.37000.37100.37700.38700.40100.41500.102300.1589300 | Putty primer coat | 8d | 2026-08-03 | 2026-08-11 | 5342, 5357 |  | Zenith | 8708454 |
| 5359 | 36900.37000.37100.37700.38700.40100.41500.102300.1589400 | Aluminium door-window fixing | 12d | 2026-10-24 | 2026-12-19 | 5343, 5353, 5357 |  | Zenith | 8708464 |
| 5360 | 36900.37000.37100.37700.38700.40100.41500.102300.1589500 | Door shutter fixing (Pre Hung) | 8d | 2026-08-11 | 2026-08-19 | 5344, 5358 |  | Zenith | 8708474 |
| 5361 | 36900.37000.37100.37700.38700.40100.41500.102300.1589600 | Electrical wiring work | 10d | 2026-09-18 | 2026-09-27 | 5345, 5360 |  | Zenith | 8708484 |
| 5362 | 36900.37000.37100.37700.38700.40100.41500.102300.1589700 | Painting 1st coat | 12d | 2027-01-07 | 2027-01-18 | 5346, 5361 |  | Zenith | 8708494 |
| 5363 | 36900.37000.37100.37700.38700.40100.41500.102400 | **30th floor roof** | 176.75d | 2026-06-26 | 2027-02-02 |  | start no earlier than 2026-06-26 | Zenith | 8650424 |
| 5364 | 36900.37000.37100.37700.38700.40100.41500.102400.1589800 | Block Work | 10d | 2026-06-26 | 2026-07-06 | 4888, 5348 |  | Zenith | 8708504 |
| 5365 | 36900.37000.37100.37700.38700.40100.41500.102400.1589900 | Fire sprinkler pipe fixing | 6d | 2026-07-06 | 2026-07-12 | 5349, 5364 |  | Zenith | 8708514 |
| 5366 | 36900.37000.37100.37700.38700.40100.41500.102400.1590000 | Internal Plumbing Works | 10d | 2026-07-06 | 2026-07-16 | 5350, 5364 |  | Zenith | 8708524 |
| 5367 | 36900.37000.37100.37700.38700.40100.41500.102400.1590100 | Waterproofing | 14d | 2026-07-16 | 2026-07-30 | 5351, 5366 |  | Zenith | 8708534 |
| 5368 | 36900.37000.37100.37700.38700.40100.41500.102400.1590200 | Internal Plaster | 14d | 2026-07-21 | 2026-08-04 | 5352, 5366, 5367FF+5d |  | Zenith | 8708544 |
| 5369 | 36900.37000.37100.37700.38700.40100.41500.102400.1590300 | IPS flooring work | 10d | 2026-08-04 | 2026-08-14 | 5353, 5368 |  | Zenith | 8708554 |
| 5370 | 36900.37000.37100.37700.38700.40100.41500.102400.1590400 | Toilet dado work | 10d | 2026-08-04 | 2026-08-14 | 5354, 5367, 5368 |  | Zenith | 8708564 |
| 5371 | 36900.37000.37100.37700.38700.40100.41500.102400.1590500 | Toilet flooring work | 7d | 2026-08-14 | 2026-08-21 | 5355, 5370 |  | Zenith | 8708574 |
| 5372 | 36900.37000.37100.37700.38700.40100.41500.102400.1590600 | False Cieling panel fixing | 10d | 2026-08-21 | 2026-08-31 | 5356, 5371 |  | Zenith | 8708584 |
| 5373 | 36900.37000.37100.37700.38700.40100.41500.102400.1590700 | Living dinning flooring | 13d | 2026-08-21 | 2026-09-03 | 5357, 5371 |  | Zenith | 8708594 |
| 5374 | 36900.37000.37100.37700.38700.40100.41500.102400.1590800 | Putty primer coat | 12d | 2026-09-03 | 2026-09-15 | 5358, 5373 |  | Zenith | 8708604 |
| 5375 | 36900.37000.37100.37700.38700.40100.41500.102400.1590900 | Aluminium door-window fixing | 15d | 2026-12-20 | 2027-01-03 | 5359, 5369, 5373 |  | Zenith | 8708614 |
| 5376 | 36900.37000.37100.37700.38700.40100.41500.102400.1591000 | Door shutter fixing (Pre Hung) | 8d | 2026-09-15 | 2026-09-23 | 5360, 5374 |  | Zenith | 8708624 |
| 5377 | 36900.37000.37100.37700.38700.40100.41500.102400.1591100 | Electrical wiring work | 12d | 2026-09-28 | 2026-10-09 | 5361, 5376 |  | Zenith | 8708634 |
| 5378 | 36900.37000.37100.37700.38700.40100.41500.102400.1591200 | Painting 1st coat | 15d | 2027-01-19 | 2027-02-02 | 5362, 5377 |  | Zenith | 8708644 |

| ID | WBS | Task | Duration | Start | Finish | Predecessors | Constraint | Calendar | Unique_Task_ID |
| --- | --- | --- | --- | --- | --- | --- | --- | --- | --- |
| 5379 | 36900.37000.37100.37700.38700.40100.41500.102500 | **31st floor roof** | 181.75d | 2026-07-06 | 2027-02-17 |  | start no earlier than 2026-07-06 | Zenith | 8650434 |
| 5380 | 36900.37000.37100.37700.38700.40100.41500.102500.1591300 | Block Work | 10d | 2026-07-06 | 2026-07-16 | 4889, 5364 |  | Zenith | 8708654 |
| 5381 | 36900.37000.37100.37700.38700.40100.41500.102500.1591400 | Fire sprinkler pipe fixing | 6d | 2026-07-16 | 2026-07-22 | 5365, 5380 |  | Zenith | 8708664 |
| 5382 | 36900.37000.37100.37700.38700.40100.41500.102500.1591500 | Internal Plumbing Works | 10d | 2026-07-16 | 2026-07-26 | 5366, 5380 |  | Zenith | 8708674 |
| 5383 | 36900.37000.37100.37700.38700.40100.41500.102500.1591600 | Waterproofing | 14d | 2026-07-30 | 2026-08-13 | 5367, 5382 |  | Zenith | 8708684 |
| 5384 | 36900.37000.37100.37700.38700.40100.41500.102500.1591700 | Internal Plaster | 14d | 2026-08-04 | 2026-08-18 | 5368, 5382, 5383FF+5d |  | Zenith | 8708694 |
| 5385 | 36900.37000.37100.37700.38700.40100.41500.102500.1591800 | IPS flooring work | 10d | 2026-08-18 | 2026-08-28 | 5369, 5384 |  | Zenith | 8708704 |
| 5386 | 36900.37000.37100.37700.38700.40100.41500.102500.1591900 | Toilet dado work | 10d | 2026-08-18 | 2026-08-28 | 5370, 5383, 5384 |  | Zenith | 8708714 |
| 5387 | 36900.37000.37100.37700.38700.40100.41500.102500.1592000 | Toilet flooring work | 7d | 2026-08-28 | 2026-09-04 | 5371, 5386 |  | Zenith | 8708724 |
| 5388 | 36900.37000.37100.37700.38700.40100.41500.102500.1592100 | False Cieling panel fixing | 10d | 2026-09-04 | 2026-09-14 | 5372, 5387 |  | Zenith | 8708734 |
| 5389 | 36900.37000.37100.37700.38700.40100.41500.102500.1592200 | Living dinning flooring | 13d | 2026-09-04 | 2026-09-17 | 5373, 5387 |  | Zenith | 8708744 |
| 5390 | 36900.37000.37100.37700.38700.40100.41500.102500.1592300 | Putty primer coat | 12d | 2026-09-17 | 2026-09-29 | 5374, 5389 |  | Zenith | 8708754 |
| 5391 | 36900.37000.37100.37700.38700.40100.41500.102500.1592400 | Aluminium door-window fixing | 15d | 2027-01-04 | 2027-01-18 | 5375, 5385, 5389 |  | Zenith | 8708764 |
| 5392 | 36900.37000.37100.37700.38700.40100.41500.102500.1592500 | Door shutter fixing (Pre Hung) | 8d | 2026-09-29 | 2026-10-07 | 5376, 5390 |  | Zenith | 8708774 |
| 5393 | 36900.37000.37100.37700.38700.40100.41500.102500.1592600 | Electrical wiring work | 12d | 2026-10-10 | 2026-10-21 | 5377, 5392 |  | Zenith | 8708784 |
| 5394 | 36900.37000.37100.37700.38700.40100.41500.102500.1592700 | Painting 1st coat | 15d | 2027-02-03 | 2027-02-17 | 5378, 5393 |  | Zenith | 8708794 |
| 5395 | 36900.37000.37100.37700.38700.40100.41500.102600 | **32nd floor roof** | 186.75d | 2026-07-16 | 2027-03-04 |  | start no earlier than 2026-07-16 | Zenith | 8650444 |
| 5396 | 36900.37000.37100.37700.38700.40100.41500.102600.1592800 | Block Work | 10d | 2026-07-16 | 2026-07-26 | 4890, 5380 |  | Zenith | 8708804 |
| 5397 | 36900.37000.37100.37700.38700.40100.41500.102600.1592900 | Fire sprinkler pipe fixing | 6d | 2026-07-26 | 2026-08-01 | 5381, 5396 |  | Zenith | 8708814 |
| 5398 | 36900.37000.37100.37700.38700.40100.41500.102600.1593000 | Internal Plumbing Works | 10d | 2026-07-26 | 2026-08-05 | 5382, 5396 |  | Zenith | 8708824 |
| 5399 | 36900.37000.37100.37700.38700.40100.41500.102600.1593100 | Waterproofing | 14d | 2026-08-13 | 2026-08-27 | 5383, 5398 |  | Zenith | 8708834 |
| 5400 | 36900.37000.37100.37700.38700.40100.41500.102600.1593200 | Internal Plaster | 14d | 2026-08-18 | 2026-09-01 | 5384, 5398, 5399FF+5d |  | Zenith | 8708844 |
| 5401 | 36900.37000.37100.37700.38700.40100.41500.102600.1593300 | IPS flooring work | 10d | 2026-09-01 | 2026-09-11 | 5385, 5400 |  | Zenith | 8708854 |
| 5402 | 36900.37000.37100.37700.38700.40100.41500.102600.1593400 | Toilet dado work | 10d | 2026-09-01 | 2026-09-11 | 5386, 5399, 5400 |  | Zenith | 8708864 |
| 5403 | 36900.37000.37100.37700.38700.40100.41500.102600.1593500 | Toilet flooring work | 7d | 2026-09-11 | 2026-09-18 | 5387, 5402 |  | Zenith | 8708874 |
| 5404 | 36900.37000.37100.37700.38700.40100.41500.102600.1593600 | False Cieling panel fixing | 10d | 2026-09-18 | 2026-09-28 | 5388, 5403 |  | Zenith | 8708884 |
| 5405 | 36900.37000.37100.37700.38700.40100.41500.102600.1593700 | Living dinning flooring | 13d | 2026-09-18 | 2026-10-01 | 5389, 5403 |  | Zenith | 8708894 |
| 5406 | 36900.37000.37100.37700.38700.40100.41500.102600.1593800 | Putty primer coat | 12d | 2026-10-01 | 2026-10-13 | 5390, 5405 |  | Zenith | 8708904 |
| 5407 | 36900.37000.37100.37700.38700.40100.41500.102600.1593900 | Aluminium door-window fixing | 15d | 2027-01-19 | 2027-02-02 | 5391, 5401, 5405 |  | Zenith | 8708914 |
| 5408 | 36900.37000.37100.37700.38700.40100.41500.102600.1594000 | Door shutter fixing (Pre Hung) | 8d | 2026-10-13 | 2026-10-21 | 5392, 5406 |  | Zenith | 8708924 |
| 5409 | 36900.37000.37100.37700.38700.40100.41500.102600.1594100 | Electrical wiring work | 12d | 2026-10-22 | 2026-12-17 | 5393, 5408 |  | Zenith | 8708934 |
| 5410 | 36900.37000.37100.37700.38700.40100.41500.102600.1594200 | Painting 1st coat | 15d | 2027-02-18 | 2027-03-04 | 5394, 5409 |  | Zenith | 8708944 |

| ID | WBS | Task | Duration | Start | Finish | Predecessors | Constraint | Calendar | Unique_Task_ID |
| --- | --- | --- | --- | --- | --- | --- | --- | --- | --- |
| 5411 | 36900.37000.37100.37700.38700.40100.41500.102700 | **33rd floor roof** | 183.75d | 2026-08-03 | 2027-03-19 |  | start no earlier than 2026-08-03 | Zenith | 8650454 |
| 5412 | 36900.37000.37100.37700.38700.40100.41500.102700.1594300 | Block Work | 10d | 2026-08-03 | 2026-08-13 | 4891, 5396 |  | Zenith | 8708954 |
| 5413 | 36900.37000.37100.37700.38700.40100.41500.102700.1594400 | Fire sprinkler pipe fixing | 6d | 2026-08-13 | 2026-08-19 | 5397, 5412 |  | Zenith | 8708964 |
| 5414 | 36900.37000.37100.37700.38700.40100.41500.102700.1594500 | Internal Plumbing Works | 10d | 2026-08-13 | 2026-08-23 | 5398, 5412 |  | Zenith | 8708974 |
| 5415 | 36900.37000.37100.37700.38700.40100.41500.102700.1594600 | Waterproofing | 14d | 2026-08-27 | 2026-09-10 | 5399, 5414 |  | Zenith | 8708984 |
| 5416 | 36900.37000.37100.37700.38700.40100.41500.102700.1594700 | Internal Plaster | 14d | 2026-09-01 | 2026-09-15 | 5400, 5414, 5415FF+5d |  | Zenith | 8708994 |
| 5417 | 36900.37000.37100.37700.38700.40100.41500.102700.1594800 | IPS flooring work | 10d | 2026-09-15 | 2026-09-25 | 5401, 5416 |  | Zenith | 8709004 |
| 5418 | 36900.37000.37100.37700.38700.40100.41500.102700.1594900 | Toilet dado work | 10d | 2026-09-15 | 2026-09-25 | 5402, 5415, 5416 |  | Zenith | 8709014 |
| 5419 | 36900.37000.37100.37700.38700.40100.41500.102700.1595000 | Toilet flooring work | 7d | 2026-09-25 | 2026-10-02 | 5403, 5418 |  | Zenith | 8709024 |
| 5420 | 36900.37000.37100.37700.38700.40100.41500.102700.1595100 | False Cieling panel fixing | 10d | 2026-10-02 | 2026-10-12 | 5404, 5419 |  | Zenith | 8709034 |
| 5421 | 36900.37000.37100.37700.38700.40100.41500.102700.1595200 | Living dinning flooring | 13d | 2026-10-02 | 2026-10-15 | 5405, 5419 |  | Zenith | 8709044 |
| 5422 | 36900.37000.37100.37700.38700.40100.41500.102700.1595300 | Putty primer coat | 12d | 2026-10-15 | 2026-10-27 | 5406, 5421 |  | Zenith | 8709054 |
| 5423 | 36900.37000.37100.37700.38700.40100.41500.102700.1595400 | Aluminium door-window fixing | 15d | 2027-02-03 | 2027-02-17 | 5407, 5417, 5421 |  | Zenith | 8709064 |
| 5424 | 36900.37000.37100.37700.38700.40100.41500.102700.1595500 | Door shutter fixing (Pre Hung) | 8d | 2026-10-27 | 2026-12-19 | 5408, 5422 |  | Zenith | 8709074 |
| 5425 | 36900.37000.37100.37700.38700.40100.41500.102700.1595600 | Electrical wiring work | 12d | 2026-12-19 | 2026-12-31 | 5409, 5424 |  | Zenith | 8709084 |
| 5426 | 36900.37000.37100.37700.38700.40100.41500.102700.1595700 | Painting 1st coat | 15d | 2027-03-05 | 2027-03-19 | 5410, 5425 |  | Zenith | 8709094 |
| 5427 | 36900.37000.37100.37700.38700.40100.41500.102800 | **34th floor roof** | 188.75d | 2026-08-13 | 2027-04-03 |  | start no earlier than 2026-08-13 | Zenith | 8650464 |
| 5428 | 36900.37000.37100.37700.38700.40100.41500.102800.1595800 | Block Work | 10d | 2026-08-13 | 2026-08-23 | 4892, 5412 |  | Zenith | 8709104 |
| 5429 | 36900.37000.37100.37700.38700.40100.41500.102800.1595900 | Fire sprinkler pipe fixing | 6d | 2026-08-23 | 2026-08-29 | 5413, 5428 |  | Zenith | 8709114 |
| 5430 | 36900.37000.37100.37700.38700.40100.41500.102800.1596000 | Internal Plumbing Works | 10d | 2026-08-23 | 2026-09-02 | 5414, 5428 |  | Zenith | 8709124 |
| 5431 | 36900.37000.37100.37700.38700.40100.41500.102800.1596100 | Waterproofing | 14d | 2026-09-10 | 2026-09-24 | 5415, 5430 |  | Zenith | 8709134 |
| 5432 | 36900.37000.37100.37700.38700.40100.41500.102800.1596200 | Internal Plaster | 14d | 2026-09-15 | 2026-09-29 | 5416, 5430, 5431FF+5d |  | Zenith | 8709144 |
| 5433 | 36900.37000.37100.37700.38700.40100.41500.102800.1596300 | IPS flooring work | 10d | 2026-09-29 | 2026-10-09 | 5417, 5432 |  | Zenith | 8709154 |
| 5434 | 36900.37000.37100.37700.38700.40100.41500.102800.1596400 | Toilet dado work | 10d | 2026-09-29 | 2026-10-09 | 5418, 5431, 5432 |  | Zenith | 8709164 |
| 5435 | 36900.37000.37100.37700.38700.40100.41500.102800.1596500 | Toilet flooring work | 7d | 2026-10-09 | 2026-10-16 | 5419, 5434 |  | Zenith | 8709174 |
| 5436 | 36900.37000.37100.37700.38700.40100.41500.102800.1596600 | False Cieling panel fixing | 10d | 2026-10-16 | 2026-10-26 | 5420, 5435 |  | Zenith | 8709184 |
| 5437 | 36900.37000.37100.37700.38700.40100.41500.102800.1596700 | Living dinning flooring | 13d | 2026-10-16 | 2026-10-29 | 5421, 5435 |  | Zenith | 8709194 |
| 5438 | 36900.37000.37100.37700.38700.40100.41500.102800.1596800 | Putty primer coat | 12d | 2026-10-29 | 2026-12-25 | 5422, 5437 |  | Zenith | 8709204 |
| 5439 | 36900.37000.37100.37700.38700.40100.41500.102800.1596900 | Aluminium door-window fixing | 15d | 2027-02-18 | 2027-03-04 | 5423, 5433, 5437 |  | Zenith | 8709214 |
| 5440 | 36900.37000.37100.37700.38700.40100.41500.102800.1597000 | Door shutter fixing (Pre Hung) | 8d | 2026-12-25 | 2027-01-02 | 5424, 5438 |  | Zenith | 8709224 |
| 5441 | 36900.37000.37100.37700.38700.40100.41500.102800.1597100 | Electrical wiring work | 12d | 2027-01-02 | 2027-01-14 | 5425, 5440 |  | Zenith | 8709234 |
| 5442 | 36900.37000.37100.37700.38700.40100.41500.102800.1597200 | Painting 1st coat | 15d | 2027-03-20 | 2027-04-03 | 5426, 5441 |  | Zenith | 8709244 |

| ID | WBS | Task | Duration | Start | Finish | Predecessors | Constraint | Calendar | Unique_Task_ID |
| --- | --- | --- | --- | --- | --- | --- | --- | --- | --- |
| 5443 | 36900.37000.37100.37700.38700.40100.41500.102900 | **35th floor roof** | 193.75d | 2026-08-23 | 2027-04-18 |  | start no earlier than 2026-08-23 | Zenith | 8650474 |
| 5444 | 36900.37000.37100.37700.38700.40100.41500.102900.1597300 | Block Work | 10d | 2026-08-23 | 2026-09-02 | 4893, 5428 |  | Zenith | 8709254 |
| 5445 | 36900.37000.37100.37700.38700.40100.41500.102900.1597400 | Fire sprinkler pipe fixing | 6d | 2026-09-02 | 2026-09-08 | 5429, 5444 |  | Zenith | 8709264 |
| 5446 | 36900.37000.37100.37700.38700.40100.41500.102900.1597500 | Internal Plumbing Works | 10d | 2026-09-02 | 2026-09-12 | 5430, 5444 |  | Zenith | 8709274 |
| 5447 | 36900.37000.37100.37700.38700.40100.41500.102900.1597600 | Waterproofing | 14d | 2026-09-24 | 2026-10-08 | 5431, 5446 |  | Zenith | 8709284 |
| 5448 | 36900.37000.37100.37700.38700.40100.41500.102900.1597700 | Internal Plaster | 14d | 2026-09-29 | 2026-10-13 | 5432, 5446, 5447FF+5d |  | Zenith | 8709294 |
| 5449 | 36900.37000.37100.37700.38700.40100.41500.102900.1597800 | IPS flooring work | 10d | 2026-10-13 | 2026-10-23 | 5433, 5448 |  | Zenith | 8709304 |
| 5450 | 36900.37000.37100.37700.38700.40100.41500.102900.1597900 | Toilet dado work | 10d | 2026-10-13 | 2026-10-23 | 5434, 5447, 5448 |  | Zenith | 8709314 |
| 5451 | 36900.37000.37100.37700.38700.40100.41500.102900.1598000 | Toilet flooring work | 7d | 2026-10-23 | 2026-10-30 | 5435, 5450 |  | Zenith | 8709324 |
| 5452 | 36900.37000.37100.37700.38700.40100.41500.102900.1598100 | False Cieling panel fixing | 10d | 2026-10-30 | 2026-12-24 | 5436, 5451 |  | Zenith | 8709334 |
| 5453 | 36900.37000.37100.37700.38700.40100.41500.102900.1598200 | Living dinning flooring | 13d | 2026-10-30 | 2026-12-27 | 5437, 5451 |  | Zenith | 8709344 |
| 5454 | 36900.37000.37100.37700.38700.40100.41500.102900.1598300 | Putty primer coat | 12d | 2026-12-27 | 2027-01-08 | 5438, 5453 |  | Zenith | 8709354 |
| 5455 | 36900.37000.37100.37700.38700.40100.41500.102900.1598400 | Aluminium door-window fixing | 15d | 2027-03-05 | 2027-03-19 | 5439, 5449, 5453 |  | Zenith | 8709364 |
| 5456 | 36900.37000.37100.37700.38700.40100.41500.102900.1598500 | Door shutter fixing (Pre Hung) | 8d | 2027-01-08 | 2027-01-16 | 5440, 5454 |  | Zenith | 8709374 |
| 5457 | 36900.37000.37100.37700.38700.40100.41500.102900.1598600 | Electrical wiring work | 12d | 2027-01-16 | 2027-01-28 | 5441, 5456 |  | Zenith | 8709384 |
| 5458 | 36900.37000.37100.37700.38700.40100.41500.102900.1598700 | Painting 1st coat | 15d | 2027-04-04 | 2027-04-18 | 5442, 5457 |  | Zenith | 8709394 |
| 5459 | 36900.37000.37100.37700.38700.40100.41500.58900 | **36th Floor** | 243.75d | 2026-09-02 | 2027-06-17 |  | start no earlier than 2026-09-02 | Zenith | 8648314 |
| 5460 | 36900.37000.37100.37700.38700.40100.41500.58900.1598800 | Block Work | 10d | 2026-09-02 | 2026-09-12 | 4894, 5444 |  | Zenith | 8709404 |
| 5461 | 36900.37000.37100.37700.38700.40100.41500.58900.1598900 | Fire sprinkler pipe fixing | 6d | 2026-09-12 | 2026-09-18 | 5445, 5460 |  | Zenith | 8709414 |
| 5462 | 36900.37000.37100.37700.38700.40100.41500.58900.1599000 | Internal Plumbing Works | 10d | 2026-09-12 | 2026-09-22 | 5446, 5460 |  | Zenith | 8709424 |
| 5463 | 36900.37000.37100.37700.38700.40100.41500.58900.1599100 | Waterproofing | 14d | 2026-10-08 | 2026-10-22 | 5447, 5462 |  | Zenith | 8709434 |
| 5464 | 36900.37000.37100.37700.38700.40100.41500.58900.1599200 | Internal Plaster | 14d | 2026-10-13 | 2026-10-27 | 5448, 5462, 5463FF+5d |  | Zenith | 8709444 |
| 5465 | 36900.37000.37100.37700.38700.40100.41500.58900.1599300 | IPS flooring work | 10d | 2026-10-27 | 2026-12-21 | 5449, 5463, 5464 |  | Zenith | 8709454 |
| 5466 | 36900.37000.37100.37700.38700.40100.41500.58900.1599400 | Toilet dado work | 10d | 2026-12-21 | 2026-12-31 | 5450, 5465 |  | Zenith | 8709464 |
| 5467 | 36900.37000.37100.37700.38700.40100.41500.58900.1599500 | Toilet flooring work | 7d | 2026-12-31 | 2027-01-07 | 5451, 5466 |  | Zenith | 8709474 |
| 5468 | 36900.37000.37100.37700.38700.40100.41500.58900.1599600 | False ceiling | 10d | 2027-01-07 | 2027-01-17 | 5452, 5467 |  | Zenith | 8709484 |
| 5469 | 36900.37000.37100.37700.38700.40100.41500.58900.1599700 | Living dinning flooring | 13d | 2027-01-07 | 2027-01-20 | 5453, 5467 |  | Zenith | 8709494 |
| 5470 | 36900.37000.37100.37700.38700.40100.41500.58900.1599800 | Putty Primer coat | 12d | 2027-01-20 | 2027-02-01 | 5454, 5461, 5468, 5469 |  | Zenith | 8709504 |
| 5471 | 36900.37000.37100.37700.38700.40100.41500.58900.1599900 | Aluminium door-window fixing | 15d | 2027-03-20 | 2027-04-03 | 5455, 5465, 5469 |  | Zenith | 8709514 |
| 5472 | 36900.37000.37100.37700.38700.40100.41500.58900.1600000 | Door shutter fixing (Pre Hung) | 8d | 2027-02-01 | 2027-02-09 | 5456, 5470 |  | Zenith | 8709524 |
| 5473 | 36900.37000.37100.37700.38700.40100.41500.58900.1600100 | Electrical wiring work | 12d | 2027-02-09 | 2027-02-21 | 5457, 5472 |  | Zenith | 8709534 |
| 5474 | 36900.37000.37100.37700.38700.40100.41500.58900.1600200 | Painting 1st coat | 15d | 2027-04-19 | 2027-05-03 | 5458, 5473 |  | Zenith | 8709544 |
| 5475 | 36900.37000.37100.37700.38700.40100.41500.58900.1600300 | Misc. Works | 45d | 2027-05-04 | 2027-06-17 | 5474 |  | Zenith | 8709554 |

| ID | WBS | Task | Duration | Start | Finish | Predecessors | Constraint | Calendar | Unique_Task_ID |
| --- | --- | --- | --- | --- | --- | --- | --- | --- | --- |
| 5476 | 36900.37000.37100.37700.38700.40100.224400 | **Terrace Finishing** | 116d | 2026-09-02 | 2027-02-09 |  | start no earlier than 2026-09-02 | Zenith | 8656804 |
| 5477 | 36900.37000.37100.37700.38700.40100.224400.1002200 | Terrace waterproofing | 40d | 2026-09-02 | 2026-10-11 | 4857FS+2d |  | Zenith | 8683364 |
| 5478 | 36900.37000.37100.37700.38700.40100.224400.1002300 | Terrace finishing | 75d | 2026-10-13 | 2027-02-09 | 5477FS+1d |  | Zenith | 8683354 |
| 5479 | 36900.37000.37100.37700.38700.40100.48100 | **Balcony Railing** | 390d | 2025-10-13 | 2027-02-05 |  | start no earlier than 2025-10-13 | Zenith | 8648114 |
| 5480 | 36900.37000.37100.37700.38700.40100.48100.1002400 | 1st Floor | 8d | 2025-10-13 | 2025-10-21 | 4925FF |  | Zenith | 8683344 |
| 5481 | 36900.37000.37100.37700.38700.40100.48100.1002500 | 2nd Floor | 8d | 2025-10-30 | 2025-12-22 | 5480, 4941 |  | Zenith | 8683334 |
| 5482 | 36900.37000.37100.37700.38700.40100.48100.1002600 | 3rd Floor | 8d | 2025-12-23 | 2025-12-31 | 5481, 4957 |  | Zenith | 8683324 |
| 5483 | 36900.37000.37100.37700.38700.40100.48100.1002700 | 4th Floor | 8d | 2026-01-01 | 2026-01-09 | 5482, 4973 |  | Zenith | 8683314 |
| 5484 | 36900.37000.37100.37700.38700.40100.48100.1002800 | 5th Floor | 8d | 2026-01-10 | 2026-01-18 | 5483, 4989 |  | Zenith | 8683304 |
| 5485 | 36900.37000.37100.37700.38700.40100.48100.1002900 | 6th Floor | 8d | 2026-01-19 | 2026-01-27 | 5484, 5005 |  | Zenith | 8683294 |
| 5486 | 36900.37000.37100.37700.38700.40100.48100.1003000 | 7th Floor | 8d | 2026-01-28 | 2026-02-05 | 5485, 5021 |  | Zenith | 8683284 |
| 5487 | 36900.37000.37100.37700.38700.40100.48100.1003100 | 8th Floor | 8d | 2026-02-06 | 2026-02-14 | 5486, 5037 |  | Zenith | 8683274 |
| 5488 | 36900.37000.37100.37700.38700.40100.48100.1003200 | 9th Floor | 8d | 2026-02-15 | 2026-02-23 | 5487, 5053 |  | Zenith | 8683264 |
| 5489 | 36900.37000.37100.37700.38700.40100.48100.1003300 | 10th Floor | 8d | 2026-02-24 | 2026-03-04 | 5488, 5069 |  | Zenith | 8683254 |
| 5490 | 36900.37000.37100.37700.38700.40100.48100.1003400 | 11th Floor | 8d | 2026-03-05 | 2026-03-13 | 5489, 5085 |  | Zenith | 8683244 |
| 5491 | 36900.37000.37100.37700.38700.40100.48100.1003500 | 12th Floor | 8d | 2026-03-14 | 2026-03-22 | 5490, 5101 |  | Zenith | 8683234 |
| 5492 | 36900.37000.37100.37700.38700.40100.48100.1003600 | 13th Floor | 8d | 2026-03-23 | 2026-03-31 | 5491, 5117 |  | Zenith | 8683224 |
| 5493 | 36900.37000.37100.37700.38700.40100.48100.1003700 | 14th Floor | 8d | 2026-04-01 | 2026-04-09 | 5492, 5133 |  | Zenith | 8683214 |
| 5494 | 36900.37000.37100.37700.38700.40100.48100.1003800 | 15th Floor | 8d | 2026-04-10 | 2026-04-18 | 5493, 5149 |  | Zenith | 8683204 |
| 5495 | 36900.37000.37100.37700.38700.40100.48100.1003900 | 16th Floor | 8d | 2026-04-19 | 2026-04-27 | 5494, 5165 |  | Zenith | 8683194 |
| 5496 | 36900.37000.37100.37700.38700.40100.48100.1004000 | 17th Floor | 8d | 2026-04-28 | 2026-05-06 | 5495, 5181 |  | Zenith | 8683184 |
| 5497 | 36900.37000.37100.37700.38700.40100.48100.1004100 | 18th Floor | 8d | 2026-05-07 | 2026-05-15 | 5496, 5197 |  | Zenith | 8683174 |
| 5498 | 36900.37000.37100.37700.38700.40100.48100.1004200 | 19th Floor | 8d | 2026-05-16 | 2026-05-24 | 5497, 5213 |  | Zenith | 8683164 |
| 5499 | 36900.37000.37100.37700.38700.40100.48100.1004300 | 20th Floor | 8d | 2026-05-26 | 2026-06-03 | 5498, 5229 |  | Zenith | 8683154 |
| 5500 | 36900.37000.37100.37700.38700.40100.48100.1004400 | 21st Floor | 8d | 2026-06-05 | 2026-06-13 | 5499, 5245 |  | Zenith | 8683144 |
| 5501 | 36900.37000.37100.37700.38700.40100.48100.1004500 | 22nd Floor | 8d | 2026-06-14 | 2026-06-22 | 5500, 5261 |  | Zenith | 8683134 |
| 5502 | 36900.37000.37100.37700.38700.40100.48100.1004600 | 23rd Floor | 8d | 2026-06-23 | 2026-07-01 | 5501, 5277 |  | Zenith | 8683124 |
| 5503 | 36900.37000.37100.37700.38700.40100.48100.1004700 | 24th Floor | 8d | 2026-07-02 | 2026-07-10 | 5502, 5293 |  | Zenith | 8683114 |
| 5504 | 36900.37000.37100.37700.38700.40100.48100.1004800 | 25th Floor | 8d | 2026-07-10 | 2026-07-18 | 5503, 5309 |  | Zenith | 8683104 |
| 5505 | 36900.37000.37100.37700.38700.40100.48100.1004900 | 26th Floor | 8d | 2026-07-18 | 2026-07-26 | 5504, 5325 |  | Zenith | 8683094 |
| 5506 | 36900.37000.37100.37700.38700.40100.48100.1005000 | 27th Floor | 8d | 2026-07-26 | 2026-08-03 | 5505, 5341 |  | Zenith | 8683084 |
| 5507 | 36900.37000.37100.37700.38700.40100.48100.1005100 | 28th Floor | 8d | 2026-08-03 | 2026-08-11 | 5506, 5357 |  | Zenith | 8683074 |
| 5508 | 36900.37000.37100.37700.38700.40100.48100.1005200 | 29th Floor | 8d | 2026-09-03 | 2026-09-11 | 5507, 5373 |  | Zenith | 8683064 |
| 5509 | 36900.37000.37100.37700.38700.40100.48100.1005300 | 30th Floor | 8d | 2026-09-17 | 2026-09-25 | 5508, 5389 |  | Zenith | 8683054 |
| 5510 | 36900.37000.37100.37700.38700.40100.48100.1005400 | 31st Floor | 8d | 2026-10-01 | 2026-10-09 | 5509, 5405 |  | Zenith | 8683044 |
| 5511 | 36900.37000.37100.37700.38700.40100.48100.1005500 | 32nd Floor | 8d | 2026-10-15 | 2026-10-23 | 5510, 5421 |  | Zenith | 8683034 |
| 5512 | 36900.37000.37100.37700.38700.40100.48100.1005600 | 33rd Floor | 8d | 2026-10-29 | 2026-12-21 | 5511, 5437 |  | Zenith | 8683024 |
| 5513 | 36900.37000.37100.37700.38700.40100.48100.1005700 | 34th Floor | 8d | 2026-12-27 | 2027-01-04 | 5512, 5453 |  | Zenith | 8683014 |
| 5514 | 36900.37000.37100.37700.38700.40100.48100.1005800 | 35th Floor | 8d | 2027-01-20 | 2027-01-28 | 5513, 5469 |  | Zenith | 8683004 |
| 5515 | 36900.37000.37100.37700.38700.40100.48100.1005900 | 36th Floor | 8d | 2027-01-28 | 2027-02-05 | 5514 |  | Zenith | 8682994 |

| ID | WBS | Task | Duration | Start | Finish | Predecessors | Constraint | Calendar | Unique_Task_ID |
| --- | --- | --- | --- | --- | --- | --- | --- | --- | --- |
| 5516 | 36900.37000.37100.37700.38700.40100.117800 | **Common Area Finishing** | 351d | 2026-04-01 | 2027-05-02 |  | start no earlier than 2026-04-01 | Zenith | 8651664 |
| 5517 | 36900.37000.37100.37700.38700.40100.117800.1006000 | Masonary Work | 40d | 2026-04-01 | 2026-05-11 | 5133 |  | Zenith | 8682984 |
| 5518 | 36900.37000.37100.37700.38700.40100.117800.1006100 | Fire sprinkler pipe fixing | 40d | 2026-05-11 | 2026-06-20 | 5517 |  | Zenith | 8682974 |
| 5519 | 36900.37000.37100.37700.38700.40100.117800.1006200 | Corridoor, staircase, shaft Plaster & whitewash | 120d | 2026-05-11 | 2026-09-08 | 5517 |  | Zenith | 8682964 |
| 5520 | 36900.37000.37100.37700.38700.40100.117800.1006300 | Staircase railing fixing | 100d | 2026-05-11 | 2026-08-19 | 5517 |  | Zenith | 8682954 |
| 5521 | 36900.37000.37100.37700.38700.40100.117800.1006400 | Fire staircase flooring | 120d | 2026-05-21 | 2026-09-18 | 5520FF+30d |  | Zenith | 8682944 |
| 5522 | 36900.37000.37100.37700.38700.40100.117800.1006500 | Main staircase flooring | 120d | 2026-05-21 | 2026-09-18 | 5520FF+30d |  | Zenith | 8682934 |
| 5523 | 36900.37000.37100.37700.38700.40100.117800.1006600 | Fire door work | 45d | 2026-09-18 | 2026-12-17 | 5521 |  | Zenith | 8682924 |
| 5524 | 36900.37000.37100.37700.38700.40100.117800.1006700 | Lobby flooring & Corridor | 120d | 2026-06-20 | 2026-10-18 | 5522FF+30d |  | Zenith | 8682914 |
| 5525 | 36900.37000.37100.37700.38700.40100.117800.1006800 | Ceiling & wall putty | 120d | 2026-09-19 | 2027-03-03 | 5523FF+15d, 5524FF+30d, 5470FF+30d |  | Zenith | 8682904 |
| 5526 | 36900.37000.37100.37700.38700.40100.117800.1006900 | Electrical wiring work | 120d | 2026-10-04 | 2027-03-18 | 5525FF+15d |  | Zenith | 8682894 |
| 5527 | 36900.37000.37100.37700.38700.40100.117800.1007000 | Ceiling & wall painting | 120d | 2026-10-24 | 2027-04-07 | 5518FS+20d, 5525SS+20d, 5526FF+20d |  | Zenith | 8682884 |
| 5528 | 36900.37000.37100.37700.38700.40100.117800.1007100 | Light fixture supply & installation | 45d | 2027-03-18 | 2027-05-02 | 5525, 5527FF+25d |  | Zenith | 8682874 |
| 5529 | 36900.37000.37100.37700.122500 | **MEP work** | 306.75d | 2026-06-25 | 2027-06-11 |  | start no earlier than 2026-06-25 | Zenith | 8651904 |
| 5530 | 36900.37000.37100.37700.122500.126900 | **Electrical work** | 240d | 2026-08-31 | 2027-06-11 |  | start no earlier than 2026-08-31 | Zenith | 8652074 |
| 5531 | 36900.37000.37100.37700.122500.126900.816000 | Cable Tray | 90d | 2026-08-31 | 2027-01-12 | 4857 |  | Zenith | 8722874 |
| 5532 | 36900.37000.37100.37700.122500.126900.816100 | Cable, main & sub main | 60d | 2026-10-15 | 2027-01-27 | 5531SS+45d |  | Zenith | 8722864 |
| 5533 | 36900.37000.37100.37700.122500.126900.816200 | LT panel & DB | 90d | 2027-01-13 | 2027-04-12 | 5531 |  | Zenith | 8722854 |
| 5534 | 36900.37000.37100.37700.122500.126900.816300 | Rising main | 90d | 2027-01-28 | 2027-04-27 | 5531FS+15d |  | Zenith | 8722844 |
| 5535 | 36900.37000.37100.37700.122500.126900.816400 | Earthing Works | 60d | 2027-02-02 | 2027-04-02 | 5531FS+20d |  | Zenith | 8722834 |
| 5536 | 36900.37000.37100.37700.122500.126900.816500 | Energy meter | 60d | 2027-04-13 | 2027-06-11 | 5532, 5535FS+10d |  | Zenith | 8722824 |
| 5537 | 36900.37000.37100.37700.122500.126900.816600 | HVAC & Exhast fan | 120d | 2027-01-08 | 2027-05-07 | 5531FS-5d |  | Zenith | 8722814 |
| 5538 | 36900.37000.37100.37700.122500.126900.816700 | FTTH | 60d | 2027-03-29 | 2027-05-27 | 5533FS-15d |  | Zenith | 8722804 |
| 5539 | 36900.37000.37100.37700.122500.126900.816800 | Security System - FA & PA | 60d | 2027-04-13 | 2027-06-11 | 5533, 5534FF+10d, 5537FF+2d, 5538FF |  | Zenith | 8722794 |

| ID | WBS | Task | Duration | Start | Finish | Predecessors | Constraint | Calendar | Unique_Task_ID |
| --- | --- | --- | --- | --- | --- | --- | --- | --- | --- |
| 5540 | 36900.37000.37100.37700.122500.143500 | **Plumbing work** | 175d | 2026-10-12 | 2027-05-19 |  | start no earlier than 2026-10-12 | Zenith | 8652874 |
| 5541 | 36900.37000.37100.37700.122500.143500.816900 | Terrace looping | 45d | 2026-10-12 | 2027-01-09 | 5477 |  | Zenith | 8722784 |
| 5542 | 36900.37000.37100.37700.122500.143500.817000 | Shaft Plumbing | 70d | 2027-01-10 | 2027-03-20 | 5541, 5519FS-30d |  | Zenith | 8722774 |
| 5543 | 36900.37000.37100.37700.122500.143500.817100 | CP sanitary fixture supply | 45d | 2027-03-21 | 2027-05-04 | 5542 |  | Zenith | 8722764 |
| 5544 | 36900.37000.37100.37700.122500.143500.817200 | Cold & flushing water supply | 45d | 2027-03-21 | 2027-05-04 | 5542 |  | Zenith | 8722754 |
| 5545 | 36900.37000.37100.37700.122500.143500.817300 | Misc work | 30d | 2027-04-20 | 2027-05-19 | 5543FS-15d, 5544FS-15d |  | Zenith | 8722744 |
| 5546 | 36900.37000.37100.37700.122500.169700 | **Fire fighting work** | 213.75d | 2026-06-25 | 2027-03-10 |  | start no earlier than 2026-06-25 | Zenith | 8654054 |
| 5547 | 36900.37000.37100.37700.122500.169700.817400 | Fire hydrant work | 75d | 2026-06-25 | 2026-09-08 | 5519SS+45d |  | Zenith | 8722734 |
| 5548 | 36900.37000.37100.37700.122500.169700.817500 | Pipe connection & sprinkler installation | 45d | 2027-01-25 | 2027-03-10 | 5547FS+1d, 5550FF+15d |  | Zenith | 8722724 |
| 5549 | 36900.37000.37100.37700.122500.169700.817600 | Shaft Downtake works | 60d | 2026-10-12 | 2027-01-24 | 5477, 5519FS-60d |  | Zenith | 8722714 |
| 5550 | 36900.37000.37100.37700.122500.169700.817700 | Connection to pump room | 30d | 2027-01-25 | 2027-02-23 | 5549 |  | Zenith | 8722704 |
| 5551 | 36900.37000.37100.37700.122500.218700 | **Lift work** | 145d | 2026-09-12 | 2027-03-21 |  | start no earlier than 2026-09-12 | Zenith | 8656604 |
| 5552 | 36900.37000.37100.37700.122500.218700.817800 | Lift Shaft/Pit Handover | 40d | 2026-09-12 | 2026-10-22 | 4896FS+5d |  | Zenith | 8722694 |
| 5553 | 36900.37000.37100.37700.122500.218700.817900 | Lift installation work | 60d | 2026-10-22 | 2027-02-04 | 5552 |  | Zenith | 8722684 |
| 5554 | 36900.37000.37100.37700.122500.218700.818000 | Lift testing and commissioning | 45d | 2027-02-04 | 2027-03-21 | 5553, 5524 |  | Zenith | 8722674 |
| 5555 | 36900.37000.37100.37700.227400 | **Basement lobby** | 80d | 2026-12-21 | 2027-03-11 |  | start no earlier than 2026-12-21 | Zenith | 8656894 |
| 5556 | 36900.37000.37100.37700.227400.377400 | Basement lobby | 80d | 2026-12-21 | 2027-03-11 | 5552FS+15d, 4669FS+15d, 4670FS+15d |  | Zenith | 8731324 |
| 5557 | 36900.37000.37100.37700.223400 | **External Paint Works** | 137.75d | 2027-02-05 | 2027-06-22 |  | start no earlier than 2027-02-05 | Zenith | 8656704 |
| 5558 | 36900.37000.37100.37700.223400.377500 | Surface prepration with Primer | 60d | 2027-02-05 | 2027-04-06 | 4896FS+2d, 5515 |  | Zenith | 8731314 |
| 5559 | 36900.37000.37100.37700.223400.377600 | External Painting (Texture & first coat) | 80d | 2027-04-04 | 2027-06-22 | 5558FF+10d, 5471 |  | Zenith | 8731304 |
| 5560 | 36900.37000.37100.37700.272800 | OC Application/Readiness | 2d | 2027-08-22 | 2027-08-23 | 5637FF, 4852FF+348d, 5559FF, 5548FF, 5545FF, 5556FF, 5554FF, 5539FF, 5536FF, 5478FF, 5475FF, 5525FF+0.25d, 5515FF, 5471FF+0.25d, 5578FF, 5585FF, 5591FF, 5595FF, 5587FF+0.25d |  | Zenith | 8735324 |
| 5561 | 36900.37000.37100.37700.272900 | OC Receipt | 60d | 2027-08-24 | 2027-10-22 | 5560 |  | Zenith | 8735314 |
| 5562 | 36900.37000.37100.37700.126000 | **Post OC activities** | 468.75d | 2027-05-17 | 2028-10-11 |  | start no earlier than 2027-05-17 | Zenith | 8652044 |
| 5563 | 36900.37000.37100.37700.126000.377700 | CP & Sanitaryware | 150d | 2027-10-23 | 2028-05-04 | 5561 |  | Zenith | 8731294 |
| 5564 | 36900.37000.37100.37700.126000.377800 | Electrical Fixtures And Fittings | 150d | 2027-10-23 | 2028-05-04 | 5561 |  | Zenith | 8731284 |
| 5565 | 36900.37000.37100.37700.126000.377900 | Final coat paint external | 100d | 2027-10-23 | 2028-03-15 | 5561 |  | Zenith | 8731274 |
| 5566 | 36900.37000.37100.37700.126000.378000 | Final Coat Paint Internal | 150d | 2027-10-23 | 2028-05-04 | 5561, 5474 |  | Zenith | 8731264 |
| 5567 | 36900.37000.37100.37700.126000.378100 | Balcony Railing Glass Fixing | 120d | 2028-05-05 | 2028-09-01 | 5566, 5515FS+30d |  | Zenith | 8731254 |
| 5568 | 36900.37000.37100.37700.126000.378200 | MEP | 150d | 2027-05-17 | 2027-10-14 | 5528FS+15d |  | Zenith | 8731244 |
| 5569 | 36900.37000.37100.37700.126000.378300 | Wooden Flooring | 180d | 2027-10-08 | 2028-05-19 | 5566FF+15d |  | Zenith | 8731234 |
| 5570 | 36900.37000.37100.37700.126000.378400 | Split AC Units installation | 100d | 2028-06-04 | 2028-09-11 | 5569FS+15d |  | Zenith | 8731224 |
| 5571 | 36900.37000.37100.37700.126000.378500 | Misc. works (Modular Kitchen & others) | 180d | 2028-04-15 | 2028-10-11 | 5570FF+30d |  | Zenith | 8731214 |
| 5572 | 36900.37000.37100.37700.273000 | Offer To Possession | 182d | 2028-05-05 | 2028-12-17 | 5561FS+150d, 5563FF+20d, 5564FF+20d, 5565FS+20d, 5570FF+10d, 5568FF+30d, 5567FF+15d, 5571FF+15d |  | Zenith | 8735304 |

| ID | WBS | Task | Duration | Start | Finish | Predecessors | Complete | Constraint | Calendar | Unique_Task_ID |
| --- | --- | --- | --- | --- | --- | --- | --- | --- | --- | --- |
| 5573 | 36900.37000.37100.125300 | **NTA** | 709d | 2025-03-20 | 2027-05-27 |  |  | start no earlier than 2025-03-20 | Zenith | 8652064 |
| 5574 | 36900.37000.37100.125300.142900 | **Around Tower 04, 02 & 01** | 704d | 2025-03-20 | 2027-05-22 |  |  | start no earlier than 2025-03-20 | Zenith | 8652594 |
| 5575 | 36900.37000.37100.125300.142900.230300 | NTA Core & Shell - Area 01 | 395d | 2025-03-20 | 2026-08-30 | 32FS-10d | 2% |  | Zenith | 8731204 |
| 5576 | 36900.37000.37100.125300.142900.378600 | NTA MEP - AR 01 | 400d | 2025-08-11 | 2026-10-29 | 5575FF+60d |  |  | Zenith | 263152 |
| 5577 | 36900.37000.37100.125300.142900.378700 | NTA Finishes, External Development & Misc.- Ar 01 | 400d | 2025-09-20 | 2027-01-22 | 5575FF+100d |  |  | Zenith | 8731194 |
| 5578 | 36900.37000.37100.125300.142900.378800 | NTA Core & Shell - Area 02 | 400d | 2025-09-13 | 2027-01-16 | 2132FF+100d |  |  | Zenith | 8731184 |
| 5579 | 36900.37000.37100.125300.142900.378900 | NTA MEP - AR 02 | 400d | 2026-01-26 | 2027-04-16 | 5578FF+90d |  |  | Zenith | 8731174 |
| 5580 | 36900.37000.37100.125300.142900.379000 | NTA Finishes, External Development & Misc. - Ar 02 | 444d | 2026-01-19 | 2027-05-22 | 5577FF+120d |  |  | Zenith | 8731164 |
| 5581 | 36900.37000.37100.125300.142800 | **Around Tower 03, 05 & 06** | 703d | 2025-03-26 | 2027-05-27 |  |  | start no earlier than 2025-03-26 | Zenith | 8652604 |
| 5582 | 36900.37000.37100.125300.142800.229700 | NTA Core & Shell - Area 03 | 450d | 2025-03-26 | 2026-08-03 | 2821FF+90d | 1% |  | Zenith | 8731154 |
| 5583 | 36900.37000.37100.125300.142800.379100 | NTA MEP - AR 03 | 400d | 2025-07-15 | 2026-10-02 | 5582FF+60d |  |  | Zenith | 8731144 |
| 5584 | 36900.37000.37100.125300.142800.379200 | NTA Finishes & External Development - Ar 03 | 400d | 2025-08-29 | 2026-12-31 | 5582FF+90d, 5583FF+45d |  |  | Zenith | 8731134 |
| 5585 | 36900.37000.37100.125300.142800.379300 | NTA Core & Shell - Area 04 | 400d | 2025-09-27 | 2027-01-30 | 4896FF+100d |  |  | Zenith | 8731124 |
| 5586 | 36900.37000.37100.125300.142800.379400 | NTA MEP - AR 04 | 400d | 2026-02-09 | 2027-04-30 | 5585FF+90d |  |  | Zenith | 8731114 |
| 5587 | 36900.37000.37100.125300.142800.379500 | NTA Finishes & External Development - Ar 04 | 444d | 2026-01-24 | 2027-05-27 | 5580FF+5d, 5584FF+120d, 5585FF+75d, 5586FF+25d |  |  | Zenith | 8731104 |
| 5588 | 36900.37000.37100.216100 | **STP** | 300d | 2026-03-29 | 2027-03-08 |  |  | start no earlier than 2026-03-29 | Zenith | 8656494 |
| 5589 | 36900.37000.37100.216100.273100 | Structure | 180d | 2026-03-29 | 2026-09-24 | 5575FS-155d |  |  | Zenith | 8735294 |
| 5590 | 36900.37000.37100.216100.273200 | Finishes & Misc. | 60d | 2026-09-25 | 2027-01-07 | 5589 |  |  | Zenith | 8735284 |
| 5591 | 36900.37000.37100.216100.273300 | Electromechanical | 60d | 2027-01-08 | 2027-03-08 | 5590 |  |  | Zenith | 8735274 |
| 5592 | 36900.37000.37100.216200 | **WTP** | 270d | 2026-05-13 | 2027-03-23 |  |  | start no earlier than 2026-05-13 | Zenith | 8656504 |
| 5593 | 36900.37000.37100.216200.273400 | Structure | 150d | 2026-05-13 | 2026-10-09 | 5589SS+45d |  |  | Zenith | 8735264 |
| 5594 | 36900.37000.37100.216200.273500 | Finishing & Misc. | 60d | 2026-10-10 | 2027-01-22 | 5593 |  |  | Zenith | 8735254 |
| 5595 | 36900.37000.37100.216200.273600 | Electromechanical | 60d | 2027-01-23 | 2027-03-23 | 5594 |  |  | Zenith | 8735244 |
| 5596 | 36900.37000.37100.216300 | **Club House** | 390d | 2026-08-04 | 2027-10-12 |  |  | start no earlier than 2026-08-04 | Zenith | 8656514 |
| 5597 | 36900.37000.37100.216300.273700 | Structure | 210d | 2026-08-04 | 2027-04-15 | 5582 |  |  | Zenith | 8735234 |
| 5598 | 36900.37000.37100.216300.273800 | Finishing & MEP | 120d | 2027-04-16 | 2027-08-13 | 5597 |  |  | Zenith | 8735224 |
| 5599 | 36900.37000.37100.216300.273900 | Facade works/Misclleneous | 60d | 2027-08-14 | 2027-10-12 | 5598 |  |  | Zenith | 8735214 |

| ID | WBS | Task | Duration | Start | Finish | Predecessors | Constraint | Calendar | Unique_Task_ID |
| --- | --- | --- | --- | --- | --- | --- | --- | --- | --- |
| 5600 | 36900.37000.51000 | **EWS** | 724d | 2025-04-09 | 2027-07-01 |  | start no earlier than 2025-04-09 | Zenith | 8652544 |
| 5601 | 36900.37000.51000.255500 | Sub-Structure | 1d | 2025-04-09 | 2025-04-09 | 4637FS+31d |  | Zenith | 8735674 |
| 5602 | 36900.37000.51000.199000 | **Sub-Structure** | 105d | 2025-04-10 | 2025-08-10 |  | start no earlier than 2025-04-10 | Indian Calendar | 8735684 |
| 5603 | 36900.37000.51000.199000.274000 | Excavation | 50d | 2025-04-10 | 2025-05-29 | 5601, 4637FS+32d |  | Zenith | 8735694 |
| 5604 | 36900.37000.51000.199000.274100 | Foundation | 26d | 2025-05-30 | 2025-06-24 | 5603 |  | Zenith | 8950034 |
| 5605 | 36900.37000.51000.199000.274200 | Tie Beam Level | 22d | 2025-06-25 | 2025-07-16 | 5604 |  | Zenith | 8950054 |
| 5606 | 36900.37000.51000.199000.274300 | Dummy Basement Roof | 25d | 2025-07-17 | 2025-08-10 | 5605 |  | Zenith | 8950064 |
| 5607 | 36900.37000.51000.255600 | Super-Structure | 1d | 2025-08-11 | 2025-08-11 | 5606 |  | Zenith | 8735664 |
| 5608 | 36900.37000.51000.51300 | **Super - Structure** | 291d | 2025-08-12 | 2026-07-16 |  | start no earlier than 2025-08-12 | Indian Calendar | 8735665 |
| 5609 | 36900.37000.51000.51300.274400 | Ground Flr. Roof | 24d | 2025-08-12 | 2025-09-04 | 5607, 5606FS+1d |  | Zenith | 8950074 |
| 5610 | 36900.37000.51000.51300.274500 | School 1st Roof | 19d | 2025-09-05 | 2025-09-23 | 5609 |  | Zenith | 8950084 |
| 5611 | 36900.37000.51000.51300.274600 | School 2nd Roof | 12d | 2025-09-24 | 2025-10-05 | 5610 |  | Zenith | 8950094 |
| 5612 | 36900.37000.51000.51300.274700 | School 3rd Roof | 12d | 2025-10-06 | 2025-10-17 | 5611 |  | Zenith | 8950104 |
| 5613 | 36900.37000.51000.51300.274800 | Service Flr. Roof | 12d | 2025-10-18 | 2025-10-29 | 5612 |  | Zenith | 8950114 |
| 5614 | 36900.37000.51000.51300.274900 | 5th Floor Roof | 21d | 2025-10-30 | 2026-01-03 | 5613 |  | Zenith | 8950124 |
| 5615 | 36900.37000.51000.51300.275000 | 6th Floor Roof | 15d | 2026-01-04 | 2026-01-18 | 5614 |  | Zenith | 8950134 |
| 5616 | 36900.37000.51000.51300.275100 | 7th Floor Roof | 9d | 2026-01-19 | 2026-01-27 | 5615 |  | Zenith | 8950144 |
| 5617 | 36900.37000.51000.51300.275200 | 8th Floor Roof | 9d | 2026-01-28 | 2026-02-05 | 5616 |  | Zenith | 8950154 |
| 5618 | 36900.37000.51000.51300.275300 | 9th Floor Roof | 9d | 2026-02-06 | 2026-02-14 | 5617 |  | Zenith | 8950164 |
| 5619 | 36900.37000.51000.51300.275400 | 10th Floor Roof | 9d | 2026-02-15 | 2026-02-23 | 5618 |  | Zenith | 8950174 |
| 5620 | 36900.37000.51000.51300.275500 | 11th Floor Roof | 9d | 2026-02-24 | 2026-03-04 | 5619 |  | Zenith | 8950184 |
| 5621 | 36900.37000.51000.51300.275600 | 12th Floor Roof | 9d | 2026-03-05 | 2026-03-13 | 5620 |  | Zenith | 8950194 |
| 5622 | 36900.37000.51000.51300.275700 | 13th Floor Roof | 9d | 2026-03-14 | 2026-03-22 | 5621 |  | Zenith | 8950204 |
| 5623 | 36900.37000.51000.51300.275800 | 14th Floor Roof | 9d | 2026-03-23 | 2026-03-31 | 5622 |  | Zenith | 8950214 |
| 5624 | 36900.37000.51000.51300.275900 | 15th Floor Roof | 9d | 2026-04-01 | 2026-04-09 | 5623 |  | Zenith | 8950224 |
| 5625 | 36900.37000.51000.51300.276000 | 16th Floor Roof | 9d | 2026-04-10 | 2026-04-18 | 5624 |  | Zenith | 8950234 |
| 5626 | 36900.37000.51000.51300.276100 | 17th Floor Roof | 9d | 2026-04-19 | 2026-04-27 | 5625 |  | Zenith | 8950244 |
| 5627 | 36900.37000.51000.51300.276200 | 18th Floor Roof | 9d | 2026-04-28 | 2026-05-06 | 5626 |  | Zenith | 8950254 |
| 5628 | 36900.37000.51000.51300.276300 | 19th Floor Roof | 9d | 2026-05-07 | 2026-05-15 | 5627 |  | Zenith | 8950264 |
| 5629 | 36900.37000.51000.51300.276400 | 20th Floor Roof | 9d | 2026-05-16 | 2026-05-24 | 5628 |  | Zenith | 8950274 |
| 5630 | 36900.37000.51000.51300.276500 | Terrace Slab | 18d | 2026-05-25 | 2026-06-11 | 5629 |  | Zenith | 8950284 |
| 5631 | 36900.37000.51000.51300.276600 | Above Terrace Activities | 35d | 2026-06-12 | 2026-07-16 | 5630 |  | Zenith | 8950294 |
| 5634 | 36900.37000.51000.255700 | Masonary & Plaster | 230d | 2026-03-24 | 2026-12-23 | 5630FF+150d |  | Zenith | 552912 |
| 5635 | 36900.37000.51000.255800 | Finishes | 230d | 2026-05-03 | 2027-02-01 | 5630FF+190d |  | Zenith | 8735654 |
| 5636 | 36900.37000.51000.255900 | MEP | 90d | 2026-09-05 | 2027-01-17 | 5631FF+140d |  | Zenith | 8735644 |
| 5637 | 36900.37000.51000.256000 | Misclleneous | 150d | 2027-02-02 | 2027-07-01 | 5634, 5635, 5636 |  | Zenith | 8735634 |

| ID | WBS | Task | Duration | Start | Finish | Predecessors | Complete | Constraint | Calendar | Unique_Task_ID |
| --- | --- | --- | --- | --- | --- | --- | --- | --- | --- | --- |
| 5638 | 36900.37000.46000 | **Phase 1A Commercial & Studio Appartment** | 1286d | 2024-05-17 | 2028-05-21 |  | 3% | start no earlier than 2024-05-17 | Zenith | 8648004 |
| 5639 | 36900.37000.46000.47200 | **Tower** | 1286d | 2024-05-17 | 2028-05-21 |  | 3% | start no earlier than 2024-05-17 | Zenith | 8648074 |
| 5640 | 36900.37000.46000.47200.116800 | **Sub-Structure Works** | 460d | 2024-05-17 | 2025-10-03 |  | 50% | start no earlier than 2024-05-17 | Zenith | 8651634 |
| 5641 | 36900.37000.46000.47200.116800.171500 | **Soil Bed Preparation** | 227d | 2024-05-17 | 2025-02-12 |  | 100% | start no earlier than 2024-05-17 | Zenith | 8656594 |
| 5642 | 36900.37000.46000.47200.116800.171500.227900 | Soldier Piling shop drawing approval | 103d | 2024-05-17 | 2024-08-27 |  | 100% | start no earlier than 2024-06-02 | Zenith | 8722664 |
| 5643 | 36900.37000.46000.47200.116800.171500.227800 | Mobilization & Soldier Piling with Excavation | 79d | 2024-06-28 | 2025-02-09 | 5642 | 100% | start no earlier than 2024-06-28 | Zenith | 8722654 |
| 5644 | 36900.37000.46000.47200.116800.171500.227700 | Soil dressing & ATT | 17d | 2025-01-21 | 2025-02-12 | 5643FS-14d | 100% | start no earlier than 2025-01-21 | Zenith | 8722644 |
| 5645 | 36900.37000.46000.47200.116800.124200 | **Structure Works** | 123d | 2025-01-24 | 2025-05-26 |  | 27% | start no earlier than 2025-01-24 | Zenith | 8651944 |
| 5646 | 36900.37000.46000.47200.116800.124200.134200 | **Raft Foundation** | 66d | 2025-01-24 | 2025-03-30 |  | 100% | start no earlier than 2025-01-24 | Zenith | 8652694 |
| 5647 | 36900.37000.46000.47200.116800.124200.134200.235800 | PCC | 9.95d | 2025-01-24 | 2025-03-09 | 5643FS-4.95d | 100% | start no earlier than 2025-01-24 | Zenith | 8682864 |
| 5648 | 36900.37000.46000.47200.116800.124200.134200.235700 | Column/SW layout marking | 8d | 2025-03-04 | 2025-03-12 | 5647FS+15.05d | 100% | start no earlier than 2025-03-04 | Zenith | 8682854 |
| 5649 | 36900.37000.46000.47200.116800.124200.134200.235600 | Reinforcement | 10d | 2025-03-06 | 2025-03-29 | 5648SS-1d | 100% | start no earlier than 2025-03-06 | Zenith | 8682844 |
| 5650 | 36900.37000.46000.47200.116800.124200.134200.235500 | Formwork (Conventional) | 4d | 2025-03-26 | 2025-03-29 | 5649FF+2d | 100% | start no earlier than 2025-03-26 | Zenith | 8682834 |
| 5651 | 36900.37000.46000.47200.116800.124200.134200.235400 | Concreting | 3d | 2025-03-28 | 2025-03-30 | 5650 | 100% | start no earlier than 2025-03-28 | Zenith | 8682824 |
| 5652 | 36900.37000.46000.47200.116800.124200.134300 | **Basement 02 Roof Slab** | 31d | 2025-04-01 | 2025-05-01 |  |  | start no earlier than 2025-04-01 | Zenith | 8652214 |
| 5653 | 36900.37000.46000.47200.116800.124200.134300.1007200 | Column/SW Reinforcement | 13d | 2025-04-01 | 2025-04-13 | 5651 |  |  | Zenith | 8682814 |
| 5654 | 36900.37000.46000.47200.116800.124200.134300.1007300 | SW Formwork (Conventional) | 13d | 2025-04-05 | 2025-04-17 | 5653FF+4d |  |  | Zenith | 8682804 |
| 5655 | 36900.37000.46000.47200.116800.124200.134300.1007400 | Column/SW Concreting | 13d | 2025-04-09 | 2025-04-21 | 5654FF+4d |  |  | Zenith | 8682794 |
| 5656 | 36900.37000.46000.47200.116800.124200.134300.1007500 | Slab Formwork (Conventional) | 13d | 2025-04-14 | 2025-04-26 | 5655FF+5d |  |  | Zenith | 8682784 |
| 5657 | 36900.37000.46000.47200.116800.124200.134300.1007600 | Slab Reinforcement + Conduting | 4d | 2025-04-27 | 2025-04-30 | 5656 |  |  | Zenith | 8682774 |
| 5658 | 36900.37000.46000.47200.116800.124200.134300.1007700 | Concreting | 1d | 2025-05-01 | 2025-05-01 | 5657 |  |  | Zenith | 8682764 |
| 5659 | 36900.37000.46000.47200.116800.124200.134400 | **Basement 01 Roof Slab** | 25d | 2025-05-02 | 2025-05-26 |  |  | start no earlier than 2025-05-02 | Zenith | 8652194 |
| 5660 | 36900.37000.46000.47200.116800.124200.134400.1007800 | Column/SW Reinforcement | 8d | 2025-05-02 | 2025-05-09 | 5658 |  |  | Zenith | 8682754 |
| 5661 | 36900.37000.46000.47200.116800.124200.134400.1007900 | SW Formwork (Conventional) | 8d | 2025-05-06 | 2025-05-13 | 5660FF+4d |  |  | Zenith | 8682744 |
| 5662 | 36900.37000.46000.47200.116800.124200.134400.1008000 | Column/SW Concreting | 8d | 2025-05-10 | 2025-05-17 | 5661FF+4d |  |  | Zenith | 8682734 |
| 5663 | 36900.37000.46000.47200.116800.124200.134400.1008100 | Slab Formwork (Conventional) | 8d | 2025-05-15 | 2025-05-22 | 5662FF+5d |  |  | Zenith | 8682724 |
| 5664 | 36900.37000.46000.47200.116800.124200.134400.1008200 | Slab Reinforcement + Conduting | 3d | 2025-05-23 | 2025-05-25 | 5663 |  |  | Zenith | 8682714 |
| 5665 | 36900.37000.46000.47200.116800.124200.134400.1008300 | Concreting | 1d | 2025-05-26 | 2025-05-26 | 5664 |  |  | Zenith | 8682704 |

| ID | WBS | Task | Duration | Start | Finish | Predecessors | Constraint | Calendar | Unique_Task_ID |
| --- | --- | --- | --- | --- | --- | --- | --- | --- | --- |
| 5666 | 36900.37000.46000.47200.116800.171100 | **Substructure Finishes** | 110d | 2025-06-16 | 2025-10-03 |  | start no earlier than 2025-06-16 | Zenith | 8653354 |
| 5667 | 36900.37000.46000.47200.116800.171100.818100 | Masonary Work | 30d | 2025-06-26 | 2025-07-25 | 5665FS+30d |  | Zenith | 8722634 |
| 5668 | 36900.37000.46000.47200.116800.171100.818200 | Plaster Work | 30d | 2025-07-26 | 2025-08-24 | 5667 |  | Zenith | 8722624 |
| 5669 | 36900.37000.46000.47200.116800.171100.818300 | Structural Steel work | 45d | 2025-06-16 | 2025-07-30 | 5665FS+20d |  | Zenith | 8722614 |
| 5670 | 36900.37000.46000.47200.116800.171100.818400 | White Wash | 30d | 2025-09-04 | 2025-10-03 | 5668FS+10d |  | Zenith | 8722604 |
| 5671 | 36900.37000.46000.47200.49100 | **Superstructure** | 475d | 2025-05-27 | 2026-10-28 |  | start no earlier than 2025-05-27 | Zenith | 8648174 |
| 5672 | 36900.37000.46000.47200.49100.51700 | **RCC structure** | 240d | 2025-05-27 | 2026-03-07 |  | start no earlier than 2025-05-27 | Zenith | 8648234 |
| 5673 | 36900.37000.46000.47200.49100.51700.134500 | **GF Roof Slab (Retail)** | 25d | 2025-05-27 | 2025-06-20 |  | start no earlier than 2025-05-27 | Zenith | 8652174 |
| 5674 | 36900.37000.46000.47200.49100.51700.134500.1008400 | Column/SW Reinforcement | 8d | 2025-05-27 | 2025-06-03 | 5665 |  | Zenith | 8682694 |
| 5675 | 36900.37000.46000.47200.49100.51700.134500.1008500 | SW Formwork (Conventional) | 8d | 2025-05-31 | 2025-06-07 | 5674FF+4d |  | Zenith | 8682684 |
| 5676 | 36900.37000.46000.47200.49100.51700.134500.1008600 | Column/SW Concreting | 8d | 2025-06-04 | 2025-06-11 | 5675FF+4d |  | Zenith | 8682674 |
| 5677 | 36900.37000.46000.47200.49100.51700.134500.1008700 | Slab Formwork (Conventional) | 8d | 2025-06-09 | 2025-06-16 | 5676FF+5d |  | Zenith | 8682664 |
| 5678 | 36900.37000.46000.47200.49100.51700.134500.1008800 | Slab Reinforcement + Conduting | 3d | 2025-06-17 | 2025-06-19 | 5677 |  | Zenith | 8682654 |
| 5679 | 36900.37000.46000.47200.49100.51700.134500.1008900 | Concreting | 1d | 2025-06-20 | 2025-06-20 | 5678 |  | Zenith | 8682644 |
| 5680 | 36900.37000.46000.47200.49100.51700.134800 | **1st Roof Slab (Retail)** | 24d | 2025-06-21 | 2025-07-14 |  | start no earlier than 2025-06-21 | Zenith | 8652184 |
| 5681 | 36900.37000.46000.47200.49100.51700.134800.1009000 | Column/SW Reinforcement | 8d | 2025-06-21 | 2025-06-28 | 5679 |  | Zenith | 8682634 |
| 5682 | 36900.37000.46000.47200.49100.51700.134800.1009100 | SW Formwork (Conventional) | 8d | 2025-06-25 | 2025-07-02 | 5681FF+4d |  | Zenith | 8682624 |
| 5683 | 36900.37000.46000.47200.49100.51700.134800.1009200 | Column/SW Concreting | 8d | 2025-06-29 | 2025-07-06 | 5682FF+4d |  | Zenith | 8682614 |
| 5684 | 36900.37000.46000.47200.49100.51700.134800.1009300 | Slab Formwork (Conventional) | 8d | 2025-07-03 | 2025-07-10 | 5683FF+4d |  | Zenith | 8682604 |
| 5685 | 36900.37000.46000.47200.49100.51700.134800.1009400 | Slab Reinforcement + Conduting | 3d | 2025-07-11 | 2025-07-13 | 5684 |  | Zenith | 8682594 |
| 5686 | 36900.37000.46000.47200.49100.51700.134800.1009500 | Concreting | 1d | 2025-07-14 | 2025-07-14 | 5685 |  | Zenith | 8682584 |
| 5687 | 36900.37000.46000.47200.49100.51700.134900 | **2nd Roof Slab (Retail)** | 30d | 2025-07-15 | 2025-08-13 |  | start no earlier than 2025-07-15 | Zenith | 8652204 |
| 5688 | 36900.37000.46000.47200.49100.51700.134900.1009600 | Column/SW Reinforcement | 12d | 2025-07-15 | 2025-07-26 | 5686 |  | Zenith | 8682574 |
| 5689 | 36900.37000.46000.47200.49100.51700.134900.1009700 | SW Formwork (Conventional) | 12d | 2025-07-19 | 2025-07-30 | 5688FF+4d |  | Zenith | 8682564 |
| 5690 | 36900.37000.46000.47200.49100.51700.134900.1009800 | Column/SW Concreting | 12d | 2025-07-23 | 2025-08-03 | 5689FF+4d |  | Zenith | 8682554 |
| 5691 | 36900.37000.46000.47200.49100.51700.134900.1009900 | Slab Formwork (Conventional) | 12d | 2025-07-28 | 2025-08-08 | 5690FF+5d |  | Zenith | 8682544 |
| 5692 | 36900.37000.46000.47200.49100.51700.134900.1010000 | Slab Reinforcement + Conduting | 4d | 2025-08-09 | 2025-08-12 | 5691 |  | Zenith | 8682534 |
| 5693 | 36900.37000.46000.47200.49100.51700.134900.1010100 | Concreting | 1d | 2025-08-13 | 2025-08-13 | 5692 |  | Zenith | 8682524 |

| ID | WBS | Task | Duration | Start | Finish | Predecessors | Constraint | Calendar | Unique_Task_ID |
| --- | --- | --- | --- | --- | --- | --- | --- | --- | --- |
| 5694 | 36900.37000.46000.47200.49100.51700.181700 | **3rd Floor Roof Slab (Studio Appartments - 1st refurbished aluminium setup)** | 21d | 2025-08-14 | 2025-09-03 |  | start no earlier than 2025-08-14 | Zenith | 8652944 |
| 5695 | 36900.37000.46000.47200.49100.51700.181700.1010200 | Reinforcement | 7d | 2025-08-14 | 2025-08-20 | 5693 |  | Zenith | 8682514 |
| 5696 | 36900.37000.46000.47200.49100.51700.181700.1010300 | Conduiting | 7d | 2025-08-16 | 2025-08-22 | 5695FF+2d |  | Zenith | 8682504 |
| 5697 | 36900.37000.46000.47200.49100.51700.181700.1010400 | Formwork | 10d | 2025-08-23 | 2025-09-01 | 5696FF+10d |  | Zenith | 8682494 |
| 5698 | 36900.37000.46000.47200.49100.51700.181700.1010500 | Concreting | 1d | 2025-09-03 | 2025-09-03 | 5697FS+1d |  | Zenith | 8682484 |
| 5699 | 36900.37000.46000.47200.49100.51700.181800 | **4th Floor Roof Slab** | 15d | 2025-09-04 | 2025-09-18 |  | start no earlier than 2025-09-04 | Zenith | 8653344 |
| 5700 | 36900.37000.46000.47200.49100.51700.181800.1010600 | Reinforcement | 5d | 2025-09-04 | 2025-09-08 | 5698 |  | Zenith | 8682474 |
| 5701 | 36900.37000.46000.47200.49100.51700.181800.1010700 | Conduiting | 5d | 2025-09-05 | 2025-09-09 | 5700FF+1d |  | Zenith | 8682464 |
| 5702 | 36900.37000.46000.47200.49100.51700.181800.1010800 | Formwork | 9d | 2025-09-08 | 2025-09-16 | 5701FF+7d |  | Zenith | 8682454 |
| 5703 | 36900.37000.46000.47200.49100.51700.181800.1010900 | Concreting | 1d | 2025-09-18 | 2025-09-18 | 5702FS+1d |  | Zenith | 8682444 |
| 5704 | 36900.37000.46000.47200.49100.51700.181900 | **5th Floor Roof Slab** | 9d | 2025-09-19 | 2025-09-27 |  | start no earlier than 2025-09-19 | Zenith | 8653444 |
| 5705 | 36900.37000.46000.47200.49100.51700.181900.1011000 | Reinforcement | 3d | 2025-09-19 | 2025-09-21 | 5703 |  | Zenith | 8682434 |
| 5706 | 36900.37000.46000.47200.49100.51700.181900.1011100 | Conduiting | 2d | 2025-09-21 | 2025-09-22 | 5705FF+1d |  | Zenith | 8682424 |
| 5707 | 36900.37000.46000.47200.49100.51700.181900.1011200 | Formwork | 5d | 2025-09-21 | 2025-09-25 | 5706FF+3d |  | Zenith | 8682414 |
| 5708 | 36900.37000.46000.47200.49100.51700.181900.1011300 | Concreting | 1d | 2025-09-27 | 2025-09-27 | 5707FS+1d |  | Zenith | 8682404 |
| 5709 | 36900.37000.46000.47200.49100.51700.182000 | **6th Floor Roof Slab** | 9d | 2025-09-28 | 2025-10-06 |  | start no earlier than 2025-09-28 | Zenith | 8653734 |
| 5710 | 36900.37000.46000.47200.49100.51700.182000.1011400 | Reinforcement | 3d | 2025-09-28 | 2025-09-30 | 5708 |  | Zenith | 8682394 |
| 5711 | 36900.37000.46000.47200.49100.51700.182000.1011500 | Conduiting | 2d | 2025-09-30 | 2025-10-01 | 5710FF+1d |  | Zenith | 8682384 |
| 5712 | 36900.37000.46000.47200.49100.51700.182000.1011600 | Formwork | 5d | 2025-10-01 | 2025-10-05 | 5711FF+4d |  | Zenith | 8682374 |
| 5713 | 36900.37000.46000.47200.49100.51700.182000.1011700 | Concreting | 1d | 2025-10-06 | 2025-10-06 | 5712 |  | Zenith | 8682364 |
| 5714 | 36900.37000.46000.47200.49100.51700.182100 | **7th Floor Roof Slab** | 9d | 2025-10-07 | 2025-10-15 |  | start no earlier than 2025-10-07 | Zenith | 8654074 |
| 5715 | 36900.37000.46000.47200.49100.51700.182100.1011800 | Reinforcement | 3d | 2025-10-07 | 2025-10-09 | 5713 |  | Zenith | 8682354 |
| 5716 | 36900.37000.46000.47200.49100.51700.182100.1011900 | Conduiting | 2d | 2025-10-09 | 2025-10-10 | 5715FF+1d |  | Zenith | 8682344 |
| 5717 | 36900.37000.46000.47200.49100.51700.182100.1012000 | Formwork | 5d | 2025-10-10 | 2025-10-14 | 5716FF+4d |  | Zenith | 8682334 |
| 5718 | 36900.37000.46000.47200.49100.51700.182100.1012100 | Concreting | 1d | 2025-10-15 | 2025-10-15 | 5717 |  | Zenith | 8682324 |

| ID | WBS | Task | Duration | Start | Finish | Predecessors | Constraint | Calendar | Unique_Task_ID |
| --- | --- | --- | --- | --- | --- | --- | --- | --- | --- |
| 5719 | 36900.37000.46000.47200.49100.51700.182300 | **8th Floor Roof Slab** | 9d | 2025-10-16 | 2025-10-24 |  | start no earlier than 2025-10-16 | Zenith | 8654764 |
| 5720 | 36900.37000.46000.47200.49100.51700.182300.1012200 | Reinforcement | 3d | 2025-10-16 | 2025-10-18 | 5718 |  | Zenith | 8682314 |
| 5721 | 36900.37000.46000.47200.49100.51700.182300.1012300 | Conduiting | 2d | 2025-10-18 | 2025-10-19 | 5720FF+1d |  | Zenith | 8682304 |
| 5722 | 36900.37000.46000.47200.49100.51700.182300.1012400 | Formwork | 5d | 2025-10-19 | 2025-10-23 | 5721FF+4d |  | Zenith | 8682294 |
| 5723 | 36900.37000.46000.47200.49100.51700.182300.1012500 | Concreting | 1d | 2025-10-24 | 2025-10-24 | 5722 |  | Zenith | 8682284 |
| 5724 | 36900.37000.46000.47200.49100.51700.182400 | **9th Floor Roof Slab** | 9d | 2025-10-25 | 2025-12-17 |  | start no earlier than 2025-10-25 | Zenith | 8655074 |
| 5725 | 36900.37000.46000.47200.49100.51700.182400.1012600 | Reinforcement | 3d | 2025-10-25 | 2025-10-27 | 5723 |  | Zenith | 8682274 |
| 5726 | 36900.37000.46000.47200.49100.51700.182400.1012700 | Conduiting | 2d | 2025-10-27 | 2025-10-28 | 5725FF+1d |  | Zenith | 8682264 |
| 5727 | 36900.37000.46000.47200.49100.51700.182400.1012800 | Formwork | 5d | 2025-10-28 | 2025-12-16 | 5726FF+4d |  | Zenith | 8682254 |
| 5728 | 36900.37000.46000.47200.49100.51700.182400.1012900 | Concreting | 1d | 2025-12-17 | 2025-12-17 | 5727 |  | Zenith | 8682244 |
| 5729 | 36900.37000.46000.47200.49100.51700.182500 | **10th Floor Roof Slab** | 9d | 2025-12-18 | 2025-12-26 |  | start no earlier than 2025-12-18 | Zenith | 8655814 |
| 5730 | 36900.37000.46000.47200.49100.51700.182500.1013000 | Reinforcement | 3d | 2025-12-18 | 2025-12-20 | 5728 |  | Zenith | 8682234 |
| 5731 | 36900.37000.46000.47200.49100.51700.182500.1013100 | Conduiting | 2d | 2025-12-20 | 2025-12-21 | 5730FF+1d |  | Zenith | 8682224 |
| 5732 | 36900.37000.46000.47200.49100.51700.182500.1013200 | Formwork | 5d | 2025-12-21 | 2025-12-25 | 5731FF+4d |  | Zenith | 8682214 |
| 5733 | 36900.37000.46000.47200.49100.51700.182500.1013300 | Concreting | 1d | 2025-12-26 | 2025-12-26 | 5732 |  | Zenith | 8682204 |
| 5734 | 36900.37000.46000.47200.49100.51700.182700 | **11th Floor Roof Slab** | 9d | 2025-12-27 | 2026-01-04 |  | start no earlier than 2025-12-27 | Zenith | 8655924 |
| 5735 | 36900.37000.46000.47200.49100.51700.182700.1013400 | Reinforcement | 3d | 2025-12-27 | 2025-12-29 | 5733 |  | Zenith | 8682194 |
| 5736 | 36900.37000.46000.47200.49100.51700.182700.1013500 | Conduiting | 2d | 2025-12-29 | 2025-12-30 | 5735FF+1d |  | Zenith | 8682184 |
| 5737 | 36900.37000.46000.47200.49100.51700.182700.1013600 | Formwork | 5d | 2025-12-30 | 2026-01-03 | 5736FF+4d |  | Zenith | 8682174 |
| 5738 | 36900.37000.46000.47200.49100.51700.182700.1013700 | Concreting | 1d | 2026-01-04 | 2026-01-04 | 5737 |  | Zenith | 8682164 |
| 5739 | 36900.37000.46000.47200.49100.51700.182800 | **12th Floor Roof Slab** | 9d | 2026-01-05 | 2026-01-13 |  | start no earlier than 2026-01-05 | Zenith | 8656164 |
| 5740 | 36900.37000.46000.47200.49100.51700.182800.1013800 | Reinforcement | 3d | 2026-01-05 | 2026-01-07 | 5738 |  | Zenith | 8682154 |
| 5741 | 36900.37000.46000.47200.49100.51700.182800.1013900 | Conduiting | 2d | 2026-01-07 | 2026-01-08 | 5740FF+1d |  | Zenith | 8682144 |
| 5742 | 36900.37000.46000.47200.49100.51700.182800.1014000 | Formwork | 5d | 2026-01-08 | 2026-01-12 | 5741FF+4d |  | Zenith | 8682134 |
| 5743 | 36900.37000.46000.47200.49100.51700.182800.1014100 | Concreting | 1d | 2026-01-13 | 2026-01-13 | 5742 |  | Zenith | 8682124 |

| ID | WBS | Task | Duration | Start | Finish | Predecessors | Constraint | Calendar | Unique_Task_ID |
| --- | --- | --- | --- | --- | --- | --- | --- | --- | --- |
| 5744 | 36900.37000.46000.47200.49100.51700.183100 | **Terrace Slab** | 18d | 2026-01-14 | 2026-01-31 |  | start no earlier than 2026-01-14 | Zenith | 8656444 |
| 5745 | 36900.37000.46000.47200.49100.51700.183100.1014200 | Reinforcement | 8d | 2026-01-14 | 2026-01-21 | 5743 |  | Zenith | 8682114 |
| 5746 | 36900.37000.46000.47200.49100.51700.183100.1014300 | Conduiting | 8d | 2026-01-16 | 2026-01-23 | 5745FF+2d |  | Zenith | 8682104 |
| 5747 | 36900.37000.46000.47200.49100.51700.183100.1014400 | Formwork | 12d | 2026-01-17 | 2026-01-28 | 5746FF+5d |  | Zenith | 8682094 |
| 5748 | 36900.37000.46000.47200.49100.51700.183100.1014500 | Concreting | 2d | 2026-01-30 | 2026-01-31 | 5747FS+1d |  | Zenith | 8682084 |
| 5749 | 36900.37000.46000.47200.49100.51700.183200 | **OHT, Mumty & Machine Room, Parapet & Deck Slab** | 35d | 2026-02-01 | 2026-03-07 |  | start no earlier than 2026-02-01 | Zenith | 8656454 |
| 5750 | 36900.37000.46000.47200.49100.51700.183200.1014600 | Reinforcement | 16d | 2026-02-01 | 2026-02-16 | 5748 |  | Zenith | 8682074 |
| 5751 | 36900.37000.46000.47200.49100.51700.183200.1014700 | Flanges fixing & Conduiting | 5d | 2026-02-08 | 2026-02-12 | 5750FF-4d |  | Zenith | 8682064 |
| 5752 | 36900.37000.46000.47200.49100.51700.183200.1014800 | Formwork | 22d | 2026-02-13 | 2026-03-06 | 5751 |  | Zenith | 8682054 |
| 5753 | 36900.37000.46000.47200.49100.51700.183200.1014900 | Concreting | 6d | 2026-03-02 | 2026-03-07 | 5752FF+1d |  | Zenith | 8682044 |
| 5754 | 36900.37000.46000.47200.49100.62800 | **Post Pour Activities** | 139d | 2025-09-19 | 2026-03-21 |  | start no earlier than 2025-09-19 | Zenith | 8648254 |
| 5755 | 36900.37000.46000.47200.49100.62800.818500 | Ground Floor (Retail) | 7d | 2025-09-19 | 2025-09-25 | 5703 |  | Zenith | 8722594 |
| 5756 | 36900.37000.46000.47200.49100.62800.818600 | 1st Floor (Retail) | 7d | 2025-09-28 | 2025-10-04 | 5708 |  | Zenith | 8722584 |
| 5757 | 36900.37000.46000.47200.49100.62800.818700 | 2nd Floor (Retail) | 7d | 2025-10-07 | 2025-10-13 | 5713 |  | Zenith | 8722574 |
| 5758 | 36900.37000.46000.47200.49100.62800.818800 | 3rd Floor (Studio Appartment) | 7d | 2025-10-16 | 2025-10-22 | 5718 |  | Zenith | 8722564 |
| 5759 | 36900.37000.46000.47200.49100.62800.818900 | 4th Floor | 7d | 2025-10-25 | 2025-10-31 | 5723 |  | Zenith | 8722554 |
| 5760 | 36900.37000.46000.47200.49100.62800.819000 | 5th Floor | 7d | 2025-12-18 | 2025-12-24 | 5728 |  | Zenith | 8722544 |
| 5761 | 36900.37000.46000.47200.49100.62800.819100 | 6th Floor | 7d | 2025-12-27 | 2026-01-02 | 5733 |  | Zenith | 8722534 |
| 5762 | 36900.37000.46000.47200.49100.62800.819200 | 7th Floor | 7d | 2026-01-05 | 2026-01-11 | 5738 |  | Zenith | 8722524 |
| 5763 | 36900.37000.46000.47200.49100.62800.819300 | 8th Floor | 7d | 2026-01-14 | 2026-01-20 | 5743 |  | Zenith | 8722514 |
| 5764 | 36900.37000.46000.47200.49100.62800.819400 | 9th Floor | 7d | 2026-02-01 | 2026-02-07 | 5748 |  | Zenith | 8722504 |
| 5765 | 36900.37000.46000.47200.49100.62800.819500 | 10th Floor | 7d | 2026-02-08 | 2026-02-14 | 5764 |  | Zenith | 8722494 |
| 5766 | 36900.37000.46000.47200.49100.62800.819600 | 11th Floor | 7d | 2026-02-15 | 2026-02-21 | 5765 |  | Zenith | 8722484 |
| 5767 | 36900.37000.46000.47200.49100.62800.819700 | 12th Floor | 7d | 2026-02-22 | 2026-02-28 | 5766 |  | Zenith | 8722474 |
| 5768 | 36900.37000.46000.47200.49100.62800.819800 | 13th Floor | 7d | 2026-03-01 | 2026-03-07 | 5767 |  | Zenith | 8722464 |
| 5769 | 36900.37000.46000.47200.49100.62800.819900 | Terrace | 7d | 2026-03-08 | 2026-03-14 | 5768 |  | Zenith | 8722454 |
| 5770 | 36900.37000.46000.47200.49100.62800.820000 | Mumty & Machine Room | 7d | 2026-03-15 | 2026-03-21 | 5769 |  | Zenith | 8722444 |

| ID | WBS | Task | Duration | Start | Finish | Predecessors | Constraint | Calendar | Unique_Task_ID |
| --- | --- | --- | --- | --- | --- | --- | --- | --- | --- |
| 5771 | 36900.37000.46000.47200.49100.50900 | **Finishing work** | 317d | 2025-12-16 | 2026-10-28 |  | start no earlier than 2025-12-16 | Zenith | 8648214 |
| 5772 | 36900.37000.46000.47200.49100.50900.52000 | **Retail finishing** | 170d | 2025-12-16 | 2026-06-03 |  | start no earlier than 2025-12-16 | Zenith | 8648244 |
| 5773 | 36900.37000.46000.47200.49100.50900.52000.103000 | **1st Floor** | 108d | 2025-12-16 | 2026-04-02 |  | start no earlier than 2025-12-16 | Zenith | 8650484 |
| 5774 | 36900.37000.46000.47200.49100.50900.52000.103000.1600400 | Block Work | 8d | 2025-12-16 | 2025-12-23 | 5759 |  | Zenith | 8709564 |
| 5775 | 36900.37000.46000.47200.49100.50900.52000.103000.1600500 | Fire sprinkler pipe fixing | 6d | 2025-12-24 | 2025-12-29 | 5774 |  | Zenith | 8709574 |
| 5776 | 36900.37000.46000.47200.49100.50900.52000.103000.1600600 | Internal Plumbing Works | 6d | 2025-12-24 | 2025-12-29 | 5774 |  | Zenith | 8709584 |
| 5777 | 36900.37000.46000.47200.49100.50900.52000.103000.1600700 | Waterproofing | 10d | 2025-12-30 | 2026-01-08 | 5776 |  | Zenith | 8709594 |
| 5778 | 36900.37000.46000.47200.49100.50900.52000.103000.1600800 | Shops, toilet & Corridoor Plaster | 12d | 2026-01-09 | 2026-01-20 | 5776, 5777 |  | Zenith | 8709604 |
| 5779 | 36900.37000.46000.47200.49100.50900.52000.103000.1600900 | Toilet dado work | 8d | 2026-01-21 | 2026-01-28 | 5777, 5778 |  | Zenith | 8709614 |
| 5780 | 36900.37000.46000.47200.49100.50900.52000.103000.1601000 | Toilet flooring work | 5d | 2026-01-29 | 2026-02-02 | 5779 |  | Zenith | 8709624 |
| 5781 | 36900.37000.46000.47200.49100.50900.52000.103000.1601100 | Corridoor/Lobby Flooring with shops threshold | 15d | 2026-01-22 | 2026-02-05 | 5778FS+1d |  | Zenith | 8709634 |
| 5782 | 36900.37000.46000.47200.49100.50900.52000.103000.1601200 | Shops Facade Frame fixing | 14d | 2026-01-28 | 2026-02-10 | 5781FF+5d |  | Zenith | 8709644 |
| 5783 | 36900.37000.46000.47200.49100.50900.52000.103000.1601300 | Shops Facade glass fixing | 14d | 2026-02-02 | 2026-02-15 | 5782FF+5d |  | Zenith | 8709654 |
| 5784 | 36900.37000.46000.47200.49100.50900.52000.103000.1601400 | Corridoor Glass Railing | 25d | 2026-02-01 | 2026-02-25 | 5783FF+10d |  | Zenith | 8709664 |
| 5785 | 36900.37000.46000.47200.49100.50900.52000.103000.1601500 | ACP Cladding, False Ceiling fixing toilet & corridoor | 25d | 2026-02-07 | 2026-03-03 | 5780FS+4d, 5784FF+5d |  | Zenith | 8709674 |
| 5786 | 36900.37000.46000.47200.49100.50900.52000.103000.1601600 | Corridoor & false ceiling Putty | 25d | 2026-02-17 | 2026-03-13 | 5785FF+10d |  | Zenith | 8709684 |
| 5787 | 36900.37000.46000.47200.49100.50900.52000.103000.1601700 | Electrical wiring work | 25d | 2026-02-22 | 2026-03-18 | 5786FF+5d |  | Zenith | 8709694 |
| 5788 | 36900.37000.46000.47200.49100.50900.52000.103000.1601800 | Primer-Painting 1st coat | 30d | 2026-03-04 | 2026-04-02 | 5787FF+15d |  | Zenith | 8709704 |
| 5789 | 36900.37000.46000.47200.49100.50900.52000.103100 | **2nd Floor** | 130d | 2025-12-25 | 2026-05-03 |  | start no earlier than 2025-12-25 | Zenith | 8650494 |
| 5790 | 36900.37000.46000.47200.49100.50900.52000.103100.1601900 | Block Work | 10d | 2025-12-25 | 2026-01-03 | 5760, 5774 |  | Zenith | 8709714 |
| 5791 | 36900.37000.46000.47200.49100.50900.52000.103100.1602000 | Fire sprinkler pipe fixing | 8d | 2026-01-04 | 2026-01-11 | 5775, 5790 |  | Zenith | 8709724 |
| 5792 | 36900.37000.46000.47200.49100.50900.52000.103100.1602100 | Internal Plumbing Works | 8d | 2026-01-04 | 2026-01-11 | 5776, 5790 |  | Zenith | 8709734 |
| 5793 | 36900.37000.46000.47200.49100.50900.52000.103100.1602200 | Waterproofing | 14d | 2026-01-12 | 2026-01-25 | 5777, 5792 |  | Zenith | 8709744 |
| 5794 | 36900.37000.46000.47200.49100.50900.52000.103100.1602300 | Shops, toilet & Corridoor Plaster | 14d | 2026-01-26 | 2026-02-08 | 5778, 5792, 5793 |  | Zenith | 8709754 |
| 5795 | 36900.37000.46000.47200.49100.50900.52000.103100.1602400 | Toilet dado work | 10d | 2026-02-09 | 2026-02-18 | 5779, 5793, 5794 |  | Zenith | 8709764 |
| 5796 | 36900.37000.46000.47200.49100.50900.52000.103100.1602500 | Toilet flooring work | 8d | 2026-02-19 | 2026-02-26 | 5780, 5795 |  | Zenith | 8709774 |
| 5797 | 36900.37000.46000.47200.49100.50900.52000.103100.1602600 | Corridoor/Lobby Flooring with shops threshold | 20d | 2026-02-10 | 2026-03-01 | 5781, 5794FS+1d |  | Zenith | 8709784 |
| 5798 | 36900.37000.46000.47200.49100.50900.52000.103100.1602700 | Shops Facade Frame fixing | 16d | 2026-02-19 | 2026-03-06 | 5782FS+1d, 5797FF+5d |  | Zenith | 8709794 |
| 5799 | 36900.37000.46000.47200.49100.50900.52000.103100.1602800 | Shops Facade glass fixing | 16d | 2026-02-24 | 2026-03-11 | 5783FS+1d, 5798FF+5d |  | Zenith | 8709804 |
| 5800 | 36900.37000.46000.47200.49100.50900.52000.103100.1602900 | Corridoor Glass Railing | 25d | 2026-02-27 | 2026-03-23 | 5784FS+1d, 5799FF+10d |  | Zenith | 8709814 |
| 5801 | 36900.37000.46000.47200.49100.50900.52000.103100.1603000 | ACP Cladding, False Ceiling fixing toilet & corridoor | 25d | 2026-03-05 | 2026-03-29 | 5785FS+1d, 5800FF+5d |  | Zenith | 8709824 |
| 5802 | 36900.37000.46000.47200.49100.50900.52000.103100.1603100 | Corridoor & false ceiling Putty | 25d | 2026-03-15 | 2026-04-08 | 5786FS+1d, 5796FS+4d, 5801FF+10d |  | Zenith | 8709834 |
| 5803 | 36900.37000.46000.47200.49100.50900.52000.103100.1603200 | Electrical wiring work | 30d | 2026-03-20 | 2026-04-18 | 5787FS+1d, 5802FF+5d |  | Zenith | 8709844 |
| 5804 | 36900.37000.46000.47200.49100.50900.52000.103100.1603300 | Primer-Painting 1st coat | 30d | 2026-04-04 | 2026-05-03 | 5788FS+1d, 5803FF+15d |  | Zenith | 8709854 |

| ID | WBS | Task | Duration | Start | Finish | Predecessors | Constraint | Calendar | Unique_Task_ID |
| --- | --- | --- | --- | --- | --- | --- | --- | --- | --- |
| 5805 | 36900.37000.46000.47200.49100.50900.52000.114400 | **Ground Floor** | 151d | 2026-01-04 | 2026-06-03 |  | start no earlier than 2026-01-04 | Zenith | 8651624 |
| 5806 | 36900.37000.46000.47200.49100.50900.52000.114400.1603400 | Block Work | 10d | 2026-01-04 | 2026-01-13 | 5790 |  | Zenith | 8709864 |
| 5807 | 36900.37000.46000.47200.49100.50900.52000.114400.1603500 | Fire sprinkler pipe fixing | 8d | 2026-01-14 | 2026-01-21 | 5791, 5806 |  | Zenith | 8709874 |
| 5808 | 36900.37000.46000.47200.49100.50900.52000.114400.1603600 | Internal Plumbing Works | 8d | 2026-01-14 | 2026-01-21 | 5792, 5806 |  | Zenith | 8709884 |
| 5809 | 36900.37000.46000.47200.49100.50900.52000.114400.1603700 | Waterproofing | 14d | 2026-01-26 | 2026-02-08 | 5793, 5808 |  | Zenith | 8709894 |
| 5810 | 36900.37000.46000.47200.49100.50900.52000.114400.1603800 | Shops, toilet & Corridoor Plaster | 14d | 2026-02-09 | 2026-02-22 | 5794, 5808, 5809 |  | Zenith | 8709904 |
| 5811 | 36900.37000.46000.47200.49100.50900.52000.114400.1603900 | Toilet dado work | 10d | 2026-02-23 | 2026-03-04 | 5795, 5809, 5810 |  | Zenith | 8709914 |
| 5812 | 36900.37000.46000.47200.49100.50900.52000.114400.1604000 | Toilet flooring work | 8d | 2026-03-05 | 2026-03-12 | 5796, 5811 |  | Zenith | 8709924 |
| 5813 | 36900.37000.46000.47200.49100.50900.52000.114400.1604100 | Corridoor/Lobby Flooring with shops threshold | 20d | 2026-03-02 | 2026-03-21 | 5797, 5810FS+1d |  | Zenith | 8709934 |
| 5814 | 36900.37000.46000.47200.49100.50900.52000.114400.1604200 | Shops Facade Frame fixing | 16d | 2026-03-11 | 2026-03-26 | 5798FS+1d, 5813FF+5d |  | Zenith | 8709944 |
| 5815 | 36900.37000.46000.47200.49100.50900.52000.114400.1604300 | Shops Facade glass fixing | 16d | 2026-03-16 | 2026-03-31 | 5799FS+1d, 5814FF+5d |  | Zenith | 8709954 |
| 5816 | 36900.37000.46000.47200.49100.50900.52000.114400.1604400 | ACP Cladding, False Ceiling fixing toilet & corridoor | 25d | 2026-03-31 | 2026-04-24 | 5801FS+1d, 5815FF+15d |  | Zenith | 8709964 |
| 5817 | 36900.37000.46000.47200.49100.50900.52000.114400.1604500 | Corridoor & false ceiling Putty | 25d | 2026-04-10 | 2026-05-04 | 5802FS+1d, 5807FS+5d, 5812FS+4d, 5816FF+10d |  | Zenith | 8709974 |
| 5818 | 36900.37000.46000.47200.49100.50900.52000.114400.1604600 | Electrical wiring work | 25d | 2026-04-20 | 2026-05-14 | 5803FS+1d, 5817FF+5d |  | Zenith | 8709984 |
| 5819 | 36900.37000.46000.47200.49100.50900.52000.114400.1604700 | Primer-Painting 1st coat | 30d | 2026-05-05 | 2026-06-03 | 5804FS+1d, 5818FF+15d |  | Zenith | 8709994 |
| 5820 | 36900.37000.46000.47200.49100.50900.51100 | **Flat finishing** | 267d | 2026-01-03 | 2026-09-26 |  | start no earlier than 2026-01-03 | Zenith | 8648224 |
| 5821 | 36900.37000.46000.47200.49100.50900.51100.103200 | **3rd Floor** | 127d | 2026-01-03 | 2026-05-09 |  | start no earlier than 2026-01-03 | Zenith | 8650504 |
| 5822 | 36900.37000.46000.47200.49100.50900.51100.103200.1604800 | Block Work | 10d | 2026-01-03 | 2026-01-12 | 5761 |  | Zenith | 8710004 |
| 5823 | 36900.37000.46000.47200.49100.50900.51100.103200.1604900 | Fire sprinkler pipe fixing | 6d | 2026-01-13 | 2026-01-18 | 5822 |  | Zenith | 8710014 |
| 5824 | 36900.37000.46000.47200.49100.50900.51100.103200.1605000 | Internal Plumbing Works | 9d | 2026-01-13 | 2026-01-21 | 5822 |  | Zenith | 8710024 |
| 5825 | 36900.37000.46000.47200.49100.50900.51100.103200.1605100 | Waterproofing | 14d | 2026-01-22 | 2026-02-04 | 5824 |  | Zenith | 8710034 |
| 5826 | 36900.37000.46000.47200.49100.50900.51100.103200.1605200 | Internal Plaster | 14d | 2026-01-28 | 2026-02-10 | 5824, 5825FF+6d |  | Zenith | 8710044 |
| 5827 | 36900.37000.46000.47200.49100.50900.51100.103200.1605300 | IPS flooring work | 10d | 2026-02-11 | 2026-02-20 | 5826 |  | Zenith | 8710054 |
| 5828 | 36900.37000.46000.47200.49100.50900.51100.103200.1605400 | Toilet dado work | 10d | 2026-02-11 | 2026-02-20 | 5825, 5826 |  | Zenith | 8710064 |
| 5829 | 36900.37000.46000.47200.49100.50900.51100.103200.1605500 | Toilet flooring work | 10d | 2026-02-21 | 2026-03-02 | 5828 |  | Zenith | 8710074 |
| 5830 | 36900.37000.46000.47200.49100.50900.51100.103200.1605600 | Living dinning flooring | 10d | 2026-03-03 | 2026-03-12 | 5829 |  | Zenith | 8710084 |
| 5831 | 36900.37000.46000.47200.49100.50900.51100.103200.1605700 | False Ceiling works | 10d | 2026-03-13 | 2026-03-22 | 5830 |  | Zenith | 8710094 |
| 5832 | 36900.37000.46000.47200.49100.50900.51100.103200.1605800 | Electrical wiring work | 10d | 2026-03-23 | 2026-04-01 | 5831 |  | Zenith | 8710104 |
| 5833 | 36900.37000.46000.47200.49100.50900.51100.103200.1605900 | Aluminium door-window fixing | 12d | 2026-04-02 | 2026-04-13 | 5827, 5832 |  | Zenith | 8710114 |
| 5834 | 36900.37000.46000.47200.49100.50900.51100.103200.1606000 | Putty primer coat | 8d | 2026-04-14 | 2026-04-21 | 5833 |  | Zenith | 8710124 |
| 5835 | 36900.37000.46000.47200.49100.50900.51100.103200.1606100 | Prehung Door fixing | 6d | 2026-04-22 | 2026-04-27 | 5834 |  | Zenith | 8710134 |
| 5836 | 36900.37000.46000.47200.49100.50900.51100.103200.1606200 | Painting 1st coat | 12d | 2026-04-28 | 2026-05-09 | 5835 |  | Zenith | 8710144 |

| ID | WBS | Task | Duration | Start | Finish | Predecessors | Constraint | Calendar | Unique_Task_ID |
| --- | --- | --- | --- | --- | --- | --- | --- | --- | --- |
| 5837 | 36900.37000.46000.47200.49100.50900.51100.103300 | **4th Floor** | 131d | 2026-01-13 | 2026-05-23 |  | start no earlier than 2026-01-13 | Zenith | 8650514 |
| 5838 | 36900.37000.46000.47200.49100.50900.51100.103300.1606300 | Block Work | 10d | 2026-01-13 | 2026-01-22 | 5762, 5822 |  | Zenith | 8710154 |
| 5839 | 36900.37000.46000.47200.49100.50900.51100.103300.1606400 | Fire sprinkler pipe fixing | 6d | 2026-01-23 | 2026-01-28 | 5823, 5838 |  | Zenith | 8710164 |
| 5840 | 36900.37000.46000.47200.49100.50900.51100.103300.1606500 | Internal Plumbing Works | 9d | 2026-01-23 | 2026-01-31 | 5824, 5838 |  | Zenith | 8710174 |
| 5841 | 36900.37000.46000.47200.49100.50900.51100.103300.1606600 | Waterproofing | 14d | 2026-02-05 | 2026-02-18 | 5825, 5840 |  | Zenith | 8710184 |
| 5842 | 36900.37000.46000.47200.49100.50900.51100.103300.1606700 | Internal Plaster | 14d | 2026-02-11 | 2026-02-24 | 5826, 5840, 5841FF+6d |  | Zenith | 8710194 |
| 5843 | 36900.37000.46000.47200.49100.50900.51100.103300.1606800 | IPS flooring work | 10d | 2026-02-25 | 2026-03-06 | 5827, 5842 |  | Zenith | 8710204 |
| 5844 | 36900.37000.46000.47200.49100.50900.51100.103300.1606900 | Toilet dado work | 10d | 2026-02-25 | 2026-03-06 | 5828, 5841, 5842 |  | Zenith | 8710214 |
| 5845 | 36900.37000.46000.47200.49100.50900.51100.103300.1607000 | Toilet flooring work | 10d | 2026-03-07 | 2026-03-16 | 5829, 5844 |  | Zenith | 8710224 |
| 5846 | 36900.37000.46000.47200.49100.50900.51100.103300.1607100 | Living dinning flooring | 10d | 2026-03-17 | 2026-03-26 | 5830, 5845 |  | Zenith | 8710234 |
| 5847 | 36900.37000.46000.47200.49100.50900.51100.103300.1607200 | False Ceiling works | 10d | 2026-03-27 | 2026-04-05 | 5831, 5846 |  | Zenith | 8710244 |
| 5848 | 36900.37000.46000.47200.49100.50900.51100.103300.1607300 | Electrical wiring work | 10d | 2026-04-06 | 2026-04-15 | 5832, 5847 |  | Zenith | 8710254 |
| 5849 | 36900.37000.46000.47200.49100.50900.51100.103300.1607400 | Aluminium door-window fixing | 12d | 2026-04-16 | 2026-04-27 | 5833, 5843, 5848 |  | Zenith | 8710264 |
| 5850 | 36900.37000.46000.47200.49100.50900.51100.103300.1607500 | Putty primer coat | 8d | 2026-04-28 | 2026-05-05 | 5834, 5849 |  | Zenith | 8710274 |
| 5851 | 36900.37000.46000.47200.49100.50900.51100.103300.1607600 | Prehung Door fixing | 6d | 2026-05-06 | 2026-05-11 | 5835, 5850 |  | Zenith | 8710284 |
| 5852 | 36900.37000.46000.47200.49100.50900.51100.103300.1607700 | Painting 1st coat | 12d | 2026-05-12 | 2026-05-23 | 5836, 5851 |  | Zenith | 8710294 |
| 5853 | 36900.37000.46000.47200.49100.50900.51100.103400 | **5th Floor** | 135d | 2026-01-23 | 2026-06-06 |  | start no earlier than 2026-01-23 | Zenith | 8650524 |
| 5854 | 36900.37000.46000.47200.49100.50900.51100.103400.1607800 | Block Work | 10d | 2026-01-23 | 2026-02-01 | 5763, 5838 |  | Zenith | 8710304 |
| 5855 | 36900.37000.46000.47200.49100.50900.51100.103400.1607900 | Fire sprinkler pipe fixing | 6d | 2026-02-02 | 2026-02-07 | 5839, 5854 |  | Zenith | 8710314 |
| 5856 | 36900.37000.46000.47200.49100.50900.51100.103400.1608000 | Internal Plumbing Works | 9d | 2026-02-02 | 2026-02-10 | 5840, 5854 |  | Zenith | 8710324 |
| 5857 | 36900.37000.46000.47200.49100.50900.51100.103400.1608100 | Waterproofing | 14d | 2026-02-19 | 2026-03-04 | 5841, 5856 |  | Zenith | 8710334 |
| 5858 | 36900.37000.46000.47200.49100.50900.51100.103400.1608200 | Internal Plaster | 14d | 2026-02-25 | 2026-03-10 | 5842, 5856, 5857FF+6d |  | Zenith | 8710344 |
| 5859 | 36900.37000.46000.47200.49100.50900.51100.103400.1608300 | IPS flooring work | 10d | 2026-03-11 | 2026-03-20 | 5843, 5858 |  | Zenith | 8710354 |
| 5860 | 36900.37000.46000.47200.49100.50900.51100.103400.1608400 | Toilet dado work | 10d | 2026-03-11 | 2026-03-20 | 5844, 5857, 5858 |  | Zenith | 8710364 |
| 5861 | 36900.37000.46000.47200.49100.50900.51100.103400.1608500 | Toilet flooring work | 10d | 2026-03-21 | 2026-03-30 | 5845, 5860 |  | Zenith | 8710374 |
| 5862 | 36900.37000.46000.47200.49100.50900.51100.103400.1608600 | Living dinning flooring | 10d | 2026-03-31 | 2026-04-09 | 5846, 5861 |  | Zenith | 8710384 |
| 5863 | 36900.37000.46000.47200.49100.50900.51100.103400.1608700 | False Ceiling works | 10d | 2026-04-10 | 2026-04-19 | 5847, 5862 |  | Zenith | 8710394 |
| 5864 | 36900.37000.46000.47200.49100.50900.51100.103400.1608800 | Electrical wiring work | 10d | 2026-04-20 | 2026-04-29 | 5848, 5863 |  | Zenith | 8710404 |
| 5865 | 36900.37000.46000.47200.49100.50900.51100.103400.1608900 | Aluminium door-window fixing | 12d | 2026-04-30 | 2026-05-11 | 5849, 5859, 5864 |  | Zenith | 8710414 |
| 5866 | 36900.37000.46000.47200.49100.50900.51100.103400.1609000 | Putty primer coat | 8d | 2026-05-12 | 2026-05-19 | 5850, 5865 |  | Zenith | 8710424 |
| 5867 | 36900.37000.46000.47200.49100.50900.51100.103400.1609100 | Prehung Door fixing | 6d | 2026-05-20 | 2026-05-25 | 5851, 5866 |  | Zenith | 8710434 |
| 5868 | 36900.37000.46000.47200.49100.50900.51100.103400.1609200 | Painting 1st coat | 12d | 2026-05-26 | 2026-06-06 | 5852, 5867 |  | Zenith | 8710444 |

| ID | WBS | Task | Duration | Start | Finish | Predecessors | Constraint | Calendar | Unique_Task_ID |
| --- | --- | --- | --- | --- | --- | --- | --- | --- | --- |
| 5869 | 36900.37000.46000.47200.49100.50900.51100.103500 | **6th Floor** | 133d | 2026-02-08 | 2026-06-20 |  | start no earlier than 2026-02-08 | Zenith | 8650534 |
| 5870 | 36900.37000.46000.47200.49100.50900.51100.103500.1609300 | Block Work | 10d | 2026-02-08 | 2026-02-17 | 5764, 5854 |  | Zenith | 8710454 |
| 5871 | 36900.37000.46000.47200.49100.50900.51100.103500.1609400 | Fire sprinkler pipe fixing | 6d | 2026-02-18 | 2026-02-23 | 5855, 5870 |  | Zenith | 8710464 |
| 5872 | 36900.37000.46000.47200.49100.50900.51100.103500.1609500 | Internal Plumbing Works | 9d | 2026-02-18 | 2026-02-26 | 5856, 5870 |  | Zenith | 8710474 |
| 5873 | 36900.37000.46000.47200.49100.50900.51100.103500.1609600 | Waterproofing | 14d | 2026-03-05 | 2026-03-18 | 5857, 5872 |  | Zenith | 8710484 |
| 5874 | 36900.37000.46000.47200.49100.50900.51100.103500.1609700 | Internal Plaster | 14d | 2026-03-11 | 2026-03-24 | 5858, 5872, 5873FF+6d |  | Zenith | 8710494 |
| 5875 | 36900.37000.46000.47200.49100.50900.51100.103500.1609800 | IPS flooring work | 10d | 2026-03-25 | 2026-04-03 | 5859, 5874 |  | Zenith | 8710504 |
| 5876 | 36900.37000.46000.47200.49100.50900.51100.103500.1609900 | Toilet dado work | 10d | 2026-03-25 | 2026-04-03 | 5860, 5873, 5874 |  | Zenith | 8710514 |
| 5877 | 36900.37000.46000.47200.49100.50900.51100.103500.1610000 | Toilet flooring work | 10d | 2026-04-04 | 2026-04-13 | 5861, 5876 |  | Zenith | 8710524 |
| 5878 | 36900.37000.46000.47200.49100.50900.51100.103500.1610100 | Living dinning flooring | 10d | 2026-04-14 | 2026-04-23 | 5862, 5877 |  | Zenith | 8710534 |
| 5879 | 36900.37000.46000.47200.49100.50900.51100.103500.1610200 | False Ceiling works | 10d | 2026-04-24 | 2026-05-03 | 5863, 5878 |  | Zenith | 8710544 |
| 5880 | 36900.37000.46000.47200.49100.50900.51100.103500.1610300 | Electrical wiring work | 10d | 2026-05-04 | 2026-05-13 | 5864, 5879 |  | Zenith | 8710554 |
| 5881 | 36900.37000.46000.47200.49100.50900.51100.103500.1610400 | Aluminium door-window fixing | 12d | 2026-05-14 | 2026-05-25 | 5865, 5875, 5880 |  | Zenith | 8710564 |
| 5882 | 36900.37000.46000.47200.49100.50900.51100.103500.1610500 | Putty primer coat | 8d | 2026-05-26 | 2026-06-02 | 5866, 5881 |  | Zenith | 8710574 |
| 5883 | 36900.37000.46000.47200.49100.50900.51100.103500.1610600 | Prehung Door fixing | 6d | 2026-06-03 | 2026-06-08 | 5867, 5882 |  | Zenith | 8710584 |
| 5884 | 36900.37000.46000.47200.49100.50900.51100.103500.1610700 | Painting 1st coat | 12d | 2026-06-09 | 2026-06-20 | 5868, 5883 |  | Zenith | 8710594 |
| 5885 | 36900.37000.46000.47200.49100.50900.51100.103600 | **7th Floor** | 137d | 2026-02-18 | 2026-07-04 |  | start no earlier than 2026-02-18 | Zenith | 8650544 |
| 5886 | 36900.37000.46000.47200.49100.50900.51100.103600.1610800 | Block Work | 10d | 2026-02-18 | 2026-02-27 | 5765, 5870 |  | Zenith | 8710604 |
| 5887 | 36900.37000.46000.47200.49100.50900.51100.103600.1610900 | Fire sprinkler pipe fixing | 6d | 2026-02-28 | 2026-03-05 | 5871, 5886 |  | Zenith | 8710614 |
| 5888 | 36900.37000.46000.47200.49100.50900.51100.103600.1611000 | Internal Plumbing Works | 9d | 2026-02-28 | 2026-03-08 | 5872, 5886 |  | Zenith | 8710624 |
| 5889 | 36900.37000.46000.47200.49100.50900.51100.103600.1611100 | Waterproofing | 14d | 2026-03-19 | 2026-04-01 | 5873, 5888 |  | Zenith | 8710634 |
| 5890 | 36900.37000.46000.47200.49100.50900.51100.103600.1611200 | Internal Plaster | 14d | 2026-03-25 | 2026-04-07 | 5874, 5888, 5889FF+6d |  | Zenith | 8710644 |
| 5891 | 36900.37000.46000.47200.49100.50900.51100.103600.1611300 | IPS flooring work | 10d | 2026-04-08 | 2026-04-17 | 5875, 5890 |  | Zenith | 8710654 |
| 5892 | 36900.37000.46000.47200.49100.50900.51100.103600.1611400 | Toilet dado work | 10d | 2026-04-08 | 2026-04-17 | 5876, 5889, 5890 |  | Zenith | 8710664 |
| 5893 | 36900.37000.46000.47200.49100.50900.51100.103600.1611500 | Toilet flooring work | 10d | 2026-04-18 | 2026-04-27 | 5877, 5892 |  | Zenith | 8710674 |
| 5894 | 36900.37000.46000.47200.49100.50900.51100.103600.1611600 | Living dinning flooring | 10d | 2026-04-28 | 2026-05-07 | 5878, 5893 |  | Zenith | 8710684 |
| 5895 | 36900.37000.46000.47200.49100.50900.51100.103600.1611700 | False Ceiling works | 10d | 2026-05-08 | 2026-05-17 | 5879, 5894 |  | Zenith | 8710694 |
| 5896 | 36900.37000.46000.47200.49100.50900.51100.103600.1611800 | Electrical wiring work | 10d | 2026-05-18 | 2026-05-27 | 5880, 5895 |  | Zenith | 8710704 |
| 5897 | 36900.37000.46000.47200.49100.50900.51100.103600.1611900 | Aluminium door-window fixing | 12d | 2026-05-28 | 2026-06-08 | 5881, 5891, 5896 |  | Zenith | 8710714 |
| 5898 | 36900.37000.46000.47200.49100.50900.51100.103600.1612000 | Putty primer coat | 8d | 2026-06-09 | 2026-06-16 | 5882, 5897 |  | Zenith | 8710724 |
| 5899 | 36900.37000.46000.47200.49100.50900.51100.103600.1612100 | Prehung Door fixing | 6d | 2026-06-17 | 2026-06-22 | 5883, 5898 |  | Zenith | 8710734 |
| 5900 | 36900.37000.46000.47200.49100.50900.51100.103600.1612200 | Painting 1st coat | 12d | 2026-06-23 | 2026-07-04 | 5884, 5899 |  | Zenith | 8710744 |

| ID | WBS | Task | Duration | Start | Finish | Predecessors | Constraint | Calendar | Unique_Task_ID |
| --- | --- | --- | --- | --- | --- | --- | --- | --- | --- |
| 5901 | 36900.37000.46000.47200.49100.50900.51100.103700 | **8th Floor** | 141d | 2026-02-28 | 2026-07-18 |  | start no earlier than 2026-02-28 | Zenith | 8650554 |
| 5902 | 36900.37000.46000.47200.49100.50900.51100.103700.1612300 | Block Work | 10d | 2026-02-28 | 2026-03-09 | 5766, 5886 |  | Zenith | 8710754 |
| 5903 | 36900.37000.46000.47200.49100.50900.51100.103700.1612400 | Fire sprinkler pipe fixing | 6d | 2026-03-10 | 2026-03-15 | 5887, 5902 |  | Zenith | 8710764 |
| 5904 | 36900.37000.46000.47200.49100.50900.51100.103700.1612500 | Internal Plumbing Works | 9d | 2026-03-10 | 2026-03-18 | 5888, 5902 |  | Zenith | 8710774 |
| 5905 | 36900.37000.46000.47200.49100.50900.51100.103700.1612600 | Waterproofing | 14d | 2026-04-02 | 2026-04-15 | 5889, 5904 |  | Zenith | 8710784 |
| 5906 | 36900.37000.46000.47200.49100.50900.51100.103700.1612700 | Internal Plaster | 14d | 2026-04-08 | 2026-04-21 | 5890, 5904, 5905FF+6d |  | Zenith | 8710794 |
| 5907 | 36900.37000.46000.47200.49100.50900.51100.103700.1612800 | IPS flooring work | 10d | 2026-04-22 | 2026-05-01 | 5891, 5906 |  | Zenith | 8710804 |
| 5908 | 36900.37000.46000.47200.49100.50900.51100.103700.1612900 | Toilet dado work | 10d | 2026-04-22 | 2026-05-01 | 5892, 5905, 5906 |  | Zenith | 8710814 |
| 5909 | 36900.37000.46000.47200.49100.50900.51100.103700.1613000 | Toilet flooring work | 10d | 2026-05-02 | 2026-05-11 | 5893, 5908 |  | Zenith | 8710824 |
| 5910 | 36900.37000.46000.47200.49100.50900.51100.103700.1613100 | Living dinning flooring | 10d | 2026-05-12 | 2026-05-21 | 5894, 5909 |  | Zenith | 8710834 |
| 5911 | 36900.37000.46000.47200.49100.50900.51100.103700.1613200 | False Ceiling works | 10d | 2026-05-22 | 2026-05-31 | 5895, 5910 |  | Zenith | 8710844 |
| 5912 | 36900.37000.46000.47200.49100.50900.51100.103700.1613300 | Electrical wiring work | 10d | 2026-06-01 | 2026-06-10 | 5896, 5911 |  | Zenith | 8710854 |
| 5913 | 36900.37000.46000.47200.49100.50900.51100.103700.1613400 | Aluminium door-window fixing | 12d | 2026-06-11 | 2026-06-22 | 5897, 5907, 5912 |  | Zenith | 8710864 |
| 5914 | 36900.37000.46000.47200.49100.50900.51100.103700.1613500 | Putty primer coat | 8d | 2026-06-23 | 2026-06-30 | 5898, 5913 |  | Zenith | 8710874 |
| 5915 | 36900.37000.46000.47200.49100.50900.51100.103700.1613600 | Prehung Door fixing | 6d | 2026-07-01 | 2026-07-06 | 5899, 5914 |  | Zenith | 8710884 |
| 5916 | 36900.37000.46000.47200.49100.50900.51100.103700.1613700 | Painting 1st coat | 12d | 2026-07-07 | 2026-07-18 | 5900, 5915 |  | Zenith | 8710894 |
| 5917 | 36900.37000.46000.47200.49100.50900.51100.103800 | **9th Floor** | 145d | 2026-03-10 | 2026-08-01 |  | start no earlier than 2026-03-10 | Zenith | 8650564 |
| 5918 | 36900.37000.46000.47200.49100.50900.51100.103800.1613800 | Block Work | 10d | 2026-03-10 | 2026-03-19 | 5767, 5902 |  | Zenith | 8710904 |
| 5919 | 36900.37000.46000.47200.49100.50900.51100.103800.1613900 | Fire sprinkler pipe fixing | 6d | 2026-03-20 | 2026-03-25 | 5903, 5918 |  | Zenith | 8710914 |
| 5920 | 36900.37000.46000.47200.49100.50900.51100.103800.1614000 | Internal Plumbing Works | 9d | 2026-03-20 | 2026-03-28 | 5904, 5918 |  | Zenith | 8710924 |
| 5921 | 36900.37000.46000.47200.49100.50900.51100.103800.1614100 | Waterproofing | 14d | 2026-04-16 | 2026-04-29 | 5905, 5920 |  | Zenith | 8710934 |
| 5922 | 36900.37000.46000.47200.49100.50900.51100.103800.1614200 | Internal Plaster | 14d | 2026-04-22 | 2026-05-05 | 5906, 5920, 5921FF+6d |  | Zenith | 8710944 |
| 5923 | 36900.37000.46000.47200.49100.50900.51100.103800.1614300 | IPS flooring work | 10d | 2026-05-06 | 2026-05-15 | 5907, 5922 |  | Zenith | 8710954 |
| 5924 | 36900.37000.46000.47200.49100.50900.51100.103800.1614400 | Toilet dado work | 10d | 2026-05-06 | 2026-05-15 | 5908, 5921, 5922 |  | Zenith | 8710964 |
| 5925 | 36900.37000.46000.47200.49100.50900.51100.103800.1614500 | Toilet flooring work | 10d | 2026-05-16 | 2026-05-25 | 5909, 5924 |  | Zenith | 8710974 |
| 5926 | 36900.37000.46000.47200.49100.50900.51100.103800.1614600 | Living dinning flooring | 10d | 2026-05-26 | 2026-06-04 | 5910, 5925 |  | Zenith | 8710984 |
| 5927 | 36900.37000.46000.47200.49100.50900.51100.103800.1614700 | False Ceiling works | 10d | 2026-06-05 | 2026-06-14 | 5911, 5926 |  | Zenith | 8710994 |
| 5928 | 36900.37000.46000.47200.49100.50900.51100.103800.1614800 | Electrical wiring work | 10d | 2026-06-15 | 2026-06-24 | 5912, 5927 |  | Zenith | 8711004 |
| 5929 | 36900.37000.46000.47200.49100.50900.51100.103800.1614900 | Aluminium door-window fixing | 12d | 2026-06-25 | 2026-07-06 | 5913, 5923, 5928 |  | Zenith | 8711014 |
| 5930 | 36900.37000.46000.47200.49100.50900.51100.103800.1615000 | Putty primer coat | 8d | 2026-07-07 | 2026-07-14 | 5914, 5929 |  | Zenith | 8711024 |
| 5931 | 36900.37000.46000.47200.49100.50900.51100.103800.1615100 | Prehung Door fixing | 6d | 2026-07-15 | 2026-07-20 | 5915, 5930 |  | Zenith | 8711034 |
| 5932 | 36900.37000.46000.47200.49100.50900.51100.103800.1615200 | Painting 1st coat | 12d | 2026-07-21 | 2026-08-01 | 5916, 5931 |  | Zenith | 8711044 |

| ID | WBS | Task | Duration | Start | Finish | Predecessors | Constraint | Calendar | Unique_Task_ID |
| --- | --- | --- | --- | --- | --- | --- | --- | --- | --- |
| 5933 | 36900.37000.46000.47200.49100.50900.51100.103900 | **10th Floor** | 149d | 2026-03-20 | 2026-08-15 |  | start no earlier than 2026-03-20 | Zenith | 8650574 |
| 5934 | 36900.37000.46000.47200.49100.50900.51100.103900.1615300 | Block Work | 10d | 2026-03-20 | 2026-03-29 | 5768, 5918 |  | Zenith | 8711054 |
| 5935 | 36900.37000.46000.47200.49100.50900.51100.103900.1615400 | Fire sprinkler pipe fixing | 6d | 2026-03-30 | 2026-04-04 | 5919, 5934 |  | Zenith | 8711064 |
| 5936 | 36900.37000.46000.47200.49100.50900.51100.103900.1615500 | Internal Plumbing Works | 9d | 2026-03-30 | 2026-04-07 | 5920, 5934 |  | Zenith | 8711074 |
| 5937 | 36900.37000.46000.47200.49100.50900.51100.103900.1615600 | Waterproofing | 14d | 2026-04-30 | 2026-05-13 | 5921, 5936 |  | Zenith | 8711084 |
| 5938 | 36900.37000.46000.47200.49100.50900.51100.103900.1615700 | Internal Plaster | 14d | 2026-05-06 | 2026-05-19 | 5922, 5936, 5937FF+6d |  | Zenith | 8711094 |
| 5939 | 36900.37000.46000.47200.49100.50900.51100.103900.1615800 | IPS flooring work | 10d | 2026-05-20 | 2026-05-29 | 5923, 5938 |  | Zenith | 8711104 |
| 5940 | 36900.37000.46000.47200.49100.50900.51100.103900.1615900 | Toilet dado work | 10d | 2026-05-20 | 2026-05-29 | 5924, 5937, 5938 |  | Zenith | 8711114 |
| 5941 | 36900.37000.46000.47200.49100.50900.51100.103900.1616000 | Toilet flooring work | 10d | 2026-05-30 | 2026-06-08 | 5925, 5940 |  | Zenith | 8711124 |
| 5942 | 36900.37000.46000.47200.49100.50900.51100.103900.1616100 | Living dinning flooring | 10d | 2026-06-09 | 2026-06-18 | 5926, 5941 |  | Zenith | 8711134 |
| 5943 | 36900.37000.46000.47200.49100.50900.51100.103900.1616200 | False Ceiling works | 10d | 2026-06-19 | 2026-06-28 | 5927, 5942 |  | Zenith | 8711144 |
| 5944 | 36900.37000.46000.47200.49100.50900.51100.103900.1616300 | Electrical wiring work | 10d | 2026-06-29 | 2026-07-08 | 5928, 5943 |  | Zenith | 8711154 |
| 5945 | 36900.37000.46000.47200.49100.50900.51100.103900.1616400 | Aluminium door-window fixing | 12d | 2026-07-09 | 2026-07-20 | 5929, 5939, 5944 |  | Zenith | 8711164 |
| 5946 | 36900.37000.46000.47200.49100.50900.51100.103900.1616500 | Putty primer coat | 8d | 2026-07-21 | 2026-07-28 | 5930, 5945 |  | Zenith | 8711174 |
| 5947 | 36900.37000.46000.47200.49100.50900.51100.103900.1616600 | Prehung Door fixing | 6d | 2026-07-29 | 2026-08-03 | 5931, 5946 |  | Zenith | 8711184 |
| 5948 | 36900.37000.46000.47200.49100.50900.51100.103900.1616700 | Painting 1st coat | 12d | 2026-08-04 | 2026-08-15 | 5932, 5947 |  | Zenith | 8711194 |
| 5949 | 36900.37000.46000.47200.49100.50900.51100.104000 | **11th Floor** | 153d | 2026-03-30 | 2026-08-29 |  | start no earlier than 2026-03-30 | Zenith | 8650584 |
| 5950 | 36900.37000.46000.47200.49100.50900.51100.104000.1616800 | Block Work | 10d | 2026-03-30 | 2026-04-08 | 5769, 5934 |  | Zenith | 8711204 |
| 5951 | 36900.37000.46000.47200.49100.50900.51100.104000.1616900 | Fire sprinkler pipe fixing | 6d | 2026-04-09 | 2026-04-14 | 5935, 5950 |  | Zenith | 8711214 |
| 5952 | 36900.37000.46000.47200.49100.50900.51100.104000.1617000 | Internal Plumbing Works | 9d | 2026-04-09 | 2026-04-17 | 5936, 5950 |  | Zenith | 8711224 |
| 5953 | 36900.37000.46000.47200.49100.50900.51100.104000.1617100 | Waterproofing | 14d | 2026-05-14 | 2026-05-27 | 5937, 5952 |  | Zenith | 8711234 |
| 5954 | 36900.37000.46000.47200.49100.50900.51100.104000.1617200 | Internal Plaster | 14d | 2026-05-20 | 2026-06-02 | 5938, 5952, 5953FF+6d |  | Zenith | 8711244 |
| 5955 | 36900.37000.46000.47200.49100.50900.51100.104000.1617300 | IPS flooring work | 10d | 2026-06-03 | 2026-06-12 | 5939, 5954 |  | Zenith | 8711254 |
| 5956 | 36900.37000.46000.47200.49100.50900.51100.104000.1617400 | Toilet dado work | 10d | 2026-06-03 | 2026-06-12 | 5940, 5953, 5954 |  | Zenith | 8711264 |
| 5957 | 36900.37000.46000.47200.49100.50900.51100.104000.1617500 | Toilet flooring work | 10d | 2026-06-13 | 2026-06-22 | 5941, 5956 |  | Zenith | 8711274 |
| 5958 | 36900.37000.46000.47200.49100.50900.51100.104000.1617600 | Living dinning flooring | 10d | 2026-06-23 | 2026-07-02 | 5942, 5957 |  | Zenith | 8711284 |
| 5959 | 36900.37000.46000.47200.49100.50900.51100.104000.1617700 | False Ceiling works | 10d | 2026-07-03 | 2026-07-12 | 5943, 5958 |  | Zenith | 8711294 |
| 5960 | 36900.37000.46000.47200.49100.50900.51100.104000.1617800 | Electrical wiring work | 10d | 2026-07-13 | 2026-07-22 | 5944, 5959 |  | Zenith | 8711304 |
| 5961 | 36900.37000.46000.47200.49100.50900.51100.104000.1617900 | Aluminium door-window fixing | 12d | 2026-07-23 | 2026-08-03 | 5945, 5955, 5960 |  | Zenith | 8711314 |
| 5962 | 36900.37000.46000.47200.49100.50900.51100.104000.1618000 | Putty primer coat | 8d | 2026-08-04 | 2026-08-11 | 5946, 5961 |  | Zenith | 8711324 |
| 5963 | 36900.37000.46000.47200.49100.50900.51100.104000.1618100 | Prehung Door fixing | 6d | 2026-08-12 | 2026-08-17 | 5947, 5962 |  | Zenith | 8711334 |
| 5964 | 36900.37000.46000.47200.49100.50900.51100.104000.1618200 | Painting 1st coat | 12d | 2026-08-18 | 2026-08-29 | 5948, 5963 |  | Zenith | 8711344 |

| ID | WBS | Task | Duration | Start | Finish | Predecessors | Constraint | Calendar | Unique_Task_ID |
| --- | --- | --- | --- | --- | --- | --- | --- | --- | --- |
| 5965 | 36900.37000.46000.47200.49100.50900.51100.104100 | **12th Floor** | 157d | 2026-04-09 | 2026-09-12 |  | start no earlier than 2026-04-09 | Zenith | 8650594 |
| 5966 | 36900.37000.46000.47200.49100.50900.51100.104100.1618300 | Block Work | 10d | 2026-04-09 | 2026-04-18 | 5770, 5950 |  | Zenith | 8711354 |
| 5967 | 36900.37000.46000.47200.49100.50900.51100.104100.1618400 | Fire sprinkler pipe fixing | 6d | 2026-04-19 | 2026-04-24 | 5951, 5966 |  | Zenith | 8711364 |
| 5968 | 36900.37000.46000.47200.49100.50900.51100.104100.1618500 | Internal Plumbing Works | 9d | 2026-04-19 | 2026-04-27 | 5952, 5966 |  | Zenith | 8711374 |
| 5969 | 36900.37000.46000.47200.49100.50900.51100.104100.1618600 | Waterproofing | 14d | 2026-05-28 | 2026-06-10 | 5953, 5968 |  | Zenith | 8711384 |
| 5970 | 36900.37000.46000.47200.49100.50900.51100.104100.1618700 | Internal Plaster | 14d | 2026-06-03 | 2026-06-16 | 5954, 5968, 5969FF+6d |  | Zenith | 8711394 |
| 5971 | 36900.37000.46000.47200.49100.50900.51100.104100.1618800 | IPS flooring work | 10d | 2026-06-17 | 2026-06-26 | 5955, 5970 |  | Zenith | 8711404 |
| 5972 | 36900.37000.46000.47200.49100.50900.51100.104100.1618900 | Toilet dado work | 10d | 2026-06-17 | 2026-06-26 | 5956, 5969, 5970 |  | Zenith | 8711414 |
| 5973 | 36900.37000.46000.47200.49100.50900.51100.104100.1619000 | Toilet flooring work | 10d | 2026-06-27 | 2026-07-06 | 5957, 5972 |  | Zenith | 8711424 |
| 5974 | 36900.37000.46000.47200.49100.50900.51100.104100.1619100 | Living dinning flooring | 10d | 2026-07-07 | 2026-07-16 | 5958, 5973 |  | Zenith | 8711434 |
| 5975 | 36900.37000.46000.47200.49100.50900.51100.104100.1619200 | False Ceiling works | 10d | 2026-07-17 | 2026-07-26 | 5959, 5974 |  | Zenith | 8711444 |
| 5976 | 36900.37000.46000.47200.49100.50900.51100.104100.1619300 | Electrical wiring work | 10d | 2026-07-27 | 2026-08-05 | 5960, 5975 |  | Zenith | 8711454 |
| 5977 | 36900.37000.46000.47200.49100.50900.51100.104100.1619400 | Aluminium door-window fixing | 12d | 2026-08-06 | 2026-08-17 | 5961, 5971, 5976 |  | Zenith | 8711464 |
| 5978 | 36900.37000.46000.47200.49100.50900.51100.104100.1619500 | Putty primer coat | 8d | 2026-08-18 | 2026-08-25 | 5962, 5977 |  | Zenith | 8711474 |
| 5979 | 36900.37000.46000.47200.49100.50900.51100.104100.1619600 | Prehung Door fixing | 6d | 2026-08-26 | 2026-08-31 | 5963, 5978 |  | Zenith | 8711484 |
| 5980 | 36900.37000.46000.47200.49100.50900.51100.104100.1619700 | Painting 1st coat | 12d | 2026-09-01 | 2026-09-12 | 5964, 5979 |  | Zenith | 8711494 |
| 5981 | 36900.37000.46000.47200.49100.50900.51100.104200 | **13th Floor** | 161d | 2026-04-19 | 2026-09-26 |  | start no earlier than 2026-04-19 | Zenith | 8650604 |
| 5982 | 36900.37000.46000.47200.49100.50900.51100.104200.1619800 | Block Work | 10d | 2026-04-19 | 2026-04-28 | 5966 |  | Zenith | 8711504 |
| 5983 | 36900.37000.46000.47200.49100.50900.51100.104200.1619900 | Fire sprinkler pipe fixing | 6d | 2026-04-29 | 2026-05-04 | 5967, 5982 |  | Zenith | 8711514 |
| 5984 | 36900.37000.46000.47200.49100.50900.51100.104200.1620000 | Internal Plumbing Works | 9d | 2026-04-29 | 2026-05-07 | 5968, 5982 |  | Zenith | 8711524 |
| 5985 | 36900.37000.46000.47200.49100.50900.51100.104200.1620100 | Waterproofing | 14d | 2026-06-11 | 2026-06-24 | 5969, 5984 |  | Zenith | 8711534 |
| 5986 | 36900.37000.46000.47200.49100.50900.51100.104200.1620200 | Internal Plaster | 14d | 2026-06-17 | 2026-06-30 | 5970, 5983FS+15d, 5984, 5985FF+6d |  | Zenith | 8711544 |
| 5987 | 36900.37000.46000.47200.49100.50900.51100.104200.1620300 | IPS flooring work | 10d | 2026-07-01 | 2026-07-10 | 5971, 5986 |  | Zenith | 8711554 |
| 5988 | 36900.37000.46000.47200.49100.50900.51100.104200.1620400 | Toilet dado work | 10d | 2026-07-01 | 2026-07-10 | 5972, 5985, 5986 |  | Zenith | 8711564 |
| 5989 | 36900.37000.46000.47200.49100.50900.51100.104200.1620500 | Toilet flooring work | 10d | 2026-07-11 | 2026-07-20 | 5973, 5988 |  | Zenith | 8711574 |
| 5990 | 36900.37000.46000.47200.49100.50900.51100.104200.1620600 | Living dinning flooring | 10d | 2026-07-21 | 2026-07-30 | 5974, 5989 |  | Zenith | 8711584 |
| 5991 | 36900.37000.46000.47200.49100.50900.51100.104200.1620700 | False Ceiling works | 10d | 2026-07-31 | 2026-08-09 | 5975, 5990 |  | Zenith | 8711594 |
| 5992 | 36900.37000.46000.47200.49100.50900.51100.104200.1620800 | Electrical wiring work | 10d | 2026-08-10 | 2026-08-19 | 5976, 5991 |  | Zenith | 8711604 |
| 5993 | 36900.37000.46000.47200.49100.50900.51100.104200.1620900 | Aluminium door-window fixing | 12d | 2026-08-20 | 2026-08-31 | 5977, 5987, 5992 |  | Zenith | 8711614 |
| 5994 | 36900.37000.46000.47200.49100.50900.51100.104200.1621000 | Putty primer coat | 8d | 2026-09-01 | 2026-09-08 | 5978, 5993 |  | Zenith | 8711624 |
| 5995 | 36900.37000.46000.47200.49100.50900.51100.104200.1621100 | Prehung Door fixing | 6d | 2026-09-09 | 2026-09-14 | 5979, 5994 |  | Zenith | 8711634 |
| 5996 | 36900.37000.46000.47200.49100.50900.51100.104200.1621200 | Painting 1st coat | 12d | 2026-09-15 | 2026-09-26 | 5980, 5995 |  | Zenith | 8711644 |

| ID | WBS | Task | Duration | Start | Finish | Predecessors | Constraint | Calendar | Unique_Task_ID |
| --- | --- | --- | --- | --- | --- | --- | --- | --- | --- |
| 5997 | 36900.37000.46000.47200.49100.50900.224500 | **Terrace Finishing** | 71d | 2026-03-10 | 2026-05-19 |  | start no earlier than 2026-03-10 | Zenith | 8656854 |
| 5998 | 36900.37000.46000.47200.49100.50900.224500.1015000 | Terrace waterproofing | 25d | 2026-03-10 | 2026-04-03 | 5753FS+2d |  | Zenith | 8682034 |
| 5999 | 36900.37000.46000.47200.49100.50900.224500.1015100 | Terrace finishing | 45d | 2026-04-05 | 2026-05-19 | 5998FS+1d |  | Zenith | 8682024 |
| 6000 | 36900.37000.46000.47200.49100.50900.117900 | **Common Area Finishing** | 235d | 2026-03-08 | 2026-10-28 |  | start no earlier than 2026-03-08 | Zenith | 8651754 |
| 6001 | 36900.37000.46000.47200.49100.50900.117900.1015200 | Masonary Work | 45d | 2026-03-08 | 2026-04-21 | 5753 |  | Zenith | 8682014 |
| 6002 | 36900.37000.46000.47200.49100.50900.117900.1015300 | Fire sprinkler pipe fixing | 45d | 2026-03-18 | 2026-05-01 | 5753FS+10d |  | Zenith | 8682004 |
| 6003 | 36900.37000.46000.47200.49100.50900.117900.1015400 | Corridoor, staircase, shaft Plaster & whitewash | 120d | 2026-04-12 | 2026-08-09 | 6001FF+110d, 6002SS+15d |  | Zenith | 8681994 |
| 6004 | 36900.37000.46000.47200.49100.50900.117900.1015500 | Staircase railing fixing | 100d | 2026-03-13 | 2026-06-20 | 6001FF+60d |  | Zenith | 8681984 |
| 6005 | 36900.37000.46000.47200.49100.50900.117900.1015600 | Fire staircase flooring | 100d | 2026-04-07 | 2026-07-15 | 6004FF+25d |  | Zenith | 8681974 |
| 6006 | 36900.37000.46000.47200.49100.50900.117900.1015700 | Main staircase flooring | 100d | 2026-04-07 | 2026-07-15 | 6004FF+25d |  | Zenith | 8681964 |
| 6007 | 36900.37000.46000.47200.49100.50900.117900.1015800 | Lobby flooring & Corridor | 100d | 2026-05-07 | 2026-08-14 | 6006FF+30d |  | Zenith | 8681954 |
| 6008 | 36900.37000.46000.47200.49100.50900.117900.1015900 | Fire & FHC door work | 60d | 2026-06-11 | 2026-08-09 | 6005FF+25d |  | Zenith | 8681944 |
| 6009 | 36900.37000.46000.47200.49100.50900.117900.1016000 | Ceiling & wall putty | 100d | 2026-05-27 | 2026-09-03 | 6007FF+20d, 6008FF+25d |  | Zenith | 8681934 |
| 6010 | 36900.37000.46000.47200.49100.50900.117900.1016100 | Ceiling & wall primer-painting | 100d | 2026-06-16 | 2026-09-23 | 6009FF+20d |  | Zenith | 8681924 |
| 6011 | 36900.37000.46000.47200.49100.50900.117900.1016200 | Electrical wiring work | 100d | 2026-07-01 | 2026-10-08 | 6010FF+15d |  | Zenith | 8681914 |
| 6012 | 36900.37000.46000.47200.49100.50900.117900.1016300 | Light fixture supply & installation | 20d | 2026-10-09 | 2026-10-28 | 6011 |  | Zenith | 8681904 |
| 6013 | 36900.37000.46000.47200.49100.50900.122400 | **Balcony Railing** | 138d | 2026-04-24 | 2026-09-08 |  | start no earlier than 2026-04-24 | Zenith | 8651884 |
| 6014 | 36900.37000.46000.47200.49100.50900.122400.1016400 | 3rd Floor | 10d | 2026-04-24 | 2026-05-03 | 5878 |  | Zenith | 8681894 |
| 6015 | 36900.37000.46000.47200.49100.50900.122400.1016500 | 4th Floor | 10d | 2026-05-08 | 2026-05-17 | 6014, 5894 |  | Zenith | 8681884 |
| 6016 | 36900.37000.46000.47200.49100.50900.122400.1016600 | 5th Floor | 10d | 2026-05-22 | 2026-05-31 | 6015, 5910 |  | Zenith | 8681874 |
| 6017 | 36900.37000.46000.47200.49100.50900.122400.1016700 | 6th Floor | 10d | 2026-06-05 | 2026-06-14 | 6016, 5926 |  | Zenith | 8681864 |
| 6018 | 36900.37000.46000.47200.49100.50900.122400.1016800 | 7th Floor | 10d | 2026-06-19 | 2026-06-28 | 6017, 5942 |  | Zenith | 8681854 |
| 6019 | 36900.37000.46000.47200.49100.50900.122400.1016900 | 8th Floor | 10d | 2026-07-03 | 2026-07-12 | 6018, 5958 |  | Zenith | 8681844 |
| 6020 | 36900.37000.46000.47200.49100.50900.122400.1017000 | 9th Floor | 10d | 2026-07-17 | 2026-07-26 | 6019, 5974 |  | Zenith | 8681834 |
| 6021 | 36900.37000.46000.47200.49100.50900.122400.1017100 | 10th Floor | 10d | 2026-07-31 | 2026-08-09 | 6020, 5990 |  | Zenith | 8681824 |
| 6022 | 36900.37000.46000.47200.49100.50900.122400.1017200 | 11th Floor | 10d | 2026-08-10 | 2026-08-19 | 6021 |  | Zenith | 8681814 |
| 6023 | 36900.37000.46000.47200.49100.50900.122400.1017300 | 12th Floor | 10d | 2026-08-20 | 2026-08-29 | 6022 |  | Zenith | 8681804 |
| 6024 | 36900.37000.46000.47200.49100.50900.122400.1017400 | 13th Floor | 10d | 2026-08-30 | 2026-09-08 | 6023 |  | Zenith | 8681794 |

| ID | WBS | Task | Duration | Start | Finish | Predecessors | Constraint | Calendar | Unique_Task_ID |
| --- | --- | --- | --- | --- | --- | --- | --- | --- | --- |
| 6025 | 36900.37000.46000.47200.120400 | **MEP work** | 179d | 2026-03-08 | 2026-09-02 |  | start no earlier than 2026-03-08 | Zenith | 8651874 |
| 6026 | 36900.37000.46000.47200.120400.127000 | **Electrical work** | 160d | 2026-03-08 | 2026-08-14 |  | start no earlier than 2026-03-08 | Zenith | 8652024 |
| 6027 | 36900.37000.46000.47200.120400.127000.820100 | Cable Tray | 60d | 2026-03-08 | 2026-05-06 | 5753 |  | Zenith | 8722434 |
| 6028 | 36900.37000.46000.47200.120400.127000.820200 | Cable, main & sub main | 30d | 2026-04-12 | 2026-05-11 | 6027FF+5d |  | Zenith | 8722424 |
| 6029 | 36900.37000.46000.47200.120400.127000.820300 | LT panel & DB | 60d | 2026-05-07 | 2026-07-05 | 6027 |  | Zenith | 8722414 |
| 6030 | 36900.37000.46000.47200.120400.127000.820400 | Rising main | 45d | 2026-05-22 | 2026-07-05 | 6027FS+15d |  | Zenith | 8722404 |
| 6031 | 36900.37000.46000.47200.120400.127000.820500 | Earthing Works | 45d | 2026-05-22 | 2026-07-05 | 6027FS+15d |  | Zenith | 8722394 |
| 6032 | 36900.37000.46000.47200.120400.127000.820600 | Energy meter | 30d | 2026-07-16 | 2026-08-14 | 6028, 6031FS+10d |  | Zenith | 8722384 |
| 6033 | 36900.37000.46000.47200.120400.127000.820700 | HVAC & Exhast fan | 75d | 2026-05-02 | 2026-07-15 | 6027FS-5d |  | Zenith | 8722374 |
| 6034 | 36900.37000.46000.47200.120400.127000.820800 | FTTH | 30d | 2026-06-26 | 2026-07-25 | 6029FS-10d |  | Zenith | 8722364 |
| 6035 | 36900.37000.46000.47200.120400.127000.820900 | Security System - FA & PA | 45d | 2026-06-21 | 2026-08-04 | 6029FS-15d, 6030FF+10d, 6033FF+5d, 6034FF |  | Zenith | 8722354 |
| 6036 | 36900.37000.46000.47200.120400.146000 | **Plumbing work** | 152d | 2026-04-04 | 2026-09-02 |  | start no earlier than 2026-04-04 | Zenith | 8652714 |
| 6037 | 36900.37000.46000.47200.120400.146000.821000 | Terrace looping | 20d | 2026-04-04 | 2026-04-23 | 5998 |  | Zenith | 8722344 |
| 6038 | 36900.37000.46000.47200.120400.146000.821100 | Shaft Plumbing | 20d | 2026-07-11 | 2026-07-30 | 6037, 6003FS-30d |  | Zenith | 8722334 |
| 6039 | 36900.37000.46000.47200.120400.146000.821200 | CP sanitary fixture supply | 20d | 2026-07-31 | 2026-08-19 | 6038 |  | Zenith | 8722324 |
| 6040 | 36900.37000.46000.47200.120400.146000.821300 | Cold & flushing water supply | 20d | 2026-07-31 | 2026-08-19 | 6038 |  | Zenith | 8722314 |
| 6041 | 36900.37000.46000.47200.120400.146000.821400 | Misc work | 20d | 2026-08-14 | 2026-09-02 | 6039FS-6d, 6040FS-6d |  | Zenith | 8722304 |
| 6042 | 36900.37000.46000.47200.120400.170900 | **Fire fighting work** | 75d | 2026-05-27 | 2026-08-09 |  | start no earlier than 2026-05-27 | Zenith | 8653304 |
| 6043 | 36900.37000.46000.47200.120400.170900.821500 | Fire hydrant work | 30d | 2026-05-27 | 2026-06-25 | 6003SS+45d |  | Zenith | 8722294 |
| 6044 | 36900.37000.46000.47200.120400.170900.821600 | Pipe connection & sprinkler installation | 30d | 2026-06-27 | 2026-07-26 | 6043FS+1d |  | Zenith | 8722284 |
| 6045 | 36900.37000.46000.47200.120400.170900.821700 | Shaft Downtake works | 30d | 2026-06-11 | 2026-07-10 | 5998, 6003FS-60d |  | Zenith | 8722274 |
| 6046 | 36900.37000.46000.47200.120400.170900.821800 | Connection to pump room | 30d | 2026-07-11 | 2026-08-09 | 6045 |  | Zenith | 8722264 |
| 6047 | 36900.37000.46000.47200.120400.218800 | **Escalator/Travelator works** | 105d | 2026-04-21 | 2026-08-03 |  | start no earlier than 2026-04-21 | Zenith | 8656584 |
| 6048 | 36900.37000.46000.47200.120400.218800.821900 | Shaft/Pit Handover | 30d | 2026-04-21 | 2026-05-20 | 5770FS+30d |  | Zenith | 8722254 |
| 6049 | 36900.37000.46000.47200.120400.218800.822000 | Escalator/Travelator installation work | 45d | 2026-05-21 | 2026-07-04 | 6048 |  | Zenith | 8722244 |
| 6050 | 36900.37000.46000.47200.120400.218800.822100 | Testing and commissioning | 30d | 2026-07-05 | 2026-08-03 | 6049, 5817FS+15d |  | Zenith | 8722234 |

| ID | WBS | Task | Duration | Start | Finish | Predecessors | Constraint | Calendar | Unique_Task_ID |
| --- | --- | --- | --- | --- | --- | --- | --- | --- | --- |
| 6051 | 36900.37000.46000.47200.120400.218900 | **Lift work** | 120d | 2026-04-06 | 2026-08-03 |  | start no earlier than 2026-04-06 | Zenith | 8656574 |
| 6052 | 36900.37000.46000.47200.120400.218900.822200 | Lift Shaft/Pit Handover | 30d | 2026-04-06 | 2026-05-05 | 5770FS+15d |  | Zenith | 8722224 |
| 6053 | 36900.37000.46000.47200.120400.218900.822300 | Lift installation work | 45d | 2026-05-06 | 2026-06-19 | 6052 |  | Zenith | 8722214 |
| 6054 | 36900.37000.46000.47200.120400.218900.822400 | Lift testing and commissioning | 45d | 2026-06-20 | 2026-08-03 | 6053 |  | Zenith | 8722204 |
| 6055 | 36900.37000.46000.47200.227000 | **Basement lobby** | 60d | 2026-04-06 | 2026-06-04 |  | start no earlier than 2026-04-06 | Zenith | 8656864 |
| 6056 | 36900.37000.46000.47200.227000.379600 | Basement lobby | 60d | 2026-04-06 | 2026-06-04 | 6053FF-15d, 5669FS+30d, 5670FS+30d |  | Zenith | 8731094 |
| 6057 | 36900.37000.46000.47200.223200 | **External Paint Works** | 135d | 2026-03-24 | 2026-08-05 |  | start no earlier than 2026-03-24 | Zenith | 8656724 |
| 6058 | 36900.37000.46000.47200.223200.379700 | Surface prepration | 60d | 2026-03-24 | 2026-05-22 | 5770FS+2d |  | Zenith | 8731084 |
| 6059 | 36900.37000.46000.47200.223200.379800 | External Painting (Primer, texture & first coat) | 60d | 2026-06-07 | 2026-08-05 | 6058FS+15d |  | Zenith | 8731074 |
| 6060 | 36900.37000.46000.47200.276700 | OC Application/Readiness | 1d | 2027-01-12 | 2027-01-12 | 5996FF+15d, 6080FF+15d, 6056FF+15d, 6059FF+15d, 5819FF+10d, 5999FF+60d, 6012FF+5d, 6035FF+15d, 6032FF+15d, 6079FF+5d, 6041FF+15d, 6044FF+15d, 6046FF+15d, 6050FF+15d, 6054FF+15d |  | Zenith | 8735204 |
| 6061 | 36900.37000.46000.47200.276800 | OC Receipt | 60d | 2027-01-13 | 2027-03-13 | 6060 |  | Zenith | 8735194 |
| 6062 | 36900.37000.46000.47200.120600 | **Post OC activities** | 422d | 2026-06-15 | 2027-09-24 |  | start no earlier than 2026-06-15 | Zenith | 8652164 |
| 6063 | 36900.37000.46000.47200.120600.379900 | CP & Sanitaryware | 120d | 2027-03-14 | 2027-07-11 | 6061 |  | Zenith | 8731064 |
| 6064 | 36900.37000.46000.47200.120600.380000 | Electrical Fixtures And Fittings | 120d | 2027-03-14 | 2027-07-11 | 6061 |  | Zenith | 8731054 |
| 6065 | 36900.37000.46000.47200.120600.380100 | Final coat paint external | 90d | 2026-08-06 | 2026-12-18 | 6059 |  | Zenith | 8731044 |
| 6066 | 36900.37000.46000.47200.120600.380200 | Final Coat Paint Internal | 90d | 2027-03-14 | 2027-06-11 | 6061 |  | Zenith | 8731034 |
| 6067 | 36900.37000.46000.47200.120600.380300 | Split AC Units installation | 90d | 2027-06-27 | 2027-09-24 | 6066FS+15d |  | Zenith | 8731024 |
| 6068 | 36900.37000.46000.47200.120600.380400 | Balcony Railing Glass Fixing | 100d | 2027-04-03 | 2027-07-11 | 6066FF+30d, 6024FS+15d |  | Zenith | 8731014 |
| 6069 | 36900.37000.46000.47200.120600.380500 | Wooden Flooring | 180d | 2027-03-14 | 2027-09-09 | 6061 |  | Zenith | 8731004 |
| 6070 | 36900.37000.46000.47200.120600.1778000 | On Completion of 6th Floor | 14d | 2026-06-15 | 2026-07-02 |  | start no earlier than 2026-06-15 | Yashwantpur Finshing | 9323754 |
| 6071 | 36900.37000.46000.47200.120600.1777900 | On Completion of Unit Internal Plaster | 5d | 2026-07-13 | 2026-07-17 |  | start no earlier than 2026-07-13 | Yashwantpur Finshing | 9323764 |
| 6072 | 36900.37000.46000.47200.120600.1777800 | On Application of Occupancy Certificate | 9d | 2026-07-17 | 2026-07-29 |  | start no earlier than 2026-07-17 | Yashwantpur Finshing | 9323765 |
| 6073 | 36900.37000.46000.47200.120600.1777700 | On Intimation of Possession | 4d | 2026-07-21 | 2026-07-24 |  | start no earlier than 2026-07-21 | Yashwantpur Finshing | 9323774 |
| 6074 | 36900.37000.46000.47200.120600.1777600 | On completion of Terrace Slab | 10d | 2026-07-27 | 2026-08-07 |  | start no earlier than 2026-07-27 | Yashwantpur Finshing | 9323784 |
| 6075 | 36900.37000.46000.47200.276900 | Offer To Possession | 180d | 2027-10-10 | 2028-05-21 | 6061FS+150d, 6063FS+15d, 6064FS+15d, 6065FS+15d, 6067FS+15d, 6068FS+15d, 6069FS+15d |  | Zenith | 8735184 |

| ID | WBS | Task | Duration | Start | Finish | Predecessors | Complete | Constraint | Calendar | Unique_Task_ID |
| --- | --- | --- | --- | --- | --- | --- | --- | --- | --- | --- |
| 6076 | 36900.37000.46000.183900 | **NTA** | 578d | 2025-03-11 | 2027-01-07 |  | 1% | start no earlier than 2025-03-11 | Zenith | 8653434 |
| 6077 | 36900.37000.46000.183900.232700 | Structure | 380d | 2025-03-11 | 2026-05-17 | 5651FS-13d | 3% | start no earlier than 2025-03-11 | Zenith | 8735174 |
| 6078 | 36900.37000.46000.183900.277000 | MEP | 120d | 2026-05-18 | 2026-09-14 | 6077 |  |  | Zenith | 8735164 |
| 6079 | 36900.37000.46000.183900.277100 | Stack Parking | 45d | 2026-10-10 | 2027-01-07 | 6080FF+10d |  |  | Zenith | 263262 |
| 6080 | 36900.37000.46000.183900.277200 | Finishes, External Development & Misc. | 150d | 2026-06-17 | 2026-12-28 | 6077FS+30d, 6078FF+45d, 5753FF+90d |  |  | Zenith | 8735154 |
| 6081 | 36900.37000.37400 | **Phase 02** | 1497d | 2024-12-06 | 2029-07-19 |  |  | start no earlier than 2024-12-06 | Zenith | 8647544 |
| 6082 | 36900.37000.37400.132600 | **Pre-Contract Work** | 95d | 2025-04-01 | 2025-07-04 |  |  | start no earlier than 2025-04-01 | 7 day week No holidays | 8652154 |
| 6083 | 36900.37000.37400.132600.217500 | **Tender Package Release** | 1d | 2025-04-01 | 2025-04-01 |  |  | start no earlier than 2025-04-01 | 7 day week No holidays | 8656544 |
| 6084 | 36900.37000.37400.132600.217500.380600 | Excavation | 1d | 2025-04-01 | 2025-04-01 | 6088SF |  | start no earlier than 2024-02-20 | 7 day week No holidays | 8730994 |
| 6085 | 36900.37000.37400.132600.217500.380700 | Soldier Piling | 1d | 2025-04-01 | 2025-04-01 | 6089SF |  |  | 7 day week No holidays | 8730984 |
| 6086 | 36900.37000.37400.132600.217500.380800 | Core & Shell | 1d | 2025-04-01 | 2025-04-01 | 6090SF |  | start no earlier than 2024-04-30 | 7 day week No holidays | 8730974 |
| 6087 | 36900.37000.37400.132600.217600 | **BOQ Release** | 30d | 2025-04-01 | 2025-04-30 |  |  | start no earlier than 2025-04-01 | 7 day week No holidays | 8656554 |
| 6088 | 36900.37000.37400.132600.217600.380900 | Excavation | 30d | 2025-04-01 | 2025-04-30 | 6092SF-30d |  |  | 7 day week No holidays | 8730964 |
| 6089 | 36900.37000.37400.132600.217600.381000 | Soldier Piling | 30d | 2025-04-01 | 2025-04-30 | 6093SF-30d |  |  | 7 day week No holidays | 8730954 |
| 6090 | 36900.37000.37400.132600.217600.381100 | Core & Shell | 30d | 2025-04-01 | 2025-04-30 | 6094SF-30d |  |  | 7 day week No holidays | 8730944 |
| 6091 | 36900.37000.37400.132600.217700 | **Work Award** | 95d | 2025-04-01 | 2025-07-04 |  |  | start no earlier than 2025-04-01 | 7 day week No holidays | 8656564 |
| 6092 | 36900.37000.37400.132600.217700.381200 | Excavation | 30d | 2025-04-09 | 2025-05-08 | 6098SF-15d |  |  | 7 day week No holidays | 8730934 |
| 6093 | 36900.37000.37400.132600.217700.381300 | Soldier Piling | 45d | 2025-04-02 | 2025-05-16 | 6099SF-15d |  |  | 7 day week No holidays | 8730924 |
| 6094 | 36900.37000.37400.132600.217700.381400 | Core & Shell | 95d | 2025-04-01 | 2025-07-04 | 6104SF-30d |  |  | 7 day week No holidays | 8730914 |
| 6095 | 36900.37000.37400.38400 | **Tower 07** | 1336.25d | 2025-05-24 | 2029-07-18 |  |  | start no earlier than 2025-05-24 | Zenith | 8647624 |
| 6096 | 36900.37000.37400.38400.63700 | **Sub-Structure Works** | 298d | 2025-05-24 | 2026-05-01 |  |  | start no earlier than 2025-05-24 | Zenith | 8648414 |
| 6097 | 36900.37000.37400.38400.63700.167500 | **Soil Bed Preparation** | 32d | 2025-05-24 | 2025-06-24 |  |  | start no earlier than 2025-05-24 | Zenith | 8653934 |
| 6098 | 36900.37000.37400.38400.63700.167500.822500 | Mass Excavation (2m) | 8d | 2025-05-24 | 2025-05-31 | 7003FS+2d |  |  | Zenith | 8722194 |
| 6099 | 36900.37000.37400.38400.63700.167500.822600 | Mass Excavation (4m) | 18d | 2025-06-01 | 2025-06-18 | 6098 |  |  | Zenith | 8722184 |
| 6100 | 36900.37000.37400.38400.63700.167500.822700 | Foundation Mass Excavation | 5d | 2025-06-19 | 2025-06-23 | 6099 |  |  | Zenith | 8722174 |
| 6101 | 36900.37000.37400.38400.63700.167500.822800 | Soil dressing & ATT | 1d | 2025-06-24 | 2025-06-24 | 6100 |  |  | Zenith | 8722164 |

| ID | WBS | Task | Duration | Start | Finish | Predecessors | Constraint | Calendar | Unique_Task_ID |
| --- | --- | --- | --- | --- | --- | --- | --- | --- | --- |
| 6102 | 36900.37000.37400.38400.63700.119800 | **Structure Works** | 126d | 2025-06-25 | 2025-10-28 |  | start no earlier than 2025-06-25 | Zenith | 8651724 |
| 6103 | 36900.37000.37400.38400.63700.119800.156200 | **Raft Foundation** | 26d | 2025-06-25 | 2025-07-20 |  | start no earlier than 2025-06-25 | Zenith | 8652674 |
| 6104 | 36900.37000.37400.38400.63700.119800.156200.1017500 | PCC | 3d | 2025-06-25 | 2025-06-27 | 6101 |  | Zenith | 8681784 |
| 6105 | 36900.37000.37400.38400.63700.119800.156200.1017600 | Column/SW layout marking | 4d | 2025-06-28 | 2025-07-01 | 6104 |  | Zenith | 8681774 |
| 6106 | 36900.37000.37400.38400.63700.119800.156200.1017700 | Reinforcement | 14d | 2025-07-01 | 2025-07-14 | 6105SS+3d |  | Zenith | 8681764 |
| 6107 | 36900.37000.37400.38400.63700.119800.156200.1017800 | Formwork (Conventional) | 4d | 2025-07-14 | 2025-07-17 | 6106FF+3d |  | Zenith | 8681754 |
| 6108 | 36900.37000.37400.38400.63700.119800.156200.1017900 | Concreting | 3d | 2025-07-18 | 2025-07-20 | 6107FF+3d |  | Zenith | 8681744 |
| 6109 | 36900.37000.37400.38400.63700.119800.135900 | **Basement 03 Roof Slab (Dummy)/stitch/tie slab** | 25d | 2025-07-21 | 2025-08-14 |  | start no earlier than 2025-07-21 | Zenith | 8652224 |
| 6110 | 36900.37000.37400.38400.63700.119800.135900.1018000 | Column/SW Reinforcement | 9d | 2025-07-21 | 2025-07-29 | 6108 |  | Zenith | 8681734 |
| 6111 | 36900.37000.37400.38400.63700.119800.135900.1018100 | SW Formwork (Conventional) | 9d | 2025-07-25 | 2025-08-02 | 6110SS+4d |  | Zenith | 8681724 |
| 6112 | 36900.37000.37400.38400.63700.119800.135900.1018200 | Column/SW Concreting | 9d | 2025-07-29 | 2025-08-06 | 6111SS+4d |  | Zenith | 8681714 |
| 6113 | 36900.37000.37400.38400.63700.119800.135900.1018300 | Slab Formwork (Conventional) | 9d | 2025-08-02 | 2025-08-10 | 6112SS+4d |  | Zenith | 8681704 |
| 6114 | 36900.37000.37400.38400.63700.119800.135900.1018400 | Slab Reinforcement + Conduting | 3d | 2025-08-11 | 2025-08-13 | 6113 |  | Zenith | 8681694 |
| 6115 | 36900.37000.37400.38400.63700.119800.135900.1018500 | Concreting | 1d | 2025-08-14 | 2025-08-14 | 6114 |  | Zenith | 8681684 |
| 6116 | 36900.37000.37400.38400.63700.119800.136000 | **Basement 02 Roof Slab** | 25d | 2025-08-15 | 2025-09-08 |  | start no earlier than 2025-08-15 | Zenith | 8652234 |
| 6117 | 36900.37000.37400.38400.63700.119800.136000.1018600 | Column/SW Reinforcement | 9d | 2025-08-15 | 2025-08-23 | 6115 |  | Zenith | 8681674 |
| 6118 | 36900.37000.37400.38400.63700.119800.136000.1018700 | SW Formwork (Conventional) | 9d | 2025-08-19 | 2025-08-27 | 6117SS+4d |  | Zenith | 8681664 |
| 6119 | 36900.37000.37400.38400.63700.119800.136000.1018800 | Column/SW Concreting | 9d | 2025-08-23 | 2025-08-31 | 6118SS+4d |  | Zenith | 8681654 |
| 6120 | 36900.37000.37400.38400.63700.119800.136000.1018900 | Slab Formwork (Conventional) | 9d | 2025-08-27 | 2025-09-04 | 6119SS+4d |  | Zenith | 8681644 |
| 6121 | 36900.37000.37400.38400.63700.119800.136000.1019000 | Slab Reinforcement + Conduting | 3d | 2025-09-05 | 2025-09-07 | 6120 |  | Zenith | 8681634 |
| 6122 | 36900.37000.37400.38400.63700.119800.136000.1019100 | Concreting | 1d | 2025-09-08 | 2025-09-08 | 6121 |  | Zenith | 8681624 |
| 6123 | 36900.37000.37400.38400.63700.119800.136100 | **Basement 01 Roof Slab** | 25d | 2025-09-09 | 2025-10-03 |  | start no earlier than 2025-09-09 | Zenith | 8652244 |
| 6124 | 36900.37000.37400.38400.63700.119800.136100.1019200 | Column/SW Reinforcement | 9d | 2025-09-09 | 2025-09-17 | 6122 |  | Zenith | 8681614 |
| 6125 | 36900.37000.37400.38400.63700.119800.136100.1019300 | SW Formwork (Conventional) | 9d | 2025-09-13 | 2025-09-21 | 6124SS+4d |  | Zenith | 8681604 |
| 6126 | 36900.37000.37400.38400.63700.119800.136100.1019400 | Column/SW Concreting | 9d | 2025-09-17 | 2025-09-25 | 6125SS+4d |  | Zenith | 8681594 |
| 6127 | 36900.37000.37400.38400.63700.119800.136100.1019500 | Slab Formwork (Conventional) | 9d | 2025-09-21 | 2025-09-29 | 6126SS+4d |  | Zenith | 8681584 |
| 6128 | 36900.37000.37400.38400.63700.119800.136100.1019600 | Slab Reinforcement + Conduting | 3d | 2025-09-30 | 2025-10-02 | 6127 |  | Zenith | 8681574 |
| 6129 | 36900.37000.37400.38400.63700.119800.136100.1019700 | Concreting | 1d | 2025-10-03 | 2025-10-03 | 6128 |  | Zenith | 8681564 |

| ID | WBS | Task | Duration | Start | Finish | Predecessors | Constraint | Calendar | Unique_Task_ID |
| --- | --- | --- | --- | --- | --- | --- | --- | --- | --- |
| 6130 | 36900.37000.37400.38400.63700.119800.136200 | **Podium Slab/Ground Roof Floor Slab** | 25d | 2025-10-04 | 2025-10-28 |  | start no earlier than 2025-10-04 | Zenith | 8652254 |
| 6131 | 36900.37000.37400.38400.63700.119800.136200.1019800 | Column/SW Reinforcement | 9d | 2025-10-04 | 2025-10-12 | 6129 |  | Zenith | 8681554 |
| 6132 | 36900.37000.37400.38400.63700.119800.136200.1019900 | SW Formwork (Conventional) | 9d | 2025-10-08 | 2025-10-16 | 6131SS+4d |  | Zenith | 8681544 |
| 6133 | 36900.37000.37400.38400.63700.119800.136200.1020000 | Column/SW Concreting | 9d | 2025-10-12 | 2025-10-20 | 6132SS+4d |  | Zenith | 8681534 |
| 6134 | 36900.37000.37400.38400.63700.119800.136200.1020100 | Slab Formwork (Conventional) | 9d | 2025-10-16 | 2025-10-24 | 6133SS+4d |  | Zenith | 8681524 |
| 6135 | 36900.37000.37400.38400.63700.119800.136200.1020200 | Slab Reinforcement + Conduting | 3d | 2025-10-25 | 2025-10-27 | 6134 |  | Zenith | 8681514 |
| 6136 | 36900.37000.37400.38400.63700.119800.136200.1020300 | Concreting | 1d | 2025-10-28 | 2025-10-28 | 6135 |  | Zenith | 8681504 |
| 6137 | 36900.37000.37400.38400.63700.167400 | **Substructure Finishes** | 110d | 2026-01-12 | 2026-05-01 |  | start no earlier than 2026-01-12 | Zenith | 8653984 |
| 6138 | 36900.37000.37400.38400.63700.167400.822900 | Masonary Work | 35d | 2026-01-12 | 2026-02-15 | 6136FS+30d |  | Zenith | 8722154 |
| 6139 | 36900.37000.37400.38400.63700.167400.823000 | Plaster Work | 30d | 2026-02-16 | 2026-03-17 | 6138 |  | Zenith | 8722144 |
| 6140 | 36900.37000.37400.38400.63700.167400.823100 | Structural Steel work | 50d | 2026-02-11 | 2026-04-01 | 6136FS+60d |  | Zenith | 8722134 |
| 6141 | 36900.37000.37400.38400.63700.167400.823200 | White Wash & Misc. | 35d | 2026-03-28 | 2026-05-01 | 6139FS+10d |  | Zenith | 8722124 |
| 6142 | 36900.37000.37400.38400.39400 | **Superstructure** | 738.25d | 2025-10-29 | 2028-03-20 |  | start no earlier than 2025-10-29 | Zenith | 8647704 |
| 6143 | 36900.37000.37400.38400.39400.45300 | **RCC structure** | 374d | 2025-10-29 | 2027-02-04 |  | start no earlier than 2025-10-29 | Zenith | 8647984 |
| 6144 | 36900.37000.37400.38400.39400.45300.184800 | **1st Floor Roof slab** | 24d | 2025-10-29 | 2026-01-05 |  | start no earlier than 2025-10-29 | Zenith | 8656434 |
| 6145 | 36900.37000.37400.38400.39400.45300.184800.1020400 | Reinforcement | 19d | 2025-10-29 | 2025-12-31 | 6136 |  | Zenith | 8681494 |
| 6146 | 36900.37000.37400.38400.39400.45300.184800.1020500 | Conduiting | 19d | 2025-12-16 | 2026-01-03 | 6145SS+3d |  | Zenith | 8681484 |
| 6147 | 36900.37000.37400.38400.39400.45300.184800.1020600 | Formwork | 19d | 2025-12-17 | 2026-01-04 | 6145SS+4d |  | Zenith | 8681474 |
| 6148 | 36900.37000.37400.38400.39400.45300.184800.1020700 | Concreting | 1d | 2026-01-05 | 2026-01-05 | 6146FS+1d, 6147 |  | Zenith | 8681464 |
| 6149 | 36900.37000.37400.38400.39400.45300.184900 | **2nd Floor Roof slab** | 21d | 2026-01-06 | 2026-01-26 |  | start no earlier than 2026-01-06 | Zenith | 8656424 |
| 6150 | 36900.37000.37400.38400.39400.45300.184900.1020800 | Reinforcement | 16d | 2026-01-06 | 2026-01-21 | 6148 |  | Zenith | 8681454 |
| 6151 | 36900.37000.37400.38400.39400.45300.184900.1020900 | Conduiting | 16d | 2026-01-09 | 2026-01-24 | 6150SS+3d |  | Zenith | 8681444 |
| 6152 | 36900.37000.37400.38400.39400.45300.184900.1021000 | Formwork | 16d | 2026-01-10 | 2026-01-25 | 6150SS+4d |  | Zenith | 8681434 |
| 6153 | 36900.37000.37400.38400.39400.45300.184900.1021100 | Concreting | 1d | 2026-01-26 | 2026-01-26 | 6151FS+1d, 6152 |  | Zenith | 8681424 |

| ID | WBS | Task | Duration | Start | Finish | Predecessors | Constraint | Calendar | Unique_Task_ID |
| --- | --- | --- | --- | --- | --- | --- | --- | --- | --- |
| 6154 | 36900.37000.37400.38400.39400.45300.185000 | **3rd Floor Roof slab** | 15d | 2026-01-27 | 2026-02-10 |  | start no earlier than 2026-01-27 | Zenith | 8656414 |
| 6155 | 36900.37000.37400.38400.39400.45300.185000.1021200 | Reinforcement | 10d | 2026-01-27 | 2026-02-05 | 6153 |  | Zenith | 8681414 |
| 6156 | 36900.37000.37400.38400.39400.45300.185000.1021300 | Conduiting | 10d | 2026-01-30 | 2026-02-08 | 6155SS+3d |  | Zenith | 8681404 |
| 6157 | 36900.37000.37400.38400.39400.45300.185000.1021400 | Formwork | 10d | 2026-01-31 | 2026-02-09 | 6155SS+4d |  | Zenith | 8681394 |
| 6158 | 36900.37000.37400.38400.39400.45300.185000.1021500 | Concreting | 1d | 2026-02-10 | 2026-02-10 | 6156FS+1d, 6157 |  | Zenith | 8681384 |
| 6159 | 36900.37000.37400.38400.39400.45300.185100 | **4th floor roof slab** | 9d | 2026-02-11 | 2026-02-19 |  | start no earlier than 2026-02-11 | Zenith | 8656404 |
| 6160 | 36900.37000.37400.38400.39400.45300.185100.1021600 | Reinforcement | 6d | 2026-02-11 | 2026-02-16 | 6158 |  | Zenith | 8681374 |
| 6161 | 36900.37000.37400.38400.39400.45300.185100.1021700 | Conduiting | 6d | 2026-02-12 | 2026-02-17 | 6160SS+1d |  | Zenith | 8681364 |
| 6162 | 36900.37000.37400.38400.39400.45300.185100.1021800 | Formwork | 6d | 2026-02-13 | 2026-02-18 | 6160SS+2d |  | Zenith | 8681354 |
| 6163 | 36900.37000.37400.38400.39400.45300.185100.1021900 | Concreting | 1d | 2026-02-19 | 2026-02-19 | 6161FS+1d, 6162 |  | Zenith | 8681344 |
| 6164 | 36900.37000.37400.38400.39400.45300.185200 | **5th floor roof slab** | 9d | 2026-02-20 | 2026-02-28 |  | start no earlier than 2026-02-20 | Zenith | 8656394 |
| 6165 | 36900.37000.37400.38400.39400.45300.185200.1022000 | Reinforcement | 6d | 2026-02-20 | 2026-02-25 | 6163 |  | Zenith | 8681334 |
| 6166 | 36900.37000.37400.38400.39400.45300.185200.1022100 | Conduiting | 6d | 2026-02-21 | 2026-02-26 | 6165SS+1d |  | Zenith | 8681324 |
| 6167 | 36900.37000.37400.38400.39400.45300.185200.1022200 | Formwork | 6d | 2026-02-22 | 2026-02-27 | 6165SS+2d |  | Zenith | 8681314 |
| 6168 | 36900.37000.37400.38400.39400.45300.185200.1022300 | Concreting | 1d | 2026-02-28 | 2026-02-28 | 6166FS+1d, 6167 |  | Zenith | 8681304 |
| 6169 | 36900.37000.37400.38400.39400.45300.185300 | **6th floor roof slab** | 9d | 2026-03-01 | 2026-03-09 |  | start no earlier than 2026-03-01 | Zenith | 8656384 |
| 6170 | 36900.37000.37400.38400.39400.45300.185300.1022400 | Reinforcement | 6d | 2026-03-01 | 2026-03-06 | 6168 |  | Zenith | 8681294 |
| 6171 | 36900.37000.37400.38400.39400.45300.185300.1022500 | Conduiting | 6d | 2026-03-02 | 2026-03-07 | 6170SS+1d |  | Zenith | 8681284 |
| 6172 | 36900.37000.37400.38400.39400.45300.185300.1022600 | Formwork | 6d | 2026-03-03 | 2026-03-08 | 6170SS+2d |  | Zenith | 8681274 |
| 6173 | 36900.37000.37400.38400.39400.45300.185300.1022700 | Concreting | 1d | 2026-03-09 | 2026-03-09 | 6171FS+1d, 6172 |  | Zenith | 8681264 |
| 6174 | 36900.37000.37400.38400.39400.45300.185400 | **7th floor roof slab** | 9d | 2026-03-10 | 2026-03-18 |  | start no earlier than 2026-03-10 | Zenith | 8656374 |
| 6175 | 36900.37000.37400.38400.39400.45300.185400.1022800 | Reinforcement | 6d | 2026-03-10 | 2026-03-15 | 6173 |  | Zenith | 8681254 |
| 6176 | 36900.37000.37400.38400.39400.45300.185400.1022900 | Conduiting | 6d | 2026-03-11 | 2026-03-16 | 6175SS+1d |  | Zenith | 8681244 |
| 6177 | 36900.37000.37400.38400.39400.45300.185400.1023000 | Formwork | 6d | 2026-03-12 | 2026-03-17 | 6175SS+2d |  | Zenith | 8681234 |
| 6178 | 36900.37000.37400.38400.39400.45300.185400.1023100 | Concreting | 1d | 2026-03-18 | 2026-03-18 | 6176FS+1d, 6177 |  | Zenith | 8681224 |

| ID | WBS | Task | Duration | Start | Finish | Predecessors | Constraint | Calendar | Unique_Task_ID |
| --- | --- | --- | --- | --- | --- | --- | --- | --- | --- |
| 6179 | 36900.37000.37400.38400.39400.45300.185500 | **8th floor roof slab** | 9d | 2026-03-19 | 2026-03-27 |  | start no earlier than 2026-03-19 | Zenith | 8656364 |
| 6180 | 36900.37000.37400.38400.39400.45300.185500.1023200 | Reinforcement | 6d | 2026-03-19 | 2026-03-24 | 6178 |  | Zenith | 8681214 |
| 6181 | 36900.37000.37400.38400.39400.45300.185500.1023300 | Conduiting | 6d | 2026-03-20 | 2026-03-25 | 6180SS+1d |  | Zenith | 8681204 |
| 6182 | 36900.37000.37400.38400.39400.45300.185500.1023400 | Formwork | 6d | 2026-03-21 | 2026-03-26 | 6180SS+2d |  | Zenith | 8681194 |
| 6183 | 36900.37000.37400.38400.39400.45300.185500.1023500 | Concreting | 1d | 2026-03-27 | 2026-03-27 | 6181FS+1d, 6182 |  | Zenith | 8681184 |
| 6184 | 36900.37000.37400.38400.39400.45300.185600 | **9th floor roof slab** | 9d | 2026-03-28 | 2026-04-05 |  | start no earlier than 2026-03-28 | Zenith | 8656344 |
| 6185 | 36900.37000.37400.38400.39400.45300.185600.1023600 | Reinforcement | 6d | 2026-03-28 | 2026-04-02 | 6183 |  | Zenith | 8681174 |
| 6186 | 36900.37000.37400.38400.39400.45300.185600.1023700 | Conduiting | 6d | 2026-03-29 | 2026-04-03 | 6185SS+1d |  | Zenith | 8681164 |
| 6187 | 36900.37000.37400.38400.39400.45300.185600.1023800 | Formwork | 6d | 2026-03-30 | 2026-04-04 | 6185SS+2d |  | Zenith | 8681154 |
| 6188 | 36900.37000.37400.38400.39400.45300.185600.1023900 | Concreting | 1d | 2026-04-05 | 2026-04-05 | 6186FS+1d, 6187 |  | Zenith | 8681144 |
| 6189 | 36900.37000.37400.38400.39400.45300.185700 | **10th floor roof slab** | 9d | 2026-04-06 | 2026-04-14 |  | start no earlier than 2026-04-06 | Zenith | 8656334 |
| 6190 | 36900.37000.37400.38400.39400.45300.185700.1024000 | Reinforcement | 6d | 2026-04-06 | 2026-04-11 | 6188 |  | Zenith | 8681134 |
| 6191 | 36900.37000.37400.38400.39400.45300.185700.1024100 | Conduiting | 6d | 2026-04-07 | 2026-04-12 | 6190SS+1d |  | Zenith | 8681124 |
| 6192 | 36900.37000.37400.38400.39400.45300.185700.1024200 | Formwork | 6d | 2026-04-08 | 2026-04-13 | 6190SS+2d |  | Zenith | 8681114 |
| 6193 | 36900.37000.37400.38400.39400.45300.185700.1024300 | Concreting | 1d | 2026-04-14 | 2026-04-14 | 6191FS+1d, 6192 |  | Zenith | 8681104 |
| 6194 | 36900.37000.37400.38400.39400.45300.186000 | **11th floor roof slab** | 9d | 2026-04-15 | 2026-04-23 |  | start no earlier than 2026-04-15 | Zenith | 8656324 |
| 6195 | 36900.37000.37400.38400.39400.45300.186000.1024400 | Reinforcement | 6d | 2026-04-15 | 2026-04-20 | 6193 |  | Zenith | 8681094 |
| 6196 | 36900.37000.37400.38400.39400.45300.186000.1024500 | Conduiting | 6d | 2026-04-16 | 2026-04-21 | 6195SS+1d |  | Zenith | 8681084 |
| 6197 | 36900.37000.37400.38400.39400.45300.186000.1024600 | Formwork | 6d | 2026-04-17 | 2026-04-22 | 6195SS+2d |  | Zenith | 8681074 |
| 6198 | 36900.37000.37400.38400.39400.45300.186000.1024700 | Concreting | 1d | 2026-04-23 | 2026-04-23 | 6196FS+1d, 6197 |  | Zenith | 8681064 |
| 6199 | 36900.37000.37400.38400.39400.45300.186100 | **12th floor roof slab** | 9d | 2026-04-24 | 2026-05-02 |  | start no earlier than 2026-04-24 | Zenith | 8656314 |
| 6200 | 36900.37000.37400.38400.39400.45300.186100.1024800 | Reinforcement | 6d | 2026-04-24 | 2026-04-29 | 6198 |  | Zenith | 8681054 |
| 6201 | 36900.37000.37400.38400.39400.45300.186100.1024900 | Conduiting | 6d | 2026-04-25 | 2026-04-30 | 6200SS+1d |  | Zenith | 8681044 |
| 6202 | 36900.37000.37400.38400.39400.45300.186100.1025000 | Formwork | 6d | 2026-04-26 | 2026-05-01 | 6200SS+2d |  | Zenith | 8681034 |
| 6203 | 36900.37000.37400.38400.39400.45300.186100.1025100 | Concreting | 1d | 2026-05-02 | 2026-05-02 | 6201FS+1d, 6202 |  | Zenith | 8681024 |

| ID | WBS | Task | Duration | Start | Finish | Predecessors | Constraint | Calendar | Unique_Task_ID |
| --- | --- | --- | --- | --- | --- | --- | --- | --- | --- |
| 6204 | 36900.37000.37400.38400.39400.45300.186200 | **13th floor roof slab** | 9d | 2026-05-03 | 2026-05-11 |  | start no earlier than 2026-05-03 | Zenith | 8656304 |
| 6205 | 36900.37000.37400.38400.39400.45300.186200.1025200 | Reinforcement | 6d | 2026-05-03 | 2026-05-08 | 6203 |  | Zenith | 8681014 |
| 6206 | 36900.37000.37400.38400.39400.45300.186200.1025300 | Conduiting | 6d | 2026-05-04 | 2026-05-09 | 6205SS+1d |  | Zenith | 8681004 |
| 6207 | 36900.37000.37400.38400.39400.45300.186200.1025400 | Formwork | 6d | 2026-05-05 | 2026-05-10 | 6205SS+2d |  | Zenith | 8680994 |
| 6208 | 36900.37000.37400.38400.39400.45300.186200.1025500 | Concreting | 1d | 2026-05-11 | 2026-05-11 | 6206FS+1d, 6207 |  | Zenith | 8680984 |
| 6209 | 36900.37000.37400.38400.39400.45300.186300 | **14th floor roof slab** | 8d | 2026-05-12 | 2026-05-19 |  | start no earlier than 2026-05-12 | Zenith | 8656294 |
| 6210 | 36900.37000.37400.38400.39400.45300.186300.1025600 | Reinforcement | 6d | 2026-05-12 | 2026-05-17 | 6208 |  | Zenith | 8680974 |
| 6211 | 36900.37000.37400.38400.39400.45300.186300.1025700 | Conduiting | 6d | 2026-05-13 | 2026-05-18 | 6210SS+1d |  | Zenith | 8680964 |
| 6212 | 36900.37000.37400.38400.39400.45300.186300.1025800 | Formwork | 6d | 2026-05-13 | 2026-05-18 | 6210SS+1d |  | Zenith | 8680954 |
| 6213 | 36900.37000.37400.38400.39400.45300.186300.1025900 | Concreting | 1d | 2026-05-19 | 2026-05-19 | 6211, 6212 |  | Zenith | 8680944 |
| 6214 | 36900.37000.37400.38400.39400.45300.186400 | **15th floor roof slab** | 9d | 2026-05-20 | 2026-05-28 |  | start no earlier than 2026-05-20 | Zenith | 8656284 |
| 6215 | 36900.37000.37400.38400.39400.45300.186400.1026000 | Reinforcement | 6d | 2026-05-20 | 2026-05-25 | 6213 |  | Zenith | 8680934 |
| 6216 | 36900.37000.37400.38400.39400.45300.186400.1026100 | Conduiting | 6d | 2026-05-21 | 2026-05-26 | 6215SS+1d |  | Zenith | 8680924 |
| 6217 | 36900.37000.37400.38400.39400.45300.186400.1026200 | Formwork | 6d | 2026-05-22 | 2026-05-27 | 6215SS+2d |  | Zenith | 8680914 |
| 6218 | 36900.37000.37400.38400.39400.45300.186400.1026300 | Concreting | 1d | 2026-05-28 | 2026-05-28 | 6216FS+1d, 6217 |  | Zenith | 8680904 |
| 6219 | 36900.37000.37400.38400.39400.45300.186500 | **16th floor roof slab** | 9d | 2026-05-29 | 2026-06-06 |  | start no earlier than 2026-05-29 | Zenith | 8656274 |
| 6220 | 36900.37000.37400.38400.39400.45300.186500.1026400 | Reinforcement | 6d | 2026-05-29 | 2026-06-03 | 6218 |  | Zenith | 8680894 |
| 6221 | 36900.37000.37400.38400.39400.45300.186500.1026500 | Conduiting | 6d | 2026-05-30 | 2026-06-04 | 6220SS+1d |  | Zenith | 8680884 |
| 6222 | 36900.37000.37400.38400.39400.45300.186500.1026600 | Formwork | 6d | 2026-05-31 | 2026-06-05 | 6220SS+2d |  | Zenith | 8680874 |
| 6223 | 36900.37000.37400.38400.39400.45300.186500.1026700 | Concreting | 1d | 2026-06-06 | 2026-06-06 | 6221, 6222 |  | Zenith | 8680864 |
| 6224 | 36900.37000.37400.38400.39400.45300.186600 | **17th floor roof slab** | 9d | 2026-06-07 | 2026-06-15 |  | start no earlier than 2026-06-07 | Zenith | 8656254 |
| 6225 | 36900.37000.37400.38400.39400.45300.186600.1026800 | Reinforcement | 6d | 2026-06-07 | 2026-06-12 | 6223 |  | Zenith | 8680854 |
| 6226 | 36900.37000.37400.38400.39400.45300.186600.1026900 | Conduiting | 6d | 2026-06-08 | 2026-06-13 | 6225SS+1d |  | Zenith | 8680844 |
| 6227 | 36900.37000.37400.38400.39400.45300.186600.1027000 | Formwork | 6d | 2026-06-09 | 2026-06-14 | 6225SS+2d |  | Zenith | 8680834 |
| 6228 | 36900.37000.37400.38400.39400.45300.186600.1027100 | Concreting | 1d | 2026-06-15 | 2026-06-15 | 6226FS+1d, 6227 |  | Zenith | 8680824 |

| ID | WBS | Task | Duration | Start | Finish | Predecessors | Constraint | Calendar | Unique_Task_ID |
| --- | --- | --- | --- | --- | --- | --- | --- | --- | --- |
| 6229 | 36900.37000.37400.38400.39400.45300.186700 | **18th floor roof slab** | 8d | 2026-06-16 | 2026-06-23 |  | start no earlier than 2026-06-16 | Zenith | 8656244 |
| 6230 | 36900.37000.37400.38400.39400.45300.186700.1027200 | Reinforcement | 5d | 2026-06-16 | 2026-06-20 | 6228 |  | Zenith | 8680814 |
| 6231 | 36900.37000.37400.38400.39400.45300.186700.1027300 | Conduiting | 5d | 2026-06-17 | 2026-06-21 | 6230SS+1d |  | Zenith | 8680804 |
| 6232 | 36900.37000.37400.38400.39400.45300.186700.1027400 | Formwork | 5d | 2026-06-18 | 2026-06-22 | 6230SS+2d |  | Zenith | 8680794 |
| 6233 | 36900.37000.37400.38400.39400.45300.186700.1027500 | Concreting | 1d | 2026-06-23 | 2026-06-23 | 6231FS+1d, 6232 |  | Zenith | 8680784 |
| 6234 | 36900.37000.37400.38400.39400.45300.186800 | **19th floor roof slab** | 8d | 2026-06-24 | 2026-07-01 |  | start no earlier than 2026-06-24 | Zenith | 8656234 |
| 6235 | 36900.37000.37400.38400.39400.45300.186800.1027600 | Reinforcement | 5d | 2026-06-24 | 2026-06-28 | 6233 |  | Zenith | 8680774 |
| 6236 | 36900.37000.37400.38400.39400.45300.186800.1027700 | Conduiting | 5d | 2026-06-25 | 2026-06-29 | 6235SS+1d |  | Zenith | 8680764 |
| 6237 | 36900.37000.37400.38400.39400.45300.186800.1027800 | Formwork | 5d | 2026-06-26 | 2026-06-30 | 6235SS+2d |  | Zenith | 8680754 |
| 6238 | 36900.37000.37400.38400.39400.45300.186800.1027900 | Concreting | 1d | 2026-07-01 | 2026-07-01 | 6236FS+1d, 6237 |  | Zenith | 8680744 |
| 6239 | 36900.37000.37400.38400.39400.45300.186900 | **20th floor roof slab** | 8d | 2026-07-02 | 2026-07-09 |  | start no earlier than 2026-07-02 | Zenith | 8656224 |
| 6240 | 36900.37000.37400.38400.39400.45300.186900.1028000 | Reinforcement | 5d | 2026-07-02 | 2026-07-06 | 6238 |  | Zenith | 8680734 |
| 6241 | 36900.37000.37400.38400.39400.45300.186900.1028100 | Conduiting | 5d | 2026-07-03 | 2026-07-07 | 6240SS+1d |  | Zenith | 8680724 |
| 6242 | 36900.37000.37400.38400.39400.45300.186900.1028200 | Formwork | 5d | 2026-07-04 | 2026-07-08 | 6240SS+2d |  | Zenith | 8680714 |
| 6243 | 36900.37000.37400.38400.39400.45300.186900.1028300 | Concreting | 1d | 2026-07-09 | 2026-07-09 | 6241FS+1d, 6242 |  | Zenith | 8680704 |
| 6244 | 36900.37000.37400.38400.39400.45300.187000 | **21st floor roof slab** | 8d | 2026-07-10 | 2026-07-17 |  | start no earlier than 2026-07-10 | Zenith | 8656214 |
| 6245 | 36900.37000.37400.38400.39400.45300.187000.1028400 | Reinforcement | 5d | 2026-07-10 | 2026-07-14 | 6243 |  | Zenith | 8680694 |
| 6246 | 36900.37000.37400.38400.39400.45300.187000.1028500 | Conduiting | 5d | 2026-07-11 | 2026-07-15 | 6245SS+1d |  | Zenith | 8680684 |
| 6247 | 36900.37000.37400.38400.39400.45300.187000.1028600 | Formwork | 5d | 2026-07-12 | 2026-07-16 | 6245SS+2d |  | Zenith | 8680674 |
| 6248 | 36900.37000.37400.38400.39400.45300.187000.1028700 | Concreting | 1d | 2026-07-17 | 2026-07-17 | 6246FS+1d, 6247 |  | Zenith | 8680664 |
| 6249 | 36900.37000.37400.38400.39400.45300.187100 | **22nd floor roof slab** | 8d | 2026-07-18 | 2026-07-25 |  | start no earlier than 2026-07-18 | Zenith | 8656204 |
| 6250 | 36900.37000.37400.38400.39400.45300.187100.1028800 | Reinforcement | 5d | 2026-07-18 | 2026-07-22 | 6248 |  | Zenith | 8680654 |
| 6251 | 36900.37000.37400.38400.39400.45300.187100.1028900 | Conduiting | 5d | 2026-07-19 | 2026-07-23 | 6250SS+1d |  | Zenith | 8680644 |
| 6252 | 36900.37000.37400.38400.39400.45300.187100.1029000 | Formwork | 5d | 2026-07-20 | 2026-07-24 | 6250SS+2d |  | Zenith | 8680634 |
| 6253 | 36900.37000.37400.38400.39400.45300.187100.1029100 | Concreting | 1d | 2026-07-25 | 2026-07-25 | 6251FS+1d, 6252 |  | Zenith | 8680624 |

| ID | WBS | Task | Duration | Start | Finish | Predecessors | Constraint | Calendar | Unique_Task_ID |
| --- | --- | --- | --- | --- | --- | --- | --- | --- | --- |
| 6254 | 36900.37000.37400.38400.39400.45300.187200 | **23rd floor roof slab** | 8d | 2026-07-26 | 2026-08-02 |  | start no earlier than 2026-07-26 | Zenith | 8656194 |
| 6255 | 36900.37000.37400.38400.39400.45300.187200.1029200 | Reinforcement | 5d | 2026-07-26 | 2026-07-30 | 6253 |  | Zenith | 8680614 |
| 6256 | 36900.37000.37400.38400.39400.45300.187200.1029300 | Conduiting | 5d | 2026-07-27 | 2026-07-31 | 6255SS+1d |  | Zenith | 8680604 |
| 6257 | 36900.37000.37400.38400.39400.45300.187200.1029400 | Formwork | 5d | 2026-07-28 | 2026-08-01 | 6255SS+2d |  | Zenith | 8680594 |
| 6258 | 36900.37000.37400.38400.39400.45300.187200.1029500 | Concreting | 1d | 2026-08-02 | 2026-08-02 | 6256FS+1d, 6257 |  | Zenith | 8680584 |
| 6259 | 36900.37000.37400.38400.39400.45300.187300 | **24th floor roof slab** | 8d | 2026-08-03 | 2026-08-10 |  | start no earlier than 2026-08-03 | Zenith | 8656184 |
| 6260 | 36900.37000.37400.38400.39400.45300.187300.1029600 | Reinforcement | 5d | 2026-08-03 | 2026-08-07 | 6258 |  | Zenith | 8680574 |
| 6261 | 36900.37000.37400.38400.39400.45300.187300.1029700 | Conduiting | 5d | 2026-08-04 | 2026-08-08 | 6260SS+1d |  | Zenith | 8680564 |
| 6262 | 36900.37000.37400.38400.39400.45300.187300.1029800 | Formwork | 5d | 2026-08-05 | 2026-08-09 | 6260SS+2d |  | Zenith | 8680554 |
| 6263 | 36900.37000.37400.38400.39400.45300.187300.1029900 | Concreting | 1d | 2026-08-10 | 2026-08-10 | 6261FS+1d, 6262 |  | Zenith | 8680544 |
| 6264 | 36900.37000.37400.38400.39400.45300.187400 | **25th floor roof slab** | 8d | 2026-08-11 | 2026-08-18 |  | start no earlier than 2026-08-11 | Zenith | 8656174 |
| 6265 | 36900.37000.37400.38400.39400.45300.187400.1030000 | Reinforcement | 5d | 2026-08-11 | 2026-08-15 | 6263 |  | Zenith | 8680534 |
| 6266 | 36900.37000.37400.38400.39400.45300.187400.1030100 | Conduiting | 5d | 2026-08-12 | 2026-08-16 | 6265SS+1d |  | Zenith | 8680524 |
| 6267 | 36900.37000.37400.38400.39400.45300.187400.1030200 | Formwork | 5d | 2026-08-13 | 2026-08-17 | 6265SS+2d |  | Zenith | 8680514 |
| 6268 | 36900.37000.37400.38400.39400.45300.187400.1030300 | Concreting | 1d | 2026-08-18 | 2026-08-18 | 6266FS+1d, 6267 |  | Zenith | 8680504 |
| 6269 | 36900.37000.37400.38400.39400.45300.187500 | **26th floor roof slab** | 8d | 2026-08-19 | 2026-08-26 |  | start no earlier than 2026-08-19 | Zenith | 8656154 |
| 6270 | 36900.37000.37400.38400.39400.45300.187500.1030400 | Reinforcement | 5d | 2026-08-19 | 2026-08-23 | 6268 |  | Zenith | 8680494 |
| 6271 | 36900.37000.37400.38400.39400.45300.187500.1030500 | Conduiting | 5d | 2026-08-20 | 2026-08-24 | 6270SS+1d |  | Zenith | 8680484 |
| 6272 | 36900.37000.37400.38400.39400.45300.187500.1030600 | Formwork | 5d | 2026-08-21 | 2026-08-25 | 6270SS+2d |  | Zenith | 8680474 |
| 6273 | 36900.37000.37400.38400.39400.45300.187500.1030700 | Concreting | 1d | 2026-08-26 | 2026-08-26 | 6271FS+1d, 6272 |  | Zenith | 8680464 |
| 6274 | 36900.37000.37400.38400.39400.45300.187600 | **27th floor roof slab** | 8d | 2026-08-27 | 2026-09-03 |  | start no earlier than 2026-08-27 | Zenith | 8656144 |
| 6275 | 36900.37000.37400.38400.39400.45300.187600.1030800 | Reinforcement | 5d | 2026-08-27 | 2026-08-31 | 6273 |  | Zenith | 8680454 |
| 6276 | 36900.37000.37400.38400.39400.45300.187600.1030900 | Conduiting | 5d | 2026-08-28 | 2026-09-01 | 6275SS+1d |  | Zenith | 8680444 |
| 6277 | 36900.37000.37400.38400.39400.45300.187600.1031000 | Formwork | 5d | 2026-08-29 | 2026-09-02 | 6275SS+2d |  | Zenith | 8680434 |
| 6278 | 36900.37000.37400.38400.39400.45300.187600.1031100 | Concreting | 1d | 2026-09-03 | 2026-09-03 | 6276FS+1d, 6277 |  | Zenith | 8680424 |

| ID | WBS | Task | Duration | Start | Finish | Predecessors | Constraint | Calendar | Unique_Task_ID |
| --- | --- | --- | --- | --- | --- | --- | --- | --- | --- |
| 6279 | 36900.37000.37400.38400.39400.45300.187700 | **28th floor roof slab** | 8d | 2026-09-04 | 2026-09-11 |  | start no earlier than 2026-09-04 | Zenith | 8656134 |
| 6280 | 36900.37000.37400.38400.39400.45300.187700.1031200 | Reinforcement | 5d | 2026-09-04 | 2026-09-08 | 6278 |  | Zenith | 8680414 |
| 6281 | 36900.37000.37400.38400.39400.45300.187700.1031300 | Conduiting | 5d | 2026-09-05 | 2026-09-09 | 6280SS+1d |  | Zenith | 8680404 |
| 6282 | 36900.37000.37400.38400.39400.45300.187700.1031400 | Formwork | 5d | 2026-09-06 | 2026-09-10 | 6280SS+2d |  | Zenith | 8680394 |
| 6283 | 36900.37000.37400.38400.39400.45300.187700.1031500 | Concreting | 1d | 2026-09-11 | 2026-09-11 | 6281FS+1d, 6282 |  | Zenith | 8680384 |
| 6284 | 36900.37000.37400.38400.39400.45300.187800 | **29th floor roof slab** | 8d | 2026-09-12 | 2026-09-19 |  | start no earlier than 2026-09-12 | Zenith | 8656124 |
| 6285 | 36900.37000.37400.38400.39400.45300.187800.1031600 | Reinforcement | 5d | 2026-09-12 | 2026-09-16 | 6283 |  | Zenith | 8680374 |
| 6286 | 36900.37000.37400.38400.39400.45300.187800.1031700 | Conduiting | 5d | 2026-09-13 | 2026-09-17 | 6285SS+1d |  | Zenith | 8680364 |
| 6287 | 36900.37000.37400.38400.39400.45300.187800.1031800 | Formwork | 5d | 2026-09-14 | 2026-09-18 | 6285SS+2d |  | Zenith | 8680354 |
| 6288 | 36900.37000.37400.38400.39400.45300.187800.1031900 | Concreting | 1d | 2026-09-19 | 2026-09-19 | 6286FS+1d, 6287 |  | Zenith | 8680344 |
| 6289 | 36900.37000.37400.38400.39400.45300.187900 | **30th floor roof slab** | 10d | 2026-09-20 | 2026-09-29 |  | start no earlier than 2026-09-20 | Zenith | 8656114 |
| 6290 | 36900.37000.37400.38400.39400.45300.187900.1032000 | Reinforcement | 7d | 2026-09-20 | 2026-09-26 | 6288 |  | Zenith | 8680334 |
| 6291 | 36900.37000.37400.38400.39400.45300.187900.1032100 | Conduiting | 7d | 2026-09-21 | 2026-09-27 | 6290SS+1d |  | Zenith | 8680324 |
| 6292 | 36900.37000.37400.38400.39400.45300.187900.1032200 | Formwork | 7d | 2026-09-22 | 2026-09-28 | 6290SS+2d |  | Zenith | 8680314 |
| 6293 | 36900.37000.37400.38400.39400.45300.187900.1032300 | Concreting | 1d | 2026-09-29 | 2026-09-29 | 6291FS+1d, 6292 |  | Zenith | 8680304 |
| 6294 | 36900.37000.37400.38400.39400.45300.188000 | **31st floor roof slab** | 10d | 2026-09-30 | 2026-10-09 |  | start no earlier than 2026-09-30 | Zenith | 8656104 |
| 6295 | 36900.37000.37400.38400.39400.45300.188000.1032400 | Reinforcement | 7d | 2026-09-30 | 2026-10-06 | 6293 |  | Zenith | 8680294 |
| 6296 | 36900.37000.37400.38400.39400.45300.188000.1032500 | Conduiting | 7d | 2026-10-01 | 2026-10-07 | 6295SS+1d |  | Zenith | 8680284 |
| 6297 | 36900.37000.37400.38400.39400.45300.188000.1032600 | Formwork | 7d | 2026-10-02 | 2026-10-08 | 6295SS+2d |  | Zenith | 8680274 |
| 6298 | 36900.37000.37400.38400.39400.45300.188000.1032700 | Concreting | 1d | 2026-10-09 | 2026-10-09 | 6296FS+1d, 6297 |  | Zenith | 8680264 |
| 6299 | 36900.37000.37400.38400.39400.45300.188100 | **32nd floor roof slab** | 10d | 2026-10-10 | 2026-10-19 |  | start no earlier than 2026-10-10 | Zenith | 8656094 |
| 6300 | 36900.37000.37400.38400.39400.45300.188100.1032800 | Reinforcement | 7d | 2026-10-10 | 2026-10-16 | 6298 |  | Zenith | 8680254 |
| 6301 | 36900.37000.37400.38400.39400.45300.188100.1032900 | Conduiting | 7d | 2026-10-11 | 2026-10-17 | 6300SS+1d |  | Zenith | 8680244 |
| 6302 | 36900.37000.37400.38400.39400.45300.188100.1033000 | Formwork | 7d | 2026-10-12 | 2026-10-18 | 6300SS+2d |  | Zenith | 8680234 |
| 6303 | 36900.37000.37400.38400.39400.45300.188100.1033100 | Concreting | 1d | 2026-10-19 | 2026-10-19 | 6301FS+1d, 6302 |  | Zenith | 8680224 |

| ID | WBS | Task | Duration | Start | Finish | Predecessors | Constraint | Calendar | Unique_Task_ID |
| --- | --- | --- | --- | --- | --- | --- | --- | --- | --- |
| 6304 | 36900.37000.37400.38400.39400.45300.188200 | **33rd floor roof slab** | 10d | 2026-10-20 | 2026-10-29 |  | start no earlier than 2026-10-20 | Zenith | 8656084 |
| 6305 | 36900.37000.37400.38400.39400.45300.188200.1033200 | Reinforcement | 7d | 2026-10-20 | 2026-10-26 | 6303 |  | Zenith | 8680214 |
| 6306 | 36900.37000.37400.38400.39400.45300.188200.1033300 | Conduiting | 7d | 2026-10-21 | 2026-10-27 | 6305SS+1d |  | Zenith | 8680204 |
| 6307 | 36900.37000.37400.38400.39400.45300.188200.1033400 | Formwork | 7d | 2026-10-22 | 2026-10-28 | 6305SS+2d |  | Zenith | 8680194 |
| 6308 | 36900.37000.37400.38400.39400.45300.188200.1033500 | Concreting | 1d | 2026-10-29 | 2026-10-29 | 6306FS+1d, 6307 |  | Zenith | 8680184 |
| 6309 | 36900.37000.37400.38400.39400.45300.188300 | **Terrace floor slab** | 18d | 2026-10-30 | 2026-12-31 |  | start no earlier than 2026-10-30 | Zenith | 8656074 |
| 6310 | 36900.37000.37400.38400.39400.45300.188300.1033600 | Reinforcement | 14d | 2026-10-30 | 2026-12-27 | 6308 |  | Zenith | 8680174 |
| 6311 | 36900.37000.37400.38400.39400.45300.188300.1033700 | Conduiting | 14d | 2026-10-31 | 2026-12-28 | 6310SS+1d |  | Zenith | 8680164 |
| 6312 | 36900.37000.37400.38400.39400.45300.188300.1033800 | Formwork | 14d | 2026-12-16 | 2026-12-29 | 6310SS+2d |  | Zenith | 8680154 |
| 6313 | 36900.37000.37400.38400.39400.45300.188300.1033900 | Concreting | 2d | 2026-12-30 | 2026-12-31 | 6311FS+1d, 6312 |  | Zenith | 8680144 |
| 6314 | 36900.37000.37400.38400.39400.45300.188400 | **OHT, Mumty & Machine Room, Parapet** | 35d | 2027-01-01 | 2027-02-04 |  | start no earlier than 2027-01-01 | Zenith | 8656044 |
| 6315 | 36900.37000.37400.38400.39400.45300.188400.1034000 | Reinforcement | 20d | 2027-01-01 | 2027-01-20 | 6313 |  | Zenith | 8680134 |
| 6316 | 36900.37000.37400.38400.39400.45300.188400.1034100 | Flanges fixing & Conduiting | 10d | 2027-01-02 | 2027-01-11 | 6315SS+1d |  | Zenith | 8680124 |
| 6317 | 36900.37000.37400.38400.39400.45300.188400.1034200 | Formwork | 25d | 2027-01-07 | 2027-01-31 | 6315SS+6d |  | Zenith | 8680114 |
| 6318 | 36900.37000.37400.38400.39400.45300.188400.1034300 | Concreting | 4d | 2027-02-01 | 2027-02-04 | 6316FS+5d, 6317 |  | Zenith | 8680104 |
| 6319 | 36900.37000.37400.38400.39400.47900 | **Post Pour Activities** | 350.5d | 2026-02-20 | 2027-03-22 |  | start no earlier than 2026-02-20 | Zenith | 8648094 |
| 6320 | 36900.37000.37400.38400.39400.47900.823300 | 1st Floor | 7d | 2026-02-20 | 2026-02-26 | 6163 |  | Zenith | 8722114 |
| 6321 | 36900.37000.37400.38400.39400.47900.823400 | 2nd Floor | 7d | 2026-03-01 | 2026-03-08 | 6320FS+0.25d, 6168FS+0.25d |  | Zenith | 8722104 |
| 6322 | 36900.37000.37400.38400.39400.47900.823500 | 3rd Floor | 7d | 2026-03-28 | 2026-04-04 | 6321FS+0.25d, 6183FS+0.25d |  | Zenith | 8722094 |
| 6323 | 36900.37000.37400.38400.39400.47900.823600 | 4th Floor | 7d | 2026-04-06 | 2026-04-13 | 6322FS+0.25d, 6188FS+0.25d |  | Zenith | 8722084 |
| 6324 | 36900.37000.37400.38400.39400.47900.823700 | 5th Floor | 7d | 2026-04-15 | 2026-04-22 | 6323FS+0.25d, 6193FS+0.25d |  | Zenith | 8722074 |
| 6325 | 36900.37000.37400.38400.39400.47900.823800 | 6th Floor | 7d | 2026-04-24 | 2026-05-01 | 6324FS+0.25d, 6198FS+0.25d |  | Zenith | 8722064 |
| 6326 | 36900.37000.37400.38400.39400.47900.823900 | 7th Floor | 7d | 2026-05-03 | 2026-05-10 | 6325FS+0.25d, 6203FS+0.25d |  | Zenith | 8722054 |
| 6327 | 36900.37000.37400.38400.39400.47900.824000 | 8th Floor | 7d | 2026-05-12 | 2026-05-19 | 6326FS+0.25d, 6208FS+0.25d |  | Zenith | 8722044 |
| 6328 | 36900.37000.37400.38400.39400.47900.824100 | 9th Floor | 7d | 2026-05-20 | 2026-05-27 | 6327FS+0.25d, 6213FS+0.25d |  | Zenith | 8722034 |
| 6329 | 36900.37000.37400.38400.39400.47900.824200 | 10th Floor | 7d | 2026-05-29 | 2026-06-05 | 6328FS+0.25d, 6218FS+0.25d |  | Zenith | 8722024 |
| 6330 | 36900.37000.37400.38400.39400.47900.824300 | 11th Floor | 7d | 2026-06-07 | 2026-06-14 | 6329FS+0.25d, 6223FS+0.25d |  | Zenith | 8722014 |
| 6331 | 36900.37000.37400.38400.39400.47900.824400 | 12th Floor | 7d | 2026-06-16 | 2026-06-23 | 6330FS+0.25d, 6228FS+0.25d |  | Zenith | 8722004 |
| 6332 | 36900.37000.37400.38400.39400.47900.824500 | 13th Floor | 7d | 2026-06-24 | 2026-07-01 | 6331FS+0.25d, 6233FS+0.25d |  | Zenith | 8721994 |
| 6333 | 36900.37000.37400.38400.39400.47900.824600 | 14th Floor | 7d | 2026-07-02 | 2026-07-09 | 6332FS+0.25d, 6238FS+0.25d |  | Zenith | 8721984 |
| 6334 | 36900.37000.37400.38400.39400.47900.824700 | 15th Floor | 7d | 2026-07-10 | 2026-07-17 | 6333FS+0.25d, 6243FS+0.25d |  | Zenith | 8721974 |
| 6335 | 36900.37000.37400.38400.39400.47900.824800 | 16th Floor | 7d | 2026-07-18 | 2026-07-25 | 6334FS+0.25d, 6248FS+0.25d |  | Zenith | 8721964 |
| 6336 | 36900.37000.37400.38400.39400.47900.824900 | 17th Floor | 7d | 2026-07-26 | 2026-08-02 | 6335FS+0.25d, 6253FS+0.25d |  | Zenith | 8721954 |
| 6337 | 36900.37000.37400.38400.39400.47900.825000 | 18th Floor | 7d | 2026-08-03 | 2026-08-10 | 6336FS+0.25d, 6258FS+0.25d |  | Zenith | 8721944 |
| 6338 | 36900.37000.37400.38400.39400.47900.825100 | 19th Floor | 7d | 2026-08-11 | 2026-08-18 | 6337FS+0.25d, 6263FS+0.25d |  | Zenith | 8721934 |
| 6339 | 36900.37000.37400.38400.39400.47900.825200 | 20th Floor | 7d | 2026-08-19 | 2026-08-26 | 6338FS+0.25d, 6268FS+0.25d |  | Zenith | 8721924 |
| 6340 | 36900.37000.37400.38400.39400.47900.825300 | 21st Floor | 7d | 2026-08-27 | 2026-09-03 | 6339FS+0.25d, 6273FS+0.25d |  | Zenith | 8721914 |
| 6341 | 36900.37000.37400.38400.39400.47900.825400 | 22nd Floor | 7d | 2026-09-04 | 2026-09-11 | 6340FS+0.25d, 6278FS+0.25d |  | Zenith | 8721904 |
| 6342 | 36900.37000.37400.38400.39400.47900.825500 | 23rd Floor | 7d | 2026-09-12 | 2026-09-19 | 6341FS+0.25d, 6283FS+0.25d |  | Zenith | 8721894 |
| 6343 | 36900.37000.37400.38400.39400.47900.825600 | 24th Floor | 7d | 2026-09-20 | 2026-09-27 | 6342FS+0.25d, 6288FS+0.25d |  | Zenith | 8721884 |
| 6344 | 36900.37000.37400.38400.39400.47900.825700 | 25th Floor | 7d | 2026-09-30 | 2026-10-07 | 6343FS+0.25d, 6293FS+0.25d |  | Zenith | 8721874 |
| 6345 | 36900.37000.37400.38400.39400.47900.825800 | 26th Floor | 7d | 2026-10-10 | 2026-10-17 | 6344FS+0.25d, 6298FS+0.25d |  | Zenith | 8721864 |
| 6346 | 36900.37000.37400.38400.39400.47900.825900 | 27th Floor | 7d | 2026-10-20 | 2026-10-27 | 6345FS+0.25d, 6303FS+0.25d |  | Zenith | 8721854 |
| 6347 | 36900.37000.37400.38400.39400.47900.826000 | 28th Floor | 7d | 2026-10-30 | 2026-12-21 | 6346FS+0.25d, 6308FS+0.25d |  | Zenith | 8721844 |
| 6348 | 36900.37000.37400.38400.39400.47900.826100 | 29th Floor | 7d | 2027-01-01 | 2027-01-08 | 6347FS+0.25d, 6313FS+0.25d |  | Zenith | 8721834 |
| 6349 | 36900.37000.37400.38400.39400.47900.826200 | 30th Floor | 7d | 2027-02-01 | 2027-02-08 | 6348FS+0.25d, 6317FS+0.25d |  | Zenith | 8721824 |
| 6350 | 36900.37000.37400.38400.39400.47900.826300 | 31st Flood | 7d | 2027-02-08 | 2027-02-15 | 6322FS+0.25d, 6349FS+0.25d |  | Zenith | 8721814 |
| 6351 | 36900.37000.37400.38400.39400.47900.826400 | 32nd Floor | 7d | 2027-02-15 | 2027-02-22 | 6350 |  | Zenith | 8721804 |
| 6352 | 36900.37000.37400.38400.39400.47900.826500 | 33rd Floor | 7d | 2027-02-22 | 2027-03-01 | 6351 |  | Zenith | 8721794 |
| 6353 | 36900.37000.37400.38400.39400.47900.826600 | 34th Floor | 7d | 2027-03-01 | 2027-03-08 | 6352 |  | Zenith | 8721784 |
| 6354 | 36900.37000.37400.38400.39400.47900.826700 | Terrace | 7d | 2027-03-08 | 2027-03-15 | 6353 |  | Zenith | 8721774 |
| 6355 | 36900.37000.37400.38400.39400.47900.826800 | Mumty & Machine Room | 7d | 2027-03-15 | 2027-03-22 | 6354 |  | Zenith | 8721764 |

| ID | WBS | Task | Duration | Start | Finish | Predecessors | Constraint | Calendar | Unique_Task_ID |
| --- | --- | --- | --- | --- | --- | --- | --- | --- | --- |
| 6356 | 36900.37000.37400.38400.39400.41200 | **Finishing work** | 662.25d | 2026-02-27 | 2028-03-20 |  | start no earlier than 2026-02-27 | Zenith | 8647814 |
| 6357 | 36900.37000.37400.38400.39400.41200.42200 | **Flat finishing** | 662.25d | 2026-02-27 | 2028-03-20 |  | start no earlier than 2026-02-27 | Zenith | 8647894 |
| 6358 | 36900.37000.37400.38400.39400.41200.42200.104300 | **1st Floor roof** | 113d | 2026-02-27 | 2026-06-19 |  | start no earlier than 2026-02-27 | Zenith | 8650614 |
| 6359 | 36900.37000.37400.38400.39400.41200.42200.104300.1621300 | Block Work | 7d | 2026-02-27 | 2026-03-05 | 6320 |  | Zenith | 8711654 |
| 6360 | 36900.37000.37400.38400.39400.41200.42200.104300.1621400 | Fire sprinkler pipe fixing | 7d | 2026-03-06 | 2026-03-12 | 6359 |  | Zenith | 8711664 |
| 6361 | 36900.37000.37400.38400.39400.41200.42200.104300.1621500 | Internal Plumbing Works | 10d | 2026-03-06 | 2026-03-15 | 6359 |  | Zenith | 8711674 |
| 6362 | 36900.37000.37400.38400.39400.41200.42200.104300.1621600 | Waterproofing | 14d | 2026-03-16 | 2026-03-29 | 6361 |  | Zenith | 8711684 |
| 6363 | 36900.37000.37400.38400.39400.41200.42200.104300.1621700 | Internal Plaster | 14d | 2026-03-21 | 2026-04-03 | 6361, 6362FF+5d |  | Zenith | 8711694 |
| 6364 | 36900.37000.37400.38400.39400.41200.42200.104300.1621800 | IPS flooring work | 10d | 2026-04-04 | 2026-04-13 | 6363 |  | Zenith | 8711704 |
| 6365 | 36900.37000.37400.38400.39400.41200.42200.104300.1621900 | Toilet dado work | 10d | 2026-04-04 | 2026-04-13 | 6362, 6363 |  | Zenith | 8711714 |
| 6366 | 36900.37000.37400.38400.39400.41200.42200.104300.1622000 | Toilet flooring work | 7d | 2026-04-14 | 2026-04-20 | 6365 |  | Zenith | 8711724 |
| 6367 | 36900.37000.37400.38400.39400.41200.42200.104300.1622100 | False Cieling panel fixing | 10d | 2026-04-21 | 2026-04-30 | 6366 |  | Zenith | 8711734 |
| 6368 | 36900.37000.37400.38400.39400.41200.42200.104300.1622200 | Living dinning flooring | 13d | 2026-04-21 | 2026-05-03 | 6366 |  | Zenith | 8711744 |
| 6369 | 36900.37000.37400.38400.39400.41200.42200.104300.1622300 | Putty primer coat | 12d | 2026-05-04 | 2026-05-15 | 6368 |  | Zenith | 8711754 |
| 6370 | 36900.37000.37400.38400.39400.41200.42200.104300.1622400 | Aluminium door-window fixing | 15d | 2026-05-04 | 2026-05-18 | 6364, 6368 |  | Zenith | 8711764 |
| 6371 | 36900.37000.37400.38400.39400.41200.42200.104300.1622500 | Door shutter fixing (Pre Hung) | 8d | 2026-05-16 | 2026-05-23 | 6369 |  | Zenith | 8711774 |
| 6372 | 36900.37000.37400.38400.39400.41200.42200.104300.1622600 | Electrical wiring work | 12d | 2026-05-24 | 2026-06-04 | 6371 |  | Zenith | 8711784 |
| 6373 | 36900.37000.37400.38400.39400.41200.42200.104300.1622700 | Painting 1st coat | 15d | 2026-06-05 | 2026-06-19 | 6372 |  | Zenith | 8711794 |
| 6374 | 36900.37000.37400.38400.39400.41200.42200.104400 | **2nd floor roof** | 118.75d | 2026-03-08 | 2026-07-04 |  | start no earlier than 2026-03-08 | Zenith | 8650624 |
| 6375 | 36900.37000.37400.38400.39400.41200.42200.104400.1622800 | Block Work | 10d | 2026-03-08 | 2026-03-18 | 6321, 6359 |  | Zenith | 8711804 |
| 6376 | 36900.37000.37400.38400.39400.41200.42200.104400.1622900 | Fire sprinkler pipe fixing | 6d | 2026-03-18 | 2026-03-24 | 6360, 6375 |  | Zenith | 8711814 |
| 6377 | 36900.37000.37400.38400.39400.41200.42200.104400.1623000 | Internal Plumbing Works | 10d | 2026-03-18 | 2026-03-28 | 6361, 6375 |  | Zenith | 8711824 |
| 6378 | 36900.37000.37400.38400.39400.41200.42200.104400.1623100 | Waterproofing | 14d | 2026-03-30 | 2026-04-12 | 6362, 6377 |  | Zenith | 8711834 |
| 6379 | 36900.37000.37400.38400.39400.41200.42200.104400.1623200 | Internal Plaster | 14d | 2026-04-04 | 2026-04-17 | 6363, 6377, 6378FF+5d |  | Zenith | 8711844 |
| 6380 | 36900.37000.37400.38400.39400.41200.42200.104400.1623300 | IPS flooring work | 10d | 2026-04-18 | 2026-04-27 | 6364, 6379 |  | Zenith | 8711854 |
| 6381 | 36900.37000.37400.38400.39400.41200.42200.104400.1623400 | Toilet dado work | 10d | 2026-04-18 | 2026-04-27 | 6365, 6378, 6379 |  | Zenith | 8711864 |
| 6382 | 36900.37000.37400.38400.39400.41200.42200.104400.1623500 | Toilet flooring work | 7d | 2026-04-28 | 2026-05-04 | 6366, 6381 |  | Zenith | 8711874 |
| 6383 | 36900.37000.37400.38400.39400.41200.42200.104400.1623600 | False Cieling panel fixing | 10d | 2026-05-05 | 2026-05-14 | 6367, 6382 |  | Zenith | 8711884 |
| 6384 | 36900.37000.37400.38400.39400.41200.42200.104400.1623700 | Living dinning flooring | 13d | 2026-05-05 | 2026-05-17 | 6368, 6382 |  | Zenith | 8711894 |
| 6385 | 36900.37000.37400.38400.39400.41200.42200.104400.1623800 | Putty primer coat | 12d | 2026-05-18 | 2026-05-29 | 6369, 6384 |  | Zenith | 8711904 |
| 6386 | 36900.37000.37400.38400.39400.41200.42200.104400.1623900 | Aluminium door-window fixing | 15d | 2026-05-19 | 2026-06-02 | 6370, 6380, 6384 |  | Zenith | 8711914 |
| 6387 | 36900.37000.37400.38400.39400.41200.42200.104400.1624000 | Door shutter fixing (Pre Hung) | 8d | 2026-05-30 | 2026-06-06 | 6371, 6385 |  | Zenith | 8711924 |
| 6388 | 36900.37000.37400.38400.39400.41200.42200.104400.1624100 | Electrical wiring work | 12d | 2026-06-07 | 2026-06-18 | 6372, 6387 |  | Zenith | 8711934 |
| 6389 | 36900.37000.37400.38400.39400.41200.42200.104400.1624200 | Painting 1st coat | 15d | 2026-06-20 | 2026-07-04 | 6373, 6388 |  | Zenith | 8711944 |

| ID | WBS | Task | Duration | Start | Finish | Predecessors | Constraint | Calendar | Unique_Task_ID |
| --- | --- | --- | --- | --- | --- | --- | --- | --- | --- |
| 6390 | 36900.37000.37400.38400.39400.41200.42200.104500 | **3rd floor roof** | 116d | 2026-04-04 | 2026-07-29 |  | start no earlier than 2026-04-04 | Zenith | 8650634 |
| 6391 | 36900.37000.37400.38400.39400.41200.42200.104500.1624300 | Block Work | 10d | 2026-04-04 | 2026-04-14 | 6322, 6375 |  | Zenith | 8711954 |
| 6392 | 36900.37000.37400.38400.39400.41200.42200.104500.1624400 | Fire sprinkler pipe fixing | 6d | 2026-04-14 | 2026-04-20 | 6376, 6391 |  | Zenith | 8711964 |
| 6393 | 36900.37000.37400.38400.39400.41200.42200.104500.1624500 | Internal Plumbing Works | 10d | 2026-04-14 | 2026-04-24 | 6377, 6391 |  | Zenith | 8711974 |
| 6394 | 36900.37000.37400.38400.39400.41200.42200.104500.1624600 | Waterproofing | 14d | 2026-04-24 | 2026-05-08 | 6378, 6393 |  | Zenith | 8711984 |
| 6395 | 36900.37000.37400.38400.39400.41200.42200.104500.1624700 | Internal Plaster | 14d | 2026-04-29 | 2026-05-13 | 6379, 6393, 6394FF+5d |  | Zenith | 8711994 |
| 6396 | 36900.37000.37400.38400.39400.41200.42200.104500.1624800 | IPS flooring work | 10d | 2026-05-13 | 2026-05-23 | 6380, 6395 |  | Zenith | 8712004 |
| 6397 | 36900.37000.37400.38400.39400.41200.42200.104500.1624900 | Toilet dado work | 10d | 2026-05-13 | 2026-05-23 | 6381, 6394, 6395 |  | Zenith | 8712014 |
| 6398 | 36900.37000.37400.38400.39400.41200.42200.104500.1625000 | Toilet flooring work | 7d | 2026-05-23 | 2026-05-30 | 6382, 6397 |  | Zenith | 8712024 |
| 6399 | 36900.37000.37400.38400.39400.41200.42200.104500.1625100 | False Cieling panel fixing | 10d | 2026-05-30 | 2026-06-09 | 6383, 6398 |  | Zenith | 8712034 |
| 6400 | 36900.37000.37400.38400.39400.41200.42200.104500.1625200 | Living dinning flooring | 13d | 2026-05-30 | 2026-06-12 | 6384, 6398 |  | Zenith | 8712044 |
| 6401 | 36900.37000.37400.38400.39400.41200.42200.104500.1625300 | Putty primer coat | 12d | 2026-06-12 | 2026-06-24 | 6385, 6400 |  | Zenith | 8712054 |
| 6402 | 36900.37000.37400.38400.39400.41200.42200.104500.1625400 | Aluminium door-window fixing | 15d | 2026-06-12 | 2026-06-27 | 6386, 6396, 6400 |  | Zenith | 8712064 |
| 6403 | 36900.37000.37400.38400.39400.41200.42200.104500.1625500 | Door shutter fixing (Pre Hung) | 8d | 2026-06-24 | 2026-07-02 | 6387, 6401 |  | Zenith | 8712074 |
| 6404 | 36900.37000.37400.38400.39400.41200.42200.104500.1625600 | Electrical wiring work | 12d | 2026-07-02 | 2026-07-14 | 6388, 6403 |  | Zenith | 8712084 |
| 6405 | 36900.37000.37400.38400.39400.41200.42200.104500.1625700 | Painting 1st coat | 15d | 2026-07-14 | 2026-07-29 | 6389, 6404 |  | Zenith | 8712094 |
| 6406 | 36900.37000.37400.38400.39400.41200.42200.104600 | **4th floor roof** | 121d | 2026-04-14 | 2026-08-13 |  | start no earlier than 2026-04-14 | Zenith | 8650644 |
| 6407 | 36900.37000.37400.38400.39400.41200.42200.104600.1625800 | Block Work | 10d | 2026-04-14 | 2026-04-24 | 6323, 6391 |  | Zenith | 8712104 |
| 6408 | 36900.37000.37400.38400.39400.41200.42200.104600.1625900 | Fire sprinkler pipe fixing | 6d | 2026-04-24 | 2026-04-30 | 6392, 6407 |  | Zenith | 8712114 |
| 6409 | 36900.37000.37400.38400.39400.41200.42200.104600.1626000 | Internal Plumbing Works | 10d | 2026-04-24 | 2026-05-04 | 6393, 6407 |  | Zenith | 8712124 |
| 6410 | 36900.37000.37400.38400.39400.41200.42200.104600.1626100 | Waterproofing | 14d | 2026-05-08 | 2026-05-22 | 6394, 6409 |  | Zenith | 8712134 |
| 6411 | 36900.37000.37400.38400.39400.41200.42200.104600.1626200 | Internal Plaster | 14d | 2026-05-13 | 2026-05-27 | 6395, 6409, 6410FF+5d |  | Zenith | 8712144 |
| 6412 | 36900.37000.37400.38400.39400.41200.42200.104600.1626300 | IPS flooring work | 10d | 2026-05-27 | 2026-06-06 | 6396, 6411 |  | Zenith | 8712154 |
| 6413 | 36900.37000.37400.38400.39400.41200.42200.104600.1626400 | Toilet dado work | 10d | 2026-05-27 | 2026-06-06 | 6397, 6410, 6411 |  | Zenith | 8712164 |
| 6414 | 36900.37000.37400.38400.39400.41200.42200.104600.1626500 | Toilet flooring work | 7d | 2026-06-06 | 2026-06-13 | 6398, 6413 |  | Zenith | 8712174 |
| 6415 | 36900.37000.37400.38400.39400.41200.42200.104600.1626600 | False Cieling panel fixing | 10d | 2026-06-13 | 2026-06-23 | 6399, 6414 |  | Zenith | 8712184 |
| 6416 | 36900.37000.37400.38400.39400.41200.42200.104600.1626700 | Living dinning flooring | 13d | 2026-06-13 | 2026-06-26 | 6400, 6414 |  | Zenith | 8712194 |
| 6417 | 36900.37000.37400.38400.39400.41200.42200.104600.1626800 | Putty primer coat | 12d | 2026-06-26 | 2026-07-08 | 6401, 6416 |  | Zenith | 8712204 |
| 6418 | 36900.37000.37400.38400.39400.41200.42200.104600.1626900 | Aluminium door-window fixing | 15d | 2026-06-27 | 2026-07-12 | 6402, 6412, 6416 |  | Zenith | 8712214 |
| 6419 | 36900.37000.37400.38400.39400.41200.42200.104600.1627000 | Door shutter fixing (Pre Hung) | 8d | 2026-07-08 | 2026-07-16 | 6403, 6417 |  | Zenith | 8712224 |
| 6420 | 36900.37000.37400.38400.39400.41200.42200.104600.1627100 | Electrical wiring work | 12d | 2026-07-16 | 2026-07-28 | 6404, 6419 |  | Zenith | 8712234 |
| 6421 | 36900.37000.37400.38400.39400.41200.42200.104600.1627200 | Painting 1st coat | 15d | 2026-07-29 | 2026-08-13 | 6405, 6420 |  | Zenith | 8712244 |

| ID | WBS | Task | Duration | Start | Finish | Predecessors | Constraint | Calendar | Unique_Task_ID |
| --- | --- | --- | --- | --- | --- | --- | --- | --- | --- |
| 6422 | 36900.37000.37400.38400.39400.41200.42200.104700 | **5th floor roof** | 126d | 2026-04-24 | 2026-08-28 |  | start no earlier than 2026-04-24 | Zenith | 8650654 |
| 6423 | 36900.37000.37400.38400.39400.41200.42200.104700.1627300 | Block Work | 10d | 2026-04-24 | 2026-05-04 | 6324, 6407 |  | Zenith | 8712254 |
| 6424 | 36900.37000.37400.38400.39400.41200.42200.104700.1627400 | Fire sprinkler pipe fixing | 6d | 2026-05-04 | 2026-05-10 | 6408, 6423 |  | Zenith | 8712264 |
| 6425 | 36900.37000.37400.38400.39400.41200.42200.104700.1627500 | Internal Plumbing Works | 10d | 2026-05-04 | 2026-05-14 | 6409, 6423 |  | Zenith | 8712274 |
| 6426 | 36900.37000.37400.38400.39400.41200.42200.104700.1627600 | Waterproofing | 14d | 2026-05-22 | 2026-06-05 | 6410, 6425 |  | Zenith | 8712284 |
| 6427 | 36900.37000.37400.38400.39400.41200.42200.104700.1627700 | Internal Plaster | 14d | 2026-05-27 | 2026-06-10 | 6411, 6425, 6426FF+5d |  | Zenith | 8712294 |
| 6428 | 36900.37000.37400.38400.39400.41200.42200.104700.1627800 | IPS flooring work | 10d | 2026-06-10 | 2026-06-20 | 6412, 6427 |  | Zenith | 8712304 |
| 6429 | 36900.37000.37400.38400.39400.41200.42200.104700.1627900 | Toilet dado work | 10d | 2026-06-10 | 2026-06-20 | 6413, 6426, 6427 |  | Zenith | 8712314 |
| 6430 | 36900.37000.37400.38400.39400.41200.42200.104700.1628000 | Toilet flooring work | 7d | 2026-06-20 | 2026-06-27 | 6414, 6429 |  | Zenith | 8712324 |
| 6431 | 36900.37000.37400.38400.39400.41200.42200.104700.1628100 | False Cieling panel fixing | 10d | 2026-06-27 | 2026-07-07 | 6415, 6430 |  | Zenith | 8712334 |
| 6432 | 36900.37000.37400.38400.39400.41200.42200.104700.1628200 | Living dinning flooring | 13d | 2026-06-27 | 2026-07-10 | 6416, 6430 |  | Zenith | 8712344 |
| 6433 | 36900.37000.37400.38400.39400.41200.42200.104700.1628300 | Putty primer coat | 12d | 2026-07-10 | 2026-07-22 | 6417, 6432 |  | Zenith | 8712354 |
| 6434 | 36900.37000.37400.38400.39400.41200.42200.104700.1628400 | Aluminium door-window fixing | 15d | 2026-07-12 | 2026-07-27 | 6418, 6428, 6432 |  | Zenith | 8712364 |
| 6435 | 36900.37000.37400.38400.39400.41200.42200.104700.1628500 | Door shutter fixing (Pre Hung) | 8d | 2026-07-22 | 2026-07-30 | 6419, 6433 |  | Zenith | 8712374 |
| 6436 | 36900.37000.37400.38400.39400.41200.42200.104700.1628600 | Electrical wiring work | 12d | 2026-07-30 | 2026-08-11 | 6420, 6435 |  | Zenith | 8712384 |
| 6437 | 36900.37000.37400.38400.39400.41200.42200.104700.1628700 | Painting 1st coat | 15d | 2026-08-13 | 2026-08-28 | 6421, 6436 |  | Zenith | 8712394 |
| 6438 | 36900.37000.37400.38400.39400.41200.42200.104800 | **6th floor roof** | 131d | 2026-05-04 | 2026-09-12 |  | start no earlier than 2026-05-04 | Zenith | 8650664 |
| 6439 | 36900.37000.37400.38400.39400.41200.42200.104800.1628800 | Block Work | 10d | 2026-05-04 | 2026-05-14 | 6325, 6423 |  | Zenith | 8712404 |
| 6440 | 36900.37000.37400.38400.39400.41200.42200.104800.1628900 | Fire sprinkler pipe fixing | 6d | 2026-05-14 | 2026-05-20 | 6424, 6439 |  | Zenith | 8712414 |
| 6441 | 36900.37000.37400.38400.39400.41200.42200.104800.1629000 | Internal Plumbing Works | 10d | 2026-05-14 | 2026-05-24 | 6425, 6439 |  | Zenith | 8712424 |
| 6442 | 36900.37000.37400.38400.39400.41200.42200.104800.1629100 | Waterproofing | 14d | 2026-06-05 | 2026-06-19 | 6426, 6441 |  | Zenith | 8712434 |
| 6443 | 36900.37000.37400.38400.39400.41200.42200.104800.1629200 | Internal Plaster | 14d | 2026-06-10 | 2026-06-24 | 6427, 6441, 6442FF+5d |  | Zenith | 8712444 |
| 6444 | 36900.37000.37400.38400.39400.41200.42200.104800.1629300 | IPS flooring work | 10d | 2026-06-24 | 2026-07-04 | 6428, 6443 |  | Zenith | 8712454 |
| 6445 | 36900.37000.37400.38400.39400.41200.42200.104800.1629400 | Toilet dado work | 10d | 2026-06-24 | 2026-07-04 | 6429, 6442, 6443 |  | Zenith | 8712464 |
| 6446 | 36900.37000.37400.38400.39400.41200.42200.104800.1629500 | Toilet flooring work | 7d | 2026-07-04 | 2026-07-11 | 6430, 6445 |  | Zenith | 8712474 |
| 6447 | 36900.37000.37400.38400.39400.41200.42200.104800.1629600 | False Cieling panel fixing | 10d | 2026-07-11 | 2026-07-21 | 6431, 6446 |  | Zenith | 8712484 |
| 6448 | 36900.37000.37400.38400.39400.41200.42200.104800.1629700 | Living dinning flooring | 13d | 2026-07-11 | 2026-07-24 | 6432, 6446 |  | Zenith | 8712494 |
| 6449 | 36900.37000.37400.38400.39400.41200.42200.104800.1629800 | Putty primer coat | 12d | 2026-07-24 | 2026-08-05 | 6433, 6448 |  | Zenith | 8712504 |
| 6450 | 36900.37000.37400.38400.39400.41200.42200.104800.1629900 | Aluminium door-window fixing | 15d | 2026-07-27 | 2026-08-11 | 6434, 6444, 6448 |  | Zenith | 8712514 |
| 6451 | 36900.37000.37400.38400.39400.41200.42200.104800.1630000 | Door shutter fixing (Pre Hung) | 8d | 2026-08-05 | 2026-08-13 | 6435, 6449 |  | Zenith | 8712524 |
| 6452 | 36900.37000.37400.38400.39400.41200.42200.104800.1630100 | Electrical wiring work | 12d | 2026-08-13 | 2026-08-25 | 6436, 6451 |  | Zenith | 8712534 |
| 6453 | 36900.37000.37400.38400.39400.41200.42200.104800.1630200 | Painting 1st coat | 15d | 2026-08-28 | 2026-09-12 | 6437, 6452 |  | Zenith | 8712544 |

| ID | WBS | Task | Duration | Start | Finish | Predecessors | Constraint | Calendar | Unique_Task_ID |
| --- | --- | --- | --- | --- | --- | --- | --- | --- | --- |
| 6454 | 36900.37000.37400.38400.39400.41200.42200.104900 | **7th floor roof** | 136d | 2026-05-14 | 2026-09-27 |  | start no earlier than 2026-05-14 | Zenith | 8650674 |
| 6455 | 36900.37000.37400.38400.39400.41200.42200.104900.1630300 | Block Work | 10d | 2026-05-14 | 2026-05-24 | 6326, 6439 |  | Zenith | 8712554 |
| 6456 | 36900.37000.37400.38400.39400.41200.42200.104900.1630400 | Fire sprinkler pipe fixing | 6d | 2026-05-24 | 2026-05-30 | 6440, 6455 |  | Zenith | 8712564 |
| 6457 | 36900.37000.37400.38400.39400.41200.42200.104900.1630500 | Internal Plumbing Works | 10d | 2026-05-24 | 2026-06-03 | 6441, 6455 |  | Zenith | 8712574 |
| 6458 | 36900.37000.37400.38400.39400.41200.42200.104900.1630600 | Waterproofing | 14d | 2026-06-19 | 2026-07-03 | 6442, 6457 |  | Zenith | 8712584 |
| 6459 | 36900.37000.37400.38400.39400.41200.42200.104900.1630700 | Internal Plaster | 14d | 2026-06-24 | 2026-07-08 | 6443, 6457, 6458FF+5d |  | Zenith | 8712594 |
| 6460 | 36900.37000.37400.38400.39400.41200.42200.104900.1630800 | IPS flooring work | 10d | 2026-07-08 | 2026-07-18 | 6444, 6459 |  | Zenith | 8712604 |
| 6461 | 36900.37000.37400.38400.39400.41200.42200.104900.1630900 | Toilet dado work | 10d | 2026-07-08 | 2026-07-18 | 6445, 6458, 6459 |  | Zenith | 8712614 |
| 6462 | 36900.37000.37400.38400.39400.41200.42200.104900.1631000 | Toilet flooring work | 7d | 2026-07-18 | 2026-07-25 | 6446, 6461 |  | Zenith | 8712624 |
| 6463 | 36900.37000.37400.38400.39400.41200.42200.104900.1631100 | False Cieling panel fixing | 10d | 2026-07-25 | 2026-08-04 | 6447, 6462 |  | Zenith | 8712634 |
| 6464 | 36900.37000.37400.38400.39400.41200.42200.104900.1631200 | Living dinning flooring | 13d | 2026-07-25 | 2026-08-07 | 6448, 6462 |  | Zenith | 8712644 |
| 6465 | 36900.37000.37400.38400.39400.41200.42200.104900.1631300 | Putty primer coat | 12d | 2026-08-07 | 2026-08-19 | 6449, 6464 |  | Zenith | 8712654 |
| 6466 | 36900.37000.37400.38400.39400.41200.42200.104900.1631400 | Aluminium door-window fixing | 15d | 2026-08-11 | 2026-08-26 | 6450, 6460, 6464 |  | Zenith | 8712664 |
| 6467 | 36900.37000.37400.38400.39400.41200.42200.104900.1631500 | Door shutter fixing (Pre Hung) | 8d | 2026-08-19 | 2026-08-27 | 6451, 6465 |  | Zenith | 8712674 |
| 6468 | 36900.37000.37400.38400.39400.41200.42200.104900.1631600 | Electrical wiring work | 12d | 2026-08-27 | 2026-09-08 | 6452, 6467 |  | Zenith | 8712684 |
| 6469 | 36900.37000.37400.38400.39400.41200.42200.104900.1631700 | Painting 1st coat | 15d | 2026-09-12 | 2026-09-27 | 6453, 6468 |  | Zenith | 8712694 |
| 6470 | 36900.37000.37400.38400.39400.41200.42200.105000 | **8th floor roof** | 141d | 2026-05-24 | 2026-10-12 |  | start no earlier than 2026-05-24 | Zenith | 8650684 |
| 6471 | 36900.37000.37400.38400.39400.41200.42200.105000.1631800 | Block Work | 10d | 2026-05-24 | 2026-06-03 | 6327, 6455 |  | Zenith | 8712704 |
| 6472 | 36900.37000.37400.38400.39400.41200.42200.105000.1631900 | Fire sprinkler pipe fixing | 6d | 2026-06-03 | 2026-06-09 | 6456, 6471 |  | Zenith | 8712714 |
| 6473 | 36900.37000.37400.38400.39400.41200.42200.105000.1632000 | Internal Plumbing Works | 10d | 2026-06-03 | 2026-06-13 | 6457, 6471 |  | Zenith | 8712724 |
| 6474 | 36900.37000.37400.38400.39400.41200.42200.105000.1632100 | Waterproofing | 14d | 2026-07-03 | 2026-07-17 | 6458, 6473 |  | Zenith | 8712734 |
| 6475 | 36900.37000.37400.38400.39400.41200.42200.105000.1632200 | Internal Plaster | 14d | 2026-07-08 | 2026-07-22 | 6459, 6473, 6474FF+5d |  | Zenith | 8712744 |
| 6476 | 36900.37000.37400.38400.39400.41200.42200.105000.1632300 | IPS flooring work | 10d | 2026-07-22 | 2026-08-01 | 6460, 6475 |  | Zenith | 8712754 |
| 6477 | 36900.37000.37400.38400.39400.41200.42200.105000.1632400 | Toilet dado work | 10d | 2026-07-22 | 2026-08-01 | 6461, 6474, 6475 |  | Zenith | 8712764 |
| 6478 | 36900.37000.37400.38400.39400.41200.42200.105000.1632500 | Toilet flooring work | 7d | 2026-08-01 | 2026-08-08 | 6462, 6477 |  | Zenith | 8712774 |
| 6479 | 36900.37000.37400.38400.39400.41200.42200.105000.1632600 | False Cieling panel fixing | 10d | 2026-08-08 | 2026-08-18 | 6463, 6478 |  | Zenith | 8712784 |
| 6480 | 36900.37000.37400.38400.39400.41200.42200.105000.1632700 | Living dinning flooring | 13d | 2026-08-08 | 2026-08-21 | 6464, 6478 |  | Zenith | 8712794 |
| 6481 | 36900.37000.37400.38400.39400.41200.42200.105000.1632800 | Putty primer coat | 12d | 2026-08-21 | 2026-09-02 | 6465, 6480 |  | Zenith | 8712804 |
| 6482 | 36900.37000.37400.38400.39400.41200.42200.105000.1632900 | Aluminium door-window fixing | 15d | 2026-08-26 | 2026-09-10 | 6466, 6476, 6480 |  | Zenith | 8712814 |
| 6483 | 36900.37000.37400.38400.39400.41200.42200.105000.1633000 | Door shutter fixing (Pre Hung) | 8d | 2026-09-02 | 2026-09-10 | 6467, 6481 |  | Zenith | 8712824 |
| 6484 | 36900.37000.37400.38400.39400.41200.42200.105000.1633100 | Electrical wiring work | 12d | 2026-09-10 | 2026-09-22 | 6468, 6483 |  | Zenith | 8712834 |
| 6485 | 36900.37000.37400.38400.39400.41200.42200.105000.1633200 | Painting 1st coat | 15d | 2026-09-27 | 2026-10-12 | 6469, 6484 |  | Zenith | 8712844 |

| ID | WBS | Task | Duration | Start | Finish | Predecessors | Constraint | Calendar | Unique_Task_ID |
| --- | --- | --- | --- | --- | --- | --- | --- | --- | --- |
| 6486 | 36900.37000.37400.38400.39400.41200.42200.105100 | **9th floor roof** | 146d | 2026-06-03 | 2026-10-27 |  | start no earlier than 2026-06-03 | Zenith | 8650694 |
| 6487 | 36900.37000.37400.38400.39400.41200.42200.105100.1633300 | Block Work | 10d | 2026-06-03 | 2026-06-13 | 6328, 6471 |  | Zenith | 8712854 |
| 6488 | 36900.37000.37400.38400.39400.41200.42200.105100.1633400 | Fire sprinkler pipe fixing | 6d | 2026-06-13 | 2026-06-19 | 6472, 6487 |  | Zenith | 8712864 |
| 6489 | 36900.37000.37400.38400.39400.41200.42200.105100.1633500 | Internal Plumbing Works | 10d | 2026-06-13 | 2026-06-23 | 6473, 6487 |  | Zenith | 8712874 |
| 6490 | 36900.37000.37400.38400.39400.41200.42200.105100.1633600 | Waterproofing | 14d | 2026-07-17 | 2026-07-31 | 6474, 6489 |  | Zenith | 8712884 |
| 6491 | 36900.37000.37400.38400.39400.41200.42200.105100.1633700 | Internal Plaster | 14d | 2026-07-22 | 2026-08-05 | 6475, 6489, 6490FF+5d |  | Zenith | 8712894 |
| 6492 | 36900.37000.37400.38400.39400.41200.42200.105100.1633800 | IPS flooring work | 10d | 2026-08-05 | 2026-08-15 | 6476, 6491 |  | Zenith | 8712904 |
| 6493 | 36900.37000.37400.38400.39400.41200.42200.105100.1633900 | Toilet dado work | 10d | 2026-08-05 | 2026-08-15 | 6477, 6490, 6491 |  | Zenith | 8712914 |
| 6494 | 36900.37000.37400.38400.39400.41200.42200.105100.1634000 | Toilet flooring work | 7d | 2026-08-15 | 2026-08-22 | 6478, 6493 |  | Zenith | 8712924 |
| 6495 | 36900.37000.37400.38400.39400.41200.42200.105100.1634100 | False Cieling panel fixing | 10d | 2026-08-22 | 2026-09-01 | 6479, 6494 |  | Zenith | 8712934 |
| 6496 | 36900.37000.37400.38400.39400.41200.42200.105100.1634200 | Living dinning flooring | 13d | 2026-08-22 | 2026-09-04 | 6480, 6494 |  | Zenith | 8712944 |
| 6497 | 36900.37000.37400.38400.39400.41200.42200.105100.1634300 | Putty primer coat | 12d | 2026-09-04 | 2026-09-16 | 6481, 6496 |  | Zenith | 8712954 |
| 6498 | 36900.37000.37400.38400.39400.41200.42200.105100.1634400 | Aluminium door-window fixing | 15d | 2026-09-10 | 2026-09-25 | 6482, 6492, 6496 |  | Zenith | 8712964 |
| 6499 | 36900.37000.37400.38400.39400.41200.42200.105100.1634500 | Door shutter fixing (Pre Hung) | 8d | 2026-09-16 | 2026-09-24 | 6483, 6497 |  | Zenith | 8712974 |
| 6500 | 36900.37000.37400.38400.39400.41200.42200.105100.1634600 | Electrical wiring work | 12d | 2026-09-24 | 2026-10-06 | 6484, 6499 |  | Zenith | 8712984 |
| 6501 | 36900.37000.37400.38400.39400.41200.42200.105100.1634700 | Painting 1st coat | 15d | 2026-10-12 | 2026-10-27 | 6485, 6500 |  | Zenith | 8712994 |
| 6502 | 36900.37000.37400.38400.39400.41200.42200.105200 | **10th floor roof** | 151d | 2026-06-13 | 2026-12-26 |  | start no earlier than 2026-06-13 | Zenith | 8650704 |
| 6503 | 36900.37000.37400.38400.39400.41200.42200.105200.1634800 | Block Work | 10d | 2026-06-13 | 2026-06-23 | 6329, 6487 |  | Zenith | 8713004 |
| 6504 | 36900.37000.37400.38400.39400.41200.42200.105200.1634900 | Fire sprinkler pipe fixing | 6d | 2026-06-23 | 2026-06-29 | 6488, 6503 |  | Zenith | 8713014 |
| 6505 | 36900.37000.37400.38400.39400.41200.42200.105200.1635000 | Internal Plumbing Works | 10d | 2026-06-23 | 2026-07-03 | 6489, 6503 |  | Zenith | 8713024 |
| 6506 | 36900.37000.37400.38400.39400.41200.42200.105200.1635100 | Waterproofing | 14d | 2026-07-31 | 2026-08-14 | 6490, 6505 |  | Zenith | 8713034 |
| 6507 | 36900.37000.37400.38400.39400.41200.42200.105200.1635200 | Internal Plaster | 14d | 2026-08-05 | 2026-08-19 | 6491, 6505, 6506FF+5d |  | Zenith | 8713044 |
| 6508 | 36900.37000.37400.38400.39400.41200.42200.105200.1635300 | IPS flooring work | 10d | 2026-08-19 | 2026-08-29 | 6492, 6507 |  | Zenith | 8713054 |
| 6509 | 36900.37000.37400.38400.39400.41200.42200.105200.1635400 | Toilet dado work | 10d | 2026-08-19 | 2026-08-29 | 6493, 6506, 6507 |  | Zenith | 8713064 |
| 6510 | 36900.37000.37400.38400.39400.41200.42200.105200.1635500 | Toilet flooring work | 7d | 2026-08-29 | 2026-09-05 | 6494, 6509 |  | Zenith | 8713074 |
| 6511 | 36900.37000.37400.38400.39400.41200.42200.105200.1635600 | False Cieling panel fixing | 10d | 2026-09-05 | 2026-09-15 | 6495, 6510 |  | Zenith | 8713084 |
| 6512 | 36900.37000.37400.38400.39400.41200.42200.105200.1635700 | Living dinning flooring | 13d | 2026-09-05 | 2026-09-18 | 6496, 6510 |  | Zenith | 8713094 |
| 6513 | 36900.37000.37400.38400.39400.41200.42200.105200.1635800 | Putty primer coat | 12d | 2026-09-18 | 2026-09-30 | 6497, 6512 |  | Zenith | 8713104 |
| 6514 | 36900.37000.37400.38400.39400.41200.42200.105200.1635900 | Aluminium door-window fixing | 15d | 2026-09-25 | 2026-10-10 | 6498, 6508, 6512 |  | Zenith | 8713114 |
| 6515 | 36900.37000.37400.38400.39400.41200.42200.105200.1636000 | Door shutter fixing (Pre Hung) | 8d | 2026-09-30 | 2026-10-08 | 6499, 6513 |  | Zenith | 8713124 |
| 6516 | 36900.37000.37400.38400.39400.41200.42200.105200.1636100 | Electrical wiring work | 12d | 2026-10-08 | 2026-10-20 | 6500, 6515 |  | Zenith | 8713134 |
| 6517 | 36900.37000.37400.38400.39400.41200.42200.105200.1636200 | Painting 1st coat | 15d | 2026-10-27 | 2026-12-26 | 6501, 6516 |  | Zenith | 8713144 |

| ID | WBS | Task | Duration | Start | Finish | Predecessors | Constraint | Calendar | Unique_Task_ID |
| --- | --- | --- | --- | --- | --- | --- | --- | --- | --- |
| 6518 | 36900.37000.37400.38400.39400.41200.42200.105300 | **11th floor roof** | 156d | 2026-06-23 | 2027-01-10 |  | start no earlier than 2026-06-23 | Zenith | 8650714 |
| 6519 | 36900.37000.37400.38400.39400.41200.42200.105300.1636300 | Block Work | 10d | 2026-06-23 | 2026-07-03 | 6330, 6503 |  | Zenith | 8713154 |
| 6520 | 36900.37000.37400.38400.39400.41200.42200.105300.1636400 | Fire sprinkler pipe fixing | 6d | 2026-07-03 | 2026-07-09 | 6504, 6519 |  | Zenith | 8713164 |
| 6521 | 36900.37000.37400.38400.39400.41200.42200.105300.1636500 | Internal Plumbing Works | 10d | 2026-07-03 | 2026-07-13 | 6505, 6519 |  | Zenith | 8713174 |
| 6522 | 36900.37000.37400.38400.39400.41200.42200.105300.1636600 | Waterproofing | 14d | 2026-08-14 | 2026-08-28 | 6506, 6521 |  | Zenith | 8713184 |
| 6523 | 36900.37000.37400.38400.39400.41200.42200.105300.1636700 | Internal Plaster | 14d | 2026-08-19 | 2026-09-02 | 6507, 6521, 6522FF+5d |  | Zenith | 8713194 |
| 6524 | 36900.37000.37400.38400.39400.41200.42200.105300.1636800 | IPS flooring work | 10d | 2026-09-02 | 2026-09-12 | 6508, 6523 |  | Zenith | 8713204 |
| 6525 | 36900.37000.37400.38400.39400.41200.42200.105300.1636900 | Toilet dado work | 10d | 2026-09-02 | 2026-09-12 | 6509, 6522, 6523 |  | Zenith | 8713214 |
| 6526 | 36900.37000.37400.38400.39400.41200.42200.105300.1637000 | Toilet flooring work | 7d | 2026-09-12 | 2026-09-19 | 6510, 6525 |  | Zenith | 8713224 |
| 6527 | 36900.37000.37400.38400.39400.41200.42200.105300.1637100 | False Cieling panel fixing | 10d | 2026-09-19 | 2026-09-29 | 6511, 6526 |  | Zenith | 8713234 |
| 6528 | 36900.37000.37400.38400.39400.41200.42200.105300.1637200 | Living dinning flooring | 13d | 2026-09-19 | 2026-10-02 | 6512, 6526 |  | Zenith | 8713244 |
| 6529 | 36900.37000.37400.38400.39400.41200.42200.105300.1637300 | Putty primer coat | 12d | 2026-10-02 | 2026-10-14 | 6513, 6528 |  | Zenith | 8713254 |
| 6530 | 36900.37000.37400.38400.39400.41200.42200.105300.1637400 | Aluminium door-window fixing | 15d | 2026-10-10 | 2026-10-25 | 6514, 6524, 6528 |  | Zenith | 8713264 |
| 6531 | 36900.37000.37400.38400.39400.41200.42200.105300.1637500 | Door shutter fixing (Pre Hung) | 8d | 2026-10-14 | 2026-10-22 | 6515, 6529 |  | Zenith | 8713274 |
| 6532 | 36900.37000.37400.38400.39400.41200.42200.105300.1637600 | Electrical wiring work | 12d | 2026-10-22 | 2026-12-18 | 6516, 6531 |  | Zenith | 8713284 |
| 6533 | 36900.37000.37400.38400.39400.41200.42200.105300.1637700 | Painting 1st coat | 15d | 2026-12-26 | 2027-01-10 | 6517, 6532 |  | Zenith | 8713294 |
| 6534 | 36900.37000.37400.38400.39400.41200.42200.105400 | **12th floor roof** | 161d | 2026-07-03 | 2027-01-25 |  | start no earlier than 2026-07-03 | Zenith | 8650724 |
| 6535 | 36900.37000.37400.38400.39400.41200.42200.105400.1637800 | Block Work | 10d | 2026-07-03 | 2026-07-13 | 6331, 6519 |  | Zenith | 8713304 |
| 6536 | 36900.37000.37400.38400.39400.41200.42200.105400.1637900 | Fire sprinkler pipe fixing | 6d | 2026-07-13 | 2026-07-19 | 6520, 6535 |  | Zenith | 8713314 |
| 6537 | 36900.37000.37400.38400.39400.41200.42200.105400.1638000 | Internal Plumbing Works | 10d | 2026-07-13 | 2026-07-23 | 6521, 6535 |  | Zenith | 8713324 |
| 6538 | 36900.37000.37400.38400.39400.41200.42200.105400.1638100 | Waterproofing | 14d | 2026-08-28 | 2026-09-11 | 6522, 6537 |  | Zenith | 8713334 |
| 6539 | 36900.37000.37400.38400.39400.41200.42200.105400.1638200 | Internal Plaster | 14d | 2026-09-02 | 2026-09-16 | 6523, 6537, 6538FF+5d |  | Zenith | 8713344 |
| 6540 | 36900.37000.37400.38400.39400.41200.42200.105400.1638300 | IPS flooring work | 10d | 2026-09-16 | 2026-09-26 | 6524, 6539 |  | Zenith | 8713354 |
| 6541 | 36900.37000.37400.38400.39400.41200.42200.105400.1638400 | Toilet dado work | 10d | 2026-09-16 | 2026-09-26 | 6525, 6538, 6539 |  | Zenith | 8713364 |
| 6542 | 36900.37000.37400.38400.39400.41200.42200.105400.1638500 | Toilet flooring work | 7d | 2026-09-26 | 2026-10-03 | 6526, 6541 |  | Zenith | 8713374 |
| 6543 | 36900.37000.37400.38400.39400.41200.42200.105400.1638600 | False Cieling panel fixing | 10d | 2026-10-03 | 2026-10-13 | 6527, 6542 |  | Zenith | 8713384 |
| 6544 | 36900.37000.37400.38400.39400.41200.42200.105400.1638700 | Living dinning flooring | 13d | 2026-10-03 | 2026-10-16 | 6528, 6542 |  | Zenith | 8713394 |
| 6545 | 36900.37000.37400.38400.39400.41200.42200.105400.1638800 | Putty primer coat | 12d | 2026-10-16 | 2026-10-28 | 6529, 6544 |  | Zenith | 8713404 |
| 6546 | 36900.37000.37400.38400.39400.41200.42200.105400.1638900 | Aluminium door-window fixing | 15d | 2026-10-25 | 2026-12-24 | 6530, 6540, 6544 |  | Zenith | 8713414 |
| 6547 | 36900.37000.37400.38400.39400.41200.42200.105400.1639000 | Door shutter fixing (Pre Hung) | 8d | 2026-10-28 | 2026-12-20 | 6531, 6545 |  | Zenith | 8713424 |
| 6548 | 36900.37000.37400.38400.39400.41200.42200.105400.1639100 | Electrical wiring work | 12d | 2026-12-20 | 2027-01-01 | 6532, 6547 |  | Zenith | 8713434 |
| 6549 | 36900.37000.37400.38400.39400.41200.42200.105400.1639200 | Painting 1st coat | 15d | 2027-01-10 | 2027-01-25 | 6533, 6548 |  | Zenith | 8713444 |

| ID | WBS | Task | Duration | Start | Finish | Predecessors | Constraint | Calendar | Unique_Task_ID |
| --- | --- | --- | --- | --- | --- | --- | --- | --- | --- |
| 6550 | 36900.37000.37400.38400.39400.41200.42200.105500 | **13th floor roof** | 166d | 2026-07-13 | 2027-02-09 |  | start no earlier than 2026-07-13 | Zenith | 8650734 |
| 6551 | 36900.37000.37400.38400.39400.41200.42200.105500.1639300 | Block Work | 10d | 2026-07-13 | 2026-07-23 | 6332, 6535 |  | Zenith | 8713454 |
| 6552 | 36900.37000.37400.38400.39400.41200.42200.105500.1639400 | Fire sprinkler pipe fixing | 6d | 2026-07-23 | 2026-07-29 | 6536, 6551 |  | Zenith | 8713464 |
| 6553 | 36900.37000.37400.38400.39400.41200.42200.105500.1639500 | Internal Plumbing Works | 10d | 2026-07-23 | 2026-08-02 | 6537, 6551 |  | Zenith | 8713474 |
| 6554 | 36900.37000.37400.38400.39400.41200.42200.105500.1639600 | Waterproofing | 14d | 2026-09-11 | 2026-09-25 | 6538, 6553 |  | Zenith | 8713484 |
| 6555 | 36900.37000.37400.38400.39400.41200.42200.105500.1639700 | Internal Plaster | 14d | 2026-09-16 | 2026-09-30 | 6539, 6553, 6554FF+5d |  | Zenith | 8713494 |
| 6556 | 36900.37000.37400.38400.39400.41200.42200.105500.1639800 | IPS flooring work | 10d | 2026-09-30 | 2026-10-10 | 6540, 6555 |  | Zenith | 8713504 |
| 6557 | 36900.37000.37400.38400.39400.41200.42200.105500.1639900 | Toilet dado work | 10d | 2026-09-30 | 2026-10-10 | 6541, 6554, 6555 |  | Zenith | 8713514 |
| 6558 | 36900.37000.37400.38400.39400.41200.42200.105500.1640000 | Toilet flooring work | 7d | 2026-10-10 | 2026-10-17 | 6542, 6557 |  | Zenith | 8713524 |
| 6559 | 36900.37000.37400.38400.39400.41200.42200.105500.1640100 | False Cieling panel fixing | 10d | 2026-10-17 | 2026-10-27 | 6543, 6558 |  | Zenith | 8713534 |
| 6560 | 36900.37000.37400.38400.39400.41200.42200.105500.1640200 | Living dinning flooring | 13d | 2026-10-17 | 2026-10-30 | 6544, 6558 |  | Zenith | 8713544 |
| 6561 | 36900.37000.37400.38400.39400.41200.42200.105500.1640300 | Putty primer coat | 12d | 2026-10-30 | 2026-12-26 | 6545, 6560 |  | Zenith | 8713554 |
| 6562 | 36900.37000.37400.38400.39400.41200.42200.105500.1640400 | Aluminium door-window fixing | 15d | 2026-12-24 | 2027-01-08 | 6546, 6556, 6560 |  | Zenith | 8713564 |
| 6563 | 36900.37000.37400.38400.39400.41200.42200.105500.1640500 | Door shutter fixing (Pre Hung) | 8d | 2026-12-26 | 2027-01-03 | 6547, 6561 |  | Zenith | 8713574 |
| 6564 | 36900.37000.37400.38400.39400.41200.42200.105500.1640600 | Electrical wiring work | 12d | 2027-01-03 | 2027-01-15 | 6548, 6563 |  | Zenith | 8713584 |
| 6565 | 36900.37000.37400.38400.39400.41200.42200.105500.1640700 | Painting 1st coat | 15d | 2027-01-25 | 2027-02-09 | 6549, 6564 |  | Zenith | 8713594 |
| 6566 | 36900.37000.37400.38400.39400.41200.42200.105600 | **14th floor roof** | 171d | 2026-07-23 | 2027-02-24 |  | start no earlier than 2026-07-23 | Zenith | 8650744 |
| 6567 | 36900.37000.37400.38400.39400.41200.42200.105600.1640800 | Block Work | 10d | 2026-07-23 | 2026-08-02 | 6333, 6551 |  | Zenith | 8713604 |
| 6568 | 36900.37000.37400.38400.39400.41200.42200.105600.1640900 | Fire sprinkler pipe fixing | 6d | 2026-08-02 | 2026-08-08 | 6552, 6567 |  | Zenith | 8713614 |
| 6569 | 36900.37000.37400.38400.39400.41200.42200.105600.1641000 | Internal Plumbing Works | 10d | 2026-08-02 | 2026-08-12 | 6553, 6567 |  | Zenith | 8713624 |
| 6570 | 36900.37000.37400.38400.39400.41200.42200.105600.1641100 | Waterproofing | 14d | 2026-09-25 | 2026-10-09 | 6554, 6569 |  | Zenith | 8713634 |
| 6571 | 36900.37000.37400.38400.39400.41200.42200.105600.1641200 | Internal Plaster | 14d | 2026-09-30 | 2026-10-14 | 6555, 6569, 6570FF+5d |  | Zenith | 8713644 |
| 6572 | 36900.37000.37400.38400.39400.41200.42200.105600.1641300 | IPS flooring work | 10d | 2026-10-14 | 2026-10-24 | 6556, 6571 |  | Zenith | 8713654 |
| 6573 | 36900.37000.37400.38400.39400.41200.42200.105600.1641400 | Toilet dado work | 10d | 2026-10-14 | 2026-10-24 | 6557, 6570, 6571 |  | Zenith | 8713664 |
| 6574 | 36900.37000.37400.38400.39400.41200.42200.105600.1641500 | Toilet flooring work | 7d | 2026-10-24 | 2026-10-31 | 6558, 6573 |  | Zenith | 8713674 |
| 6575 | 36900.37000.37400.38400.39400.41200.42200.105600.1641600 | False Cieling panel fixing | 10d | 2026-10-31 | 2026-12-25 | 6559, 6574 |  | Zenith | 8713684 |
| 6576 | 36900.37000.37400.38400.39400.41200.42200.105600.1641700 | Living dinning flooring | 13d | 2026-10-31 | 2026-12-28 | 6560, 6574 |  | Zenith | 8713694 |
| 6577 | 36900.37000.37400.38400.39400.41200.42200.105600.1641800 | Putty primer coat | 12d | 2026-12-28 | 2027-01-09 | 6561, 6576 |  | Zenith | 8713704 |
| 6578 | 36900.37000.37400.38400.39400.41200.42200.105600.1641900 | Aluminium door-window fixing | 15d | 2027-01-08 | 2027-01-23 | 6562, 6572, 6576 |  | Zenith | 8713714 |
| 6579 | 36900.37000.37400.38400.39400.41200.42200.105600.1642000 | Door shutter fixing (Pre Hung) | 8d | 2027-01-09 | 2027-01-17 | 6563, 6577 |  | Zenith | 8713724 |
| 6580 | 36900.37000.37400.38400.39400.41200.42200.105600.1642100 | Electrical wiring work | 12d | 2027-01-17 | 2027-01-29 | 6564, 6579 |  | Zenith | 8713734 |
| 6581 | 36900.37000.37400.38400.39400.41200.42200.105600.1642200 | Painting 1st coat | 15d | 2027-02-09 | 2027-02-24 | 6565, 6580 |  | Zenith | 8713744 |

| ID | WBS | Task | Duration | Start | Finish | Predecessors | Constraint | Calendar | Unique_Task_ID |
| --- | --- | --- | --- | --- | --- | --- | --- | --- | --- |
| 6582 | 36900.37000.37400.38400.39400.41200.42200.105700 | **15th floor roof** | 176d | 2026-08-02 | 2027-03-11 |  | start no earlier than 2026-08-02 | Zenith | 8650754 |
| 6583 | 36900.37000.37400.38400.39400.41200.42200.105700.1642300 | Block Work | 10d | 2026-08-02 | 2026-08-12 | 6334, 6567 |  | Zenith | 8713754 |
| 6584 | 36900.37000.37400.38400.39400.41200.42200.105700.1642400 | Fire sprinkler pipe fixing | 6d | 2026-08-12 | 2026-08-18 | 6568, 6583 |  | Zenith | 8713764 |
| 6585 | 36900.37000.37400.38400.39400.41200.42200.105700.1642500 | Internal Plumbing Works | 10d | 2026-08-12 | 2026-08-22 | 6569, 6583 |  | Zenith | 8713774 |
| 6586 | 36900.37000.37400.38400.39400.41200.42200.105700.1642600 | Waterproofing | 14d | 2026-10-09 | 2026-10-23 | 6570, 6585 |  | Zenith | 8713784 |
| 6587 | 36900.37000.37400.38400.39400.41200.42200.105700.1642700 | Internal Plaster | 14d | 2026-10-14 | 2026-10-28 | 6571, 6585, 6586FF+5d |  | Zenith | 8713794 |
| 6588 | 36900.37000.37400.38400.39400.41200.42200.105700.1642800 | IPS flooring work | 10d | 2026-10-28 | 2026-12-22 | 6572, 6587 |  | Zenith | 8713804 |
| 6589 | 36900.37000.37400.38400.39400.41200.42200.105700.1642900 | Toilet dado work | 10d | 2026-10-28 | 2026-12-22 | 6573, 6586, 6587 |  | Zenith | 8713814 |
| 6590 | 36900.37000.37400.38400.39400.41200.42200.105700.1643000 | Toilet flooring work | 7d | 2026-12-22 | 2026-12-29 | 6574, 6589 |  | Zenith | 8713824 |
| 6591 | 36900.37000.37400.38400.39400.41200.42200.105700.1643100 | False Cieling panel fixing | 10d | 2026-12-29 | 2027-01-08 | 6575, 6590 |  | Zenith | 8713834 |
| 6592 | 36900.37000.37400.38400.39400.41200.42200.105700.1643200 | Living dinning flooring | 13d | 2026-12-29 | 2027-01-11 | 6576, 6590 |  | Zenith | 8713844 |
| 6593 | 36900.37000.37400.38400.39400.41200.42200.105700.1643300 | Aluminium door-window fixing | 12d | 2027-01-23 | 2027-02-04 | 6578, 6588, 6592 |  | Zenith | 8713854 |
| 6594 | 36900.37000.37400.38400.39400.41200.42200.105700.1643400 | Putty primer coat | 15d | 2027-01-11 | 2027-01-26 | 6577, 6592 |  | Zenith | 8713864 |
| 6595 | 36900.37000.37400.38400.39400.41200.42200.105700.1643500 | Door shutter fixing (Pre Hung) | 8d | 2027-01-26 | 2027-02-03 | 6579, 6594 |  | Zenith | 8713874 |
| 6596 | 36900.37000.37400.38400.39400.41200.42200.105700.1643600 | Electrical wiring work | 12d | 2027-02-03 | 2027-02-15 | 6580, 6595 |  | Zenith | 8713884 |
| 6597 | 36900.37000.37400.38400.39400.41200.42200.105700.1643700 | Painting 1st coat | 15d | 2027-02-24 | 2027-03-11 | 6581, 6596 |  | Zenith | 8713894 |
| 6598 | 36900.37000.37400.38400.39400.41200.42200.105800 | **16th floor roof** | 181d | 2026-08-12 | 2027-03-26 |  | start no earlier than 2026-08-12 | Zenith | 8650764 |
| 6599 | 36900.37000.37400.38400.39400.41200.42200.105800.1643800 | Block Work | 10d | 2026-08-12 | 2026-08-22 | 6335, 6583 |  | Zenith | 8713904 |
| 6600 | 36900.37000.37400.38400.39400.41200.42200.105800.1643900 | Fire sprinkler pipe fixing | 6d | 2026-08-22 | 2026-08-28 | 6584, 6599 |  | Zenith | 8713914 |
| 6601 | 36900.37000.37400.38400.39400.41200.42200.105800.1644000 | Internal Plumbing Works | 10d | 2026-08-22 | 2026-09-01 | 6585, 6599 |  | Zenith | 8713924 |
| 6602 | 36900.37000.37400.38400.39400.41200.42200.105800.1644100 | Waterproofing | 14d | 2026-10-23 | 2026-12-21 | 6586, 6601 |  | Zenith | 8713934 |
| 6603 | 36900.37000.37400.38400.39400.41200.42200.105800.1644200 | Internal Plaster | 14d | 2026-10-28 | 2026-12-26 | 6587, 6601, 6602FF+5d |  | Zenith | 8713944 |
| 6604 | 36900.37000.37400.38400.39400.41200.42200.105800.1644300 | IPS flooring work | 10d | 2026-12-26 | 2027-01-05 | 6588, 6603 |  | Zenith | 8713954 |
| 6605 | 36900.37000.37400.38400.39400.41200.42200.105800.1644400 | Toilet dado work | 10d | 2026-12-26 | 2027-01-05 | 6589, 6602, 6603 |  | Zenith | 8713964 |
| 6606 | 36900.37000.37400.38400.39400.41200.42200.105800.1644500 | Toilet flooring work | 7d | 2027-01-05 | 2027-01-12 | 6590, 6605 |  | Zenith | 8713974 |
| 6607 | 36900.37000.37400.38400.39400.41200.42200.105800.1644600 | False Cieling panel fixing | 10d | 2027-01-12 | 2027-01-22 | 6591, 6606 |  | Zenith | 8713984 |
| 6608 | 36900.37000.37400.38400.39400.41200.42200.105800.1644700 | Living dinning flooring | 13d | 2027-01-12 | 2027-01-25 | 6592, 6606 |  | Zenith | 8713994 |
| 6609 | 36900.37000.37400.38400.39400.41200.42200.105800.1644800 | Putty primer coat | 12d | 2027-01-26 | 2027-02-07 | 6594, 6608 |  | Zenith | 8714004 |
| 6610 | 36900.37000.37400.38400.39400.41200.42200.105800.1644900 | Aluminium door-window fixing | 15d | 2027-02-04 | 2027-02-19 | 6593, 6604, 6608 |  | Zenith | 8714014 |
| 6611 | 36900.37000.37400.38400.39400.41200.42200.105800.1645000 | Door shutter fixing (Pre Hung) | 8d | 2027-02-07 | 2027-02-15 | 6595, 6609 |  | Zenith | 8714024 |
| 6612 | 36900.37000.37400.38400.39400.41200.42200.105800.1645100 | Electrical wiring work | 12d | 2027-02-15 | 2027-02-27 | 6596, 6611 |  | Zenith | 8714034 |
| 6613 | 36900.37000.37400.38400.39400.41200.42200.105800.1645200 | Painting 1st coat | 15d | 2027-03-11 | 2027-03-26 | 6597, 6612 |  | Zenith | 8714044 |

| ID | WBS | Task | Duration | Start | Finish | Predecessors | Constraint | Calendar | Unique_Task_ID |
| --- | --- | --- | --- | --- | --- | --- | --- | --- | --- |
| 6614 | 36900.37000.37400.38400.39400.41200.42200.105900 | **17th floor roof** | 186d | 2026-08-22 | 2027-04-10 |  | start no earlier than 2026-08-22 | Zenith | 8650774 |
| 6615 | 36900.37000.37400.38400.39400.41200.42200.105900.1645300 | Block Work | 10d | 2026-08-22 | 2026-09-01 | 6336, 6599 |  | Zenith | 8714054 |
| 6616 | 36900.37000.37400.38400.39400.41200.42200.105900.1645400 | Fire sprinkler pipe fixing | 6d | 2026-09-01 | 2026-09-07 | 6600, 6615 |  | Zenith | 8714064 |
| 6617 | 36900.37000.37400.38400.39400.41200.42200.105900.1645500 | Internal Plumbing Works | 10d | 2026-09-01 | 2026-09-11 | 6601, 6615 |  | Zenith | 8714074 |
| 6618 | 36900.37000.37400.38400.39400.41200.42200.105900.1645600 | Waterproofing | 14d | 2026-12-21 | 2027-01-04 | 6602, 6617 |  | Zenith | 8714084 |
| 6619 | 36900.37000.37400.38400.39400.41200.42200.105900.1645700 | Internal Plaster | 14d | 2026-12-26 | 2027-01-09 | 6603, 6617, 6618FF+5d |  | Zenith | 8714094 |
| 6620 | 36900.37000.37400.38400.39400.41200.42200.105900.1645800 | IPS flooring work | 10d | 2027-01-09 | 2027-01-19 | 6604, 6619 |  | Zenith | 8714104 |
| 6621 | 36900.37000.37400.38400.39400.41200.42200.105900.1645900 | Toilet dado work | 10d | 2027-01-09 | 2027-01-19 | 6605, 6618, 6619 |  | Zenith | 8714114 |
| 6622 | 36900.37000.37400.38400.39400.41200.42200.105900.1646000 | Toilet flooring work | 7d | 2027-01-19 | 2027-01-26 | 6606, 6621 |  | Zenith | 8714124 |
| 6623 | 36900.37000.37400.38400.39400.41200.42200.105900.1646100 | False Cieling panel fixing | 10d | 2027-01-26 | 2027-02-05 | 6607, 6622 |  | Zenith | 8714134 |
| 6624 | 36900.37000.37400.38400.39400.41200.42200.105900.1646200 | Living dinning flooring | 13d | 2027-01-26 | 2027-02-08 | 6608, 6622 |  | Zenith | 8714144 |
| 6625 | 36900.37000.37400.38400.39400.41200.42200.105900.1646300 | Putty primer coat | 12d | 2027-02-08 | 2027-02-20 | 6609, 6624 |  | Zenith | 8714154 |
| 6626 | 36900.37000.37400.38400.39400.41200.42200.105900.1646400 | Aluminium door-window fixing | 15d | 2027-02-19 | 2027-03-06 | 6610, 6620, 6624 |  | Zenith | 8714164 |
| 6627 | 36900.37000.37400.38400.39400.41200.42200.105900.1646500 | Door shutter fixing (Pre Hung) | 8d | 2027-02-20 | 2027-02-28 | 6611, 6625 |  | Zenith | 8714174 |
| 6628 | 36900.37000.37400.38400.39400.41200.42200.105900.1646600 | Electrical wiring work | 12d | 2027-02-28 | 2027-03-12 | 6612, 6627 |  | Zenith | 8714184 |
| 6629 | 36900.37000.37400.38400.39400.41200.42200.105900.1646700 | Painting 1st coat | 15d | 2027-03-26 | 2027-04-10 | 6613, 6628 |  | Zenith | 8714194 |
| 6630 | 36900.37000.37400.38400.39400.41200.42200.106000 | **18th floor roof** | 191d | 2026-09-01 | 2027-04-25 |  | start no earlier than 2026-09-01 | Zenith | 8650784 |
| 6631 | 36900.37000.37400.38400.39400.41200.42200.106000.1646800 | Block Work | 10d | 2026-09-01 | 2026-09-11 | 6337, 6615 |  | Zenith | 8714204 |
| 6632 | 36900.37000.37400.38400.39400.41200.42200.106000.1646900 | Fire sprinkler pipe fixing | 6d | 2026-09-11 | 2026-09-17 | 6616, 6631 |  | Zenith | 8714214 |
| 6633 | 36900.37000.37400.38400.39400.41200.42200.106000.1647000 | Internal Plumbing Works | 10d | 2026-09-11 | 2026-09-21 | 6617, 6631 |  | Zenith | 8714224 |
| 6634 | 36900.37000.37400.38400.39400.41200.42200.106000.1647100 | Waterproofing | 14d | 2027-01-04 | 2027-01-18 | 6618, 6633 |  | Zenith | 8714234 |
| 6635 | 36900.37000.37400.38400.39400.41200.42200.106000.1647200 | Internal Plaster | 14d | 2027-01-09 | 2027-01-23 | 6619, 6633, 6634FF+5d |  | Zenith | 8714244 |
| 6636 | 36900.37000.37400.38400.39400.41200.42200.106000.1647300 | IPS flooring work | 10d | 2027-01-23 | 2027-02-02 | 6620, 6635 |  | Zenith | 8714254 |
| 6637 | 36900.37000.37400.38400.39400.41200.42200.106000.1647400 | Toilet dado work | 10d | 2027-01-23 | 2027-02-02 | 6621, 6634, 6635 |  | Zenith | 8714264 |
| 6638 | 36900.37000.37400.38400.39400.41200.42200.106000.1647500 | Toilet flooring work | 7d | 2027-02-02 | 2027-02-09 | 6622, 6637 |  | Zenith | 8714274 |
| 6639 | 36900.37000.37400.38400.39400.41200.42200.106000.1647600 | False Cieling panel fixing | 10d | 2027-02-09 | 2027-02-19 | 6623, 6638 |  | Zenith | 8714284 |
| 6640 | 36900.37000.37400.38400.39400.41200.42200.106000.1647700 | Living dinning flooring | 13d | 2027-02-09 | 2027-02-22 | 6624, 6638 |  | Zenith | 8714294 |
| 6641 | 36900.37000.37400.38400.39400.41200.42200.106000.1647800 | Putty primer coat | 12d | 2027-02-22 | 2027-03-06 | 6625, 6640 |  | Zenith | 8714304 |
| 6642 | 36900.37000.37400.38400.39400.41200.42200.106000.1647900 | Aluminium door-window fixing | 15d | 2027-03-06 | 2027-03-21 | 6626, 6636, 6640 |  | Zenith | 8714314 |
| 6643 | 36900.37000.37400.38400.39400.41200.42200.106000.1648000 | Door shutter fixing (Pre Hung) | 8d | 2027-03-06 | 2027-03-14 | 6627, 6641 |  | Zenith | 8714324 |
| 6644 | 36900.37000.37400.38400.39400.41200.42200.106000.1648100 | Electrical wiring work | 12d | 2027-03-14 | 2027-03-26 | 6628, 6643 |  | Zenith | 8714334 |
| 6645 | 36900.37000.37400.38400.39400.41200.42200.106000.1648200 | Painting 1st coat | 15d | 2027-04-10 | 2027-04-25 | 6629, 6644 |  | Zenith | 8714344 |

| ID | WBS | Task | Duration | Start | Finish | Predecessors | Constraint | Calendar | Unique_Task_ID |
| --- | --- | --- | --- | --- | --- | --- | --- | --- | --- |
| 6646 | 36900.37000.37400.38400.39400.41200.42200.106100 | **19th floor roof** | 196d | 2026-09-11 | 2027-05-10 |  | start no earlier than 2026-09-11 | Zenith | 8650794 |
| 6647 | 36900.37000.37400.38400.39400.41200.42200.106100.1648300 | Block Work | 10d | 2026-09-11 | 2026-09-21 | 6338, 6631 |  | Zenith | 8714354 |
| 6648 | 36900.37000.37400.38400.39400.41200.42200.106100.1648400 | Fire sprinkler pipe fixing | 6d | 2026-09-21 | 2026-09-27 | 6632, 6647 |  | Zenith | 8714364 |
| 6649 | 36900.37000.37400.38400.39400.41200.42200.106100.1648500 | Internal Plumbing Works | 10d | 2026-09-21 | 2026-10-01 | 6633, 6647 |  | Zenith | 8714374 |
| 6650 | 36900.37000.37400.38400.39400.41200.42200.106100.1648600 | Waterproofing | 14d | 2027-01-18 | 2027-02-01 | 6634, 6649 |  | Zenith | 8714384 |
| 6651 | 36900.37000.37400.38400.39400.41200.42200.106100.1648700 | Internal Plaster | 14d | 2027-01-23 | 2027-02-06 | 6635, 6649, 6650FF+5d |  | Zenith | 8714394 |
| 6652 | 36900.37000.37400.38400.39400.41200.42200.106100.1648800 | IPS flooring work | 10d | 2027-02-06 | 2027-02-16 | 6636, 6651 |  | Zenith | 8714404 |
| 6653 | 36900.37000.37400.38400.39400.41200.42200.106100.1648900 | Toilet dado work | 10d | 2027-02-06 | 2027-02-16 | 6637, 6650, 6651 |  | Zenith | 8714414 |
| 6654 | 36900.37000.37400.38400.39400.41200.42200.106100.1649000 | Toilet flooring work | 7d | 2027-02-16 | 2027-02-23 | 6638, 6653 |  | Zenith | 8714424 |
| 6655 | 36900.37000.37400.38400.39400.41200.42200.106100.1649100 | False Cieling panel fixing | 10d | 2027-02-23 | 2027-03-05 | 6639, 6654 |  | Zenith | 8714434 |
| 6656 | 36900.37000.37400.38400.39400.41200.42200.106100.1649200 | Living dinning flooring | 13d | 2027-02-23 | 2027-03-08 | 6640, 6654 |  | Zenith | 8714444 |
| 6657 | 36900.37000.37400.38400.39400.41200.42200.106100.1649300 | Putty primer coat | 12d | 2027-03-08 | 2027-03-20 | 6641, 6656 |  | Zenith | 8714454 |
| 6658 | 36900.37000.37400.38400.39400.41200.42200.106100.1649400 | Aluminium door-window fixing | 15d | 2027-03-21 | 2027-04-05 | 6642, 6652, 6656 |  | Zenith | 8714464 |
| 6659 | 36900.37000.37400.38400.39400.41200.42200.106100.1649500 | Door shutter fixing (Pre Hung) | 8d | 2027-03-20 | 2027-03-28 | 6643, 6657 |  | Zenith | 8714474 |
| 6660 | 36900.37000.37400.38400.39400.41200.42200.106100.1649600 | Electrical wiring work | 12d | 2027-03-28 | 2027-04-09 | 6644, 6659 |  | Zenith | 8714484 |
| 6661 | 36900.37000.37400.38400.39400.41200.42200.106100.1649700 | Painting 1st coat | 15d | 2027-04-25 | 2027-05-10 | 6645, 6660 |  | Zenith | 8714494 |
| 6662 | 36900.37000.37400.38400.39400.41200.42200.106200 | **20th floor roof** | 201d | 2026-09-21 | 2027-05-25 |  | start no earlier than 2026-09-21 | Zenith | 8650804 |
| 6663 | 36900.37000.37400.38400.39400.41200.42200.106200.1649800 | Block Work | 10d | 2026-09-21 | 2026-10-01 | 6339, 6647 |  | Zenith | 8714504 |
| 6664 | 36900.37000.37400.38400.39400.41200.42200.106200.1649900 | Fire sprinkler pipe fixing | 6d | 2026-10-01 | 2026-10-07 | 6648, 6663 |  | Zenith | 8714514 |
| 6665 | 36900.37000.37400.38400.39400.41200.42200.106200.1650000 | Internal Plumbing Works | 10d | 2026-10-01 | 2026-10-11 | 6649, 6663 |  | Zenith | 8714524 |
| 6666 | 36900.37000.37400.38400.39400.41200.42200.106200.1650100 | Waterproofing | 14d | 2027-02-01 | 2027-02-15 | 6650, 6665 |  | Zenith | 8714534 |
| 6667 | 36900.37000.37400.38400.39400.41200.42200.106200.1650200 | Internal Plaster | 14d | 2027-02-06 | 2027-02-20 | 6651, 6665, 6666FF+5d |  | Zenith | 8714544 |
| 6668 | 36900.37000.37400.38400.39400.41200.42200.106200.1650300 | IPS flooring work | 10d | 2027-02-20 | 2027-03-02 | 6652, 6667 |  | Zenith | 8714554 |
| 6669 | 36900.37000.37400.38400.39400.41200.42200.106200.1650400 | Toilet dado work | 10d | 2027-02-20 | 2027-03-02 | 6653, 6666, 6667 |  | Zenith | 8714564 |
| 6670 | 36900.37000.37400.38400.39400.41200.42200.106200.1650500 | Toilet flooring work | 7d | 2027-03-02 | 2027-03-09 | 6654, 6669 |  | Zenith | 8714574 |
| 6671 | 36900.37000.37400.38400.39400.41200.42200.106200.1650600 | False Cieling panel fixing | 10d | 2027-03-09 | 2027-03-19 | 6655, 6670 |  | Zenith | 8714584 |
| 6672 | 36900.37000.37400.38400.39400.41200.42200.106200.1650700 | Living dinning flooring | 13d | 2027-03-09 | 2027-03-22 | 6656, 6670 |  | Zenith | 8714594 |
| 6673 | 36900.37000.37400.38400.39400.41200.42200.106200.1650800 | Putty primer coat | 12d | 2027-03-22 | 2027-04-03 | 6657, 6672 |  | Zenith | 8714604 |
| 6674 | 36900.37000.37400.38400.39400.41200.42200.106200.1650900 | Aluminium door-window fixing | 15d | 2027-04-05 | 2027-04-20 | 6658, 6668, 6672 |  | Zenith | 8714614 |
| 6675 | 36900.37000.37400.38400.39400.41200.42200.106200.1651000 | Door shutter fixing (Pre Hung) | 8d | 2027-04-03 | 2027-04-11 | 6659, 6673 |  | Zenith | 8714624 |
| 6676 | 36900.37000.37400.38400.39400.41200.42200.106200.1651100 | Electrical wiring work | 12d | 2027-04-11 | 2027-04-23 | 6660, 6675 |  | Zenith | 8714634 |
| 6677 | 36900.37000.37400.38400.39400.41200.42200.106200.1651200 | Painting 1st coat | 15d | 2027-05-10 | 2027-05-25 | 6661, 6676 |  | Zenith | 8714644 |

| ID | WBS | Task | Duration | Start | Finish | Predecessors | Constraint | Calendar | Unique_Task_ID |
| --- | --- | --- | --- | --- | --- | --- | --- | --- | --- |
| 6678 | 36900.37000.37400.38400.39400.41200.42200.106300 | **21st floor roof** | 206d | 2026-10-01 | 2027-06-09 |  | start no earlier than 2026-10-01 | Zenith | 8650814 |
| 6679 | 36900.37000.37400.38400.39400.41200.42200.106300.1651300 | Block Work | 10d | 2026-10-01 | 2026-10-11 | 6340, 6663 |  | Zenith | 8714654 |
| 6680 | 36900.37000.37400.38400.39400.41200.42200.106300.1651400 | Fire sprinkler pipe fixing | 6d | 2026-10-11 | 2026-10-17 | 6664, 6679 |  | Zenith | 8714664 |
| 6681 | 36900.37000.37400.38400.39400.41200.42200.106300.1651500 | Internal Plumbing Works | 10d | 2026-10-11 | 2026-10-21 | 6665, 6679 |  | Zenith | 8714674 |
| 6682 | 36900.37000.37400.38400.39400.41200.42200.106300.1651600 | Waterproofing | 14d | 2027-02-15 | 2027-03-01 | 6666, 6681 |  | Zenith | 8714684 |
| 6683 | 36900.37000.37400.38400.39400.41200.42200.106300.1651700 | Internal Plaster | 14d | 2027-02-20 | 2027-03-06 | 6667, 6681, 6682FF+5d |  | Zenith | 8714694 |
| 6684 | 36900.37000.37400.38400.39400.41200.42200.106300.1651800 | IPS flooring work | 10d | 2027-03-06 | 2027-03-16 | 6668, 6683 |  | Zenith | 8714704 |
| 6685 | 36900.37000.37400.38400.39400.41200.42200.106300.1651900 | Toilet dado work | 10d | 2027-03-06 | 2027-03-16 | 6669, 6682, 6683 |  | Zenith | 8714714 |
| 6686 | 36900.37000.37400.38400.39400.41200.42200.106300.1652000 | Toilet flooring work | 7d | 2027-03-16 | 2027-03-23 | 6670, 6685 |  | Zenith | 8714724 |
| 6687 | 36900.37000.37400.38400.39400.41200.42200.106300.1652100 | False Cieling panel fixing | 10d | 2027-03-23 | 2027-04-02 | 6671, 6686 |  | Zenith | 8714734 |
| 6688 | 36900.37000.37400.38400.39400.41200.42200.106300.1652200 | Living dinning flooring | 13d | 2027-03-23 | 2027-04-05 | 6672, 6686 |  | Zenith | 8714744 |
| 6689 | 36900.37000.37400.38400.39400.41200.42200.106300.1652300 | Putty primer coat | 12d | 2027-04-05 | 2027-04-17 | 6673, 6688 |  | Zenith | 8714754 |
| 6690 | 36900.37000.37400.38400.39400.41200.42200.106300.1652400 | Aluminium door-window fixing | 15d | 2027-04-20 | 2027-05-05 | 6674, 6684, 6688 |  | Zenith | 8714764 |
| 6691 | 36900.37000.37400.38400.39400.41200.42200.106300.1652500 | Door shutter fixing (Pre Hung) | 8d | 2027-04-17 | 2027-04-25 | 6675, 6689 |  | Zenith | 8714774 |
| 6692 | 36900.37000.37400.38400.39400.41200.42200.106300.1652600 | Electrical wiring work | 12d | 2027-04-25 | 2027-05-07 | 6676, 6691 |  | Zenith | 8714784 |
| 6693 | 36900.37000.37400.38400.39400.41200.42200.106300.1652700 | Painting 1st coat | 15d | 2027-05-25 | 2027-06-09 | 6677, 6692 |  | Zenith | 8714794 |
| 6694 | 36900.37000.37400.38400.39400.41200.42200.106400 | **22nd floor roof** | 211d | 2026-10-11 | 2027-06-24 |  | start no earlier than 2026-10-11 | Zenith | 8650824 |
| 6695 | 36900.37000.37400.38400.39400.41200.42200.106400.1652800 | Block Work | 10d | 2026-10-11 | 2026-10-21 | 6341, 6679 |  | Zenith | 8714804 |
| 6696 | 36900.37000.37400.38400.39400.41200.42200.106400.1652900 | Fire sprinkler pipe fixing | 6d | 2026-10-21 | 2026-10-27 | 6680, 6695 |  | Zenith | 8714814 |
| 6697 | 36900.37000.37400.38400.39400.41200.42200.106400.1653000 | Internal Plumbing Works | 10d | 2026-10-21 | 2026-10-31 | 6681, 6695 |  | Zenith | 8714824 |
| 6698 | 36900.37000.37400.38400.39400.41200.42200.106400.1653100 | Waterproofing | 14d | 2027-03-01 | 2027-03-15 | 6682, 6697 |  | Zenith | 8714834 |
| 6699 | 36900.37000.37400.38400.39400.41200.42200.106400.1653200 | Internal Plaster | 14d | 2027-03-06 | 2027-03-20 | 6683, 6697, 6698FF+5d |  | Zenith | 8714844 |
| 6700 | 36900.37000.37400.38400.39400.41200.42200.106400.1653300 | IPS flooring work | 10d | 2027-03-20 | 2027-03-30 | 6684, 6699 |  | Zenith | 8714854 |
| 6701 | 36900.37000.37400.38400.39400.41200.42200.106400.1653400 | Toilet dado work | 10d | 2027-03-20 | 2027-03-30 | 6685, 6698, 6699 |  | Zenith | 8714864 |
| 6702 | 36900.37000.37400.38400.39400.41200.42200.106400.1653500 | Toilet flooring work | 7d | 2027-03-30 | 2027-04-06 | 6686, 6701 |  | Zenith | 8714874 |
| 6703 | 36900.37000.37400.38400.39400.41200.42200.106400.1653600 | False Cieling panel fixing | 10d | 2027-04-06 | 2027-04-16 | 6687, 6702 |  | Zenith | 8714884 |
| 6704 | 36900.37000.37400.38400.39400.41200.42200.106400.1653700 | Living dinning flooring | 13d | 2027-04-06 | 2027-04-19 | 6688, 6702 |  | Zenith | 8714894 |
| 6705 | 36900.37000.37400.38400.39400.41200.42200.106400.1653800 | Putty primer coat | 12d | 2027-04-19 | 2027-05-01 | 6689, 6704 |  | Zenith | 8714904 |
| 6706 | 36900.37000.37400.38400.39400.41200.42200.106400.1653900 | Aluminium door-window fixing | 15d | 2027-05-05 | 2027-05-20 | 6690, 6700, 6704 |  | Zenith | 8714914 |
| 6707 | 36900.37000.37400.38400.39400.41200.42200.106400.1654000 | Door shutter fixing (Pre Hung) | 8d | 2027-05-01 | 2027-05-09 | 6691, 6705 |  | Zenith | 8714924 |
| 6708 | 36900.37000.37400.38400.39400.41200.42200.106400.1654100 | Electrical wiring work | 12d | 2027-05-09 | 2027-05-21 | 6692, 6707 |  | Zenith | 8714934 |
| 6709 | 36900.37000.37400.38400.39400.41200.42200.106400.1654200 | Painting 1st coat | 15d | 2027-06-09 | 2027-06-24 | 6693, 6708 |  | Zenith | 8714944 |

| ID | WBS | Task | Duration | Start | Finish | Predecessors | Constraint | Calendar | Unique_Task_ID |
| --- | --- | --- | --- | --- | --- | --- | --- | --- | --- |
| 6710 | 36900.37000.37400.38400.39400.41200.42200.106500 | **23rd floor roof** | 216d | 2026-10-21 | 2027-07-09 |  | start no earlier than 2026-10-21 | Zenith | 8650834 |
| 6711 | 36900.37000.37400.38400.39400.41200.42200.106500.1654300 | Block Work | 10d | 2026-10-21 | 2026-10-31 | 6342, 6695 |  | Zenith | 8714954 |
| 6712 | 36900.37000.37400.38400.39400.41200.42200.106500.1654400 | Fire sprinkler pipe fixing | 6d | 2026-10-31 | 2026-12-21 | 6696, 6711 |  | Zenith | 8714964 |
| 6713 | 36900.37000.37400.38400.39400.41200.42200.106500.1654500 | Internal Plumbing Works | 10d | 2026-10-31 | 2026-12-25 | 6697, 6711 |  | Zenith | 8714974 |
| 6714 | 36900.37000.37400.38400.39400.41200.42200.106500.1654600 | Waterproofing | 14d | 2027-03-15 | 2027-03-29 | 6698, 6713 |  | Zenith | 8714984 |
| 6715 | 36900.37000.37400.38400.39400.41200.42200.106500.1654700 | Internal Plaster | 14d | 2027-03-20 | 2027-04-03 | 6699, 6713, 6714FF+5d |  | Zenith | 8714994 |
| 6716 | 36900.37000.37400.38400.39400.41200.42200.106500.1654800 | IPS flooring work | 10d | 2027-04-03 | 2027-04-13 | 6700, 6715 |  | Zenith | 8715004 |
| 6717 | 36900.37000.37400.38400.39400.41200.42200.106500.1654900 | Toilet dado work | 10d | 2027-04-03 | 2027-04-13 | 6701, 6714, 6715 |  | Zenith | 8715014 |
| 6718 | 36900.37000.37400.38400.39400.41200.42200.106500.1655000 | Toilet flooring work | 7d | 2027-04-13 | 2027-04-20 | 6702, 6717 |  | Zenith | 8715024 |
| 6719 | 36900.37000.37400.38400.39400.41200.42200.106500.1655100 | False Cieling panel fixing | 10d | 2027-04-20 | 2027-04-30 | 6703, 6718 |  | Zenith | 8715034 |
| 6720 | 36900.37000.37400.38400.39400.41200.42200.106500.1655200 | Living dinning flooring | 13d | 2027-04-20 | 2027-05-03 | 6704, 6718 |  | Zenith | 8715044 |
| 6721 | 36900.37000.37400.38400.39400.41200.42200.106500.1655300 | Putty primer coat | 12d | 2027-05-03 | 2027-05-15 | 6705, 6720 |  | Zenith | 8715054 |
| 6722 | 36900.37000.37400.38400.39400.41200.42200.106500.1655400 | Aluminium door-window fixing | 15d | 2027-05-20 | 2027-06-04 | 6706, 6716, 6720 |  | Zenith | 8715064 |
| 6723 | 36900.37000.37400.38400.39400.41200.42200.106500.1655500 | Door shutter fixing (Pre Hung) | 8d | 2027-05-15 | 2027-05-23 | 6707, 6721 |  | Zenith | 8715074 |
| 6724 | 36900.37000.37400.38400.39400.41200.42200.106500.1655600 | Electrical wiring work | 12d | 2027-05-23 | 2027-06-04 | 6708, 6723 |  | Zenith | 8715084 |
| 6725 | 36900.37000.37400.38400.39400.41200.42200.106500.1655700 | Painting 1st coat | 15d | 2027-06-24 | 2027-07-09 | 6709, 6724 |  | Zenith | 8715094 |
| 6726 | 36900.37000.37400.38400.39400.41200.42200.106600 | **24th floor roof** | 221d | 2026-10-31 | 2027-07-24 |  | start no earlier than 2026-10-31 | Zenith | 8650844 |
| 6727 | 36900.37000.37400.38400.39400.41200.42200.106600.1655800 | Block Work | 10d | 2026-10-31 | 2026-12-25 | 6343, 6711 |  | Zenith | 8715104 |
| 6728 | 36900.37000.37400.38400.39400.41200.42200.106600.1655900 | Fire sprinkler pipe fixing | 6d | 2026-12-25 | 2026-12-31 | 6712, 6727 |  | Zenith | 8715114 |
| 6729 | 36900.37000.37400.38400.39400.41200.42200.106600.1656000 | Internal Plumbing Works | 10d | 2026-12-25 | 2027-01-04 | 6713, 6727 |  | Zenith | 8715124 |
| 6730 | 36900.37000.37400.38400.39400.41200.42200.106600.1656100 | Waterproofing | 14d | 2027-03-29 | 2027-04-12 | 6714, 6729 |  | Zenith | 8715134 |
| 6731 | 36900.37000.37400.38400.39400.41200.42200.106600.1656200 | Internal Plaster | 14d | 2027-04-03 | 2027-04-17 | 6715, 6729, 6730FF+5d |  | Zenith | 8715144 |
| 6732 | 36900.37000.37400.38400.39400.41200.42200.106600.1656300 | IPS flooring work | 10d | 2027-04-17 | 2027-04-27 | 6716, 6731 |  | Zenith | 8715154 |
| 6733 | 36900.37000.37400.38400.39400.41200.42200.106600.1656400 | Toilet dado work | 10d | 2027-04-17 | 2027-04-27 | 6717, 6730, 6731 |  | Zenith | 8715164 |
| 6734 | 36900.37000.37400.38400.39400.41200.42200.106600.1656500 | Toilet flooring work | 7d | 2027-04-27 | 2027-05-04 | 6718, 6733 |  | Zenith | 8715174 |
| 6735 | 36900.37000.37400.38400.39400.41200.42200.106600.1656600 | False Cieling panel fixing | 10d | 2027-05-04 | 2027-05-14 | 6719, 6734 |  | Zenith | 8715184 |
| 6736 | 36900.37000.37400.38400.39400.41200.42200.106600.1656700 | Living dinning flooring | 13d | 2027-05-04 | 2027-05-17 | 6720, 6734 |  | Zenith | 8715194 |
| 6737 | 36900.37000.37400.38400.39400.41200.42200.106600.1656800 | Putty primer coat | 12d | 2027-05-17 | 2027-05-29 | 6721, 6736 |  | Zenith | 8715204 |
| 6738 | 36900.37000.37400.38400.39400.41200.42200.106600.1656900 | Aluminium door-window fixing | 15d | 2027-06-04 | 2027-06-19 | 6722, 6732, 6736 |  | Zenith | 8715214 |
| 6739 | 36900.37000.37400.38400.39400.41200.42200.106600.1657000 | Door shutter fixing (Pre Hung) | 8d | 2027-05-29 | 2027-06-06 | 6723, 6737 |  | Zenith | 8715224 |
| 6740 | 36900.37000.37400.38400.39400.41200.42200.106600.1657100 | Electrical wiring work | 12d | 2027-06-06 | 2027-06-18 | 6724, 6739 |  | Zenith | 8715234 |
| 6741 | 36900.37000.37400.38400.39400.41200.42200.106600.1657200 | Painting 1st coat | 15d | 2027-07-09 | 2027-07-24 | 6725, 6740 |  | Zenith | 8715244 |

| ID | WBS | Task | Duration | Start | Finish | Predecessors | Constraint | Calendar | Unique_Task_ID |
| --- | --- | --- | --- | --- | --- | --- | --- | --- | --- |
| 6742 | 36900.37000.37400.38400.39400.41200.42200.106700 | **25th floor roof** | 226d | 2026-12-25 | 2027-08-08 |  | start no earlier than 2026-12-25 | Zenith | 8650854 |
| 6743 | 36900.37000.37400.38400.39400.41200.42200.106700.1657300 | Block Work | 10d | 2026-12-25 | 2027-01-04 | 6344, 6727 |  | Zenith | 8715254 |
| 6744 | 36900.37000.37400.38400.39400.41200.42200.106700.1657400 | Fire sprinkler pipe fixing | 6d | 2027-01-04 | 2027-01-10 | 6728, 6743 |  | Zenith | 8715264 |
| 6745 | 36900.37000.37400.38400.39400.41200.42200.106700.1657500 | Internal Plumbing Works | 10d | 2027-01-04 | 2027-01-14 | 6729, 6743 |  | Zenith | 8715274 |
| 6746 | 36900.37000.37400.38400.39400.41200.42200.106700.1657600 | Waterproofing | 14d | 2027-04-12 | 2027-04-26 | 6730, 6745 |  | Zenith | 8715284 |
| 6747 | 36900.37000.37400.38400.39400.41200.42200.106700.1657700 | Internal Plaster | 14d | 2027-04-17 | 2027-05-01 | 6731, 6745, 6746FF+5d |  | Zenith | 8715294 |
| 6748 | 36900.37000.37400.38400.39400.41200.42200.106700.1657800 | IPS flooring work | 10d | 2027-05-01 | 2027-05-11 | 6732, 6747 |  | Zenith | 8715304 |
| 6749 | 36900.37000.37400.38400.39400.41200.42200.106700.1657900 | Toilet dado work | 10d | 2027-05-01 | 2027-05-11 | 6733, 6746, 6747 |  | Zenith | 8715314 |
| 6750 | 36900.37000.37400.38400.39400.41200.42200.106700.1658000 | Toilet flooring work | 7d | 2027-05-11 | 2027-05-18 | 6734, 6749 |  | Zenith | 8715324 |
| 6751 | 36900.37000.37400.38400.39400.41200.42200.106700.1658100 | False Cieling panel fixing | 10d | 2027-05-18 | 2027-05-28 | 6735, 6750 |  | Zenith | 8715334 |
| 6752 | 36900.37000.37400.38400.39400.41200.42200.106700.1658200 | Living dinning flooring | 13d | 2027-05-18 | 2027-05-31 | 6736, 6750 |  | Zenith | 8715344 |
| 6753 | 36900.37000.37400.38400.39400.41200.42200.106700.1658300 | Putty primer coat | 12d | 2027-05-31 | 2027-06-12 | 6737, 6752 |  | Zenith | 8715354 |
| 6754 | 36900.37000.37400.38400.39400.41200.42200.106700.1658400 | Aluminium door-window fixing | 15d | 2027-06-19 | 2027-07-04 | 6738, 6748, 6752 |  | Zenith | 8715364 |
| 6755 | 36900.37000.37400.38400.39400.41200.42200.106700.1658500 | Door shutter fixing (Pre Hung) | 8d | 2027-06-12 | 2027-06-20 | 6739, 6753 |  | Zenith | 8715374 |
| 6756 | 36900.37000.37400.38400.39400.41200.42200.106700.1658600 | Electrical wiring work | 12d | 2027-06-20 | 2027-07-02 | 6740, 6755 |  | Zenith | 8715384 |
| 6757 | 36900.37000.37400.38400.39400.41200.42200.106700.1658700 | Painting 1st coat | 15d | 2027-07-24 | 2027-08-08 | 6741, 6756 |  | Zenith | 8715394 |
| 6758 | 36900.37000.37400.38400.39400.41200.42200.106800 | **26th floor roof** | 231d | 2027-01-04 | 2027-08-23 |  | start no earlier than 2027-01-04 | Zenith | 8650864 |
| 6759 | 36900.37000.37400.38400.39400.41200.42200.106800.1658800 | Block Work | 10d | 2027-01-04 | 2027-01-14 | 6345, 6743 |  | Zenith | 8715404 |
| 6760 | 36900.37000.37400.38400.39400.41200.42200.106800.1658900 | Fire sprinkler pipe fixing | 6d | 2027-01-14 | 2027-01-20 | 6744, 6759 |  | Zenith | 8715414 |
| 6761 | 36900.37000.37400.38400.39400.41200.42200.106800.1659000 | Internal Plumbing Works | 10d | 2027-01-14 | 2027-01-24 | 6745, 6759 |  | Zenith | 8715424 |
| 6762 | 36900.37000.37400.38400.39400.41200.42200.106800.1659100 | Waterproofing | 14d | 2027-04-26 | 2027-05-10 | 6746, 6761 |  | Zenith | 8715434 |
| 6763 | 36900.37000.37400.38400.39400.41200.42200.106800.1659200 | Internal Plaster | 14d | 2027-05-01 | 2027-05-15 | 6747, 6761, 6762FF+5d |  | Zenith | 8715444 |
| 6764 | 36900.37000.37400.38400.39400.41200.42200.106800.1659300 | IPS flooring work | 10d | 2027-05-15 | 2027-05-25 | 6748, 6763 |  | Zenith | 8715454 |
| 6765 | 36900.37000.37400.38400.39400.41200.42200.106800.1659400 | Toilet dado work | 10d | 2027-05-15 | 2027-05-25 | 6749, 6762, 6763 |  | Zenith | 8715464 |
| 6766 | 36900.37000.37400.38400.39400.41200.42200.106800.1659500 | Toilet flooring work | 7d | 2027-05-25 | 2027-06-01 | 6750, 6765 |  | Zenith | 8715474 |
| 6767 | 36900.37000.37400.38400.39400.41200.42200.106800.1659600 | False Cieling panel fixing | 10d | 2027-06-01 | 2027-06-11 | 6751, 6766 |  | Zenith | 8715484 |
| 6768 | 36900.37000.37400.38400.39400.41200.42200.106800.1659700 | Living dinning flooring | 13d | 2027-06-01 | 2027-06-14 | 6752, 6766 |  | Zenith | 8715494 |
| 6769 | 36900.37000.37400.38400.39400.41200.42200.106800.1659800 | Putty primer coat | 12d | 2027-06-14 | 2027-06-26 | 6753, 6768 |  | Zenith | 8715504 |
| 6770 | 36900.37000.37400.38400.39400.41200.42200.106800.1659900 | Aluminium door-window fixing | 15d | 2027-07-04 | 2027-07-19 | 6754, 6764, 6768 |  | Zenith | 8715514 |
| 6771 | 36900.37000.37400.38400.39400.41200.42200.106800.1660000 | Door shutter fixing (Pre Hung) | 8d | 2027-06-26 | 2027-07-04 | 6755, 6769 |  | Zenith | 8715524 |
| 6772 | 36900.37000.37400.38400.39400.41200.42200.106800.1660100 | Electrical wiring work | 12d | 2027-07-04 | 2027-07-16 | 6756, 6771 |  | Zenith | 8715534 |
| 6773 | 36900.37000.37400.38400.39400.41200.42200.106800.1660200 | Painting 1st coat | 15d | 2027-08-08 | 2027-08-23 | 6757, 6772 |  | Zenith | 8715544 |

| ID | WBS | Task | Duration | Start | Finish | Predecessors | Constraint | Calendar | Unique_Task_ID |
| --- | --- | --- | --- | --- | --- | --- | --- | --- | --- |
| 6774 | 36900.37000.37400.38400.39400.41200.42200.106900 | **27th floor roof** | 236d | 2027-01-14 | 2027-09-07 |  | start no earlier than 2027-01-14 | Zenith | 8650874 |
| 6775 | 36900.37000.37400.38400.39400.41200.42200.106900.1660300 | Block Work | 10d | 2027-01-14 | 2027-01-24 | 6346, 6759 |  | Zenith | 8715554 |
| 6776 | 36900.37000.37400.38400.39400.41200.42200.106900.1660400 | Fire sprinkler pipe fixing | 6d | 2027-01-24 | 2027-01-30 | 6760, 6775 |  | Zenith | 8715564 |
| 6777 | 36900.37000.37400.38400.39400.41200.42200.106900.1660500 | Internal Plumbing Works | 10d | 2027-01-24 | 2027-02-03 | 6761, 6775 |  | Zenith | 8715574 |
| 6778 | 36900.37000.37400.38400.39400.41200.42200.106900.1660600 | Waterproofing | 14d | 2027-05-10 | 2027-05-24 | 6762, 6777 |  | Zenith | 8715584 |
| 6779 | 36900.37000.37400.38400.39400.41200.42200.106900.1660700 | Internal Plaster | 14d | 2027-05-15 | 2027-05-29 | 6763, 6777, 6778FF+5d |  | Zenith | 8715594 |
| 6780 | 36900.37000.37400.38400.39400.41200.42200.106900.1660800 | IPS flooring work | 10d | 2027-05-29 | 2027-06-08 | 6764, 6779 |  | Zenith | 8715604 |
| 6781 | 36900.37000.37400.38400.39400.41200.42200.106900.1660900 | Toilet dado work | 10d | 2027-05-29 | 2027-06-08 | 6765, 6778, 6779 |  | Zenith | 8715614 |
| 6782 | 36900.37000.37400.38400.39400.41200.42200.106900.1661000 | Toilet flooring work | 7d | 2027-06-08 | 2027-06-15 | 6766, 6781 |  | Zenith | 8715624 |
| 6783 | 36900.37000.37400.38400.39400.41200.42200.106900.1661100 | False Cieling panel fixing | 10d | 2027-06-15 | 2027-06-25 | 6767, 6782 |  | Zenith | 8715634 |
| 6784 | 36900.37000.37400.38400.39400.41200.42200.106900.1661200 | Living dinning flooring | 13d | 2027-06-15 | 2027-06-28 | 6768, 6782 |  | Zenith | 8715644 |
| 6785 | 36900.37000.37400.38400.39400.41200.42200.106900.1661300 | Putty primer coat | 12d | 2027-06-28 | 2027-07-10 | 6769, 6784 |  | Zenith | 8715654 |
| 6786 | 36900.37000.37400.38400.39400.41200.42200.106900.1661400 | Aluminium door-window fixing | 15d | 2027-07-19 | 2027-08-03 | 6770, 6780, 6784 |  | Zenith | 8715664 |
| 6787 | 36900.37000.37400.38400.39400.41200.42200.106900.1661500 | Door shutter fixing (Pre Hung) | 8d | 2027-07-10 | 2027-07-18 | 6771, 6785 |  | Zenith | 8715674 |
| 6788 | 36900.37000.37400.38400.39400.41200.42200.106900.1661600 | Electrical wiring work | 12d | 2027-07-18 | 2027-07-30 | 6772, 6787 |  | Zenith | 8715684 |
| 6789 | 36900.37000.37400.38400.39400.41200.42200.106900.1661700 | Painting 1st coat | 15d | 2027-08-23 | 2027-09-07 | 6773, 6788 |  | Zenith | 8715694 |
| 6790 | 36900.37000.37400.38400.39400.41200.42200.107000 | **28th floor roof** | 241d | 2027-01-24 | 2027-09-22 |  | start no earlier than 2027-01-24 | Zenith | 8650884 |
| 6791 | 36900.37000.37400.38400.39400.41200.42200.107000.1661800 | Block Work | 10d | 2027-01-24 | 2027-02-03 | 6347, 6775 |  | Zenith | 8715704 |
| 6792 | 36900.37000.37400.38400.39400.41200.42200.107000.1661900 | Fire sprinkler pipe fixing | 6d | 2027-02-03 | 2027-02-09 | 6776, 6791 |  | Zenith | 8715714 |
| 6793 | 36900.37000.37400.38400.39400.41200.42200.107000.1662000 | Internal Plumbing Works | 10d | 2027-02-03 | 2027-02-13 | 6777, 6791 |  | Zenith | 8715724 |
| 6794 | 36900.37000.37400.38400.39400.41200.42200.107000.1662100 | Waterproofing | 14d | 2027-05-24 | 2027-06-07 | 6778, 6793 |  | Zenith | 8715734 |
| 6795 | 36900.37000.37400.38400.39400.41200.42200.107000.1662200 | Internal Plaster | 14d | 2027-05-29 | 2027-06-12 | 6779, 6793, 6794FF+5d |  | Zenith | 8715744 |
| 6796 | 36900.37000.37400.38400.39400.41200.42200.107000.1662300 | IPS flooring work | 10d | 2027-06-12 | 2027-06-22 | 6780, 6795 |  | Zenith | 8715754 |
| 6797 | 36900.37000.37400.38400.39400.41200.42200.107000.1662400 | Toilet dado work | 10d | 2027-06-12 | 2027-06-22 | 6781, 6794, 6795 |  | Zenith | 8715764 |
| 6798 | 36900.37000.37400.38400.39400.41200.42200.107000.1662500 | Toilet flooring work | 7d | 2027-06-22 | 2027-06-29 | 6782, 6797 |  | Zenith | 8715774 |
| 6799 | 36900.37000.37400.38400.39400.41200.42200.107000.1662600 | False Cieling panel fixing | 10d | 2027-06-29 | 2027-07-09 | 6783, 6798 |  | Zenith | 8715784 |
| 6800 | 36900.37000.37400.38400.39400.41200.42200.107000.1662700 | Living dinning flooring | 13d | 2027-06-29 | 2027-07-12 | 6784, 6798 |  | Zenith | 8715794 |
| 6801 | 36900.37000.37400.38400.39400.41200.42200.107000.1662800 | Putty primer coat | 12d | 2027-07-12 | 2027-07-24 | 6785, 6800 |  | Zenith | 8715804 |
| 6802 | 36900.37000.37400.38400.39400.41200.42200.107000.1662900 | Aluminium door-window fixing | 15d | 2027-08-03 | 2027-08-18 | 6786, 6796, 6800 |  | Zenith | 8715814 |
| 6803 | 36900.37000.37400.38400.39400.41200.42200.107000.1663000 | Door shutter fixing (Pre Hung) | 8d | 2027-07-24 | 2027-08-01 | 6787, 6801 |  | Zenith | 8715824 |
| 6804 | 36900.37000.37400.38400.39400.41200.42200.107000.1663100 | Electrical wiring work | 12d | 2027-08-01 | 2027-08-13 | 6788, 6803 |  | Zenith | 8715834 |
| 6805 | 36900.37000.37400.38400.39400.41200.42200.107000.1663200 | Painting 1st coat | 15d | 2027-09-07 | 2027-09-22 | 6789, 6804 |  | Zenith | 8715844 |

| ID | WBS | Task | Duration | Start | Finish | Predecessors | Constraint | Calendar | Unique_Task_ID |
| --- | --- | --- | --- | --- | --- | --- | --- | --- | --- |
| 6806 | 36900.37000.37400.38400.39400.41200.42200.107100 | **29th floor roof** | 246d | 2027-02-03 | 2027-10-07 |  | start no earlier than 2027-02-03 | Zenith | 8650894 |
| 6807 | 36900.37000.37400.38400.39400.41200.42200.107100.1663300 | Block Work | 10d | 2027-02-03 | 2027-02-13 | 6348, 6791 |  | Zenith | 8715854 |
| 6808 | 36900.37000.37400.38400.39400.41200.42200.107100.1663400 | Fire sprinkler pipe fixing | 6d | 2027-02-13 | 2027-02-19 | 6792, 6807 |  | Zenith | 8715864 |
| 6809 | 36900.37000.37400.38400.39400.41200.42200.107100.1663500 | Internal Plumbing Works | 10d | 2027-02-13 | 2027-02-23 | 6793, 6807 |  | Zenith | 8715874 |
| 6810 | 36900.37000.37400.38400.39400.41200.42200.107100.1663600 | Waterproofing | 14d | 2027-06-07 | 2027-06-21 | 6794, 6809 |  | Zenith | 8715884 |
| 6811 | 36900.37000.37400.38400.39400.41200.42200.107100.1663700 | Internal Plaster | 14d | 2027-06-12 | 2027-06-26 | 6795, 6809, 6810FF+5d |  | Zenith | 8715894 |
| 6812 | 36900.37000.37400.38400.39400.41200.42200.107100.1663800 | IPS flooring work | 10d | 2027-06-26 | 2027-07-06 | 6796, 6811 |  | Zenith | 8715904 |
| 6813 | 36900.37000.37400.38400.39400.41200.42200.107100.1663900 | Toilet dado work | 10d | 2027-06-26 | 2027-07-06 | 6797, 6810, 6811 |  | Zenith | 8715914 |
| 6814 | 36900.37000.37400.38400.39400.41200.42200.107100.1664000 | Toilet flooring work | 7d | 2027-07-06 | 2027-07-13 | 6798, 6813 |  | Zenith | 8715924 |
| 6815 | 36900.37000.37400.38400.39400.41200.42200.107100.1664100 | False Cieling panel fixing | 10d | 2027-07-13 | 2027-07-23 | 6799, 6814 |  | Zenith | 8715934 |
| 6816 | 36900.37000.37400.38400.39400.41200.42200.107100.1664200 | Living dinning flooring | 13d | 2027-07-13 | 2027-07-26 | 6800, 6814 |  | Zenith | 8715944 |
| 6817 | 36900.37000.37400.38400.39400.41200.42200.107100.1664300 | Putty primer coat | 12d | 2027-07-26 | 2027-08-07 | 6801, 6816 |  | Zenith | 8715954 |
| 6818 | 36900.37000.37400.38400.39400.41200.42200.107100.1664400 | Aluminium door-window fixing | 15d | 2027-08-18 | 2027-09-02 | 6802, 6812, 6816 |  | Zenith | 8715964 |
| 6819 | 36900.37000.37400.38400.39400.41200.42200.107100.1664500 | Door shutter fixing (Pre Hung) | 8d | 2027-08-07 | 2027-08-15 | 6803, 6817 |  | Zenith | 8715974 |
| 6820 | 36900.37000.37400.38400.39400.41200.42200.107100.1664600 | Electrical wiring work | 12d | 2027-08-15 | 2027-08-27 | 6804, 6819 |  | Zenith | 8715984 |
| 6821 | 36900.37000.37400.38400.39400.41200.42200.107100.1664700 | Painting 1st coat | 15d | 2027-09-22 | 2027-10-07 | 6805, 6820 |  | Zenith | 8715994 |
| 6822 | 36900.37000.37400.38400.39400.41200.42200.107200 | **30th floor roof** | 251d | 2027-02-13 | 2027-10-22 |  | start no earlier than 2027-02-13 | Zenith | 8650904 |
| 6823 | 36900.37000.37400.38400.39400.41200.42200.107200.1664800 | Block Work | 10d | 2027-02-13 | 2027-02-23 | 6349, 6807 |  | Zenith | 8716004 |
| 6824 | 36900.37000.37400.38400.39400.41200.42200.107200.1664900 | Fire sprinkler pipe fixing | 6d | 2027-02-23 | 2027-03-01 | 6808, 6823 |  | Zenith | 8716014 |
| 6825 | 36900.37000.37400.38400.39400.41200.42200.107200.1665000 | Internal Plumbing Works | 10d | 2027-02-23 | 2027-03-05 | 6809, 6823 |  | Zenith | 8716024 |
| 6826 | 36900.37000.37400.38400.39400.41200.42200.107200.1665100 | Waterproofing | 14d | 2027-06-21 | 2027-07-05 | 6810, 6825 |  | Zenith | 8716034 |
| 6827 | 36900.37000.37400.38400.39400.41200.42200.107200.1665200 | Internal Plaster | 14d | 2027-06-26 | 2027-07-10 | 6811, 6825, 6826FF+5d |  | Zenith | 8716044 |
| 6828 | 36900.37000.37400.38400.39400.41200.42200.107200.1665300 | IPS flooring work | 10d | 2027-07-10 | 2027-07-20 | 6812, 6827 |  | Zenith | 8716054 |
| 6829 | 36900.37000.37400.38400.39400.41200.42200.107200.1665400 | Toilet dado work | 10d | 2027-07-10 | 2027-07-20 | 6813, 6826, 6827 |  | Zenith | 8716064 |
| 6830 | 36900.37000.37400.38400.39400.41200.42200.107200.1665500 | Toilet flooring work | 7d | 2027-07-20 | 2027-07-27 | 6814, 6829 |  | Zenith | 8716074 |
| 6831 | 36900.37000.37400.38400.39400.41200.42200.107200.1665600 | False Cieling panel fixing | 10d | 2027-07-27 | 2027-08-06 | 6815, 6830 |  | Zenith | 8716084 |
| 6832 | 36900.37000.37400.38400.39400.41200.42200.107200.1665700 | Living dinning flooring | 13d | 2027-07-27 | 2027-08-09 | 6816, 6830 |  | Zenith | 8716094 |
| 6833 | 36900.37000.37400.38400.39400.41200.42200.107200.1665800 | Putty primer coat | 12d | 2027-08-09 | 2027-08-21 | 6817, 6832 |  | Zenith | 8716104 |
| 6834 | 36900.37000.37400.38400.39400.41200.42200.107200.1665900 | Aluminium door-window fixing | 15d | 2027-09-02 | 2027-09-17 | 6818, 6828, 6832 |  | Zenith | 8716114 |
| 6835 | 36900.37000.37400.38400.39400.41200.42200.107200.1666000 | Door shutter fixing (Pre Hung) | 8d | 2027-08-21 | 2027-08-29 | 6819, 6833 |  | Zenith | 8716124 |
| 6836 | 36900.37000.37400.38400.39400.41200.42200.107200.1666100 | Electrical wiring work | 12d | 2027-08-29 | 2027-09-10 | 6820, 6835 |  | Zenith | 8716134 |
| 6837 | 36900.37000.37400.38400.39400.41200.42200.107200.1666200 | Painting 1st coat | 15d | 2027-10-07 | 2027-10-22 | 6821, 6836 |  | Zenith | 8716144 |

| ID | WBS | Task | Duration | Start | Finish | Predecessors | Constraint | Calendar | Unique_Task_ID |
| --- | --- | --- | --- | --- | --- | --- | --- | --- | --- |
| 6838 | 36900.37000.37400.38400.39400.41200.42200.107300 | **31st floor roof** | 256d | 2027-02-23 | 2027-12-21 |  | start no earlier than 2027-02-23 | Zenith | 8650914 |
| 6839 | 36900.37000.37400.38400.39400.41200.42200.107300.1666300 | Block Work | 10d | 2027-02-23 | 2027-03-05 | 6350, 6823 |  | Zenith | 8716154 |
| 6840 | 36900.37000.37400.38400.39400.41200.42200.107300.1666400 | Fire sprinkler pipe fixing | 6d | 2027-03-05 | 2027-03-11 | 6824, 6839 |  | Zenith | 8716164 |
| 6841 | 36900.37000.37400.38400.39400.41200.42200.107300.1666500 | Internal Plumbing Works | 10d | 2027-03-05 | 2027-03-15 | 6825, 6839 |  | Zenith | 8716174 |
| 6842 | 36900.37000.37400.38400.39400.41200.42200.107300.1666600 | Waterproofing | 14d | 2027-07-05 | 2027-07-19 | 6826, 6841 |  | Zenith | 8716184 |
| 6843 | 36900.37000.37400.38400.39400.41200.42200.107300.1666700 | Internal Plaster | 14d | 2027-07-10 | 2027-07-24 | 6827, 6841, 6842FF+5d |  | Zenith | 8716194 |
| 6844 | 36900.37000.37400.38400.39400.41200.42200.107300.1666800 | IPS flooring work | 10d | 2027-07-24 | 2027-08-03 | 6828, 6843 |  | Zenith | 8716204 |
| 6845 | 36900.37000.37400.38400.39400.41200.42200.107300.1666900 | Toilet dado work | 10d | 2027-07-24 | 2027-08-03 | 6829, 6842, 6843 |  | Zenith | 8716214 |
| 6846 | 36900.37000.37400.38400.39400.41200.42200.107300.1667000 | Toilet flooring work | 7d | 2027-08-03 | 2027-08-10 | 6830, 6845 |  | Zenith | 8716224 |
| 6847 | 36900.37000.37400.38400.39400.41200.42200.107300.1667100 | False Cieling panel fixing | 10d | 2027-08-10 | 2027-08-20 | 6831, 6846 |  | Zenith | 8716234 |
| 6848 | 36900.37000.37400.38400.39400.41200.42200.107300.1667200 | Living dinning flooring | 13d | 2027-08-10 | 2027-08-23 | 6832, 6846 |  | Zenith | 8716244 |
| 6849 | 36900.37000.37400.38400.39400.41200.42200.107300.1667300 | Putty primer coat | 12d | 2027-08-23 | 2027-09-04 | 6833, 6848 |  | Zenith | 8716254 |
| 6850 | 36900.37000.37400.38400.39400.41200.42200.107300.1667400 | Aluminium door-window fixing | 15d | 2027-09-17 | 2027-10-02 | 6834, 6844, 6848 |  | Zenith | 8716264 |
| 6851 | 36900.37000.37400.38400.39400.41200.42200.107300.1667500 | Door shutter fixing (Pre Hung) | 8d | 2027-09-04 | 2027-09-12 | 6835, 6849 |  | Zenith | 8716274 |
| 6852 | 36900.37000.37400.38400.39400.41200.42200.107300.1667600 | Electrical wiring work | 12d | 2027-09-12 | 2027-09-24 | 6836, 6851 |  | Zenith | 8716284 |
| 6853 | 36900.37000.37400.38400.39400.41200.42200.107300.1667700 | Painting 1st coat | 15d | 2027-10-22 | 2027-12-21 | 6837, 6852 |  | Zenith | 8716294 |
| 6854 | 36900.37000.37400.38400.39400.41200.42200.107400 | **32nd floor roof** | 261d | 2027-03-05 | 2028-01-05 |  | start no earlier than 2027-03-05 | Zenith | 8650924 |
| 6855 | 36900.37000.37400.38400.39400.41200.42200.107400.1667800 | Block Work | 10d | 2027-03-05 | 2027-03-15 | 6351, 6839 |  | Zenith | 8716304 |
| 6856 | 36900.37000.37400.38400.39400.41200.42200.107400.1667900 | Fire sprinkler pipe fixing | 6d | 2027-03-15 | 2027-03-21 | 6840, 6855 |  | Zenith | 8716314 |
| 6857 | 36900.37000.37400.38400.39400.41200.42200.107400.1668000 | Internal Plumbing Works | 10d | 2027-03-15 | 2027-03-25 | 6841, 6855 |  | Zenith | 8716324 |
| 6858 | 36900.37000.37400.38400.39400.41200.42200.107400.1668100 | Waterproofing | 14d | 2027-07-19 | 2027-08-02 | 6842, 6857 |  | Zenith | 8716334 |
| 6859 | 36900.37000.37400.38400.39400.41200.42200.107400.1668200 | Internal Plaster | 14d | 2027-07-24 | 2027-08-07 | 6843, 6857, 6858FF+5d |  | Zenith | 8716344 |
| 6860 | 36900.37000.37400.38400.39400.41200.42200.107400.1668300 | IPS flooring work | 10d | 2027-08-07 | 2027-08-17 | 6844, 6859 |  | Zenith | 8716354 |
| 6861 | 36900.37000.37400.38400.39400.41200.42200.107400.1668400 | Toilet dado work | 10d | 2027-08-07 | 2027-08-17 | 6845, 6858, 6859 |  | Zenith | 8716364 |
| 6862 | 36900.37000.37400.38400.39400.41200.42200.107400.1668500 | Toilet flooring work | 7d | 2027-08-17 | 2027-08-24 | 6846, 6861 |  | Zenith | 8716374 |
| 6863 | 36900.37000.37400.38400.39400.41200.42200.107400.1668600 | False Cieling panel fixing | 10d | 2027-08-24 | 2027-09-03 | 6847, 6862 |  | Zenith | 8716384 |
| 6864 | 36900.37000.37400.38400.39400.41200.42200.107400.1668700 | Living dinning flooring | 13d | 2027-08-24 | 2027-09-06 | 6848, 6862 |  | Zenith | 8716394 |
| 6865 | 36900.37000.37400.38400.39400.41200.42200.107400.1668800 | Putty primer coat | 12d | 2027-09-06 | 2027-09-18 | 6849, 6864 |  | Zenith | 8716404 |
| 6866 | 36900.37000.37400.38400.39400.41200.42200.107400.1668900 | Aluminium door-window fixing | 15d | 2027-10-02 | 2027-10-17 | 6850, 6860, 6864 |  | Zenith | 8716414 |
| 6867 | 36900.37000.37400.38400.39400.41200.42200.107400.1669000 | Door shutter fixing (Pre Hung) | 8d | 2027-09-18 | 2027-09-26 | 6851, 6865 |  | Zenith | 8716424 |
| 6868 | 36900.37000.37400.38400.39400.41200.42200.107400.1669100 | Electrical wiring work | 12d | 2027-09-26 | 2027-10-08 | 6852, 6867 |  | Zenith | 8716434 |
| 6869 | 36900.37000.37400.38400.39400.41200.42200.107400.1669200 | Painting 1st coat | 15d | 2027-12-21 | 2028-01-05 | 6853, 6868 |  | Zenith | 8716444 |

| ID | WBS | Task | Duration | Start | Finish | Predecessors | Constraint | Calendar | Unique_Task_ID |
| --- | --- | --- | --- | --- | --- | --- | --- | --- | --- |
| 6870 | 36900.37000.37400.38400.39400.41200.42200.107500 | **33rd floor roof** | 266d | 2027-03-15 | 2028-01-20 |  | start no earlier than 2027-03-15 | Zenith | 8650934 |
| 6871 | 36900.37000.37400.38400.39400.41200.42200.107500.1669300 | Block Work | 10d | 2027-03-15 | 2027-03-25 | 6352, 6855 |  | Zenith | 8716454 |
| 6872 | 36900.37000.37400.38400.39400.41200.42200.107500.1669400 | Fire sprinkler pipe fixing | 6d | 2027-03-25 | 2027-03-31 | 6856, 6871 |  | Zenith | 8716464 |
| 6873 | 36900.37000.37400.38400.39400.41200.42200.107500.1669500 | Internal Plumbing Works | 10d | 2027-03-25 | 2027-04-04 | 6857, 6871 |  | Zenith | 8716474 |
| 6874 | 36900.37000.37400.38400.39400.41200.42200.107500.1669600 | Waterproofing | 14d | 2027-08-02 | 2027-08-16 | 6858, 6873 |  | Zenith | 8716484 |
| 6875 | 36900.37000.37400.38400.39400.41200.42200.107500.1669700 | Internal Plaster | 14d | 2027-08-07 | 2027-08-21 | 6859, 6873, 6874FF+5d |  | Zenith | 8716494 |
| 6876 | 36900.37000.37400.38400.39400.41200.42200.107500.1669800 | IPS flooring work | 10d | 2027-08-21 | 2027-08-31 | 6860, 6875 |  | Zenith | 8716504 |
| 6877 | 36900.37000.37400.38400.39400.41200.42200.107500.1669900 | Toilet dado work | 10d | 2027-08-21 | 2027-08-31 | 6861, 6874, 6875 |  | Zenith | 8716514 |
| 6878 | 36900.37000.37400.38400.39400.41200.42200.107500.1670000 | Toilet flooring work | 7d | 2027-08-31 | 2027-09-07 | 6862, 6877 |  | Zenith | 8716524 |
| 6879 | 36900.37000.37400.38400.39400.41200.42200.107500.1670100 | False Cieling panel fixing | 10d | 2027-09-07 | 2027-09-17 | 6863, 6878 |  | Zenith | 8716534 |
| 6880 | 36900.37000.37400.38400.39400.41200.42200.107500.1670200 | Living dinning flooring | 13d | 2027-09-07 | 2027-09-20 | 6864, 6878 |  | Zenith | 8716544 |
| 6881 | 36900.37000.37400.38400.39400.41200.42200.107500.1670300 | Putty primer coat | 12d | 2027-09-20 | 2027-10-02 | 6865, 6880 |  | Zenith | 8716554 |
| 6882 | 36900.37000.37400.38400.39400.41200.42200.107500.1670400 | Aluminium door-window fixing | 15d | 2027-10-17 | 2027-12-16 | 6866, 6876, 6880 |  | Zenith | 8716564 |
| 6883 | 36900.37000.37400.38400.39400.41200.42200.107500.1670500 | Door shutter fixing (Pre Hung) | 8d | 2027-10-02 | 2027-10-10 | 6867, 6881 |  | Zenith | 8716574 |
| 6884 | 36900.37000.37400.38400.39400.41200.42200.107500.1670600 | Electrical wiring work | 12d | 2027-10-10 | 2027-10-22 | 6868, 6883 |  | Zenith | 8716584 |
| 6885 | 36900.37000.37400.38400.39400.41200.42200.107500.1670700 | Painting 1st coat | 15d | 2028-01-05 | 2028-01-20 | 6869, 6884 |  | Zenith | 8716594 |
| 6886 | 36900.37000.37400.38400.39400.41200.42200.62500 | **34th Floor roof** | 316d | 2027-03-25 | 2028-03-20 |  | start no earlier than 2027-03-25 | Zenith | 8648324 |
| 6887 | 36900.37000.37400.38400.39400.41200.42200.62500.1670800 | Block Work | 10d | 2027-03-25 | 2027-04-04 | 6353, 6871 |  | Zenith | 8716604 |
| 6888 | 36900.37000.37400.38400.39400.41200.42200.62500.1670900 | Fire sprinkler pipe fixing | 6d | 2027-04-04 | 2027-04-10 | 6872, 6887 |  | Zenith | 8716614 |
| 6889 | 36900.37000.37400.38400.39400.41200.42200.62500.1671000 | Internal Plumbing Works | 10d | 2027-04-04 | 2027-04-14 | 6873, 6887 |  | Zenith | 8716624 |
| 6890 | 36900.37000.37400.38400.39400.41200.42200.62500.1671100 | Waterproofing | 14d | 2027-08-16 | 2027-08-30 | 6874, 6889 |  | Zenith | 8716634 |
| 6891 | 36900.37000.37400.38400.39400.41200.42200.62500.1671200 | Internal Plaster | 14d | 2027-08-21 | 2027-09-04 | 6875, 6889, 6890FF+5d |  | Zenith | 8716644 |
| 6892 | 36900.37000.37400.38400.39400.41200.42200.62500.1671300 | IPS flooring work | 10d | 2027-09-04 | 2027-09-14 | 6876, 6890, 6891 |  | Zenith | 8716654 |
| 6893 | 36900.37000.37400.38400.39400.41200.42200.62500.1671400 | Toilet dado work | 10d | 2027-09-14 | 2027-09-24 | 6877, 6892 |  | Zenith | 8716664 |
| 6894 | 36900.37000.37400.38400.39400.41200.42200.62500.1671500 | Toilet flooring work | 7d | 2027-09-24 | 2027-10-01 | 6878, 6893 |  | Zenith | 8716674 |
| 6895 | 36900.37000.37400.38400.39400.41200.42200.62500.1671600 | False ceiling | 10d | 2027-10-01 | 2027-10-11 | 6879, 6894 |  | Zenith | 8716684 |
| 6896 | 36900.37000.37400.38400.39400.41200.42200.62500.1671700 | Living dinning flooring | 13d | 2027-10-01 | 2027-10-14 | 6880, 6894 |  | Zenith | 8716694 |
| 6897 | 36900.37000.37400.38400.39400.41200.42200.62500.1671800 | Putty Primer coat | 12d | 2027-10-14 | 2027-10-26 | 6881, 6888, 6895, 6896 |  | Zenith | 8716704 |
| 6898 | 36900.37000.37400.38400.39400.41200.42200.62500.1671900 | Aluminium door-window fixing | 15d | 2027-12-16 | 2027-12-31 | 6882, 6892, 6896 |  | Zenith | 8716714 |
| 6899 | 36900.37000.37400.38400.39400.41200.42200.62500.1672000 | Door shutter fixing (Pre Hung) | 8d | 2027-10-26 | 2027-12-18 | 6883, 6897 |  | Zenith | 8716724 |
| 6900 | 36900.37000.37400.38400.39400.41200.42200.62500.1672100 | Electrical wiring work | 12d | 2027-12-18 | 2027-12-30 | 6884, 6899 |  | Zenith | 8716734 |
| 6901 | 36900.37000.37400.38400.39400.41200.42200.62500.1672200 | Painting 1st coat | 15d | 2028-01-20 | 2028-02-04 | 6885, 6900 |  | Zenith | 8716744 |
| 6902 | 36900.37000.37400.38400.39400.41200.42200.62500.1672300 | Misc. Works | 45d | 2028-02-04 | 2028-03-20 | 6901 |  | Zenith | 8716754 |

| ID | WBS | Task | Duration | Start | Finish | Predecessors | Constraint | Calendar | Unique_Task_ID |
| --- | --- | --- | --- | --- | --- | --- | --- | --- | --- |
| 6903 | 36900.37000.37400.38400.39400.41200.224600 | **Terrace Finishing** | 116d | 2027-02-07 | 2027-06-02 |  | start no earlier than 2027-02-07 | Zenith | 8656814 |
| 6904 | 36900.37000.37400.38400.39400.41200.224600.1034400 | Terrace waterproofing | 40d | 2027-02-07 | 2027-03-18 | 6318FS+2d |  | Zenith | 8680094 |
| 6905 | 36900.37000.37400.38400.39400.41200.224600.1034500 | Terrace finishing | 75d | 2027-03-20 | 2027-06-02 | 6904FS+1d |  | Zenith | 8680084 |
| 6906 | 36900.37000.37400.38400.39400.41200.48800 | **Balcony Railing** | 499.25d | 2026-05-08 | 2027-12-18 |  | start no earlier than 2026-05-08 | Zenith | 8648204 |
| 6907 | 36900.37000.37400.38400.39400.41200.48800.1034600 | 1st Floor | 10d | 2026-05-08 | 2026-05-17 | 6384FF |  | Zenith | 8680074 |
| 6908 | 36900.37000.37400.38400.39400.41200.48800.1034700 | 2nd Floor | 10d | 2026-06-12 | 2026-06-22 | 6907, 6400 |  | Zenith | 8680064 |
| 6909 | 36900.37000.37400.38400.39400.41200.48800.1034800 | 3rd Floor | 10d | 2026-06-26 | 2026-07-06 | 6908, 6416 |  | Zenith | 8680054 |
| 6910 | 36900.37000.37400.38400.39400.41200.48800.1034900 | 4th Floor | 10d | 2026-07-10 | 2026-07-20 | 6909, 6432 |  | Zenith | 8680044 |
| 6911 | 36900.37000.37400.38400.39400.41200.48800.1035000 | 5th Floor | 10d | 2026-07-24 | 2026-08-03 | 6910, 6448 |  | Zenith | 8680034 |
| 6912 | 36900.37000.37400.38400.39400.41200.48800.1035100 | 6th Floor | 10d | 2026-08-07 | 2026-08-17 | 6911, 6464 |  | Zenith | 8680024 |
| 6913 | 36900.37000.37400.38400.39400.41200.48800.1035200 | 7th Floor | 10d | 2026-08-21 | 2026-08-31 | 6912, 6480 |  | Zenith | 8680014 |
| 6914 | 36900.37000.37400.38400.39400.41200.48800.1035300 | 8th Floor | 10d | 2026-09-04 | 2026-09-14 | 6913, 6496 |  | Zenith | 8680004 |
| 6915 | 36900.37000.37400.38400.39400.41200.48800.1035400 | 9th Floor | 10d | 2026-09-18 | 2026-09-28 | 6914, 6512 |  | Zenith | 8679994 |
| 6916 | 36900.37000.37400.38400.39400.41200.48800.1035500 | 10th Floor | 10d | 2026-10-02 | 2026-10-12 | 6915, 6528 |  | Zenith | 8679984 |
| 6917 | 36900.37000.37400.38400.39400.41200.48800.1035600 | 11th Floor | 10d | 2026-10-16 | 2026-10-26 | 6916, 6544 |  | Zenith | 8679974 |
| 6918 | 36900.37000.37400.38400.39400.41200.48800.1035700 | 12th Floor | 10d | 2026-10-30 | 2026-12-24 | 6917, 6560 |  | Zenith | 8679964 |
| 6919 | 36900.37000.37400.38400.39400.41200.48800.1035800 | 13th Floor | 10d | 2026-12-28 | 2027-01-07 | 6918, 6576 |  | Zenith | 8679954 |
| 6920 | 36900.37000.37400.38400.39400.41200.48800.1035900 | 14th Floor | 10d | 2027-01-11 | 2027-01-21 | 6919, 6592 |  | Zenith | 8679944 |
| 6921 | 36900.37000.37400.38400.39400.41200.48800.1036000 | 15th Floor | 10d | 2027-01-25 | 2027-02-04 | 6920, 6608 |  | Zenith | 8679934 |
| 6922 | 36900.37000.37400.38400.39400.41200.48800.1036100 | 16th Floor | 10d | 2027-02-08 | 2027-02-18 | 6921, 6624 |  | Zenith | 8679924 |
| 6923 | 36900.37000.37400.38400.39400.41200.48800.1036200 | 17th Floor | 10d | 2027-02-22 | 2027-03-04 | 6922, 6640 |  | Zenith | 8679914 |
| 6924 | 36900.37000.37400.38400.39400.41200.48800.1036300 | 18th Floor | 10d | 2027-03-08 | 2027-03-18 | 6923, 6656 |  | Zenith | 8679904 |
| 6925 | 36900.37000.37400.38400.39400.41200.48800.1036400 | 19th Floor | 10d | 2027-03-22 | 2027-04-01 | 6924, 6672 |  | Zenith | 8679894 |
| 6926 | 36900.37000.37400.38400.39400.41200.48800.1036500 | 20th Floor | 10d | 2027-04-05 | 2027-04-15 | 6925, 6688 |  | Zenith | 8679884 |
| 6927 | 36900.37000.37400.38400.39400.41200.48800.1036600 | 21st Floor | 10d | 2027-04-19 | 2027-04-29 | 6926, 6704 |  | Zenith | 8679874 |
| 6928 | 36900.37000.37400.38400.39400.41200.48800.1036700 | 22nd Floor | 10d | 2027-05-03 | 2027-05-13 | 6927, 6720 |  | Zenith | 8679864 |
| 6929 | 36900.37000.37400.38400.39400.41200.48800.1036800 | 23rd Floor | 10d | 2027-05-17 | 2027-05-27 | 6928, 6736 |  | Zenith | 8679854 |
| 6930 | 36900.37000.37400.38400.39400.41200.48800.1036900 | 24th Floor | 10d | 2027-05-31 | 2027-06-10 | 6929, 6752 |  | Zenith | 8679844 |
| 6931 | 36900.37000.37400.38400.39400.41200.48800.1037000 | 25th Floor | 10d | 2027-06-14 | 2027-06-24 | 6930, 6768 |  | Zenith | 8679834 |
| 6932 | 36900.37000.37400.38400.39400.41200.48800.1037100 | 26th Floor | 10d | 2027-06-28 | 2027-07-08 | 6931, 6784 |  | Zenith | 8679824 |
| 6933 | 36900.37000.37400.38400.39400.41200.48800.1037200 | 27th Floor | 10d | 2027-07-12 | 2027-07-22 | 6932, 6800 |  | Zenith | 8679814 |
| 6934 | 36900.37000.37400.38400.39400.41200.48800.1037300 | 28th Floor | 10d | 2027-07-26 | 2027-08-05 | 6933, 6816 |  | Zenith | 8679804 |
| 6935 | 36900.37000.37400.38400.39400.41200.48800.1037400 | 29th Floor | 10d | 2027-08-09 | 2027-08-19 | 6934, 6832 |  | Zenith | 8679794 |
| 6936 | 36900.37000.37400.38400.39400.41200.48800.1037500 | 30th Floor | 10d | 2027-08-23 | 2027-09-02 | 6935, 6848 |  | Zenith | 8679784 |
| 6937 | 36900.37000.37400.38400.39400.41200.48800.1037600 | 31st Floor | 10d | 2027-09-06 | 2027-09-16 | 6936, 6864 |  | Zenith | 8679774 |
| 6938 | 36900.37000.37400.38400.39400.41200.48800.1037700 | 32nd Floor | 10d | 2027-09-20 | 2027-09-30 | 6937, 6880 |  | Zenith | 8679764 |
| 6939 | 36900.37000.37400.38400.39400.41200.48800.1037800 | 33rd Floor | 10d | 2027-10-14 | 2027-10-24 | 6938, 6896 |  | Zenith | 8679754 |
| 6940 | 36900.37000.37400.38400.39400.41200.48800.1037900 | 34th Floor | 10d | 2027-10-24 | 2027-12-18 | 6939 |  | Zenith | 8679744 |

| ID | WBS | Task | Duration | Start | Finish | Predecessors | Constraint | Calendar | Unique_Task_ID |
| --- | --- | --- | --- | --- | --- | --- | --- | --- | --- |
| 6941 | 36900.37000.37400.38400.39400.41200.118000 | **Common Area Finishing** | 353.25d | 2027-02-05 | 2028-03-09 |  | start no earlier than 2027-02-05 | Zenith | 8651674 |
| 6942 | 36900.37000.37400.38400.39400.41200.118000.1038000 | Masonary Work | 40d | 2027-02-05 | 2027-03-16 | 6318 |  | Zenith | 8679734 |
| 6943 | 36900.37000.37400.38400.39400.41200.118000.1038100 | Fire sprinkler pipe fixing | 40d | 2027-03-17 | 2027-04-25 | 6942 |  | Zenith | 8679724 |
| 6944 | 36900.37000.37400.38400.39400.41200.118000.1038200 | Corridoor, staircase, shaft Plaster & whitewash | 120d | 2027-03-17 | 2027-07-14 | 6942 |  | Zenith | 8679714 |
| 6945 | 36900.37000.37400.38400.39400.41200.118000.1038300 | Staircase railing fixing | 100d | 2027-03-17 | 2027-06-24 | 6942 |  | Zenith | 8679704 |
| 6946 | 36900.37000.37400.38400.39400.41200.118000.1038400 | Fire staircase flooring | 120d | 2027-03-27 | 2027-07-24 | 6945FF+30d |  | Zenith | 8679694 |
| 6947 | 36900.37000.37400.38400.39400.41200.118000.1038500 | Main staircase flooring | 120d | 2027-03-27 | 2027-07-24 | 6945FF+30d |  | Zenith | 8679684 |
| 6948 | 36900.37000.37400.38400.39400.41200.118000.1038600 | Fire door work | 45d | 2027-07-25 | 2027-09-07 | 6946 |  | Zenith | 8679674 |
| 6949 | 36900.37000.37400.38400.39400.41200.118000.1038700 | Lobby flooring & Corridor | 120d | 2027-04-26 | 2027-08-23 | 6947FF+30d |  | Zenith | 8679664 |
| 6950 | 36900.37000.37400.38400.39400.41200.118000.1038800 | Ceiling & wall putty | 120d | 2027-07-28 | 2028-01-09 | 6948FF+15d, 6949FF+30d, 6897FF+30d |  | Zenith | 8679654 |
| 6951 | 36900.37000.37400.38400.39400.41200.118000.1038900 | Electrical wiring work | 120d | 2027-08-12 | 2028-01-24 | 6950FF+15d |  | Zenith | 8679644 |
| 6952 | 36900.37000.37400.38400.39400.41200.118000.1039000 | Ceiling & wall painting | 120d | 2027-09-01 | 2028-02-13 | 6943FS+20d, 6950SS+20d, 6951FF+20d |  | Zenith | 8679634 |
| 6953 | 36900.37000.37400.38400.39400.41200.118000.1039100 | Light fixture supply & installation | 45d | 2028-01-24 | 2028-03-09 | 6950, 6952FF+25d |  | Zenith | 8679624 |
| 6954 | 36900.37000.37400.38400.120100 | **MEP work** | 260d | 2027-02-05 | 2027-10-22 |  | start no earlier than 2027-02-05 | Zenith | 8651914 |
| 6955 | 36900.37000.37400.38400.120100.127100 | **Electrical work** | 240d | 2027-02-05 | 2027-10-02 |  | start no earlier than 2027-02-05 | Zenith | 8651994 |
| 6956 | 36900.37000.37400.38400.120100.127100.826900 | Cable Tray | 90d | 2027-02-05 | 2027-05-05 | 6318 |  | Zenith | 8721754 |
| 6957 | 36900.37000.37400.38400.120100.127100.827000 | Cable, main & sub main | 60d | 2027-03-22 | 2027-05-20 | 6956SS+45d |  | Zenith | 8721744 |
| 6958 | 36900.37000.37400.38400.120100.127100.827100 | LT panel & DB | 90d | 2027-05-06 | 2027-08-03 | 6956 |  | Zenith | 8721734 |
| 6959 | 36900.37000.37400.38400.120100.127100.827200 | Rising main | 90d | 2027-05-21 | 2027-08-18 | 6956FS+15d |  | Zenith | 8721724 |
| 6960 | 36900.37000.37400.38400.120100.127100.827300 | Earthing Works | 60d | 2027-05-26 | 2027-07-24 | 6956FS+20d |  | Zenith | 8721714 |
| 6961 | 36900.37000.37400.38400.120100.127100.827400 | Energy meter | 60d | 2027-08-04 | 2027-10-02 | 6957, 6960FS+10d |  | Zenith | 8721704 |
| 6962 | 36900.37000.37400.38400.120100.127100.827500 | HVAC & Exhast fan | 120d | 2027-05-01 | 2027-08-28 | 6956FS-5d |  | Zenith | 8721694 |
| 6963 | 36900.37000.37400.38400.120100.127100.827600 | FTTH | 60d | 2027-07-20 | 2027-09-17 | 6958FS-15d |  | Zenith | 8721684 |
| 6964 | 36900.37000.37400.38400.120100.127100.827700 | Security System - FA & PA | 60d | 2027-08-04 | 2027-10-02 | 6958, 6959FF+10d, 6962FF+2d, 6963FF |  | Zenith | 8721674 |

| ID | WBS | Task | Duration | Start | Finish | Predecessors | Constraint | Calendar | Unique_Task_ID |
| --- | --- | --- | --- | --- | --- | --- | --- | --- | --- |
| 6965 | 36900.37000.37400.38400.120100.146700 | **Plumbing work** | 218d | 2027-03-19 | 2027-10-22 |  | start no earlier than 2027-03-19 | Zenith | 8652894 |
| 6966 | 36900.37000.37400.38400.120100.146700.827800 | Terrace looping | 45d | 2027-03-19 | 2027-05-02 | 6904 |  | Zenith | 8721664 |
| 6967 | 36900.37000.37400.38400.120100.146700.827900 | Shaft Plumbing | 70d | 2027-06-15 | 2027-08-23 | 6966, 6944FS-30d |  | Zenith | 8721654 |
| 6968 | 36900.37000.37400.38400.120100.146700.828000 | CP sanitary fixture supply | 45d | 2027-08-24 | 2027-10-07 | 6967 |  | Zenith | 8721644 |
| 6969 | 36900.37000.37400.38400.120100.146700.828100 | Cold & flushing water supply | 45d | 2027-08-24 | 2027-10-07 | 6967 |  | Zenith | 8721634 |
| 6970 | 36900.37000.37400.38400.120100.146700.828200 | Misc work | 30d | 2027-09-23 | 2027-10-22 | 6968FS-15d, 6969FS-15d |  | Zenith | 8721624 |
| 6971 | 36900.37000.37400.38400.120100.167300 | **Fire fighting work** | 121d | 2027-05-01 | 2027-08-29 |  | start no earlier than 2027-05-01 | Zenith | 8654064 |
| 6972 | 36900.37000.37400.38400.120100.167300.828300 | Fire hydrant work | 75d | 2027-05-01 | 2027-07-14 | 6944SS+45d |  | Zenith | 8721614 |
| 6973 | 36900.37000.37400.38400.120100.167300.828400 | Pipe connection & sprinkler installation | 45d | 2027-07-16 | 2027-08-29 | 6972FS+1d, 6975FF+15d |  | Zenith | 8721604 |
| 6974 | 36900.37000.37400.38400.120100.167300.828500 | Shaft Downtake works | 60d | 2027-05-16 | 2027-07-14 | 6904, 6944FS-60d |  | Zenith | 8721594 |
| 6975 | 36900.37000.37400.38400.120100.167300.828600 | Connection to pump room | 30d | 2027-07-15 | 2027-08-13 | 6974 |  | Zenith | 8721584 |
| 6976 | 36900.37000.37400.38400.120100.219000 | **Lift work** | 209.5d | 2027-03-27 | 2027-10-22 |  | start no earlier than 2027-03-27 | Zenith | 8656534 |
| 6977 | 36900.37000.37400.38400.120100.219000.828700 | Lift Shaft/Pit Handover | 40d | 2027-03-27 | 2027-05-06 | 6355FS+5d |  | Zenith | 8721574 |
| 6978 | 36900.37000.37400.38400.120100.219000.828800 | Lift installation work | 60d | 2027-05-06 | 2027-07-05 | 6977 |  | Zenith | 8721564 |
| 6979 | 36900.37000.37400.38400.120100.219000.828900 | Lift testing and commissioning | 60d | 2027-08-24 | 2027-10-22 | 6978, 6949 |  | Zenith | 8721554 |
| 6980 | 36900.37000.37400.38400.226700 | **Basement lobby** | 90d | 2027-05-21 | 2027-08-19 |  | start no earlier than 2027-05-21 | Zenith | 8656904 |
| 6981 | 36900.37000.37400.38400.226700.381500 | Basement lobby | 90d | 2027-05-21 | 2027-08-19 | 6977FS+15d, 6140FS+15d, 6141FS+15d |  | Zenith | 8730904 |
| 6982 | 36900.37000.37400.38400.223100 | **External Paint Works** | 113d | 2027-12-18 | 2028-04-09 |  | start no earlier than 2027-12-18 | Zenith | 8656754 |
| 6983 | 36900.37000.37400.38400.223100.381600 | Surface prepration with Primer | 60d | 2027-12-18 | 2028-02-16 | 6355FS+2d, 6940 |  | Zenith | 8730894 |
| 6984 | 36900.37000.37400.38400.223100.381700 | External Painting (Texture & first coat) | 100d | 2027-12-31 | 2028-04-09 | 6983FF+10d, 6898 |  | Zenith | 8730884 |
| 6985 | 36900.37000.37400.38400.277300 | OC Application/Readiness | 2d | 2028-05-07 | 2028-05-09 | 6313FF+349d, 6984FF+30d, 6973FF+30d, 6970FF, 6981FF+30d, 6979FF, 6964FF, 6961FF, 6905FF+30d, 6902FF+15d, 6950FF+0.25d, 6940FF, 6898FF+0.25d |  | Zenith | 8735144 |
| 6986 | 36900.37000.37400.38400.277400 | OC Receipt | 60d | 2028-05-09 | 2028-07-08 | 6985 |  | Zenith | 8735134 |
| 6987 | 36900.37000.37400.38400.126100 | **Post OC activities** | 416d | 2028-03-24 | 2029-06-28 |  | start no earlier than 2028-03-24 | Zenith | 8651954 |
| 6988 | 36900.37000.37400.38400.126100.381800 | CP & Sanitaryware | 150d | 2028-07-08 | 2029-01-19 | 6986 |  | Zenith | 8730874 |
| 6989 | 36900.37000.37400.38400.126100.381900 | Electrical Fixtures And Fittings | 150d | 2028-07-08 | 2029-01-19 | 6986 |  | Zenith | 8730864 |
| 6990 | 36900.37000.37400.38400.126100.382000 | Final coat paint external | 100d | 2028-07-08 | 2028-10-16 | 6986 |  | Zenith | 8730854 |
| 6991 | 36900.37000.37400.38400.126100.382100 | Final Coat Paint Internal | 150d | 2028-07-08 | 2029-01-19 | 6986, 6901 |  | Zenith | 8730844 |
| 6992 | 36900.37000.37400.38400.126100.382200 | Balcony Railing Glass Fixing | 120d | 2029-01-19 | 2029-05-19 | 6991, 6940FS+30d |  | Zenith | 8730834 |
| 6993 | 36900.37000.37400.38400.126100.382300 | MEP | 150d | 2028-03-24 | 2028-08-21 | 6953FS+15d |  | Zenith | 8730824 |
| 6994 | 36900.37000.37400.38400.126100.382400 | Wooden Flooring | 180d | 2028-06-23 | 2029-02-03 | 6991FF+15d |  | Zenith | 8730814 |
| 6995 | 36900.37000.37400.38400.126100.382500 | Split AC Units installation | 100d | 2029-02-18 | 2029-05-29 | 6994FS+15d |  | Zenith | 8730804 |
| 6996 | 36900.37000.37400.38400.126100.382600 | Misc. works (Modular Kitchen & others) | 180d | 2028-12-30 | 2029-06-28 | 6995FF+30d |  | Zenith | 8730794 |
| 6997 | 36900.37000.37400.38400.277500 | Offer To Possession | 180d | 2029-01-19 | 2029-07-18 | 6986FS+150d, 6988FF+20d, 6989FF+20d, 6990FF+20d, 6995FF+10d, 6993FF+30d, 6992FF+15d, 6996FF+15d |  | Zenith | 8735124 |

| ID | WBS | Task | Duration | Start | Finish | Predecessors | Complete | Constraint | Calendar | Unique_Task_ID |
| --- | --- | --- | --- | --- | --- | --- | --- | --- | --- | --- |
| 6998 | 36900.37000.37400.37800 | **Tower 08** | 1458d | 2025-01-24 | 2029-07-19 |  |  | start no earlier than 2025-01-24 | Zenith | 8647564 |
| 6999 | 36900.37000.37400.37800.63800 | **Sub-Structure Works** | 386d | 2025-01-24 | 2026-03-30 |  | 7% | start no earlier than 2025-01-24 | Zenith | 8648424 |
| 7000 | 36900.37000.37400.37800.63800.167200 | **Soil Bed Preparation** | 119d | 2025-01-24 | 2025-05-22 |  | 36% | start no earlier than 2025-01-24 | Zenith | 8656464 |
| 7001 | 36900.37000.37400.37800.63800.167200.829000 | Excavation (2m) | 1d | 2025-04-07 | 2025-04-07 |  |  | start no earlier than 2025-04-07 | Zenith | 8721544 |
| 7002 | 36900.37000.37400.37800.63800.167200.235200 | Mobilization & Soldier Piling with Excavation | 72d | 2025-01-24 | 2025-05-12 | 7952SS+18d | 41% | start no earlier than 2025-01-24 | Zenith | 8721534 |
| 7003 | 36900.37000.37400.37800.63800.167200.829100 | Foundation bulk Excavation | 9d | 2025-05-13 | 2025-05-21 | 7002 |  |  | Zenith | 8721524 |
| 7004 | 36900.37000.37400.37800.63800.167200.829200 | Soil dressing & ATT | 1d | 2025-05-22 | 2025-05-22 | 7003 |  |  | Zenith | 8721514 |
| 7005 | 36900.37000.37400.37800.63800.119900 | **Structure Works** | 126d | 2025-05-24 | 2025-09-26 |  |  | start no earlier than 2025-05-24 | Zenith | 8651714 |
| 7006 | 36900.37000.37400.37800.63800.119900.159400 | **Raft Foundation** | 26d | 2025-05-24 | 2025-06-18 |  |  | start no earlier than 2025-05-24 | Zenith | 8652654 |
| 7007 | 36900.37000.37400.37800.63800.119900.159400.1039200 | PCC | 3d | 2025-05-24 | 2025-05-26 | 7004FS+1d |  |  | Zenith | 8679614 |
| 7008 | 36900.37000.37400.37800.63800.119900.159400.1039300 | Column/SW layout marking | 4d | 2025-05-27 | 2025-05-30 | 7007 |  |  | Zenith | 8679604 |
| 7009 | 36900.37000.37400.37800.63800.119900.159400.1039400 | Reinforcement | 14d | 2025-05-30 | 2025-06-12 | 7008SS+3d |  |  | Zenith | 8679594 |
| 7010 | 36900.37000.37400.37800.63800.119900.159400.1039500 | Formwork (Conventional) | 4d | 2025-06-12 | 2025-06-15 | 7009FF+3d |  |  | Zenith | 8679584 |
| 7011 | 36900.37000.37400.37800.63800.119900.159400.1039600 | Concreting | 3d | 2025-06-16 | 2025-06-18 | 7010FF+3d |  |  | Zenith | 8679574 |
| 7012 | 36900.37000.37400.37800.63800.119900.137600 | **Basement 03 Roof Slab (Dummy)/stitch/tie slab** | 25d | 2025-06-19 | 2025-07-13 |  |  | start no earlier than 2025-06-19 | Zenith | 8652264 |
| 7013 | 36900.37000.37400.37800.63800.119900.137600.1039700 | Column/SW Reinforcement | 9d | 2025-06-19 | 2025-06-27 | 7011 |  |  | Zenith | 8679564 |
| 7014 | 36900.37000.37400.37800.63800.119900.137600.1039800 | SW Formwork (Conventional) | 9d | 2025-06-23 | 2025-07-01 | 7013SS+4d |  |  | Zenith | 8679554 |
| 7015 | 36900.37000.37400.37800.63800.119900.137600.1039900 | Column/SW Concreting | 9d | 2025-06-27 | 2025-07-05 | 7014SS+4d |  |  | Zenith | 8679544 |
| 7016 | 36900.37000.37400.37800.63800.119900.137600.1040000 | Slab Formwork (Conventional) | 9d | 2025-07-01 | 2025-07-09 | 7015SS+4d |  |  | Zenith | 8679534 |
| 7017 | 36900.37000.37400.37800.63800.119900.137600.1040100 | Slab Reinforcement + Conduting | 3d | 2025-07-10 | 2025-07-12 | 7016 |  |  | Zenith | 8679524 |
| 7018 | 36900.37000.37400.37800.63800.119900.137600.1040200 | Concreting | 1d | 2025-07-13 | 2025-07-13 | 7017 |  |  | Zenith | 8679514 |
| 7019 | 36900.37000.37400.37800.63800.119900.137700 | **Basement 02 Roof Slab** | 25d | 2025-07-14 | 2025-08-07 |  |  | start no earlier than 2025-07-14 | Zenith | 8652274 |
| 7020 | 36900.37000.37400.37800.63800.119900.137700.1040300 | Column/SW Reinforcement | 9d | 2025-07-14 | 2025-07-22 | 7018 |  |  | Zenith | 8679504 |
| 7021 | 36900.37000.37400.37800.63800.119900.137700.1040400 | SW Formwork (Conventional) | 9d | 2025-07-18 | 2025-07-26 | 7020SS+4d |  |  | Zenith | 8679494 |
| 7022 | 36900.37000.37400.37800.63800.119900.137700.1040500 | Column/SW Concreting | 9d | 2025-07-22 | 2025-07-30 | 7021SS+4d |  |  | Zenith | 8679484 |
| 7023 | 36900.37000.37400.37800.63800.119900.137700.1040600 | Slab Formwork (Conventional) | 9d | 2025-07-26 | 2025-08-03 | 7022SS+4d |  |  | Zenith | 8679474 |
| 7024 | 36900.37000.37400.37800.63800.119900.137700.1040700 | Slab Reinforcement + Conduting | 3d | 2025-08-04 | 2025-08-06 | 7023 |  |  | Zenith | 8679464 |
| 7025 | 36900.37000.37400.37800.63800.119900.137700.1040800 | Concreting | 1d | 2025-08-07 | 2025-08-07 | 7024 |  |  | Zenith | 8679454 |

| ID | WBS | Task | Duration | Start | Finish | Predecessors | Constraint | Calendar | Unique_Task_ID |
| --- | --- | --- | --- | --- | --- | --- | --- | --- | --- |
| 7026 | 36900.37000.37400.37800.63800.119900.137800 | **Basement 01 Roof Slab** | 25d | 2025-08-08 | 2025-09-01 |  | start no earlier than 2025-08-08 | Zenith | 8652284 |
| 7027 | 36900.37000.37400.37800.63800.119900.137800.1040900 | Column/SW Reinforcement | 9d | 2025-08-08 | 2025-08-16 | 7025 |  | Zenith | 8679444 |
| 7028 | 36900.37000.37400.37800.63800.119900.137800.1041000 | SW Formwork (Conventional) | 9d | 2025-08-12 | 2025-08-20 | 7027SS+4d |  | Zenith | 8679434 |
| 7029 | 36900.37000.37400.37800.63800.119900.137800.1041100 | Column/SW Concreting | 9d | 2025-08-16 | 2025-08-24 | 7028SS+4d |  | Zenith | 8679424 |
| 7030 | 36900.37000.37400.37800.63800.119900.137800.1041200 | Slab Formwork (Conventional) | 9d | 2025-08-20 | 2025-08-28 | 7029SS+4d |  | Zenith | 8679414 |
| 7031 | 36900.37000.37400.37800.63800.119900.137800.1041300 | Slab Reinforcement + Conduting | 3d | 2025-08-29 | 2025-08-31 | 7030 |  | Zenith | 8679404 |
| 7032 | 36900.37000.37400.37800.63800.119900.137800.1041400 | Concreting | 1d | 2025-09-01 | 2025-09-01 | 7031 |  | Zenith | 8679394 |
| 7033 | 36900.37000.37400.37800.63800.119900.137900 | **Podium Slab/Ground Roof Floor Slab** | 25d | 2025-09-02 | 2025-09-26 |  | start no earlier than 2025-09-02 | Zenith | 8652294 |
| 7034 | 36900.37000.37400.37800.63800.119900.137900.1041500 | Column/SW Reinforcement | 9d | 2025-09-02 | 2025-09-10 | 7032 |  | Zenith | 8679384 |
| 7035 | 36900.37000.37400.37800.63800.119900.137900.1041600 | SW Formwork (Conventional) | 9d | 2025-09-06 | 2025-09-14 | 7034SS+4d |  | Zenith | 8679374 |
| 7036 | 36900.37000.37400.37800.63800.119900.137900.1041700 | Column/SW Concreting | 9d | 2025-09-10 | 2025-09-18 | 7035SS+4d |  | Zenith | 8679364 |
| 7037 | 36900.37000.37400.37800.63800.119900.137900.1041800 | Slab Formwork (Conventional) | 9d | 2025-09-14 | 2025-09-22 | 7036SS+4d |  | Zenith | 8679354 |
| 7038 | 36900.37000.37400.37800.63800.119900.137900.1041900 | Slab Reinforcement + Conduting | 3d | 2025-09-23 | 2025-09-25 | 7037 |  | Zenith | 8679344 |
| 7039 | 36900.37000.37400.37800.63800.119900.137900.1042000 | Concreting | 1d | 2025-09-26 | 2025-09-26 | 7038 |  | Zenith | 8679334 |
| 7040 | 36900.37000.37400.37800.63800.167100 | **Substructure Finishes** | 110d | 2025-10-27 | 2026-03-30 |  | start no earlier than 2025-10-27 | Zenith | 8656474 |
| 7041 | 36900.37000.37400.37800.63800.167100.829300 | Masonary Work | 35d | 2025-10-27 | 2026-01-14 | 7039FS+30d |  | Zenith | 8721504 |
| 7042 | 36900.37000.37400.37800.63800.167100.829400 | Plaster Work | 30d | 2026-01-15 | 2026-02-13 | 7041 |  | Zenith | 8721494 |
| 7043 | 36900.37000.37400.37800.63800.167100.829500 | Structural Steel work | 50d | 2026-01-10 | 2026-02-28 | 7039FS+60d |  | Zenith | 8721484 |
| 7044 | 36900.37000.37400.37800.63800.167100.829600 | White Wash | 35d | 2026-02-24 | 2026-03-30 | 7042FS+10d |  | Zenith | 8721474 |
| 7045 | 36900.37000.37400.37800.38800 | **Superstructure** | 762d | 2025-09-27 | 2028-03-11 |  | start no earlier than 2025-09-27 | Zenith | 8647644 |
| 7046 | 36900.37000.37400.37800.38800.44200 | **RCC structure** | 394d | 2025-09-27 | 2027-01-23 |  | start no earlier than 2025-09-27 | Zenith | 8647924 |
| 7047 | 36900.37000.37400.37800.38800.44200.188700 | **1st Floor Roof slab** | 24d | 2025-09-27 | 2025-10-20 |  | start no earlier than 2025-09-27 | Zenith | 8655694 |
| 7048 | 36900.37000.37400.37800.38800.44200.188700.1042100 | Reinforcement | 19d | 2025-09-27 | 2025-10-15 | 7039 |  | Zenith | 8679324 |
| 7049 | 36900.37000.37400.37800.38800.44200.188700.1042200 | Conduiting | 19d | 2025-09-30 | 2025-10-18 | 7048SS+3d |  | Zenith | 8679314 |
| 7050 | 36900.37000.37400.37800.38800.44200.188700.1042300 | Formwork | 19d | 2025-10-01 | 2025-10-19 | 7048SS+4d |  | Zenith | 8679304 |
| 7051 | 36900.37000.37400.37800.38800.44200.188700.1042400 | Concreting | 1d | 2025-10-20 | 2025-10-20 | 7049FS+1d, 7050 |  | Zenith | 8679294 |

| ID | WBS | Task | Duration | Start | Finish | Predecessors | Constraint | Calendar | Unique_Task_ID |
| --- | --- | --- | --- | --- | --- | --- | --- | --- | --- |
| 7052 | 36900.37000.37400.37800.38800.44200.188800 | **2nd Floor Roof slab** | 21d | 2025-10-21 | 2025-12-25 |  | start no earlier than 2025-10-21 | Zenith | 8655684 |
| 7053 | 36900.37000.37400.37800.38800.44200.188800.1042500 | Reinforcement | 16d | 2025-10-21 | 2025-12-20 | 7051 |  | Zenith | 8679284 |
| 7054 | 36900.37000.37400.37800.38800.44200.188800.1042600 | Conduiting | 16d | 2025-10-24 | 2025-12-23 | 7053SS+3d |  | Zenith | 8679274 |
| 7055 | 36900.37000.37400.37800.38800.44200.188800.1042700 | Formwork | 16d | 2025-10-25 | 2025-12-24 | 7053SS+4d |  | Zenith | 8679264 |
| 7056 | 36900.37000.37400.37800.38800.44200.188800.1042800 | Concreting | 1d | 2025-12-25 | 2025-12-25 | 7054FS+1d, 7055 |  | Zenith | 8679254 |
| 7057 | 36900.37000.37400.37800.38800.44200.188900 | **3rd Floor Roof slab** | 15d | 2025-12-26 | 2026-01-09 |  | start no earlier than 2025-12-26 | Zenith | 8655674 |
| 7058 | 36900.37000.37400.37800.38800.44200.188900.1042900 | Reinforcement | 10d | 2025-12-26 | 2026-01-04 | 7056 |  | Zenith | 8679244 |
| 7059 | 36900.37000.37400.37800.38800.44200.188900.1043000 | Conduiting | 10d | 2025-12-29 | 2026-01-07 | 7058SS+3d |  | Zenith | 8679234 |
| 7060 | 36900.37000.37400.37800.38800.44200.188900.1043100 | Formwork | 10d | 2025-12-30 | 2026-01-08 | 7058SS+4d |  | Zenith | 8679224 |
| 7061 | 36900.37000.37400.37800.38800.44200.188900.1043200 | Concreting | 1d | 2026-01-09 | 2026-01-09 | 7059FS+1d, 7060 |  | Zenith | 8679214 |
| 7062 | 36900.37000.37400.37800.38800.44200.189100 | **4th floor roof slab** | 9d | 2026-01-10 | 2026-01-18 |  | start no earlier than 2026-01-10 | Zenith | 8655664 |
| 7063 | 36900.37000.37400.37800.38800.44200.189100.1043300 | Reinforcement | 6d | 2026-01-10 | 2026-01-15 | 7061 |  | Zenith | 8679204 |
| 7064 | 36900.37000.37400.37800.38800.44200.189100.1043400 | Conduiting | 6d | 2026-01-11 | 2026-01-16 | 7063SS+1d |  | Zenith | 8679194 |
| 7065 | 36900.37000.37400.37800.38800.44200.189100.1043500 | Formwork | 6d | 2026-01-12 | 2026-01-17 | 7063SS+2d |  | Zenith | 8679184 |
| 7066 | 36900.37000.37400.37800.38800.44200.189100.1043600 | Concreting | 1d | 2026-01-18 | 2026-01-18 | 7064FS+1d, 7065 |  | Zenith | 8679174 |
| 7067 | 36900.37000.37400.37800.38800.44200.189200 | **5th floor roof slab** | 9d | 2026-01-19 | 2026-01-27 |  | start no earlier than 2026-01-19 | Zenith | 8655654 |
| 7068 | 36900.37000.37400.37800.38800.44200.189200.1043700 | Reinforcement | 6d | 2026-01-19 | 2026-01-24 | 7066 |  | Zenith | 8679164 |
| 7069 | 36900.37000.37400.37800.38800.44200.189200.1043800 | Conduiting | 6d | 2026-01-20 | 2026-01-25 | 7068SS+1d |  | Zenith | 8679154 |
| 7070 | 36900.37000.37400.37800.38800.44200.189200.1043900 | Formwork | 6d | 2026-01-21 | 2026-01-26 | 7068SS+2d |  | Zenith | 8679144 |
| 7071 | 36900.37000.37400.37800.38800.44200.189200.1044000 | Concreting | 1d | 2026-01-27 | 2026-01-27 | 7069FS+1d, 7070 |  | Zenith | 8679134 |
| 7072 | 36900.37000.37400.37800.38800.44200.189300 | **6th floor roof slab** | 9d | 2026-01-28 | 2026-02-05 |  | start no earlier than 2026-01-28 | Zenith | 8655644 |
| 7073 | 36900.37000.37400.37800.38800.44200.189300.1044100 | Reinforcement | 6d | 2026-01-28 | 2026-02-02 | 7071 |  | Zenith | 8679124 |
| 7074 | 36900.37000.37400.37800.38800.44200.189300.1044200 | Conduiting | 6d | 2026-01-29 | 2026-02-03 | 7073SS+1d |  | Zenith | 8679114 |
| 7075 | 36900.37000.37400.37800.38800.44200.189300.1044300 | Formwork | 6d | 2026-01-30 | 2026-02-04 | 7073SS+2d |  | Zenith | 8679104 |
| 7076 | 36900.37000.37400.37800.38800.44200.189300.1044400 | Concreting | 1d | 2026-02-05 | 2026-02-05 | 7074FS+1d, 7075 |  | Zenith | 8679094 |

| ID | WBS | Task | Duration | Start | Finish | Predecessors | Constraint | Calendar | Unique_Task_ID |
| --- | --- | --- | --- | --- | --- | --- | --- | --- | --- |
| 7077 | 36900.37000.37400.37800.38800.44200.189400 | **7th floor roof slab** | 9d | 2026-02-06 | 2026-02-14 |  | start no earlier than 2026-02-06 | Zenith | 8655634 |
| 7078 | 36900.37000.37400.37800.38800.44200.189400.1044500 | Reinforcement | 6d | 2026-02-06 | 2026-02-11 | 7076 |  | Zenith | 8679084 |
| 7079 | 36900.37000.37400.37800.38800.44200.189400.1044600 | Conduiting | 6d | 2026-02-07 | 2026-02-12 | 7078SS+1d |  | Zenith | 8679074 |
| 7080 | 36900.37000.37400.37800.38800.44200.189400.1044700 | Formwork | 6d | 2026-02-08 | 2026-02-13 | 7078SS+2d |  | Zenith | 8679064 |
| 7081 | 36900.37000.37400.37800.38800.44200.189400.1044800 | Concreting | 1d | 2026-02-14 | 2026-02-14 | 7079FS+1d, 7080 |  | Zenith | 8679054 |
| 7082 | 36900.37000.37400.37800.38800.44200.189500 | **8th floor roof slab** | 9d | 2026-02-15 | 2026-02-23 |  | start no earlier than 2026-02-15 | Zenith | 8655624 |
| 7083 | 36900.37000.37400.37800.38800.44200.189500.1044900 | Reinforcement | 6d | 2026-02-15 | 2026-02-20 | 7081 |  | Zenith | 8679044 |
| 7084 | 36900.37000.37400.37800.38800.44200.189500.1045000 | Conduiting | 6d | 2026-02-16 | 2026-02-21 | 7083SS+1d |  | Zenith | 8679034 |
| 7085 | 36900.37000.37400.37800.38800.44200.189500.1045100 | Formwork | 6d | 2026-02-17 | 2026-02-22 | 7083SS+2d |  | Zenith | 8679024 |
| 7086 | 36900.37000.37400.37800.38800.44200.189500.1045200 | Concreting | 1d | 2026-02-23 | 2026-02-23 | 7084FS+1d, 7085 |  | Zenith | 8679014 |
| 7087 | 36900.37000.37400.37800.38800.44200.189600 | **9th floor roof slab** | 9d | 2026-02-24 | 2026-03-04 |  | start no earlier than 2026-02-24 | Zenith | 8655614 |
| 7088 | 36900.37000.37400.37800.38800.44200.189600.1045300 | Reinforcement | 6d | 2026-02-24 | 2026-03-01 | 7086 |  | Zenith | 8679004 |
| 7089 | 36900.37000.37400.37800.38800.44200.189600.1045400 | Conduiting | 6d | 2026-02-25 | 2026-03-02 | 7088SS+1d |  | Zenith | 8678994 |
| 7090 | 36900.37000.37400.37800.38800.44200.189600.1045500 | Formwork | 6d | 2026-02-26 | 2026-03-03 | 7088SS+2d |  | Zenith | 8678984 |
| 7091 | 36900.37000.37400.37800.38800.44200.189600.1045600 | Concreting | 1d | 2026-03-04 | 2026-03-04 | 7089FS+1d, 7090 |  | Zenith | 8678974 |
| 7092 | 36900.37000.37400.37800.38800.44200.189700 | **10th floor roof slab** | 9d | 2026-03-05 | 2026-03-13 |  | start no earlier than 2026-03-05 | Zenith | 8655604 |
| 7093 | 36900.37000.37400.37800.38800.44200.189700.1045700 | Reinforcement | 6d | 2026-03-05 | 2026-03-10 | 7091 |  | Zenith | 8678964 |
| 7094 | 36900.37000.37400.37800.38800.44200.189700.1045800 | Conduiting | 6d | 2026-03-06 | 2026-03-11 | 7093SS+1d |  | Zenith | 8678954 |
| 7095 | 36900.37000.37400.37800.38800.44200.189700.1045900 | Formwork | 6d | 2026-03-07 | 2026-03-12 | 7093SS+2d |  | Zenith | 8678944 |
| 7096 | 36900.37000.37400.37800.38800.44200.189700.1046000 | Concreting | 1d | 2026-03-13 | 2026-03-13 | 7094FS+1d, 7095 |  | Zenith | 8678934 |
| 7097 | 36900.37000.37400.37800.38800.44200.189800 | **11th floor roof slab** | 9d | 2026-03-14 | 2026-03-22 |  | start no earlier than 2026-03-14 | Zenith | 8655594 |
| 7098 | 36900.37000.37400.37800.38800.44200.189800.1046100 | Reinforcement | 6d | 2026-03-14 | 2026-03-19 | 7096 |  | Zenith | 8678924 |
| 7099 | 36900.37000.37400.37800.38800.44200.189800.1046200 | Conduiting | 6d | 2026-03-15 | 2026-03-20 | 7098SS+1d |  | Zenith | 8678914 |
| 7100 | 36900.37000.37400.37800.38800.44200.189800.1046300 | Formwork | 6d | 2026-03-16 | 2026-03-21 | 7098SS+2d |  | Zenith | 8678904 |
| 7101 | 36900.37000.37400.37800.38800.44200.189800.1046400 | Concreting | 1d | 2026-03-22 | 2026-03-22 | 7099FS+1d, 7100 |  | Zenith | 8678894 |

| ID | WBS | Task | Duration | Start | Finish | Predecessors | Constraint | Calendar | Unique_Task_ID |
| --- | --- | --- | --- | --- | --- | --- | --- | --- | --- |
| 7102 | 36900.37000.37400.37800.38800.44200.189900 | **12th floor roof slab** | 9d | 2026-03-23 | 2026-03-31 |  | start no earlier than 2026-03-23 | Zenith | 8655574 |
| 7103 | 36900.37000.37400.37800.38800.44200.189900.1046500 | Reinforcement | 6d | 2026-03-23 | 2026-03-28 | 7101 |  | Zenith | 8678884 |
| 7104 | 36900.37000.37400.37800.38800.44200.189900.1046600 | Conduiting | 6d | 2026-03-24 | 2026-03-29 | 7103SS+1d |  | Zenith | 8678874 |
| 7105 | 36900.37000.37400.37800.38800.44200.189900.1046700 | Formwork | 6d | 2026-03-25 | 2026-03-30 | 7103SS+2d |  | Zenith | 8678864 |
| 7106 | 36900.37000.37400.37800.38800.44200.189900.1046800 | Concreting | 1d | 2026-03-31 | 2026-03-31 | 7104FS+1d, 7105 |  | Zenith | 8678854 |
| 7107 | 36900.37000.37400.37800.38800.44200.190000 | **13th floor roof slab** | 9d | 2026-04-01 | 2026-04-09 |  | start no earlier than 2026-04-01 | Zenith | 8655564 |
| 7108 | 36900.37000.37400.37800.38800.44200.190000.1046900 | Reinforcement | 6d | 2026-04-01 | 2026-04-06 | 7106 |  | Zenith | 8678844 |
| 7109 | 36900.37000.37400.37800.38800.44200.190000.1047000 | Conduiting | 6d | 2026-04-02 | 2026-04-07 | 7108SS+1d |  | Zenith | 8678834 |
| 7110 | 36900.37000.37400.37800.38800.44200.190000.1047100 | Formwork | 6d | 2026-04-03 | 2026-04-08 | 7108SS+2d |  | Zenith | 8678824 |
| 7111 | 36900.37000.37400.37800.38800.44200.190000.1047200 | Concreting | 1d | 2026-04-09 | 2026-04-09 | 7109FS+1d, 7110 |  | Zenith | 8678814 |
| 7112 | 36900.37000.37400.37800.38800.44200.190100 | **14th floor roof slab** | 9d | 2026-04-10 | 2026-04-18 |  | start no earlier than 2026-04-10 | Zenith | 8655554 |
| 7113 | 36900.37000.37400.37800.38800.44200.190100.1047300 | Reinforcement | 6d | 2026-04-10 | 2026-04-15 | 7111 |  | Zenith | 8678804 |
| 7114 | 36900.37000.37400.37800.38800.44200.190100.1047400 | Conduiting | 6d | 2026-04-11 | 2026-04-16 | 7113SS+1d |  | Zenith | 8678794 |
| 7115 | 36900.37000.37400.37800.38800.44200.190100.1047500 | Formwork | 6d | 2026-04-12 | 2026-04-17 | 7113SS+2d |  | Zenith | 8678784 |
| 7116 | 36900.37000.37400.37800.38800.44200.190100.1047600 | Concreting | 1d | 2026-04-18 | 2026-04-18 | 7114FS+1d, 7115 |  | Zenith | 8678774 |
| 7117 | 36900.37000.37400.37800.38800.44200.190300 | **15th floor roof slab** | 9d | 2026-04-19 | 2026-04-27 |  | start no earlier than 2026-04-19 | Zenith | 8655544 |
| 7118 | 36900.37000.37400.37800.38800.44200.190300.1047700 | Reinforcement | 6d | 2026-04-19 | 2026-04-24 | 7116 |  | Zenith | 8678764 |
| 7119 | 36900.37000.37400.37800.38800.44200.190300.1047800 | Conduiting | 6d | 2026-04-20 | 2026-04-25 | 7118SS+1d |  | Zenith | 8678754 |
| 7120 | 36900.37000.37400.37800.38800.44200.190300.1047900 | Formwork | 6d | 2026-04-21 | 2026-04-26 | 7118SS+2d |  | Zenith | 8678744 |
| 7121 | 36900.37000.37400.37800.38800.44200.190300.1048000 | Concreting | 1d | 2026-04-27 | 2026-04-27 | 7119FS+1d, 7120 |  | Zenith | 8678734 |
| 7122 | 36900.37000.37400.37800.38800.44200.190400 | **16th floor roof slab** | 9d | 2026-04-28 | 2026-05-06 |  | start no earlier than 2026-04-28 | Zenith | 8655534 |
| 7123 | 36900.37000.37400.37800.38800.44200.190400.1048100 | Reinforcement | 6d | 2026-04-28 | 2026-05-03 | 7121 |  | Zenith | 8678724 |
| 7124 | 36900.37000.37400.37800.38800.44200.190400.1048200 | Conduiting | 6d | 2026-04-29 | 2026-05-04 | 7123SS+1d |  | Zenith | 8678714 |
| 7125 | 36900.37000.37400.37800.38800.44200.190400.1048300 | Formwork | 6d | 2026-04-30 | 2026-05-05 | 7123SS+2d |  | Zenith | 8678704 |
| 7126 | 36900.37000.37400.37800.38800.44200.190400.1048400 | Concreting | 1d | 2026-05-06 | 2026-05-06 | 7124, 7125 |  | Zenith | 8678694 |

| ID | WBS | Task | Duration | Start | Finish | Predecessors | Constraint | Calendar | Unique_Task_ID |
| --- | --- | --- | --- | --- | --- | --- | --- | --- | --- |
| 7127 | 36900.37000.37400.37800.38800.44200.190500 | **17th floor roof slab** | 8d | 2026-05-07 | 2026-05-14 |  | start no earlier than 2026-05-07 | Zenith | 8655524 |
| 7128 | 36900.37000.37400.37800.38800.44200.190500.1048500 | Reinforcement | 6d | 2026-05-07 | 2026-05-12 | 7126 |  | Zenith | 8678684 |
| 7129 | 36900.37000.37400.37800.38800.44200.190500.1048600 | Conduiting | 6d | 2026-05-08 | 2026-05-13 | 7128SS+1d |  | Zenith | 8678674 |
| 7130 | 36900.37000.37400.37800.38800.44200.190500.1048700 | Formwork | 6d | 2026-05-08 | 2026-05-13 | 7128SS+1d |  | Zenith | 8678664 |
| 7131 | 36900.37000.37400.37800.38800.44200.190500.1048800 | Concreting | 1d | 2026-05-14 | 2026-05-14 | 7129, 7130 |  | Zenith | 8678654 |
| 7132 | 36900.37000.37400.37800.38800.44200.190600 | **18th floor roof slab** | 8d | 2026-05-15 | 2026-05-22 |  | start no earlier than 2026-05-15 | Zenith | 8655514 |
| 7133 | 36900.37000.37400.37800.38800.44200.190600.1048900 | Reinforcement | 5d | 2026-05-15 | 2026-05-19 | 7131 |  | Zenith | 8678644 |
| 7134 | 36900.37000.37400.37800.38800.44200.190600.1049000 | Conduiting | 5d | 2026-05-16 | 2026-05-20 | 7133SS+1d |  | Zenith | 8678634 |
| 7135 | 36900.37000.37400.37800.38800.44200.190600.1049100 | Formwork | 5d | 2026-05-17 | 2026-05-21 | 7133SS+2d |  | Zenith | 8678624 |
| 7136 | 36900.37000.37400.37800.38800.44200.190600.1049200 | Concreting | 1d | 2026-05-22 | 2026-05-22 | 7134FS+1d, 7135 |  | Zenith | 8678614 |
| 7137 | 36900.37000.37400.37800.38800.44200.190700 | **19th floor roof slab** | 8d | 2026-05-23 | 2026-05-30 |  | start no earlier than 2026-05-23 | Zenith | 8655504 |
| 7138 | 36900.37000.37400.37800.38800.44200.190700.1049300 | Reinforcement | 5d | 2026-05-23 | 2026-05-27 | 7136 |  | Zenith | 8678604 |
| 7139 | 36900.37000.37400.37800.38800.44200.190700.1049400 | Conduiting | 5d | 2026-05-24 | 2026-05-28 | 7138SS+1d |  | Zenith | 8678594 |
| 7140 | 36900.37000.37400.37800.38800.44200.190700.1049500 | Formwork | 5d | 2026-05-25 | 2026-05-29 | 7138SS+2d |  | Zenith | 8678584 |
| 7141 | 36900.37000.37400.37800.38800.44200.190700.1049600 | Concreting | 1d | 2026-05-30 | 2026-05-30 | 7139FS+1d, 7140 |  | Zenith | 8678574 |
| 7142 | 36900.37000.37400.37800.38800.44200.190800 | **20th floor roof slab** | 8d | 2026-05-31 | 2026-06-07 |  | start no earlier than 2026-05-31 | Zenith | 8655494 |
| 7143 | 36900.37000.37400.37800.38800.44200.190800.1049700 | Reinforcement | 5d | 2026-05-31 | 2026-06-04 | 7141 |  | Zenith | 8678564 |
| 7144 | 36900.37000.37400.37800.38800.44200.190800.1049800 | Conduiting | 5d | 2026-06-01 | 2026-06-05 | 7143SS+1d |  | Zenith | 8678554 |
| 7145 | 36900.37000.37400.37800.38800.44200.190800.1049900 | Formwork | 5d | 2026-06-02 | 2026-06-06 | 7143SS+2d |  | Zenith | 8678544 |
| 7146 | 36900.37000.37400.37800.38800.44200.190800.1050000 | Concreting | 1d | 2026-06-07 | 2026-06-07 | 7144FS+1d, 7145 |  | Zenith | 8678534 |
| 7147 | 36900.37000.37400.37800.38800.44200.191100 | **21st floor roof slab** | 8d | 2026-06-08 | 2026-06-15 |  | start no earlier than 2026-06-08 | Zenith | 8655474 |
| 7148 | 36900.37000.37400.37800.38800.44200.191100.1050100 | Reinforcement | 5d | 2026-06-08 | 2026-06-12 | 7146 |  | Zenith | 8678524 |
| 7149 | 36900.37000.37400.37800.38800.44200.191100.1050200 | Conduiting | 5d | 2026-06-09 | 2026-06-13 | 7148SS+1d |  | Zenith | 8678514 |
| 7150 | 36900.37000.37400.37800.38800.44200.191100.1050300 | Formwork | 5d | 2026-06-10 | 2026-06-14 | 7148SS+2d |  | Zenith | 8678504 |
| 7151 | 36900.37000.37400.37800.38800.44200.191100.1050400 | Concreting | 1d | 2026-06-15 | 2026-06-15 | 7149FS+1d, 7150 |  | Zenith | 8678494 |

| ID | WBS | Task | Duration | Start | Finish | Predecessors | Constraint | Calendar | Unique_Task_ID |
| --- | --- | --- | --- | --- | --- | --- | --- | --- | --- |
| 7152 | 36900.37000.37400.37800.38800.44200.191200 | **22nd floor roof slab** | 8d | 2026-06-16 | 2026-06-23 |  | start no earlier than 2026-06-16 | Zenith | 8655444 |
| 7153 | 36900.37000.37400.37800.38800.44200.191200.1050500 | Reinforcement | 5d | 2026-06-16 | 2026-06-20 | 7151 |  | Zenith | 8678484 |
| 7154 | 36900.37000.37400.37800.38800.44200.191200.1050600 | Conduiting | 5d | 2026-06-17 | 2026-06-21 | 7153SS+1d |  | Zenith | 8678474 |
| 7155 | 36900.37000.37400.37800.38800.44200.191200.1050700 | Formwork | 5d | 2026-06-18 | 2026-06-22 | 7153SS+2d |  | Zenith | 8678464 |
| 7156 | 36900.37000.37400.37800.38800.44200.191200.1050800 | Concreting | 1d | 2026-06-23 | 2026-06-23 | 7154FS+1d, 7155 |  | Zenith | 8678454 |
| 7157 | 36900.37000.37400.37800.38800.44200.191400 | **23rd floor roof slab** | 8d | 2026-06-24 | 2026-07-01 |  | start no earlier than 2026-06-24 | Zenith | 8655414 |
| 7158 | 36900.37000.37400.37800.38800.44200.191400.1050900 | Reinforcement | 5d | 2026-06-24 | 2026-06-28 | 7156 |  | Zenith | 8678444 |
| 7159 | 36900.37000.37400.37800.38800.44200.191400.1051000 | Conduiting | 5d | 2026-06-25 | 2026-06-29 | 7158SS+1d |  | Zenith | 8678434 |
| 7160 | 36900.37000.37400.37800.38800.44200.191400.1051100 | Formwork | 5d | 2026-06-26 | 2026-06-30 | 7158SS+2d |  | Zenith | 8678424 |
| 7161 | 36900.37000.37400.37800.38800.44200.191400.1051200 | Concreting | 1d | 2026-07-01 | 2026-07-01 | 7159FS+1d, 7160 |  | Zenith | 8678414 |
| 7162 | 36900.37000.37400.37800.38800.44200.191500 | **24th floor roof slab** | 8d | 2026-07-02 | 2026-07-09 |  | start no earlier than 2026-07-02 | Zenith | 8655404 |
| 7163 | 36900.37000.37400.37800.38800.44200.191500.1051300 | Reinforcement | 5d | 2026-07-02 | 2026-07-06 | 7161 |  | Zenith | 8678404 |
| 7164 | 36900.37000.37400.37800.38800.44200.191500.1051400 | Conduiting | 5d | 2026-07-03 | 2026-07-07 | 7163SS+1d |  | Zenith | 8678394 |
| 7165 | 36900.37000.37400.37800.38800.44200.191500.1051500 | Formwork | 5d | 2026-07-04 | 2026-07-08 | 7163SS+2d |  | Zenith | 8678384 |
| 7166 | 36900.37000.37400.37800.38800.44200.191500.1051600 | Concreting | 1d | 2026-07-09 | 2026-07-09 | 7164FS+1d, 7165 |  | Zenith | 8678374 |
| 7167 | 36900.37000.37400.37800.38800.44200.191600 | **25th floor roof slab** | 8d | 2026-07-10 | 2026-07-17 |  | start no earlier than 2026-07-10 | Zenith | 8655394 |
| 7168 | 36900.37000.37400.37800.38800.44200.191600.1051700 | Reinforcement | 5d | 2026-07-10 | 2026-07-14 | 7166 |  | Zenith | 8678364 |
| 7169 | 36900.37000.37400.37800.38800.44200.191600.1051800 | Conduiting | 5d | 2026-07-11 | 2026-07-15 | 7168SS+1d |  | Zenith | 8678354 |
| 7170 | 36900.37000.37400.37800.38800.44200.191600.1051900 | Formwork | 5d | 2026-07-12 | 2026-07-16 | 7168SS+2d |  | Zenith | 8678344 |
| 7171 | 36900.37000.37400.37800.38800.44200.191600.1052000 | Concreting | 1d | 2026-07-17 | 2026-07-17 | 7169FS+1d, 7170 |  | Zenith | 8678334 |
| 7172 | 36900.37000.37400.37800.38800.44200.191700 | **26th floor roof slab** | 8d | 2026-07-18 | 2026-07-25 |  | start no earlier than 2026-07-18 | Zenith | 8655384 |
| 7173 | 36900.37000.37400.37800.38800.44200.191700.1052100 | Reinforcement | 5d | 2026-07-18 | 2026-07-22 | 7171 |  | Zenith | 8678324 |
| 7174 | 36900.37000.37400.37800.38800.44200.191700.1052200 | Conduiting | 5d | 2026-07-19 | 2026-07-23 | 7173SS+1d |  | Zenith | 8678314 |
| 7175 | 36900.37000.37400.37800.38800.44200.191700.1052300 | Formwork | 5d | 2026-07-20 | 2026-07-24 | 7173SS+2d |  | Zenith | 8678304 |
| 7176 | 36900.37000.37400.37800.38800.44200.191700.1052400 | Concreting | 1d | 2026-07-25 | 2026-07-25 | 7174FS+1d, 7175 |  | Zenith | 8678294 |

| ID | WBS | Task | Duration | Start | Finish | Predecessors | Constraint | Calendar | Unique_Task_ID |
| --- | --- | --- | --- | --- | --- | --- | --- | --- | --- |
| 7177 | 36900.37000.37400.37800.38800.44200.191800 | **27th floor roof slab** | 8d | 2026-07-26 | 2026-08-02 |  | start no earlier than 2026-07-26 | Zenith | 8655374 |
| 7178 | 36900.37000.37400.37800.38800.44200.191800.1052500 | Reinforcement | 5d | 2026-07-26 | 2026-07-30 | 7176 |  | Zenith | 8678284 |
| 7179 | 36900.37000.37400.37800.38800.44200.191800.1052600 | Conduiting | 5d | 2026-07-27 | 2026-07-31 | 7178SS+1d |  | Zenith | 8678274 |
| 7180 | 36900.37000.37400.37800.38800.44200.191800.1052700 | Formwork | 5d | 2026-07-28 | 2026-08-01 | 7178SS+2d |  | Zenith | 8678264 |
| 7181 | 36900.37000.37400.37800.38800.44200.191800.1052800 | Concreting | 1d | 2026-08-02 | 2026-08-02 | 7179FS+1d, 7180 |  | Zenith | 8678254 |
| 7182 | 36900.37000.37400.37800.38800.44200.191900 | **28th floor roof slab** | 8d | 2026-08-03 | 2026-08-10 |  | start no earlier than 2026-08-03 | Zenith | 8655364 |
| 7183 | 36900.37000.37400.37800.38800.44200.191900.1052900 | Reinforcement | 5d | 2026-08-03 | 2026-08-07 | 7181 |  | Zenith | 8678244 |
| 7184 | 36900.37000.37400.37800.38800.44200.191900.1053000 | Conduiting | 5d | 2026-08-04 | 2026-08-08 | 7183SS+1d |  | Zenith | 8678234 |
| 7185 | 36900.37000.37400.37800.38800.44200.191900.1053100 | Formwork | 5d | 2026-08-05 | 2026-08-09 | 7183SS+2d |  | Zenith | 8678224 |
| 7186 | 36900.37000.37400.37800.38800.44200.191900.1053200 | Concreting | 1d | 2026-08-10 | 2026-08-10 | 7184FS+1d, 7185 |  | Zenith | 8678214 |
| 7187 | 36900.37000.37400.37800.38800.44200.192200 | **29th floor roof slab** | 8d | 2026-08-11 | 2026-08-18 |  | start no earlier than 2026-08-11 | Zenith | 8655354 |
| 7188 | 36900.37000.37400.37800.38800.44200.192200.1053300 | Reinforcement | 5d | 2026-08-11 | 2026-08-15 | 7186 |  | Zenith | 8678204 |
| 7189 | 36900.37000.37400.37800.38800.44200.192200.1053400 | Conduiting | 5d | 2026-08-12 | 2026-08-16 | 7188SS+1d |  | Zenith | 8678194 |
| 7190 | 36900.37000.37400.37800.38800.44200.192200.1053500 | Formwork | 5d | 2026-08-13 | 2026-08-17 | 7188SS+2d |  | Zenith | 8678184 |
| 7191 | 36900.37000.37400.37800.38800.44200.192200.1053600 | Concreting | 1d | 2026-08-18 | 2026-08-18 | 7189FS+1d, 7190 |  | Zenith | 8678174 |
| 7192 | 36900.37000.37400.37800.38800.44200.192300 | **30th floor roof slab** | 10d | 2026-08-19 | 2026-08-28 |  | start no earlier than 2026-08-19 | Zenith | 8655344 |
| 7193 | 36900.37000.37400.37800.38800.44200.192300.1053700 | Reinforcement | 7d | 2026-08-19 | 2026-08-25 | 7191 |  | Zenith | 8678164 |
| 7194 | 36900.37000.37400.37800.38800.44200.192300.1053800 | Conduiting | 7d | 2026-08-20 | 2026-08-26 | 7193SS+1d |  | Zenith | 8678154 |
| 7195 | 36900.37000.37400.37800.38800.44200.192300.1053900 | Formwork | 7d | 2026-08-21 | 2026-08-27 | 7193SS+2d |  | Zenith | 8678144 |
| 7196 | 36900.37000.37400.37800.38800.44200.192300.1054000 | Concreting | 1d | 2026-08-28 | 2026-08-28 | 7194FS+1d, 7195 |  | Zenith | 8678134 |
| 7197 | 36900.37000.37400.37800.38800.44200.192400 | **31st floor roof slab** | 10d | 2026-08-29 | 2026-09-07 |  | start no earlier than 2026-08-29 | Zenith | 8655334 |
| 7198 | 36900.37000.37400.37800.38800.44200.192400.1054100 | Reinforcement | 7d | 2026-08-29 | 2026-09-04 | 7196 |  | Zenith | 8678124 |
| 7199 | 36900.37000.37400.37800.38800.44200.192400.1054200 | Conduiting | 7d | 2026-08-30 | 2026-09-05 | 7198SS+1d |  | Zenith | 8678114 |
| 7200 | 36900.37000.37400.37800.38800.44200.192400.1054300 | Formwork | 7d | 2026-08-31 | 2026-09-06 | 7198SS+2d |  | Zenith | 8678104 |
| 7201 | 36900.37000.37400.37800.38800.44200.192400.1054400 | Concreting | 1d | 2026-09-07 | 2026-09-07 | 7199FS+1d, 7200 |  | Zenith | 8678094 |

| ID | WBS | Task | Duration | Start | Finish | Predecessors | Constraint | Calendar | Unique_Task_ID |
| --- | --- | --- | --- | --- | --- | --- | --- | --- | --- |
| 7202 | 36900.37000.37400.37800.38800.44200.192500 | **32nd floor roof slab** | 10d | 2026-09-08 | 2026-09-17 |  | start no earlier than 2026-09-08 | Zenith | 8655324 |
| 7203 | 36900.37000.37400.37800.38800.44200.192500.1054500 | Reinforcement | 7d | 2026-09-08 | 2026-09-14 | 7201 |  | Zenith | 8678084 |
| 7204 | 36900.37000.37400.37800.38800.44200.192500.1054600 | Conduiting | 7d | 2026-09-09 | 2026-09-15 | 7203SS+1d |  | Zenith | 8678074 |
| 7205 | 36900.37000.37400.37800.38800.44200.192500.1054700 | Formwork | 7d | 2026-09-10 | 2026-09-16 | 7203SS+2d |  | Zenith | 8678064 |
| 7206 | 36900.37000.37400.37800.38800.44200.192500.1054800 | Concreting | 1d | 2026-09-17 | 2026-09-17 | 7204FS+1d, 7205 |  | Zenith | 8678054 |
| 7207 | 36900.37000.37400.37800.38800.44200.192600 | **33rd floor roof slab** | 10d | 2026-09-18 | 2026-09-27 |  | start no earlier than 2026-09-18 | Zenith | 8655314 |
| 7208 | 36900.37000.37400.37800.38800.44200.192600.1054900 | Reinforcement | 7d | 2026-09-18 | 2026-09-24 | 7206 |  | Zenith | 8678044 |
| 7209 | 36900.37000.37400.37800.38800.44200.192600.1055000 | Conduiting | 7d | 2026-09-19 | 2026-09-25 | 7208SS+1d |  | Zenith | 8678034 |
| 7210 | 36900.37000.37400.37800.38800.44200.192600.1055100 | Formwork | 7d | 2026-09-20 | 2026-09-26 | 7208SS+2d |  | Zenith | 8678024 |
| 7211 | 36900.37000.37400.37800.38800.44200.192600.1055200 | Concreting | 1d | 2026-09-27 | 2026-09-27 | 7209FS+1d, 7210 |  | Zenith | 8678014 |
| 7212 | 36900.37000.37400.37800.38800.44200.192700 | **34th floor roof slab** | 10d | 2026-09-28 | 2026-10-07 |  | start no earlier than 2026-09-28 | Zenith | 8655304 |
| 7213 | 36900.37000.37400.37800.38800.44200.192700.1055300 | Reinforcement | 7d | 2026-09-28 | 2026-10-04 | 7211 |  | Zenith | 8678004 |
| 7214 | 36900.37000.37400.37800.38800.44200.192700.1055400 | Conduiting | 7d | 2026-09-29 | 2026-10-05 | 7213SS+1d |  | Zenith | 8677994 |
| 7215 | 36900.37000.37400.37800.38800.44200.192700.1055500 | Formwork | 7d | 2026-09-30 | 2026-10-06 | 7213SS+2d |  | Zenith | 8677984 |
| 7216 | 36900.37000.37400.37800.38800.44200.192700.1055600 | Concreting | 1d | 2026-10-07 | 2026-10-07 | 7214FS+1d, 7215 |  | Zenith | 8677974 |
| 7217 | 36900.37000.37400.37800.38800.44200.193000 | **35th floor roof slab** | 10d | 2026-10-08 | 2026-10-17 |  | start no earlier than 2026-10-08 | Zenith | 8655294 |
| 7218 | 36900.37000.37400.37800.38800.44200.193000.1055700 | Reinforcement | 7d | 2026-10-08 | 2026-10-14 | 7216 |  | Zenith | 8677964 |
| 7219 | 36900.37000.37400.37800.38800.44200.193000.1055800 | Conduiting | 7d | 2026-10-09 | 2026-10-15 | 7218SS+1d |  | Zenith | 8677954 |
| 7220 | 36900.37000.37400.37800.38800.44200.193000.1055900 | Formwork | 7d | 2026-10-10 | 2026-10-16 | 7218SS+2d |  | Zenith | 8677944 |
| 7221 | 36900.37000.37400.37800.38800.44200.193000.1056000 | Concreting | 1d | 2026-10-17 | 2026-10-17 | 7219FS+1d, 7220 |  | Zenith | 8677934 |
| 7222 | 36900.37000.37400.37800.38800.44200.193100 | **Terrace floor slab** | 18d | 2026-10-18 | 2026-12-19 |  | start no earlier than 2026-10-18 | Zenith | 8655284 |
| 7223 | 36900.37000.37400.37800.38800.44200.193100.1056100 | Reinforcement | 14d | 2026-10-18 | 2026-10-31 | 7221 |  | Zenith | 8677924 |
| 7224 | 36900.37000.37400.37800.38800.44200.193100.1056200 | Conduiting | 14d | 2026-10-19 | 2026-12-16 | 7223SS+1d |  | Zenith | 8677914 |
| 7225 | 36900.37000.37400.37800.38800.44200.193100.1056300 | Formwork | 14d | 2026-10-20 | 2026-12-17 | 7223SS+2d |  | Zenith | 8677904 |
| 7226 | 36900.37000.37400.37800.38800.44200.193100.1056400 | Concreting | 2d | 2026-12-18 | 2026-12-19 | 7224FS+1d, 7225 |  | Zenith | 8677894 |

| ID | WBS | Task | Duration | Start | Finish | Predecessors | Constraint | Calendar | Unique_Task_ID |
| --- | --- | --- | --- | --- | --- | --- | --- | --- | --- |
| 7227 | 36900.37000.37400.37800.38800.44200.193200 | **OHT, Mumty & Machine Room, Parapet** | 35d | 2026-12-20 | 2027-01-23 |  | start no earlier than 2026-12-20 | Zenith | 8655274 |
| 7228 | 36900.37000.37400.37800.38800.44200.193200.1056500 | Reinforcement | 20d | 2026-12-20 | 2027-01-08 | 7226 |  | Zenith | 8677884 |
| 7229 | 36900.37000.37400.37800.38800.44200.193200.1056600 | Flanges fixing & Conduiting | 10d | 2026-12-21 | 2026-12-30 | 7228SS+1d |  | Zenith | 8677874 |
| 7230 | 36900.37000.37400.37800.38800.44200.193200.1056700 | Formwork | 25d | 2026-12-26 | 2027-01-19 | 7228SS+6d |  | Zenith | 8677864 |
| 7231 | 36900.37000.37400.37800.38800.44200.193200.1056800 | Concreting | 4d | 2027-01-20 | 2027-01-23 | 7229FS+5d, 7230 |  | Zenith | 8677854 |
| 7232 | 36900.37000.37400.37800.38800.46500 | **Post Pour Activities** | 332.25d | 2026-01-19 | 2027-01-31 |  | start no earlier than 2026-01-19 | Zenith | 8648024 |
| 7233 | 36900.37000.37400.37800.38800.46500.829700 | 1st Floor | 7d | 2026-01-19 | 2026-01-25 | 7066 |  | Zenith | 8721464 |
| 7234 | 36900.37000.37400.37800.38800.46500.829800 | 2nd Floor | 7d | 2026-01-28 | 2026-02-04 | 7233FS+0.25d, 7071FS+0.25d |  | Zenith | 8721454 |
| 7235 | 36900.37000.37400.37800.38800.46500.829900 | 3rd Floor | 7d | 2026-02-06 | 2026-02-13 | 7234FS+0.25d, 7076FS+0.25d |  | Zenith | 8721444 |
| 7236 | 36900.37000.37400.37800.38800.46500.830000 | 4th Floor | 7d | 2026-02-15 | 2026-02-22 | 7235FS+0.25d, 7081FS+0.25d |  | Zenith | 8721434 |
| 7237 | 36900.37000.37400.37800.38800.46500.830100 | 5th Floor | 7d | 2026-02-24 | 2026-03-03 | 7236FS+0.25d, 7086FS+0.25d |  | Zenith | 8721424 |
| 7238 | 36900.37000.37400.37800.38800.46500.830200 | 6th Floor | 7d | 2026-03-05 | 2026-03-12 | 7237FS+0.25d, 7091FS+0.25d |  | Zenith | 8721414 |
| 7239 | 36900.37000.37400.37800.38800.46500.830300 | 7th Floor | 7d | 2026-03-14 | 2026-03-21 | 7238FS+0.25d, 7096FS+0.25d |  | Zenith | 8721404 |
| 7240 | 36900.37000.37400.37800.38800.46500.830400 | 8th Floor | 7d | 2026-03-23 | 2026-03-30 | 7239FS+0.25d, 7101FS+0.25d |  | Zenith | 8721394 |
| 7241 | 36900.37000.37400.37800.38800.46500.830500 | 9th Floor | 7d | 2026-04-01 | 2026-04-08 | 7240FS+0.25d, 7106FS+0.25d |  | Zenith | 8721384 |
| 7242 | 36900.37000.37400.37800.38800.46500.830600 | 10th Floor | 7d | 2026-04-10 | 2026-04-17 | 7241FS+0.25d, 7111FS+0.25d |  | Zenith | 8721374 |
| 7243 | 36900.37000.37400.37800.38800.46500.830700 | 11th Floor | 7d | 2026-04-19 | 2026-04-26 | 7242FS+0.25d, 7116FS+0.25d |  | Zenith | 8721364 |
| 7244 | 36900.37000.37400.37800.38800.46500.830800 | 12th Floor | 7d | 2026-04-28 | 2026-05-05 | 7243FS+0.25d, 7121FS+0.25d |  | Zenith | 8721354 |
| 7245 | 36900.37000.37400.37800.38800.46500.830900 | 13th Floor | 7d | 2026-05-07 | 2026-05-14 | 7244FS+0.25d, 7126FS+0.25d |  | Zenith | 8721344 |
| 7246 | 36900.37000.37400.37800.38800.46500.831000 | 14th Floor | 7d | 2026-05-15 | 2026-05-22 | 7245FS+0.25d, 7131FS+0.25d |  | Zenith | 8721334 |
| 7247 | 36900.37000.37400.37800.38800.46500.831100 | 15th Floor | 7d | 2026-05-23 | 2026-05-30 | 7246FS+0.25d, 7136FS+0.25d |  | Zenith | 8721324 |
| 7248 | 36900.37000.37400.37800.38800.46500.831200 | 16th Floor | 7d | 2026-05-31 | 2026-06-07 | 7247FS+0.25d, 7141FS+0.25d |  | Zenith | 8721314 |
| 7249 | 36900.37000.37400.37800.38800.46500.831300 | 17th Floor | 7d | 2026-06-08 | 2026-06-15 | 7248FS+0.25d, 7146FS+0.25d |  | Zenith | 8721304 |
| 7250 | 36900.37000.37400.37800.38800.46500.831400 | 18th Floor | 7d | 2026-06-16 | 2026-06-23 | 7249FS+0.25d, 7151FS+0.25d |  | Zenith | 8721294 |
| 7251 | 36900.37000.37400.37800.38800.46500.831500 | 19th Floor | 7d | 2026-06-24 | 2026-07-01 | 7250FS+0.25d, 7156FS+0.25d |  | Zenith | 8721284 |
| 7252 | 36900.37000.37400.37800.38800.46500.831600 | 20th Floor | 7d | 2026-07-02 | 2026-07-09 | 7251FS+0.25d, 7161FS+0.25d |  | Zenith | 8721274 |
| 7253 | 36900.37000.37400.37800.38800.46500.831700 | 21st Floor | 7d | 2026-07-10 | 2026-07-17 | 7252FS+0.25d, 7166FS+0.25d |  | Zenith | 8721264 |
| 7254 | 36900.37000.37400.37800.38800.46500.831800 | 22nd Floor | 7d | 2026-07-18 | 2026-07-25 | 7253FS+0.25d, 7171FS+0.25d |  | Zenith | 8721254 |
| 7255 | 36900.37000.37400.37800.38800.46500.831900 | 23rd Floor | 7d | 2026-07-26 | 2026-08-02 | 7254FS+0.25d, 7176FS+0.25d |  | Zenith | 8721244 |
| 7256 | 36900.37000.37400.37800.38800.46500.832000 | 24th Floor | 7d | 2026-08-03 | 2026-08-10 | 7255FS+0.25d, 7181FS+0.25d |  | Zenith | 8721234 |
| 7257 | 36900.37000.37400.37800.38800.46500.832100 | 25th Floor | 7d | 2026-08-11 | 2026-08-18 | 7256FS+0.25d, 7186FS+0.25d |  | Zenith | 8721224 |
| 7258 | 36900.37000.37400.37800.38800.46500.832200 | 26th Floor | 7d | 2026-08-19 | 2026-08-26 | 7257FS+0.25d, 7191FS+0.25d |  | Zenith | 8721214 |
| 7259 | 36900.37000.37400.37800.38800.46500.832300 | 27th Floor | 7d | 2026-08-29 | 2026-09-05 | 7258FS+0.25d, 7196FS+0.25d |  | Zenith | 8721204 |
| 7260 | 36900.37000.37400.37800.38800.46500.832400 | 28th Floor | 7d | 2026-09-08 | 2026-09-15 | 7259FS+0.25d, 7201FS+0.25d |  | Zenith | 8721194 |
| 7261 | 36900.37000.37400.37800.38800.46500.832500 | 29th Floor | 7d | 2026-09-18 | 2026-09-25 | 7260FS+0.25d, 7206FS+0.25d |  | Zenith | 8721184 |
| 7262 | 36900.37000.37400.37800.38800.46500.832600 | 30th Floor | 7d | 2026-09-28 | 2026-10-05 | 7261FS+0.25d, 7211FS+0.25d |  | Zenith | 8721174 |
| 7263 | 36900.37000.37400.37800.38800.46500.832700 | 31st Floor | 7d | 2026-10-08 | 2026-10-15 | 7262FS+0.25d, 7216FS+0.25d |  | Zenith | 8721164 |
| 7264 | 36900.37000.37400.37800.38800.46500.832800 | 32nd Flood | 7d | 2026-10-18 | 2026-10-25 | 7263FS+0.25d, 7221FS+0.25d |  | Zenith | 8721154 |
| 7265 | 36900.37000.37400.37800.38800.46500.832900 | 33rd Floor | 7d | 2026-12-20 | 2026-12-27 | 7264FS+0.25d, 7226FS+0.25d |  | Zenith | 8721144 |
| 7266 | 36900.37000.37400.37800.38800.46500.833000 | 34th Floor | 7d | 2026-12-27 | 2027-01-03 | 7265 |  | Zenith | 8721134 |
| 7267 | 36900.37000.37400.37800.38800.46500.833100 | 35th Floor | 7d | 2027-01-03 | 2027-01-10 | 7266 |  | Zenith | 8721124 |
| 7268 | 36900.37000.37400.37800.38800.46500.833200 | 36th Floor | 7d | 2027-01-10 | 2027-01-17 | 7267 |  | Zenith | 8721114 |
| 7269 | 36900.37000.37400.37800.38800.46500.833300 | Terrace | 7d | 2027-01-17 | 2027-01-24 | 7268 |  | Zenith | 8721104 |
| 7270 | 36900.37000.37400.37800.38800.46500.833400 | Mumty & Machine Room | 7d | 2027-01-24 | 2027-01-31 | 7269 |  | Zenith | 8721094 |

| ID | WBS | Task | Duration | Start | Finish | Predecessors | Constraint | Calendar | Unique_Task_ID |
| --- | --- | --- | --- | --- | --- | --- | --- | --- | --- |
| 7271 | 36900.37000.37400.37800.38800.40200 | **Finishing work** | 686d | 2026-01-26 | 2028-03-11 |  | start no earlier than 2026-01-26 | Zenith | 8647744 |
| 7272 | 36900.37000.37400.37800.38800.40200.41400 | **Flat finishing** | 686d | 2026-01-26 | 2028-03-11 |  | start no earlier than 2026-01-26 | Zenith | 8647834 |
| 7273 | 36900.37000.37400.37800.38800.40200.41400.107600 | **1st Floor roof** | 116d | 2026-01-26 | 2026-05-21 |  | start no earlier than 2026-01-26 | Zenith | 8650944 |
| 7274 | 36900.37000.37400.37800.38800.40200.41400.107600.1672400 | Block Work | 10d | 2026-01-26 | 2026-02-04 | 7233 |  | Zenith | 8716764 |
| 7275 | 36900.37000.37400.37800.38800.40200.41400.107600.1672500 | Fire sprinkler pipe fixing | 6d | 2026-02-05 | 2026-02-10 | 7274 |  | Zenith | 8716774 |
| 7276 | 36900.37000.37400.37800.38800.40200.41400.107600.1672600 | Internal Plumbing Works | 10d | 2026-02-05 | 2026-02-14 | 7274 |  | Zenith | 8716784 |
| 7277 | 36900.37000.37400.37800.38800.40200.41400.107600.1672700 | Waterproofing | 14d | 2026-02-15 | 2026-02-28 | 7276 |  | Zenith | 8716794 |
| 7278 | 36900.37000.37400.37800.38800.40200.41400.107600.1672800 | Internal Plaster | 14d | 2026-02-20 | 2026-03-05 | 7276, 7277FF+5d |  | Zenith | 8716804 |
| 7279 | 36900.37000.37400.37800.38800.40200.41400.107600.1672900 | IPS flooring work | 10d | 2026-03-06 | 2026-03-15 | 7278 |  | Zenith | 8716814 |
| 7280 | 36900.37000.37400.37800.38800.40200.41400.107600.1673000 | Toilet dado work | 10d | 2026-03-06 | 2026-03-15 | 7277, 7278 |  | Zenith | 8716824 |
| 7281 | 36900.37000.37400.37800.38800.40200.41400.107600.1673100 | Toilet flooring work | 7d | 2026-03-16 | 2026-03-22 | 7280 |  | Zenith | 8716834 |
| 7282 | 36900.37000.37400.37800.38800.40200.41400.107600.1673200 | False Cieling panel fixing | 10d | 2026-03-23 | 2026-04-01 | 7281 |  | Zenith | 8716844 |
| 7283 | 36900.37000.37400.37800.38800.40200.41400.107600.1673300 | Living dinning flooring | 13d | 2026-03-23 | 2026-04-04 | 7281 |  | Zenith | 8716854 |
| 7284 | 36900.37000.37400.37800.38800.40200.41400.107600.1673400 | Putty primer coat | 12d | 2026-04-05 | 2026-04-16 | 7283 |  | Zenith | 8716864 |
| 7285 | 36900.37000.37400.37800.38800.40200.41400.107600.1673500 | Aluminium door-window fixing | 15d | 2026-04-05 | 2026-04-19 | 7279, 7283 |  | Zenith | 8716874 |
| 7286 | 36900.37000.37400.37800.38800.40200.41400.107600.1673600 | Door shutter fixing (Pre Hung) | 8d | 2026-04-17 | 2026-04-24 | 7284 |  | Zenith | 8716884 |
| 7287 | 36900.37000.37400.37800.38800.40200.41400.107600.1673700 | Electrical wiring work | 12d | 2026-04-25 | 2026-05-06 | 7286 |  | Zenith | 8716894 |
| 7288 | 36900.37000.37400.37800.38800.40200.41400.107600.1673800 | Painting 1st coat | 15d | 2026-05-07 | 2026-05-21 | 7287 |  | Zenith | 8716904 |
| 7289 | 36900.37000.37400.37800.38800.40200.41400.107700 | **2nd floor roof** | 121d | 2026-02-05 | 2026-06-05 |  | start no earlier than 2026-02-05 | Zenith | 8650954 |
| 7290 | 36900.37000.37400.37800.38800.40200.41400.107700.1673900 | Block Work | 10d | 2026-02-05 | 2026-02-14 | 7234, 7274 |  | Zenith | 8716914 |
| 7291 | 36900.37000.37400.37800.38800.40200.41400.107700.1674000 | Fire sprinkler pipe fixing | 6d | 2026-02-15 | 2026-02-20 | 7275, 7290 |  | Zenith | 8716924 |
| 7292 | 36900.37000.37400.37800.38800.40200.41400.107700.1674100 | Internal Plumbing Works | 10d | 2026-02-15 | 2026-02-24 | 7276, 7290 |  | Zenith | 8716934 |
| 7293 | 36900.37000.37400.37800.38800.40200.41400.107700.1674200 | Waterproofing | 14d | 2026-03-01 | 2026-03-14 | 7277, 7292 |  | Zenith | 8716944 |
| 7294 | 36900.37000.37400.37800.38800.40200.41400.107700.1674300 | Internal Plaster | 14d | 2026-03-06 | 2026-03-19 | 7278, 7292, 7293FF+5d |  | Zenith | 8716954 |
| 7295 | 36900.37000.37400.37800.38800.40200.41400.107700.1674400 | IPS flooring work | 10d | 2026-03-20 | 2026-03-29 | 7279, 7294 |  | Zenith | 8716964 |
| 7296 | 36900.37000.37400.37800.38800.40200.41400.107700.1674500 | Toilet dado work | 10d | 2026-03-20 | 2026-03-29 | 7280, 7293, 7294 |  | Zenith | 8716974 |
| 7297 | 36900.37000.37400.37800.38800.40200.41400.107700.1674600 | Toilet flooring work | 7d | 2026-03-30 | 2026-04-05 | 7281, 7296 |  | Zenith | 8716984 |
| 7298 | 36900.37000.37400.37800.38800.40200.41400.107700.1674700 | False Cieling panel fixing | 10d | 2026-04-06 | 2026-04-15 | 7282, 7297 |  | Zenith | 8716994 |
| 7299 | 36900.37000.37400.37800.38800.40200.41400.107700.1674800 | Living dinning flooring | 13d | 2026-04-06 | 2026-04-18 | 7283, 7297 |  | Zenith | 8717004 |
| 7300 | 36900.37000.37400.37800.38800.40200.41400.107700.1674900 | Putty primer coat | 12d | 2026-04-19 | 2026-04-30 | 7284, 7299 |  | Zenith | 8717014 |
| 7301 | 36900.37000.37400.37800.38800.40200.41400.107700.1675000 | Aluminium door-window fixing | 15d | 2026-04-20 | 2026-05-04 | 7285, 7295, 7299 |  | Zenith | 8717024 |
| 7302 | 36900.37000.37400.37800.38800.40200.41400.107700.1675100 | Door shutter fixing (Pre Hung) | 8d | 2026-05-01 | 2026-05-08 | 7286, 7300 |  | Zenith | 8717034 |
| 7303 | 36900.37000.37400.37800.38800.40200.41400.107700.1675200 | Electrical wiring work | 12d | 2026-05-09 | 2026-05-20 | 7287, 7302 |  | Zenith | 8717044 |
| 7304 | 36900.37000.37400.37800.38800.40200.41400.107700.1675300 | Painting 1st coat | 15d | 2026-05-22 | 2026-06-05 | 7288, 7303 |  | Zenith | 8717054 |

| ID | WBS | Task | Duration | Start | Finish | Predecessors | Constraint | Calendar | Unique_Task_ID |
| --- | --- | --- | --- | --- | --- | --- | --- | --- | --- |
| 7305 | 36900.37000.37400.37800.38800.40200.41400.107800 | **3rd floor roof** | 126d | 2026-02-15 | 2026-06-20 |  | start no earlier than 2026-02-15 | Zenith | 8650964 |
| 7306 | 36900.37000.37400.37800.38800.40200.41400.107800.1675400 | Block Work | 10d | 2026-02-15 | 2026-02-24 | 7235, 7290 |  | Zenith | 8717064 |
| 7307 | 36900.37000.37400.37800.38800.40200.41400.107800.1675500 | Fire sprinkler pipe fixing | 6d | 2026-02-25 | 2026-03-02 | 7291, 7306 |  | Zenith | 8717074 |
| 7308 | 36900.37000.37400.37800.38800.40200.41400.107800.1675600 | Internal Plumbing Works | 10d | 2026-02-25 | 2026-03-06 | 7292, 7306 |  | Zenith | 8717084 |
| 7309 | 36900.37000.37400.37800.38800.40200.41400.107800.1675700 | Waterproofing | 14d | 2026-03-15 | 2026-03-28 | 7293, 7308 |  | Zenith | 8717094 |
| 7310 | 36900.37000.37400.37800.38800.40200.41400.107800.1675800 | Internal Plaster | 14d | 2026-03-20 | 2026-04-02 | 7294, 7308, 7309FF+5d |  | Zenith | 8717104 |
| 7311 | 36900.37000.37400.37800.38800.40200.41400.107800.1675900 | IPS flooring work | 10d | 2026-04-03 | 2026-04-12 | 7295, 7310 |  | Zenith | 8717114 |
| 7312 | 36900.37000.37400.37800.38800.40200.41400.107800.1676000 | Toilet dado work | 10d | 2026-04-03 | 2026-04-12 | 7296, 7309, 7310 |  | Zenith | 8717124 |
| 7313 | 36900.37000.37400.37800.38800.40200.41400.107800.1676100 | Toilet flooring work | 7d | 2026-04-13 | 2026-04-19 | 7297, 7312 |  | Zenith | 8717134 |
| 7314 | 36900.37000.37400.37800.38800.40200.41400.107800.1676200 | False Cieling panel fixing | 10d | 2026-04-20 | 2026-04-29 | 7298, 7313 |  | Zenith | 8717144 |
| 7315 | 36900.37000.37400.37800.38800.40200.41400.107800.1676300 | Living dinning flooring | 13d | 2026-04-20 | 2026-05-02 | 7299, 7313 |  | Zenith | 8717154 |
| 7316 | 36900.37000.37400.37800.38800.40200.41400.107800.1676400 | Putty primer coat | 12d | 2026-05-03 | 2026-05-14 | 7300, 7315 |  | Zenith | 8717164 |
| 7317 | 36900.37000.37400.37800.38800.40200.41400.107800.1676500 | Aluminium door-window fixing | 15d | 2026-05-05 | 2026-05-19 | 7301, 7311, 7315 |  | Zenith | 8717174 |
| 7318 | 36900.37000.37400.37800.38800.40200.41400.107800.1676600 | Door shutter fixing (Pre Hung) | 8d | 2026-05-15 | 2026-05-22 | 7302, 7316 |  | Zenith | 8717184 |
| 7319 | 36900.37000.37400.37800.38800.40200.41400.107800.1676700 | Electrical wiring work | 12d | 2026-05-23 | 2026-06-03 | 7303, 7318 |  | Zenith | 8717194 |
| 7320 | 36900.37000.37400.37800.38800.40200.41400.107800.1676800 | Painting 1st coat | 15d | 2026-06-06 | 2026-06-20 | 7304, 7319 |  | Zenith | 8717204 |
| 7321 | 36900.37000.37400.37800.38800.40200.41400.107900 | **4th floor roof** | 131d | 2026-02-25 | 2026-07-05 |  | start no earlier than 2026-02-25 | Zenith | 8650974 |
| 7322 | 36900.37000.37400.37800.38800.40200.41400.107900.1676900 | Block Work | 10d | 2026-02-25 | 2026-03-06 | 7236, 7306 |  | Zenith | 8717214 |
| 7323 | 36900.37000.37400.37800.38800.40200.41400.107900.1677000 | Fire sprinkler pipe fixing | 6d | 2026-03-07 | 2026-03-12 | 7307, 7322 |  | Zenith | 8717224 |
| 7324 | 36900.37000.37400.37800.38800.40200.41400.107900.1677100 | Internal Plumbing Works | 10d | 2026-03-07 | 2026-03-16 | 7308, 7322 |  | Zenith | 8717234 |
| 7325 | 36900.37000.37400.37800.38800.40200.41400.107900.1677200 | Waterproofing | 14d | 2026-03-29 | 2026-04-11 | 7309, 7324 |  | Zenith | 8717244 |
| 7326 | 36900.37000.37400.37800.38800.40200.41400.107900.1677300 | Internal Plaster | 14d | 2026-04-03 | 2026-04-16 | 7310, 7324, 7325FF+5d |  | Zenith | 8717254 |
| 7327 | 36900.37000.37400.37800.38800.40200.41400.107900.1677400 | IPS flooring work | 10d | 2026-04-17 | 2026-04-26 | 7311, 7326 |  | Zenith | 8717264 |
| 7328 | 36900.37000.37400.37800.38800.40200.41400.107900.1677500 | Toilet dado work | 10d | 2026-04-17 | 2026-04-26 | 7312, 7325, 7326 |  | Zenith | 8717274 |
| 7329 | 36900.37000.37400.37800.38800.40200.41400.107900.1677600 | Toilet flooring work | 7d | 2026-04-27 | 2026-05-03 | 7313, 7328 |  | Zenith | 8717284 |
| 7330 | 36900.37000.37400.37800.38800.40200.41400.107900.1677700 | False Cieling panel fixing | 10d | 2026-05-04 | 2026-05-13 | 7314, 7329 |  | Zenith | 8717294 |
| 7331 | 36900.37000.37400.37800.38800.40200.41400.107900.1677800 | Living dinning flooring | 13d | 2026-05-04 | 2026-05-16 | 7315, 7329 |  | Zenith | 8717304 |
| 7332 | 36900.37000.37400.37800.38800.40200.41400.107900.1677900 | Putty primer coat | 12d | 2026-05-17 | 2026-05-28 | 7316, 7331 |  | Zenith | 8717314 |
| 7333 | 36900.37000.37400.37800.38800.40200.41400.107900.1678000 | Aluminium door-window fixing | 15d | 2026-05-20 | 2026-06-03 | 7317, 7327, 7331 |  | Zenith | 8717324 |
| 7334 | 36900.37000.37400.37800.38800.40200.41400.107900.1678100 | Door shutter fixing (Pre Hung) | 8d | 2026-05-29 | 2026-06-05 | 7318, 7332 |  | Zenith | 8717334 |
| 7335 | 36900.37000.37400.37800.38800.40200.41400.107900.1678200 | Electrical wiring work | 12d | 2026-06-06 | 2026-06-17 | 7319, 7334 |  | Zenith | 8717344 |
| 7336 | 36900.37000.37400.37800.38800.40200.41400.107900.1678300 | Painting 1st coat | 15d | 2026-06-21 | 2026-07-05 | 7320, 7335 |  | Zenith | 8717354 |

| ID | WBS | Task | Duration | Start | Finish | Predecessors | Constraint | Calendar | Unique_Task_ID |
| --- | --- | --- | --- | --- | --- | --- | --- | --- | --- |
| 7337 | 36900.37000.37400.37800.38800.40200.41400.108000 | **5th floor roof** | 136d | 2026-03-07 | 2026-07-20 |  | start no earlier than 2026-03-07 | Zenith | 8650984 |
| 7338 | 36900.37000.37400.37800.38800.40200.41400.108000.1678400 | Block Work | 10d | 2026-03-07 | 2026-03-16 | 7237, 7322 |  | Zenith | 8717364 |
| 7339 | 36900.37000.37400.37800.38800.40200.41400.108000.1678500 | Fire sprinkler pipe fixing | 6d | 2026-03-17 | 2026-03-22 | 7323, 7338 |  | Zenith | 8717374 |
| 7340 | 36900.37000.37400.37800.38800.40200.41400.108000.1678600 | Internal Plumbing Works | 10d | 2026-03-17 | 2026-03-26 | 7324, 7338 |  | Zenith | 8717384 |
| 7341 | 36900.37000.37400.37800.38800.40200.41400.108000.1678700 | Waterproofing | 14d | 2026-04-12 | 2026-04-25 | 7325, 7340 |  | Zenith | 8717394 |
| 7342 | 36900.37000.37400.37800.38800.40200.41400.108000.1678800 | Internal Plaster | 14d | 2026-04-17 | 2026-04-30 | 7326, 7340, 7341FF+5d |  | Zenith | 8717404 |
| 7343 | 36900.37000.37400.37800.38800.40200.41400.108000.1678900 | IPS flooring work | 10d | 2026-05-01 | 2026-05-10 | 7327, 7342 |  | Zenith | 8717414 |
| 7344 | 36900.37000.37400.37800.38800.40200.41400.108000.1679000 | Toilet dado work | 10d | 2026-05-01 | 2026-05-10 | 7328, 7341, 7342 |  | Zenith | 8717424 |
| 7345 | 36900.37000.37400.37800.38800.40200.41400.108000.1679100 | Toilet flooring work | 7d | 2026-05-11 | 2026-05-17 | 7329, 7344 |  | Zenith | 8717434 |
| 7346 | 36900.37000.37400.37800.38800.40200.41400.108000.1679200 | False Cieling panel fixing | 10d | 2026-05-18 | 2026-05-27 | 7330, 7345 |  | Zenith | 8717444 |
| 7347 | 36900.37000.37400.37800.38800.40200.41400.108000.1679300 | Living dinning flooring | 13d | 2026-05-18 | 2026-05-30 | 7331, 7345 |  | Zenith | 8717454 |
| 7348 | 36900.37000.37400.37800.38800.40200.41400.108000.1679400 | Putty primer coat | 12d | 2026-05-31 | 2026-06-11 | 7332, 7347 |  | Zenith | 8717464 |
| 7349 | 36900.37000.37400.37800.38800.40200.41400.108000.1679500 | Aluminium door-window fixing | 15d | 2026-06-04 | 2026-06-18 | 7333, 7343, 7347 |  | Zenith | 8717474 |
| 7350 | 36900.37000.37400.37800.38800.40200.41400.108000.1679600 | Door shutter fixing (Pre Hung) | 8d | 2026-06-12 | 2026-06-19 | 7334, 7348 |  | Zenith | 8717484 |
| 7351 | 36900.37000.37400.37800.38800.40200.41400.108000.1679700 | Electrical wiring work | 12d | 2026-06-20 | 2026-07-01 | 7335, 7350 |  | Zenith | 8717494 |
| 7352 | 36900.37000.37400.37800.38800.40200.41400.108000.1679800 | Painting 1st coat | 15d | 2026-07-06 | 2026-07-20 | 7336, 7351 |  | Zenith | 8717504 |
| 7353 | 36900.37000.37400.37800.38800.40200.41400.108100 | **6th floor roof** | 141d | 2026-03-17 | 2026-08-04 |  | start no earlier than 2026-03-17 | Zenith | 8650994 |
| 7354 | 36900.37000.37400.37800.38800.40200.41400.108100.1679900 | Block Work | 10d | 2026-03-17 | 2026-03-26 | 7238, 7338 |  | Zenith | 8717514 |
| 7355 | 36900.37000.37400.37800.38800.40200.41400.108100.1680000 | Fire sprinkler pipe fixing | 6d | 2026-03-27 | 2026-04-01 | 7339, 7354 |  | Zenith | 8717524 |
| 7356 | 36900.37000.37400.37800.38800.40200.41400.108100.1680100 | Internal Plumbing Works | 10d | 2026-03-27 | 2026-04-05 | 7340, 7354 |  | Zenith | 8717534 |
| 7357 | 36900.37000.37400.37800.38800.40200.41400.108100.1680200 | Waterproofing | 14d | 2026-04-26 | 2026-05-09 | 7341, 7356 |  | Zenith | 8717544 |
| 7358 | 36900.37000.37400.37800.38800.40200.41400.108100.1680300 | Internal Plaster | 14d | 2026-05-01 | 2026-05-14 | 7342, 7356, 7357FF+5d |  | Zenith | 8717554 |
| 7359 | 36900.37000.37400.37800.38800.40200.41400.108100.1680400 | IPS flooring work | 10d | 2026-05-15 | 2026-05-24 | 7343, 7358 |  | Zenith | 8717564 |
| 7360 | 36900.37000.37400.37800.38800.40200.41400.108100.1680500 | Toilet dado work | 10d | 2026-05-15 | 2026-05-24 | 7344, 7357, 7358 |  | Zenith | 8717574 |
| 7361 | 36900.37000.37400.37800.38800.40200.41400.108100.1680600 | Toilet flooring work | 7d | 2026-05-25 | 2026-05-31 | 7345, 7360 |  | Zenith | 8717584 |
| 7362 | 36900.37000.37400.37800.38800.40200.41400.108100.1680700 | False Cieling panel fixing | 10d | 2026-06-01 | 2026-06-10 | 7346, 7361 |  | Zenith | 8717594 |
| 7363 | 36900.37000.37400.37800.38800.40200.41400.108100.1680800 | Living dinning flooring | 13d | 2026-06-01 | 2026-06-13 | 7347, 7361 |  | Zenith | 8717604 |
| 7364 | 36900.37000.37400.37800.38800.40200.41400.108100.1680900 | Putty primer coat | 12d | 2026-06-14 | 2026-06-25 | 7348, 7363 |  | Zenith | 8717614 |
| 7365 | 36900.37000.37400.37800.38800.40200.41400.108100.1681000 | Aluminium door-window fixing | 15d | 2026-06-19 | 2026-07-03 | 7349, 7359, 7363 |  | Zenith | 8717624 |
| 7366 | 36900.37000.37400.37800.38800.40200.41400.108100.1681100 | Door shutter fixing (Pre Hung) | 8d | 2026-06-26 | 2026-07-03 | 7350, 7364 |  | Zenith | 8717634 |
| 7367 | 36900.37000.37400.37800.38800.40200.41400.108100.1681200 | Electrical wiring work | 12d | 2026-07-04 | 2026-07-15 | 7351, 7366 |  | Zenith | 8717644 |
| 7368 | 36900.37000.37400.37800.38800.40200.41400.108100.1681300 | Painting 1st coat | 15d | 2026-07-21 | 2026-08-04 | 7352, 7367 |  | Zenith | 8717654 |

| ID | WBS | Task | Duration | Start | Finish | Predecessors | Constraint | Calendar | Unique_Task_ID |
| --- | --- | --- | --- | --- | --- | --- | --- | --- | --- |
| 7369 | 36900.37000.37400.37800.38800.40200.41400.108200 | **7th floor roof** | 146d | 2026-03-27 | 2026-08-19 |  | start no earlier than 2026-03-27 | Zenith | 8651004 |
| 7370 | 36900.37000.37400.37800.38800.40200.41400.108200.1681400 | Block Work | 10d | 2026-03-27 | 2026-04-05 | 7239, 7354 |  | Zenith | 8717664 |
| 7371 | 36900.37000.37400.37800.38800.40200.41400.108200.1681500 | Fire sprinkler pipe fixing | 6d | 2026-04-06 | 2026-04-11 | 7355, 7370 |  | Zenith | 8717674 |
| 7372 | 36900.37000.37400.37800.38800.40200.41400.108200.1681600 | Internal Plumbing Works | 10d | 2026-04-06 | 2026-04-15 | 7356, 7370 |  | Zenith | 8717684 |
| 7373 | 36900.37000.37400.37800.38800.40200.41400.108200.1681700 | Waterproofing | 14d | 2026-05-10 | 2026-05-23 | 7357, 7372 |  | Zenith | 8717694 |
| 7374 | 36900.37000.37400.37800.38800.40200.41400.108200.1681800 | Internal Plaster | 14d | 2026-05-15 | 2026-05-28 | 7358, 7372, 7373FF+5d |  | Zenith | 8717704 |
| 7375 | 36900.37000.37400.37800.38800.40200.41400.108200.1681900 | IPS flooring work | 10d | 2026-05-29 | 2026-06-07 | 7359, 7374 |  | Zenith | 8717714 |
| 7376 | 36900.37000.37400.37800.38800.40200.41400.108200.1682000 | Toilet dado work | 10d | 2026-05-29 | 2026-06-07 | 7360, 7373, 7374 |  | Zenith | 8717724 |
| 7377 | 36900.37000.37400.37800.38800.40200.41400.108200.1682100 | Toilet flooring work | 7d | 2026-06-08 | 2026-06-14 | 7361, 7376 |  | Zenith | 8717734 |
| 7378 | 36900.37000.37400.37800.38800.40200.41400.108200.1682200 | False Cieling panel fixing | 10d | 2026-06-15 | 2026-06-24 | 7362, 7377 |  | Zenith | 8717744 |
| 7379 | 36900.37000.37400.37800.38800.40200.41400.108200.1682300 | Living dinning flooring | 13d | 2026-06-15 | 2026-06-27 | 7363, 7377 |  | Zenith | 8717754 |
| 7380 | 36900.37000.37400.37800.38800.40200.41400.108200.1682400 | Putty primer coat | 12d | 2026-06-28 | 2026-07-09 | 7364, 7379 |  | Zenith | 8717764 |
| 7381 | 36900.37000.37400.37800.38800.40200.41400.108200.1682500 | Aluminium door-window fixing | 15d | 2026-07-04 | 2026-07-18 | 7365, 7375, 7379 |  | Zenith | 8717774 |
| 7382 | 36900.37000.37400.37800.38800.40200.41400.108200.1682600 | Door shutter fixing (Pre Hung) | 8d | 2026-07-10 | 2026-07-17 | 7366, 7380 |  | Zenith | 8717784 |
| 7383 | 36900.37000.37400.37800.38800.40200.41400.108200.1682700 | Electrical wiring work | 12d | 2026-07-18 | 2026-07-29 | 7367, 7382 |  | Zenith | 8717794 |
| 7384 | 36900.37000.37400.37800.38800.40200.41400.108200.1682800 | Painting 1st coat | 15d | 2026-08-05 | 2026-08-19 | 7368, 7383 |  | Zenith | 8717804 |
| 7385 | 36900.37000.37400.37800.38800.40200.41400.108300 | **8th floor roof** | 151d | 2026-04-06 | 2026-09-03 |  | start no earlier than 2026-04-06 | Zenith | 8651014 |
| 7386 | 36900.37000.37400.37800.38800.40200.41400.108300.1682900 | Block Work | 10d | 2026-04-06 | 2026-04-15 | 7240, 7370 |  | Zenith | 8717814 |
| 7387 | 36900.37000.37400.37800.38800.40200.41400.108300.1683000 | Fire sprinkler pipe fixing | 6d | 2026-04-16 | 2026-04-21 | 7371, 7386 |  | Zenith | 8717824 |
| 7388 | 36900.37000.37400.37800.38800.40200.41400.108300.1683100 | Internal Plumbing Works | 10d | 2026-04-16 | 2026-04-25 | 7372, 7386 |  | Zenith | 8717834 |
| 7389 | 36900.37000.37400.37800.38800.40200.41400.108300.1683200 | Waterproofing | 14d | 2026-05-24 | 2026-06-06 | 7373, 7388 |  | Zenith | 8717844 |
| 7390 | 36900.37000.37400.37800.38800.40200.41400.108300.1683300 | Internal Plaster | 14d | 2026-05-29 | 2026-06-11 | 7374, 7388, 7389FF+5d |  | Zenith | 8717854 |
| 7391 | 36900.37000.37400.37800.38800.40200.41400.108300.1683400 | IPS flooring work | 10d | 2026-06-12 | 2026-06-21 | 7375, 7390 |  | Zenith | 8717864 |
| 7392 | 36900.37000.37400.37800.38800.40200.41400.108300.1683500 | Toilet dado work | 10d | 2026-06-12 | 2026-06-21 | 7376, 7389, 7390 |  | Zenith | 8717874 |
| 7393 | 36900.37000.37400.37800.38800.40200.41400.108300.1683600 | Toilet flooring work | 7d | 2026-06-22 | 2026-06-28 | 7377, 7392 |  | Zenith | 8717884 |
| 7394 | 36900.37000.37400.37800.38800.40200.41400.108300.1683700 | False Cieling panel fixing | 10d | 2026-06-29 | 2026-07-08 | 7378, 7393 |  | Zenith | 8717894 |
| 7395 | 36900.37000.37400.37800.38800.40200.41400.108300.1683800 | Living dinning flooring | 13d | 2026-06-29 | 2026-07-11 | 7379, 7393 |  | Zenith | 8717904 |
| 7396 | 36900.37000.37400.37800.38800.40200.41400.108300.1683900 | Putty primer coat | 12d | 2026-07-12 | 2026-07-23 | 7380, 7395 |  | Zenith | 8717914 |
| 7397 | 36900.37000.37400.37800.38800.40200.41400.108300.1684000 | Aluminium door-window fixing | 15d | 2026-07-19 | 2026-08-02 | 7381, 7391, 7395 |  | Zenith | 8717924 |
| 7398 | 36900.37000.37400.37800.38800.40200.41400.108300.1684100 | Door shutter fixing (Pre Hung) | 8d | 2026-07-24 | 2026-07-31 | 7382, 7396 |  | Zenith | 8717934 |
| 7399 | 36900.37000.37400.37800.38800.40200.41400.108300.1684200 | Electrical wiring work | 12d | 2026-08-01 | 2026-08-12 | 7383, 7398 |  | Zenith | 8717944 |
| 7400 | 36900.37000.37400.37800.38800.40200.41400.108300.1684300 | Painting 1st coat | 15d | 2026-08-20 | 2026-09-03 | 7384, 7399 |  | Zenith | 8717954 |

| ID | WBS | Task | Duration | Start | Finish | Predecessors | Constraint | Calendar | Unique_Task_ID |
| --- | --- | --- | --- | --- | --- | --- | --- | --- | --- |
| 7401 | 36900.37000.37400.37800.38800.40200.41400.108400 | **9th floor roof** | 156d | 2026-04-16 | 2026-09-18 |  | start no earlier than 2026-04-16 | Zenith | 8651024 |
| 7402 | 36900.37000.37400.37800.38800.40200.41400.108400.1684400 | Block Work | 10d | 2026-04-16 | 2026-04-25 | 7241, 7386 |  | Zenith | 8717964 |
| 7403 | 36900.37000.37400.37800.38800.40200.41400.108400.1684500 | Fire sprinkler pipe fixing | 6d | 2026-04-26 | 2026-05-01 | 7387, 7402 |  | Zenith | 8717974 |
| 7404 | 36900.37000.37400.37800.38800.40200.41400.108400.1684600 | Internal Plumbing Works | 10d | 2026-04-26 | 2026-05-05 | 7388, 7402 |  | Zenith | 8717984 |
| 7405 | 36900.37000.37400.37800.38800.40200.41400.108400.1684700 | Waterproofing | 14d | 2026-06-07 | 2026-06-20 | 7389, 7404 |  | Zenith | 8717994 |
| 7406 | 36900.37000.37400.37800.38800.40200.41400.108400.1684800 | Internal Plaster | 14d | 2026-06-12 | 2026-06-25 | 7390, 7404, 7405FF+5d |  | Zenith | 8718004 |
| 7407 | 36900.37000.37400.37800.38800.40200.41400.108400.1684900 | IPS flooring work | 10d | 2026-06-26 | 2026-07-05 | 7391, 7406 |  | Zenith | 8718014 |
| 7408 | 36900.37000.37400.37800.38800.40200.41400.108400.1685000 | Toilet dado work | 10d | 2026-06-26 | 2026-07-05 | 7392, 7405, 7406 |  | Zenith | 8718024 |
| 7409 | 36900.37000.37400.37800.38800.40200.41400.108400.1685100 | Toilet flooring work | 7d | 2026-07-06 | 2026-07-12 | 7393, 7408 |  | Zenith | 8718034 |
| 7410 | 36900.37000.37400.37800.38800.40200.41400.108400.1685200 | False Cieling panel fixing | 10d | 2026-07-13 | 2026-07-22 | 7394, 7409 |  | Zenith | 8718044 |
| 7411 | 36900.37000.37400.37800.38800.40200.41400.108400.1685300 | Living dinning flooring | 13d | 2026-07-13 | 2026-07-25 | 7395, 7409 |  | Zenith | 8718054 |
| 7412 | 36900.37000.37400.37800.38800.40200.41400.108400.1685400 | Putty primer coat | 12d | 2026-07-26 | 2026-08-06 | 7396, 7411 |  | Zenith | 8718064 |
| 7413 | 36900.37000.37400.37800.38800.40200.41400.108400.1685500 | Aluminium door-window fixing | 15d | 2026-08-03 | 2026-08-17 | 7397, 7407, 7411 |  | Zenith | 8718074 |
| 7414 | 36900.37000.37400.37800.38800.40200.41400.108400.1685600 | Door shutter fixing (Pre Hung) | 8d | 2026-08-07 | 2026-08-14 | 7398, 7412 |  | Zenith | 8718084 |
| 7415 | 36900.37000.37400.37800.38800.40200.41400.108400.1685700 | Electrical wiring work | 12d | 2026-08-15 | 2026-08-26 | 7399, 7414 |  | Zenith | 8718094 |
| 7416 | 36900.37000.37400.37800.38800.40200.41400.108400.1685800 | Painting 1st coat | 15d | 2026-09-04 | 2026-09-18 | 7400, 7415 |  | Zenith | 8718104 |
| 7417 | 36900.37000.37400.37800.38800.40200.41400.108500 | **10th floor roof** | 161d | 2026-04-26 | 2026-10-03 |  | start no earlier than 2026-04-26 | Zenith | 8651034 |
| 7418 | 36900.37000.37400.37800.38800.40200.41400.108500.1685900 | Block Work | 10d | 2026-04-26 | 2026-05-05 | 7242, 7402 |  | Zenith | 8718114 |
| 7419 | 36900.37000.37400.37800.38800.40200.41400.108500.1686000 | Fire sprinkler pipe fixing | 6d | 2026-05-06 | 2026-05-11 | 7403, 7418 |  | Zenith | 8718124 |
| 7420 | 36900.37000.37400.37800.38800.40200.41400.108500.1686100 | Internal Plumbing Works | 10d | 2026-05-06 | 2026-05-15 | 7404, 7418 |  | Zenith | 8718134 |
| 7421 | 36900.37000.37400.37800.38800.40200.41400.108500.1686200 | Waterproofing | 14d | 2026-06-21 | 2026-07-04 | 7405, 7420 |  | Zenith | 8718144 |
| 7422 | 36900.37000.37400.37800.38800.40200.41400.108500.1686300 | Internal Plaster | 14d | 2026-06-26 | 2026-07-09 | 7406, 7420, 7421FF+5d |  | Zenith | 8718154 |
| 7423 | 36900.37000.37400.37800.38800.40200.41400.108500.1686400 | IPS flooring work | 10d | 2026-07-10 | 2026-07-19 | 7407, 7422 |  | Zenith | 8718164 |
| 7424 | 36900.37000.37400.37800.38800.40200.41400.108500.1686500 | Toilet dado work | 10d | 2026-07-10 | 2026-07-19 | 7408, 7421, 7422 |  | Zenith | 8718174 |
| 7425 | 36900.37000.37400.37800.38800.40200.41400.108500.1686600 | Toilet flooring work | 7d | 2026-07-20 | 2026-07-26 | 7409, 7424 |  | Zenith | 8718184 |
| 7426 | 36900.37000.37400.37800.38800.40200.41400.108500.1686700 | False Cieling panel fixing | 10d | 2026-07-27 | 2026-08-05 | 7410, 7425 |  | Zenith | 8718194 |
| 7427 | 36900.37000.37400.37800.38800.40200.41400.108500.1686800 | Living dinning flooring | 13d | 2026-07-27 | 2026-08-08 | 7411, 7425 |  | Zenith | 8718204 |
| 7428 | 36900.37000.37400.37800.38800.40200.41400.108500.1686900 | Putty primer coat | 12d | 2026-08-09 | 2026-08-20 | 7412, 7427 |  | Zenith | 8718214 |
| 7429 | 36900.37000.37400.37800.38800.40200.41400.108500.1687000 | Aluminium door-window fixing | 15d | 2026-08-18 | 2026-09-01 | 7413, 7423, 7427 |  | Zenith | 8718224 |
| 7430 | 36900.37000.37400.37800.38800.40200.41400.108500.1687100 | Door shutter fixing (Pre Hung) | 8d | 2026-08-21 | 2026-08-28 | 7414, 7428 |  | Zenith | 8718234 |
| 7431 | 36900.37000.37400.37800.38800.40200.41400.108500.1687200 | Electrical wiring work | 12d | 2026-08-29 | 2026-09-09 | 7415, 7430 |  | Zenith | 8718244 |
| 7432 | 36900.37000.37400.37800.38800.40200.41400.108500.1687300 | Painting 1st coat | 15d | 2026-09-19 | 2026-10-03 | 7416, 7431 |  | Zenith | 8718254 |

| ID | WBS | Task | Duration | Start | Finish | Predecessors | Constraint | Calendar | Unique_Task_ID |
| --- | --- | --- | --- | --- | --- | --- | --- | --- | --- |
| 7433 | 36900.37000.37400.37800.38800.40200.41400.108600 | **11th floor roof** | 166d | 2026-05-06 | 2026-10-18 |  | start no earlier than 2026-05-06 | Zenith | 8651044 |
| 7434 | 36900.37000.37400.37800.38800.40200.41400.108600.1687400 | Block Work | 10d | 2026-05-06 | 2026-05-15 | 7243, 7418 |  | Zenith | 8718264 |
| 7435 | 36900.37000.37400.37800.38800.40200.41400.108600.1687500 | Fire sprinkler pipe fixing | 6d | 2026-05-16 | 2026-05-21 | 7419, 7434 |  | Zenith | 8718274 |
| 7436 | 36900.37000.37400.37800.38800.40200.41400.108600.1687600 | Internal Plumbing Works | 10d | 2026-05-16 | 2026-05-25 | 7420, 7434 |  | Zenith | 8718284 |
| 7437 | 36900.37000.37400.37800.38800.40200.41400.108600.1687700 | Waterproofing | 14d | 2026-07-05 | 2026-07-18 | 7421, 7436 |  | Zenith | 8718294 |
| 7438 | 36900.37000.37400.37800.38800.40200.41400.108600.1687800 | Internal Plaster | 14d | 2026-07-10 | 2026-07-23 | 7422, 7436, 7437FF+5d |  | Zenith | 8718304 |
| 7439 | 36900.37000.37400.37800.38800.40200.41400.108600.1687900 | IPS flooring work | 10d | 2026-07-24 | 2026-08-02 | 7423, 7438 |  | Zenith | 8718314 |
| 7440 | 36900.37000.37400.37800.38800.40200.41400.108600.1688000 | Toilet dado work | 10d | 2026-07-24 | 2026-08-02 | 7424, 7437, 7438 |  | Zenith | 8718324 |
| 7441 | 36900.37000.37400.37800.38800.40200.41400.108600.1688100 | Toilet flooring work | 7d | 2026-08-03 | 2026-08-09 | 7425, 7440 |  | Zenith | 8718334 |
| 7442 | 36900.37000.37400.37800.38800.40200.41400.108600.1688200 | False Cieling panel fixing | 10d | 2026-08-10 | 2026-08-19 | 7426, 7441 |  | Zenith | 8718344 |
| 7443 | 36900.37000.37400.37800.38800.40200.41400.108600.1688300 | Living dinning flooring | 13d | 2026-08-10 | 2026-08-22 | 7427, 7441 |  | Zenith | 8718354 |
| 7444 | 36900.37000.37400.37800.38800.40200.41400.108600.1688400 | Putty primer coat | 12d | 2026-08-23 | 2026-09-03 | 7428, 7443 |  | Zenith | 8718364 |
| 7445 | 36900.37000.37400.37800.38800.40200.41400.108600.1688500 | Aluminium door-window fixing | 15d | 2026-09-02 | 2026-09-16 | 7429, 7439, 7443 |  | Zenith | 8718374 |
| 7446 | 36900.37000.37400.37800.38800.40200.41400.108600.1688600 | Door shutter fixing (Pre Hung) | 8d | 2026-09-04 | 2026-09-11 | 7430, 7444 |  | Zenith | 8718384 |
| 7447 | 36900.37000.37400.37800.38800.40200.41400.108600.1688700 | Electrical wiring work | 12d | 2026-09-12 | 2026-09-23 | 7431, 7446 |  | Zenith | 8718394 |
| 7448 | 36900.37000.37400.37800.38800.40200.41400.108600.1688800 | Painting 1st coat | 15d | 2026-10-04 | 2026-10-18 | 7432, 7447 |  | Zenith | 8718404 |
| 7449 | 36900.37000.37400.37800.38800.40200.41400.108700 | **12th floor roof** | 171d | 2026-05-16 | 2026-12-17 |  | start no earlier than 2026-05-16 | Zenith | 8651054 |
| 7450 | 36900.37000.37400.37800.38800.40200.41400.108700.1688900 | Block Work | 10d | 2026-05-16 | 2026-05-25 | 7244, 7434 |  | Zenith | 8718414 |
| 7451 | 36900.37000.37400.37800.38800.40200.41400.108700.1689000 | Fire sprinkler pipe fixing | 6d | 2026-05-26 | 2026-05-31 | 7435, 7450 |  | Zenith | 8718424 |
| 7452 | 36900.37000.37400.37800.38800.40200.41400.108700.1689100 | Internal Plumbing Works | 10d | 2026-05-26 | 2026-06-04 | 7436, 7450 |  | Zenith | 8718434 |
| 7453 | 36900.37000.37400.37800.38800.40200.41400.108700.1689200 | Waterproofing | 14d | 2026-07-19 | 2026-08-01 | 7437, 7452 |  | Zenith | 8718444 |
| 7454 | 36900.37000.37400.37800.38800.40200.41400.108700.1689300 | Internal Plaster | 14d | 2026-07-24 | 2026-08-06 | 7438, 7452, 7453FF+5d |  | Zenith | 8718454 |
| 7455 | 36900.37000.37400.37800.38800.40200.41400.108700.1689400 | IPS flooring work | 10d | 2026-08-07 | 2026-08-16 | 7439, 7454 |  | Zenith | 8718464 |
| 7456 | 36900.37000.37400.37800.38800.40200.41400.108700.1689500 | Toilet dado work | 10d | 2026-08-07 | 2026-08-16 | 7440, 7453, 7454 |  | Zenith | 8718474 |
| 7457 | 36900.37000.37400.37800.38800.40200.41400.108700.1689600 | Toilet flooring work | 7d | 2026-08-17 | 2026-08-23 | 7441, 7456 |  | Zenith | 8718484 |
| 7458 | 36900.37000.37400.37800.38800.40200.41400.108700.1689700 | False Cieling panel fixing | 10d | 2026-08-24 | 2026-09-02 | 7442, 7457 |  | Zenith | 8718494 |
| 7459 | 36900.37000.37400.37800.38800.40200.41400.108700.1689800 | Living dinning flooring | 13d | 2026-08-24 | 2026-09-05 | 7443, 7457 |  | Zenith | 8718504 |
| 7460 | 36900.37000.37400.37800.38800.40200.41400.108700.1689900 | Putty primer coat | 12d | 2026-09-06 | 2026-09-17 | 7444, 7459 |  | Zenith | 8718514 |
| 7461 | 36900.37000.37400.37800.38800.40200.41400.108700.1690000 | Aluminium door-window fixing | 15d | 2026-09-17 | 2026-10-01 | 7445, 7455, 7459 |  | Zenith | 8718524 |
| 7462 | 36900.37000.37400.37800.38800.40200.41400.108700.1690100 | Door shutter fixing (Pre Hung) | 8d | 2026-09-18 | 2026-09-25 | 7446, 7460 |  | Zenith | 8718534 |
| 7463 | 36900.37000.37400.37800.38800.40200.41400.108700.1690200 | Electrical wiring work | 12d | 2026-09-26 | 2026-10-07 | 7447, 7462 |  | Zenith | 8718544 |
| 7464 | 36900.37000.37400.37800.38800.40200.41400.108700.1690300 | Painting 1st coat | 15d | 2026-10-19 | 2026-12-17 | 7448, 7463 |  | Zenith | 8718554 |

| ID | WBS | Task | Duration | Start | Finish | Predecessors | Constraint | Calendar | Unique_Task_ID |
| --- | --- | --- | --- | --- | --- | --- | --- | --- | --- |
| 7465 | 36900.37000.37400.37800.38800.40200.41400.108800 | **13th floor roof** | 176d | 2026-05-26 | 2027-01-01 |  | start no earlier than 2026-05-26 | Zenith | 8651064 |
| 7466 | 36900.37000.37400.37800.38800.40200.41400.108800.1690400 | Block Work | 10d | 2026-05-26 | 2026-06-04 | 7245, 7450 |  | Zenith | 8718564 |
| 7467 | 36900.37000.37400.37800.38800.40200.41400.108800.1690500 | Fire sprinkler pipe fixing | 6d | 2026-06-05 | 2026-06-10 | 7451, 7466 |  | Zenith | 8718574 |
| 7468 | 36900.37000.37400.37800.38800.40200.41400.108800.1690600 | Internal Plumbing Works | 10d | 2026-06-05 | 2026-06-14 | 7452, 7466 |  | Zenith | 8718584 |
| 7469 | 36900.37000.37400.37800.38800.40200.41400.108800.1690700 | Waterproofing | 14d | 2026-08-02 | 2026-08-15 | 7453, 7468 |  | Zenith | 8718594 |
| 7470 | 36900.37000.37400.37800.38800.40200.41400.108800.1690800 | Internal Plaster | 14d | 2026-08-07 | 2026-08-20 | 7454, 7468, 7469FF+5d |  | Zenith | 8718604 |
| 7471 | 36900.37000.37400.37800.38800.40200.41400.108800.1690900 | IPS flooring work | 10d | 2026-08-21 | 2026-08-30 | 7455, 7470 |  | Zenith | 8718614 |
| 7472 | 36900.37000.37400.37800.38800.40200.41400.108800.1691000 | Toilet dado work | 10d | 2026-08-21 | 2026-08-30 | 7456, 7469, 7470 |  | Zenith | 8718624 |
| 7473 | 36900.37000.37400.37800.38800.40200.41400.108800.1691100 | Toilet flooring work | 7d | 2026-08-31 | 2026-09-06 | 7457, 7472 |  | Zenith | 8718634 |
| 7474 | 36900.37000.37400.37800.38800.40200.41400.108800.1691200 | False Cieling panel fixing | 10d | 2026-09-07 | 2026-09-16 | 7458, 7473 |  | Zenith | 8718644 |
| 7475 | 36900.37000.37400.37800.38800.40200.41400.108800.1691300 | Living dinning flooring | 13d | 2026-09-07 | 2026-09-19 | 7459, 7473 |  | Zenith | 8718654 |
| 7476 | 36900.37000.37400.37800.38800.40200.41400.108800.1691400 | Putty primer coat | 12d | 2026-09-20 | 2026-10-01 | 7460, 7475 |  | Zenith | 8718664 |
| 7477 | 36900.37000.37400.37800.38800.40200.41400.108800.1691500 | Aluminium door-window fixing | 15d | 2026-10-02 | 2026-10-16 | 7461, 7471, 7475 |  | Zenith | 8718674 |
| 7478 | 36900.37000.37400.37800.38800.40200.41400.108800.1691600 | Door shutter fixing (Pre Hung) | 8d | 2026-10-02 | 2026-10-09 | 7462, 7476 |  | Zenith | 8718684 |
| 7479 | 36900.37000.37400.37800.38800.40200.41400.108800.1691700 | Electrical wiring work | 12d | 2026-10-10 | 2026-10-21 | 7463, 7478 |  | Zenith | 8718694 |
| 7480 | 36900.37000.37400.37800.38800.40200.41400.108800.1691800 | Painting 1st coat | 15d | 2026-12-18 | 2027-01-01 | 7464, 7479 |  | Zenith | 8718704 |
| 7481 | 36900.37000.37400.37800.38800.40200.41400.108900 | **14th floor roof** | 181d | 2026-06-05 | 2027-01-16 |  | start no earlier than 2026-06-05 | Zenith | 8651074 |
| 7482 | 36900.37000.37400.37800.38800.40200.41400.108900.1691900 | Block Work | 10d | 2026-06-05 | 2026-06-14 | 7246, 7466 |  | Zenith | 8718714 |
| 7483 | 36900.37000.37400.37800.38800.40200.41400.108900.1692000 | Fire sprinkler pipe fixing | 6d | 2026-06-15 | 2026-06-20 | 7467, 7482 |  | Zenith | 8718724 |
| 7484 | 36900.37000.37400.37800.38800.40200.41400.108900.1692100 | Internal Plumbing Works | 10d | 2026-06-15 | 2026-06-24 | 7468, 7482 |  | Zenith | 8718734 |
| 7485 | 36900.37000.37400.37800.38800.40200.41400.108900.1692200 | Waterproofing | 14d | 2026-08-16 | 2026-08-29 | 7469, 7484 |  | Zenith | 8718744 |
| 7486 | 36900.37000.37400.37800.38800.40200.41400.108900.1692300 | Internal Plaster | 14d | 2026-08-21 | 2026-09-03 | 7470, 7484, 7485FF+5d |  | Zenith | 8718754 |
| 7487 | 36900.37000.37400.37800.38800.40200.41400.108900.1692400 | IPS flooring work | 10d | 2026-09-04 | 2026-09-13 | 7471, 7486 |  | Zenith | 8718764 |
| 7488 | 36900.37000.37400.37800.38800.40200.41400.108900.1692500 | Toilet dado work | 10d | 2026-09-04 | 2026-09-13 | 7472, 7485, 7486 |  | Zenith | 8718774 |
| 7489 | 36900.37000.37400.37800.38800.40200.41400.108900.1692600 | Toilet flooring work | 7d | 2026-09-14 | 2026-09-20 | 7473, 7488 |  | Zenith | 8718784 |
| 7490 | 36900.37000.37400.37800.38800.40200.41400.108900.1692700 | False Cieling panel fixing | 10d | 2026-09-21 | 2026-09-30 | 7474, 7489 |  | Zenith | 8718794 |
| 7491 | 36900.37000.37400.37800.38800.40200.41400.108900.1692800 | Living dinning flooring | 13d | 2026-09-21 | 2026-10-03 | 7475, 7489 |  | Zenith | 8718804 |
| 7492 | 36900.37000.37400.37800.38800.40200.41400.108900.1692900 | Putty primer coat | 12d | 2026-10-04 | 2026-10-15 | 7476, 7491 |  | Zenith | 8718814 |
| 7493 | 36900.37000.37400.37800.38800.40200.41400.108900.1693000 | Aluminium door-window fixing | 15d | 2026-10-17 | 2026-10-31 | 7477, 7487, 7491 |  | Zenith | 8718824 |
| 7494 | 36900.37000.37400.37800.38800.40200.41400.108900.1693100 | Door shutter fixing (Pre Hung) | 8d | 2026-10-16 | 2026-10-23 | 7478, 7492 |  | Zenith | 8718834 |
| 7495 | 36900.37000.37400.37800.38800.40200.41400.108900.1693200 | Electrical wiring work | 12d | 2026-10-24 | 2026-12-19 | 7479, 7494 |  | Zenith | 8718844 |
| 7496 | 36900.37000.37400.37800.38800.40200.41400.108900.1693300 | Painting 1st coat | 15d | 2027-01-02 | 2027-01-16 | 7480, 7495 |  | Zenith | 8718854 |

| ID | WBS | Task | Duration | Start | Finish | Predecessors | Constraint | Calendar | Unique_Task_ID |
| --- | --- | --- | --- | --- | --- | --- | --- | --- | --- |
| 7497 | 36900.37000.37400.37800.38800.40200.41400.109000 | **15th floor roof** | 186d | 2026-06-15 | 2027-01-31 |  | start no earlier than 2026-06-15 | Zenith | 8651084 |
| 7498 | 36900.37000.37400.37800.38800.40200.41400.109000.1693400 | Block Work | 10d | 2026-06-15 | 2026-06-24 | 7247, 7482 |  | Zenith | 8718864 |
| 7499 | 36900.37000.37400.37800.38800.40200.41400.109000.1693500 | Fire sprinkler pipe fixing | 6d | 2026-06-25 | 2026-06-30 | 7483, 7498 |  | Zenith | 8718874 |
| 7500 | 36900.37000.37400.37800.38800.40200.41400.109000.1693600 | Internal Plumbing Works | 10d | 2026-06-25 | 2026-07-04 | 7484, 7498 |  | Zenith | 8718884 |
| 7501 | 36900.37000.37400.37800.38800.40200.41400.109000.1693700 | Waterproofing | 14d | 2026-08-30 | 2026-09-12 | 7485, 7500 |  | Zenith | 8718894 |
| 7502 | 36900.37000.37400.37800.38800.40200.41400.109000.1693800 | Internal Plaster | 14d | 2026-09-04 | 2026-09-17 | 7486, 7500, 7501FF+5d |  | Zenith | 8718904 |
| 7503 | 36900.37000.37400.37800.38800.40200.41400.109000.1693900 | IPS flooring work | 10d | 2026-09-18 | 2026-09-27 | 7487, 7502 |  | Zenith | 8718914 |
| 7504 | 36900.37000.37400.37800.38800.40200.41400.109000.1694000 | Toilet dado work | 10d | 2026-09-18 | 2026-09-27 | 7488, 7501, 7502 |  | Zenith | 8718924 |
| 7505 | 36900.37000.37400.37800.38800.40200.41400.109000.1694100 | Toilet flooring work | 7d | 2026-09-28 | 2026-10-04 | 7489, 7504 |  | Zenith | 8718934 |
| 7506 | 36900.37000.37400.37800.38800.40200.41400.109000.1694200 | False Cieling panel fixing | 10d | 2026-10-05 | 2026-10-14 | 7490, 7505 |  | Zenith | 8718944 |
| 7507 | 36900.37000.37400.37800.38800.40200.41400.109000.1694300 | Living dinning flooring | 13d | 2026-10-05 | 2026-10-17 | 7491, 7505 |  | Zenith | 8718954 |
| 7508 | 36900.37000.37400.37800.38800.40200.41400.109000.1694400 | Aluminium door-window fixing | 12d | 2026-12-16 | 2026-12-27 | 7493, 7503, 7507 |  | Zenith | 8718964 |
| 7509 | 36900.37000.37400.37800.38800.40200.41400.109000.1694500 | Putty primer coat | 15d | 2026-10-18 | 2026-12-16 | 7492, 7507 |  | Zenith | 8718974 |
| 7510 | 36900.37000.37400.37800.38800.40200.41400.109000.1694600 | Door shutter fixing (Pre Hung) | 8d | 2026-12-17 | 2026-12-24 | 7494, 7509 |  | Zenith | 8718984 |
| 7511 | 36900.37000.37400.37800.38800.40200.41400.109000.1694700 | Electrical wiring work | 12d | 2026-12-25 | 2027-01-05 | 7495, 7510 |  | Zenith | 8718994 |
| 7512 | 36900.37000.37400.37800.38800.40200.41400.109000.1694800 | Painting 1st coat | 15d | 2027-01-17 | 2027-01-31 | 7496, 7511 |  | Zenith | 8719004 |
| 7513 | 36900.37000.37400.37800.38800.40200.41400.109100 | **16th floor roof** | 191d | 2026-06-25 | 2027-02-15 |  | start no earlier than 2026-06-25 | Zenith | 8651094 |
| 7514 | 36900.37000.37400.37800.38800.40200.41400.109100.1694900 | Block Work | 10d | 2026-06-25 | 2026-07-04 | 7248, 7498 |  | Zenith | 8719014 |
| 7515 | 36900.37000.37400.37800.38800.40200.41400.109100.1695000 | Fire sprinkler pipe fixing | 6d | 2026-07-05 | 2026-07-10 | 7499, 7514 |  | Zenith | 8719024 |
| 7516 | 36900.37000.37400.37800.38800.40200.41400.109100.1695100 | Internal Plumbing Works | 10d | 2026-07-05 | 2026-07-14 | 7500, 7514 |  | Zenith | 8719034 |
| 7517 | 36900.37000.37400.37800.38800.40200.41400.109100.1695200 | Waterproofing | 14d | 2026-09-13 | 2026-09-26 | 7501, 7516 |  | Zenith | 8719044 |
| 7518 | 36900.37000.37400.37800.38800.40200.41400.109100.1695300 | Internal Plaster | 14d | 2026-09-18 | 2026-10-01 | 7502, 7516, 7517FF+5d |  | Zenith | 8719054 |
| 7519 | 36900.37000.37400.37800.38800.40200.41400.109100.1695400 | IPS flooring work | 10d | 2026-10-02 | 2026-10-11 | 7503, 7518 |  | Zenith | 8719064 |
| 7520 | 36900.37000.37400.37800.38800.40200.41400.109100.1695500 | Toilet dado work | 10d | 2026-10-02 | 2026-10-11 | 7504, 7517, 7518 |  | Zenith | 8719074 |
| 7521 | 36900.37000.37400.37800.38800.40200.41400.109100.1695600 | Toilet flooring work | 7d | 2026-10-12 | 2026-10-18 | 7505, 7520 |  | Zenith | 8719084 |
| 7522 | 36900.37000.37400.37800.38800.40200.41400.109100.1695700 | False Cieling panel fixing | 10d | 2026-10-19 | 2026-10-28 | 7506, 7521 |  | Zenith | 8719094 |
| 7523 | 36900.37000.37400.37800.38800.40200.41400.109100.1695800 | Living dinning flooring | 13d | 2026-10-19 | 2026-10-31 | 7507, 7521 |  | Zenith | 8719104 |
| 7524 | 36900.37000.37400.37800.38800.40200.41400.109100.1695900 | Putty primer coat | 12d | 2026-12-17 | 2026-12-28 | 7509, 7523 |  | Zenith | 8719114 |
| 7525 | 36900.37000.37400.37800.38800.40200.41400.109100.1696000 | Aluminium door-window fixing | 15d | 2026-12-28 | 2027-01-11 | 7508, 7519, 7523 |  | Zenith | 8719124 |
| 7526 | 36900.37000.37400.37800.38800.40200.41400.109100.1696100 | Door shutter fixing (Pre Hung) | 8d | 2026-12-29 | 2027-01-05 | 7510, 7524 |  | Zenith | 8719134 |
| 7527 | 36900.37000.37400.37800.38800.40200.41400.109100.1696200 | Electrical wiring work | 12d | 2027-01-06 | 2027-01-17 | 7511, 7526 |  | Zenith | 8719144 |
| 7528 | 36900.37000.37400.37800.38800.40200.41400.109100.1696300 | Painting 1st coat | 15d | 2027-02-01 | 2027-02-15 | 7512, 7527 |  | Zenith | 8719154 |

| ID | WBS | Task | Duration | Start | Finish | Predecessors | Constraint | Calendar | Unique_Task_ID |
| --- | --- | --- | --- | --- | --- | --- | --- | --- | --- |
| 7529 | 36900.37000.37400.37800.38800.40200.41400.109200 | **17th floor roof** | 196d | 2026-07-05 | 2027-03-02 |  | start no earlier than 2026-07-05 | Zenith | 8651104 |
| 7530 | 36900.37000.37400.37800.38800.40200.41400.109200.1696400 | Block Work | 10d | 2026-07-05 | 2026-07-14 | 7249, 7514 |  | Zenith | 8719164 |
| 7531 | 36900.37000.37400.37800.38800.40200.41400.109200.1696500 | Fire sprinkler pipe fixing | 6d | 2026-07-15 | 2026-07-20 | 7515, 7530 |  | Zenith | 8719174 |
| 7532 | 36900.37000.37400.37800.38800.40200.41400.109200.1696600 | Internal Plumbing Works | 10d | 2026-07-15 | 2026-07-24 | 7516, 7530 |  | Zenith | 8719184 |
| 7533 | 36900.37000.37400.37800.38800.40200.41400.109200.1696700 | Waterproofing | 14d | 2026-09-27 | 2026-10-10 | 7517, 7532 |  | Zenith | 8719194 |
| 7534 | 36900.37000.37400.37800.38800.40200.41400.109200.1696800 | Internal Plaster | 14d | 2026-10-02 | 2026-10-15 | 7518, 7532, 7533FF+5d |  | Zenith | 8719204 |
| 7535 | 36900.37000.37400.37800.38800.40200.41400.109200.1696900 | IPS flooring work | 10d | 2026-10-16 | 2026-10-25 | 7519, 7534 |  | Zenith | 8719214 |
| 7536 | 36900.37000.37400.37800.38800.40200.41400.109200.1697000 | Toilet dado work | 10d | 2026-10-16 | 2026-10-25 | 7520, 7533, 7534 |  | Zenith | 8719224 |
| 7537 | 36900.37000.37400.37800.38800.40200.41400.109200.1697100 | Toilet flooring work | 7d | 2026-10-26 | 2026-12-16 | 7521, 7536 |  | Zenith | 8719234 |
| 7538 | 36900.37000.37400.37800.38800.40200.41400.109200.1697200 | False Cieling panel fixing | 10d | 2026-12-17 | 2026-12-26 | 7522, 7537 |  | Zenith | 8719244 |
| 7539 | 36900.37000.37400.37800.38800.40200.41400.109200.1697300 | Living dinning flooring | 13d | 2026-12-17 | 2026-12-29 | 7523, 7537 |  | Zenith | 8719254 |
| 7540 | 36900.37000.37400.37800.38800.40200.41400.109200.1697400 | Putty primer coat | 12d | 2026-12-30 | 2027-01-10 | 7524, 7539 |  | Zenith | 8719264 |
| 7541 | 36900.37000.37400.37800.38800.40200.41400.109200.1697500 | Aluminium door-window fixing | 15d | 2027-01-12 | 2027-01-26 | 7525, 7535, 7539 |  | Zenith | 8719274 |
| 7542 | 36900.37000.37400.37800.38800.40200.41400.109200.1697600 | Door shutter fixing (Pre Hung) | 8d | 2027-01-11 | 2027-01-18 | 7526, 7540 |  | Zenith | 8719284 |
| 7543 | 36900.37000.37400.37800.38800.40200.41400.109200.1697700 | Electrical wiring work | 12d | 2027-01-19 | 2027-01-30 | 7527, 7542 |  | Zenith | 8719294 |
| 7544 | 36900.37000.37400.37800.38800.40200.41400.109200.1697800 | Painting 1st coat | 15d | 2027-02-16 | 2027-03-02 | 7528, 7543 |  | Zenith | 8719304 |
| 7545 | 36900.37000.37400.37800.38800.40200.41400.109300 | **18th floor roof** | 201d | 2026-07-15 | 2027-03-17 |  | start no earlier than 2026-07-15 | Zenith | 8651114 |
| 7546 | 36900.37000.37400.37800.38800.40200.41400.109300.1697900 | Block Work | 10d | 2026-07-15 | 2026-07-24 | 7250, 7530 |  | Zenith | 8719314 |
| 7547 | 36900.37000.37400.37800.38800.40200.41400.109300.1698000 | Fire sprinkler pipe fixing | 6d | 2026-07-25 | 2026-07-30 | 7531, 7546 |  | Zenith | 8719324 |
| 7548 | 36900.37000.37400.37800.38800.40200.41400.109300.1698100 | Internal Plumbing Works | 10d | 2026-07-25 | 2026-08-03 | 7532, 7546 |  | Zenith | 8719334 |
| 7549 | 36900.37000.37400.37800.38800.40200.41400.109300.1698200 | Waterproofing | 14d | 2026-10-11 | 2026-10-24 | 7533, 7548 |  | Zenith | 8719344 |
| 7550 | 36900.37000.37400.37800.38800.40200.41400.109300.1698300 | Internal Plaster | 14d | 2026-10-16 | 2026-10-29 | 7534, 7548, 7549FF+5d |  | Zenith | 8719354 |
| 7551 | 36900.37000.37400.37800.38800.40200.41400.109300.1698400 | IPS flooring work | 10d | 2026-10-30 | 2026-12-23 | 7535, 7550 |  | Zenith | 8719364 |
| 7552 | 36900.37000.37400.37800.38800.40200.41400.109300.1698500 | Toilet dado work | 10d | 2026-10-30 | 2026-12-23 | 7536, 7549, 7550 |  | Zenith | 8719374 |
| 7553 | 36900.37000.37400.37800.38800.40200.41400.109300.1698600 | Toilet flooring work | 7d | 2026-12-24 | 2026-12-30 | 7537, 7552 |  | Zenith | 8719384 |
| 7554 | 36900.37000.37400.37800.38800.40200.41400.109300.1698700 | False Cieling panel fixing | 10d | 2026-12-31 | 2027-01-09 | 7538, 7553 |  | Zenith | 8719394 |
| 7555 | 36900.37000.37400.37800.38800.40200.41400.109300.1698800 | Living dinning flooring | 13d | 2026-12-31 | 2027-01-12 | 7539, 7553 |  | Zenith | 8719404 |
| 7556 | 36900.37000.37400.37800.38800.40200.41400.109300.1698900 | Putty primer coat | 12d | 2027-01-13 | 2027-01-24 | 7540, 7555 |  | Zenith | 8719414 |
| 7557 | 36900.37000.37400.37800.38800.40200.41400.109300.1699000 | Aluminium door-window fixing | 15d | 2027-01-27 | 2027-02-10 | 7541, 7551, 7555 |  | Zenith | 8719424 |
| 7558 | 36900.37000.37400.37800.38800.40200.41400.109300.1699100 | Door shutter fixing (Pre Hung) | 8d | 2027-01-25 | 2027-02-01 | 7542, 7556 |  | Zenith | 8719434 |
| 7559 | 36900.37000.37400.37800.38800.40200.41400.109300.1699200 | Electrical wiring work | 12d | 2027-02-02 | 2027-02-13 | 7543, 7558 |  | Zenith | 8719444 |
| 7560 | 36900.37000.37400.37800.38800.40200.41400.109300.1699300 | Painting 1st coat | 15d | 2027-03-03 | 2027-03-17 | 7544, 7559 |  | Zenith | 8719454 |

| ID | WBS | Task | Duration | Start | Finish | Predecessors | Constraint | Calendar | Unique_Task_ID |
| --- | --- | --- | --- | --- | --- | --- | --- | --- | --- |
| 7561 | 36900.37000.37400.37800.38800.40200.41400.109400 | **19th floor roof** | 206d | 2026-07-25 | 2027-04-01 |  | start no earlier than 2026-07-25 | Zenith | 8651124 |
| 7562 | 36900.37000.37400.37800.38800.40200.41400.109400.1699400 | Block Work | 10d | 2026-07-25 | 2026-08-03 | 7251, 7546 |  | Zenith | 8719464 |
| 7563 | 36900.37000.37400.37800.38800.40200.41400.109400.1699500 | Fire sprinkler pipe fixing | 6d | 2026-08-04 | 2026-08-09 | 7547, 7562 |  | Zenith | 8719474 |
| 7564 | 36900.37000.37400.37800.38800.40200.41400.109400.1699600 | Internal Plumbing Works | 10d | 2026-08-04 | 2026-08-13 | 7548, 7562 |  | Zenith | 8719484 |
| 7565 | 36900.37000.37400.37800.38800.40200.41400.109400.1699700 | Waterproofing | 14d | 2026-10-25 | 2026-12-22 | 7549, 7564 |  | Zenith | 8719494 |
| 7566 | 36900.37000.37400.37800.38800.40200.41400.109400.1699800 | Internal Plaster | 14d | 2026-10-30 | 2026-12-27 | 7550, 7564, 7565FF+5d |  | Zenith | 8719504 |
| 7567 | 36900.37000.37400.37800.38800.40200.41400.109400.1699900 | IPS flooring work | 10d | 2026-12-28 | 2027-01-06 | 7551, 7566 |  | Zenith | 8719514 |
| 7568 | 36900.37000.37400.37800.38800.40200.41400.109400.1700000 | Toilet dado work | 10d | 2026-12-28 | 2027-01-06 | 7552, 7565, 7566 |  | Zenith | 8719524 |
| 7569 | 36900.37000.37400.37800.38800.40200.41400.109400.1700100 | Toilet flooring work | 7d | 2027-01-07 | 2027-01-13 | 7553, 7568 |  | Zenith | 8719534 |
| 7570 | 36900.37000.37400.37800.38800.40200.41400.109400.1700200 | False Cieling panel fixing | 10d | 2027-01-14 | 2027-01-23 | 7554, 7569 |  | Zenith | 8719544 |
| 7571 | 36900.37000.37400.37800.38800.40200.41400.109400.1700300 | Living dinning flooring | 13d | 2027-01-14 | 2027-01-26 | 7555, 7569 |  | Zenith | 8719554 |
| 7572 | 36900.37000.37400.37800.38800.40200.41400.109400.1700400 | Putty primer coat | 12d | 2027-01-27 | 2027-02-07 | 7556, 7571 |  | Zenith | 8719564 |
| 7573 | 36900.37000.37400.37800.38800.40200.41400.109400.1700500 | Aluminium door-window fixing | 15d | 2027-02-11 | 2027-02-25 | 7557, 7567, 7571 |  | Zenith | 8719574 |
| 7574 | 36900.37000.37400.37800.38800.40200.41400.109400.1700600 | Door shutter fixing (Pre Hung) | 8d | 2027-02-08 | 2027-02-15 | 7558, 7572 |  | Zenith | 8719584 |
| 7575 | 36900.37000.37400.37800.38800.40200.41400.109400.1700700 | Electrical wiring work | 12d | 2027-02-16 | 2027-02-27 | 7559, 7574 |  | Zenith | 8719594 |
| 7576 | 36900.37000.37400.37800.38800.40200.41400.109400.1700800 | Painting 1st coat | 15d | 2027-03-18 | 2027-04-01 | 7560, 7575 |  | Zenith | 8719604 |
| 7577 | 36900.37000.37400.37800.38800.40200.41400.109500 | **20th floor roof** | 211d | 2026-08-04 | 2027-04-16 |  | start no earlier than 2026-08-04 | Zenith | 8651134 |
| 7578 | 36900.37000.37400.37800.38800.40200.41400.109500.1700900 | Block Work | 10d | 2026-08-04 | 2026-08-13 | 7252, 7562 |  | Zenith | 8719614 |
| 7579 | 36900.37000.37400.37800.38800.40200.41400.109500.1701000 | Fire sprinkler pipe fixing | 6d | 2026-08-14 | 2026-08-19 | 7563, 7578 |  | Zenith | 8719624 |
| 7580 | 36900.37000.37400.37800.38800.40200.41400.109500.1701100 | Internal Plumbing Works | 10d | 2026-08-14 | 2026-08-23 | 7564, 7578 |  | Zenith | 8719634 |
| 7581 | 36900.37000.37400.37800.38800.40200.41400.109500.1701200 | Waterproofing | 14d | 2026-12-23 | 2027-01-05 | 7565, 7580 |  | Zenith | 8719644 |
| 7582 | 36900.37000.37400.37800.38800.40200.41400.109500.1701300 | Internal Plaster | 14d | 2026-12-28 | 2027-01-10 | 7566, 7580, 7581FF+5d |  | Zenith | 8719654 |
| 7583 | 36900.37000.37400.37800.38800.40200.41400.109500.1701400 | IPS flooring work | 10d | 2027-01-11 | 2027-01-20 | 7567, 7582 |  | Zenith | 8719664 |
| 7584 | 36900.37000.37400.37800.38800.40200.41400.109500.1701500 | Toilet dado work | 10d | 2027-01-11 | 2027-01-20 | 7568, 7581, 7582 |  | Zenith | 8719674 |
| 7585 | 36900.37000.37400.37800.38800.40200.41400.109500.1701600 | Toilet flooring work | 7d | 2027-01-21 | 2027-01-27 | 7569, 7584 |  | Zenith | 8719684 |
| 7586 | 36900.37000.37400.37800.38800.40200.41400.109500.1701700 | False Cieling panel fixing | 10d | 2027-01-28 | 2027-02-06 | 7570, 7585 |  | Zenith | 8719694 |
| 7587 | 36900.37000.37400.37800.38800.40200.41400.109500.1701800 | Living dinning flooring | 13d | 2027-01-28 | 2027-02-09 | 7571, 7585 |  | Zenith | 8719704 |
| 7588 | 36900.37000.37400.37800.38800.40200.41400.109500.1701900 | Putty primer coat | 12d | 2027-02-10 | 2027-02-21 | 7572, 7587 |  | Zenith | 8719714 |
| 7589 | 36900.37000.37400.37800.38800.40200.41400.109500.1702000 | Aluminium door-window fixing | 15d | 2027-02-26 | 2027-03-12 | 7573, 7583, 7587 |  | Zenith | 8719724 |
| 7590 | 36900.37000.37400.37800.38800.40200.41400.109500.1702100 | Door shutter fixing (Pre Hung) | 8d | 2027-02-22 | 2027-03-01 | 7574, 7588 |  | Zenith | 8719734 |
| 7591 | 36900.37000.37400.37800.38800.40200.41400.109500.1702200 | Electrical wiring work | 12d | 2027-03-02 | 2027-03-13 | 7575, 7590 |  | Zenith | 8719744 |
| 7592 | 36900.37000.37400.37800.38800.40200.41400.109500.1702300 | Painting 1st coat | 15d | 2027-04-02 | 2027-04-16 | 7576, 7591 |  | Zenith | 8719754 |

| ID | WBS | Task | Duration | Start | Finish | Predecessors | Constraint | Calendar | Unique_Task_ID |
| --- | --- | --- | --- | --- | --- | --- | --- | --- | --- |
| 7593 | 36900.37000.37400.37800.38800.40200.41400.109600 | **21st floor roof** | 216d | 2026-08-14 | 2027-05-01 |  | start no earlier than 2026-08-14 | Zenith | 8651144 |
| 7594 | 36900.37000.37400.37800.38800.40200.41400.109600.1702400 | Block Work | 10d | 2026-08-14 | 2026-08-23 | 7253, 7578 |  | Zenith | 8719764 |
| 7595 | 36900.37000.37400.37800.38800.40200.41400.109600.1702500 | Fire sprinkler pipe fixing | 6d | 2026-08-24 | 2026-08-29 | 7579, 7594 |  | Zenith | 8719774 |
| 7596 | 36900.37000.37400.37800.38800.40200.41400.109600.1702600 | Internal Plumbing Works | 10d | 2026-08-24 | 2026-09-02 | 7580, 7594 |  | Zenith | 8719784 |
| 7597 | 36900.37000.37400.37800.38800.40200.41400.109600.1702700 | Waterproofing | 14d | 2027-01-06 | 2027-01-19 | 7581, 7596 |  | Zenith | 8719794 |
| 7598 | 36900.37000.37400.37800.38800.40200.41400.109600.1702800 | Internal Plaster | 14d | 2027-01-11 | 2027-01-24 | 7582, 7596, 7597FF+5d |  | Zenith | 8719804 |
| 7599 | 36900.37000.37400.37800.38800.40200.41400.109600.1702900 | IPS flooring work | 10d | 2027-01-25 | 2027-02-03 | 7583, 7598 |  | Zenith | 8719814 |
| 7600 | 36900.37000.37400.37800.38800.40200.41400.109600.1703000 | Toilet dado work | 10d | 2027-01-25 | 2027-02-03 | 7584, 7597, 7598 |  | Zenith | 8719824 |
| 7601 | 36900.37000.37400.37800.38800.40200.41400.109600.1703100 | Toilet flooring work | 7d | 2027-02-04 | 2027-02-10 | 7585, 7600 |  | Zenith | 8719834 |
| 7602 | 36900.37000.37400.37800.38800.40200.41400.109600.1703200 | False Cieling panel fixing | 10d | 2027-02-11 | 2027-02-20 | 7586, 7601 |  | Zenith | 8719844 |
| 7603 | 36900.37000.37400.37800.38800.40200.41400.109600.1703300 | Living dinning flooring | 13d | 2027-02-11 | 2027-02-23 | 7587, 7601 |  | Zenith | 8719854 |
| 7604 | 36900.37000.37400.37800.38800.40200.41400.109600.1703400 | Putty primer coat | 12d | 2027-02-24 | 2027-03-07 | 7588, 7603 |  | Zenith | 8719864 |
| 7605 | 36900.37000.37400.37800.38800.40200.41400.109600.1703500 | Aluminium door-window fixing | 15d | 2027-03-13 | 2027-03-27 | 7589, 7599, 7603 |  | Zenith | 8719874 |
| 7606 | 36900.37000.37400.37800.38800.40200.41400.109600.1703600 | Door shutter fixing (Pre Hung) | 8d | 2027-03-08 | 2027-03-15 | 7590, 7604 |  | Zenith | 8719884 |
| 7607 | 36900.37000.37400.37800.38800.40200.41400.109600.1703700 | Electrical wiring work | 12d | 2027-03-16 | 2027-03-27 | 7591, 7606 |  | Zenith | 8719894 |
| 7608 | 36900.37000.37400.37800.38800.40200.41400.109600.1703800 | Painting 1st coat | 15d | 2027-04-17 | 2027-05-01 | 7592, 7607 |  | Zenith | 8719904 |
| 7609 | 36900.37000.37400.37800.38800.40200.41400.109700 | **22nd floor roof** | 221d | 2026-08-24 | 2027-05-16 |  | start no earlier than 2026-08-24 | Zenith | 8651154 |
| 7610 | 36900.37000.37400.37800.38800.40200.41400.109700.1703900 | Block Work | 10d | 2026-08-24 | 2026-09-02 | 7254, 7594 |  | Zenith | 8719914 |
| 7611 | 36900.37000.37400.37800.38800.40200.41400.109700.1704000 | Fire sprinkler pipe fixing | 6d | 2026-09-03 | 2026-09-08 | 7595, 7610 |  | Zenith | 8719924 |
| 7612 | 36900.37000.37400.37800.38800.40200.41400.109700.1704100 | Internal Plumbing Works | 10d | 2026-09-03 | 2026-09-12 | 7596, 7610 |  | Zenith | 8719934 |
| 7613 | 36900.37000.37400.37800.38800.40200.41400.109700.1704200 | Waterproofing | 14d | 2027-01-20 | 2027-02-02 | 7597, 7612 |  | Zenith | 8719944 |
| 7614 | 36900.37000.37400.37800.38800.40200.41400.109700.1704300 | Internal Plaster | 14d | 2027-01-25 | 2027-02-07 | 7598, 7612, 7613FF+5d |  | Zenith | 8719954 |
| 7615 | 36900.37000.37400.37800.38800.40200.41400.109700.1704400 | IPS flooring work | 10d | 2027-02-08 | 2027-02-17 | 7599, 7614 |  | Zenith | 8719964 |
| 7616 | 36900.37000.37400.37800.38800.40200.41400.109700.1704500 | Toilet dado work | 10d | 2027-02-08 | 2027-02-17 | 7600, 7613, 7614 |  | Zenith | 8719974 |
| 7617 | 36900.37000.37400.37800.38800.40200.41400.109700.1704600 | Toilet flooring work | 7d | 2027-02-18 | 2027-02-24 | 7601, 7616 |  | Zenith | 8719984 |
| 7618 | 36900.37000.37400.37800.38800.40200.41400.109700.1704700 | False Cieling panel fixing | 10d | 2027-02-25 | 2027-03-06 | 7602, 7617 |  | Zenith | 8719994 |
| 7619 | 36900.37000.37400.37800.38800.40200.41400.109700.1704800 | Living dinning flooring | 13d | 2027-02-25 | 2027-03-09 | 7603, 7617 |  | Zenith | 8720004 |
| 7620 | 36900.37000.37400.37800.38800.40200.41400.109700.1704900 | Putty primer coat | 12d | 2027-03-10 | 2027-03-21 | 7604, 7619 |  | Zenith | 8720014 |
| 7621 | 36900.37000.37400.37800.38800.40200.41400.109700.1705000 | Aluminium door-window fixing | 15d | 2027-03-28 | 2027-04-11 | 7605, 7615, 7619 |  | Zenith | 8720024 |
| 7622 | 36900.37000.37400.37800.38800.40200.41400.109700.1705100 | Door shutter fixing (Pre Hung) | 8d | 2027-03-22 | 2027-03-29 | 7606, 7620 |  | Zenith | 8720034 |
| 7623 | 36900.37000.37400.37800.38800.40200.41400.109700.1705200 | Electrical wiring work | 12d | 2027-03-30 | 2027-04-10 | 7607, 7622 |  | Zenith | 8720044 |
| 7624 | 36900.37000.37400.37800.38800.40200.41400.109700.1705300 | Painting 1st coat | 15d | 2027-05-02 | 2027-05-16 | 7608, 7623 |  | Zenith | 8720054 |

| ID | WBS | Task | Duration | Start | Finish | Predecessors | Constraint | Calendar | Unique_Task_ID |
| --- | --- | --- | --- | --- | --- | --- | --- | --- | --- |
| 7625 | 36900.37000.37400.37800.38800.40200.41400.109800 | **23rd floor roof** | 226d | 2026-09-03 | 2027-05-31 |  | start no earlier than 2026-09-03 | Zenith | 8651164 |
| 7626 | 36900.37000.37400.37800.38800.40200.41400.109800.1705400 | Block Work | 10d | 2026-09-03 | 2026-09-12 | 7255, 7610 |  | Zenith | 8720064 |
| 7627 | 36900.37000.37400.37800.38800.40200.41400.109800.1705500 | Fire sprinkler pipe fixing | 6d | 2026-09-13 | 2026-09-18 | 7611, 7626 |  | Zenith | 8720074 |
| 7628 | 36900.37000.37400.37800.38800.40200.41400.109800.1705600 | Internal Plumbing Works | 10d | 2026-09-13 | 2026-09-22 | 7612, 7626 |  | Zenith | 8720084 |
| 7629 | 36900.37000.37400.37800.38800.40200.41400.109800.1705700 | Waterproofing | 14d | 2027-02-03 | 2027-02-16 | 7613, 7628 |  | Zenith | 8720094 |
| 7630 | 36900.37000.37400.37800.38800.40200.41400.109800.1705800 | Internal Plaster | 14d | 2027-02-08 | 2027-02-21 | 7614, 7628, 7629FF+5d |  | Zenith | 8720104 |
| 7631 | 36900.37000.37400.37800.38800.40200.41400.109800.1705900 | IPS flooring work | 10d | 2027-02-22 | 2027-03-03 | 7615, 7630 |  | Zenith | 8720114 |
| 7632 | 36900.37000.37400.37800.38800.40200.41400.109800.1706000 | Toilet dado work | 10d | 2027-02-22 | 2027-03-03 | 7616, 7629, 7630 |  | Zenith | 8720124 |
| 7633 | 36900.37000.37400.37800.38800.40200.41400.109800.1706100 | Toilet flooring work | 7d | 2027-03-04 | 2027-03-10 | 7617, 7632 |  | Zenith | 8720134 |
| 7634 | 36900.37000.37400.37800.38800.40200.41400.109800.1706200 | False Cieling panel fixing | 10d | 2027-03-11 | 2027-03-20 | 7618, 7633 |  | Zenith | 8720144 |
| 7635 | 36900.37000.37400.37800.38800.40200.41400.109800.1706300 | Living dinning flooring | 13d | 2027-03-11 | 2027-03-23 | 7619, 7633 |  | Zenith | 8720154 |
| 7636 | 36900.37000.37400.37800.38800.40200.41400.109800.1706400 | Putty primer coat | 12d | 2027-03-24 | 2027-04-04 | 7620, 7635 |  | Zenith | 8720164 |
| 7637 | 36900.37000.37400.37800.38800.40200.41400.109800.1706500 | Aluminium door-window fixing | 15d | 2027-04-12 | 2027-04-26 | 7621, 7631, 7635 |  | Zenith | 8720174 |
| 7638 | 36900.37000.37400.37800.38800.40200.41400.109800.1706600 | Door shutter fixing (Pre Hung) | 8d | 2027-04-05 | 2027-04-12 | 7622, 7636 |  | Zenith | 8720184 |
| 7639 | 36900.37000.37400.37800.38800.40200.41400.109800.1706700 | Electrical wiring work | 12d | 2027-04-13 | 2027-04-24 | 7623, 7638 |  | Zenith | 8720194 |
| 7640 | 36900.37000.37400.37800.38800.40200.41400.109800.1706800 | Painting 1st coat | 15d | 2027-05-17 | 2027-05-31 | 7624, 7639 |  | Zenith | 8720204 |
| 7641 | 36900.37000.37400.37800.38800.40200.41400.109900 | **24th floor roof** | 231d | 2026-09-13 | 2027-06-15 |  | start no earlier than 2026-09-13 | Zenith | 8651174 |
| 7642 | 36900.37000.37400.37800.38800.40200.41400.109900.1706900 | Block Work | 10d | 2026-09-13 | 2026-09-22 | 7256, 7626 |  | Zenith | 8720214 |
| 7643 | 36900.37000.37400.37800.38800.40200.41400.109900.1707000 | Fire sprinkler pipe fixing | 6d | 2026-09-23 | 2026-09-28 | 7627, 7642 |  | Zenith | 8726694 |
| 7644 | 36900.37000.37400.37800.38800.40200.41400.109900.1707100 | Internal Plumbing Works | 10d | 2026-09-23 | 2026-10-02 | 7628, 7642 |  | Zenith | 8726704 |
| 7645 | 36900.37000.37400.37800.38800.40200.41400.109900.1707200 | Waterproofing | 14d | 2027-02-17 | 2027-03-02 | 7629, 7644 |  | Zenith | 8726714 |
| 7646 | 36900.37000.37400.37800.38800.40200.41400.109900.1707300 | Internal Plaster | 14d | 2027-02-22 | 2027-03-07 | 7630, 7644, 7645FF+5d |  | Zenith | 8726724 |
| 7647 | 36900.37000.37400.37800.38800.40200.41400.109900.1707400 | IPS flooring work | 10d | 2027-03-08 | 2027-03-17 | 7631, 7646 |  | Zenith | 8726734 |
| 7648 | 36900.37000.37400.37800.38800.40200.41400.109900.1707500 | Toilet dado work | 10d | 2027-03-08 | 2027-03-17 | 7632, 7645, 7646 |  | Zenith | 8726744 |
| 7649 | 36900.37000.37400.37800.38800.40200.41400.109900.1707600 | Toilet flooring work | 7d | 2027-03-18 | 2027-03-24 | 7633, 7648 |  | Zenith | 8726754 |
| 7650 | 36900.37000.37400.37800.38800.40200.41400.109900.1707700 | False Cieling panel fixing | 10d | 2027-03-25 | 2027-04-03 | 7634, 7649 |  | Zenith | 8726764 |
| 7651 | 36900.37000.37400.37800.38800.40200.41400.109900.1707800 | Living dinning flooring | 13d | 2027-03-25 | 2027-04-06 | 7635, 7649 |  | Zenith | 8726774 |
| 7652 | 36900.37000.37400.37800.38800.40200.41400.109900.1707900 | Putty primer coat | 12d | 2027-04-07 | 2027-04-18 | 7636, 7651 |  | Zenith | 8726784 |
| 7653 | 36900.37000.37400.37800.38800.40200.41400.109900.1708000 | Aluminium door-window fixing | 15d | 2027-04-27 | 2027-05-11 | 7637, 7647, 7651 |  | Zenith | 8726794 |
| 7654 | 36900.37000.37400.37800.38800.40200.41400.109900.1708100 | Door shutter fixing (Pre Hung) | 8d | 2027-04-19 | 2027-04-26 | 7638, 7652 |  | Zenith | 8726804 |
| 7655 | 36900.37000.37400.37800.38800.40200.41400.109900.1708200 | Electrical wiring work | 12d | 2027-04-27 | 2027-05-08 | 7639, 7654 |  | Zenith | 8726814 |
| 7656 | 36900.37000.37400.37800.38800.40200.41400.109900.1708300 | Painting 1st coat | 15d | 2027-06-01 | 2027-06-15 | 7640, 7655 |  | Zenith | 8726824 |

| ID | WBS | Task | Duration | Start | Finish | Predecessors | Constraint | Calendar | Unique_Task_ID |
| --- | --- | --- | --- | --- | --- | --- | --- | --- | --- |
| 7657 | 36900.37000.37400.37800.38800.40200.41400.110000 | **25th floor roof** | 236d | 2026-09-23 | 2027-06-30 |  | start no earlier than 2026-09-23 | Zenith | 8651184 |
| 7658 | 36900.37000.37400.37800.38800.40200.41400.110000.1708400 | Block Work | 10d | 2026-09-23 | 2026-10-02 | 7257, 7642 |  | Zenith | 8726834 |
| 7659 | 36900.37000.37400.37800.38800.40200.41400.110000.1708500 | Fire sprinkler pipe fixing | 6d | 2026-10-03 | 2026-10-08 | 7643, 7658 |  | Zenith | 8726844 |
| 7660 | 36900.37000.37400.37800.38800.40200.41400.110000.1708600 | Internal Plumbing Works | 10d | 2026-10-03 | 2026-10-12 | 7644, 7658 |  | Zenith | 8726854 |
| 7661 | 36900.37000.37400.37800.38800.40200.41400.110000.1708700 | Waterproofing | 14d | 2027-03-03 | 2027-03-16 | 7645, 7660 |  | Zenith | 8726864 |
| 7662 | 36900.37000.37400.37800.38800.40200.41400.110000.1708800 | Internal Plaster | 14d | 2027-03-08 | 2027-03-21 | 7646, 7660, 7661FF+5d |  | Zenith | 8726874 |
| 7663 | 36900.37000.37400.37800.38800.40200.41400.110000.1708900 | IPS flooring work | 10d | 2027-03-22 | 2027-03-31 | 7647, 7662 |  | Zenith | 8726884 |
| 7664 | 36900.37000.37400.37800.38800.40200.41400.110000.1709000 | Toilet dado work | 10d | 2027-03-22 | 2027-03-31 | 7648, 7661, 7662 |  | Zenith | 8726894 |
| 7665 | 36900.37000.37400.37800.38800.40200.41400.110000.1709100 | Toilet flooring work | 7d | 2027-04-01 | 2027-04-07 | 7649, 7664 |  | Zenith | 8726904 |
| 7666 | 36900.37000.37400.37800.38800.40200.41400.110000.1709200 | False Cieling panel fixing | 10d | 2027-04-08 | 2027-04-17 | 7650, 7665 |  | Zenith | 8726914 |
| 7667 | 36900.37000.37400.37800.38800.40200.41400.110000.1709300 | Living dinning flooring | 13d | 2027-04-08 | 2027-04-20 | 7651, 7665 |  | Zenith | 8726924 |
| 7668 | 36900.37000.37400.37800.38800.40200.41400.110000.1709400 | Putty primer coat | 12d | 2027-04-21 | 2027-05-02 | 7652, 7667 |  | Zenith | 8726934 |
| 7669 | 36900.37000.37400.37800.38800.40200.41400.110000.1709500 | Aluminium door-window fixing | 15d | 2027-05-12 | 2027-05-26 | 7653, 7663, 7667 |  | Zenith | 8726944 |
| 7670 | 36900.37000.37400.37800.38800.40200.41400.110000.1709600 | Door shutter fixing (Pre Hung) | 8d | 2027-05-03 | 2027-05-10 | 7654, 7668 |  | Zenith | 8726954 |
| 7671 | 36900.37000.37400.37800.38800.40200.41400.110000.1709700 | Electrical wiring work | 12d | 2027-05-11 | 2027-05-22 | 7655, 7670 |  | Zenith | 8726964 |
| 7672 | 36900.37000.37400.37800.38800.40200.41400.110000.1709800 | Painting 1st coat | 15d | 2027-06-16 | 2027-06-30 | 7656, 7671 |  | Zenith | 8726974 |
| 7673 | 36900.37000.37400.37800.38800.40200.41400.110100 | **26th floor roof** | 241d | 2026-10-03 | 2027-07-15 |  | start no earlier than 2026-10-03 | Zenith | 8651194 |
| 7674 | 36900.37000.37400.37800.38800.40200.41400.110100.1709900 | Block Work | 10d | 2026-10-03 | 2026-10-12 | 7258, 7658 |  | Zenith | 8726984 |
| 7675 | 36900.37000.37400.37800.38800.40200.41400.110100.1710000 | Fire sprinkler pipe fixing | 6d | 2026-10-13 | 2026-10-18 | 7659, 7674 |  | Zenith | 8726994 |
| 7676 | 36900.37000.37400.37800.38800.40200.41400.110100.1710100 | Internal Plumbing Works | 10d | 2026-10-13 | 2026-10-22 | 7660, 7674 |  | Zenith | 8727004 |
| 7677 | 36900.37000.37400.37800.38800.40200.41400.110100.1710200 | Waterproofing | 14d | 2027-03-17 | 2027-03-30 | 7661, 7676 |  | Zenith | 8727014 |
| 7678 | 36900.37000.37400.37800.38800.40200.41400.110100.1710300 | Internal Plaster | 14d | 2027-03-22 | 2027-04-04 | 7662, 7676, 7677FF+5d |  | Zenith | 8727024 |
| 7679 | 36900.37000.37400.37800.38800.40200.41400.110100.1710400 | IPS flooring work | 10d | 2027-04-05 | 2027-04-14 | 7663, 7678 |  | Zenith | 8727034 |
| 7680 | 36900.37000.37400.37800.38800.40200.41400.110100.1710500 | Toilet dado work | 10d | 2027-04-05 | 2027-04-14 | 7664, 7677, 7678 |  | Zenith | 8727044 |
| 7681 | 36900.37000.37400.37800.38800.40200.41400.110100.1710600 | Toilet flooring work | 7d | 2027-04-15 | 2027-04-21 | 7665, 7680 |  | Zenith | 8727054 |
| 7682 | 36900.37000.37400.37800.38800.40200.41400.110100.1710700 | False Cieling panel fixing | 10d | 2027-04-22 | 2027-05-01 | 7666, 7681 |  | Zenith | 8727064 |
| 7683 | 36900.37000.37400.37800.38800.40200.41400.110100.1710800 | Living dinning flooring | 13d | 2027-04-22 | 2027-05-04 | 7667, 7681 |  | Zenith | 8727074 |
| 7684 | 36900.37000.37400.37800.38800.40200.41400.110100.1710900 | Putty primer coat | 12d | 2027-05-05 | 2027-05-16 | 7668, 7683 |  | Zenith | 8727084 |
| 7685 | 36900.37000.37400.37800.38800.40200.41400.110100.1711000 | Aluminium door-window fixing | 15d | 2027-05-27 | 2027-06-10 | 7669, 7679, 7683 |  | Zenith | 8727094 |
| 7686 | 36900.37000.37400.37800.38800.40200.41400.110100.1711100 | Door shutter fixing (Pre Hung) | 8d | 2027-05-17 | 2027-05-24 | 7670, 7684 |  | Zenith | 8727104 |
| 7687 | 36900.37000.37400.37800.38800.40200.41400.110100.1711200 | Electrical wiring work | 12d | 2027-05-25 | 2027-06-05 | 7671, 7686 |  | Zenith | 8727114 |
| 7688 | 36900.37000.37400.37800.38800.40200.41400.110100.1711300 | Painting 1st coat | 15d | 2027-07-01 | 2027-07-15 | 7672, 7687 |  | Zenith | 8727124 |

| ID | WBS | Task | Duration | Start | Finish | Predecessors | Constraint | Calendar | Unique_Task_ID |
| --- | --- | --- | --- | --- | --- | --- | --- | --- | --- |
| 7689 | 36900.37000.37400.37800.38800.40200.41400.110200 | **27th floor roof** | 246d | 2026-10-13 | 2027-07-30 |  | start no earlier than 2026-10-13 | Zenith | 8651204 |
| 7690 | 36900.37000.37400.37800.38800.40200.41400.110200.1711400 | Block Work | 10d | 2026-10-13 | 2026-10-22 | 7259, 7674 |  | Zenith | 8727134 |
| 7691 | 36900.37000.37400.37800.38800.40200.41400.110200.1711500 | Fire sprinkler pipe fixing | 6d | 2026-10-23 | 2026-10-28 | 7675, 7690 |  | Zenith | 8727144 |
| 7692 | 36900.37000.37400.37800.38800.40200.41400.110200.1711600 | Internal Plumbing Works | 10d | 2026-10-23 | 2026-12-16 | 7676, 7690 |  | Zenith | 8727154 |
| 7693 | 36900.37000.37400.37800.38800.40200.41400.110200.1711700 | Waterproofing | 14d | 2027-03-31 | 2027-04-13 | 7677, 7692 |  | Zenith | 8727164 |
| 7694 | 36900.37000.37400.37800.38800.40200.41400.110200.1711800 | Internal Plaster | 14d | 2027-04-05 | 2027-04-18 | 7678, 7692, 7693FF+5d |  | Zenith | 8727174 |
| 7695 | 36900.37000.37400.37800.38800.40200.41400.110200.1711900 | IPS flooring work | 10d | 2027-04-19 | 2027-04-28 | 7679, 7694 |  | Zenith | 8727184 |
| 7696 | 36900.37000.37400.37800.38800.40200.41400.110200.1712000 | Toilet dado work | 10d | 2027-04-19 | 2027-04-28 | 7680, 7693, 7694 |  | Zenith | 8727194 |
| 7697 | 36900.37000.37400.37800.38800.40200.41400.110200.1712100 | Toilet flooring work | 7d | 2027-04-29 | 2027-05-05 | 7681, 7696 |  | Zenith | 8727204 |
| 7698 | 36900.37000.37400.37800.38800.40200.41400.110200.1712200 | False Cieling panel fixing | 10d | 2027-05-06 | 2027-05-15 | 7682, 7697 |  | Zenith | 8727214 |
| 7699 | 36900.37000.37400.37800.38800.40200.41400.110200.1712300 | Living dinning flooring | 13d | 2027-05-06 | 2027-05-18 | 7683, 7697 |  | Zenith | 8727224 |
| 7700 | 36900.37000.37400.37800.38800.40200.41400.110200.1712400 | Putty primer coat | 12d | 2027-05-19 | 2027-05-30 | 7684, 7699 |  | Zenith | 8727234 |
| 7701 | 36900.37000.37400.37800.38800.40200.41400.110200.1712500 | Aluminium door-window fixing | 15d | 2027-06-11 | 2027-06-25 | 7685, 7695, 7699 |  | Zenith | 8727244 |
| 7702 | 36900.37000.37400.37800.38800.40200.41400.110200.1712600 | Door shutter fixing (Pre Hung) | 8d | 2027-05-31 | 2027-06-07 | 7686, 7700 |  | Zenith | 8727254 |
| 7703 | 36900.37000.37400.37800.38800.40200.41400.110200.1712700 | Electrical wiring work | 12d | 2027-06-08 | 2027-06-19 | 7687, 7702 |  | Zenith | 8727264 |
| 7704 | 36900.37000.37400.37800.38800.40200.41400.110200.1712800 | Painting 1st coat | 15d | 2027-07-16 | 2027-07-30 | 7688, 7703 |  | Zenith | 8727274 |
| 7705 | 36900.37000.37400.37800.38800.40200.41400.110300 | **28th floor roof** | 251d | 2026-10-23 | 2027-08-14 |  | start no earlier than 2026-10-23 | Zenith | 8651214 |
| 7706 | 36900.37000.37400.37800.38800.40200.41400.110300.1712900 | Block Work | 10d | 2026-10-23 | 2026-12-16 | 7260, 7690 |  | Zenith | 8727284 |
| 7707 | 36900.37000.37400.37800.38800.40200.41400.110300.1713000 | Fire sprinkler pipe fixing | 6d | 2026-12-17 | 2026-12-22 | 7691, 7706 |  | Zenith | 8727294 |
| 7708 | 36900.37000.37400.37800.38800.40200.41400.110300.1713100 | Internal Plumbing Works | 10d | 2026-12-17 | 2026-12-26 | 7692, 7706 |  | Zenith | 8727304 |
| 7709 | 36900.37000.37400.37800.38800.40200.41400.110300.1713200 | Waterproofing | 14d | 2027-04-14 | 2027-04-27 | 7693, 7708 |  | Zenith | 8727314 |
| 7710 | 36900.37000.37400.37800.38800.40200.41400.110300.1713300 | Internal Plaster | 14d | 2027-04-19 | 2027-05-02 | 7694, 7708, 7709FF+5d |  | Zenith | 8727324 |
| 7711 | 36900.37000.37400.37800.38800.40200.41400.110300.1713400 | IPS flooring work | 10d | 2027-05-03 | 2027-05-12 | 7695, 7710 |  | Zenith | 8727334 |
| 7712 | 36900.37000.37400.37800.38800.40200.41400.110300.1713500 | Toilet dado work | 10d | 2027-05-03 | 2027-05-12 | 7696, 7709, 7710 |  | Zenith | 8727344 |
| 7713 | 36900.37000.37400.37800.38800.40200.41400.110300.1713600 | Toilet flooring work | 7d | 2027-05-13 | 2027-05-19 | 7697, 7712 |  | Zenith | 8727354 |
| 7714 | 36900.37000.37400.37800.38800.40200.41400.110300.1713700 | False Cieling panel fixing | 10d | 2027-05-20 | 2027-05-29 | 7698, 7713 |  | Zenith | 8727364 |
| 7715 | 36900.37000.37400.37800.38800.40200.41400.110300.1713800 | Living dinning flooring | 13d | 2027-05-20 | 2027-06-01 | 7699, 7713 |  | Zenith | 8727374 |
| 7716 | 36900.37000.37400.37800.38800.40200.41400.110300.1713900 | Putty primer coat | 12d | 2027-06-02 | 2027-06-13 | 7700, 7715 |  | Zenith | 8727384 |
| 7717 | 36900.37000.37400.37800.38800.40200.41400.110300.1714000 | Aluminium door-window fixing | 15d | 2027-06-26 | 2027-07-10 | 7701, 7711, 7715 |  | Zenith | 8727394 |
| 7718 | 36900.37000.37400.37800.38800.40200.41400.110300.1714100 | Door shutter fixing (Pre Hung) | 8d | 2027-06-14 | 2027-06-21 | 7702, 7716 |  | Zenith | 8727404 |
| 7719 | 36900.37000.37400.37800.38800.40200.41400.110300.1714200 | Electrical wiring work | 12d | 2027-06-22 | 2027-07-03 | 7703, 7718 |  | Zenith | 8727414 |
| 7720 | 36900.37000.37400.37800.38800.40200.41400.110300.1714300 | Painting 1st coat | 15d | 2027-07-31 | 2027-08-14 | 7704, 7719 |  | Zenith | 8727424 |

| ID | WBS | Task | Duration | Start | Finish | Predecessors | Constraint | Calendar | Unique_Task_ID |
| --- | --- | --- | --- | --- | --- | --- | --- | --- | --- |
| 7721 | 36900.37000.37400.37800.38800.40200.41400.110400 | **29th floor roof** | 256d | 2026-12-17 | 2027-08-29 |  | start no earlier than 2026-12-17 | Zenith | 8651224 |
| 7722 | 36900.37000.37400.37800.38800.40200.41400.110400.1714400 | Block Work | 10d | 2026-12-17 | 2026-12-26 | 7261, 7706 |  | Zenith | 8727434 |
| 7723 | 36900.37000.37400.37800.38800.40200.41400.110400.1714500 | Fire sprinkler pipe fixing | 6d | 2026-12-27 | 2027-01-01 | 7707, 7722 |  | Zenith | 8727444 |
| 7724 | 36900.37000.37400.37800.38800.40200.41400.110400.1714600 | Internal Plumbing Works | 10d | 2026-12-27 | 2027-01-05 | 7708, 7722 |  | Zenith | 8727454 |
| 7725 | 36900.37000.37400.37800.38800.40200.41400.110400.1714700 | Waterproofing | 14d | 2027-04-28 | 2027-05-11 | 7709, 7724 |  | Zenith | 8727464 |
| 7726 | 36900.37000.37400.37800.38800.40200.41400.110400.1714800 | Internal Plaster | 14d | 2027-05-03 | 2027-05-16 | 7710, 7724, 7725FF+5d |  | Zenith | 8727474 |
| 7727 | 36900.37000.37400.37800.38800.40200.41400.110400.1714900 | IPS flooring work | 10d | 2027-05-17 | 2027-05-26 | 7711, 7726 |  | Zenith | 8727484 |
| 7728 | 36900.37000.37400.37800.38800.40200.41400.110400.1715000 | Toilet dado work | 10d | 2027-05-17 | 2027-05-26 | 7712, 7725, 7726 |  | Zenith | 8727494 |
| 7729 | 36900.37000.37400.37800.38800.40200.41400.110400.1715100 | Toilet flooring work | 7d | 2027-05-27 | 2027-06-02 | 7713, 7728 |  | Zenith | 8727504 |
| 7730 | 36900.37000.37400.37800.38800.40200.41400.110400.1715200 | False Cieling panel fixing | 10d | 2027-06-03 | 2027-06-12 | 7714, 7729 |  | Zenith | 8727514 |
| 7731 | 36900.37000.37400.37800.38800.40200.41400.110400.1715300 | Living dinning flooring | 13d | 2027-06-03 | 2027-06-15 | 7715, 7729 |  | Zenith | 8727524 |
| 7732 | 36900.37000.37400.37800.38800.40200.41400.110400.1715400 | Putty primer coat | 12d | 2027-06-16 | 2027-06-27 | 7716, 7731 |  | Zenith | 8727534 |
| 7733 | 36900.37000.37400.37800.38800.40200.41400.110400.1715500 | Aluminium door-window fixing | 15d | 2027-07-11 | 2027-07-25 | 7717, 7727, 7731 |  | Zenith | 8727544 |
| 7734 | 36900.37000.37400.37800.38800.40200.41400.110400.1715600 | Door shutter fixing (Pre Hung) | 8d | 2027-06-28 | 2027-07-05 | 7718, 7732 |  | Zenith | 8727554 |
| 7735 | 36900.37000.37400.37800.38800.40200.41400.110400.1715700 | Electrical wiring work | 12d | 2027-07-06 | 2027-07-17 | 7719, 7734 |  | Zenith | 8727564 |
| 7736 | 36900.37000.37400.37800.38800.40200.41400.110400.1715800 | Painting 1st coat | 15d | 2027-08-15 | 2027-08-29 | 7720, 7735 |  | Zenith | 8727574 |
| 7737 | 36900.37000.37400.37800.38800.40200.41400.110500 | **30th floor roof** | 261d | 2026-12-27 | 2027-09-13 |  | start no earlier than 2026-12-27 | Zenith | 8651234 |
| 7738 | 36900.37000.37400.37800.38800.40200.41400.110500.1715900 | Block Work | 10d | 2026-12-27 | 2027-01-05 | 7262, 7722 |  | Zenith | 8727584 |
| 7739 | 36900.37000.37400.37800.38800.40200.41400.110500.1716000 | Fire sprinkler pipe fixing | 6d | 2027-01-06 | 2027-01-11 | 7723, 7738 |  | Zenith | 8727594 |
| 7740 | 36900.37000.37400.37800.38800.40200.41400.110500.1716100 | Internal Plumbing Works | 10d | 2027-01-06 | 2027-01-15 | 7724, 7738 |  | Zenith | 8727604 |
| 7741 | 36900.37000.37400.37800.38800.40200.41400.110500.1716200 | Waterproofing | 14d | 2027-05-12 | 2027-05-25 | 7725, 7740 |  | Zenith | 8727614 |
| 7742 | 36900.37000.37400.37800.38800.40200.41400.110500.1716300 | Internal Plaster | 14d | 2027-05-17 | 2027-05-30 | 7726, 7740, 7741FF+5d |  | Zenith | 8727624 |
| 7743 | 36900.37000.37400.37800.38800.40200.41400.110500.1716400 | IPS flooring work | 10d | 2027-05-31 | 2027-06-09 | 7727, 7742 |  | Zenith | 8727634 |
| 7744 | 36900.37000.37400.37800.38800.40200.41400.110500.1716500 | Toilet dado work | 10d | 2027-05-31 | 2027-06-09 | 7728, 7741, 7742 |  | Zenith | 8727644 |
| 7745 | 36900.37000.37400.37800.38800.40200.41400.110500.1716600 | Toilet flooring work | 7d | 2027-06-10 | 2027-06-16 | 7729, 7744 |  | Zenith | 8727654 |
| 7746 | 36900.37000.37400.37800.38800.40200.41400.110500.1716700 | False Cieling panel fixing | 10d | 2027-06-17 | 2027-06-26 | 7730, 7745 |  | Zenith | 8727664 |
| 7747 | 36900.37000.37400.37800.38800.40200.41400.110500.1716800 | Living dinning flooring | 13d | 2027-06-17 | 2027-06-29 | 7731, 7745 |  | Zenith | 8727674 |
| 7748 | 36900.37000.37400.37800.38800.40200.41400.110500.1716900 | Putty primer coat | 12d | 2027-06-30 | 2027-07-11 | 7732, 7747 |  | Zenith | 8727684 |
| 7749 | 36900.37000.37400.37800.38800.40200.41400.110500.1717000 | Aluminium door-window fixing | 15d | 2027-07-26 | 2027-08-09 | 7733, 7743, 7747 |  | Zenith | 8727694 |
| 7750 | 36900.37000.37400.37800.38800.40200.41400.110500.1717100 | Door shutter fixing (Pre Hung) | 8d | 2027-07-12 | 2027-07-19 | 7734, 7748 |  | Zenith | 8727704 |
| 7751 | 36900.37000.37400.37800.38800.40200.41400.110500.1717200 | Electrical wiring work | 12d | 2027-07-20 | 2027-07-31 | 7735, 7750 |  | Zenith | 8727714 |
| 7752 | 36900.37000.37400.37800.38800.40200.41400.110500.1717300 | Painting 1st coat | 15d | 2027-08-30 | 2027-09-13 | 7736, 7751 |  | Zenith | 8727724 |

| ID | WBS | Task | Duration | Start | Finish | Predecessors | Constraint | Calendar | Unique_Task_ID |
| --- | --- | --- | --- | --- | --- | --- | --- | --- | --- |
| 7753 | 36900.37000.37400.37800.38800.40200.41400.110600 | **31st floor roof** | 266d | 2027-01-06 | 2027-09-28 |  | start no earlier than 2027-01-06 | Zenith | 8651244 |
| 7754 | 36900.37000.37400.37800.38800.40200.41400.110600.1717400 | Block Work | 10d | 2027-01-06 | 2027-01-15 | 7263, 7738 |  | Zenith | 8727734 |
| 7755 | 36900.37000.37400.37800.38800.40200.41400.110600.1717500 | Fire sprinkler pipe fixing | 6d | 2027-01-16 | 2027-01-21 | 7739, 7754 |  | Zenith | 8727744 |
| 7756 | 36900.37000.37400.37800.38800.40200.41400.110600.1717600 | Internal Plumbing Works | 10d | 2027-01-16 | 2027-01-25 | 7740, 7754 |  | Zenith | 8727754 |
| 7757 | 36900.37000.37400.37800.38800.40200.41400.110600.1717700 | Waterproofing | 14d | 2027-05-26 | 2027-06-08 | 7741, 7756 |  | Zenith | 8727764 |
| 7758 | 36900.37000.37400.37800.38800.40200.41400.110600.1717800 | Internal Plaster | 14d | 2027-05-31 | 2027-06-13 | 7742, 7756, 7757FF+5d |  | Zenith | 8727774 |
| 7759 | 36900.37000.37400.37800.38800.40200.41400.110600.1717900 | IPS flooring work | 10d | 2027-06-14 | 2027-06-23 | 7743, 7758 |  | Zenith | 8727784 |
| 7760 | 36900.37000.37400.37800.38800.40200.41400.110600.1718000 | Toilet dado work | 10d | 2027-06-14 | 2027-06-23 | 7744, 7757, 7758 |  | Zenith | 8727794 |
| 7761 | 36900.37000.37400.37800.38800.40200.41400.110600.1718100 | Toilet flooring work | 7d | 2027-06-24 | 2027-06-30 | 7745, 7760 |  | Zenith | 8727804 |
| 7762 | 36900.37000.37400.37800.38800.40200.41400.110600.1718200 | False Cieling panel fixing | 10d | 2027-07-01 | 2027-07-10 | 7746, 7761 |  | Zenith | 8727814 |
| 7763 | 36900.37000.37400.37800.38800.40200.41400.110600.1718300 | Living dinning flooring | 13d | 2027-07-01 | 2027-07-13 | 7747, 7761 |  | Zenith | 8727824 |
| 7764 | 36900.37000.37400.37800.38800.40200.41400.110600.1718400 | Putty primer coat | 12d | 2027-07-14 | 2027-07-25 | 7748, 7763 |  | Zenith | 8727834 |
| 7765 | 36900.37000.37400.37800.38800.40200.41400.110600.1718500 | Aluminium door-window fixing | 15d | 2027-08-10 | 2027-08-24 | 7749, 7759, 7763 |  | Zenith | 8727844 |
| 7766 | 36900.37000.37400.37800.38800.40200.41400.110600.1718600 | Door shutter fixing (Pre Hung) | 8d | 2027-07-26 | 2027-08-02 | 7750, 7764 |  | Zenith | 8727854 |
| 7767 | 36900.37000.37400.37800.38800.40200.41400.110600.1718700 | Electrical wiring work | 12d | 2027-08-03 | 2027-08-14 | 7751, 7766 |  | Zenith | 8727864 |
| 7768 | 36900.37000.37400.37800.38800.40200.41400.110600.1718800 | Painting 1st coat | 15d | 2027-09-14 | 2027-09-28 | 7752, 7767 |  | Zenith | 8727874 |
| 7769 | 36900.37000.37400.37800.38800.40200.41400.110700 | **32nd floor roof** | 271d | 2027-01-16 | 2027-10-13 |  | start no earlier than 2027-01-16 | Zenith | 8651254 |
| 7770 | 36900.37000.37400.37800.38800.40200.41400.110700.1718900 | Block Work | 10d | 2027-01-16 | 2027-01-25 | 7264, 7754 |  | Zenith | 8727884 |
| 7771 | 36900.37000.37400.37800.38800.40200.41400.110700.1719000 | Fire sprinkler pipe fixing | 6d | 2027-01-26 | 2027-01-31 | 7755, 7770 |  | Zenith | 8727894 |
| 7772 | 36900.37000.37400.37800.38800.40200.41400.110700.1719100 | Internal Plumbing Works | 10d | 2027-01-26 | 2027-02-04 | 7756, 7770 |  | Zenith | 8727904 |
| 7773 | 36900.37000.37400.37800.38800.40200.41400.110700.1719200 | Waterproofing | 14d | 2027-06-09 | 2027-06-22 | 7757, 7772 |  | Zenith | 8727914 |
| 7774 | 36900.37000.37400.37800.38800.40200.41400.110700.1719300 | Internal Plaster | 14d | 2027-06-14 | 2027-06-27 | 7758, 7772, 7773FF+5d |  | Zenith | 8727924 |
| 7775 | 36900.37000.37400.37800.38800.40200.41400.110700.1719400 | IPS flooring work | 10d | 2027-06-28 | 2027-07-07 | 7759, 7774 |  | Zenith | 8727934 |
| 7776 | 36900.37000.37400.37800.38800.40200.41400.110700.1719500 | Toilet dado work | 10d | 2027-06-28 | 2027-07-07 | 7760, 7773, 7774 |  | Zenith | 8727944 |
| 7777 | 36900.37000.37400.37800.38800.40200.41400.110700.1719600 | Toilet flooring work | 7d | 2027-07-08 | 2027-07-14 | 7761, 7776 |  | Zenith | 8727954 |
| 7778 | 36900.37000.37400.37800.38800.40200.41400.110700.1719700 | False Cieling panel fixing | 10d | 2027-07-15 | 2027-07-24 | 7762, 7777 |  | Zenith | 8727964 |
| 7779 | 36900.37000.37400.37800.38800.40200.41400.110700.1719800 | Living dinning flooring | 13d | 2027-07-15 | 2027-07-27 | 7763, 7777 |  | Zenith | 8727974 |
| 7780 | 36900.37000.37400.37800.38800.40200.41400.110700.1719900 | Putty primer coat | 12d | 2027-07-28 | 2027-08-08 | 7764, 7779 |  | Zenith | 8727984 |
| 7781 | 36900.37000.37400.37800.38800.40200.41400.110700.1720000 | Aluminium door-window fixing | 15d | 2027-08-25 | 2027-09-08 | 7765, 7775, 7779 |  | Zenith | 8727994 |
| 7782 | 36900.37000.37400.37800.38800.40200.41400.110700.1720100 | Door shutter fixing (Pre Hung) | 8d | 2027-08-09 | 2027-08-16 | 7766, 7780 |  | Zenith | 8728004 |
| 7783 | 36900.37000.37400.37800.38800.40200.41400.110700.1720200 | Electrical wiring work | 12d | 2027-08-17 | 2027-08-28 | 7767, 7782 |  | Zenith | 8728014 |
| 7784 | 36900.37000.37400.37800.38800.40200.41400.110700.1720300 | Painting 1st coat | 15d | 2027-09-29 | 2027-10-13 | 7768, 7783 |  | Zenith | 8728024 |

| ID | WBS | Task | Duration | Start | Finish | Predecessors | Constraint | Calendar | Unique_Task_ID |
| --- | --- | --- | --- | --- | --- | --- | --- | --- | --- |
| 7785 | 36900.37000.37400.37800.38800.40200.41400.110800 | **33rd floor roof** | 276d | 2027-01-26 | 2027-10-28 |  | start no earlier than 2027-01-26 | Zenith | 8651264 |
| 7786 | 36900.37000.37400.37800.38800.40200.41400.110800.1720400 | Block Work | 10d | 2027-01-26 | 2027-02-04 | 7265, 7770 |  | Zenith | 8728034 |
| 7787 | 36900.37000.37400.37800.38800.40200.41400.110800.1720500 | Fire sprinkler pipe fixing | 6d | 2027-02-05 | 2027-02-10 | 7771, 7786 |  | Zenith | 8728044 |
| 7788 | 36900.37000.37400.37800.38800.40200.41400.110800.1720600 | Internal Plumbing Works | 10d | 2027-02-05 | 2027-02-14 | 7772, 7786 |  | Zenith | 8728054 |
| 7789 | 36900.37000.37400.37800.38800.40200.41400.110800.1720700 | Waterproofing | 14d | 2027-06-23 | 2027-07-06 | 7773, 7788 |  | Zenith | 8728064 |
| 7790 | 36900.37000.37400.37800.38800.40200.41400.110800.1720800 | Internal Plaster | 14d | 2027-06-28 | 2027-07-11 | 7774, 7788, 7789FF+5d |  | Zenith | 8728074 |
| 7791 | 36900.37000.37400.37800.38800.40200.41400.110800.1720900 | IPS flooring work | 10d | 2027-07-12 | 2027-07-21 | 7775, 7790 |  | Zenith | 8728084 |
| 7792 | 36900.37000.37400.37800.38800.40200.41400.110800.1721000 | Toilet dado work | 10d | 2027-07-12 | 2027-07-21 | 7776, 7789, 7790 |  | Zenith | 8728094 |
| 7793 | 36900.37000.37400.37800.38800.40200.41400.110800.1721100 | Toilet flooring work | 7d | 2027-07-22 | 2027-07-28 | 7777, 7792 |  | Zenith | 8728104 |
| 7794 | 36900.37000.37400.37800.38800.40200.41400.110800.1721200 | False Cieling panel fixing | 10d | 2027-07-29 | 2027-08-07 | 7778, 7793 |  | Zenith | 8728114 |
| 7795 | 36900.37000.37400.37800.38800.40200.41400.110800.1721300 | Living dinning flooring | 13d | 2027-07-29 | 2027-08-10 | 7779, 7793 |  | Zenith | 8728124 |
| 7796 | 36900.37000.37400.37800.38800.40200.41400.110800.1721400 | Putty primer coat | 12d | 2027-08-11 | 2027-08-22 | 7780, 7795 |  | Zenith | 8728134 |
| 7797 | 36900.37000.37400.37800.38800.40200.41400.110800.1721500 | Aluminium door-window fixing | 15d | 2027-09-09 | 2027-09-23 | 7781, 7791, 7795 |  | Zenith | 8728144 |
| 7798 | 36900.37000.37400.37800.38800.40200.41400.110800.1721600 | Door shutter fixing (Pre Hung) | 8d | 2027-08-23 | 2027-08-30 | 7782, 7796 |  | Zenith | 8728154 |
| 7799 | 36900.37000.37400.37800.38800.40200.41400.110800.1721700 | Electrical wiring work | 12d | 2027-08-31 | 2027-09-11 | 7783, 7798 |  | Zenith | 8728164 |
| 7800 | 36900.37000.37400.37800.38800.40200.41400.110800.1721800 | Painting 1st coat | 15d | 2027-10-14 | 2027-10-28 | 7784, 7799 |  | Zenith | 8728174 |
| 7801 | 36900.37000.37400.37800.38800.40200.41400.110900 | **34th floor roof** | 281d | 2027-02-05 | 2027-12-27 |  | start no earlier than 2027-02-05 | Zenith | 8651274 |
| 7802 | 36900.37000.37400.37800.38800.40200.41400.110900.1721900 | Block Work | 10d | 2027-02-05 | 2027-02-14 | 7266, 7786 |  | Zenith | 8728184 |
| 7803 | 36900.37000.37400.37800.38800.40200.41400.110900.1722000 | Fire sprinkler pipe fixing | 6d | 2027-02-15 | 2027-02-20 | 7787, 7802 |  | Zenith | 8728194 |
| 7804 | 36900.37000.37400.37800.38800.40200.41400.110900.1722100 | Internal Plumbing Works | 10d | 2027-02-15 | 2027-02-24 | 7788, 7802 |  | Zenith | 8728204 |
| 7805 | 36900.37000.37400.37800.38800.40200.41400.110900.1722200 | Waterproofing | 14d | 2027-07-07 | 2027-07-20 | 7789, 7804 |  | Zenith | 8728214 |
| 7806 | 36900.37000.37400.37800.38800.40200.41400.110900.1722300 | Internal Plaster | 14d | 2027-07-12 | 2027-07-25 | 7790, 7804, 7805FF+5d |  | Zenith | 8728224 |
| 7807 | 36900.37000.37400.37800.38800.40200.41400.110900.1722400 | IPS flooring work | 10d | 2027-07-26 | 2027-08-04 | 7791, 7806 |  | Zenith | 8728234 |
| 7808 | 36900.37000.37400.37800.38800.40200.41400.110900.1722500 | Toilet dado work | 10d | 2027-07-26 | 2027-08-04 | 7792, 7805, 7806 |  | Zenith | 8728244 |
| 7809 | 36900.37000.37400.37800.38800.40200.41400.110900.1722600 | Toilet flooring work | 7d | 2027-08-05 | 2027-08-11 | 7793, 7808 |  | Zenith | 8728254 |
| 7810 | 36900.37000.37400.37800.38800.40200.41400.110900.1722700 | False Cieling panel fixing | 10d | 2027-08-12 | 2027-08-21 | 7794, 7809 |  | Zenith | 8728264 |
| 7811 | 36900.37000.37400.37800.38800.40200.41400.110900.1722800 | Living dinning flooring | 13d | 2027-08-12 | 2027-08-24 | 7795, 7809 |  | Zenith | 8728274 |
| 7812 | 36900.37000.37400.37800.38800.40200.41400.110900.1722900 | Putty primer coat | 12d | 2027-08-25 | 2027-09-05 | 7796, 7811 |  | Zenith | 8728284 |
| 7813 | 36900.37000.37400.37800.38800.40200.41400.110900.1723000 | Aluminium door-window fixing | 15d | 2027-09-24 | 2027-10-08 | 7797, 7807, 7811 |  | Zenith | 8728294 |
| 7814 | 36900.37000.37400.37800.38800.40200.41400.110900.1723100 | Door shutter fixing (Pre Hung) | 8d | 2027-09-06 | 2027-09-13 | 7798, 7812 |  | Zenith | 8728304 |
| 7815 | 36900.37000.37400.37800.38800.40200.41400.110900.1723200 | Electrical wiring work | 12d | 2027-09-14 | 2027-09-25 | 7799, 7814 |  | Zenith | 8728314 |
| 7816 | 36900.37000.37400.37800.38800.40200.41400.110900.1723300 | Painting 1st coat | 15d | 2027-10-29 | 2027-12-27 | 7800, 7815 |  | Zenith | 8728324 |

| ID | WBS | Task | Duration | Start | Finish | Predecessors | Constraint | Calendar | Unique_Task_ID |
| --- | --- | --- | --- | --- | --- | --- | --- | --- | --- |
| 7817 | 36900.37000.37400.37800.38800.40200.41400.111000 | **35th floor roof** | 286d | 2027-02-15 | 2028-01-11 |  | start no earlier than 2027-02-15 | Zenith | 8651284 |
| 7818 | 36900.37000.37400.37800.38800.40200.41400.111000.1723400 | Block Work | 10d | 2027-02-15 | 2027-02-24 | 7267, 7802 |  | Zenith | 8728334 |
| 7819 | 36900.37000.37400.37800.38800.40200.41400.111000.1723500 | Fire sprinkler pipe fixing | 6d | 2027-02-25 | 2027-03-02 | 7803, 7818 |  | Zenith | 8728344 |
| 7820 | 36900.37000.37400.37800.38800.40200.41400.111000.1723600 | Internal Plumbing Works | 10d | 2027-02-25 | 2027-03-06 | 7804, 7818 |  | Zenith | 8728354 |
| 7821 | 36900.37000.37400.37800.38800.40200.41400.111000.1723700 | Waterproofing | 14d | 2027-07-21 | 2027-08-03 | 7805, 7820 |  | Zenith | 8728364 |
| 7822 | 36900.37000.37400.37800.38800.40200.41400.111000.1723800 | Internal Plaster | 14d | 2027-07-26 | 2027-08-08 | 7806, 7820, 7821FF+5d |  | Zenith | 8728374 |
| 7823 | 36900.37000.37400.37800.38800.40200.41400.111000.1723900 | IPS flooring work | 10d | 2027-08-09 | 2027-08-18 | 7807, 7822 |  | Zenith | 8728384 |
| 7824 | 36900.37000.37400.37800.38800.40200.41400.111000.1724000 | Toilet dado work | 10d | 2027-08-09 | 2027-08-18 | 7808, 7821, 7822 |  | Zenith | 8728394 |
| 7825 | 36900.37000.37400.37800.38800.40200.41400.111000.1724100 | Toilet flooring work | 7d | 2027-08-19 | 2027-08-25 | 7809, 7824 |  | Zenith | 8728404 |
| 7826 | 36900.37000.37400.37800.38800.40200.41400.111000.1724200 | False Cieling panel fixing | 10d | 2027-08-26 | 2027-09-04 | 7810, 7825 |  | Zenith | 8728414 |
| 7827 | 36900.37000.37400.37800.38800.40200.41400.111000.1724300 | Living dinning flooring | 13d | 2027-08-26 | 2027-09-07 | 7811, 7825 |  | Zenith | 8728424 |
| 7828 | 36900.37000.37400.37800.38800.40200.41400.111000.1724400 | Putty primer coat | 12d | 2027-09-08 | 2027-09-19 | 7812, 7827 |  | Zenith | 8728434 |
| 7829 | 36900.37000.37400.37800.38800.40200.41400.111000.1724500 | Aluminium door-window fixing | 15d | 2027-10-09 | 2027-10-23 | 7813, 7823, 7827 |  | Zenith | 8728444 |
| 7830 | 36900.37000.37400.37800.38800.40200.41400.111000.1724600 | Door shutter fixing (Pre Hung) | 8d | 2027-09-20 | 2027-09-27 | 7814, 7828 |  | Zenith | 8728454 |
| 7831 | 36900.37000.37400.37800.38800.40200.41400.111000.1724700 | Electrical wiring work | 12d | 2027-09-28 | 2027-10-09 | 7815, 7830 |  | Zenith | 8728464 |
| 7832 | 36900.37000.37400.37800.38800.40200.41400.111000.1724800 | Painting 1st coat | 15d | 2027-12-28 | 2028-01-11 | 7816, 7831 |  | Zenith | 8728474 |
| 7833 | 36900.37000.37400.37800.38800.40200.41400.62700 | **36th Floor** | 336d | 2027-02-25 | 2028-03-11 |  | start no earlier than 2027-02-25 | Zenith | 8648334 |
| 7834 | 36900.37000.37400.37800.38800.40200.41400.62700.1724900 | Block Work | 10d | 2027-02-25 | 2027-03-06 | 7268, 7818 |  | Zenith | 8728484 |
| 7835 | 36900.37000.37400.37800.38800.40200.41400.62700.1725000 | Fire sprinkler pipe fixing | 6d | 2027-03-07 | 2027-03-12 | 7819, 7834 |  | Zenith | 8728494 |
| 7836 | 36900.37000.37400.37800.38800.40200.41400.62700.1725100 | Internal Plumbing Works | 10d | 2027-03-07 | 2027-03-16 | 7820, 7834 |  | Zenith | 8728504 |
| 7837 | 36900.37000.37400.37800.38800.40200.41400.62700.1725200 | Waterproofing | 14d | 2027-08-04 | 2027-08-17 | 7821, 7836 |  | Zenith | 8728514 |
| 7838 | 36900.37000.37400.37800.38800.40200.41400.62700.1725300 | Internal Plaster | 14d | 2027-08-09 | 2027-08-22 | 7822, 7836, 7837FF+5d |  | Zenith | 8728524 |
| 7839 | 36900.37000.37400.37800.38800.40200.41400.62700.1725400 | IPS flooring work | 10d | 2027-08-23 | 2027-09-01 | 7823, 7837, 7838 |  | Zenith | 8728534 |
| 7840 | 36900.37000.37400.37800.38800.40200.41400.62700.1725500 | Toilet dado work | 10d | 2027-09-02 | 2027-09-11 | 7824, 7839 |  | Zenith | 8728544 |
| 7841 | 36900.37000.37400.37800.38800.40200.41400.62700.1725600 | Toilet flooring work | 7d | 2027-09-12 | 2027-09-18 | 7825, 7840 |  | Zenith | 8728554 |
| 7842 | 36900.37000.37400.37800.38800.40200.41400.62700.1725700 | False ceiling | 10d | 2027-09-19 | 2027-09-28 | 7826, 7841 |  | Zenith | 8728564 |
| 7843 | 36900.37000.37400.37800.38800.40200.41400.62700.1725800 | Living dinning flooring | 13d | 2027-09-19 | 2027-10-01 | 7827, 7841 |  | Zenith | 8728574 |
| 7844 | 36900.37000.37400.37800.38800.40200.41400.62700.1725900 | Putty Primer coat | 12d | 2027-10-02 | 2027-10-13 | 7828, 7835, 7842, 7843 |  | Zenith | 8728584 |
| 7845 | 36900.37000.37400.37800.38800.40200.41400.62700.1726000 | Aluminium door-window fixing | 15d | 2027-10-24 | 2027-12-22 | 7829, 7839, 7843 |  | Zenith | 8728594 |
| 7846 | 36900.37000.37400.37800.38800.40200.41400.62700.1726100 | Door shutter fixing (Pre Hung) | 8d | 2027-10-14 | 2027-10-21 | 7830, 7844 |  | Zenith | 8728604 |
| 7847 | 36900.37000.37400.37800.38800.40200.41400.62700.1726200 | Electrical wiring work | 12d | 2027-10-22 | 2027-12-17 | 7831, 7846 |  | Zenith | 8728614 |
| 7848 | 36900.37000.37400.37800.38800.40200.41400.62700.1726300 | Painting 1st coat | 15d | 2028-01-12 | 2028-01-26 | 7832, 7847 |  | Zenith | 8728624 |
| 7849 | 36900.37000.37400.37800.38800.40200.41400.62700.1726400 | Misc. Works | 45d | 2028-01-27 | 2028-03-11 | 7848 |  | Zenith | 8728634 |

| ID | WBS | Task | Duration | Start | Finish | Predecessors | Constraint | Calendar | Unique_Task_ID |
| --- | --- | --- | --- | --- | --- | --- | --- | --- | --- |
| 7850 | 36900.37000.37400.37800.38800.40200.224700 | **Terrace Finishing** | 116d | 2027-01-26 | 2027-05-21 |  | start no earlier than 2027-01-26 | Zenith | 8656744 |
| 7851 | 36900.37000.37400.37800.38800.40200.224700.1056900 | Terrace waterproofing | 40d | 2027-01-26 | 2027-03-06 | 7231FS+2d |  | Zenith | 8677844 |
| 7852 | 36900.37000.37400.37800.38800.40200.224700.1057000 | Terrace finishing | 75d | 2027-03-08 | 2027-05-21 | 7851FS+1d |  | Zenith | 8677834 |
| 7853 | 36900.37000.37400.37800.38800.40200.48200 | **Balcony Railing** | 514d | 2026-04-11 | 2027-10-21 |  | start no earlier than 2026-04-11 | Zenith | 8648124 |
| 7854 | 36900.37000.37400.37800.38800.40200.48200.1057100 | 1st Floor | 8d | 2026-04-11 | 2026-04-18 | 7299FF |  | Zenith | 8677824 |
| 7855 | 36900.37000.37400.37800.38800.40200.48200.1057200 | 2nd Floor | 10d | 2026-05-03 | 2026-05-12 | 7854, 7315 |  | Zenith | 8677814 |
| 7856 | 36900.37000.37400.37800.38800.40200.48200.1057300 | 3rd Floor | 10d | 2026-05-17 | 2026-05-26 | 7855, 7331 |  | Zenith | 8677804 |
| 7857 | 36900.37000.37400.37800.38800.40200.48200.1057400 | 4th Floor | 10d | 2026-05-31 | 2026-06-09 | 7856, 7347 |  | Zenith | 8677794 |
| 7858 | 36900.37000.37400.37800.38800.40200.48200.1057500 | 5th Floor | 10d | 2026-06-14 | 2026-06-23 | 7857, 7363 |  | Zenith | 8677784 |
| 7859 | 36900.37000.37400.37800.38800.40200.48200.1057600 | 6th Floor | 10d | 2026-06-28 | 2026-07-07 | 7858, 7379 |  | Zenith | 8677774 |
| 7860 | 36900.37000.37400.37800.38800.40200.48200.1057700 | 7th Floor | 10d | 2026-07-12 | 2026-07-21 | 7859, 7395 |  | Zenith | 8677764 |
| 7861 | 36900.37000.37400.37800.38800.40200.48200.1057800 | 8th Floor | 10d | 2026-07-26 | 2026-08-04 | 7860, 7411 |  | Zenith | 8677754 |
| 7862 | 36900.37000.37400.37800.38800.40200.48200.1057900 | 9th Floor | 10d | 2026-08-09 | 2026-08-18 | 7861, 7427 |  | Zenith | 8677744 |
| 7863 | 36900.37000.37400.37800.38800.40200.48200.1058000 | 10th Floor | 10d | 2026-08-23 | 2026-09-01 | 7862, 7443 |  | Zenith | 8677734 |
| 7864 | 36900.37000.37400.37800.38800.40200.48200.1058100 | 11th Floor | 10d | 2026-09-06 | 2026-09-15 | 7863, 7459 |  | Zenith | 8677724 |
| 7865 | 36900.37000.37400.37800.38800.40200.48200.1058200 | 12th Floor | 10d | 2026-09-20 | 2026-09-29 | 7864, 7475 |  | Zenith | 8677714 |
| 7866 | 36900.37000.37400.37800.38800.40200.48200.1058300 | 13th Floor | 10d | 2026-10-04 | 2026-10-13 | 7865, 7491 |  | Zenith | 8677704 |
| 7867 | 36900.37000.37400.37800.38800.40200.48200.1058400 | 14th Floor | 10d | 2026-10-18 | 2026-10-27 | 7866, 7507 |  | Zenith | 8677694 |
| 7868 | 36900.37000.37400.37800.38800.40200.48200.1058500 | 15th Floor | 10d | 2026-12-16 | 2026-12-25 | 7867, 7523 |  | Zenith | 8677684 |
| 7869 | 36900.37000.37400.37800.38800.40200.48200.1058600 | 16th Floor | 10d | 2026-12-30 | 2027-01-08 | 7868, 7539 |  | Zenith | 8677674 |
| 7870 | 36900.37000.37400.37800.38800.40200.48200.1058700 | 17th Floor | 10d | 2027-01-13 | 2027-01-22 | 7869, 7555 |  | Zenith | 8677664 |
| 7871 | 36900.37000.37400.37800.38800.40200.48200.1058800 | 18th Floor | 10d | 2027-01-27 | 2027-02-05 | 7870, 7571 |  | Zenith | 8677654 |
| 7872 | 36900.37000.37400.37800.38800.40200.48200.1058900 | 19th Floor | 10d | 2027-02-10 | 2027-02-19 | 7871, 7587 |  | Zenith | 8677644 |
| 7873 | 36900.37000.37400.37800.38800.40200.48200.1059000 | 20th Floor | 10d | 2027-02-24 | 2027-03-05 | 7872, 7603 |  | Zenith | 8677634 |
| 7874 | 36900.37000.37400.37800.38800.40200.48200.1059100 | 21st Floor | 10d | 2027-03-10 | 2027-03-19 | 7873, 7619 |  | Zenith | 8677624 |
| 7875 | 36900.37000.37400.37800.38800.40200.48200.1059200 | 22nd Floor | 10d | 2027-03-24 | 2027-04-02 | 7874, 7635 |  | Zenith | 8677614 |
| 7876 | 36900.37000.37400.37800.38800.40200.48200.1059300 | 23rd Floor | 10d | 2027-04-07 | 2027-04-16 | 7875, 7651 |  | Zenith | 8677604 |
| 7877 | 36900.37000.37400.37800.38800.40200.48200.1059400 | 24th Floor | 10d | 2027-04-21 | 2027-04-30 | 7876, 7667 |  | Zenith | 8677594 |
| 7878 | 36900.37000.37400.37800.38800.40200.48200.1059500 | 25th Floor | 10d | 2027-05-05 | 2027-05-14 | 7877, 7683 |  | Zenith | 8677584 |
| 7879 | 36900.37000.37400.37800.38800.40200.48200.1059600 | 26th Floor | 10d | 2027-05-19 | 2027-05-28 | 7878, 7699 |  | Zenith | 8677574 |
| 7880 | 36900.37000.37400.37800.38800.40200.48200.1059700 | 27th Floor | 10d | 2027-06-02 | 2027-06-11 | 7879, 7715 |  | Zenith | 8677564 |
| 7881 | 36900.37000.37400.37800.38800.40200.48200.1059800 | 28th Floor | 10d | 2027-06-16 | 2027-06-25 | 7880, 7731 |  | Zenith | 8677554 |
| 7882 | 36900.37000.37400.37800.38800.40200.48200.1059900 | 29th Floor | 10d | 2027-06-30 | 2027-07-09 | 7881, 7747 |  | Zenith | 8677544 |
| 7883 | 36900.37000.37400.37800.38800.40200.48200.1060000 | 30th Floor | 10d | 2027-07-14 | 2027-07-23 | 7882, 7763 |  | Zenith | 8677534 |
| 7884 | 36900.37000.37400.37800.38800.40200.48200.1060100 | 31st Floor | 10d | 2027-07-28 | 2027-08-06 | 7883, 7779 |  | Zenith | 8677524 |
| 7885 | 36900.37000.37400.37800.38800.40200.48200.1060200 | 32nd Floor | 10d | 2027-08-11 | 2027-08-20 | 7884, 7795 |  | Zenith | 8677514 |
| 7886 | 36900.37000.37400.37800.38800.40200.48200.1060300 | 33rd Floor | 10d | 2027-08-25 | 2027-09-03 | 7885, 7811 |  | Zenith | 8677504 |
| 7887 | 36900.37000.37400.37800.38800.40200.48200.1060400 | 34th Floor | 10d | 2027-09-08 | 2027-09-17 | 7886, 7827 |  | Zenith | 8677494 |
| 7888 | 36900.37000.37400.37800.38800.40200.48200.1060500 | 35th Floor | 10d | 2027-10-02 | 2027-10-11 | 7887, 7843 |  | Zenith | 8677484 |
| 7889 | 36900.37000.37400.37800.38800.40200.48200.1060600 | 36th Floor | 10d | 2027-10-12 | 2027-10-21 | 7888 |  | Zenith | 8677474 |

| ID | WBS | Task | Duration | Start | Finish | Predecessors | Constraint | Calendar | Unique_Task_ID |
| --- | --- | --- | --- | --- | --- | --- | --- | --- | --- |
| 7890 | 36900.37000.37400.37800.38800.40200.118100 | **Common Area Finishing** | 353d | 2027-01-24 | 2028-02-25 |  | start no earlier than 2027-01-24 | Zenith | 8651704 |
| 7891 | 36900.37000.37400.37800.38800.40200.118100.1060700 | Masonary Work | 40d | 2027-01-24 | 2027-03-04 | 7231 |  | Zenith | 8677464 |
| 7892 | 36900.37000.37400.37800.38800.40200.118100.1060800 | Fire sprinkler pipe fixing | 40d | 2027-03-05 | 2027-04-13 | 7891 |  | Zenith | 8677454 |
| 7893 | 36900.37000.37400.37800.38800.40200.118100.1060900 | Corridoor, staircase, shaft Plaster & whitewash | 120d | 2027-03-05 | 2027-07-02 | 7891 |  | Zenith | 8677444 |
| 7894 | 36900.37000.37400.37800.38800.40200.118100.1061000 | Staircase railing fixing | 100d | 2027-03-05 | 2027-06-12 | 7891 |  | Zenith | 8677434 |
| 7895 | 36900.37000.37400.37800.38800.40200.118100.1061100 | Fire staircase flooring | 120d | 2027-03-15 | 2027-07-12 | 7894FF+30d |  | Zenith | 8677424 |
| 7896 | 36900.37000.37400.37800.38800.40200.118100.1061200 | Main staircase flooring | 120d | 2027-03-15 | 2027-07-12 | 7894FF+30d |  | Zenith | 8677414 |
| 7897 | 36900.37000.37400.37800.38800.40200.118100.1061300 | Fire door work | 45d | 2027-07-13 | 2027-08-26 | 7895 |  | Zenith | 8677404 |
| 7898 | 36900.37000.37400.37800.38800.40200.118100.1061400 | Lobby flooring & Corridor | 120d | 2027-04-14 | 2027-08-11 | 7896FF+30d |  | Zenith | 8677394 |
| 7899 | 36900.37000.37400.37800.38800.40200.118100.1061500 | Ceiling & wall putty | 120d | 2027-07-16 | 2027-12-27 | 7897FF+15d, 7898FF+30d, 7844FF+30d |  | Zenith | 8677384 |
| 7900 | 36900.37000.37400.37800.38800.40200.118100.1061600 | Electrical wiring work | 120d | 2027-07-31 | 2028-01-11 | 7899FF+15d |  | Zenith | 8677374 |
| 7901 | 36900.37000.37400.37800.38800.40200.118100.1061700 | Ceiling & wall painting | 120d | 2027-08-20 | 2028-01-31 | 7892FS+20d, 7899SS+20d, 7900FF+20d |  | Zenith | 8677364 |
| 7902 | 36900.37000.37400.37800.38800.40200.118100.1061800 | Light fixture supply & installation | 45d | 2028-01-12 | 2028-02-25 | 7899, 7901FF+25d |  | Zenith | 8677354 |
| 7903 | 36900.37000.37400.37800.122200 | **MEP work** | 260d | 2027-01-24 | 2027-10-10 |  | start no earlier than 2027-01-24 | Zenith | 8651934 |
| 7904 | 36900.37000.37400.37800.122200.127200 | **Electrical work** | 240d | 2027-01-24 | 2027-09-20 |  | start no earlier than 2027-01-24 | Zenith | 8651984 |
| 7905 | 36900.37000.37400.37800.122200.127200.833500 | Cable Tray | 90d | 2027-01-24 | 2027-04-23 | 7231 |  | Zenith | 8721084 |
| 7906 | 36900.37000.37400.37800.122200.127200.833600 | Cable, main & sub main | 60d | 2027-03-10 | 2027-05-08 | 7905SS+45d |  | Zenith | 8721074 |
| 7907 | 36900.37000.37400.37800.122200.127200.833700 | LT panel & DB | 90d | 2027-04-24 | 2027-07-22 | 7905 |  | Zenith | 8721064 |
| 7908 | 36900.37000.37400.37800.122200.127200.833800 | Rising main | 90d | 2027-05-09 | 2027-08-06 | 7905FS+15d |  | Zenith | 8721054 |
| 7909 | 36900.37000.37400.37800.122200.127200.833900 | Earthing Works | 60d | 2027-05-14 | 2027-07-12 | 7905FS+20d |  | Zenith | 8721044 |
| 7910 | 36900.37000.37400.37800.122200.127200.834000 | Energy meter | 60d | 2027-07-23 | 2027-09-20 | 7906, 7909FS+10d |  | Zenith | 8721034 |
| 7911 | 36900.37000.37400.37800.122200.127200.834100 | HVAC & Exhast fan | 120d | 2027-04-19 | 2027-08-16 | 7905FS-5d |  | Zenith | 8721024 |
| 7912 | 36900.37000.37400.37800.122200.127200.834200 | FTTH | 60d | 2027-07-08 | 2027-09-05 | 7907FS-15d |  | Zenith | 8721014 |
| 7913 | 36900.37000.37400.37800.122200.127200.834300 | Security System - FA & PA | 60d | 2027-07-23 | 2027-09-20 | 7907, 7908FF+10d, 7911FF+2d, 7912FF |  | Zenith | 8721004 |

| ID | WBS | Task | Duration | Start | Finish | Predecessors | Constraint | Calendar | Unique_Task_ID |
| --- | --- | --- | --- | --- | --- | --- | --- | --- | --- |
| 7914 | 36900.37000.37400.37800.122200.146800 | **Plumbing work** | 218d | 2027-03-07 | 2027-10-10 |  | start no earlier than 2027-03-07 | Zenith | 8652784 |
| 7915 | 36900.37000.37400.37800.122200.146800.834400 | Terrace looping | 45d | 2027-03-07 | 2027-04-20 | 7851 |  | Zenith | 8720994 |
| 7916 | 36900.37000.37400.37800.122200.146800.834500 | Shaft Plumbing | 70d | 2027-06-03 | 2027-08-11 | 7915, 7893FS-30d |  | Zenith | 8720984 |
| 7917 | 36900.37000.37400.37800.122200.146800.834600 | CP sanitary fixture supply | 45d | 2027-08-12 | 2027-09-25 | 7916 |  | Zenith | 8720974 |
| 7918 | 36900.37000.37400.37800.122200.146800.834700 | Cold & flushing water supply | 45d | 2027-08-12 | 2027-09-25 | 7916 |  | Zenith | 8720964 |
| 7919 | 36900.37000.37400.37800.122200.146800.834800 | Misc work | 30d | 2027-09-11 | 2027-10-10 | 7917FS-15d, 7918FS-15d |  | Zenith | 8720954 |
| 7920 | 36900.37000.37400.37800.122200.167000 | **Fire fighting work** | 121d | 2027-04-19 | 2027-08-17 |  | start no earlier than 2027-04-19 | Zenith | 8655944 |
| 7921 | 36900.37000.37400.37800.122200.167000.834900 | Fire hydrant work | 75d | 2027-04-19 | 2027-07-02 | 7893SS+45d |  | Zenith | 8720944 |
| 7922 | 36900.37000.37400.37800.122200.167000.835000 | Pipe connection & sprinkler installation | 45d | 2027-07-04 | 2027-08-17 | 7921FS+1d, 7924FF+15d |  | Zenith | 8720934 |
| 7923 | 36900.37000.37400.37800.122200.167000.835100 | Shaft Downtake works | 60d | 2027-05-04 | 2027-07-02 | 7851, 7893FS-60d |  | Zenith | 8720924 |
| 7924 | 36900.37000.37400.37800.122200.167000.835200 | Connection to pump room | 30d | 2027-07-03 | 2027-08-01 | 7923 |  | Zenith | 8720914 |
| 7925 | 36900.37000.37400.37800.122200.219100 | **Lift work** | 247.75d | 2027-02-05 | 2027-10-10 |  | start no earlier than 2027-02-05 | Zenith | 8656484 |
| 7926 | 36900.37000.37400.37800.122200.219100.835300 | Lift Shaft/Pit Handover | 40d | 2027-02-05 | 2027-03-17 | 7270FS+5d |  | Zenith | 8720904 |
| 7927 | 36900.37000.37400.37800.122200.219100.835400 | Lift installation work | 60d | 2027-03-17 | 2027-05-16 | 7926 |  | Zenith | 8720894 |
| 7928 | 36900.37000.37400.37800.122200.219100.835500 | Lift testing and commissioning | 60d | 2027-08-12 | 2027-10-10 | 7927, 7898 |  | Zenith | 8720884 |
| 7929 | 36900.37000.37400.37800.226000 | **Basement lobby** | 90d | 2027-04-01 | 2027-06-30 |  | start no earlier than 2027-04-01 | Zenith | 8656914 |
| 7930 | 36900.37000.37400.37800.226000.382700 | Basement lobby | 90d | 2027-04-01 | 2027-06-30 | 7926FS+15d, 7043FS+15d, 7044FS+15d |  | Zenith | 8730784 |
| 7931 | 36900.37000.37400.37800.223000 | **External Paint Works** | 107d | 2027-10-22 | 2028-03-21 |  | start no earlier than 2027-10-22 | Zenith | 8656774 |
| 7932 | 36900.37000.37400.37800.223000.382800 | Surface prepration with Primer | 60d | 2027-10-22 | 2028-02-03 | 7270FS+2d, 7889 |  | Zenith | 8730774 |
| 7933 | 36900.37000.37400.37800.223000.382900 | External Painting (Texture & first coat) | 90d | 2027-12-23 | 2028-03-21 | 7932FF+10d, 7845 |  | Zenith | 8730764 |
| 7934 | 36900.37000.37400.37800.277600 | OC Application/Readiness | 2d | 2028-05-05 | 2028-05-06 | 7933FS+44d, 7922FS+30d, 7919, 7930FS+30d, 7928, 7913, 7910, 7852FS+30d, 7849FS+15d, 7899, 7889, 7845 |  | Zenith | 8735114 |
| 7935 | 36900.37000.37400.37800.277700 | OC Receipt | 60d | 2028-05-07 | 2028-07-05 | 7934 |  | Zenith | 8735104 |
| 7936 | 36900.37000.37400.37800.126200 | **Post OC activities** | 426d | 2028-03-12 | 2029-06-25 |  | start no earlier than 2028-03-12 | Zenith | 8651964 |
| 7937 | 36900.37000.37400.37800.126200.383000 | CP & Sanitaryware | 150d | 2028-07-06 | 2029-01-16 | 7935 |  | Zenith | 8730754 |
| 7938 | 36900.37000.37400.37800.126200.383100 | Electrical Fixtures And Fittings | 150d | 2028-07-06 | 2029-01-16 | 7935 |  | Zenith | 8730744 |
| 7939 | 36900.37000.37400.37800.126200.383200 | Final coat paint external | 100d | 2028-07-06 | 2028-10-13 | 7935 |  | Zenith | 8730734 |
| 7940 | 36900.37000.37400.37800.126200.383300 | Final Coat Paint Internal | 150d | 2028-07-06 | 2029-01-16 | 7935, 7848 |  | Zenith | 8730724 |
| 7941 | 36900.37000.37400.37800.126200.383400 | Balcony Railing Glass Fixing | 120d | 2029-01-17 | 2029-05-16 | 7940, 7889FS+30d |  | Zenith | 8730714 |
| 7942 | 36900.37000.37400.37800.126200.383500 | MEP | 150d | 2028-03-12 | 2028-08-08 | 7902FS+15d |  | Zenith | 8730704 |
| 7943 | 36900.37000.37400.37800.126200.383600 | Wooden Flooring | 180d | 2028-06-21 | 2029-01-31 | 7940FF+15d |  | Zenith | 8730694 |
| 7944 | 36900.37000.37400.37800.126200.383700 | Split AC Units installation | 100d | 2029-02-16 | 2029-05-26 | 7943FS+15d |  | Zenith | 8730684 |
| 7945 | 36900.37000.37400.37800.126200.383800 | Misc. works (Modular Kitchen & Others) | 180d | 2028-12-28 | 2029-06-25 | 7944FF+30d |  | Zenith | 8730674 |
| 7946 | 36900.37000.37400.37800.277800 | Offer To Possession | 182d | 2029-01-19 | 2029-07-19 | 7935FS+152d, 7937FF+20d, 7938FF+20d, 7939FF+20d, 7944FF+10d, 7942FF+30d, 7941FF+15d, 7945FF+15d |  | Zenith | 8735094 |

| ID | WBS | Task | Duration | Start | Finish | Predecessors | Complete | Constraint | Calendar | Unique_Task_ID |
| --- | --- | --- | --- | --- | --- | --- | --- | --- | --- | --- |
| 7947 | 36900.37000.37400.38300 | **Tower 09** | 1461d | 2024-12-06 | 2029-06-13 |  |  | start no earlier than 2024-12-06 | Zenith | 8647634 |
| 7948 | 36900.37000.37400.38300.63900 | **Sub-Structure Works** | 420d | 2024-12-06 | 2026-03-25 |  | 17% | start no earlier than 2024-12-06 | Zenith | 8648434 |
| 7949 | 36900.37000.37400.38300.63900.147300 | **Soil Bed Preparation** | 153d | 2024-12-06 | 2025-05-17 |  | 62% | start no earlier than 2024-12-06 | Zenith | 8652684 |
| 7950 | 36900.37000.37400.38300.63900.147300.835600 | Excavation (2 m) | 1d | 2025-04-07 | 2025-04-07 |  |  | start no earlier than 2025-04-07 | Zenith | 8720874 |
| 7951 | 36900.37000.37400.38300.63900.147300.247300 | Soldier Piling shop drawing approval | 52d | 2024-12-06 | 2025-02-08 |  | 100% | start no earlier than 2024-12-06 | Zenith | 8720864 |
| 7952 | 36900.37000.37400.38300.63900.147300.247400 | Mobilization & Soldier Piling with Excavation | 65d | 2025-01-18 | 2025-05-06 | 7951FS-15d | 44% | start no earlier than 2025-01-18 | Zenith | 8720854 |
| 7953 | 36900.37000.37400.38300.63900.147300.835700 | Foundation bulk Excavation | 10d | 2025-05-07 | 2025-05-16 | 7952 |  |  | Zenith | 8720844 |
| 7954 | 36900.37000.37400.38300.63900.147300.835800 | Soil dressing & ATT | 1d | 2025-05-17 | 2025-05-17 | 7953 |  |  | Zenith | 8720834 |
| 7955 | 36900.37000.37400.38300.63900.120000 | **Structure Works** | 126d | 2025-05-19 | 2025-09-21 |  |  | start no earlier than 2025-05-19 | Zenith | 8651694 |
| 7956 | 36900.37000.37400.38300.63900.120000.162800 | **Raft Foundation** | 26d | 2025-05-19 | 2025-06-13 |  |  | start no earlier than 2025-05-19 | Zenith | 8652864 |
| 7957 | 36900.37000.37400.38300.63900.120000.162800.1061900 | PCC | 3d | 2025-05-19 | 2025-05-21 | 7954FS+1d |  |  | Zenith | 8677344 |
| 7958 | 36900.37000.37400.38300.63900.120000.162800.1062000 | Column/SW layout marking | 4d | 2025-05-22 | 2025-05-25 | 7957 |  |  | Zenith | 8677334 |
| 7959 | 36900.37000.37400.38300.63900.120000.162800.1062100 | Reinforcement | 14d | 2025-05-25 | 2025-06-07 | 7958SS+3d |  |  | Zenith | 8677324 |
| 7960 | 36900.37000.37400.38300.63900.120000.162800.1062200 | Formwork (Conventional) | 4d | 2025-06-07 | 2025-06-10 | 7959FF+3d |  |  | Zenith | 8677314 |
| 7961 | 36900.37000.37400.38300.63900.120000.162800.1062300 | Concreting | 3d | 2025-06-11 | 2025-06-13 | 7960FF+3d |  |  | Zenith | 8677304 |
| 7962 | 36900.37000.37400.38300.63900.120000.139200 | **Basement 03 Roof Slab (Dummy/ Stitch/ tie slab)** | 25d | 2025-06-14 | 2025-07-08 |  |  | start no earlier than 2025-06-14 | Zenith | 8652464 |
| 7963 | 36900.37000.37400.38300.63900.120000.139200.1062400 | Column/SW Reinforcement | 9d | 2025-06-14 | 2025-06-22 | 7961 |  |  | Zenith | 8677294 |
| 7964 | 36900.37000.37400.38300.63900.120000.139200.1062500 | SW Formwork (Conventional) | 9d | 2025-06-18 | 2025-06-26 | 7963SS+4d |  |  | Zenith | 8677284 |
| 7965 | 36900.37000.37400.38300.63900.120000.139200.1062600 | Column/SW Concreting | 9d | 2025-06-22 | 2025-06-30 | 7964SS+4d |  |  | Zenith | 8677274 |
| 7966 | 36900.37000.37400.38300.63900.120000.139200.1062700 | Slab Formwork (Conventional) | 9d | 2025-06-26 | 2025-07-04 | 7965SS+4d |  |  | Zenith | 8677264 |
| 7967 | 36900.37000.37400.38300.63900.120000.139200.1062800 | Slab Reinforcement + Conduting | 3d | 2025-07-05 | 2025-07-07 | 7966 |  |  | Zenith | 8677254 |
| 7968 | 36900.37000.37400.38300.63900.120000.139200.1062900 | Concreting | 1d | 2025-07-08 | 2025-07-08 | 7967 |  |  | Zenith | 8677244 |
| 7969 | 36900.37000.37400.38300.63900.120000.139300 | **Basement 02 Roof Slab** | 25d | 2025-07-09 | 2025-08-02 |  |  | start no earlier than 2025-07-09 | Zenith | 8652474 |
| 7970 | 36900.37000.37400.38300.63900.120000.139300.1063000 | Column/SW Reinforcement | 9d | 2025-07-09 | 2025-07-17 | 7968 |  |  | Zenith | 8677234 |
| 7971 | 36900.37000.37400.38300.63900.120000.139300.1063100 | SW Formwork (Conventional) | 9d | 2025-07-13 | 2025-07-21 | 7970SS+4d |  |  | Zenith | 8677224 |
| 7972 | 36900.37000.37400.38300.63900.120000.139300.1063200 | Column/SW Concreting | 9d | 2025-07-17 | 2025-07-25 | 7971SS+4d |  |  | Zenith | 8677214 |
| 7973 | 36900.37000.37400.38300.63900.120000.139300.1063300 | Slab Formwork (Conventional) | 9d | 2025-07-21 | 2025-07-29 | 7972SS+4d |  |  | Zenith | 8677204 |
| 7974 | 36900.37000.37400.38300.63900.120000.139300.1063400 | Slab Reinforcement + Conduting | 3d | 2025-07-30 | 2025-08-01 | 7973 |  |  | Zenith | 8677194 |
| 7975 | 36900.37000.37400.38300.63900.120000.139300.1063500 | Concreting | 1d | 2025-08-02 | 2025-08-02 | 7974 |  |  | Zenith | 8677184 |

| ID | WBS | Task | Duration | Start | Finish | Predecessors | Constraint | Calendar | Unique_Task_ID |
| --- | --- | --- | --- | --- | --- | --- | --- | --- | --- |
| 7976 | 36900.37000.37400.38300.63900.120000.139400 | **Basement 01 Roof Slab** | 25d | 2025-08-03 | 2025-08-27 |  | start no earlier than 2025-08-03 | Zenith | 8652484 |
| 7977 | 36900.37000.37400.38300.63900.120000.139400.1063600 | Column/SW Reinforcement | 9d | 2025-08-03 | 2025-08-11 | 7975 |  | Zenith | 8677174 |
| 7978 | 36900.37000.37400.38300.63900.120000.139400.1063700 | SW Formwork (Conventional) | 9d | 2025-08-07 | 2025-08-15 | 7977SS+4d |  | Zenith | 8677164 |
| 7979 | 36900.37000.37400.38300.63900.120000.139400.1063800 | Column/SW Concreting | 9d | 2025-08-11 | 2025-08-19 | 7978SS+4d |  | Zenith | 8677154 |
| 7980 | 36900.37000.37400.38300.63900.120000.139400.1063900 | Slab Formwork (Conventional) | 9d | 2025-08-15 | 2025-08-23 | 7979SS+4d |  | Zenith | 8677144 |
| 7981 | 36900.37000.37400.38300.63900.120000.139400.1064000 | Slab Reinforcement + Conduting | 3d | 2025-08-24 | 2025-08-26 | 7980 |  | Zenith | 8677134 |
| 7982 | 36900.37000.37400.38300.63900.120000.139400.1064100 | Concreting | 1d | 2025-08-27 | 2025-08-27 | 7981 |  | Zenith | 8677124 |
| 7983 | 36900.37000.37400.38300.63900.120000.139700 | **Podium Slab/Ground Roof Floor Slab** | 25d | 2025-08-28 | 2025-09-21 |  | start no earlier than 2025-08-28 | Zenith | 8652494 |
| 7984 | 36900.37000.37400.38300.63900.120000.139700.1064200 | Column/SW Reinforcement | 9d | 2025-08-28 | 2025-09-05 | 7982 |  | Zenith | 8677114 |
| 7985 | 36900.37000.37400.38300.63900.120000.139700.1064300 | SW Formwork (Conventional) | 9d | 2025-09-01 | 2025-09-09 | 7984SS+4d |  | Zenith | 8677104 |
| 7986 | 36900.37000.37400.38300.63900.120000.139700.1064400 | Column/SW Concreting | 9d | 2025-09-05 | 2025-09-13 | 7985SS+4d |  | Zenith | 8677094 |
| 7987 | 36900.37000.37400.38300.63900.120000.139700.1064500 | Slab Formwork (Conventional) | 9d | 2025-09-09 | 2025-09-17 | 7986SS+4d |  | Zenith | 8677084 |
| 7988 | 36900.37000.37400.38300.63900.120000.139700.1064600 | Slab Reinforcement + Conduting | 3d | 2025-09-18 | 2025-09-20 | 7987 |  | Zenith | 8677074 |
| 7989 | 36900.37000.37400.38300.63900.120000.139700.1064700 | Concreting | 1d | 2025-09-21 | 2025-09-21 | 7988 |  | Zenith | 8677064 |
| 7990 | 36900.37000.37400.38300.63900.166600 | **Substructure Finishes** | 110d | 2025-10-22 | 2026-03-25 |  | start no earlier than 2025-10-22 | Zenith | 8656264 |
| 7991 | 36900.37000.37400.38300.63900.166600.835900 | Masonary Work | 35d | 2025-10-22 | 2026-01-09 | 7989FS+30d |  | Zenith | 8720824 |
| 7992 | 36900.37000.37400.38300.63900.166600.836000 | Plaster Work | 30d | 2026-01-10 | 2026-02-08 | 7991 |  | Zenith | 8720814 |
| 7993 | 36900.37000.37400.38300.63900.166600.836100 | Structural Steel work | 50d | 2026-01-05 | 2026-02-23 | 7989FS+60d |  | Zenith | 8720804 |
| 7994 | 36900.37000.37400.38300.63900.166600.836200 | White Wash | 35d | 2026-02-19 | 2026-03-25 | 7992FS+10d |  | Zenith | 8720794 |
| 7995 | 36900.37000.37400.38300.39300 | **Superstructure** | 732d | 2025-09-22 | 2028-02-05 |  | start no earlier than 2025-09-22 | Zenith | 8647714 |
| 7996 | 36900.37000.37400.38300.39300.45500 | **RCC structure** | 375d | 2025-09-22 | 2026-12-30 |  | start no earlier than 2025-09-22 | Zenith | 8647994 |
| 7997 | 36900.37000.37400.38300.39300.45500.193800 | **1st Floor Roof slab** | 24d | 2025-09-22 | 2025-10-15 |  | start no earlier than 2025-09-22 | Zenith | 8652924 |
| 7998 | 36900.37000.37400.38300.39300.45500.193800.1064800 | Reinforcement | 19d | 2025-09-22 | 2025-10-10 | 7989 |  | Zenith | 8677054 |
| 7999 | 36900.37000.37400.38300.39300.45500.193800.1064900 | Conduiting | 19d | 2025-09-25 | 2025-10-13 | 7998SS+3d |  | Zenith | 8677044 |
| 8000 | 36900.37000.37400.38300.39300.45500.193800.1065000 | Formwork | 19d | 2025-09-26 | 2025-10-14 | 7998SS+4d |  | Zenith | 8677034 |
| 8001 | 36900.37000.37400.38300.39300.45500.193800.1065100 | Concreting | 1d | 2025-10-15 | 2025-10-15 | 7999FS+1d, 8000 |  | Zenith | 8677024 |

| ID | WBS | Task | Duration | Start | Finish | Predecessors | Constraint | Calendar | Unique_Task_ID |
| --- | --- | --- | --- | --- | --- | --- | --- | --- | --- |
| 8002 | 36900.37000.37400.38300.39300.45500.194100 | **2nd Floor Roof slab** | 21d | 2025-10-16 | 2025-12-20 |  | start no earlier than 2025-10-16 | Zenith | 8652934 |
| 8003 | 36900.37000.37400.38300.39300.45500.194100.1065200 | Reinforcement | 16d | 2025-10-16 | 2025-10-31 | 8001 |  | Zenith | 8677014 |
| 8004 | 36900.37000.37400.38300.39300.45500.194100.1065300 | Conduiting | 16d | 2025-10-19 | 2025-12-18 | 8003SS+3d |  | Zenith | 8677004 |
| 8005 | 36900.37000.37400.38300.39300.45500.194100.1065400 | Formwork | 16d | 2025-10-20 | 2025-12-19 | 8003SS+4d |  | Zenith | 8676994 |
| 8006 | 36900.37000.37400.38300.39300.45500.194100.1065500 | Concreting | 1d | 2025-12-20 | 2025-12-20 | 8004FS+1d, 8005 |  | Zenith | 8676984 |
| 8007 | 36900.37000.37400.38300.39300.45500.194200 | **3rd Floor Roof slab** | 15d | 2025-12-21 | 2026-01-04 |  | start no earlier than 2025-12-21 | Zenith | 8652954 |
| 8008 | 36900.37000.37400.38300.39300.45500.194200.1065600 | Reinforcement | 10d | 2025-12-21 | 2025-12-30 | 8006 |  | Zenith | 8676974 |
| 8009 | 36900.37000.37400.38300.39300.45500.194200.1065700 | Conduiting | 10d | 2025-12-24 | 2026-01-02 | 8008SS+3d |  | Zenith | 8676964 |
| 8010 | 36900.37000.37400.38300.39300.45500.194200.1065800 | Formwork | 10d | 2025-12-25 | 2026-01-03 | 8008SS+4d |  | Zenith | 8676954 |
| 8011 | 36900.37000.37400.38300.39300.45500.194200.1065900 | Concreting | 1d | 2026-01-04 | 2026-01-04 | 8009FS+1d, 8010 |  | Zenith | 8676944 |
| 8012 | 36900.37000.37400.38300.39300.45500.194300 | **4th floor roof slab** | 9d | 2026-01-05 | 2026-01-13 |  | start no earlier than 2026-01-05 | Zenith | 8652964 |
| 8013 | 36900.37000.37400.38300.39300.45500.194300.1066000 | Reinforcement | 6d | 2026-01-05 | 2026-01-10 | 8011 |  | Zenith | 8676934 |
| 8014 | 36900.37000.37400.38300.39300.45500.194300.1066100 | Conduiting | 6d | 2026-01-06 | 2026-01-11 | 8013SS+1d |  | Zenith | 8676924 |
| 8015 | 36900.37000.37400.38300.39300.45500.194300.1066200 | Formwork | 6d | 2026-01-07 | 2026-01-12 | 8013SS+2d |  | Zenith | 8676914 |
| 8016 | 36900.37000.37400.38300.39300.45500.194300.1066300 | Concreting | 1d | 2026-01-13 | 2026-01-13 | 8014FS+1d, 8015 |  | Zenith | 8676904 |
| 8017 | 36900.37000.37400.38300.39300.45500.194400 | **5th floor roof slab** | 9d | 2026-01-14 | 2026-01-22 |  | start no earlier than 2026-01-14 | Zenith | 8652994 |
| 8018 | 36900.37000.37400.38300.39300.45500.194400.1066400 | Reinforcement | 6d | 2026-01-14 | 2026-01-19 | 8016 |  | Zenith | 8676894 |
| 8019 | 36900.37000.37400.38300.39300.45500.194400.1066500 | Conduiting | 6d | 2026-01-15 | 2026-01-20 | 8018SS+1d |  | Zenith | 8676884 |
| 8020 | 36900.37000.37400.38300.39300.45500.194400.1066600 | Formwork | 6d | 2026-01-16 | 2026-01-21 | 8018SS+2d |  | Zenith | 8676874 |
| 8021 | 36900.37000.37400.38300.39300.45500.194400.1066700 | Concreting | 1d | 2026-01-22 | 2026-01-22 | 8019FS+1d, 8020 |  | Zenith | 8676864 |
| 8022 | 36900.37000.37400.38300.39300.45500.194500 | **6th floor roof slab** | 9d | 2026-01-23 | 2026-01-31 |  | start no earlier than 2026-01-23 | Zenith | 8653014 |
| 8023 | 36900.37000.37400.38300.39300.45500.194500.1066800 | Reinforcement | 6d | 2026-01-23 | 2026-01-28 | 8021 |  | Zenith | 8676854 |
| 8024 | 36900.37000.37400.38300.39300.45500.194500.1066900 | Conduiting | 6d | 2026-01-24 | 2026-01-29 | 8023SS+1d |  | Zenith | 8676844 |
| 8025 | 36900.37000.37400.38300.39300.45500.194500.1067000 | Formwork | 6d | 2026-01-25 | 2026-01-30 | 8023SS+2d |  | Zenith | 8676834 |
| 8026 | 36900.37000.37400.38300.39300.45500.194500.1067100 | Concreting | 1d | 2026-01-31 | 2026-01-31 | 8024FS+1d, 8025 |  | Zenith | 8676824 |

| ID | WBS | Task | Duration | Start | Finish | Predecessors | Constraint | Calendar | Unique_Task_ID |
| --- | --- | --- | --- | --- | --- | --- | --- | --- | --- |
| 8027 | 36900.37000.37400.38300.39300.45500.194600 | **7th floor roof slab** | 9d | 2026-02-01 | 2026-02-09 |  | start no earlier than 2026-02-01 | Zenith | 8653024 |
| 8028 | 36900.37000.37400.38300.39300.45500.194600.1067200 | Reinforcement | 6d | 2026-02-01 | 2026-02-06 | 8026 |  | Zenith | 8676814 |
| 8029 | 36900.37000.37400.38300.39300.45500.194600.1067300 | Conduiting | 6d | 2026-02-02 | 2026-02-07 | 8028SS+1d |  | Zenith | 8676804 |
| 8030 | 36900.37000.37400.38300.39300.45500.194600.1067400 | Formwork | 6d | 2026-02-03 | 2026-02-08 | 8028SS+2d |  | Zenith | 8676794 |
| 8031 | 36900.37000.37400.38300.39300.45500.194600.1067500 | Concreting | 1d | 2026-02-09 | 2026-02-09 | 8029FS+1d, 8030 |  | Zenith | 8676784 |
| 8032 | 36900.37000.37400.38300.39300.45500.194700 | **8th floor roof slab** | 9d | 2026-02-10 | 2026-02-18 |  | start no earlier than 2026-02-10 | Zenith | 8653034 |
| 8033 | 36900.37000.37400.38300.39300.45500.194700.1067600 | Reinforcement | 6d | 2026-02-10 | 2026-02-15 | 8031 |  | Zenith | 8676774 |
| 8034 | 36900.37000.37400.38300.39300.45500.194700.1067700 | Conduiting | 6d | 2026-02-11 | 2026-02-16 | 8033SS+1d |  | Zenith | 8676764 |
| 8035 | 36900.37000.37400.38300.39300.45500.194700.1067800 | Formwork | 6d | 2026-02-12 | 2026-02-17 | 8033SS+2d |  | Zenith | 8676754 |
| 8036 | 36900.37000.37400.38300.39300.45500.194700.1067900 | Concreting | 1d | 2026-02-18 | 2026-02-18 | 8034FS+1d, 8035 |  | Zenith | 8676744 |
| 8037 | 36900.37000.37400.38300.39300.45500.194800 | **9th floor roof slab** | 9d | 2026-02-19 | 2026-02-27 |  | start no earlier than 2026-02-19 | Zenith | 8653044 |
| 8038 | 36900.37000.37400.38300.39300.45500.194800.1068000 | Reinforcement | 6d | 2026-02-19 | 2026-02-24 | 8036 |  | Zenith | 8676734 |
| 8039 | 36900.37000.37400.38300.39300.45500.194800.1068100 | Conduiting | 6d | 2026-02-20 | 2026-02-25 | 8038SS+1d |  | Zenith | 8676724 |
| 8040 | 36900.37000.37400.38300.39300.45500.194800.1068200 | Formwork | 6d | 2026-02-21 | 2026-02-26 | 8038SS+2d |  | Zenith | 8676714 |
| 8041 | 36900.37000.37400.38300.39300.45500.194800.1068300 | Concreting | 1d | 2026-02-27 | 2026-02-27 | 8039FS+1d, 8040 |  | Zenith | 8676704 |
| 8042 | 36900.37000.37400.38300.39300.45500.194900 | **10th floor roof slab** | 9d | 2026-02-28 | 2026-03-08 |  | start no earlier than 2026-02-28 | Zenith | 8653054 |
| 8043 | 36900.37000.37400.38300.39300.45500.194900.1068400 | Reinforcement | 6d | 2026-02-28 | 2026-03-05 | 8041 |  | Zenith | 8676694 |
| 8044 | 36900.37000.37400.38300.39300.45500.194900.1068500 | Conduiting | 6d | 2026-03-01 | 2026-03-06 | 8043SS+1d |  | Zenith | 8676684 |
| 8045 | 36900.37000.37400.38300.39300.45500.194900.1068600 | Formwork | 6d | 2026-03-02 | 2026-03-07 | 8043SS+2d |  | Zenith | 8676674 |
| 8046 | 36900.37000.37400.38300.39300.45500.194900.1068700 | Concreting | 1d | 2026-03-08 | 2026-03-08 | 8044FS+1d, 8045 |  | Zenith | 8676664 |
| 8047 | 36900.37000.37400.38300.39300.45500.195100 | **11th floor roof slab** | 9d | 2026-03-09 | 2026-03-17 |  | start no earlier than 2026-03-09 | Zenith | 8653064 |
| 8048 | 36900.37000.37400.38300.39300.45500.195100.1068800 | Reinforcement | 6d | 2026-03-09 | 2026-03-14 | 8046 |  | Zenith | 8676654 |
| 8049 | 36900.37000.37400.38300.39300.45500.195100.1068900 | Conduiting | 6d | 2026-03-10 | 2026-03-15 | 8048SS+1d |  | Zenith | 8676644 |
| 8050 | 36900.37000.37400.38300.39300.45500.195100.1069000 | Formwork | 6d | 2026-03-11 | 2026-03-16 | 8048SS+2d |  | Zenith | 8676634 |
| 8051 | 36900.37000.37400.38300.39300.45500.195100.1069100 | Concreting | 1d | 2026-03-17 | 2026-03-17 | 8049FS+1d, 8050 |  | Zenith | 8676624 |

| ID | WBS | Task | Duration | Start | Finish | Predecessors | Constraint | Calendar | Unique_Task_ID |
| --- | --- | --- | --- | --- | --- | --- | --- | --- | --- |
| 8052 | 36900.37000.37400.38300.39300.45500.195300 | **12th floor roof slab** | 9d | 2026-03-18 | 2026-03-26 |  | start no earlier than 2026-03-18 | Zenith | 8653074 |
| 8053 | 36900.37000.37400.38300.39300.45500.195300.1069200 | Reinforcement | 6d | 2026-03-18 | 2026-03-23 | 8051 |  | Zenith | 8676614 |
| 8054 | 36900.37000.37400.38300.39300.45500.195300.1069300 | Conduiting | 6d | 2026-03-19 | 2026-03-24 | 8053SS+1d |  | Zenith | 8676604 |
| 8055 | 36900.37000.37400.38300.39300.45500.195300.1069400 | Formwork | 6d | 2026-03-20 | 2026-03-25 | 8053SS+2d |  | Zenith | 8676594 |
| 8056 | 36900.37000.37400.38300.39300.45500.195300.1069500 | Concreting | 1d | 2026-03-26 | 2026-03-26 | 8054FS+1d, 8055 |  | Zenith | 8676584 |
| 8057 | 36900.37000.37400.38300.39300.45500.195400 | **13th floor roof slab** | 9d | 2026-03-27 | 2026-04-04 |  | start no earlier than 2026-03-27 | Zenith | 8653104 |
| 8058 | 36900.37000.37400.38300.39300.45500.195400.1069600 | Reinforcement | 6d | 2026-03-27 | 2026-04-01 | 8056 |  | Zenith | 8676574 |
| 8059 | 36900.37000.37400.38300.39300.45500.195400.1069700 | Conduiting | 6d | 2026-03-28 | 2026-04-02 | 8058SS+1d |  | Zenith | 8676564 |
| 8060 | 36900.37000.37400.38300.39300.45500.195400.1069800 | Formwork | 6d | 2026-03-29 | 2026-04-03 | 8058SS+2d |  | Zenith | 8676554 |
| 8061 | 36900.37000.37400.38300.39300.45500.195400.1069900 | Concreting | 1d | 2026-04-04 | 2026-04-04 | 8059FS+1d, 8060 |  | Zenith | 8676544 |
| 8062 | 36900.37000.37400.38300.39300.45500.195500 | **14th floor roof slab** | 9d | 2026-04-05 | 2026-04-13 |  | start no earlier than 2026-04-05 | Zenith | 8653114 |
| 8063 | 36900.37000.37400.38300.39300.45500.195500.1070000 | Reinforcement | 6d | 2026-04-05 | 2026-04-10 | 8061 |  | Zenith | 8676534 |
| 8064 | 36900.37000.37400.38300.39300.45500.195500.1070100 | Conduiting | 6d | 2026-04-06 | 2026-04-11 | 8063SS+1d |  | Zenith | 8676524 |
| 8065 | 36900.37000.37400.38300.39300.45500.195500.1070200 | Formwork | 6d | 2026-04-07 | 2026-04-12 | 8063SS+2d |  | Zenith | 8676514 |
| 8066 | 36900.37000.37400.38300.39300.45500.195500.1070300 | Concreting | 1d | 2026-04-13 | 2026-04-13 | 8064FS+1d, 8065 |  | Zenith | 8676504 |
| 8067 | 36900.37000.37400.38300.39300.45500.195800 | **15th floor roof slab** | 9d | 2026-04-14 | 2026-04-22 |  | start no earlier than 2026-04-14 | Zenith | 8653124 |
| 8068 | 36900.37000.37400.38300.39300.45500.195800.1070400 | Reinforcement | 6d | 2026-04-14 | 2026-04-19 | 8066 |  | Zenith | 8676494 |
| 8069 | 36900.37000.37400.38300.39300.45500.195800.1070500 | Conduiting | 6d | 2026-04-15 | 2026-04-20 | 8068SS+1d |  | Zenith | 8676484 |
| 8070 | 36900.37000.37400.38300.39300.45500.195800.1070600 | Formwork | 6d | 2026-04-16 | 2026-04-21 | 8068SS+2d |  | Zenith | 8676474 |
| 8071 | 36900.37000.37400.38300.39300.45500.195800.1070700 | Concreting | 1d | 2026-04-22 | 2026-04-22 | 8069FS+1d, 8070 |  | Zenith | 8676464 |
| 8072 | 36900.37000.37400.38300.39300.45500.195900 | **16th floor roof slab** | 9d | 2026-04-23 | 2026-05-01 |  | start no earlier than 2026-04-23 | Zenith | 8653134 |
| 8073 | 36900.37000.37400.38300.39300.45500.195900.1070800 | Reinforcement | 6d | 2026-04-23 | 2026-04-28 | 8071 |  | Zenith | 8676454 |
| 8074 | 36900.37000.37400.38300.39300.45500.195900.1070900 | Conduiting | 6d | 2026-04-24 | 2026-04-29 | 8073SS+1d |  | Zenith | 8676444 |
| 8075 | 36900.37000.37400.38300.39300.45500.195900.1071000 | Formwork | 6d | 2026-04-25 | 2026-04-30 | 8073SS+2d |  | Zenith | 8676434 |
| 8076 | 36900.37000.37400.38300.39300.45500.195900.1071100 | Concreting | 1d | 2026-05-01 | 2026-05-01 | 8074, 8075 |  | Zenith | 8676424 |

| ID | WBS | Task | Duration | Start | Finish | Predecessors | Constraint | Calendar | Unique_Task_ID |
| --- | --- | --- | --- | --- | --- | --- | --- | --- | --- |
| 8077 | 36900.37000.37400.38300.39300.45500.196000 | **17th floor roof slab** | 9d | 2026-05-02 | 2026-05-10 |  | start no earlier than 2026-05-02 | Zenith | 8653154 |
| 8078 | 36900.37000.37400.38300.39300.45500.196000.1071200 | Reinforcement | 6d | 2026-05-02 | 2026-05-07 | 8076 |  | Zenith | 8676414 |
| 8079 | 36900.37000.37400.38300.39300.45500.196000.1071300 | Conduiting | 6d | 2026-05-03 | 2026-05-08 | 8078SS+1d |  | Zenith | 8676404 |
| 8080 | 36900.37000.37400.38300.39300.45500.196000.1071400 | Formwork | 6d | 2026-05-04 | 2026-05-09 | 8078SS+2d |  | Zenith | 8676394 |
| 8081 | 36900.37000.37400.38300.39300.45500.196000.1071500 | Concreting | 1d | 2026-05-10 | 2026-05-10 | 8079FS+1d, 8080 |  | Zenith | 8676384 |
| 8082 | 36900.37000.37400.38300.39300.45500.196100 | **18th floor roof slab** | 8d | 2026-05-11 | 2026-05-18 |  | start no earlier than 2026-05-11 | Zenith | 8653164 |
| 8083 | 36900.37000.37400.38300.39300.45500.196100.1071600 | Reinforcement | 5d | 2026-05-11 | 2026-05-15 | 8081 |  | Zenith | 8676374 |
| 8084 | 36900.37000.37400.38300.39300.45500.196100.1071700 | Conduiting | 5d | 2026-05-12 | 2026-05-16 | 8083SS+1d |  | Zenith | 8676364 |
| 8085 | 36900.37000.37400.38300.39300.45500.196100.1071800 | Formwork | 5d | 2026-05-13 | 2026-05-17 | 8083SS+2d |  | Zenith | 8676354 |
| 8086 | 36900.37000.37400.38300.39300.45500.196100.1071900 | Concreting | 1d | 2026-05-18 | 2026-05-18 | 8084FS+1d, 8085 |  | Zenith | 8676344 |
| 8087 | 36900.37000.37400.38300.39300.45500.196200 | **19th floor roof slab** | 8d | 2026-05-19 | 2026-05-26 |  | start no earlier than 2026-05-19 | Zenith | 8653174 |
| 8088 | 36900.37000.37400.38300.39300.45500.196200.1072000 | Reinforcement | 5d | 2026-05-19 | 2026-05-23 | 8086 |  | Zenith | 8676334 |
| 8089 | 36900.37000.37400.38300.39300.45500.196200.1072100 | Conduiting | 5d | 2026-05-20 | 2026-05-24 | 8088SS+1d |  | Zenith | 8676324 |
| 8090 | 36900.37000.37400.38300.39300.45500.196200.1072200 | Formwork | 5d | 2026-05-21 | 2026-05-25 | 8088SS+2d |  | Zenith | 8676314 |
| 8091 | 36900.37000.37400.38300.39300.45500.196200.1072300 | Concreting | 1d | 2026-05-26 | 2026-05-26 | 8089FS+1d, 8090 |  | Zenith | 8676304 |
| 8092 | 36900.37000.37400.38300.39300.45500.196300 | **20th floor roof slab** | 8d | 2026-05-27 | 2026-06-03 |  | start no earlier than 2026-05-27 | Zenith | 8653184 |
| 8093 | 36900.37000.37400.38300.39300.45500.196300.1072400 | Reinforcement | 5d | 2026-05-27 | 2026-05-31 | 8091 |  | Zenith | 8676294 |
| 8094 | 36900.37000.37400.38300.39300.45500.196300.1072500 | Conduiting | 5d | 2026-05-28 | 2026-06-01 | 8093SS+1d |  | Zenith | 8676284 |
| 8095 | 36900.37000.37400.38300.39300.45500.196300.1072600 | Formwork | 5d | 2026-05-29 | 2026-06-02 | 8093SS+2d |  | Zenith | 8676274 |
| 8096 | 36900.37000.37400.38300.39300.45500.196300.1072700 | Concreting | 1d | 2026-06-03 | 2026-06-03 | 8094FS+1d, 8095 |  | Zenith | 8676264 |
| 8097 | 36900.37000.37400.38300.39300.45500.196400 | **21st floor roof slab** | 8d | 2026-06-04 | 2026-06-11 |  | start no earlier than 2026-06-04 | Zenith | 8653204 |
| 8098 | 36900.37000.37400.38300.39300.45500.196400.1072800 | Reinforcement | 5d | 2026-06-04 | 2026-06-08 | 8096 |  | Zenith | 8676254 |
| 8099 | 36900.37000.37400.38300.39300.45500.196400.1072900 | Conduiting | 5d | 2026-06-05 | 2026-06-09 | 8098SS+1d |  | Zenith | 8676244 |
| 8100 | 36900.37000.37400.38300.39300.45500.196400.1073000 | Formwork | 5d | 2026-06-06 | 2026-06-10 | 8098SS+2d |  | Zenith | 8676234 |
| 8101 | 36900.37000.37400.38300.39300.45500.196400.1073100 | Concreting | 1d | 2026-06-11 | 2026-06-11 | 8099FS+1d, 8100 |  | Zenith | 8676224 |

| ID | WBS | Task | Duration | Start | Finish | Predecessors | Constraint | Calendar | Unique_Task_ID |
| --- | --- | --- | --- | --- | --- | --- | --- | --- | --- |
| 8102 | 36900.37000.37400.38300.39300.45500.196500 | **22nd floor roof slab** | 8d | 2026-06-12 | 2026-06-19 |  | start no earlier than 2026-06-12 | Zenith | 8653214 |
| 8103 | 36900.37000.37400.38300.39300.45500.196500.1073200 | Reinforcement | 5d | 2026-06-12 | 2026-06-16 | 8101 |  | Zenith | 8676214 |
| 8104 | 36900.37000.37400.38300.39300.45500.196500.1073300 | Conduiting | 5d | 2026-06-13 | 2026-06-17 | 8103SS+1d |  | Zenith | 8676204 |
| 8105 | 36900.37000.37400.38300.39300.45500.196500.1073400 | Formwork | 5d | 2026-06-14 | 2026-06-18 | 8103SS+2d |  | Zenith | 8676194 |
| 8106 | 36900.37000.37400.38300.39300.45500.196500.1073500 | Concreting | 1d | 2026-06-19 | 2026-06-19 | 8104FS+1d, 8105 |  | Zenith | 8676184 |
| 8107 | 36900.37000.37400.38300.39300.45500.196600 | **23rd floor roof slab** | 8d | 2026-06-20 | 2026-06-27 |  | start no earlier than 2026-06-20 | Zenith | 8653224 |
| 8108 | 36900.37000.37400.38300.39300.45500.196600.1073600 | Reinforcement | 5d | 2026-06-20 | 2026-06-24 | 8106 |  | Zenith | 8676174 |
| 8109 | 36900.37000.37400.38300.39300.45500.196600.1073700 | Conduiting | 5d | 2026-06-21 | 2026-06-25 | 8108SS+1d |  | Zenith | 8676164 |
| 8110 | 36900.37000.37400.38300.39300.45500.196600.1073800 | Formwork | 5d | 2026-06-22 | 2026-06-26 | 8108SS+2d |  | Zenith | 8676154 |
| 8111 | 36900.37000.37400.38300.39300.45500.196600.1073900 | Concreting | 1d | 2026-06-27 | 2026-06-27 | 8109FS+1d, 8110 |  | Zenith | 8676144 |
| 8112 | 36900.37000.37400.38300.39300.45500.196700 | **24th floor roof slab** | 8d | 2026-06-28 | 2026-07-05 |  | start no earlier than 2026-06-28 | Zenith | 8653234 |
| 8113 | 36900.37000.37400.38300.39300.45500.196700.1074000 | Reinforcement | 5d | 2026-06-28 | 2026-07-02 | 8111 |  | Zenith | 8676134 |
| 8114 | 36900.37000.37400.38300.39300.45500.196700.1074100 | Conduiting | 5d | 2026-06-29 | 2026-07-03 | 8113SS+1d |  | Zenith | 8676124 |
| 8115 | 36900.37000.37400.38300.39300.45500.196700.1074200 | Formwork | 5d | 2026-06-30 | 2026-07-04 | 8113SS+2d |  | Zenith | 8676114 |
| 8116 | 36900.37000.37400.38300.39300.45500.196700.1074300 | Concreting | 1d | 2026-07-05 | 2026-07-05 | 8114FS+1d, 8115 |  | Zenith | 8676104 |
| 8117 | 36900.37000.37400.38300.39300.45500.196800 | **25th floor roof slab** | 8d | 2026-07-06 | 2026-07-13 |  | start no earlier than 2026-07-06 | Zenith | 8653244 |
| 8118 | 36900.37000.37400.38300.39300.45500.196800.1074400 | Reinforcement | 5d | 2026-07-06 | 2026-07-10 | 8116 |  | Zenith | 8676094 |
| 8119 | 36900.37000.37400.38300.39300.45500.196800.1074500 | Conduiting | 5d | 2026-07-07 | 2026-07-11 | 8118SS+1d |  | Zenith | 8676084 |
| 8120 | 36900.37000.37400.38300.39300.45500.196800.1074600 | Formwork | 5d | 2026-07-08 | 2026-07-12 | 8118SS+2d |  | Zenith | 8676074 |
| 8121 | 36900.37000.37400.38300.39300.45500.196800.1074700 | Concreting | 1d | 2026-07-13 | 2026-07-13 | 8119FS+1d, 8120 |  | Zenith | 8676064 |
| 8122 | 36900.37000.37400.38300.39300.45500.197000 | **26th floor roof slab** | 8d | 2026-07-14 | 2026-07-21 |  | start no earlier than 2026-07-14 | Zenith | 8653254 |
| 8123 | 36900.37000.37400.38300.39300.45500.197000.1074800 | Reinforcement | 5d | 2026-07-14 | 2026-07-18 | 8121 |  | Zenith | 8676054 |
| 8124 | 36900.37000.37400.38300.39300.45500.197000.1074900 | Conduiting | 5d | 2026-07-15 | 2026-07-19 | 8123SS+1d |  | Zenith | 8676044 |
| 8125 | 36900.37000.37400.38300.39300.45500.197000.1075000 | Formwork | 5d | 2026-07-16 | 2026-07-20 | 8123SS+2d |  | Zenith | 8676034 |
| 8126 | 36900.37000.37400.38300.39300.45500.197000.1075100 | Concreting | 1d | 2026-07-21 | 2026-07-21 | 8124FS+1d, 8125 |  | Zenith | 8676024 |

| ID | WBS | Task | Duration | Start | Finish | Predecessors | Constraint | Calendar | Unique_Task_ID |
| --- | --- | --- | --- | --- | --- | --- | --- | --- | --- |
| 8127 | 36900.37000.37400.38300.39300.45500.197100 | **27th floor roof slab** | 8d | 2026-07-22 | 2026-07-29 |  | start no earlier than 2026-07-22 | Zenith | 8653274 |
| 8128 | 36900.37000.37400.38300.39300.45500.197100.1075200 | Reinforcement | 5d | 2026-07-22 | 2026-07-26 | 8126 |  | Zenith | 8676014 |
| 8129 | 36900.37000.37400.38300.39300.45500.197100.1075300 | Conduiting | 5d | 2026-07-23 | 2026-07-27 | 8128SS+1d |  | Zenith | 8676004 |
| 8130 | 36900.37000.37400.38300.39300.45500.197100.1075400 | Formwork | 5d | 2026-07-24 | 2026-07-28 | 8128SS+2d |  | Zenith | 8675994 |
| 8131 | 36900.37000.37400.38300.39300.45500.197100.1075500 | Concreting | 1d | 2026-07-29 | 2026-07-29 | 8129FS+1d, 8130 |  | Zenith | 8675984 |
| 8132 | 36900.37000.37400.38300.39300.45500.197200 | **28th floor roof slab** | 8d | 2026-07-30 | 2026-08-06 |  | start no earlier than 2026-07-30 | Zenith | 8653284 |
| 8133 | 36900.37000.37400.38300.39300.45500.197200.1075600 | Reinforcement | 5d | 2026-07-30 | 2026-08-03 | 8131 |  | Zenith | 8675974 |
| 8134 | 36900.37000.37400.38300.39300.45500.197200.1075700 | Conduiting | 5d | 2026-07-31 | 2026-08-04 | 8133SS+1d |  | Zenith | 8675964 |
| 8135 | 36900.37000.37400.38300.39300.45500.197200.1075800 | Formwork | 5d | 2026-08-01 | 2026-08-05 | 8133SS+2d |  | Zenith | 8675954 |
| 8136 | 36900.37000.37400.38300.39300.45500.197200.1075900 | Concreting | 1d | 2026-08-06 | 2026-08-06 | 8134FS+1d, 8135 |  | Zenith | 8675944 |
| 8137 | 36900.37000.37400.38300.39300.45500.197300 | **29th floor roof slab** | 8d | 2026-08-07 | 2026-08-14 |  | start no earlier than 2026-08-07 | Zenith | 8653294 |
| 8138 | 36900.37000.37400.38300.39300.45500.197300.1076000 | Reinforcement | 5d | 2026-08-07 | 2026-08-11 | 8136 |  | Zenith | 8675934 |
| 8139 | 36900.37000.37400.38300.39300.45500.197300.1076100 | Conduiting | 5d | 2026-08-08 | 2026-08-12 | 8138SS+1d |  | Zenith | 8675924 |
| 8140 | 36900.37000.37400.38300.39300.45500.197300.1076200 | Formwork | 5d | 2026-08-09 | 2026-08-13 | 8138SS+2d |  | Zenith | 8675914 |
| 8141 | 36900.37000.37400.38300.39300.45500.197300.1076300 | Concreting | 1d | 2026-08-14 | 2026-08-14 | 8139FS+1d, 8140 |  | Zenith | 8675904 |
| 8142 | 36900.37000.37400.38300.39300.45500.197400 | **30th floor roof slab** | 10d | 2026-08-15 | 2026-08-24 |  | start no earlier than 2026-08-15 | Zenith | 8653324 |
| 8143 | 36900.37000.37400.38300.39300.45500.197400.1076400 | Reinforcement | 7d | 2026-08-15 | 2026-08-21 | 8141 |  | Zenith | 8675894 |
| 8144 | 36900.37000.37400.38300.39300.45500.197400.1076500 | Conduiting | 7d | 2026-08-16 | 2026-08-22 | 8143SS+1d |  | Zenith | 8675884 |
| 8145 | 36900.37000.37400.38300.39300.45500.197400.1076600 | Formwork | 7d | 2026-08-17 | 2026-08-23 | 8143SS+2d |  | Zenith | 8675874 |
| 8146 | 36900.37000.37400.38300.39300.45500.197400.1076700 | Concreting | 1d | 2026-08-24 | 2026-08-24 | 8144FS+1d, 8145 |  | Zenith | 8675864 |
| 8147 | 36900.37000.37400.38300.39300.45500.197500 | **31st floor roof slab** | 10d | 2026-08-25 | 2026-09-03 |  | start no earlier than 2026-08-25 | Zenith | 8653364 |
| 8148 | 36900.37000.37400.38300.39300.45500.197500.1076800 | Reinforcement | 7d | 2026-08-25 | 2026-08-31 | 8146 |  | Zenith | 8675854 |
| 8149 | 36900.37000.37400.38300.39300.45500.197500.1076900 | Conduiting | 7d | 2026-08-26 | 2026-09-01 | 8148SS+1d |  | Zenith | 8675844 |
| 8150 | 36900.37000.37400.38300.39300.45500.197500.1077000 | Formwork | 7d | 2026-08-27 | 2026-09-02 | 8148SS+2d |  | Zenith | 8675834 |
| 8151 | 36900.37000.37400.38300.39300.45500.197500.1077100 | Concreting | 1d | 2026-09-03 | 2026-09-03 | 8149FS+1d, 8150 |  | Zenith | 8675824 |

| ID | WBS | Task | Duration | Start | Finish | Predecessors | Constraint | Calendar | Unique_Task_ID |
| --- | --- | --- | --- | --- | --- | --- | --- | --- | --- |
| 8152 | 36900.37000.37400.38300.39300.45500.197600 | **32nd floor roof slab** | 10d | 2026-09-04 | 2026-09-13 |  | start no earlier than 2026-09-04 | Zenith | 8653374 |
| 8153 | 36900.37000.37400.38300.39300.45500.197600.1077200 | Reinforcement | 7d | 2026-09-04 | 2026-09-10 | 8151 |  | Zenith | 8675814 |
| 8154 | 36900.37000.37400.38300.39300.45500.197600.1077300 | Conduiting | 7d | 2026-09-05 | 2026-09-11 | 8153SS+1d |  | Zenith | 8675804 |
| 8155 | 36900.37000.37400.38300.39300.45500.197600.1077400 | Formwork | 7d | 2026-09-06 | 2026-09-12 | 8153SS+2d |  | Zenith | 8675794 |
| 8156 | 36900.37000.37400.38300.39300.45500.197600.1077500 | Concreting | 1d | 2026-09-13 | 2026-09-13 | 8154FS+1d, 8155 |  | Zenith | 8675784 |
| 8157 | 36900.37000.37400.38300.39300.45500.197700 | **33rd floor roof slab** | 10d | 2026-09-14 | 2026-09-23 |  | start no earlier than 2026-09-14 | Zenith | 8653394 |
| 8158 | 36900.37000.37400.38300.39300.45500.197700.1077600 | Reinforcement | 7d | 2026-09-14 | 2026-09-20 | 8156 |  | Zenith | 8675774 |
| 8159 | 36900.37000.37400.38300.39300.45500.197700.1077700 | Conduiting | 7d | 2026-09-15 | 2026-09-21 | 8158SS+1d |  | Zenith | 8675764 |
| 8160 | 36900.37000.37400.38300.39300.45500.197700.1077800 | Formwork | 7d | 2026-09-16 | 2026-09-22 | 8158SS+2d |  | Zenith | 8675754 |
| 8161 | 36900.37000.37400.38300.39300.45500.197700.1077900 | Concreting | 1d | 2026-09-23 | 2026-09-23 | 8159FS+1d, 8160 |  | Zenith | 8675744 |
| 8162 | 36900.37000.37400.38300.39300.45500.197900 | **Terrace floor slab** | 18d | 2026-09-24 | 2026-10-11 |  | start no earlier than 2026-09-24 | Zenith | 8653404 |
| 8163 | 36900.37000.37400.38300.39300.45500.197900.1078000 | Reinforcement | 14d | 2026-09-24 | 2026-10-07 | 8161 |  | Zenith | 8675734 |
| 8164 | 36900.37000.37400.38300.39300.45500.197900.1078100 | Conduiting | 14d | 2026-09-25 | 2026-10-08 | 8163SS+1d |  | Zenith | 8675724 |
| 8165 | 36900.37000.37400.38300.39300.45500.197900.1078200 | Formwork | 14d | 2026-09-26 | 2026-10-09 | 8163SS+2d |  | Zenith | 8675714 |
| 8166 | 36900.37000.37400.38300.39300.45500.197900.1078300 | Concreting | 2d | 2026-10-10 | 2026-10-11 | 8164FS+1d, 8165 |  | Zenith | 8675704 |
| 8167 | 36900.37000.37400.38300.39300.45500.198000 | **OHT, Mumty & Machine Room, Parapet** | 35d | 2026-10-12 | 2026-12-30 |  | start no earlier than 2026-10-12 | Zenith | 8653414 |
| 8168 | 36900.37000.37400.38300.39300.45500.198000.1078400 | Reinforcement | 20d | 2026-10-12 | 2026-10-31 | 8166 |  | Zenith | 8675694 |
| 8169 | 36900.37000.37400.38300.39300.45500.198000.1078500 | Flanges fixing & Conduiting | 10d | 2026-10-13 | 2026-10-22 | 8168SS+1d |  | Zenith | 8675684 |
| 8170 | 36900.37000.37400.38300.39300.45500.198000.1078600 | Formwork | 25d | 2026-10-18 | 2026-12-26 | 8168SS+6d |  | Zenith | 8675674 |
| 8171 | 36900.37000.37400.38300.39300.45500.198000.1078700 | Concreting | 4d | 2026-12-27 | 2026-12-30 | 8169FS+5d, 8170 |  | Zenith | 8675664 |
| 8172 | 36900.37000.37400.38300.39300.48000 | **Post Pour Activities** | 313.25d | 2026-01-14 | 2027-01-07 |  | start no earlier than 2026-01-14 | Zenith | 8648104 |
| 8173 | 36900.37000.37400.38300.39300.48000.836300 | 1st Floor | 7d | 2026-01-14 | 2026-01-20 | 8016 |  | Zenith | 8720784 |
| 8174 | 36900.37000.37400.38300.39300.48000.836400 | 2nd Floor | 7d | 2026-01-23 | 2026-01-30 | 8173FS+0.25d, 8021FS+0.25d |  | Zenith | 8720774 |
| 8175 | 36900.37000.37400.38300.39300.48000.836500 | 3rd Floor | 7d | 2026-02-01 | 2026-02-08 | 8174FS+0.25d, 8026FS+0.25d |  | Zenith | 8720764 |
| 8176 | 36900.37000.37400.38300.39300.48000.836600 | 4th Floor | 7d | 2026-02-10 | 2026-02-17 | 8175FS+0.25d, 8031FS+0.25d |  | Zenith | 8720754 |
| 8177 | 36900.37000.37400.38300.39300.48000.836700 | 5th Floor | 7d | 2026-02-19 | 2026-02-26 | 8176FS+0.25d, 8036FS+0.25d |  | Zenith | 8720744 |
| 8178 | 36900.37000.37400.38300.39300.48000.836800 | 6th Floor | 7d | 2026-02-28 | 2026-03-07 | 8177FS+0.25d, 8041FS+0.25d |  | Zenith | 8720734 |
| 8179 | 36900.37000.37400.38300.39300.48000.836900 | 7th Floor | 7d | 2026-03-09 | 2026-03-16 | 8178FS+0.25d, 8046FS+0.25d |  | Zenith | 8720724 |
| 8180 | 36900.37000.37400.38300.39300.48000.837000 | 8th Floor | 7d | 2026-03-18 | 2026-03-25 | 8179FS+0.25d, 8051FS+0.25d |  | Zenith | 8720714 |
| 8181 | 36900.37000.37400.38300.39300.48000.837100 | 9th Floor | 7d | 2026-03-27 | 2026-04-03 | 8180FS+0.25d, 8056FS+0.25d |  | Zenith | 8720704 |
| 8182 | 36900.37000.37400.38300.39300.48000.837200 | 10th Floor | 7d | 2026-04-05 | 2026-04-12 | 8181FS+0.25d, 8061FS+0.25d |  | Zenith | 8720694 |
| 8183 | 36900.37000.37400.38300.39300.48000.837300 | 11th Floor | 7d | 2026-04-14 | 2026-04-21 | 8182FS+0.25d, 8066FS+0.25d |  | Zenith | 8720684 |
| 8184 | 36900.37000.37400.38300.39300.48000.837400 | 12th Floor | 7d | 2026-04-23 | 2026-04-30 | 8183FS+0.25d, 8071FS+0.25d |  | Zenith | 8720674 |
| 8185 | 36900.37000.37400.38300.39300.48000.837500 | 13th Floor | 7d | 2026-05-02 | 2026-05-09 | 8184FS+0.25d, 8076FS+0.25d |  | Zenith | 8720664 |
| 8186 | 36900.37000.37400.38300.39300.48000.837600 | 14th Floor | 7d | 2026-05-11 | 2026-05-18 | 8185FS+0.25d, 8081FS+0.25d |  | Zenith | 8720654 |
| 8187 | 36900.37000.37400.38300.39300.48000.837700 | 15th Floor | 7d | 2026-05-19 | 2026-05-26 | 8186FS+0.25d, 8086FS+0.25d |  | Zenith | 8720644 |
| 8188 | 36900.37000.37400.38300.39300.48000.837800 | 16th Floor | 7d | 2026-05-27 | 2026-06-03 | 8187FS+0.25d, 8091FS+0.25d |  | Zenith | 8720634 |
| 8189 | 36900.37000.37400.38300.39300.48000.837900 | 17th Floor | 7d | 2026-06-04 | 2026-06-11 | 8188FS+0.25d, 8096FS+0.25d |  | Zenith | 8720624 |
| 8190 | 36900.37000.37400.38300.39300.48000.838000 | 18th Floor | 7d | 2026-06-12 | 2026-06-19 | 8189FS+0.25d, 8101FS+0.25d |  | Zenith | 8720614 |
| 8191 | 36900.37000.37400.38300.39300.48000.838100 | 19th Floor | 7d | 2026-06-20 | 2026-06-27 | 8190FS+0.25d, 8106FS+0.25d |  | Zenith | 8720604 |
| 8192 | 36900.37000.37400.38300.39300.48000.838200 | 20th Floor | 7d | 2026-06-28 | 2026-07-05 | 8191FS+0.25d, 8111FS+0.25d |  | Zenith | 8720594 |
| 8193 | 36900.37000.37400.38300.39300.48000.838300 | 21st Floor | 7d | 2026-07-06 | 2026-07-13 | 8192FS+0.25d, 8116FS+0.25d |  | Zenith | 8720584 |
| 8194 | 36900.37000.37400.38300.39300.48000.838400 | 22nd Floor | 7d | 2026-07-14 | 2026-07-21 | 8193FS+0.25d, 8121FS+0.25d |  | Zenith | 8720574 |
| 8195 | 36900.37000.37400.38300.39300.48000.838500 | 23rd Floor | 7d | 2026-07-22 | 2026-07-29 | 8194FS+0.25d, 8126FS+0.25d |  | Zenith | 8720564 |
| 8196 | 36900.37000.37400.38300.39300.48000.838600 | 24th Floor | 7d | 2026-07-30 | 2026-08-06 | 8195FS+0.25d, 8131FS+0.25d |  | Zenith | 8720554 |
| 8197 | 36900.37000.37400.38300.39300.48000.838700 | 25th Floor | 7d | 2026-08-07 | 2026-08-14 | 8196FS+0.25d, 8136FS+0.25d |  | Zenith | 8720544 |
| 8198 | 36900.37000.37400.38300.39300.48000.838800 | 26th Floor | 7d | 2026-08-15 | 2026-08-22 | 8197FS+0.25d, 8141FS+0.25d |  | Zenith | 8720534 |
| 8199 | 36900.37000.37400.38300.39300.48000.838900 | 27th Floor | 7d | 2026-08-25 | 2026-09-01 | 8198FS+0.25d, 8146FS+0.25d |  | Zenith | 8720524 |
| 8200 | 36900.37000.37400.38300.39300.48000.839000 | 28th Floor | 7d | 2026-09-04 | 2026-09-11 | 8199FS+0.25d, 8151FS+0.25d |  | Zenith | 8720514 |
| 8201 | 36900.37000.37400.38300.39300.48000.839100 | 29th Floor | 7d | 2026-09-14 | 2026-09-21 | 8200FS+0.25d, 8156FS+0.25d |  | Zenith | 8720504 |
| 8202 | 36900.37000.37400.38300.39300.48000.839200 | 30th Floor | 7d | 2026-09-24 | 2026-10-01 | 8201FS+0.25d, 8161FS+0.25d |  | Zenith | 8720494 |
| 8203 | 36900.37000.37400.38300.39300.48000.839300 | 31st Flood | 7d | 2026-10-12 | 2026-10-19 | 8202FS+0.25d, 8166FS+0.25d |  | Zenith | 8720484 |
| 8204 | 36900.37000.37400.38300.39300.48000.839400 | 32nd Floor | 7d | 2026-10-19 | 2026-10-26 | 8203 |  | Zenith | 8720474 |
| 8205 | 36900.37000.37400.38300.39300.48000.839500 | 33rd Floor | 7d | 2026-10-26 | 2026-12-17 | 8204 |  | Zenith | 8720464 |
| 8206 | 36900.37000.37400.38300.39300.48000.839600 | 34th Floor | 7d | 2026-12-17 | 2026-12-24 | 8205 |  | Zenith | 8720454 |
| 8207 | 36900.37000.37400.38300.39300.48000.839700 | Terrace | 7d | 2026-12-24 | 2026-12-31 | 8206 |  | Zenith | 8720444 |
| 8208 | 36900.37000.37400.38300.39300.48000.839800 | Mumty & Machine Room | 7d | 2026-12-31 | 2027-01-07 | 8207 |  | Zenith | 8720434 |

| ID | WBS | Task | Duration | Start | Finish | Predecessors | Constraint | Calendar | Unique_Task_ID |
| --- | --- | --- | --- | --- | --- | --- | --- | --- | --- |
| 8209 | 36900.37000.37400.38300.39300.41300 | **Finishing work** | 656d | 2026-01-21 | 2028-02-05 |  | start no earlier than 2026-01-21 | Zenith | 8647794 |
| 8210 | 36900.37000.37400.38300.39300.41300.42100 | **Flat finishing** | 656d | 2026-01-21 | 2028-02-05 |  | start no earlier than 2026-01-21 | Zenith | 8647904 |
| 8211 | 36900.37000.37400.38300.39300.41300.42100.111100 | **1st Floor roof** | 116d | 2026-01-21 | 2026-05-16 |  | start no earlier than 2026-01-21 | Zenith | 8651294 |
| 8212 | 36900.37000.37400.38300.39300.41300.42100.111100.1726500 | Block Work | 10d | 2026-01-21 | 2026-01-30 | 8173 |  | Zenith | 8728644 |
| 8213 | 36900.37000.37400.38300.39300.41300.42100.111100.1726600 | Fire sprinkler pipe fixing | 6d | 2026-01-31 | 2026-02-05 | 8212 |  | Zenith | 8728654 |
| 8214 | 36900.37000.37400.38300.39300.41300.42100.111100.1726700 | Internal Plumbing Works | 10d | 2026-01-31 | 2026-02-09 | 8212 |  | Zenith | 8728664 |
| 8215 | 36900.37000.37400.38300.39300.41300.42100.111100.1726800 | Waterproofing | 14d | 2026-02-10 | 2026-02-23 | 8214 |  | Zenith | 8728674 |
| 8216 | 36900.37000.37400.38300.39300.41300.42100.111100.1726900 | Internal Plaster | 14d | 2026-02-15 | 2026-02-28 | 8214, 8215FF+5d |  | Zenith | 8728684 |
| 8217 | 36900.37000.37400.38300.39300.41300.42100.111100.1727000 | IPS flooring work | 10d | 2026-03-01 | 2026-03-10 | 8216 |  | Zenith | 8728694 |
| 8218 | 36900.37000.37400.38300.39300.41300.42100.111100.1727100 | Toilet dado work | 10d | 2026-03-01 | 2026-03-10 | 8215, 8216 |  | Zenith | 8728704 |
| 8219 | 36900.37000.37400.38300.39300.41300.42100.111100.1727200 | Toilet flooring work | 7d | 2026-03-11 | 2026-03-17 | 8218 |  | Zenith | 8728714 |
| 8220 | 36900.37000.37400.38300.39300.41300.42100.111100.1727300 | False Cieling panel fixing | 10d | 2026-03-18 | 2026-03-27 | 8219 |  | Zenith | 8728724 |
| 8221 | 36900.37000.37400.38300.39300.41300.42100.111100.1727400 | Living dinning flooring | 13d | 2026-03-18 | 2026-03-30 | 8219 |  | Zenith | 8728734 |
| 8222 | 36900.37000.37400.38300.39300.41300.42100.111100.1727500 | Putty primer coat | 12d | 2026-03-31 | 2026-04-11 | 8221 |  | Zenith | 8728744 |
| 8223 | 36900.37000.37400.38300.39300.41300.42100.111100.1727600 | Aluminium door-window fixing | 15d | 2026-03-31 | 2026-04-14 | 8217, 8221 |  | Zenith | 8728754 |
| 8224 | 36900.37000.37400.38300.39300.41300.42100.111100.1727700 | Door shutter fixing (Pre Hung) | 8d | 2026-04-12 | 2026-04-19 | 8222 |  | Zenith | 8728764 |
| 8225 | 36900.37000.37400.38300.39300.41300.42100.111100.1727800 | Electrical wiring work | 12d | 2026-04-20 | 2026-05-01 | 8224 |  | Zenith | 8728774 |
| 8226 | 36900.37000.37400.38300.39300.41300.42100.111100.1727900 | Painting 1st coat | 15d | 2026-05-02 | 2026-05-16 | 8225 |  | Zenith | 8728784 |
| 8227 | 36900.37000.37400.38300.39300.41300.42100.111200 | **2nd floor roof** | 121d | 2026-01-31 | 2026-05-31 |  | start no earlier than 2026-01-31 | Zenith | 8651304 |
| 8228 | 36900.37000.37400.38300.39300.41300.42100.111200.1728000 | Block Work | 10d | 2026-01-31 | 2026-02-09 | 8174, 8212 |  | Zenith | 8728794 |
| 8229 | 36900.37000.37400.38300.39300.41300.42100.111200.1728100 | Fire sprinkler pipe fixing | 6d | 2026-02-10 | 2026-02-15 | 8213, 8228 |  | Zenith | 8728804 |
| 8230 | 36900.37000.37400.38300.39300.41300.42100.111200.1728200 | Internal Plumbing Works | 10d | 2026-02-10 | 2026-02-19 | 8214, 8228 |  | Zenith | 8728814 |
| 8231 | 36900.37000.37400.38300.39300.41300.42100.111200.1728300 | Waterproofing | 14d | 2026-02-24 | 2026-03-09 | 8215, 8230 |  | Zenith | 8728824 |
| 8232 | 36900.37000.37400.38300.39300.41300.42100.111200.1728400 | Internal Plaster | 14d | 2026-03-01 | 2026-03-14 | 8216, 8230, 8231FF+5d |  | Zenith | 8728834 |
| 8233 | 36900.37000.37400.38300.39300.41300.42100.111200.1728500 | IPS flooring work | 10d | 2026-03-15 | 2026-03-24 | 8217, 8232 |  | Zenith | 8728844 |
| 8234 | 36900.37000.37400.38300.39300.41300.42100.111200.1728600 | Toilet dado work | 10d | 2026-03-15 | 2026-03-24 | 8218, 8231, 8232 |  | Zenith | 8728854 |
| 8235 | 36900.37000.37400.38300.39300.41300.42100.111200.1728700 | Toilet flooring work | 7d | 2026-03-25 | 2026-03-31 | 8219, 8234 |  | Zenith | 8728864 |
| 8236 | 36900.37000.37400.38300.39300.41300.42100.111200.1728800 | False Cieling panel fixing | 10d | 2026-04-01 | 2026-04-10 | 8220, 8235 |  | Zenith | 8728874 |
| 8237 | 36900.37000.37400.38300.39300.41300.42100.111200.1728900 | Living dinning flooring | 13d | 2026-04-01 | 2026-04-13 | 8221, 8235 |  | Zenith | 8728884 |
| 8238 | 36900.37000.37400.38300.39300.41300.42100.111200.1729000 | Putty primer coat | 12d | 2026-04-14 | 2026-04-25 | 8222, 8237 |  | Zenith | 8728894 |
| 8239 | 36900.37000.37400.38300.39300.41300.42100.111200.1729100 | Aluminium door-window fixing | 15d | 2026-04-15 | 2026-04-29 | 8223, 8233, 8237 |  | Zenith | 8728904 |
| 8240 | 36900.37000.37400.38300.39300.41300.42100.111200.1729200 | Door shutter fixing (Pre Hung) | 8d | 2026-04-26 | 2026-05-03 | 8224, 8238 |  | Zenith | 8728914 |
| 8241 | 36900.37000.37400.38300.39300.41300.42100.111200.1729300 | Electrical wiring work | 12d | 2026-05-04 | 2026-05-15 | 8225, 8240 |  | Zenith | 8728924 |
| 8242 | 36900.37000.37400.38300.39300.41300.42100.111200.1729400 | Painting 1st coat | 15d | 2026-05-17 | 2026-05-31 | 8226, 8241 |  | Zenith | 8728934 |

| ID | WBS | Task | Duration | Start | Finish | Predecessors | Constraint | Calendar | Unique_Task_ID |
| --- | --- | --- | --- | --- | --- | --- | --- | --- | --- |
| 8243 | 36900.37000.37400.38300.39300.41300.42100.111300 | **3rd floor roof** | 126d | 2026-02-10 | 2026-06-15 |  | start no earlier than 2026-02-10 | Zenith | 8651314 |
| 8244 | 36900.37000.37400.38300.39300.41300.42100.111300.1729500 | Block Work | 10d | 2026-02-10 | 2026-02-19 | 8175, 8228 |  | Zenith | 8728944 |
| 8245 | 36900.37000.37400.38300.39300.41300.42100.111300.1729600 | Fire sprinkler pipe fixing | 6d | 2026-02-20 | 2026-02-25 | 8229, 8244 |  | Zenith | 8728954 |
| 8246 | 36900.37000.37400.38300.39300.41300.42100.111300.1729700 | Internal Plumbing Works | 10d | 2026-02-20 | 2026-03-01 | 8230, 8244 |  | Zenith | 8728964 |
| 8247 | 36900.37000.37400.38300.39300.41300.42100.111300.1729800 | Waterproofing | 14d | 2026-03-10 | 2026-03-23 | 8231, 8246 |  | Zenith | 8728974 |
| 8248 | 36900.37000.37400.38300.39300.41300.42100.111300.1729900 | Internal Plaster | 14d | 2026-03-15 | 2026-03-28 | 8232, 8246, 8247FF+5d |  | Zenith | 8728984 |
| 8249 | 36900.37000.37400.38300.39300.41300.42100.111300.1730000 | IPS flooring work | 10d | 2026-03-29 | 2026-04-07 | 8233, 8248 |  | Zenith | 8728994 |
| 8250 | 36900.37000.37400.38300.39300.41300.42100.111300.1730100 | Toilet dado work | 10d | 2026-03-29 | 2026-04-07 | 8234, 8247, 8248 |  | Zenith | 8729004 |
| 8251 | 36900.37000.37400.38300.39300.41300.42100.111300.1730200 | Toilet flooring work | 7d | 2026-04-08 | 2026-04-14 | 8235, 8250 |  | Zenith | 8729014 |
| 8252 | 36900.37000.37400.38300.39300.41300.42100.111300.1730300 | False Cieling panel fixing | 10d | 2026-04-15 | 2026-04-24 | 8236, 8251 |  | Zenith | 8729024 |
| 8253 | 36900.37000.37400.38300.39300.41300.42100.111300.1730400 | Living dinning flooring | 13d | 2026-04-15 | 2026-04-27 | 8237, 8251 |  | Zenith | 8729034 |
| 8254 | 36900.37000.37400.38300.39300.41300.42100.111300.1730500 | Putty primer coat | 12d | 2026-04-28 | 2026-05-09 | 8238, 8253 |  | Zenith | 8729044 |
| 8255 | 36900.37000.37400.38300.39300.41300.42100.111300.1730600 | Aluminium door-window fixing | 15d | 2026-04-30 | 2026-05-14 | 8239, 8249, 8253 |  | Zenith | 8729054 |
| 8256 | 36900.37000.37400.38300.39300.41300.42100.111300.1730700 | Door shutter fixing (Pre Hung) | 8d | 2026-05-10 | 2026-05-17 | 8240, 8254 |  | Zenith | 8729064 |
| 8257 | 36900.37000.37400.38300.39300.41300.42100.111300.1730800 | Electrical wiring work | 12d | 2026-05-18 | 2026-05-29 | 8241, 8256 |  | Zenith | 8729074 |
| 8258 | 36900.37000.37400.38300.39300.41300.42100.111300.1730900 | Painting 1st coat | 15d | 2026-06-01 | 2026-06-15 | 8242, 8257 |  | Zenith | 8729084 |
| 8259 | 36900.37000.37400.38300.39300.41300.42100.111400 | **4th floor roof** | 131d | 2026-02-20 | 2026-06-30 |  | start no earlier than 2026-02-20 | Zenith | 8651324 |
| 8260 | 36900.37000.37400.38300.39300.41300.42100.111400.1731000 | Block Work | 10d | 2026-02-20 | 2026-03-01 | 8176, 8244 |  | Zenith | 8729094 |
| 8261 | 36900.37000.37400.38300.39300.41300.42100.111400.1731100 | Fire sprinkler pipe fixing | 6d | 2026-03-02 | 2026-03-07 | 8245, 8260 |  | Zenith | 8729104 |
| 8262 | 36900.37000.37400.38300.39300.41300.42100.111400.1731200 | Internal Plumbing Works | 10d | 2026-03-02 | 2026-03-11 | 8246, 8260 |  | Zenith | 8729114 |
| 8263 | 36900.37000.37400.38300.39300.41300.42100.111400.1731300 | Waterproofing | 14d | 2026-03-24 | 2026-04-06 | 8247, 8262 |  | Zenith | 8729124 |
| 8264 | 36900.37000.37400.38300.39300.41300.42100.111400.1731400 | Internal Plaster | 14d | 2026-03-29 | 2026-04-11 | 8248, 8262, 8263FF+5d |  | Zenith | 8729134 |
| 8265 | 36900.37000.37400.38300.39300.41300.42100.111400.1731500 | IPS flooring work | 10d | 2026-04-12 | 2026-04-21 | 8249, 8264 |  | Zenith | 8729144 |
| 8266 | 36900.37000.37400.38300.39300.41300.42100.111400.1731600 | Toilet dado work | 10d | 2026-04-12 | 2026-04-21 | 8250, 8263, 8264 |  | Zenith | 8729154 |
| 8267 | 36900.37000.37400.38300.39300.41300.42100.111400.1731700 | Toilet flooring work | 7d | 2026-04-22 | 2026-04-28 | 8251, 8266 |  | Zenith | 8729164 |
| 8268 | 36900.37000.37400.38300.39300.41300.42100.111400.1731800 | False Cieling panel fixing | 10d | 2026-04-29 | 2026-05-08 | 8252, 8267 |  | Zenith | 8729174 |
| 8269 | 36900.37000.37400.38300.39300.41300.42100.111400.1731900 | Living dinning flooring | 13d | 2026-04-29 | 2026-05-11 | 8253, 8267 |  | Zenith | 8729184 |
| 8270 | 36900.37000.37400.38300.39300.41300.42100.111400.1732000 | Putty primer coat | 12d | 2026-05-12 | 2026-05-23 | 8254, 8269 |  | Zenith | 8729194 |
| 8271 | 36900.37000.37400.38300.39300.41300.42100.111400.1732100 | Aluminium door-window fixing | 15d | 2026-05-15 | 2026-05-29 | 8255, 8265, 8269 |  | Zenith | 8729204 |
| 8272 | 36900.37000.37400.38300.39300.41300.42100.111400.1732200 | Door shutter fixing (Pre Hung) | 8d | 2026-05-24 | 2026-05-31 | 8256, 8270 |  | Zenith | 8729214 |
| 8273 | 36900.37000.37400.38300.39300.41300.42100.111400.1732300 | Electrical wiring work | 12d | 2026-06-01 | 2026-06-12 | 8257, 8272 |  | Zenith | 8729224 |
| 8274 | 36900.37000.37400.38300.39300.41300.42100.111400.1732400 | Painting 1st coat | 15d | 2026-06-16 | 2026-06-30 | 8258, 8273 |  | Zenith | 8729234 |

| ID | WBS | Task | Duration | Start | Finish | Predecessors | Constraint | Calendar | Unique_Task_ID |
| --- | --- | --- | --- | --- | --- | --- | --- | --- | --- |
| 8275 | 36900.37000.37400.38300.39300.41300.42100.111500 | **5th floor roof** | 136d | 2026-03-02 | 2026-07-15 |  | start no earlier than 2026-03-02 | Zenith | 8651334 |
| 8276 | 36900.37000.37400.38300.39300.41300.42100.111500.1732500 | Block Work | 10d | 2026-03-02 | 2026-03-11 | 8177, 8260 |  | Zenith | 8729244 |
| 8277 | 36900.37000.37400.38300.39300.41300.42100.111500.1732600 | Fire sprinkler pipe fixing | 6d | 2026-03-12 | 2026-03-17 | 8261, 8276 |  | Zenith | 8729254 |
| 8278 | 36900.37000.37400.38300.39300.41300.42100.111500.1732700 | Internal Plumbing Works | 10d | 2026-03-12 | 2026-03-21 | 8262, 8276 |  | Zenith | 8729264 |
| 8279 | 36900.37000.37400.38300.39300.41300.42100.111500.1732800 | Waterproofing | 14d | 2026-04-07 | 2026-04-20 | 8263, 8278 |  | Zenith | 8729274 |
| 8280 | 36900.37000.37400.38300.39300.41300.42100.111500.1732900 | Internal Plaster | 14d | 2026-04-12 | 2026-04-25 | 8264, 8278, 8279FF+5d |  | Zenith | 8729284 |
| 8281 | 36900.37000.37400.38300.39300.41300.42100.111500.1733000 | IPS flooring work | 10d | 2026-04-26 | 2026-05-05 | 8265, 8280 |  | Zenith | 8729294 |
| 8282 | 36900.37000.37400.38300.39300.41300.42100.111500.1733100 | Toilet dado work | 10d | 2026-04-26 | 2026-05-05 | 8266, 8279, 8280 |  | Zenith | 8729304 |
| 8283 | 36900.37000.37400.38300.39300.41300.42100.111500.1733200 | Toilet flooring work | 7d | 2026-05-06 | 2026-05-12 | 8267, 8282 |  | Zenith | 8729314 |
| 8284 | 36900.37000.37400.38300.39300.41300.42100.111500.1733300 | False Cieling panel fixing | 10d | 2026-05-13 | 2026-05-22 | 8268, 8283 |  | Zenith | 8729324 |
| 8285 | 36900.37000.37400.38300.39300.41300.42100.111500.1733400 | Living dinning flooring | 13d | 2026-05-13 | 2026-05-25 | 8269, 8283 |  | Zenith | 8729334 |
| 8286 | 36900.37000.37400.38300.39300.41300.42100.111500.1733500 | Putty primer coat | 12d | 2026-05-26 | 2026-06-06 | 8270, 8285 |  | Zenith | 8729344 |
| 8287 | 36900.37000.37400.38300.39300.41300.42100.111500.1733600 | Aluminium door-window fixing | 15d | 2026-05-30 | 2026-06-13 | 8271, 8281, 8285 |  | Zenith | 8729354 |
| 8288 | 36900.37000.37400.38300.39300.41300.42100.111500.1733700 | Door shutter fixing (Pre Hung) | 8d | 2026-06-07 | 2026-06-14 | 8272, 8286 |  | Zenith | 8729364 |
| 8289 | 36900.37000.37400.38300.39300.41300.42100.111500.1733800 | Electrical wiring work | 12d | 2026-06-15 | 2026-06-26 | 8273, 8288 |  | Zenith | 8729374 |
| 8290 | 36900.37000.37400.38300.39300.41300.42100.111500.1733900 | Painting 1st coat | 15d | 2026-07-01 | 2026-07-15 | 8274, 8289 |  | Zenith | 8729384 |
| 8291 | 36900.37000.37400.38300.39300.41300.42100.111600 | **6th floor roof** | 141d | 2026-03-12 | 2026-07-30 |  | start no earlier than 2026-03-12 | Zenith | 8651344 |
| 8292 | 36900.37000.37400.38300.39300.41300.42100.111600.1734000 | Block Work | 10d | 2026-03-12 | 2026-03-21 | 8178, 8276 |  | Zenith | 8729394 |
| 8293 | 36900.37000.37400.38300.39300.41300.42100.111600.1734100 | Fire sprinkler pipe fixing | 6d | 2026-03-22 | 2026-03-27 | 8277, 8292 |  | Zenith | 8729404 |
| 8294 | 36900.37000.37400.38300.39300.41300.42100.111600.1734200 | Internal Plumbing Works | 10d | 2026-03-22 | 2026-03-31 | 8278, 8292 |  | Zenith | 8729414 |
| 8295 | 36900.37000.37400.38300.39300.41300.42100.111600.1734300 | Waterproofing | 14d | 2026-04-21 | 2026-05-04 | 8279, 8294 |  | Zenith | 8729424 |
| 8296 | 36900.37000.37400.38300.39300.41300.42100.111600.1734400 | Internal Plaster | 14d | 2026-04-26 | 2026-05-09 | 8280, 8294, 8295FF+5d |  | Zenith | 8729434 |
| 8297 | 36900.37000.37400.38300.39300.41300.42100.111600.1734500 | IPS flooring work | 10d | 2026-05-10 | 2026-05-19 | 8281, 8296 |  | Zenith | 8729444 |
| 8298 | 36900.37000.37400.38300.39300.41300.42100.111600.1734600 | Toilet dado work | 10d | 2026-05-10 | 2026-05-19 | 8282, 8295, 8296 |  | Zenith | 8729454 |
| 8299 | 36900.37000.37400.38300.39300.41300.42100.111600.1734700 | Toilet flooring work | 7d | 2026-05-20 | 2026-05-26 | 8283, 8298 |  | Zenith | 8729464 |
| 8300 | 36900.37000.37400.38300.39300.41300.42100.111600.1734800 | False Cieling panel fixing | 10d | 2026-05-27 | 2026-06-05 | 8284, 8299 |  | Zenith | 8729474 |
| 8301 | 36900.37000.37400.38300.39300.41300.42100.111600.1734900 | Living dinning flooring | 13d | 2026-05-27 | 2026-06-08 | 8285, 8299 |  | Zenith | 8729484 |
| 8302 | 36900.37000.37400.38300.39300.41300.42100.111600.1735000 | Putty primer coat | 12d | 2026-06-09 | 2026-06-20 | 8286, 8301 |  | Zenith | 8729494 |
| 8303 | 36900.37000.37400.38300.39300.41300.42100.111600.1735100 | Aluminium door-window fixing | 15d | 2026-06-14 | 2026-06-28 | 8287, 8297, 8301 |  | Zenith | 8729504 |
| 8304 | 36900.37000.37400.38300.39300.41300.42100.111600.1735200 | Door shutter fixing (Pre Hung) | 8d | 2026-06-21 | 2026-06-28 | 8288, 8302 |  | Zenith | 8729514 |
| 8305 | 36900.37000.37400.38300.39300.41300.42100.111600.1735300 | Electrical wiring work | 12d | 2026-06-29 | 2026-07-10 | 8289, 8304 |  | Zenith | 8729524 |
| 8306 | 36900.37000.37400.38300.39300.41300.42100.111600.1735400 | Painting 1st coat | 15d | 2026-07-16 | 2026-07-30 | 8290, 8305 |  | Zenith | 8729534 |

| ID | WBS | Task | Duration | Start | Finish | Predecessors | Constraint | Calendar | Unique_Task_ID |
| --- | --- | --- | --- | --- | --- | --- | --- | --- | --- |
| 8307 | 36900.37000.37400.38300.39300.41300.42100.111700 | **7th floor roof** | 146d | 2026-03-22 | 2026-08-14 |  | start no earlier than 2026-03-22 | Zenith | 8651354 |
| 8308 | 36900.37000.37400.38300.39300.41300.42100.111700.1735500 | Block Work | 10d | 2026-03-22 | 2026-03-31 | 8179, 8292 |  | Zenith | 8729544 |
| 8309 | 36900.37000.37400.38300.39300.41300.42100.111700.1735600 | Fire sprinkler pipe fixing | 6d | 2026-04-01 | 2026-04-06 | 8293, 8308 |  | Zenith | 8729554 |
| 8310 | 36900.37000.37400.38300.39300.41300.42100.111700.1735700 | Internal Plumbing Works | 10d | 2026-04-01 | 2026-04-10 | 8294, 8308 |  | Zenith | 8729564 |
| 8311 | 36900.37000.37400.38300.39300.41300.42100.111700.1735800 | Waterproofing | 14d | 2026-05-05 | 2026-05-18 | 8295, 8310 |  | Zenith | 8729574 |
| 8312 | 36900.37000.37400.38300.39300.41300.42100.111700.1735900 | Internal Plaster | 14d | 2026-05-10 | 2026-05-23 | 8296, 8310, 8311FF+5d |  | Zenith | 8729584 |
| 8313 | 36900.37000.37400.38300.39300.41300.42100.111700.1736000 | IPS flooring work | 10d | 2026-05-24 | 2026-06-02 | 8297, 8312 |  | Zenith | 8729594 |
| 8314 | 36900.37000.37400.38300.39300.41300.42100.111700.1736100 | Toilet dado work | 10d | 2026-05-24 | 2026-06-02 | 8298, 8311, 8312 |  | Zenith | 8729604 |
| 8315 | 36900.37000.37400.38300.39300.41300.42100.111700.1736200 | Toilet flooring work | 7d | 2026-06-03 | 2026-06-09 | 8299, 8314 |  | Zenith | 8729614 |
| 8316 | 36900.37000.37400.38300.39300.41300.42100.111700.1736300 | False Cieling panel fixing | 10d | 2026-06-10 | 2026-06-19 | 8300, 8315 |  | Zenith | 8729624 |
| 8317 | 36900.37000.37400.38300.39300.41300.42100.111700.1736400 | Living dinning flooring | 13d | 2026-06-10 | 2026-06-22 | 8301, 8315 |  | Zenith | 8729634 |
| 8318 | 36900.37000.37400.38300.39300.41300.42100.111700.1736500 | Putty primer coat | 12d | 2026-06-23 | 2026-07-04 | 8302, 8317 |  | Zenith | 8729644 |
| 8319 | 36900.37000.37400.38300.39300.41300.42100.111700.1736600 | Aluminium door-window fixing | 15d | 2026-06-29 | 2026-07-13 | 8303, 8313, 8317 |  | Zenith | 8729654 |
| 8320 | 36900.37000.37400.38300.39300.41300.42100.111700.1736700 | Door shutter fixing (Pre Hung) | 8d | 2026-07-05 | 2026-07-12 | 8304, 8318 |  | Zenith | 8729664 |
| 8321 | 36900.37000.37400.38300.39300.41300.42100.111700.1736800 | Electrical wiring work | 12d | 2026-07-13 | 2026-07-24 | 8305, 8320 |  | Zenith | 8729674 |
| 8322 | 36900.37000.37400.38300.39300.41300.42100.111700.1736900 | Painting 1st coat | 15d | 2026-07-31 | 2026-08-14 | 8306, 8321 |  | Zenith | 8729684 |
| 8323 | 36900.37000.37400.38300.39300.41300.42100.111800 | **8th floor roof** | 151d | 2026-04-01 | 2026-08-29 |  | start no earlier than 2026-04-01 | Zenith | 8651364 |
| 8324 | 36900.37000.37400.38300.39300.41300.42100.111800.1737000 | Block Work | 10d | 2026-04-01 | 2026-04-10 | 8180, 8308 |  | Zenith | 8729694 |
| 8325 | 36900.37000.37400.38300.39300.41300.42100.111800.1737100 | Fire sprinkler pipe fixing | 6d | 2026-04-11 | 2026-04-16 | 8309, 8324 |  | Zenith | 8729704 |
| 8326 | 36900.37000.37400.38300.39300.41300.42100.111800.1737200 | Internal Plumbing Works | 10d | 2026-04-11 | 2026-04-20 | 8310, 8324 |  | Zenith | 8729714 |
| 8327 | 36900.37000.37400.38300.39300.41300.42100.111800.1737300 | Waterproofing | 14d | 2026-05-19 | 2026-06-01 | 8311, 8326 |  | Zenith | 8729724 |
| 8328 | 36900.37000.37400.38300.39300.41300.42100.111800.1737400 | Internal Plaster | 14d | 2026-05-24 | 2026-06-06 | 8312, 8326, 8327FF+5d |  | Zenith | 8729734 |
| 8329 | 36900.37000.37400.38300.39300.41300.42100.111800.1737500 | IPS flooring work | 10d | 2026-06-07 | 2026-06-16 | 8313, 8328 |  | Zenith | 8729744 |
| 8330 | 36900.37000.37400.38300.39300.41300.42100.111800.1737600 | Toilet dado work | 10d | 2026-06-07 | 2026-06-16 | 8314, 8327, 8328 |  | Zenith | 8729754 |
| 8331 | 36900.37000.37400.38300.39300.41300.42100.111800.1737700 | Toilet flooring work | 7d | 2026-06-17 | 2026-06-23 | 8315, 8330 |  | Zenith | 8729764 |
| 8332 | 36900.37000.37400.38300.39300.41300.42100.111800.1737800 | False Cieling panel fixing | 10d | 2026-06-24 | 2026-07-03 | 8316, 8331 |  | Zenith | 8729774 |
| 8333 | 36900.37000.37400.38300.39300.41300.42100.111800.1737900 | Living dinning flooring | 13d | 2026-06-24 | 2026-07-06 | 8317, 8331 |  | Zenith | 8729784 |
| 8334 | 36900.37000.37400.38300.39300.41300.42100.111800.1738000 | Putty primer coat | 12d | 2026-07-07 | 2026-07-18 | 8318, 8333 |  | Zenith | 8729794 |
| 8335 | 36900.37000.37400.38300.39300.41300.42100.111800.1738100 | Aluminium door-window fixing | 15d | 2026-07-14 | 2026-07-28 | 8319, 8329, 8333 |  | Zenith | 8729804 |
| 8336 | 36900.37000.37400.38300.39300.41300.42100.111800.1738200 | Door shutter fixing (Pre Hung) | 8d | 2026-07-19 | 2026-07-26 | 8320, 8334 |  | Zenith | 8729814 |
| 8337 | 36900.37000.37400.38300.39300.41300.42100.111800.1738300 | Electrical wiring work | 12d | 2026-07-27 | 2026-08-07 | 8321, 8336 |  | Zenith | 8729824 |
| 8338 | 36900.37000.37400.38300.39300.41300.42100.111800.1738400 | Painting 1st coat | 15d | 2026-08-15 | 2026-08-29 | 8322, 8337 |  | Zenith | 8729834 |

| ID | WBS | Task | Duration | Start | Finish | Predecessors | Constraint | Calendar | Unique_Task_ID |
| --- | --- | --- | --- | --- | --- | --- | --- | --- | --- |
| 8339 | 36900.37000.37400.38300.39300.41300.42100.111900 | **9th floor roof** | 156d | 2026-04-11 | 2026-09-13 |  | start no earlier than 2026-04-11 | Zenith | 8651374 |
| 8340 | 36900.37000.37400.38300.39300.41300.42100.111900.1738500 | Block Work | 10d | 2026-04-11 | 2026-04-20 | 8181, 8324 |  | Zenith | 8729844 |
| 8341 | 36900.37000.37400.38300.39300.41300.42100.111900.1738600 | Fire sprinkler pipe fixing | 6d | 2026-04-21 | 2026-04-26 | 8325, 8340 |  | Zenith | 8729854 |
| 8342 | 36900.37000.37400.38300.39300.41300.42100.111900.1738700 | Internal Plumbing Works | 10d | 2026-04-21 | 2026-04-30 | 8326, 8340 |  | Zenith | 8729864 |
| 8343 | 36900.37000.37400.38300.39300.41300.42100.111900.1738800 | Waterproofing | 14d | 2026-06-02 | 2026-06-15 | 8327, 8342 |  | Zenith | 8729874 |
| 8344 | 36900.37000.37400.38300.39300.41300.42100.111900.1738900 | Internal Plaster | 14d | 2026-06-07 | 2026-06-20 | 8328, 8342, 8343FF+5d |  | Zenith | 8729884 |
| 8345 | 36900.37000.37400.38300.39300.41300.42100.111900.1739000 | IPS flooring work | 10d | 2026-06-21 | 2026-06-30 | 8329, 8344 |  | Zenith | 8729894 |
| 8346 | 36900.37000.37400.38300.39300.41300.42100.111900.1739100 | Toilet dado work | 10d | 2026-06-21 | 2026-06-30 | 8330, 8343, 8344 |  | Zenith | 8729904 |
| 8347 | 36900.37000.37400.38300.39300.41300.42100.111900.1739200 | Toilet flooring work | 7d | 2026-07-01 | 2026-07-07 | 8331, 8346 |  | Zenith | 8729914 |
| 8348 | 36900.37000.37400.38300.39300.41300.42100.111900.1739300 | False Cieling panel fixing | 10d | 2026-07-08 | 2026-07-17 | 8332, 8347 |  | Zenith | 8729924 |
| 8349 | 36900.37000.37400.38300.39300.41300.42100.111900.1739400 | Living dinning flooring | 13d | 2026-07-08 | 2026-07-20 | 8333, 8347 |  | Zenith | 8729934 |
| 8350 | 36900.37000.37400.38300.39300.41300.42100.111900.1739500 | Putty primer coat | 12d | 2026-07-21 | 2026-08-01 | 8334, 8349 |  | Zenith | 8729944 |
| 8351 | 36900.37000.37400.38300.39300.41300.42100.111900.1739600 | Aluminium door-window fixing | 15d | 2026-07-29 | 2026-08-12 | 8335, 8345, 8349 |  | Zenith | 8729954 |
| 8352 | 36900.37000.37400.38300.39300.41300.42100.111900.1739700 | Door shutter fixing (Pre Hung) | 8d | 2026-08-02 | 2026-08-09 | 8336, 8350 |  | Zenith | 8729964 |
| 8353 | 36900.37000.37400.38300.39300.41300.42100.111900.1739800 | Electrical wiring work | 12d | 2026-08-10 | 2026-08-21 | 8337, 8352 |  | Zenith | 8729974 |
| 8354 | 36900.37000.37400.38300.39300.41300.42100.111900.1739900 | Painting 1st coat | 15d | 2026-08-30 | 2026-09-13 | 8338, 8353 |  | Zenith | 8729984 |
| 8355 | 36900.37000.37400.38300.39300.41300.42100.112000 | **10th floor roof** | 161d | 2026-04-21 | 2026-09-28 |  | start no earlier than 2026-04-21 | Zenith | 8651384 |
| 8356 | 36900.37000.37400.38300.39300.41300.42100.112000.1740000 | Block Work | 10d | 2026-04-21 | 2026-04-30 | 8182, 8340 |  | Zenith | 8729994 |
| 8357 | 36900.37000.37400.38300.39300.41300.42100.112000.1740100 | Fire sprinkler pipe fixing | 6d | 2026-05-01 | 2026-05-06 | 8341, 8356 |  | Zenith | 8730004 |
| 8358 | 36900.37000.37400.38300.39300.41300.42100.112000.1740200 | Internal Plumbing Works | 10d | 2026-05-01 | 2026-05-10 | 8342, 8356 |  | Zenith | 8730014 |
| 8359 | 36900.37000.37400.38300.39300.41300.42100.112000.1740300 | Waterproofing | 14d | 2026-06-16 | 2026-06-29 | 8343, 8358 |  | Zenith | 8730024 |
| 8360 | 36900.37000.37400.38300.39300.41300.42100.112000.1740400 | Internal Plaster | 14d | 2026-06-21 | 2026-07-04 | 8344, 8358, 8359FF+5d |  | Zenith | 8730034 |
| 8361 | 36900.37000.37400.38300.39300.41300.42100.112000.1740500 | IPS flooring work | 10d | 2026-07-05 | 2026-07-14 | 8345, 8360 |  | Zenith | 8730044 |
| 8362 | 36900.37000.37400.38300.39300.41300.42100.112000.1740600 | Toilet dado work | 10d | 2026-07-05 | 2026-07-14 | 8346, 8359, 8360 |  | Zenith | 8730054 |
| 8363 | 36900.37000.37400.38300.39300.41300.42100.112000.1740700 | Toilet flooring work | 7d | 2026-07-15 | 2026-07-21 | 8347, 8362 |  | Zenith | 8730064 |
| 8364 | 36900.37000.37400.38300.39300.41300.42100.112000.1740800 | False Cieling panel fixing | 10d | 2026-07-22 | 2026-07-31 | 8348, 8363 |  | Zenith | 8730074 |
| 8365 | 36900.37000.37400.38300.39300.41300.42100.112000.1740900 | Living dinning flooring | 13d | 2026-07-22 | 2026-08-03 | 8349, 8363 |  | Zenith | 8730084 |
| 8366 | 36900.37000.37400.38300.39300.41300.42100.112000.1741000 | Putty primer coat | 12d | 2026-08-04 | 2026-08-15 | 8350, 8365 |  | Zenith | 8730094 |
| 8367 | 36900.37000.37400.38300.39300.41300.42100.112000.1741100 | Aluminium door-window fixing | 15d | 2026-08-13 | 2026-08-27 | 8351, 8361, 8365 |  | Zenith | 8730104 |
| 8368 | 36900.37000.37400.38300.39300.41300.42100.112000.1741200 | Door shutter fixing (Pre Hung) | 8d | 2026-08-16 | 2026-08-23 | 8352, 8366 |  | Zenith | 8730114 |
| 8369 | 36900.37000.37400.38300.39300.41300.42100.112000.1741300 | Electrical wiring work | 12d | 2026-08-24 | 2026-09-04 | 8353, 8368 |  | Zenith | 8730124 |
| 8370 | 36900.37000.37400.38300.39300.41300.42100.112000.1741400 | Painting 1st coat | 15d | 2026-09-14 | 2026-09-28 | 8354, 8369 |  | Zenith | 8730134 |

| ID | WBS | Task | Duration | Start | Finish | Predecessors | Constraint | Calendar | Unique_Task_ID |
| --- | --- | --- | --- | --- | --- | --- | --- | --- | --- |
| 8371 | 36900.37000.37400.38300.39300.41300.42100.112100 | **11th floor roof** | 166d | 2026-05-01 | 2026-10-13 |  | start no earlier than 2026-05-01 | Zenith | 8651394 |
| 8372 | 36900.37000.37400.38300.39300.41300.42100.112100.1741500 | Block Work | 10d | 2026-05-01 | 2026-05-10 | 8183, 8356 |  | Zenith | 8730144 |
| 8373 | 36900.37000.37400.38300.39300.41300.42100.112100.1741600 | Fire sprinkler pipe fixing | 6d | 2026-05-11 | 2026-05-16 | 8357, 8372 |  | Zenith | 8730154 |
| 8374 | 36900.37000.37400.38300.39300.41300.42100.112100.1741700 | Internal Plumbing Works | 10d | 2026-05-11 | 2026-05-20 | 8358, 8372 |  | Zenith | 8730164 |
| 8375 | 36900.37000.37400.38300.39300.41300.42100.112100.1741800 | Waterproofing | 14d | 2026-06-30 | 2026-07-13 | 8359, 8374 |  | Zenith | 8730174 |
| 8376 | 36900.37000.37400.38300.39300.41300.42100.112100.1741900 | Internal Plaster | 14d | 2026-07-05 | 2026-07-18 | 8360, 8374, 8375FF+5d |  | Zenith | 8730184 |
| 8377 | 36900.37000.37400.38300.39300.41300.42100.112100.1742000 | IPS flooring work | 10d | 2026-07-19 | 2026-07-28 | 8361, 8376 |  | Zenith | 8730194 |
| 8378 | 36900.37000.37400.38300.39300.41300.42100.112100.1742100 | Toilet dado work | 10d | 2026-07-19 | 2026-07-28 | 8362, 8375, 8376 |  | Zenith | 8730204 |
| 8379 | 36900.37000.37400.38300.39300.41300.42100.112100.1742200 | Toilet flooring work | 7d | 2026-07-29 | 2026-08-04 | 8363, 8378 |  | Zenith | 8730214 |
| 8380 | 36900.37000.37400.38300.39300.41300.42100.112100.1742300 | False Cieling panel fixing | 10d | 2026-08-05 | 2026-08-14 | 8364, 8379 |  | Zenith | 8730224 |
| 8381 | 36900.37000.37400.38300.39300.41300.42100.112100.1742400 | Living dinning flooring | 13d | 2026-08-05 | 2026-08-17 | 8365, 8379 |  | Zenith | 8730234 |
| 8382 | 36900.37000.37400.38300.39300.41300.42100.112100.1742500 | Putty primer coat | 12d | 2026-08-18 | 2026-08-29 | 8366, 8381 |  | Zenith | 8730244 |
| 8383 | 36900.37000.37400.38300.39300.41300.42100.112100.1742600 | Aluminium door-window fixing | 15d | 2026-08-28 | 2026-09-11 | 8367, 8377, 8381 |  | Zenith | 8730254 |
| 8384 | 36900.37000.37400.38300.39300.41300.42100.112100.1742700 | Door shutter fixing (Pre Hung) | 8d | 2026-08-30 | 2026-09-06 | 8368, 8382 |  | Zenith | 8730264 |
| 8385 | 36900.37000.37400.38300.39300.41300.42100.112100.1742800 | Electrical wiring work | 12d | 2026-09-07 | 2026-09-18 | 8369, 8384 |  | Zenith | 8730274 |
| 8386 | 36900.37000.37400.38300.39300.41300.42100.112100.1742900 | Painting 1st coat | 15d | 2026-09-29 | 2026-10-13 | 8370, 8385 |  | Zenith | 8730284 |
| 8387 | 36900.37000.37400.38300.39300.41300.42100.112200 | **12th floor roof** | 171d | 2026-05-11 | 2026-10-28 |  | start no earlier than 2026-05-11 | Zenith | 8651404 |
| 8388 | 36900.37000.37400.38300.39300.41300.42100.112200.1743000 | Block Work | 10d | 2026-05-11 | 2026-05-20 | 8184, 8372 |  | Zenith | 8730294 |
| 8389 | 36900.37000.37400.38300.39300.41300.42100.112200.1743100 | Fire sprinkler pipe fixing | 6d | 2026-05-21 | 2026-05-26 | 8373, 8388 |  | Zenith | 8730304 |
| 8390 | 36900.37000.37400.38300.39300.41300.42100.112200.1743200 | Internal Plumbing Works | 10d | 2026-05-21 | 2026-05-30 | 8374, 8388 |  | Zenith | 8730314 |
| 8391 | 36900.37000.37400.38300.39300.41300.42100.112200.1743300 | Waterproofing | 14d | 2026-07-14 | 2026-07-27 | 8375, 8390 |  | Zenith | 8730324 |
| 8392 | 36900.37000.37400.38300.39300.41300.42100.112200.1743400 | Internal Plaster | 14d | 2026-07-19 | 2026-08-01 | 8376, 8390, 8391FF+5d |  | Zenith | 8730334 |
| 8393 | 36900.37000.37400.38300.39300.41300.42100.112200.1743500 | IPS flooring work | 10d | 2026-08-02 | 2026-08-11 | 8377, 8392 |  | Zenith | 8730344 |
| 8394 | 36900.37000.37400.38300.39300.41300.42100.112200.1743600 | Toilet dado work | 10d | 2026-08-02 | 2026-08-11 | 8378, 8391, 8392 |  | Zenith | 8730354 |
| 8395 | 36900.37000.37400.38300.39300.41300.42100.112200.1743700 | Toilet flooring work | 7d | 2026-08-12 | 2026-08-18 | 8379, 8394 |  | Zenith | 8730364 |
| 8396 | 36900.37000.37400.38300.39300.41300.42100.112200.1743800 | False Cieling panel fixing | 10d | 2026-08-19 | 2026-08-28 | 8380, 8395 |  | Zenith | 8730374 |
| 8397 | 36900.37000.37400.38300.39300.41300.42100.112200.1743900 | Living dinning flooring | 13d | 2026-08-19 | 2026-08-31 | 8381, 8395 |  | Zenith | 8730384 |
| 8398 | 36900.37000.37400.38300.39300.41300.42100.112200.1744000 | Putty primer coat | 12d | 2026-09-01 | 2026-09-12 | 8382, 8397 |  | Zenith | 8730394 |
| 8399 | 36900.37000.37400.38300.39300.41300.42100.112200.1744100 | Aluminium door-window fixing | 15d | 2026-09-12 | 2026-09-26 | 8383, 8393, 8397 |  | Zenith | 8730404 |
| 8400 | 36900.37000.37400.38300.39300.41300.42100.112200.1744200 | Door shutter fixing (Pre Hung) | 8d | 2026-09-13 | 2026-09-20 | 8384, 8398 |  | Zenith | 8730414 |
| 8401 | 36900.37000.37400.38300.39300.41300.42100.112200.1744300 | Electrical wiring work | 12d | 2026-09-21 | 2026-10-02 | 8385, 8400 |  | Zenith | 8730424 |
| 8402 | 36900.37000.37400.38300.39300.41300.42100.112200.1744400 | Painting 1st coat | 15d | 2026-10-14 | 2026-10-28 | 8386, 8401 |  | Zenith | 8730434 |

| ID | WBS | Task | Duration | Start | Finish | Predecessors | Constraint | Calendar | Unique_Task_ID |
| --- | --- | --- | --- | --- | --- | --- | --- | --- | --- |
| 8403 | 36900.37000.37400.38300.39300.41300.42100.112300 | **13th floor roof** | 176d | 2026-05-21 | 2026-12-27 |  | start no earlier than 2026-05-21 | Zenith | 8651414 |
| 8404 | 36900.37000.37400.38300.39300.41300.42100.112300.1744500 | Block Work | 10d | 2026-05-21 | 2026-05-30 | 8185, 8388 |  | Zenith | 8730444 |
| 8405 | 36900.37000.37400.38300.39300.41300.42100.112300.1744600 | Fire sprinkler pipe fixing | 6d | 2026-05-31 | 2026-06-05 | 8389, 8404 |  | Zenith | 8730454 |
| 8406 | 36900.37000.37400.38300.39300.41300.42100.112300.1744700 | Internal Plumbing Works | 10d | 2026-05-31 | 2026-06-09 | 8390, 8404 |  | Zenith | 8730464 |
| 8407 | 36900.37000.37400.38300.39300.41300.42100.112300.1744800 | Waterproofing | 14d | 2026-07-28 | 2026-08-10 | 8391, 8406 |  | Zenith | 8730474 |
| 8408 | 36900.37000.37400.38300.39300.41300.42100.112300.1744900 | Internal Plaster | 14d | 2026-08-02 | 2026-08-15 | 8392, 8406, 8407FF+5d |  | Zenith | 8730484 |
| 8409 | 36900.37000.37400.38300.39300.41300.42100.112300.1745000 | IPS flooring work | 10d | 2026-08-16 | 2026-08-25 | 8393, 8408 |  | Zenith | 8730494 |
| 8410 | 36900.37000.37400.38300.39300.41300.42100.112300.1745100 | Toilet dado work | 10d | 2026-08-16 | 2026-08-25 | 8394, 8407, 8408 |  | Zenith | 8730504 |
| 8411 | 36900.37000.37400.38300.39300.41300.42100.112300.1745200 | Toilet flooring work | 7d | 2026-08-26 | 2026-09-01 | 8395, 8410 |  | Zenith | 8730514 |
| 8412 | 36900.37000.37400.38300.39300.41300.42100.112300.1745300 | False Cieling panel fixing | 10d | 2026-09-02 | 2026-09-11 | 8396, 8411 |  | Zenith | 8730524 |
| 8413 | 36900.37000.37400.38300.39300.41300.42100.112300.1745400 | Living dinning flooring | 13d | 2026-09-02 | 2026-09-14 | 8397, 8411 |  | Zenith | 8730534 |
| 8414 | 36900.37000.37400.38300.39300.41300.42100.112300.1745500 | Putty primer coat | 12d | 2026-09-15 | 2026-09-26 | 8398, 8413 |  | Zenith | 8730544 |
| 8415 | 36900.37000.37400.38300.39300.41300.42100.112300.1745600 | Aluminium door-window fixing | 15d | 2026-09-27 | 2026-10-11 | 8399, 8409, 8413 |  | Zenith | 8731964 |
| 8416 | 36900.37000.37400.38300.39300.41300.42100.112300.1745700 | Door shutter fixing (Pre Hung) | 8d | 2026-09-27 | 2026-10-04 | 8400, 8414 |  | Zenith | 8731974 |
| 8417 | 36900.37000.37400.38300.39300.41300.42100.112300.1745800 | Electrical wiring work | 12d | 2026-10-05 | 2026-10-16 | 8401, 8416 |  | Zenith | 8731984 |
| 8418 | 36900.37000.37400.38300.39300.41300.42100.112300.1745900 | Painting 1st coat | 15d | 2026-10-29 | 2026-12-27 | 8402, 8417 |  | Zenith | 8731994 |
| 8419 | 36900.37000.37400.38300.39300.41300.42100.112400 | **14th floor roof** | 181d | 2026-05-31 | 2027-01-11 |  | start no earlier than 2026-05-31 | Zenith | 8651424 |
| 8420 | 36900.37000.37400.38300.39300.41300.42100.112400.1746000 | Block Work | 10d | 2026-05-31 | 2026-06-09 | 8186, 8404 |  | Zenith | 8732004 |
| 8421 | 36900.37000.37400.38300.39300.41300.42100.112400.1746100 | Fire sprinkler pipe fixing | 6d | 2026-06-10 | 2026-06-15 | 8405, 8420 |  | Zenith | 8732014 |
| 8422 | 36900.37000.37400.38300.39300.41300.42100.112400.1746200 | Internal Plumbing Works | 10d | 2026-06-10 | 2026-06-19 | 8406, 8420 |  | Zenith | 8732024 |
| 8423 | 36900.37000.37400.38300.39300.41300.42100.112400.1746300 | Waterproofing | 14d | 2026-08-11 | 2026-08-24 | 8407, 8422 |  | Zenith | 8732034 |
| 8424 | 36900.37000.37400.38300.39300.41300.42100.112400.1746400 | Internal Plaster | 14d | 2026-08-16 | 2026-08-29 | 8408, 8422, 8423FF+5d |  | Zenith | 8732044 |
| 8425 | 36900.37000.37400.38300.39300.41300.42100.112400.1746500 | IPS flooring work | 10d | 2026-08-30 | 2026-09-08 | 8409, 8424 |  | Zenith | 8732054 |
| 8426 | 36900.37000.37400.38300.39300.41300.42100.112400.1746600 | Toilet dado work | 10d | 2026-08-30 | 2026-09-08 | 8410, 8423, 8424 |  | Zenith | 8732064 |
| 8427 | 36900.37000.37400.38300.39300.41300.42100.112400.1746700 | Toilet flooring work | 7d | 2026-09-09 | 2026-09-15 | 8411, 8426 |  | Zenith | 8732074 |
| 8428 | 36900.37000.37400.38300.39300.41300.42100.112400.1746800 | False Cieling panel fixing | 10d | 2026-09-16 | 2026-09-25 | 8412, 8427 |  | Zenith | 8732084 |
| 8429 | 36900.37000.37400.38300.39300.41300.42100.112400.1746900 | Living dinning flooring | 13d | 2026-09-16 | 2026-09-28 | 8413, 8427 |  | Zenith | 8732094 |
| 8430 | 36900.37000.37400.38300.39300.41300.42100.112400.1747000 | Putty primer coat | 12d | 2026-09-29 | 2026-10-10 | 8414, 8429 |  | Zenith | 8732104 |
| 8431 | 36900.37000.37400.38300.39300.41300.42100.112400.1747100 | Aluminium door-window fixing | 15d | 2026-10-12 | 2026-10-26 | 8415, 8425, 8429 |  | Zenith | 8732114 |
| 8432 | 36900.37000.37400.38300.39300.41300.42100.112400.1747200 | Door shutter fixing (Pre Hung) | 8d | 2026-10-11 | 2026-10-18 | 8416, 8430 |  | Zenith | 8732124 |
| 8433 | 36900.37000.37400.38300.39300.41300.42100.112400.1747300 | Electrical wiring work | 12d | 2026-10-19 | 2026-10-30 | 8417, 8432 |  | Zenith | 8732134 |
| 8434 | 36900.37000.37400.38300.39300.41300.42100.112400.1747400 | Painting 1st coat | 15d | 2026-12-28 | 2027-01-11 | 8418, 8433 |  | Zenith | 8732144 |

| ID | WBS | Task | Duration | Start | Finish | Predecessors | Constraint | Calendar | Unique_Task_ID |
| --- | --- | --- | --- | --- | --- | --- | --- | --- | --- |
| 8435 | 36900.37000.37400.38300.39300.41300.42100.112500 | **15th floor roof** | 186d | 2026-06-10 | 2027-01-26 |  | start no earlier than 2026-06-10 | Zenith | 8651434 |
| 8436 | 36900.37000.37400.38300.39300.41300.42100.112500.1747500 | Block Work | 10d | 2026-06-10 | 2026-06-19 | 8187, 8420 |  | Zenith | 8732154 |
| 8437 | 36900.37000.37400.38300.39300.41300.42100.112500.1747600 | Fire sprinkler pipe fixing | 6d | 2026-06-20 | 2026-06-25 | 8421, 8436 |  | Zenith | 8732164 |
| 8438 | 36900.37000.37400.38300.39300.41300.42100.112500.1747700 | Internal Plumbing Works | 10d | 2026-06-20 | 2026-06-29 | 8422, 8436 |  | Zenith | 8732174 |
| 8439 | 36900.37000.37400.38300.39300.41300.42100.112500.1747800 | Waterproofing | 14d | 2026-08-25 | 2026-09-07 | 8423, 8438 |  | Zenith | 8732184 |
| 8440 | 36900.37000.37400.38300.39300.41300.42100.112500.1747900 | Internal Plaster | 14d | 2026-08-30 | 2026-09-12 | 8424, 8438, 8439FF+5d |  | Zenith | 8732194 |
| 8441 | 36900.37000.37400.38300.39300.41300.42100.112500.1748000 | IPS flooring work | 10d | 2026-09-13 | 2026-09-22 | 8425, 8440 |  | Zenith | 8732204 |
| 8442 | 36900.37000.37400.38300.39300.41300.42100.112500.1748100 | Toilet dado work | 10d | 2026-09-13 | 2026-09-22 | 8426, 8439, 8440 |  | Zenith | 8732214 |
| 8443 | 36900.37000.37400.38300.39300.41300.42100.112500.1748200 | Toilet flooring work | 7d | 2026-09-23 | 2026-09-29 | 8427, 8442 |  | Zenith | 8732224 |
| 8444 | 36900.37000.37400.38300.39300.41300.42100.112500.1748300 | False Cieling panel fixing | 10d | 2026-09-30 | 2026-10-09 | 8428, 8443 |  | Zenith | 8732234 |
| 8445 | 36900.37000.37400.38300.39300.41300.42100.112500.1748400 | Living dinning flooring | 13d | 2026-09-30 | 2026-10-12 | 8429, 8443 |  | Zenith | 8732244 |
| 8446 | 36900.37000.37400.38300.39300.41300.42100.112500.1748500 | Aluminium door-window fixing | 12d | 2026-10-27 | 2026-12-22 | 8431, 8441, 8445 |  | Zenith | 8732254 |
| 8447 | 36900.37000.37400.38300.39300.41300.42100.112500.1748600 | Putty primer coat | 15d | 2026-10-13 | 2026-10-27 | 8430, 8445 |  | Zenith | 8732264 |
| 8448 | 36900.37000.37400.38300.39300.41300.42100.112500.1748700 | Door shutter fixing (Pre Hung) | 8d | 2026-10-28 | 2026-12-19 | 8432, 8447 |  | Zenith | 8732274 |
| 8449 | 36900.37000.37400.38300.39300.41300.42100.112500.1748800 | Electrical wiring work | 12d | 2026-12-20 | 2026-12-31 | 8433, 8448 |  | Zenith | 8732284 |
| 8450 | 36900.37000.37400.38300.39300.41300.42100.112500.1748900 | Painting 1st coat | 15d | 2027-01-12 | 2027-01-26 | 8434, 8449 |  | Zenith | 8732294 |
| 8451 | 36900.37000.37400.38300.39300.41300.42100.112600 | **16th floor roof** | 191d | 2026-06-20 | 2027-02-10 |  | start no earlier than 2026-06-20 | Zenith | 8651444 |
| 8452 | 36900.37000.37400.38300.39300.41300.42100.112600.1749000 | Block Work | 10d | 2026-06-20 | 2026-06-29 | 8188, 8436 |  | Zenith | 8732304 |
| 8453 | 36900.37000.37400.38300.39300.41300.42100.112600.1749100 | Fire sprinkler pipe fixing | 6d | 2026-06-30 | 2026-07-05 | 8437, 8452 |  | Zenith | 8732314 |
| 8454 | 36900.37000.37400.38300.39300.41300.42100.112600.1749200 | Internal Plumbing Works | 10d | 2026-06-30 | 2026-07-09 | 8438, 8452 |  | Zenith | 8732324 |
| 8455 | 36900.37000.37400.38300.39300.41300.42100.112600.1749300 | Waterproofing | 14d | 2026-09-08 | 2026-09-21 | 8439, 8454 |  | Zenith | 8732334 |
| 8456 | 36900.37000.37400.38300.39300.41300.42100.112600.1749400 | Internal Plaster | 14d | 2026-09-13 | 2026-09-26 | 8440, 8454, 8455FF+5d |  | Zenith | 8732344 |
| 8457 | 36900.37000.37400.38300.39300.41300.42100.112600.1749500 | IPS flooring work | 10d | 2026-09-27 | 2026-10-06 | 8441, 8456 |  | Zenith | 8732354 |
| 8458 | 36900.37000.37400.38300.39300.41300.42100.112600.1749600 | Toilet dado work | 10d | 2026-09-27 | 2026-10-06 | 8442, 8455, 8456 |  | Zenith | 8732364 |
| 8459 | 36900.37000.37400.38300.39300.41300.42100.112600.1749700 | Toilet flooring work | 7d | 2026-10-07 | 2026-10-13 | 8443, 8458 |  | Zenith | 8732374 |
| 8460 | 36900.37000.37400.38300.39300.41300.42100.112600.1749800 | False Cieling panel fixing | 10d | 2026-10-14 | 2026-10-23 | 8444, 8459 |  | Zenith | 8732384 |
| 8461 | 36900.37000.37400.38300.39300.41300.42100.112600.1749900 | Living dinning flooring | 13d | 2026-10-14 | 2026-10-26 | 8445, 8459 |  | Zenith | 8732394 |
| 8462 | 36900.37000.37400.38300.39300.41300.42100.112600.1750000 | Putty primer coat | 12d | 2026-10-28 | 2026-12-23 | 8447, 8461 |  | Zenith | 8732404 |
| 8463 | 36900.37000.37400.38300.39300.41300.42100.112600.1750100 | Aluminium door-window fixing | 15d | 2026-12-23 | 2027-01-06 | 8446, 8457, 8461 |  | Zenith | 8732414 |
| 8464 | 36900.37000.37400.38300.39300.41300.42100.112600.1750200 | Door shutter fixing (Pre Hung) | 8d | 2026-12-24 | 2026-12-31 | 8448, 8462 |  | Zenith | 8732424 |
| 8465 | 36900.37000.37400.38300.39300.41300.42100.112600.1750300 | Electrical wiring work | 12d | 2027-01-01 | 2027-01-12 | 8449, 8464 |  | Zenith | 8732434 |
| 8466 | 36900.37000.37400.38300.39300.41300.42100.112600.1750400 | Painting 1st coat | 15d | 2027-01-27 | 2027-02-10 | 8450, 8465 |  | Zenith | 8732444 |

| ID | WBS | Task | Duration | Start | Finish | Predecessors | Constraint | Calendar | Unique_Task_ID |
| --- | --- | --- | --- | --- | --- | --- | --- | --- | --- |
| 8467 | 36900.37000.37400.38300.39300.41300.42100.112700 | **17th floor roof** | 196d | 2026-06-30 | 2027-02-25 |  | start no earlier than 2026-06-30 | Zenith | 8651454 |
| 8468 | 36900.37000.37400.38300.39300.41300.42100.112700.1750500 | Block Work | 10d | 2026-06-30 | 2026-07-09 | 8189, 8452 |  | Zenith | 8732454 |
| 8469 | 36900.37000.37400.38300.39300.41300.42100.112700.1750600 | Fire sprinkler pipe fixing | 6d | 2026-07-10 | 2026-07-15 | 8453, 8468 |  | Zenith | 8732464 |
| 8470 | 36900.37000.37400.38300.39300.41300.42100.112700.1750700 | Internal Plumbing Works | 10d | 2026-07-10 | 2026-07-19 | 8454, 8468 |  | Zenith | 8732474 |
| 8471 | 36900.37000.37400.38300.39300.41300.42100.112700.1750800 | Waterproofing | 14d | 2026-09-22 | 2026-10-05 | 8455, 8470 |  | Zenith | 8732484 |
| 8472 | 36900.37000.37400.38300.39300.41300.42100.112700.1750900 | Internal Plaster | 14d | 2026-09-27 | 2026-10-10 | 8456, 8470, 8471FF+5d |  | Zenith | 8732494 |
| 8473 | 36900.37000.37400.38300.39300.41300.42100.112700.1751000 | IPS flooring work | 10d | 2026-10-11 | 2026-10-20 | 8457, 8472 |  | Zenith | 8732504 |
| 8474 | 36900.37000.37400.38300.39300.41300.42100.112700.1751100 | Toilet dado work | 10d | 2026-10-11 | 2026-10-20 | 8458, 8471, 8472 |  | Zenith | 8732514 |
| 8475 | 36900.37000.37400.38300.39300.41300.42100.112700.1751200 | Toilet flooring work | 7d | 2026-10-21 | 2026-10-27 | 8459, 8474 |  | Zenith | 8732524 |
| 8476 | 36900.37000.37400.38300.39300.41300.42100.112700.1751300 | False Cieling panel fixing | 10d | 2026-10-28 | 2026-12-21 | 8460, 8475 |  | Zenith | 8732534 |
| 8477 | 36900.37000.37400.38300.39300.41300.42100.112700.1751400 | Living dinning flooring | 13d | 2026-10-28 | 2026-12-24 | 8461, 8475 |  | Zenith | 8732544 |
| 8478 | 36900.37000.37400.38300.39300.41300.42100.112700.1751500 | Putty primer coat | 12d | 2026-12-25 | 2027-01-05 | 8462, 8477 |  | Zenith | 8732554 |
| 8479 | 36900.37000.37400.38300.39300.41300.42100.112700.1751600 | Aluminium door-window fixing | 15d | 2027-01-07 | 2027-01-21 | 8463, 8473, 8477 |  | Zenith | 8732564 |
| 8480 | 36900.37000.37400.38300.39300.41300.42100.112700.1751700 | Door shutter fixing (Pre Hung) | 8d | 2027-01-06 | 2027-01-13 | 8464, 8478 |  | Zenith | 8732574 |
| 8481 | 36900.37000.37400.38300.39300.41300.42100.112700.1751800 | Electrical wiring work | 12d | 2027-01-14 | 2027-01-25 | 8465, 8480 |  | Zenith | 8732584 |
| 8482 | 36900.37000.37400.38300.39300.41300.42100.112700.1751900 | Painting 1st coat | 15d | 2027-02-11 | 2027-02-25 | 8466, 8481 |  | Zenith | 8732594 |
| 8483 | 36900.37000.37400.38300.39300.41300.42100.112800 | **18th floor roof** | 201d | 2026-07-10 | 2027-03-12 |  | start no earlier than 2026-07-10 | Zenith | 8651464 |
| 8484 | 36900.37000.37400.38300.39300.41300.42100.112800.1752000 | Block Work | 10d | 2026-07-10 | 2026-07-19 | 8190, 8468 |  | Zenith | 8732604 |
| 8485 | 36900.37000.37400.38300.39300.41300.42100.112800.1752100 | Fire sprinkler pipe fixing | 6d | 2026-07-20 | 2026-07-25 | 8469, 8484 |  | Zenith | 8732614 |
| 8486 | 36900.37000.37400.38300.39300.41300.42100.112800.1752200 | Internal Plumbing Works | 10d | 2026-07-20 | 2026-07-29 | 8470, 8484 |  | Zenith | 8732624 |
| 8487 | 36900.37000.37400.38300.39300.41300.42100.112800.1752300 | Waterproofing | 14d | 2026-10-06 | 2026-10-19 | 8471, 8486 |  | Zenith | 8732634 |
| 8488 | 36900.37000.37400.38300.39300.41300.42100.112800.1752400 | Internal Plaster | 14d | 2026-10-11 | 2026-10-24 | 8472, 8486, 8487FF+5d |  | Zenith | 8732644 |
| 8489 | 36900.37000.37400.38300.39300.41300.42100.112800.1752500 | IPS flooring work | 10d | 2026-10-25 | 2026-12-18 | 8473, 8488 |  | Zenith | 8732654 |
| 8490 | 36900.37000.37400.38300.39300.41300.42100.112800.1752600 | Toilet dado work | 10d | 2026-10-25 | 2026-12-18 | 8474, 8487, 8488 |  | Zenith | 8732664 |
| 8491 | 36900.37000.37400.38300.39300.41300.42100.112800.1752700 | Toilet flooring work | 7d | 2026-12-19 | 2026-12-25 | 8475, 8490 |  | Zenith | 8732674 |
| 8492 | 36900.37000.37400.38300.39300.41300.42100.112800.1752800 | False Cieling panel fixing | 10d | 2026-12-26 | 2027-01-04 | 8476, 8491 |  | Zenith | 8732684 |
| 8493 | 36900.37000.37400.38300.39300.41300.42100.112800.1752900 | Living dinning flooring | 13d | 2026-12-26 | 2027-01-07 | 8477, 8491 |  | Zenith | 8732694 |
| 8494 | 36900.37000.37400.38300.39300.41300.42100.112800.1753000 | Putty primer coat | 12d | 2027-01-08 | 2027-01-19 | 8478, 8493 |  | Zenith | 8732704 |
| 8495 | 36900.37000.37400.38300.39300.41300.42100.112800.1753100 | Aluminium door-window fixing | 15d | 2027-01-22 | 2027-02-05 | 8479, 8489, 8493 |  | Zenith | 8732714 |
| 8496 | 36900.37000.37400.38300.39300.41300.42100.112800.1753200 | Door shutter fixing (Pre Hung) | 8d | 2027-01-20 | 2027-01-27 | 8480, 8494 |  | Zenith | 8732724 |
| 8497 | 36900.37000.37400.38300.39300.41300.42100.112800.1753300 | Electrical wiring work | 12d | 2027-01-28 | 2027-02-08 | 8481, 8496 |  | Zenith | 8732734 |
| 8498 | 36900.37000.37400.38300.39300.41300.42100.112800.1753400 | Painting 1st coat | 15d | 2027-02-26 | 2027-03-12 | 8482, 8497 |  | Zenith | 8732744 |

| ID | WBS | Task | Duration | Start | Finish | Predecessors | Constraint | Calendar | Unique_Task_ID |
| --- | --- | --- | --- | --- | --- | --- | --- | --- | --- |
| 8499 | 36900.37000.37400.38300.39300.41300.42100.112900 | **19th floor roof** | 206d | 2026-07-20 | 2027-03-27 |  | start no earlier than 2026-07-20 | Zenith | 8651474 |
| 8500 | 36900.37000.37400.38300.39300.41300.42100.112900.1753500 | Block Work | 10d | 2026-07-20 | 2026-07-29 | 8191, 8484 |  | Zenith | 8732754 |
| 8501 | 36900.37000.37400.38300.39300.41300.42100.112900.1753600 | Fire sprinkler pipe fixing | 6d | 2026-07-30 | 2026-08-04 | 8485, 8500 |  | Zenith | 8732764 |
| 8502 | 36900.37000.37400.38300.39300.41300.42100.112900.1753700 | Internal Plumbing Works | 10d | 2026-07-30 | 2026-08-08 | 8486, 8500 |  | Zenith | 8732774 |
| 8503 | 36900.37000.37400.38300.39300.41300.42100.112900.1753800 | Waterproofing | 14d | 2026-10-20 | 2026-12-17 | 8487, 8502 |  | Zenith | 8732784 |
| 8504 | 36900.37000.37400.38300.39300.41300.42100.112900.1753900 | Internal Plaster | 14d | 2026-10-25 | 2026-12-22 | 8488, 8502, 8503FF+5d |  | Zenith | 8732794 |
| 8505 | 36900.37000.37400.38300.39300.41300.42100.112900.1754000 | IPS flooring work | 10d | 2026-12-23 | 2027-01-01 | 8489, 8504 |  | Zenith | 8732804 |
| 8506 | 36900.37000.37400.38300.39300.41300.42100.112900.1754100 | Toilet dado work | 10d | 2026-12-23 | 2027-01-01 | 8490, 8503, 8504 |  | Zenith | 8732814 |
| 8507 | 36900.37000.37400.38300.39300.41300.42100.112900.1754200 | Toilet flooring work | 7d | 2027-01-02 | 2027-01-08 | 8491, 8506 |  | Zenith | 8732824 |
| 8508 | 36900.37000.37400.38300.39300.41300.42100.112900.1754300 | False Cieling panel fixing | 10d | 2027-01-09 | 2027-01-18 | 8492, 8507 |  | Zenith | 8732834 |
| 8509 | 36900.37000.37400.38300.39300.41300.42100.112900.1754400 | Living dinning flooring | 13d | 2027-01-09 | 2027-01-21 | 8493, 8507 |  | Zenith | 8732844 |
| 8510 | 36900.37000.37400.38300.39300.41300.42100.112900.1754500 | Putty primer coat | 12d | 2027-01-22 | 2027-02-02 | 8494, 8509 |  | Zenith | 8732854 |
| 8511 | 36900.37000.37400.38300.39300.41300.42100.112900.1754600 | Aluminium door-window fixing | 15d | 2027-02-06 | 2027-02-20 | 8495, 8505, 8509 |  | Zenith | 8732864 |
| 8512 | 36900.37000.37400.38300.39300.41300.42100.112900.1754700 | Door shutter fixing (Pre Hung) | 8d | 2027-02-03 | 2027-02-10 | 8496, 8510 |  | Zenith | 8732874 |
| 8513 | 36900.37000.37400.38300.39300.41300.42100.112900.1754800 | Electrical wiring work | 12d | 2027-02-11 | 2027-02-22 | 8497, 8512 |  | Zenith | 8732884 |
| 8514 | 36900.37000.37400.38300.39300.41300.42100.112900.1754900 | Painting 1st coat | 15d | 2027-03-13 | 2027-03-27 | 8498, 8513 |  | Zenith | 8732894 |
| 8515 | 36900.37000.37400.38300.39300.41300.42100.113000 | **20th floor roof** | 211d | 2026-07-30 | 2027-04-11 |  | start no earlier than 2026-07-30 | Zenith | 8651484 |
| 8516 | 36900.37000.37400.38300.39300.41300.42100.113000.1755000 | Block Work | 10d | 2026-07-30 | 2026-08-08 | 8192, 8500 |  | Zenith | 8732904 |
| 8517 | 36900.37000.37400.38300.39300.41300.42100.113000.1755100 | Fire sprinkler pipe fixing | 6d | 2026-08-09 | 2026-08-14 | 8501, 8516 |  | Zenith | 8732914 |
| 8518 | 36900.37000.37400.38300.39300.41300.42100.113000.1755200 | Internal Plumbing Works | 10d | 2026-08-09 | 2026-08-18 | 8502, 8516 |  | Zenith | 8732924 |
| 8519 | 36900.37000.37400.38300.39300.41300.42100.113000.1755300 | Waterproofing | 14d | 2026-12-18 | 2026-12-31 | 8503, 8518 |  | Zenith | 8732934 |
| 8520 | 36900.37000.37400.38300.39300.41300.42100.113000.1755400 | Internal Plaster | 14d | 2026-12-23 | 2027-01-05 | 8504, 8518, 8519FF+5d |  | Zenith | 8732944 |
| 8521 | 36900.37000.37400.38300.39300.41300.42100.113000.1755500 | IPS flooring work | 10d | 2027-01-06 | 2027-01-15 | 8505, 8520 |  | Zenith | 8732954 |
| 8522 | 36900.37000.37400.38300.39300.41300.42100.113000.1755600 | Toilet dado work | 10d | 2027-01-06 | 2027-01-15 | 8506, 8519, 8520 |  | Zenith | 8732964 |
| 8523 | 36900.37000.37400.38300.39300.41300.42100.113000.1755700 | Toilet flooring work | 7d | 2027-01-16 | 2027-01-22 | 8507, 8522 |  | Zenith | 8732974 |
| 8524 | 36900.37000.37400.38300.39300.41300.42100.113000.1755800 | False Cieling panel fixing | 10d | 2027-01-23 | 2027-02-01 | 8508, 8523 |  | Zenith | 8732984 |
| 8525 | 36900.37000.37400.38300.39300.41300.42100.113000.1755900 | Living dinning flooring | 13d | 2027-01-23 | 2027-02-04 | 8509, 8523 |  | Zenith | 8732994 |
| 8526 | 36900.37000.37400.38300.39300.41300.42100.113000.1756000 | Putty primer coat | 12d | 2027-02-05 | 2027-02-16 | 8510, 8525 |  | Zenith | 8733004 |
| 8527 | 36900.37000.37400.38300.39300.41300.42100.113000.1756100 | Aluminium door-window fixing | 15d | 2027-02-21 | 2027-03-07 | 8511, 8521, 8525 |  | Zenith | 8733014 |
| 8528 | 36900.37000.37400.38300.39300.41300.42100.113000.1756200 | Door shutter fixing (Pre Hung) | 8d | 2027-02-17 | 2027-02-24 | 8512, 8526 |  | Zenith | 8733024 |
| 8529 | 36900.37000.37400.38300.39300.41300.42100.113000.1756300 | Electrical wiring work | 12d | 2027-02-25 | 2027-03-08 | 8513, 8528 |  | Zenith | 8733034 |
| 8530 | 36900.37000.37400.38300.39300.41300.42100.113000.1756400 | Painting 1st coat | 15d | 2027-03-28 | 2027-04-11 | 8514, 8529 |  | Zenith | 8733044 |

| ID | WBS | Task | Duration | Start | Finish | Predecessors | Constraint | Calendar | Unique_Task_ID |
| --- | --- | --- | --- | --- | --- | --- | --- | --- | --- |
| 8531 | 36900.37000.37400.38300.39300.41300.42100.113100 | **21st floor roof** | 216d | 2026-08-09 | 2027-04-26 |  | start no earlier than 2026-08-09 | Zenith | 8651494 |
| 8532 | 36900.37000.37400.38300.39300.41300.42100.113100.1756500 | Block Work | 10d | 2026-08-09 | 2026-08-18 | 8193, 8516 |  | Zenith | 8733054 |
| 8533 | 36900.37000.37400.38300.39300.41300.42100.113100.1756600 | Fire sprinkler pipe fixing | 6d | 2026-08-19 | 2026-08-24 | 8517, 8532 |  | Zenith | 8733064 |
| 8534 | 36900.37000.37400.38300.39300.41300.42100.113100.1756700 | Internal Plumbing Works | 10d | 2026-08-19 | 2026-08-28 | 8518, 8532 |  | Zenith | 8733074 |
| 8535 | 36900.37000.37400.38300.39300.41300.42100.113100.1756800 | Waterproofing | 14d | 2027-01-01 | 2027-01-14 | 8519, 8534 |  | Zenith | 8733084 |
| 8536 | 36900.37000.37400.38300.39300.41300.42100.113100.1756900 | Internal Plaster | 14d | 2027-01-06 | 2027-01-19 | 8520, 8534, 8535FF+5d |  | Zenith | 8733094 |
| 8537 | 36900.37000.37400.38300.39300.41300.42100.113100.1757000 | IPS flooring work | 10d | 2027-01-20 | 2027-01-29 | 8521, 8536 |  | Zenith | 8733104 |
| 8538 | 36900.37000.37400.38300.39300.41300.42100.113100.1757100 | Toilet dado work | 10d | 2027-01-20 | 2027-01-29 | 8522, 8535, 8536 |  | Zenith | 8733114 |
| 8539 | 36900.37000.37400.38300.39300.41300.42100.113100.1757200 | Toilet flooring work | 7d | 2027-01-30 | 2027-02-05 | 8523, 8538 |  | Zenith | 8733124 |
| 8540 | 36900.37000.37400.38300.39300.41300.42100.113100.1757300 | False Cieling panel fixing | 10d | 2027-02-06 | 2027-02-15 | 8524, 8539 |  | Zenith | 8733134 |
| 8541 | 36900.37000.37400.38300.39300.41300.42100.113100.1757400 | Living dinning flooring | 13d | 2027-02-06 | 2027-02-18 | 8525, 8539 |  | Zenith | 8733144 |
| 8542 | 36900.37000.37400.38300.39300.41300.42100.113100.1757500 | Putty primer coat | 12d | 2027-02-19 | 2027-03-02 | 8526, 8541 |  | Zenith | 8733154 |
| 8543 | 36900.37000.37400.38300.39300.41300.42100.113100.1757600 | Aluminium door-window fixing | 15d | 2027-03-08 | 2027-03-22 | 8527, 8537, 8541 |  | Zenith | 8733164 |
| 8544 | 36900.37000.37400.38300.39300.41300.42100.113100.1757700 | Door shutter fixing (Pre Hung) | 8d | 2027-03-03 | 2027-03-10 | 8528, 8542 |  | Zenith | 8733174 |
| 8545 | 36900.37000.37400.38300.39300.41300.42100.113100.1757800 | Electrical wiring work | 12d | 2027-03-11 | 2027-03-22 | 8529, 8544 |  | Zenith | 8733184 |
| 8546 | 36900.37000.37400.38300.39300.41300.42100.113100.1757900 | Painting 1st coat | 15d | 2027-04-12 | 2027-04-26 | 8530, 8545 |  | Zenith | 8733194 |
| 8547 | 36900.37000.37400.38300.39300.41300.42100.113200 | **22nd floor roof** | 221d | 2026-08-19 | 2027-05-11 |  | start no earlier than 2026-08-19 | Zenith | 8651504 |
| 8548 | 36900.37000.37400.38300.39300.41300.42100.113200.1758000 | Block Work | 10d | 2026-08-19 | 2026-08-28 | 8194, 8532 |  | Zenith | 8733204 |
| 8549 | 36900.37000.37400.38300.39300.41300.42100.113200.1758100 | Fire sprinkler pipe fixing | 6d | 2026-08-29 | 2026-09-03 | 8533, 8548 |  | Zenith | 8733214 |
| 8550 | 36900.37000.37400.38300.39300.41300.42100.113200.1758200 | Internal Plumbing Works | 10d | 2026-08-29 | 2026-09-07 | 8534, 8548 |  | Zenith | 8733224 |
| 8551 | 36900.37000.37400.38300.39300.41300.42100.113200.1758300 | Waterproofing | 14d | 2027-01-15 | 2027-01-28 | 8535, 8550 |  | Zenith | 8733234 |
| 8552 | 36900.37000.37400.38300.39300.41300.42100.113200.1758400 | Internal Plaster | 14d | 2027-01-20 | 2027-02-02 | 8536, 8550, 8551FF+5d |  | Zenith | 8733244 |
| 8553 | 36900.37000.37400.38300.39300.41300.42100.113200.1758500 | IPS flooring work | 10d | 2027-02-03 | 2027-02-12 | 8537, 8552 |  | Zenith | 8733254 |
| 8554 | 36900.37000.37400.38300.39300.41300.42100.113200.1758600 | Toilet dado work | 10d | 2027-02-03 | 2027-02-12 | 8538, 8551, 8552 |  | Zenith | 8733264 |
| 8555 | 36900.37000.37400.38300.39300.41300.42100.113200.1758700 | Toilet flooring work | 7d | 2027-02-13 | 2027-02-19 | 8539, 8554 |  | Zenith | 8733274 |
| 8556 | 36900.37000.37400.38300.39300.41300.42100.113200.1758800 | False Cieling panel fixing | 10d | 2027-02-20 | 2027-03-01 | 8540, 8555 |  | Zenith | 8733284 |
| 8557 | 36900.37000.37400.38300.39300.41300.42100.113200.1758900 | Living dinning flooring | 13d | 2027-02-20 | 2027-03-04 | 8541, 8555 |  | Zenith | 8733294 |
| 8558 | 36900.37000.37400.38300.39300.41300.42100.113200.1759000 | Putty primer coat | 12d | 2027-03-05 | 2027-03-16 | 8542, 8557 |  | Zenith | 8733304 |
| 8559 | 36900.37000.37400.38300.39300.41300.42100.113200.1759100 | Aluminium door-window fixing | 15d | 2027-03-23 | 2027-04-06 | 8543, 8553, 8557 |  | Zenith | 8733314 |
| 8560 | 36900.37000.37400.38300.39300.41300.42100.113200.1759200 | Door shutter fixing (Pre Hung) | 8d | 2027-03-17 | 2027-03-24 | 8544, 8558 |  | Zenith | 8733324 |
| 8561 | 36900.37000.37400.38300.39300.41300.42100.113200.1759300 | Electrical wiring work | 12d | 2027-03-25 | 2027-04-05 | 8545, 8560 |  | Zenith | 8733334 |
| 8562 | 36900.37000.37400.38300.39300.41300.42100.113200.1759400 | Painting 1st coat | 15d | 2027-04-27 | 2027-05-11 | 8546, 8561 |  | Zenith | 8733344 |

| ID | WBS | Task | Duration | Start | Finish | Predecessors | Constraint | Calendar | Unique_Task_ID |
| --- | --- | --- | --- | --- | --- | --- | --- | --- | --- |
| 8563 | 36900.37000.37400.38300.39300.41300.42100.113300 | **23rd floor roof** | 226d | 2026-08-29 | 2027-05-26 |  | start no earlier than 2026-08-29 | Zenith | 8651514 |
| 8564 | 36900.37000.37400.38300.39300.41300.42100.113300.1759500 | Block Work | 10d | 2026-08-29 | 2026-09-07 | 8195, 8548 |  | Zenith | 8733354 |
| 8565 | 36900.37000.37400.38300.39300.41300.42100.113300.1759600 | Fire sprinkler pipe fixing | 6d | 2026-09-08 | 2026-09-13 | 8549, 8564 |  | Zenith | 8733364 |
| 8566 | 36900.37000.37400.38300.39300.41300.42100.113300.1759700 | Internal Plumbing Works | 10d | 2026-09-08 | 2026-09-17 | 8550, 8564 |  | Zenith | 8733374 |
| 8567 | 36900.37000.37400.38300.39300.41300.42100.113300.1759800 | Waterproofing | 14d | 2027-01-29 | 2027-02-11 | 8551, 8566 |  | Zenith | 8733384 |
| 8568 | 36900.37000.37400.38300.39300.41300.42100.113300.1759900 | Internal Plaster | 14d | 2027-02-03 | 2027-02-16 | 8552, 8566, 8567FF+5d |  | Zenith | 8733394 |
| 8569 | 36900.37000.37400.38300.39300.41300.42100.113300.1760000 | IPS flooring work | 10d | 2027-02-17 | 2027-02-26 | 8553, 8568 |  | Zenith | 8733404 |
| 8570 | 36900.37000.37400.38300.39300.41300.42100.113300.1760100 | Toilet dado work | 10d | 2027-02-17 | 2027-02-26 | 8554, 8567, 8568 |  | Zenith | 8733414 |
| 8571 | 36900.37000.37400.38300.39300.41300.42100.113300.1760200 | Toilet flooring work | 7d | 2027-02-27 | 2027-03-05 | 8555, 8570 |  | Zenith | 8733424 |
| 8572 | 36900.37000.37400.38300.39300.41300.42100.113300.1760300 | False Cieling panel fixing | 10d | 2027-03-06 | 2027-03-15 | 8556, 8571 |  | Zenith | 8733434 |
| 8573 | 36900.37000.37400.38300.39300.41300.42100.113300.1760400 | Living dinning flooring | 13d | 2027-03-06 | 2027-03-18 | 8557, 8571 |  | Zenith | 8733444 |
| 8574 | 36900.37000.37400.38300.39300.41300.42100.113300.1760500 | Putty primer coat | 12d | 2027-03-19 | 2027-03-30 | 8558, 8573 |  | Zenith | 8733454 |
| 8575 | 36900.37000.37400.38300.39300.41300.42100.113300.1760600 | Aluminium door-window fixing | 15d | 2027-04-07 | 2027-04-21 | 8559, 8569, 8573 |  | Zenith | 8733464 |
| 8576 | 36900.37000.37400.38300.39300.41300.42100.113300.1760700 | Door shutter fixing (Pre Hung) | 8d | 2027-03-31 | 2027-04-07 | 8560, 8574 |  | Zenith | 8733474 |
| 8577 | 36900.37000.37400.38300.39300.41300.42100.113300.1760800 | Electrical wiring work | 12d | 2027-04-08 | 2027-04-19 | 8561, 8576 |  | Zenith | 8733484 |
| 8578 | 36900.37000.37400.38300.39300.41300.42100.113300.1760900 | Painting 1st coat | 15d | 2027-05-12 | 2027-05-26 | 8562, 8577 |  | Zenith | 8733494 |
| 8579 | 36900.37000.37400.38300.39300.41300.42100.113400 | **24th floor roof** | 231d | 2026-09-08 | 2027-06-10 |  | start no earlier than 2026-09-08 | Zenith | 8651524 |
| 8580 | 36900.37000.37400.38300.39300.41300.42100.113400.1761000 | Block Work | 10d | 2026-09-08 | 2026-09-17 | 8196, 8564 |  | Zenith | 8733504 |
| 8581 | 36900.37000.37400.38300.39300.41300.42100.113400.1761100 | Fire sprinkler pipe fixing | 6d | 2026-09-18 | 2026-09-23 | 8565, 8580 |  | Zenith | 8733514 |
| 8582 | 36900.37000.37400.38300.39300.41300.42100.113400.1761200 | Internal Plumbing Works | 10d | 2026-09-18 | 2026-09-27 | 8566, 8580 |  | Zenith | 8733524 |
| 8583 | 36900.37000.37400.38300.39300.41300.42100.113400.1761300 | Waterproofing | 14d | 2027-02-12 | 2027-02-25 | 8567, 8582 |  | Zenith | 8733534 |
| 8584 | 36900.37000.37400.38300.39300.41300.42100.113400.1761400 | Internal Plaster | 14d | 2027-02-17 | 2027-03-02 | 8568, 8582, 8583FF+5d |  | Zenith | 8733544 |
| 8585 | 36900.37000.37400.38300.39300.41300.42100.113400.1761500 | IPS flooring work | 10d | 2027-03-03 | 2027-03-12 | 8569, 8584 |  | Zenith | 8733554 |
| 8586 | 36900.37000.37400.38300.39300.41300.42100.113400.1761600 | Toilet dado work | 10d | 2027-03-03 | 2027-03-12 | 8570, 8583, 8584 |  | Zenith | 8733564 |
| 8587 | 36900.37000.37400.38300.39300.41300.42100.113400.1761700 | Toilet flooring work | 7d | 2027-03-13 | 2027-03-19 | 8571, 8586 |  | Zenith | 8733574 |
| 8588 | 36900.37000.37400.38300.39300.41300.42100.113400.1761800 | False Cieling panel fixing | 10d | 2027-03-20 | 2027-03-29 | 8572, 8587 |  | Zenith | 8733584 |
| 8589 | 36900.37000.37400.38300.39300.41300.42100.113400.1761900 | Living dinning flooring | 13d | 2027-03-20 | 2027-04-01 | 8573, 8587 |  | Zenith | 8733594 |
| 8590 | 36900.37000.37400.38300.39300.41300.42100.113400.1762000 | Putty primer coat | 12d | 2027-04-02 | 2027-04-13 | 8574, 8589 |  | Zenith | 8733604 |
| 8591 | 36900.37000.37400.38300.39300.41300.42100.113400.1762100 | Aluminium door-window fixing | 15d | 2027-04-22 | 2027-05-06 | 8575, 8585, 8589 |  | Zenith | 8733614 |
| 8592 | 36900.37000.37400.38300.39300.41300.42100.113400.1762200 | Door shutter fixing (Pre Hung) | 8d | 2027-04-14 | 2027-04-21 | 8576, 8590 |  | Zenith | 8733624 |
| 8593 | 36900.37000.37400.38300.39300.41300.42100.113400.1762300 | Electrical wiring work | 12d | 2027-04-22 | 2027-05-03 | 8577, 8592 |  | Zenith | 8733634 |
| 8594 | 36900.37000.37400.38300.39300.41300.42100.113400.1762400 | Painting 1st coat | 15d | 2027-05-27 | 2027-06-10 | 8578, 8593 |  | Zenith | 8733644 |

| ID | WBS | Task | Duration | Start | Finish | Predecessors | Constraint | Calendar | Unique_Task_ID |
| --- | --- | --- | --- | --- | --- | --- | --- | --- | --- |
| 8595 | 36900.37000.37400.38300.39300.41300.42100.113500 | **25th floor roof** | 236d | 2026-09-18 | 2027-06-25 |  | start no earlier than 2026-09-18 | Zenith | 8651534 |
| 8596 | 36900.37000.37400.38300.39300.41300.42100.113500.1762500 | Block Work | 10d | 2026-09-18 | 2026-09-27 | 8197, 8580 |  | Zenith | 8733654 |
| 8597 | 36900.37000.37400.38300.39300.41300.42100.113500.1762600 | Fire sprinkler pipe fixing | 6d | 2026-09-28 | 2026-10-03 | 8581, 8596 |  | Zenith | 8733664 |
| 8598 | 36900.37000.37400.38300.39300.41300.42100.113500.1762700 | Internal Plumbing Works | 10d | 2026-09-28 | 2026-10-07 | 8582, 8596 |  | Zenith | 8733674 |
| 8599 | 36900.37000.37400.38300.39300.41300.42100.113500.1762800 | Waterproofing | 14d | 2027-02-26 | 2027-03-11 | 8583, 8598 |  | Zenith | 8733684 |
| 8600 | 36900.37000.37400.38300.39300.41300.42100.113500.1762900 | Internal Plaster | 14d | 2027-03-03 | 2027-03-16 | 8584, 8598, 8599FF+5d |  | Zenith | 8733694 |
| 8601 | 36900.37000.37400.38300.39300.41300.42100.113500.1763000 | IPS flooring work | 10d | 2027-03-17 | 2027-03-26 | 8585, 8600 |  | Zenith | 8733704 |
| 8602 | 36900.37000.37400.38300.39300.41300.42100.113500.1763100 | Toilet dado work | 10d | 2027-03-17 | 2027-03-26 | 8586, 8599, 8600 |  | Zenith | 8733714 |
| 8603 | 36900.37000.37400.38300.39300.41300.42100.113500.1763200 | Toilet flooring work | 7d | 2027-03-27 | 2027-04-02 | 8587, 8602 |  | Zenith | 8733724 |
| 8604 | 36900.37000.37400.38300.39300.41300.42100.113500.1763300 | False Cieling panel fixing | 10d | 2027-04-03 | 2027-04-12 | 8588, 8603 |  | Zenith | 8733734 |
| 8605 | 36900.37000.37400.38300.39300.41300.42100.113500.1763400 | Living dinning flooring | 13d | 2027-04-03 | 2027-04-15 | 8589, 8603 |  | Zenith | 8733744 |
| 8606 | 36900.37000.37400.38300.39300.41300.42100.113500.1763500 | Putty primer coat | 12d | 2027-04-16 | 2027-04-27 | 8590, 8605 |  | Zenith | 8733754 |
| 8607 | 36900.37000.37400.38300.39300.41300.42100.113500.1763600 | Aluminium door-window fixing | 15d | 2027-05-07 | 2027-05-21 | 8591, 8601, 8605 |  | Zenith | 8733764 |
| 8608 | 36900.37000.37400.38300.39300.41300.42100.113500.1763700 | Door shutter fixing (Pre Hung) | 8d | 2027-04-28 | 2027-05-05 | 8592, 8606 |  | Zenith | 8733774 |
| 8609 | 36900.37000.37400.38300.39300.41300.42100.113500.1763800 | Electrical wiring work | 12d | 2027-05-06 | 2027-05-17 | 8593, 8608 |  | Zenith | 8733784 |
| 8610 | 36900.37000.37400.38300.39300.41300.42100.113500.1763900 | Painting 1st coat | 15d | 2027-06-11 | 2027-06-25 | 8594, 8609 |  | Zenith | 8733794 |
| 8611 | 36900.37000.37400.38300.39300.41300.42100.113600 | **26th floor roof** | 241d | 2026-09-28 | 2027-07-10 |  | start no earlier than 2026-09-28 | Zenith | 8651544 |
| 8612 | 36900.37000.37400.38300.39300.41300.42100.113600.1764000 | Block Work | 10d | 2026-09-28 | 2026-10-07 | 8198, 8596 |  | Zenith | 8733804 |
| 8613 | 36900.37000.37400.38300.39300.41300.42100.113600.1764100 | Fire sprinkler pipe fixing | 6d | 2026-10-08 | 2026-10-13 | 8597, 8612 |  | Zenith | 8733814 |
| 8614 | 36900.37000.37400.38300.39300.41300.42100.113600.1764200 | Internal Plumbing Works | 10d | 2026-10-08 | 2026-10-17 | 8598, 8612 |  | Zenith | 8733824 |
| 8615 | 36900.37000.37400.38300.39300.41300.42100.113600.1764300 | Waterproofing | 14d | 2027-03-12 | 2027-03-25 | 8599, 8614 |  | Zenith | 8733834 |
| 8616 | 36900.37000.37400.38300.39300.41300.42100.113600.1764400 | Internal Plaster | 14d | 2027-03-17 | 2027-03-30 | 8600, 8614, 8615FF+5d |  | Zenith | 8733844 |
| 8617 | 36900.37000.37400.38300.39300.41300.42100.113600.1764500 | IPS flooring work | 10d | 2027-03-31 | 2027-04-09 | 8601, 8616 |  | Zenith | 8733854 |
| 8618 | 36900.37000.37400.38300.39300.41300.42100.113600.1764600 | Toilet dado work | 10d | 2027-03-31 | 2027-04-09 | 8602, 8615, 8616 |  | Zenith | 8733864 |
| 8619 | 36900.37000.37400.38300.39300.41300.42100.113600.1764700 | Toilet flooring work | 7d | 2027-04-10 | 2027-04-16 | 8603, 8618 |  | Zenith | 8733874 |
| 8620 | 36900.37000.37400.38300.39300.41300.42100.113600.1764800 | False Cieling panel fixing | 10d | 2027-04-17 | 2027-04-26 | 8604, 8619 |  | Zenith | 8733884 |
| 8621 | 36900.37000.37400.38300.39300.41300.42100.113600.1764900 | Living dinning flooring | 13d | 2027-04-17 | 2027-04-29 | 8605, 8619 |  | Zenith | 8733894 |
| 8622 | 36900.37000.37400.38300.39300.41300.42100.113600.1765000 | Putty primer coat | 12d | 2027-04-30 | 2027-05-11 | 8606, 8621 |  | Zenith | 8733904 |
| 8623 | 36900.37000.37400.38300.39300.41300.42100.113600.1765100 | Aluminium door-window fixing | 15d | 2027-05-22 | 2027-06-05 | 8607, 8617, 8621 |  | Zenith | 8733914 |
| 8624 | 36900.37000.37400.38300.39300.41300.42100.113600.1765200 | Door shutter fixing (Pre Hung) | 8d | 2027-05-12 | 2027-05-19 | 8608, 8622 |  | Zenith | 8733924 |
| 8625 | 36900.37000.37400.38300.39300.41300.42100.113600.1765300 | Electrical wiring work | 12d | 2027-05-20 | 2027-05-31 | 8609, 8624 |  | Zenith | 8733934 |
| 8626 | 36900.37000.37400.38300.39300.41300.42100.113600.1765400 | Painting 1st coat | 15d | 2027-06-26 | 2027-07-10 | 8610, 8625 |  | Zenith | 8733944 |

| ID | WBS | Task | Duration | Start | Finish | Predecessors | Constraint | Calendar | Unique_Task_ID |
| --- | --- | --- | --- | --- | --- | --- | --- | --- | --- |
| 8627 | 36900.37000.37400.38300.39300.41300.42100.113700 | **27th floor roof** | 246d | 2026-10-08 | 2027-07-25 |  | start no earlier than 2026-10-08 | Zenith | 8651554 |
| 8628 | 36900.37000.37400.38300.39300.41300.42100.113700.1765500 | Block Work | 10d | 2026-10-08 | 2026-10-17 | 8199, 8612 |  | Zenith | 8733954 |
| 8629 | 36900.37000.37400.38300.39300.41300.42100.113700.1765600 | Fire sprinkler pipe fixing | 6d | 2026-10-18 | 2026-10-23 | 8613, 8628 |  | Zenith | 8733964 |
| 8630 | 36900.37000.37400.38300.39300.41300.42100.113700.1765700 | Internal Plumbing Works | 10d | 2026-10-18 | 2026-10-27 | 8614, 8628 |  | Zenith | 8733974 |
| 8631 | 36900.37000.37400.38300.39300.41300.42100.113700.1765800 | Waterproofing | 14d | 2027-03-26 | 2027-04-08 | 8615, 8630 |  | Zenith | 8733984 |
| 8632 | 36900.37000.37400.38300.39300.41300.42100.113700.1765900 | Internal Plaster | 14d | 2027-03-31 | 2027-04-13 | 8616, 8630, 8631FF+5d |  | Zenith | 8733994 |
| 8633 | 36900.37000.37400.38300.39300.41300.42100.113700.1766000 | IPS flooring work | 10d | 2027-04-14 | 2027-04-23 | 8617, 8632 |  | Zenith | 8734004 |
| 8634 | 36900.37000.37400.38300.39300.41300.42100.113700.1766100 | Toilet dado work | 10d | 2027-04-14 | 2027-04-23 | 8618, 8631, 8632 |  | Zenith | 8734014 |
| 8635 | 36900.37000.37400.38300.39300.41300.42100.113700.1766200 | Toilet flooring work | 7d | 2027-04-24 | 2027-04-30 | 8619, 8634 |  | Zenith | 8734024 |
| 8636 | 36900.37000.37400.38300.39300.41300.42100.113700.1766300 | False Cieling panel fixing | 10d | 2027-05-01 | 2027-05-10 | 8620, 8635 |  | Zenith | 8734034 |
| 8637 | 36900.37000.37400.38300.39300.41300.42100.113700.1766400 | Living dinning flooring | 13d | 2027-05-01 | 2027-05-13 | 8621, 8635 |  | Zenith | 8734044 |
| 8638 | 36900.37000.37400.38300.39300.41300.42100.113700.1766500 | Putty primer coat | 12d | 2027-05-14 | 2027-05-25 | 8622, 8637 |  | Zenith | 8734054 |
| 8639 | 36900.37000.37400.38300.39300.41300.42100.113700.1766600 | Aluminium door-window fixing | 15d | 2027-06-06 | 2027-06-20 | 8623, 8633, 8637 |  | Zenith | 8734064 |
| 8640 | 36900.37000.37400.38300.39300.41300.42100.113700.1766700 | Door shutter fixing (Pre Hung) | 8d | 2027-05-26 | 2027-06-02 | 8624, 8638 |  | Zenith | 8734074 |
| 8641 | 36900.37000.37400.38300.39300.41300.42100.113700.1766800 | Electrical wiring work | 12d | 2027-06-03 | 2027-06-14 | 8625, 8640 |  | Zenith | 8734084 |
| 8642 | 36900.37000.37400.38300.39300.41300.42100.113700.1766900 | Painting 1st coat | 15d | 2027-07-11 | 2027-07-25 | 8626, 8641 |  | Zenith | 8734094 |
| 8643 | 36900.37000.37400.38300.39300.41300.42100.113800 | **28th floor roof** | 251d | 2026-10-18 | 2027-08-09 |  | start no earlier than 2026-10-18 | Zenith | 8651564 |
| 8644 | 36900.37000.37400.38300.39300.41300.42100.113800.1767000 | Block Work | 10d | 2026-10-18 | 2026-10-27 | 8200, 8628 |  | Zenith | 8734104 |
| 8645 | 36900.37000.37400.38300.39300.41300.42100.113800.1767100 | Fire sprinkler pipe fixing | 6d | 2026-10-28 | 2026-12-17 | 8629, 8644 |  | Zenith | 8734114 |
| 8646 | 36900.37000.37400.38300.39300.41300.42100.113800.1767200 | Internal Plumbing Works | 10d | 2026-10-28 | 2026-12-21 | 8630, 8644 |  | Zenith | 8734124 |
| 8647 | 36900.37000.37400.38300.39300.41300.42100.113800.1767300 | Waterproofing | 14d | 2027-04-09 | 2027-04-22 | 8631, 8646 |  | Zenith | 8734134 |
| 8648 | 36900.37000.37400.38300.39300.41300.42100.113800.1767400 | Internal Plaster | 14d | 2027-04-14 | 2027-04-27 | 8632, 8646, 8647FF+5d |  | Zenith | 8734144 |
| 8649 | 36900.37000.37400.38300.39300.41300.42100.113800.1767500 | IPS flooring work | 10d | 2027-04-28 | 2027-05-07 | 8633, 8648 |  | Zenith | 8734154 |
| 8650 | 36900.37000.37400.38300.39300.41300.42100.113800.1767600 | Toilet dado work | 10d | 2027-04-28 | 2027-05-07 | 8634, 8647, 8648 |  | Zenith | 8734164 |
| 8651 | 36900.37000.37400.38300.39300.41300.42100.113800.1767700 | Toilet flooring work | 7d | 2027-05-08 | 2027-05-14 | 8635, 8650 |  | Zenith | 8734174 |
| 8652 | 36900.37000.37400.38300.39300.41300.42100.113800.1767800 | False Cieling panel fixing | 10d | 2027-05-15 | 2027-05-24 | 8636, 8651 |  | Zenith | 8734184 |
| 8653 | 36900.37000.37400.38300.39300.41300.42100.113800.1767900 | Living dinning flooring | 13d | 2027-05-15 | 2027-05-27 | 8637, 8651 |  | Zenith | 8734194 |
| 8654 | 36900.37000.37400.38300.39300.41300.42100.113800.1768000 | Putty primer coat | 12d | 2027-05-28 | 2027-06-08 | 8638, 8653 |  | Zenith | 8734204 |
| 8655 | 36900.37000.37400.38300.39300.41300.42100.113800.1768100 | Aluminium door-window fixing | 15d | 2027-06-21 | 2027-07-05 | 8639, 8649, 8653 |  | Zenith | 8734214 |
| 8656 | 36900.37000.37400.38300.39300.41300.42100.113800.1768200 | Door shutter fixing (Pre Hung) | 8d | 2027-06-09 | 2027-06-16 | 8640, 8654 |  | Zenith | 8734224 |
| 8657 | 36900.37000.37400.38300.39300.41300.42100.113800.1768300 | Electrical wiring work | 12d | 2027-06-17 | 2027-06-28 | 8641, 8656 |  | Zenith | 8734234 |
| 8658 | 36900.37000.37400.38300.39300.41300.42100.113800.1768400 | Painting 1st coat | 15d | 2027-07-26 | 2027-08-09 | 8642, 8657 |  | Zenith | 8734244 |

| ID | WBS | Task | Duration | Start | Finish | Predecessors | Constraint | Calendar | Unique_Task_ID |
| --- | --- | --- | --- | --- | --- | --- | --- | --- | --- |
| 8659 | 36900.37000.37400.38300.39300.41300.42100.113900 | **29th floor roof** | 256d | 2026-10-28 | 2027-08-24 |  | start no earlier than 2026-10-28 | Zenith | 8651574 |
| 8660 | 36900.37000.37400.38300.39300.41300.42100.113900.1768500 | Block Work | 10d | 2026-10-28 | 2026-12-21 | 8201, 8644 |  | Zenith | 8734254 |
| 8661 | 36900.37000.37400.38300.39300.41300.42100.113900.1768600 | Fire sprinkler pipe fixing | 6d | 2026-12-22 | 2026-12-27 | 8645, 8660 |  | Zenith | 8734264 |
| 8662 | 36900.37000.37400.38300.39300.41300.42100.113900.1768700 | Internal Plumbing Works | 10d | 2026-12-22 | 2026-12-31 | 8646, 8660 |  | Zenith | 8734274 |
| 8663 | 36900.37000.37400.38300.39300.41300.42100.113900.1768800 | Waterproofing | 14d | 2027-04-23 | 2027-05-06 | 8647, 8662 |  | Zenith | 8734284 |
| 8664 | 36900.37000.37400.38300.39300.41300.42100.113900.1768900 | Internal Plaster | 14d | 2027-04-28 | 2027-05-11 | 8648, 8662, 8663FF+5d |  | Zenith | 8734294 |
| 8665 | 36900.37000.37400.38300.39300.41300.42100.113900.1769000 | IPS flooring work | 10d | 2027-05-12 | 2027-05-21 | 8649, 8664 |  | Zenith | 8734304 |
| 8666 | 36900.37000.37400.38300.39300.41300.42100.113900.1769100 | Toilet dado work | 10d | 2027-05-12 | 2027-05-21 | 8650, 8663, 8664 |  | Zenith | 8734314 |
| 8667 | 36900.37000.37400.38300.39300.41300.42100.113900.1769200 | Toilet flooring work | 7d | 2027-05-22 | 2027-05-28 | 8651, 8666 |  | Zenith | 8734324 |
| 8668 | 36900.37000.37400.38300.39300.41300.42100.113900.1769300 | False Cieling panel fixing | 10d | 2027-05-29 | 2027-06-07 | 8652, 8667 |  | Zenith | 8734334 |
| 8669 | 36900.37000.37400.38300.39300.41300.42100.113900.1769400 | Living dinning flooring | 13d | 2027-05-29 | 2027-06-10 | 8653, 8667 |  | Zenith | 8734344 |
| 8670 | 36900.37000.37400.38300.39300.41300.42100.113900.1769500 | Putty primer coat | 12d | 2027-06-11 | 2027-06-22 | 8654, 8669 |  | Zenith | 8734354 |
| 8671 | 36900.37000.37400.38300.39300.41300.42100.113900.1769600 | Aluminium door-window fixing | 15d | 2027-07-06 | 2027-07-20 | 8655, 8665, 8669 |  | Zenith | 8734364 |
| 8672 | 36900.37000.37400.38300.39300.41300.42100.113900.1769700 | Door shutter fixing (Pre Hung) | 8d | 2027-06-23 | 2027-06-30 | 8656, 8670 |  | Zenith | 8734374 |
| 8673 | 36900.37000.37400.38300.39300.41300.42100.113900.1769800 | Electrical wiring work | 12d | 2027-07-01 | 2027-07-12 | 8657, 8672 |  | Zenith | 8734384 |
| 8674 | 36900.37000.37400.38300.39300.41300.42100.113900.1769900 | Painting 1st coat | 15d | 2027-08-10 | 2027-08-24 | 8658, 8673 |  | Zenith | 8734394 |
| 8675 | 36900.37000.37400.38300.39300.41300.42100.114000 | **30th floor roof** | 261d | 2026-12-22 | 2027-09-08 |  | start no earlier than 2026-12-22 | Zenith | 8651584 |
| 8676 | 36900.37000.37400.38300.39300.41300.42100.114000.1770000 | Block Work | 10d | 2026-12-22 | 2026-12-31 | 8202, 8660 |  | Zenith | 8734404 |
| 8677 | 36900.37000.37400.38300.39300.41300.42100.114000.1770100 | Fire sprinkler pipe fixing | 6d | 2027-01-01 | 2027-01-06 | 8661, 8676 |  | Zenith | 8734414 |
| 8678 | 36900.37000.37400.38300.39300.41300.42100.114000.1770200 | Internal Plumbing Works | 10d | 2027-01-01 | 2027-01-10 | 8662, 8676 |  | Zenith | 8734424 |
| 8679 | 36900.37000.37400.38300.39300.41300.42100.114000.1770300 | Waterproofing | 14d | 2027-05-07 | 2027-05-20 | 8663, 8678 |  | Zenith | 8734434 |
| 8680 | 36900.37000.37400.38300.39300.41300.42100.114000.1770400 | Internal Plaster | 14d | 2027-05-12 | 2027-05-25 | 8664, 8678, 8679FF+5d |  | Zenith | 8734444 |
| 8681 | 36900.37000.37400.38300.39300.41300.42100.114000.1770500 | IPS flooring work | 10d | 2027-05-26 | 2027-06-04 | 8665, 8680 |  | Zenith | 8734454 |
| 8682 | 36900.37000.37400.38300.39300.41300.42100.114000.1770600 | Toilet dado work | 10d | 2027-05-26 | 2027-06-04 | 8666, 8679, 8680 |  | Zenith | 8734464 |
| 8683 | 36900.37000.37400.38300.39300.41300.42100.114000.1770700 | Toilet flooring work | 7d | 2027-06-05 | 2027-06-11 | 8667, 8682 |  | Zenith | 8734474 |
| 8684 | 36900.37000.37400.38300.39300.41300.42100.114000.1770800 | False Cieling panel fixing | 10d | 2027-06-12 | 2027-06-21 | 8668, 8683 |  | Zenith | 8734484 |
| 8685 | 36900.37000.37400.38300.39300.41300.42100.114000.1770900 | Living dinning flooring | 13d | 2027-06-12 | 2027-06-24 | 8669, 8683 |  | Zenith | 8734494 |
| 8686 | 36900.37000.37400.38300.39300.41300.42100.114000.1771000 | Putty primer coat | 12d | 2027-06-25 | 2027-07-06 | 8670, 8685 |  | Zenith | 8734504 |
| 8687 | 36900.37000.37400.38300.39300.41300.42100.114000.1771100 | Aluminium door-window fixing | 15d | 2027-07-21 | 2027-08-04 | 8671, 8681, 8685 |  | Zenith | 8734514 |
| 8688 | 36900.37000.37400.38300.39300.41300.42100.114000.1771200 | Door shutter fixing (Pre Hung) | 8d | 2027-07-07 | 2027-07-14 | 8672, 8686 |  | Zenith | 8734524 |
| 8689 | 36900.37000.37400.38300.39300.41300.42100.114000.1771300 | Electrical wiring work | 12d | 2027-07-15 | 2027-07-26 | 8673, 8688 |  | Zenith | 8734534 |
| 8690 | 36900.37000.37400.38300.39300.41300.42100.114000.1771400 | Painting 1st coat | 15d | 2027-08-25 | 2027-09-08 | 8674, 8689 |  | Zenith | 8734544 |

| ID | WBS | Task | Duration | Start | Finish | Predecessors | Constraint | Calendar | Unique_Task_ID |
| --- | --- | --- | --- | --- | --- | --- | --- | --- | --- |
| 8691 | 36900.37000.37400.38300.39300.41300.42100.114100 | **31st floor roof** | 266d | 2027-01-01 | 2027-09-23 |  | start no earlier than 2027-01-01 | Zenith | 8651594 |
| 8692 | 36900.37000.37400.38300.39300.41300.42100.114100.1771500 | Block Work | 10d | 2027-01-01 | 2027-01-10 | 8203, 8676 |  | Zenith | 8734554 |
| 8693 | 36900.37000.37400.38300.39300.41300.42100.114100.1771600 | Fire sprinkler pipe fixing | 6d | 2027-01-11 | 2027-01-16 | 8677, 8692 |  | Zenith | 8734564 |
| 8694 | 36900.37000.37400.38300.39300.41300.42100.114100.1771700 | Internal Plumbing Works | 10d | 2027-01-11 | 2027-01-20 | 8678, 8692 |  | Zenith | 8734574 |
| 8695 | 36900.37000.37400.38300.39300.41300.42100.114100.1771800 | Waterproofing | 14d | 2027-05-21 | 2027-06-03 | 8679, 8694 |  | Zenith | 8734584 |
| 8696 | 36900.37000.37400.38300.39300.41300.42100.114100.1771900 | Internal Plaster | 14d | 2027-05-26 | 2027-06-08 | 8680, 8694, 8695FF+5d |  | Zenith | 8734594 |
| 8697 | 36900.37000.37400.38300.39300.41300.42100.114100.1772000 | IPS flooring work | 10d | 2027-06-09 | 2027-06-18 | 8681, 8696 |  | Zenith | 8734604 |
| 8698 | 36900.37000.37400.38300.39300.41300.42100.114100.1772100 | Toilet dado work | 10d | 2027-06-09 | 2027-06-18 | 8682, 8695, 8696 |  | Zenith | 8734614 |
| 8699 | 36900.37000.37400.38300.39300.41300.42100.114100.1772200 | Toilet flooring work | 7d | 2027-06-19 | 2027-06-25 | 8683, 8698 |  | Zenith | 8734624 |
| 8700 | 36900.37000.37400.38300.39300.41300.42100.114100.1772300 | False Cieling panel fixing | 10d | 2027-06-26 | 2027-07-05 | 8684, 8699 |  | Zenith | 8734634 |
| 8701 | 36900.37000.37400.38300.39300.41300.42100.114100.1772400 | Living dinning flooring | 13d | 2027-06-26 | 2027-07-08 | 8685, 8699 |  | Zenith | 8734644 |
| 8702 | 36900.37000.37400.38300.39300.41300.42100.114100.1772500 | Putty primer coat | 12d | 2027-07-09 | 2027-07-20 | 8686, 8701 |  | Zenith | 8734654 |
| 8703 | 36900.37000.37400.38300.39300.41300.42100.114100.1772600 | Aluminium door-window fixing | 15d | 2027-08-05 | 2027-08-19 | 8687, 8697, 8701 |  | Zenith | 8734664 |
| 8704 | 36900.37000.37400.38300.39300.41300.42100.114100.1772700 | Door shutter fixing (Pre Hung) | 8d | 2027-07-21 | 2027-07-28 | 8688, 8702 |  | Zenith | 8734674 |
| 8705 | 36900.37000.37400.38300.39300.41300.42100.114100.1772800 | Electrical wiring work | 12d | 2027-07-29 | 2027-08-09 | 8689, 8704 |  | Zenith | 8734684 |
| 8706 | 36900.37000.37400.38300.39300.41300.42100.114100.1772900 | Painting 1st coat | 15d | 2027-09-09 | 2027-09-23 | 8690, 8705 |  | Zenith | 8734694 |
| 8707 | 36900.37000.37400.38300.39300.41300.42100.114200 | **32nd floor roof** | 271d | 2027-01-11 | 2027-10-08 |  | start no earlier than 2027-01-11 | Zenith | 8651604 |
| 8708 | 36900.37000.37400.38300.39300.41300.42100.114200.1773000 | Block Work | 10d | 2027-01-11 | 2027-01-20 | 8204, 8692 |  | Zenith | 8734704 |
| 8709 | 36900.37000.37400.38300.39300.41300.42100.114200.1773100 | Fire sprinkler pipe fixing | 6d | 2027-01-21 | 2027-01-26 | 8693, 8708 |  | Zenith | 8734714 |
| 8710 | 36900.37000.37400.38300.39300.41300.42100.114200.1773200 | Internal Plumbing Works | 10d | 2027-01-21 | 2027-01-30 | 8694, 8708 |  | Zenith | 8734724 |
| 8711 | 36900.37000.37400.38300.39300.41300.42100.114200.1773300 | Waterproofing | 14d | 2027-06-04 | 2027-06-17 | 8695, 8710 |  | Zenith | 8734734 |
| 8712 | 36900.37000.37400.38300.39300.41300.42100.114200.1773400 | Internal Plaster | 14d | 2027-06-09 | 2027-06-22 | 8696, 8710, 8711FF+5d |  | Zenith | 8734744 |
| 8713 | 36900.37000.37400.38300.39300.41300.42100.114200.1773500 | IPS flooring work | 10d | 2027-06-23 | 2027-07-02 | 8697, 8712 |  | Zenith | 8734754 |
| 8714 | 36900.37000.37400.38300.39300.41300.42100.114200.1773600 | Toilet dado work | 10d | 2027-06-23 | 2027-07-02 | 8698, 8711, 8712 |  | Zenith | 8734764 |
| 8715 | 36900.37000.37400.38300.39300.41300.42100.114200.1773700 | Toilet flooring work | 7d | 2027-07-03 | 2027-07-09 | 8699, 8714 |  | Zenith | 8734774 |
| 8716 | 36900.37000.37400.38300.39300.41300.42100.114200.1773800 | False Cieling panel fixing | 10d | 2027-07-10 | 2027-07-19 | 8700, 8715 |  | Zenith | 8734784 |
| 8717 | 36900.37000.37400.38300.39300.41300.42100.114200.1773900 | Living dinning flooring | 13d | 2027-07-10 | 2027-07-22 | 8701, 8715 |  | Zenith | 8734794 |
| 8718 | 36900.37000.37400.38300.39300.41300.42100.114200.1774000 | Putty primer coat | 12d | 2027-07-23 | 2027-08-03 | 8702, 8717 |  | Zenith | 8734804 |
| 8719 | 36900.37000.37400.38300.39300.41300.42100.114200.1774100 | Aluminium door-window fixing | 15d | 2027-08-20 | 2027-09-03 | 8703, 8713, 8717 |  | Zenith | 8734814 |
| 8720 | 36900.37000.37400.38300.39300.41300.42100.114200.1774200 | Door shutter fixing (Pre Hung) | 8d | 2027-08-04 | 2027-08-11 | 8704, 8718 |  | Zenith | 8734824 |
| 8721 | 36900.37000.37400.38300.39300.41300.42100.114200.1774300 | Electrical wiring work | 12d | 2027-08-12 | 2027-08-23 | 8705, 8720 |  | Zenith | 8734834 |
| 8722 | 36900.37000.37400.38300.39300.41300.42100.114200.1774400 | Painting 1st coat | 15d | 2027-09-24 | 2027-10-08 | 8706, 8721 |  | Zenith | 8734844 |

| ID | WBS | Task | Duration | Start | Finish | Predecessors | Constraint | Calendar | Unique_Task_ID |
| --- | --- | --- | --- | --- | --- | --- | --- | --- | --- |
| 8723 | 36900.37000.37400.38300.39300.41300.42100.114300 | **33rd floor roof** | 276d | 2027-01-21 | 2027-10-23 |  | start no earlier than 2027-01-21 | Zenith | 8651614 |
| 8724 | 36900.37000.37400.38300.39300.41300.42100.114300.1774500 | Block Work | 10d | 2027-01-21 | 2027-01-30 | 8205, 8708 |  | Zenith | 8734854 |
| 8725 | 36900.37000.37400.38300.39300.41300.42100.114300.1774600 | Fire sprinkler pipe fixing | 6d | 2027-01-31 | 2027-02-05 | 8709, 8724 |  | Zenith | 8734864 |
| 8726 | 36900.37000.37400.38300.39300.41300.42100.114300.1774700 | Internal Plumbing Works | 10d | 2027-01-31 | 2027-02-09 | 8710, 8724 |  | Zenith | 8734874 |
| 8727 | 36900.37000.37400.38300.39300.41300.42100.114300.1774800 | Waterproofing | 14d | 2027-06-18 | 2027-07-01 | 8711, 8726 |  | Zenith | 8734884 |
| 8728 | 36900.37000.37400.38300.39300.41300.42100.114300.1774900 | Internal Plaster | 14d | 2027-06-23 | 2027-07-06 | 8712, 8726, 8727FF+5d |  | Zenith | 8734894 |
| 8729 | 36900.37000.37400.38300.39300.41300.42100.114300.1775000 | IPS flooring work | 10d | 2027-07-07 | 2027-07-16 | 8713, 8728 |  | Zenith | 8734904 |
| 8730 | 36900.37000.37400.38300.39300.41300.42100.114300.1775100 | Toilet dado work | 10d | 2027-07-07 | 2027-07-16 | 8714, 8727, 8728 |  | Zenith | 8734914 |
| 8731 | 36900.37000.37400.38300.39300.41300.42100.114300.1775200 | Toilet flooring work | 7d | 2027-07-17 | 2027-07-23 | 8715, 8730 |  | Zenith | 8734924 |
| 8732 | 36900.37000.37400.38300.39300.41300.42100.114300.1775300 | False Cieling panel fixing | 10d | 2027-07-24 | 2027-08-02 | 8716, 8731 |  | Zenith | 8734934 |
| 8733 | 36900.37000.37400.38300.39300.41300.42100.114300.1775400 | Living dinning flooring | 13d | 2027-07-24 | 2027-08-05 | 8717, 8731 |  | Zenith | 8734944 |
| 8734 | 36900.37000.37400.38300.39300.41300.42100.114300.1775500 | Putty primer coat | 12d | 2027-08-06 | 2027-08-17 | 8718, 8733 |  | Zenith | 8734954 |
| 8735 | 36900.37000.37400.38300.39300.41300.42100.114300.1775600 | Aluminium door-window fixing | 15d | 2027-09-04 | 2027-09-18 | 8719, 8729, 8733 |  | Zenith | 8734964 |
| 8736 | 36900.37000.37400.38300.39300.41300.42100.114300.1775700 | Door shutter fixing (Pre Hung) | 8d | 2027-08-18 | 2027-08-25 | 8720, 8734 |  | Zenith | 8734974 |
| 8737 | 36900.37000.37400.38300.39300.41300.42100.114300.1775800 | Electrical wiring work | 12d | 2027-08-26 | 2027-09-06 | 8721, 8736 |  | Zenith | 8734984 |
| 8738 | 36900.37000.37400.38300.39300.41300.42100.114300.1775900 | Painting 1st coat | 15d | 2027-10-09 | 2027-10-23 | 8722, 8737 |  | Zenith | 8734994 |
| 8739 | 36900.37000.37400.38300.39300.41300.42100.62900 | **34th Floor** | 326d | 2027-01-31 | 2028-02-05 |  | start no earlier than 2027-01-31 | Zenith | 8648344 |
| 8740 | 36900.37000.37400.38300.39300.41300.42100.62900.1776000 | Block Work | 10d | 2027-01-31 | 2027-02-09 | 8206, 8724 |  | Zenith | 8735004 |
| 8741 | 36900.37000.37400.38300.39300.41300.42100.62900.1776100 | Fire sprinkler pipe fixing | 6d | 2027-02-10 | 2027-02-15 | 8725, 8740 |  | Zenith | 8735484 |
| 8742 | 36900.37000.37400.38300.39300.41300.42100.62900.1776200 | Internal Plumbing Works | 10d | 2027-02-10 | 2027-02-19 | 8726, 8740 |  | Zenith | 8735494 |
| 8743 | 36900.37000.37400.38300.39300.41300.42100.62900.1776300 | Waterproofing | 14d | 2027-07-02 | 2027-07-15 | 8727, 8742 |  | Zenith | 8735504 |
| 8744 | 36900.37000.37400.38300.39300.41300.42100.62900.1776400 | Internal Plaster | 14d | 2027-07-07 | 2027-07-20 | 8728, 8742, 8743FF+5d |  | Zenith | 8735514 |
| 8745 | 36900.37000.37400.38300.39300.41300.42100.62900.1776500 | IPS flooring work | 10d | 2027-07-21 | 2027-07-30 | 8729, 8743, 8744 |  | Zenith | 8735524 |
| 8746 | 36900.37000.37400.38300.39300.41300.42100.62900.1776600 | Toilet dado work | 10d | 2027-07-31 | 2027-08-09 | 8730, 8745 |  | Zenith | 8735534 |
| 8747 | 36900.37000.37400.38300.39300.41300.42100.62900.1776700 | Toilet flooring work | 7d | 2027-08-10 | 2027-08-16 | 8731, 8746 |  | Zenith | 8735544 |
| 8748 | 36900.37000.37400.38300.39300.41300.42100.62900.1776800 | False ceiling | 10d | 2027-08-17 | 2027-08-26 | 8732, 8747 |  | Zenith | 8735554 |
| 8749 | 36900.37000.37400.38300.39300.41300.42100.62900.1776900 | Living dinning flooring | 13d | 2027-08-17 | 2027-08-29 | 8733, 8747 |  | Zenith | 8735564 |
| 8750 | 36900.37000.37400.38300.39300.41300.42100.62900.1777000 | Putty Primer coat | 12d | 2027-08-30 | 2027-09-10 | 8734, 8741, 8748, 8749 |  | Zenith | 8735574 |
| 8751 | 36900.37000.37400.38300.39300.41300.42100.62900.1777100 | Aluminium door-window fixing | 15d | 2027-09-19 | 2027-10-03 | 8735, 8745, 8749 |  | Zenith | 8735584 |
| 8752 | 36900.37000.37400.38300.39300.41300.42100.62900.1777200 | Door shutter fixing (Pre Hung) | 8d | 2027-09-11 | 2027-09-18 | 8736, 8750 |  | Zenith | 8735594 |
| 8753 | 36900.37000.37400.38300.39300.41300.42100.62900.1777300 | Electrical wiring work | 12d | 2027-09-19 | 2027-09-30 | 8737, 8752 |  | Zenith | 8735604 |
| 8754 | 36900.37000.37400.38300.39300.41300.42100.62900.1777400 | Painting 1st coat | 15d | 2027-10-24 | 2027-12-22 | 8738, 8753 |  | Zenith | 8735614 |
| 8755 | 36900.37000.37400.38300.39300.41300.42100.62900.1777500 | Misc. Works | 45d | 2027-12-23 | 2028-02-05 | 8754 |  | Zenith | 8735624 |

| ID | WBS | Task | Duration | Start | Finish | Predecessors | Constraint | Calendar | Unique_Task_ID |
| --- | --- | --- | --- | --- | --- | --- | --- | --- | --- |
| 8756 | 36900.37000.37400.38300.39300.41300.224800 | **Terrace Finishing** | 116d | 2027-01-02 | 2027-04-27 |  | start no earlier than 2027-01-02 | Zenith | 8656684 |
| 8757 | 36900.37000.37400.38300.39300.41300.224800.1078800 | Terrace waterproofing | 40d | 2027-01-02 | 2027-02-10 | 8171FS+2d |  | Zenith | 8675654 |
| 8758 | 36900.37000.37400.38300.39300.41300.224800.1078900 | Terrace finishing | 75d | 2027-02-12 | 2027-04-27 | 8757FS+1d |  | Zenith | 8675644 |
| 8759 | 36900.37000.37400.38300.39300.41300.48900 | **Balcony Railing** | 488d | 2026-04-04 | 2027-09-18 |  | start no earlier than 2026-04-04 | Zenith | 8648194 |
| 8760 | 36900.37000.37400.38300.39300.41300.48900.1079000 | 1st Floor | 10d | 2026-04-04 | 2026-04-13 | 8237FF |  | Zenith | 8675634 |
| 8761 | 36900.37000.37400.38300.39300.41300.48900.1079100 | 2nd Floor | 10d | 2026-04-28 | 2026-05-07 | 8760, 8253 |  | Zenith | 8675624 |
| 8762 | 36900.37000.37400.38300.39300.41300.48900.1079200 | 3rd Floor | 10d | 2026-05-12 | 2026-05-21 | 8761, 8269 |  | Zenith | 8675614 |
| 8763 | 36900.37000.37400.38300.39300.41300.48900.1079300 | 4th Floor | 10d | 2026-05-26 | 2026-06-04 | 8762, 8285 |  | Zenith | 8675604 |
| 8764 | 36900.37000.37400.38300.39300.41300.48900.1079400 | 5th Floor | 10d | 2026-06-09 | 2026-06-18 | 8763, 8301 |  | Zenith | 8675594 |
| 8765 | 36900.37000.37400.38300.39300.41300.48900.1079500 | 6th Floor | 10d | 2026-06-23 | 2026-07-02 | 8764, 8317 |  | Zenith | 8675584 |
| 8766 | 36900.37000.37400.38300.39300.41300.48900.1079600 | 7th Floor | 10d | 2026-07-07 | 2026-07-16 | 8765, 8333 |  | Zenith | 8675574 |
| 8767 | 36900.37000.37400.38300.39300.41300.48900.1079700 | 8th Floor | 10d | 2026-07-21 | 2026-07-30 | 8766, 8349 |  | Zenith | 8675564 |
| 8768 | 36900.37000.37400.38300.39300.41300.48900.1079800 | 9th Floor | 10d | 2026-08-04 | 2026-08-13 | 8767, 8365 |  | Zenith | 8675554 |
| 8769 | 36900.37000.37400.38300.39300.41300.48900.1079900 | 10th Floor | 10d | 2026-08-18 | 2026-08-27 | 8768, 8381 |  | Zenith | 8675544 |
| 8770 | 36900.37000.37400.38300.39300.41300.48900.1080000 | 11th Floor | 10d | 2026-09-01 | 2026-09-10 | 8769, 8397 |  | Zenith | 8675534 |
| 8771 | 36900.37000.37400.38300.39300.41300.48900.1080100 | 12th Floor | 10d | 2026-09-15 | 2026-09-24 | 8770, 8413 |  | Zenith | 8675524 |
| 8772 | 36900.37000.37400.38300.39300.41300.48900.1080200 | 13th Floor | 10d | 2026-09-29 | 2026-10-08 | 8771, 8429 |  | Zenith | 8675514 |
| 8773 | 36900.37000.37400.38300.39300.41300.48900.1080300 | 14th Floor | 10d | 2026-10-13 | 2026-10-22 | 8772, 8445 |  | Zenith | 8675504 |
| 8774 | 36900.37000.37400.38300.39300.41300.48900.1080400 | 15th Floor | 10d | 2026-10-27 | 2026-12-20 | 8773, 8461 |  | Zenith | 8675494 |
| 8775 | 36900.37000.37400.38300.39300.41300.48900.1080500 | 16th Floor | 10d | 2026-12-25 | 2027-01-03 | 8774, 8477 |  | Zenith | 8675484 |
| 8776 | 36900.37000.37400.38300.39300.41300.48900.1080600 | 17th Floor | 10d | 2027-01-08 | 2027-01-17 | 8775, 8493 |  | Zenith | 8675474 |
| 8777 | 36900.37000.37400.38300.39300.41300.48900.1080700 | 18th Floor | 10d | 2027-01-22 | 2027-01-31 | 8776, 8509 |  | Zenith | 8675464 |
| 8778 | 36900.37000.37400.38300.39300.41300.48900.1080800 | 19th Floor | 10d | 2027-02-05 | 2027-02-14 | 8777, 8525 |  | Zenith | 8675454 |
| 8779 | 36900.37000.37400.38300.39300.41300.48900.1080900 | 20th Floor | 10d | 2027-02-19 | 2027-02-28 | 8778, 8541 |  | Zenith | 8675444 |
| 8780 | 36900.37000.37400.38300.39300.41300.48900.1081000 | 21st Floor | 10d | 2027-03-05 | 2027-03-14 | 8779, 8557 |  | Zenith | 8675434 |
| 8781 | 36900.37000.37400.38300.39300.41300.48900.1081100 | 22nd Floor | 10d | 2027-03-19 | 2027-03-28 | 8780, 8573 |  | Zenith | 8675424 |
| 8782 | 36900.37000.37400.38300.39300.41300.48900.1081200 | 23rd Floor | 10d | 2027-04-02 | 2027-04-11 | 8781, 8589 |  | Zenith | 8675414 |
| 8783 | 36900.37000.37400.38300.39300.41300.48900.1081300 | 24th Floor | 10d | 2027-04-16 | 2027-04-25 | 8782, 8605 |  | Zenith | 8675404 |
| 8784 | 36900.37000.37400.38300.39300.41300.48900.1081400 | 25th Floor | 10d | 2027-04-30 | 2027-05-09 | 8783, 8621 |  | Zenith | 8675394 |
| 8785 | 36900.37000.37400.38300.39300.41300.48900.1081500 | 26th Floor | 10d | 2027-05-14 | 2027-05-23 | 8784, 8637 |  | Zenith | 8675384 |
| 8786 | 36900.37000.37400.38300.39300.41300.48900.1081600 | 27th Floor | 10d | 2027-05-28 | 2027-06-06 | 8785, 8653 |  | Zenith | 8675374 |
| 8787 | 36900.37000.37400.38300.39300.41300.48900.1081700 | 28th Floor | 10d | 2027-06-11 | 2027-06-20 | 8786, 8669 |  | Zenith | 8675364 |
| 8788 | 36900.37000.37400.38300.39300.41300.48900.1081800 | 29th Floor | 10d | 2027-06-25 | 2027-07-04 | 8787, 8685 |  | Zenith | 8675354 |
| 8789 | 36900.37000.37400.38300.39300.41300.48900.1081900 | 30th Floor | 10d | 2027-07-09 | 2027-07-18 | 8788, 8701 |  | Zenith | 8675344 |
| 8790 | 36900.37000.37400.38300.39300.41300.48900.1082000 | 31st Floor | 10d | 2027-07-23 | 2027-08-01 | 8789, 8717 |  | Zenith | 8675334 |
| 8791 | 36900.37000.37400.38300.39300.41300.48900.1082100 | 32nd Floor | 10d | 2027-08-06 | 2027-08-15 | 8790, 8733 |  | Zenith | 8675324 |
| 8792 | 36900.37000.37400.38300.39300.41300.48900.1082200 | 33rd Floor | 10d | 2027-08-30 | 2027-09-08 | 8791, 8749 |  | Zenith | 8675314 |
| 8793 | 36900.37000.37400.38300.39300.41300.48900.1082300 | 34th Floor | 10d | 2027-09-09 | 2027-09-18 | 8792 |  | Zenith | 8675304 |

| ID | WBS | Task | Duration | Start | Finish | Predecessors | Constraint | Calendar | Unique_Task_ID |
| --- | --- | --- | --- | --- | --- | --- | --- | --- | --- |
| 8794 | 36900.37000.37400.38300.39300.41300.118200 | **Common Area Finishing** | 344d | 2026-12-31 | 2028-01-23 |  | start no earlier than 2026-12-31 | Zenith | 8651774 |
| 8795 | 36900.37000.37400.38300.39300.41300.118200.1082400 | Masonary Work | 40d | 2026-12-31 | 2027-02-08 | 8171 |  | Zenith | 8675294 |
| 8796 | 36900.37000.37400.38300.39300.41300.118200.1082500 | Fire sprinkler pipe fixing | 40d | 2027-02-09 | 2027-03-20 | 8795 |  | Zenith | 8675284 |
| 8797 | 36900.37000.37400.38300.39300.41300.118200.1082600 | Corridoor, staircase, shaft Plaster & whitewash | 120d | 2027-02-09 | 2027-06-08 | 8795 |  | Zenith | 8675274 |
| 8798 | 36900.37000.37400.38300.39300.41300.118200.1082700 | Staircase railing fixing | 100d | 2027-02-09 | 2027-05-19 | 8795 |  | Zenith | 8675264 |
| 8799 | 36900.37000.37400.38300.39300.41300.118200.1082800 | Fire staircase flooring | 120d | 2027-02-19 | 2027-06-18 | 8798FF+30d |  | Zenith | 8675254 |
| 8800 | 36900.37000.37400.38300.39300.41300.118200.1082900 | Main staircase flooring | 120d | 2027-02-19 | 2027-06-18 | 8798FF+30d |  | Zenith | 8675244 |
| 8801 | 36900.37000.37400.38300.39300.41300.118200.1083000 | Fire door work | 45d | 2027-06-19 | 2027-08-02 | 8799 |  | Zenith | 8675234 |
| 8802 | 36900.37000.37400.38300.39300.41300.118200.1083100 | Lobby flooring & Corridor | 120d | 2027-03-21 | 2027-07-18 | 8800FF+30d |  | Zenith | 8675224 |
| 8803 | 36900.37000.37400.38300.39300.41300.118200.1083200 | Ceiling & wall putty | 120d | 2027-06-13 | 2027-10-10 | 8801FF+15d, 8802FF+30d, 8750FF+30d |  | Zenith | 8675214 |
| 8804 | 36900.37000.37400.38300.39300.41300.118200.1083300 | Electrical wiring work | 120d | 2027-06-28 | 2027-10-25 | 8803FF+15d |  | Zenith | 8675204 |
| 8805 | 36900.37000.37400.38300.39300.41300.118200.1083400 | Ceiling & wall painting | 120d | 2027-07-18 | 2027-12-29 | 8796FS+20d, 8803SS+20d, 8804FF+20d |  | Zenith | 8675194 |
| 8806 | 36900.37000.37400.38300.39300.41300.118200.1083500 | Light fixture supply & installation | 45d | 2027-10-26 | 2028-01-23 | 8803, 8805FF+25d |  | Zenith | 8675184 |
| 8807 | 36900.37000.37400.38300.120900 | **MEP work** | 260d | 2026-12-31 | 2027-09-16 |  | start no earlier than 2026-12-31 | Zenith | 8651924 |
| 8808 | 36900.37000.37400.38300.120900.127300 | **Electrical work** | 240d | 2026-12-31 | 2027-08-27 |  | start no earlier than 2026-12-31 | Zenith | 8651974 |
| 8809 | 36900.37000.37400.38300.120900.127300.839900 | Cable Tray | 90d | 2026-12-31 | 2027-03-30 | 8171 |  | Zenith | 8720424 |
| 8810 | 36900.37000.37400.38300.120900.127300.840000 | Cable, main & sub main | 60d | 2027-02-14 | 2027-04-14 | 8809SS+45d |  | Zenith | 8720414 |
| 8811 | 36900.37000.37400.38300.120900.127300.840100 | LT panel & DB | 90d | 2027-03-31 | 2027-06-28 | 8809 |  | Zenith | 8720404 |
| 8812 | 36900.37000.37400.38300.120900.127300.840200 | Rising main | 90d | 2027-04-15 | 2027-07-13 | 8809FS+15d |  | Zenith | 8720394 |
| 8813 | 36900.37000.37400.38300.120900.127300.840300 | Earthing Works | 60d | 2027-04-20 | 2027-06-18 | 8809FS+20d |  | Zenith | 8720384 |
| 8814 | 36900.37000.37400.38300.120900.127300.840400 | Energy meter | 60d | 2027-06-29 | 2027-08-27 | 8810, 8813FS+10d |  | Zenith | 8720374 |
| 8815 | 36900.37000.37400.38300.120900.127300.840500 | HVAC & Exhast fan | 120d | 2027-03-26 | 2027-07-23 | 8809FS-5d |  | Zenith | 8720364 |
| 8816 | 36900.37000.37400.38300.120900.127300.840600 | FTTH | 60d | 2027-06-14 | 2027-08-12 | 8811FS-15d |  | Zenith | 8720354 |
| 8817 | 36900.37000.37400.38300.120900.127300.840700 | Security System - FA & PA | 60d | 2027-06-29 | 2027-08-27 | 8811, 8812FF+10d, 8815FF+2d, 8816FF |  | Zenith | 8720344 |

| ID | WBS | Task | Duration | Start | Finish | Predecessors | Constraint | Calendar | Unique_Task_ID |
| --- | --- | --- | --- | --- | --- | --- | --- | --- | --- |
| 8818 | 36900.37000.37400.38300.120900.147500 | **Plumbing work** | 218d | 2027-02-11 | 2027-09-16 |  | start no earlier than 2027-02-11 | Zenith | 8652744 |
| 8819 | 36900.37000.37400.38300.120900.147500.840800 | Terrace looping | 45d | 2027-02-11 | 2027-03-27 | 8757 |  | Zenith | 8720334 |
| 8820 | 36900.37000.37400.38300.120900.147500.840900 | Shaft Plumbing | 70d | 2027-05-10 | 2027-07-18 | 8819, 8797FS-30d |  | Zenith | 8720324 |
| 8821 | 36900.37000.37400.38300.120900.147500.841000 | CP sanitary fixture supply | 45d | 2027-07-19 | 2027-09-01 | 8820 |  | Zenith | 8720314 |
| 8822 | 36900.37000.37400.38300.120900.147500.841100 | Cold & flushing water supply | 45d | 2027-07-19 | 2027-09-01 | 8820 |  | Zenith | 8720304 |
| 8823 | 36900.37000.37400.38300.120900.147500.841200 | Misc work | 30d | 2027-08-18 | 2027-09-16 | 8821FS-15d, 8822FS-15d |  | Zenith | 8720294 |
| 8824 | 36900.37000.37400.38300.120900.166500 | **Fire fighting work** | 121d | 2027-03-26 | 2027-07-24 |  | start no earlier than 2027-03-26 | Zenith | 8655894 |
| 8825 | 36900.37000.37400.38300.120900.166500.841300 | Fire hydrant work | 75d | 2027-03-26 | 2027-06-08 | 8797SS+45d |  | Zenith | 8720284 |
| 8826 | 36900.37000.37400.38300.120900.166500.841400 | Pipe connection & sprinkler installation | 45d | 2027-06-10 | 2027-07-24 | 8825FS+1d, 8828FF+15d |  | Zenith | 8720274 |
| 8827 | 36900.37000.37400.38300.120900.166500.841500 | Shaft Downtake works | 60d | 2027-04-10 | 2027-06-08 | 8757, 8797FS-60d |  | Zenith | 8720264 |
| 8828 | 36900.37000.37400.38300.120900.166500.841600 | Connection to pump room | 30d | 2027-06-09 | 2027-07-08 | 8827 |  | Zenith | 8720254 |
| 8829 | 36900.37000.37400.38300.120900.219200 | **Lift work** | 247.75d | 2027-01-12 | 2027-09-16 |  | start no earlier than 2027-01-12 | Zenith | 8656524 |
| 8830 | 36900.37000.37400.38300.120900.219200.841700 | Lift Shaft/Pit Handover | 40d | 2027-01-12 | 2027-02-21 | 8208FS+5d |  | Zenith | 8720244 |
| 8831 | 36900.37000.37400.38300.120900.219200.841800 | Lift installation work | 60d | 2027-02-21 | 2027-04-22 | 8830 |  | Zenith | 8720234 |
| 8832 | 36900.37000.37400.38300.120900.219200.841900 | Lift testing and commissioning | 60d | 2027-07-19 | 2027-09-16 | 8831, 8802 |  | Zenith | 8720224 |
| 8833 | 36900.37000.37400.38300.225600 | **Basement lobby** | 90d | 2027-03-08 | 2027-06-06 |  | start no earlier than 2027-03-08 | Zenith | 8656924 |
| 8834 | 36900.37000.37400.38300.225600.383900 | Basement lobby | 90d | 2027-03-08 | 2027-06-06 | 8830FS+15d, 7993FS+15d, 7994FS+15d |  | Zenith | 8730664 |
| 8835 | 36900.37000.37400.38300.222900 | **External Paint Works** | 105d | 2027-09-19 | 2028-02-15 |  | start no earlier than 2027-09-19 | Zenith | 8656784 |
| 8836 | 36900.37000.37400.38300.222900.384000 | Surface prepration with Primer | 60d | 2027-09-19 | 2028-01-01 | 8208FS+2d, 8793 |  | Zenith | 8730654 |
| 8837 | 36900.37000.37400.38300.222900.384100 | External Painting (Texture & first coat) | 90d | 2027-10-04 | 2028-02-15 | 8836FF+10d, 8751 |  | Zenith | 8730644 |
| 8838 | 36900.37000.37400.38300.277900 | OC Application/Readiness | 2d | 2028-03-30 | 2028-03-31 | 8166FF+349d, 8837FF+45d, 8826FF+30d, 8823FF, 8834FF+30d, 8832FF, 8817FF, 8814FF, 8758FF+30d, 8755FS+15d, 8803FF+0.25d, 8793FF, 8751FF+0.25d, 8855FF+30d, 8857FF+30d |  | Zenith | 8735084 |
| 8839 | 36900.37000.37400.38300.278000 | OC Receipt | 60d | 2028-04-01 | 2028-05-30 | 8838 |  | Zenith | 8735074 |
| 8840 | 36900.37000.37400.38300.126300 | **Post OC activities** | 423d | 2028-02-08 | 2029-05-20 |  | start no earlier than 2028-02-08 | Zenith | 8652004 |
| 8841 | 36900.37000.37400.38300.126300.384200 | CP & Sanitaryware | 150d | 2028-05-31 | 2028-10-27 | 8839 |  | Zenith | 8730634 |
| 8842 | 36900.37000.37400.38300.126300.384300 | Electrical Fixtures And Fittings | 150d | 2028-05-31 | 2028-10-27 | 8839 |  | Zenith | 8730624 |
| 8843 | 36900.37000.37400.38300.126300.384400 | Final coat paint external | 100d | 2028-05-31 | 2028-09-07 | 8839 |  | Zenith | 8730614 |
| 8844 | 36900.37000.37400.38300.126300.384500 | Final Coat Paint Internal | 150d | 2028-05-31 | 2028-10-27 | 8839, 8754 |  | Zenith | 8730604 |
| 8845 | 36900.37000.37400.38300.126300.384600 | Balcony Railing Glass Fixing | 120d | 2028-10-28 | 2029-04-10 | 8844, 8793FS+30d |  | Zenith | 8730594 |
| 8846 | 36900.37000.37400.38300.126300.384700 | MEP | 150d | 2028-02-08 | 2028-07-06 | 8806FS+15d |  | Zenith | 8730584 |
| 8847 | 36900.37000.37400.38300.126300.384800 | Wooden Flooring | 180d | 2028-05-16 | 2028-12-26 | 8844FF+15d |  | Zenith | 8730574 |
| 8848 | 36900.37000.37400.38300.126300.384900 | Split AC Units installation | 100d | 2029-01-11 | 2029-04-20 | 8847FS+15d |  | Zenith | 8730564 |
| 8849 | 36900.37000.37400.38300.126300.385000 | Misc. works (Modular Kitchen & Others) | 180d | 2028-10-08 | 2029-05-20 | 8848FF+30d |  | Zenith | 8730554 |
| 8850 | 36900.37000.37400.38300.278100 | Offer To Possession | 182d | 2028-10-30 | 2029-06-13 | 8839FS+152d, 8841FF+20d, 8842FF+20d, 8843FF+20d, 8848FF+10d, 8846FS+30d, 8845FF+15d, 8849FF+15d |  | Zenith | 8735064 |

| ID | WBS | Task | Type | Duration | Start | Finish | Predecessors | Complete | Constraint | Calendar | Unique_Task_ID |
| --- | --- | --- | --- | --- | --- | --- | --- | --- | --- | --- | --- |
| 8851 | 36900.37000.37400.135800 | **Non Tower Area** |  | 705d | 2025-08-22 | 2027-10-25 |  |  | start no earlier than 2025-08-22 | Zenith | 8652614 |
| 8852 | 36900.37000.37400.135800.278200 | NTA core & shell- Area 01 |  | 450d | 2025-08-22 | 2027-02-12 | 7968SS+45d |  |  | Zenith | 8735054 |
| 8853 | 36900.37000.37400.135800.278300 | NTA MEP - AR 01 |  | 350d | 2026-02-28 | 2027-03-29 | 8852FF+45d |  |  | Zenith | 269050 |
| 8854 | 36900.37000.37400.135800.278400 | NTA Finishes, External Development & Misc.- Ar 01 |  | 350d | 2026-03-30 | 2027-04-28 | 8852FF+75d, 8853FF+30d |  |  | Zenith | 8735044 |
| 8855 | 36900.37000.37400.135800.278500 | NTA core & shell- Area 02 |  | 350d | 2026-04-14 | 2027-05-13 | 8852FF+90d |  |  | Zenith | 8735034 |
| 8856 | 36900.37000.37400.135800.278600 | NTA MEP - AR 02 |  | 350d | 2026-05-29 | 2027-06-27 | 8855FF+45d |  |  | Zenith | 8735024 |
| 8857 | 36900.37000.37400.135800.278700 | NTA Finishes & External Development - Ar 02 |  | 350d | 2026-09-26 | 2027-10-25 | 8854FF+180d, 8855FF+75d, 8856FF+30d |  |  | Zenith | 8735014 |
| 8858 | 36900.37000.51400 | **ECRM Milestones** |  | 1406d | 2025-01-22 | 2029-07-19 |  | 6% | start no earlier than 2025-01-22 | Indian Calendar | 8647545 |
| 8859 | 36900.37000.51400.121200 | **Tower 01** |  | 1153d | 2025-02-12 | 2028-10-18 |  | 15% | start no earlier than 2025-02-12 | Indian Calendar | 10032569 |
| 8860 | 36900.37000.51400.121200.235300 | On Completion of Tower Raft |  | 1d | 2025-02-12 | 2025-02-12 | 1879 | 100% | start no earlier than 2025-02-12 | Indian Calendar | 10032570 |
| 8861 | 36900.37000.51400.121200.893900 | On Completion of Tower Ground Floor Roof | milestone | 0d | 2025-06-12 | 2025-06-12 | 1907FS-1d |  |  | Indian Calendar | 10032571 |
| 8862 | 36900.37000.51400.121200.278800 | On Completion of 10th Floor Roof |  | 0.12d | 2025-10-13 | 2025-10-13 | 1964FS-1d |  |  | Indian Calendar | 10032572 |
| 8863 | 36900.37000.51400.121200.278900 | On Completion of 15th Floor Roof |  | 0.12d | 2026-01-12 | 2026-01-12 | 1989 |  |  | Indian Calendar | 10032573 |
| 8864 | 36900.37000.51400.121200.279000 | On Completion of 20th Floor Roof |  | 0.12d | 2026-02-23 | 2026-02-23 | 2014 |  |  | Indian Calendar | 10032574 |
| 8865 | 36900.37000.51400.121200.279100 | On Completion of Terrace slab |  | 1d | 2026-07-13 | 2026-07-13 | 2089 |  |  | Indian Calendar | 10032575 |
| 8866 | 36900.37000.51400.121200.279200 | On Completion of Unit Internal plaster |  | 1d | 2026-10-08 | 2026-10-09 | 2684FS-1d |  |  | Indian Calendar | 10032576 |
| 8867 | 36900.37000.51400.121200.279300 | On Completion of Unit Flooring (Excluding wooden flooring) |  | 1d | 2027-01-01 | 2027-01-02 | 2689FS-1d |  |  | Indian Calendar | 10032577 |
| 8869 | 36900.37000.51400.121200.279400 | On Application of OC |  | 1d | 2027-08-10 | 2027-08-10 | 2779FS-1d |  |  | Indian Calendar | 10032578 |
| 8870 | 36900.37000.51400.121200.279500 | On Intimation of Possession |  | 1d | 2028-10-18 | 2028-10-18 | 2791FS-1d |  |  | Indian Calendar | 10032588 |
| 8871 | 36900.37000.51400.121500 | **Tower 02** |  | 1143d | 2025-02-28 | 2028-10-23 |  | 10% | start no earlier than 2025-02-28 | Indian Calendar | 10032579 |
| 8872 | 36900.37000.51400.121500.235900 | On Completion of Tower Raft |  | 1d | 2025-02-28 | 2025-02-28 | 952FS-1d | 100% | start no earlier than 2025-02-28 | Indian Calendar | 10032580 |
| 8873 | 36900.37000.51400.121500.279600 | On Completion of Tower Ground Floor Roof |  | 1d | 2025-06-13 | 2025-06-13 | 980FS-1d |  |  | Indian Calendar | 10032581 |
| 8874 | 36900.37000.51400.121500.279700 | On Completion of 10th Floor Roof |  | 1d | 2025-10-14 | 2025-10-14 | 1037FS-1d |  |  | Indian Calendar | 10032582 |
| 8875 | 36900.37000.51400.121500.279800 | On Completion of 15th Floor Roof |  | 1d | 2026-01-12 | 2026-01-12 | 1062FS-1d |  |  | Indian Calendar | 10032583 |
| 8876 | 36900.37000.51400.121500.279900 | On Completion of 20th Floor Roof |  | 1d | 2026-02-23 | 2026-02-23 | 1087FS-1d |  |  | Indian Calendar | 10032584 |
| 8877 | 36900.37000.51400.121500.280000 | On Completion of Terrace slab |  | 1d | 2026-07-13 | 2026-07-13 | 1162FS-1d |  |  | Indian Calendar | 10032585 |
| 8878 | 36900.37000.51400.121500.280100 | On Completion of Unit Internal plaster |  | 1d | 2026-10-09 | 2026-10-10 | 1757FS-1d |  |  | Indian Calendar | 10032586 |
| 8879 | 36900.37000.51400.121500.280200 | On Completion of Unit Flooring (Excluding wooden flooring) |  | 1d | 2027-01-02 | 2027-01-04 | 1762FS-0.75d |  |  | Indian Calendar | 10032587 |
| 8881 | 36900.37000.51400.121500.280300 | On Application of OC |  | 1d | 2027-08-11 | 2027-08-11 | 1852FS-1d |  |  | Indian Calendar | 10032597 |
| 8882 | 36900.37000.51400.121500.280400 | On Intimation of Possession |  | 1d | 2028-10-23 | 2028-10-23 | 1864FS-1d |  |  | Indian Calendar | 10032607 |

| ID | WBS | Task | Duration | Start | Finish | Predecessors | Complete | Constraint | Calendar | Unique_Task_ID |
| --- | --- | --- | --- | --- | --- | --- | --- | --- | --- | --- |
| 8883 | 36900.37000.51400.121600 | **Tower 03** | 1165d | 2025-01-22 | 2028-10-11 |  | 10% | start no earlier than 2025-01-22 | Indian Calendar | 10032589 |
| 8884 | 36900.37000.51400.121600.236000 | On Completion of Tower Raft | 1d | 2025-01-22 | 2025-01-22 | 2806FS-1d | 100% | start no earlier than 2025-01-22 | Indian Calendar | 10032590 |
| 8885 | 36900.37000.51400.121600.280500 | On Completion of Tower Ground Floor Roof | 1d | 2025-06-20 | 2025-06-20 | 2834FS-1d |  |  | Indian Calendar | 10032591 |
| 8886 | 36900.37000.51400.121600.280600 | On Completion of 10th Floor Roof | 1d | 2025-10-21 | 2025-10-21 | 2891FS-1d |  |  | Indian Calendar | 10032592 |
| 8887 | 36900.37000.51400.121600.280700 | On Completion of 15th Floor Roof | 1d | 2026-01-19 | 2026-01-19 | 2916FS-1d |  |  | Indian Calendar | 10032593 |
| 8888 | 36900.37000.51400.121600.280800 | On Completion of 20th Floor Roof | 1d | 2026-03-02 | 2026-03-02 | 2941FS-1d |  |  | Indian Calendar | 10032594 |
| 8889 | 36900.37000.51400.121600.280900 | On Completion of Terrace slab | 1d | 2026-07-10 | 2026-07-10 | 3011FS-1d |  |  | Indian Calendar | 10032595 |
| 8890 | 36900.37000.51400.121600.281000 | On Completion of Unit Internal plaster | 1d | 2026-10-06 | 2026-10-07 | 3589FS-1d |  |  | Indian Calendar | 10032596 |
| 8891 | 36900.37000.51400.121600.281100 | On Completion of Unit Flooring (Excluding wooden flooring) | 1d | 2026-12-30 | 2026-12-31 | 3594FS-1d |  |  | Indian Calendar | 10032606 |
| 8893 | 36900.37000.51400.121600.281200 | On Application of OC | 1d | 2027-08-09 | 2027-08-09 | 3683 |  |  | Indian Calendar | 10032616 |
| 8894 | 36900.37000.51400.121600.281300 | On Intimation of Possession | 1d | 2028-10-11 | 2028-10-11 | 3695FS-1d |  |  | Indian Calendar | 10032626 |
| 8895 | 36900.37000.51400.123800 | **Tower 04** | 1161.6d | 2025-01-25 | 2028-10-11 |  | 10% | start no earlier than 2025-01-25 | Indian Calendar | 10032599 |
| 8896 | 36900.37000.51400.123800.242100 | On Completion of Tower Raft | 1d | 2025-01-25 | 2025-01-25 | 25FS-1d | 100% | start no earlier than 2025-01-25 | Indian Calendar | 10032600 |
| 8897 | 36900.37000.51400.123800.281400 | On Completion of Tower Ground Floor Roof | 1d | 2025-05-30 | 2025-05-31 | 53FS-1d |  |  | Indian Calendar | 10032601 |
| 8898 | 36900.37000.51400.123800.281500 | On Completion of 10th Floor Roof | 1d | 2025-09-30 | 2025-10-01 | 110FS-1d |  |  | Indian Calendar | 10032602 |
| 8899 | 36900.37000.51400.123800.281600 | On Completion of 15th Floor Roof | 1d | 2025-12-29 | 2025-12-30 | 135FS-1d |  |  | Indian Calendar | 10032603 |
| 8900 | 36900.37000.51400.123800.281700 | On Completion of 20th Floor Roof | 1d | 2026-02-09 | 2026-02-10 | 160FS-1d |  |  | Indian Calendar | 10032604 |
| 8901 | 36900.37000.51400.123800.281800 | On Completion of Terrace slab | 1d | 2026-06-29 | 2026-06-30 | 235FS-1d |  |  | Indian Calendar | 10032605 |
| 8902 | 36900.37000.51400.123800.281900 | On Completion of Unit Internal plaster | 1d | 2026-08-27 | 2026-08-28 | 830FS-1d |  |  | Indian Calendar | 10032615 |
| 8903 | 36900.37000.51400.123800.282000 | On Completion of Unit Flooring (Excluding wooden flooring) | 1d | 2026-09-25 | 2026-09-26 | 835FS-1d |  |  | Indian Calendar | 10032625 |
| 8905 | 36900.37000.51400.123800.282100 | On Application of OC | 1d | 2027-07-29 | 2027-07-30 | 925FS-1d |  |  | Indian Calendar | 10032635 |
| 8906 | 36900.37000.51400.123800.282200 | On Intimation of Possession | 1d | 2028-10-10 | 2028-10-11 | 937FS-1d |  |  | Indian Calendar | 10032645 |
| 8907 | 36900.37000.51400.123900 | **Tower 05** | 1148d | 2025-02-15 | 2028-10-16 |  | 10% | start no earlier than 2025-02-15 | Indian Calendar | 10032609 |
| 8908 | 36900.37000.51400.123900.242700 | On Completion of Tower Raft | 1d | 2025-02-15 | 2025-02-15 | 3710FS-1d | 100% | start no earlier than 2025-02-15 | Indian Calendar | 10032610 |
| 8909 | 36900.37000.51400.123900.282300 | On Completion of Tower Ground Floor Roof | 1d | 2025-06-16 | 2025-06-16 | 3738 |  |  | Indian Calendar | 10032611 |
| 8910 | 36900.37000.51400.123900.282400 | On Completion of 10th Floor Roof | 1d | 2025-10-16 | 2025-10-16 | 3795FS-1d |  |  | Indian Calendar | 10032612 |
| 8911 | 36900.37000.51400.123900.282500 | On Completion of 15th Floor Roof | 1d | 2026-01-14 | 2026-01-14 | 3820FS-1d |  |  | Indian Calendar | 10032613 |
| 8912 | 36900.37000.51400.123900.282600 | On Completion of 20th Floor Roof | 1d | 2026-02-25 | 2026-02-25 | 3845FS-1d |  |  | Indian Calendar | 10032614 |
| 8913 | 36900.37000.51400.123900.282700 | On Completion of Terrace slab | 1d | 2026-07-15 | 2026-07-15 | 3920FS-1d |  |  | Indian Calendar | 10032624 |
| 8914 | 36900.37000.51400.123900.282800 | On Completion of Unit Internal plaster | 1d | 2026-10-12 | 2026-10-12 | 4515FS-0.25d |  |  | Indian Calendar | 10032634 |
| 8915 | 36900.37000.51400.123900.282900 | On Completion of Unit Flooring (Excluding wooden flooring) | 1d | 2027-01-04 | 2027-01-05 | 4520FS-1d |  |  | Indian Calendar | 10032644 |
| 8917 | 36900.37000.51400.123900.283000 | On Application of OC | 1d | 2027-08-12 | 2027-08-12 | 4610FS-1d |  |  | Indian Calendar | 10032654 |
| 8918 | 36900.37000.51400.123900.283100 | On Intimation of Possession | 1d | 2028-10-16 | 2028-10-16 | 4622 |  |  | Indian Calendar | 10032664 |

| ID | WBS | Task | Duration | Start | Finish | Predecessors | Complete | Constraint | Calendar | Unique_Task_ID |
| --- | --- | --- | --- | --- | --- | --- | --- | --- | --- | --- |
| 8919 | 36900.37000.51400.124100 | **Tower 06** | 1184d | 2025-03-08 | 2028-12-18 |  | 10% | start no earlier than 2025-03-08 | Indian Calendar | 10032619 |
| 8920 | 36900.37000.51400.124100.247200 | On Completion of Tower Raft | 1d | 2025-03-08 | 2025-03-08 | 4637FS-1d | 100% | start no earlier than 2025-03-08 | Indian Calendar | 10032620 |
| 8921 | 36900.37000.51400.124100.283200 | On Completion of Tower Ground Floor Roof | 1d | 2025-06-16 | 2025-06-16 | 4665FS-1d |  |  | Indian Calendar | 10032621 |
| 8922 | 36900.37000.51400.124100.283300 | On Completion of 10th Floor Roof | 1d | 2025-10-17 | 2025-10-17 | 4722FS-1d |  |  | Indian Calendar | 10032622 |
| 8923 | 36900.37000.51400.124100.283400 | On Completion of 15th Floor Roof | 1d | 2026-01-15 | 2026-01-15 | 4747FS-1d |  |  | Indian Calendar | 10032623 |
| 8924 | 36900.37000.51400.124100.283500 | On Completion of 20th Floor Roof | 1d | 2026-02-26 | 2026-02-26 | 4772FS-1d |  |  | Indian Calendar | 10032633 |
| 8925 | 36900.37000.51400.124100.283600 | On Completion of Terrace slab | 1d | 2026-07-27 | 2026-07-27 | 4852 |  |  | Indian Calendar | 10032643 |
| 8926 | 36900.37000.51400.124100.283700 | On Completion of Unit Internal plaster | 1d | 2026-10-26 | 2026-10-27 | 5464FS-1d |  |  | Indian Calendar | 10032653 |
| 8927 | 36900.37000.51400.124100.283800 | On Completion of Unit Flooring (Excluding wooden flooring) | 1d | 2027-01-19 | 2027-01-20 | 5469FS-1d |  |  | Indian Calendar | 10032663 |
| 8929 | 36900.37000.51400.124100.283900 | On Application of OC | 1d | 2027-08-23 | 2027-08-23 | 5560FS-1d |  |  | Indian Calendar | 10032673 |
| 8930 | 36900.37000.51400.124100.284000 | On Intimation of Possession | 1d | 2028-12-18 | 2028-12-18 | 5572 |  |  | Indian Calendar | 10032683 |
| 8931 | 36900.37000.51400.124000 | **Commercial** | 823d | 2025-10-06 | 2028-05-22 |  |  | start no earlier than 2025-10-06 | Indian Calendar | 10032629 |
| 8934 | 36900.37000.51400.124000.284100 | On Completion of 6th Floor Roof | 1d | 2025-10-06 | 2025-10-06 | 5713FS-1d |  |  | Indian Calendar | 10032630 |
| 8937 | 36900.37000.51400.124000.284200 | On Completion of Terrace slab | 1d | 2026-06-30 | 2026-06-30 | 5986FS-1d |  |  | Indian Calendar | 10032631 |
| 8938 | 36900.37000.51400.124000.284300 | On Completion of Unit Internal plaster | 1d | 2026-07-30 | 2026-07-30 | 5990FS-1d |  |  | Indian Calendar | 10032632 |
| 8941 | 36900.37000.51400.124000.284400 | On Application of OC | 1d | 2027-01-12 | 2027-01-12 | 6060FS-1d |  |  | Indian Calendar | 10032642 |
| 8942 | 36900.37000.51400.124000.284500 | On Intimation of Possession | 1d | 2028-05-22 | 2028-05-22 | 6075 |  |  | Indian Calendar | 10032652 |
| 8943 | 36900.37000.51400.123000 | **Tower 07** | 1250.25d | 2025-07-21 | 2029-07-18 |  |  | start no earlier than 2025-07-21 | Indian Calendar | 10032639 |
| 8944 | 36900.37000.51400.123000.284600 | On Completion of Tower Raft | 1d | 2025-07-21 | 2025-07-21 | 6108 |  |  | Indian Calendar | 10032640 |
| 8945 | 36900.37000.51400.123000.284700 | On Completion of Tower Ground Floor Roof | 1d | 2025-10-28 | 2025-10-28 | 6136FS-1d |  |  | Indian Calendar | 10032641 |
| 8946 | 36900.37000.51400.123000.284800 | On Completion of 10th Floor Roof | 1d | 2026-04-14 | 2026-04-14 | 6193FS-1d |  |  | Indian Calendar | 10032651 |
| 8947 | 36900.37000.51400.123000.284900 | On Completion of 15th Floor Roof | 1d | 2026-05-28 | 2026-05-28 | 6218FS-1d |  |  | Indian Calendar | 10032661 |
| 8948 | 36900.37000.51400.123000.285000 | On Completion of 20th Floor Roof | 1d | 2026-07-09 | 2026-07-09 | 6243FS-1d |  |  | Indian Calendar | 10032671 |
| 8949 | 36900.37000.51400.123000.285100 | On Completion of Terrace slab | 1d | 2026-12-31 | 2026-12-31 | 6313FS-1d |  |  | Indian Calendar | 10032681 |
| 8950 | 36900.37000.51400.123000.285200 | On Completion of Unit Internal plaster | 1d | 2027-09-03 | 2027-09-04 | 6891FS-1d |  |  | Indian Calendar | 10032691 |
| 8951 | 36900.37000.51400.123000.285300 | On Completion of Unit Flooring (Excluding wooden flooring) | 1d | 2027-10-13 | 2027-10-14 | 6896FS-1d |  |  | Indian Calendar | 10032701 |
| 8953 | 36900.37000.51400.123000.285400 | On Application of OC | 1d | 2028-05-08 | 2028-05-09 | 6985FS-1d |  |  | Indian Calendar | 10032711 |
| 8954 | 36900.37000.51400.123000.285500 | On Intimation of Possession | 1d | 2029-07-17 | 2029-07-18 | 6997FS-1d |  |  | Indian Calendar | 10032721 |

| ID | WBS | Task | Duration | Start | Finish | Predecessors | Constraint | Calendar | Unique_Task_ID |
| --- | --- | --- | --- | --- | --- | --- | --- | --- | --- |
| 8955 | 36900.37000.51400.123100 | **Tower 08** | 1280d | 2025-06-18 | 2029-07-19 |  | start no earlier than 2025-06-18 | Indian Calendar | 10032649 |
| 8956 | 36900.37000.51400.123100.285600 | On Completion of Tower Raft | 1d | 2025-06-18 | 2025-06-18 | 7011FS-1d |  | Indian Calendar | 10032650 |
| 8957 | 36900.37000.51400.123100.285700 | On Completion of Tower Ground Floor Roof | 1d | 2025-09-26 | 2025-09-26 | 7039FS-1d |  | Indian Calendar | 10032660 |
| 8958 | 36900.37000.51400.123100.285800 | On Completion of 10th Floor Roof | 1d | 2026-03-13 | 2026-03-13 | 7096FS-1d |  | Indian Calendar | 10032670 |
| 8959 | 36900.37000.51400.123100.285900 | On Completion of 15th Floor Roof | 1d | 2026-04-27 | 2026-04-27 | 7121FS-1d |  | Indian Calendar | 10032680 |
| 8960 | 36900.37000.51400.123100.286000 | On Completion of 20th Floor Roof | 1d | 2026-06-08 | 2026-06-08 | 7146 |  | Indian Calendar | 10032690 |
| 8961 | 36900.37000.51400.123100.286100 | On Completion of Terrace slab | 1d | 2026-12-19 | 2026-12-19 | 7226FS-1d |  | Indian Calendar | 10032700 |
| 8962 | 36900.37000.51400.123100.286200 | On Completion of Unit Internal plaster | 1d | 2027-08-23 | 2027-08-23 | 7838 |  | Indian Calendar | 10032710 |
| 8963 | 36900.37000.51400.123100.286300 | On Completion of Unit Flooring (Excluding wooden flooring) | 1d | 2027-10-01 | 2027-10-01 | 7843FS-1d |  | Indian Calendar | 10032720 |
| 8965 | 36900.37000.51400.123100.286400 | On Application of OC | 1d | 2028-05-06 | 2028-05-06 | 7934FS-1d |  | Indian Calendar | 10032730 |
| 8966 | 36900.37000.51400.123100.286500 | On Intimation of Possession | 1d | 2029-07-19 | 2029-07-19 | 7946FS-1d |  | Indian Calendar | 10032740 |
| 8967 | 36900.37000.51400.123200 | **Tower 09** | 1253d | 2025-06-13 | 2029-06-13 |  | start no earlier than 2025-06-13 | Indian Calendar | 10032659 |
| 8968 | 36900.37000.51400.123200.286600 | On Completion of Tower Raft | 1d | 2025-06-13 | 2025-06-13 | 7961FS-1d |  | Indian Calendar | 10032829 |
| 8969 | 36900.37000.51400.123200.286700 | On Completion of Tower Ground Floor Roof | 1d | 2025-09-22 | 2025-09-22 | 7989 |  | Indian Calendar | 10032839 |
| 8970 | 36900.37000.51400.123200.286800 | On Completion of 10th Floor Roof | 1d | 2026-03-09 | 2026-03-09 | 8046 |  | Indian Calendar | 10032849 |
| 8971 | 36900.37000.51400.123200.286900 | On Completion of 15th Floor Roof | 1d | 2026-04-22 | 2026-04-22 | 8071FS-1d |  | Indian Calendar | 10032859 |
| 8972 | 36900.37000.51400.123200.287000 | On Completion of 20th Floor Roof | 1d | 2026-06-03 | 2026-06-03 | 8096FS-1d |  | Indian Calendar | 10032869 |
| 8973 | 36900.37000.51400.123200.287100 | On Completion of Terrace slab | 1d | 2026-10-12 | 2026-10-12 | 8166 |  | Indian Calendar | 10032879 |
| 8974 | 36900.37000.51400.123200.287200 | On Completion of Unit Internal plaster | 1d | 2027-07-20 | 2027-07-20 | 8744FS-1d |  | Indian Calendar | 10032889 |
| 8975 | 36900.37000.51400.123200.287300 | On Completion of Unit Flooring (Excluding wooden flooring) | 1d | 2027-08-30 | 2027-08-30 | 8749 |  | Indian Calendar | 10032899 |
| 8977 | 36900.37000.51400.123200.287400 | On Application of OC | 1d | 2028-03-31 | 2028-03-31 | 8838FS-1d |  | Indian Calendar | 10032909 |
| 8978 | 36900.37000.51400.123200.287500 | On Intimation of Possession | 1d | 2029-06-13 | 2029-06-13 | 8850FS-1d |  | Indian Calendar | 10032919 |
